Schedule from MS Project XML, 2024-01-11 to 2029-12-24.

## Calendars

- Standard: Mon-Fri 08:00-12:00, 13:00-17:00; Sat-Sun off. Exceptions (off unless hours are given): 2024-03-29 to 2024-04-01, 2024-05-06, 2024-05-27, 2024-08-26, 2024-12-23 to 2025-01-05, 2025-04-18 to 2025-04-21, 2025-05-05, 2025-05-26, 2025-08-25, 2025-12-22 to 2026-01-04, 2026-03-27 to 2026-03-30, 2026-05-04, 2026-05-23 to 2026-05-25, 2026-08-29 to 2026-08-31, 2026-12-21 to 2027-01-03, 2027-04-16 to 2027-04-19, 2027-05-01 to 2027-05-03, 2027-05-29 to 2027-05-31, 2027-08-30, 2027-12-25 to 2028-01-09, 2028-03-31 to 2028-04-03, 2028-04-29 to 2028-05-01, 2028-05-27 to 2028-05-29, 2028-08-26 to 2028-08-28, 2028-12-23 to 2029-01-07, 2029-03-23 to 2029-03-26, 2029-05-07, 2029-05-28, 2029-08-27, 2029-12-24.
- Indian Calendar: Mon-Sat 08:00-12:00, 13:00-17:00; Sun off. Exceptions (off unless hours are given): 2024-07-01 to 2024-07-06 08:00-10:00, 14:00-17:00, 2024-07-07, 2024-07-08 to 2024-07-13 08:00-10:00, 14:00-17:00, 2024-07-14, 2024-07-15 to 2024-07-20 08:00-10:00, 14:00-17:00, 2024-07-21, 2024-07-22 to 2024-07-27 08:00-10:00, 14:00-17:00, 2024-07-28, 2024-07-29 to 2024-07-31 08:00-10:00, 14:00-17:00, 2024-08-01 to 2024-08-03 08:00-10:00, 11:00-12:00, 13:00-17:00, 2024-08-04, 2024-08-05 to 2024-08-10 08:00-10:00, 11:00-12:00, 13:00-17:00, 2024-08-11, 2024-08-12 to 2024-08-17 08:00-10:00, 11:00-12:00, 13:00-17:00, 2024-08-18, 2024-08-19 to 2024-08-24 08:00-10:00, 11:00-12:00, 13:00-17:00, 2024-08-25, 2024-08-26 to 2024-08-31 08:00-10:00, 11:00-12:00, 13:00-17:00, 2024-09-01, 2024-09-02 to 2024-09-07 08:00-10:00, 11:00-12:00, 13:00-17:00, 2024-09-08, 2024-09-09 to 2024-09-14 08:00-10:00, 11:00-12:00, 13:00-17:00, 2024-09-15, 2024-09-16 to 2024-09-21 08:00-10:00, 11:00-12:00, 13:00-17:00, 2024-09-22, 2024-09-23 to 2024-09-28 08:00-10:00, 11:00-12:00, 13:00-17:00, 2024-09-29, 2024-09-30 08:00-10:00, 11:00-12:00, 13:00-17:00.
- 7 day week with NGT: Mon-Sun 08:00-12:00, 13:00-17:00. Exceptions (off unless hours are given): 2024-11-01 to 2024-12-15, 2025-11-01 to 2025-12-15, 2026-11-01 to 2026-12-15, 2027-11-01 to 2027-12-15.
- GC1: Mon-Sun 08:30-13:00, 14:00-18:30. Exceptions (off unless hours are given): 2025-11-12 to 2025-12-26, 2026-11-01 to 2026-12-15, 2027-11-01 to 2027-12-15.

## Resources

| Resource |
| --- |
| GPL Revenue |
| Project Costs |
| Zenith |
| Aristocrat |
| Project Costs |

## Schedule

| ID | WBS | Task | Duration | Start | Finish | Predecessors | Complete | Constraint | Calendar | Unique_Task_ID |
| --- | --- | --- | --- | --- | --- | --- | --- | --- | --- | --- |
| 1 | 37400 | **Aristocrat** | 2174.38ed | 2024-01-11 | 2029-12-24 |  | 5% | start no earlier than 2024-01-11 |  | 7997672 |
| 2 | 37400.37600 | **Aristocrat** | 1995d | 2024-01-11 | 2029-12-24 |  | 5% | must start on 2024-01-01 | 7 day week with NGT | 7997682 |
| 3 | 37400.37600.233300 | Excavation | 180d | 2024-01-11 | 2024-08-15 |  | 100% | start no earlier than 2024-01-11 | 7 day week with NGT | 8000422 |
| 4 | 37400.37600.233200 | Soldier Piling | 180d | 2024-01-11 | 2024-08-15 | 3SS | 100% | start no earlier than 2024-01-11 | 7 day week with NGT | 8000432 |
| 5 | 37400.37600.39600 | **Tower 6** | 1432d | 2024-10-11 | 2029-03-10 |  | 3% | start no earlier than 2024-10-11 | 7 day week with NGT | 7997692 |
| 6 | 37400.37600.39600.114900 | **Substructure Works** | 439d | 2024-10-11 | 2026-03-23 |  | 69% | start no earlier than 2024-10-11 | 7 day week with NGT | 7998852 |
| 7 | 37400.37600.39600.114900.117900 | **RCC Works** | 230d | 2024-10-11 | 2025-07-12 |  | 100% | start no earlier than 2024-10-11 | 7 day week with NGT | 7998902 |
| 8 | 37400.37600.39600.114900.117900.131000 | **Raft** | 21d | 2024-10-11 | 2024-11-01 |  | 100% | start no earlier than 2024-10-11 | 7 day week with NGT | 7999152 |
| 9 | 37400.37600.39600.114900.117900.131000.285600 | Surface Dressing | 2d | 2024-10-14 | 2024-10-15 | 889SS+15d | 100% | start no earlier than 2024-10-14 | 7 day week with NGT | 8003622 |
| 10 | 37400.37600.39600.114900.117900.131000.285500 | Anti Termite Treatment | 5d | 2024-10-11 | 2024-10-15 | 9 | 100% | start no earlier than 2024-10-11 | 7 day week with NGT | 8003632 |
| 11 | 37400.37600.39600.114900.117900.131000.285400 | PCC | 3d | 2024-10-13 | 2024-10-15 | 10 | 100% | start no earlier than 2024-10-13 | 7 day week with NGT | 8003642 |
| 12 | 37400.37600.39600.114900.117900.131000.285300 | Reinforcement Laying | 14d | 2024-10-15 | 2024-11-01 | 11 | 100% | start no earlier than 2024-10-15 | 7 day week with NGT | 8003652 |
| 13 | 37400.37600.39600.114900.117900.131000.285200 | Outer Shuttering of Raft Area | 1d | 2024-10-31 | 2024-11-01 | 12FF | 100% | start no earlier than 2024-10-31 | 7 day week with NGT | 8003662 |
| 14 | 37400.37600.39600.114900.117900.131000.285100 | Raft Concreting | 3d | 2024-10-29 | 2024-10-31 | 13 | 100% | start no earlier than 2024-10-29 | 7 day week with NGT | 8003672 |
| 15 | 37400.37600.39600.114900.117900.131100 | **Dummy Basement** | 76.02d | 2024-10-26 | 2025-02-24 |  | 100% | start no earlier than 2024-10-26 | 7 day week with NGT | 7999162 |
| 16 | 37400.37600.39600.114900.117900.131100.285000 | Column and Shear Wall Reinforcement | 50d | 2024-10-26 | 2025-01-29 | 14 | 100% | start no earlier than 2024-10-26 | 7 day week with NGT | 8003682 |
| 17 | 37400.37600.39600.114900.117900.131100.284900 | Column and Shear Wall Formwork | 57d | 2024-12-16 | 2025-02-22 | 16FF+1d | 100% | start no earlier than 2024-12-16 | 7 day week with NGT | 8003692 |
| 18 | 37400.37600.39600.114900.117900.131100.284800 | Column and Shear Wall Casting | 57d | 2024-12-17 | 2025-02-23 | 17FF+1d | 100% | start no earlier than 2024-12-17 | 7 day week with NGT | 8003702 |
| 19 | 37400.37600.39600.114900.117900.131100.284700 | Slab Formwork | 35d | 2025-01-21 | 2025-02-24 | 18SS+15d | 100% | start no earlier than 2025-01-21 | 7 day week with NGT | 8003712 |
| 20 | 37400.37600.39600.114900.117900.131100.284600 | Slab Reinforcement | 25d | 2025-01-30 | 2025-02-23 | 19FS-32d | 100% | start no earlier than 2025-01-30 | 7 day week with NGT | 8003722 |
| 21 | 37400.37600.39600.114900.117900.131100.284500 | Slab Casting | 12d | 2025-02-12 | 2025-02-23 | 20FF+3d | 100% | start no earlier than 2025-02-12 | 7 day week with NGT | 8003732 |
| 22 | 37400.37600.39600.114900.117900.131200 | **B2 Roof** | 135d | 2025-02-10 | 2025-06-24 |  | 100% | start no earlier than 2025-02-10 | 7 day week with NGT | 7999172 |
| 23 | 37400.37600.39600.114900.117900.131200.284400 | Column and Shear Wall Reinforcement | 5d | 2025-02-10 | 2025-04-10 | 21 | 100% | start no earlier than 2025-02-10 | 7 day week with NGT | 8003742 |
| 24 | 37400.37600.39600.114900.117900.131200.284300 | Column and Shear Wall Formwork | 16d | 2025-03-07 | 2025-06-13 | 23FF+1d | 100% | start no earlier than 2025-03-07 | 7 day week with NGT | 8003752 |
| 25 | 37400.37600.39600.114900.117900.131200.284200 | Column and Shear Wall Casting | 14d | 2025-03-17 | 2025-06-13 | 24FF+1d | 100% | start no earlier than 2025-03-17 | 7 day week with NGT | 8003762 |
| 26 | 37400.37600.39600.114900.117900.131200.284100 | Slab Formwork | 13d | 2025-04-06 | 2025-06-20 | 25SS+1d | 100% | start no earlier than 2025-04-06 | 7 day week with NGT | 8003772 |
| 27 | 37400.37600.39600.114900.117900.131200.284000 | Slab Reinforcement | 10d | 2025-04-12 | 2025-06-24 | 26FS-67d | 100% | start no earlier than 2025-04-12 | 7 day week with NGT | 8003782 |
| 28 | 37400.37600.39600.114900.117900.131200.283900 | Slab Casting | 14d | 2025-05-24 | 2025-06-24 | 27FF+6d | 100% | start no earlier than 2025-05-24 | 7 day week with NGT | 8003792 |

| ID | WBS | Task | Duration | Start | Finish | Predecessors | Complete | Constraint | Calendar | Unique_Task_ID |
| --- | --- | --- | --- | --- | --- | --- | --- | --- | --- | --- |
| 29 | 37400.37600.39600.114900.117900.131300 | **B1 Roof** | 34d | 2025-06-09 | 2025-07-12 |  | 100% | start no earlier than 2025-06-09 | 7 day week with NGT | 7999182 |
| 30 | 37400.37600.39600.114900.117900.131300.283800 | Column and Shear Wall Reinforcement | 16d | 2025-06-11 | 2025-07-08 | 28FS-18d | 100% | start no earlier than 2025-06-11 | 7 day week with NGT | 8003802 |
| 31 | 37400.37600.39600.114900.117900.131300.283700 | Column and Shear Wall Formwork | 16d | 2025-06-11 | 2025-07-09 | 30FF+1d | 100% | start no earlier than 2025-06-11 | 7 day week with NGT | 8003812 |
| 32 | 37400.37600.39600.114900.117900.131300.283600 | Column and Shear Wall Casting | 17d | 2025-06-09 | 2025-07-10 | 31FF+1d | 100% | start no earlier than 2025-06-09 | 7 day week with NGT | 8003822 |
| 33 | 37400.37600.39600.114900.117900.131300.283500 | Slab Formwork | 12d | 2025-06-30 | 2025-07-12 | 32SS+1d | 100% | start no earlier than 2025-06-30 | 7 day week with NGT | 8003832 |
| 34 | 37400.37600.39600.114900.117900.131300.283400 | Slab Reinforcement | 12d | 2025-07-01 | 2025-07-12 | 33FS-8d | 100% | start no earlier than 2025-07-01 | 7 day week with NGT | 8003842 |
| 35 | 37400.37600.39600.114900.117900.131300.283300 | Slab Casting | 13d | 2025-06-30 | 2025-07-12 | 34FF+3d | 100% | start no earlier than 2025-06-30 | 7 day week with NGT | 8003852 |
| 36 | 37400.37600.39600.114900.130300 | **Substructure Finishing Works** | 98d | 2025-12-16 | 2026-03-23 |  |  | start no earlier than 2025-12-16 | 7 day week with NGT | 7999022 |
| 37 | 37400.37600.39600.114900.130300.216200 | **Basement - 2** | 73d | 2025-12-16 | 2026-02-26 |  |  | start no earlier than 2025-12-16 | 7 day week with NGT | 8000242 |
| 38 | 37400.37600.39600.114900.130300.216200.418900 | Masonary Works | 30d | 2025-12-16 | 2026-01-14 | 28FS+30d |  |  | 7 day week with NGT | 8003862 |
| 39 | 37400.37600.39600.114900.130300.216200.419000 | Plaster Works | 20d | 2025-12-31 | 2026-01-19 | 38SS+15d |  |  | 7 day week with NGT | 8003872 |
| 40 | 37400.37600.39600.114900.130300.216200.419100 | White Wash | 18d | 2026-01-15 | 2026-02-01 | 39SS+15d |  |  | 7 day week with NGT | 8003882 |
| 41 | 37400.37600.39600.114900.130300.216200.419200 | VDF | 25d | 2026-02-02 | 2026-02-26 | 40 |  |  | 7 day week with NGT | 2991 |
| 42 | 37400.37600.39600.114900.130300.216100 | **Basement - 1** | 98d | 2025-12-16 | 2026-03-23 |  |  | start no earlier than 2025-12-16 | 7 day week with NGT | 8000232 |
| 43 | 37400.37600.39600.114900.130300.216100.419300 | Masonary Works | 30d | 2025-12-16 | 2026-01-14 | 35FS+30d |  |  | 7 day week with NGT | 8003892 |
| 44 | 37400.37600.39600.114900.130300.216100.419400 | Plaster Works | 20d | 2025-12-31 | 2026-01-19 | 43SS+15d |  |  | 7 day week with NGT | 8003902 |
| 45 | 37400.37600.39600.114900.130300.216100.419500 | White Wash | 18d | 2026-01-15 | 2026-02-01 | 44SS+15d |  |  | 7 day week with NGT | 8003912 |
| 46 | 37400.37600.39600.114900.130300.216100.419600 | VDF | 25d | 2026-02-27 | 2026-03-23 | 41, 45 |  |  | 7 day week with NGT | 135785 |
| 47 | 37400.37600.39600.44300 | **Superstructure Works** | 568d | 2025-08-11 | 2027-05-30 |  | 1% | start no earlier than 2025-08-11 | 7 day week with NGT | 7997782 |
| 48 | 37400.37600.39600.44300.46100 | **RCC Works** | 549d | 2025-08-11 | 2027-05-11 |  | 2% | start no earlier than 2025-08-11 | 7 day week with NGT | 7997812 |
| 49 | 37400.37600.39600.44300.46100.142100 | **Podium Roof** | 113d | 2025-08-11 | 2026-01-15 |  | 29% | start no earlier than 2025-08-11 | 7 day week with NGT | 7999192 |
| 50 | 37400.37600.39600.44300.46100.142100.283200 | Column and Shear Wall Reinforcement | 10d | 2025-08-11 | 2025-12-17 | 35 | 80% | start no earlier than 2025-08-11 | 7 day week with NGT | 8003922 |
| 51 | 37400.37600.39600.44300.46100.142100.283100 | Column and Shear Wall Formwork | 10d | 2025-08-31 | 2025-12-18 | 50FF+1d | 70% |  | 7 day week with NGT | 8003932 |
| 52 | 37400.37600.39600.44300.46100.142100.283000 | Column and Shear Wall Casting | 10d | 2025-09-02 | 2025-12-19 | 51FF+1d | 70% |  | 7 day week with NGT | 8003942 |
| 53 | 37400.37600.39600.44300.46100.142100.282900 | Slab Formwork | 13d | 2025-09-14 | 2025-12-25 | 52SS | 23% | start no earlier than 2025-09-14 | 7 day week with NGT | 8003952 |
| 54 | 37400.37600.39600.44300.46100.142100.419700 | Slab Reinforcement | 28d | 2025-12-16 | 2026-01-12 | 53FS-57d |  |  | 7 day week with NGT | 8003962 |
| 55 | 37400.37600.39600.44300.46100.142100.419800 | Slab Casting | 14d | 2026-01-02 | 2026-01-15 | 54FF+3d |  |  | 7 day week with NGT | 8003972 |

| ID | WBS | Task | Duration | Start | Finish | Predecessors | Constraint | Calendar | Unique_Task_ID |
| --- | --- | --- | --- | --- | --- | --- | --- | --- | --- |
| 56 | 37400.37600.39600.44300.46100.142000 | **First Floor Roof** | 37d | 2026-01-16 | 2026-02-21 |  | start no earlier than 2026-01-16 | 7 day week with NGT | 7999202 |
| 57 | 37400.37600.39600.44300.46100.142000.419900 | Column and Shear Wall Reinforcement | 15d | 2026-01-16 | 2026-01-30 | 55 |  | 7 day week with NGT | 8003982 |
| 58 | 37400.37600.39600.44300.46100.142000.420000 | Column and Shear Wall Formwork | 10d | 2026-01-27 | 2026-02-05 | 57FS-4d |  | 7 day week with NGT | 8003992 |
| 59 | 37400.37600.39600.44300.46100.142000.420100 | Column and Shear Wall Casting | 8d | 2026-01-30 | 2026-02-06 | 58FF+1d |  | 7 day week with NGT | 8004002 |
| 60 | 37400.37600.39600.44300.46100.142000.420200 | Slab Formwork | 17d | 2026-01-31 | 2026-02-16 | 59SS+1d |  | 7 day week with NGT | 8004012 |
| 61 | 37400.37600.39600.44300.46100.142000.420300 | Slab Reinforcement | 15d | 2026-02-05 | 2026-02-19 | 60FS-12d |  | 7 day week with NGT | 8004022 |
| 62 | 37400.37600.39600.44300.46100.142000.420400 | Slab Casting | 14d | 2026-02-08 | 2026-02-21 | 61FF+2d |  | 7 day week with NGT | 8004032 |
| 63 | 37400.37600.39600.44300.46100.144100 | **Second Floor Roof** | 28d | 2026-02-22 | 2026-03-21 |  | start no earlier than 2026-02-22 | 7 day week with NGT | 7999822 |
| 64 | 37400.37600.39600.44300.46100.144100.420500 | Column and Shear Wall Reinforcement | 10d | 2026-02-22 | 2026-03-03 | 62 |  | 7 day week with NGT | 8004042 |
| 65 | 37400.37600.39600.44300.46100.144100.420600 | Column and Shear Wall Formwork | 10d | 2026-02-23 | 2026-03-04 | 64FF+1d |  | 7 day week with NGT | 8004052 |
| 66 | 37400.37600.39600.44300.46100.144100.420700 | Slab Formwork | 16d | 2026-03-03 | 2026-03-18 | 65FS-2d |  | 7 day week with NGT | 8004062 |
| 67 | 37400.37600.39600.44300.46100.144100.420800 | Slab Reinforcement | 14d | 2026-03-07 | 2026-03-20 | 66FS-12d |  | 7 day week with NGT | 8004072 |
| 68 | 37400.37600.39600.44300.46100.144100.420900 | Monolithic Casting | 8d | 2026-03-14 | 2026-03-21 | 67FF+1d |  | 7 day week with NGT | 8004082 |
| 69 | 37400.37600.39600.44300.46100.144200 | **Third Floor Roof** | 18d | 2026-03-22 | 2026-04-08 |  | start no earlier than 2026-03-22 | 7 day week with NGT | 7999812 |
| 70 | 37400.37600.39600.44300.46100.144200.421000 | Column and Shear Wall Reinforcement | 7d | 2026-03-22 | 2026-03-28 | 68 |  | 7 day week with NGT | 8004092 |
| 71 | 37400.37600.39600.44300.46100.144200.421100 | Column and Shear Wall Formwork | 7d | 2026-03-23 | 2026-03-29 | 70FF+1d |  | 7 day week with NGT | 8004102 |
| 72 | 37400.37600.39600.44300.46100.144200.421200 | Slab Formwork | 9d | 2026-03-28 | 2026-04-05 | 71FS-2d |  | 7 day week with NGT | 8004112 |
| 73 | 37400.37600.39600.44300.46100.144200.421300 | Slab Reinforcement | 10d | 2026-03-29 | 2026-04-07 | 72FF+2d |  | 7 day week with NGT | 8004122 |
| 74 | 37400.37600.39600.44300.46100.144200.421400 | Monolithic Casting | 8d | 2026-04-01 | 2026-04-08 | 73FF+1d |  | 7 day week with NGT | 8004132 |
| 75 | 37400.37600.39600.44300.46100.144300 | **4th Floor Roof** | 12d | 2026-04-09 | 2026-04-20 |  | start no earlier than 2026-04-09 | 7 day week with NGT | 7999802 |
| 76 | 37400.37600.39600.44300.46100.144300.421500 | Column and Shear Wall Reinforcement | 5d | 2026-04-09 | 2026-04-13 | 74 |  | 7 day week with NGT | 8004142 |
| 77 | 37400.37600.39600.44300.46100.144300.421600 | Column and Shear Wall Formwork | 5d | 2026-04-10 | 2026-04-14 | 76FF+1d |  | 7 day week with NGT | 8004152 |
| 78 | 37400.37600.39600.44300.46100.144300.421700 | Slab Formwork | 5d | 2026-04-13 | 2026-04-17 | 77FS-2d |  | 7 day week with NGT | 8004162 |
| 79 | 37400.37600.39600.44300.46100.144300.421800 | Slab Reinforcement | 5d | 2026-04-15 | 2026-04-19 | 78FF+2d |  | 7 day week with NGT | 8004172 |
| 80 | 37400.37600.39600.44300.46100.144300.421900 | Monolithic Casting | 2d | 2026-04-19 | 2026-04-20 | 79FF+1d |  | 7 day week with NGT | 8004182 |

| ID | WBS | Task | Duration | Start | Finish | Predecessors | Constraint | Calendar | Unique_Task_ID |
| --- | --- | --- | --- | --- | --- | --- | --- | --- | --- |
| 81 | 37400.37600.39600.44300.46100.144400 | **5th Floor Roof** | 12d | 2026-04-21 | 2026-05-02 |  | start no earlier than 2026-04-21 | 7 day week with NGT | 7999792 |
| 82 | 37400.37600.39600.44300.46100.144400.422000 | Column and Shear Wall Reinforcement | 5d | 2026-04-21 | 2026-04-25 | 80 |  | 7 day week with NGT | 8004192 |
| 83 | 37400.37600.39600.44300.46100.144400.422100 | Column and Shear Wall Formwork | 5d | 2026-04-22 | 2026-04-26 | 82FF+1d |  | 7 day week with NGT | 8004202 |
| 84 | 37400.37600.39600.44300.46100.144400.422200 | Slab Formwork | 5d | 2026-04-25 | 2026-04-29 | 83FS-2d |  | 7 day week with NGT | 8004212 |
| 85 | 37400.37600.39600.44300.46100.144400.422300 | Slab Reinforcement | 5d | 2026-04-27 | 2026-05-01 | 84FF+2d |  | 7 day week with NGT | 8004222 |
| 86 | 37400.37600.39600.44300.46100.144400.422400 | Monolithic Casting | 2d | 2026-05-01 | 2026-05-02 | 85FF+1d |  | 7 day week with NGT | 8004232 |
| 87 | 37400.37600.39600.44300.46100.144500 | **6th Floor Roof** | 12d | 2026-05-03 | 2026-05-14 |  | start no earlier than 2026-05-03 | 7 day week with NGT | 7999782 |
| 88 | 37400.37600.39600.44300.46100.144500.422500 | Column and Shear Wall Reinforcement | 5d | 2026-05-03 | 2026-05-07 | 86 |  | 7 day week with NGT | 8004242 |
| 89 | 37400.37600.39600.44300.46100.144500.422600 | Column and Shear Wall Formwork | 5d | 2026-05-04 | 2026-05-08 | 88FF+1d |  | 7 day week with NGT | 8004252 |
| 90 | 37400.37600.39600.44300.46100.144500.422700 | Slab Formwork | 5d | 2026-05-07 | 2026-05-11 | 89FS-2d |  | 7 day week with NGT | 8004262 |
| 91 | 37400.37600.39600.44300.46100.144500.422800 | Slab Reinforcement | 5d | 2026-05-09 | 2026-05-13 | 90FF+2d |  | 7 day week with NGT | 8004272 |
| 92 | 37400.37600.39600.44300.46100.144500.422900 | Monolithic Casting | 2d | 2026-05-13 | 2026-05-14 | 91FF+1d |  | 7 day week with NGT | 8004282 |
| 93 | 37400.37600.39600.44300.46100.144600 | **7th Floor Roof** | 12d | 2026-05-15 | 2026-05-26 |  | start no earlier than 2026-05-15 | 7 day week with NGT | 7999772 |
| 94 | 37400.37600.39600.44300.46100.144600.423000 | Column and Shear Wall Reinforcement | 5d | 2026-05-15 | 2026-05-19 | 92 |  | 7 day week with NGT | 8004292 |
| 95 | 37400.37600.39600.44300.46100.144600.423100 | Column and Shear Wall Formwork | 5d | 2026-05-16 | 2026-05-20 | 94FF+1d |  | 7 day week with NGT | 8004302 |
| 96 | 37400.37600.39600.44300.46100.144600.423200 | Slab Formwork | 5d | 2026-05-19 | 2026-05-23 | 95FS-2d |  | 7 day week with NGT | 8004312 |
| 97 | 37400.37600.39600.44300.46100.144600.423300 | Slab Reinforcement | 5d | 2026-05-21 | 2026-05-25 | 96FF+2d |  | 7 day week with NGT | 8004322 |
| 98 | 37400.37600.39600.44300.46100.144600.423400 | Monolithic Casting | 2d | 2026-05-25 | 2026-05-26 | 97FF+1d |  | 7 day week with NGT | 8004332 |
| 99 | 37400.37600.39600.44300.46100.144700 | **8th Floor Roof** | 12d | 2026-05-27 | 2026-06-07 |  | start no earlier than 2026-05-27 | 7 day week with NGT | 7999762 |
| 100 | 37400.37600.39600.44300.46100.144700.423500 | Column and Shear Wall Reinforcement | 5d | 2026-05-27 | 2026-05-31 | 98 |  | 7 day week with NGT | 8004342 |
| 101 | 37400.37600.39600.44300.46100.144700.423600 | Column and Shear Wall Formwork | 5d | 2026-05-28 | 2026-06-01 | 100FF+1d |  | 7 day week with NGT | 8004352 |
| 102 | 37400.37600.39600.44300.46100.144700.423700 | Slab Formwork | 5d | 2026-05-31 | 2026-06-04 | 101FS-2d |  | 7 day week with NGT | 8004362 |
| 103 | 37400.37600.39600.44300.46100.144700.423800 | Slab Reinforcement | 5d | 2026-06-02 | 2026-06-06 | 102FF+2d |  | 7 day week with NGT | 8004372 |
| 104 | 37400.37600.39600.44300.46100.144700.423900 | Monolithic Casting | 2d | 2026-06-06 | 2026-06-07 | 103FF+1d |  | 7 day week with NGT | 8004382 |

| ID | WBS | Task | Duration | Start | Finish | Predecessors | Constraint | Calendar | Unique_Task_ID |
| --- | --- | --- | --- | --- | --- | --- | --- | --- | --- |
| 105 | 37400.37600.39600.44300.46100.144800 | **9th Floor Roof** | 12d | 2026-06-08 | 2026-06-19 |  | start no earlier than 2026-06-08 | 7 day week with NGT | 7999752 |
| 106 | 37400.37600.39600.44300.46100.144800.424000 | Column and Shear Wall Reinforcement | 5d | 2026-06-08 | 2026-06-12 | 104 |  | 7 day week with NGT | 8004392 |
| 107 | 37400.37600.39600.44300.46100.144800.424100 | Column and Shear Wall Formwork | 5d | 2026-06-09 | 2026-06-13 | 106FF+1d |  | 7 day week with NGT | 8004402 |
| 108 | 37400.37600.39600.44300.46100.144800.424200 | Slab Formwork | 5d | 2026-06-12 | 2026-06-16 | 107FS-2d |  | 7 day week with NGT | 8004412 |
| 109 | 37400.37600.39600.44300.46100.144800.424300 | Slab Reinforcement | 5d | 2026-06-14 | 2026-06-18 | 108FF+2d |  | 7 day week with NGT | 8004422 |
| 110 | 37400.37600.39600.44300.46100.144800.424400 | Monolithic Casting | 2d | 2026-06-18 | 2026-06-19 | 109FF+1d |  | 7 day week with NGT | 8004432 |
| 111 | 37400.37600.39600.44300.46100.144900 | **10th Floor Roof** | 12d | 2026-06-20 | 2026-07-01 |  | start no earlier than 2026-06-20 | 7 day week with NGT | 7999742 |
| 112 | 37400.37600.39600.44300.46100.144900.424500 | Column and Shear Wall Reinforcement | 5d | 2026-06-20 | 2026-06-24 | 110 |  | 7 day week with NGT | 8004442 |
| 113 | 37400.37600.39600.44300.46100.144900.424600 | Column and Shear Wall Formwork | 5d | 2026-06-21 | 2026-06-25 | 112FF+1d |  | 7 day week with NGT | 8004452 |
| 114 | 37400.37600.39600.44300.46100.144900.424700 | Slab Formwork | 5d | 2026-06-24 | 2026-06-28 | 113FS-2d |  | 7 day week with NGT | 8004462 |
| 115 | 37400.37600.39600.44300.46100.144900.424800 | Slab Reinforcement | 5d | 2026-06-26 | 2026-06-30 | 114FF+2d |  | 7 day week with NGT | 8004472 |
| 116 | 37400.37600.39600.44300.46100.144900.424900 | Monolithic Casting | 2d | 2026-06-30 | 2026-07-01 | 115FF+1d |  | 7 day week with NGT | 8004482 |
| 117 | 37400.37600.39600.44300.46100.145000 | **11th Floor Roof** | 12d | 2026-07-02 | 2026-07-13 |  | start no earlier than 2026-07-02 | 7 day week with NGT | 7999732 |
| 118 | 37400.37600.39600.44300.46100.145000.425000 | Column and Shear Wall Reinforcement | 5d | 2026-07-02 | 2026-07-06 | 116 |  | 7 day week with NGT | 8004492 |
| 119 | 37400.37600.39600.44300.46100.145000.425100 | Column and Shear Wall Formwork | 5d | 2026-07-03 | 2026-07-07 | 118FF+1d |  | 7 day week with NGT | 8004502 |
| 120 | 37400.37600.39600.44300.46100.145000.425200 | Slab Formwork | 5d | 2026-07-06 | 2026-07-10 | 119FS-2d |  | 7 day week with NGT | 8004512 |
| 121 | 37400.37600.39600.44300.46100.145000.425300 | Slab Reinforcement | 5d | 2026-07-08 | 2026-07-12 | 120FF+2d |  | 7 day week with NGT | 8004522 |
| 122 | 37400.37600.39600.44300.46100.145000.425400 | Monolithic Casting | 2d | 2026-07-12 | 2026-07-13 | 121FF+1d |  | 7 day week with NGT | 8004532 |
| 123 | 37400.37600.39600.44300.46100.145100 | **12th Floor Roof** | 12d | 2026-07-14 | 2026-07-25 |  | start no earlier than 2026-07-14 | 7 day week with NGT | 7999722 |
| 124 | 37400.37600.39600.44300.46100.145100.425500 | Column and Shear Wall Reinforcement | 5d | 2026-07-14 | 2026-07-18 | 122 |  | 7 day week with NGT | 8004542 |
| 125 | 37400.37600.39600.44300.46100.145100.425600 | Column and Shear Wall Formwork | 5d | 2026-07-15 | 2026-07-19 | 124FF+1d |  | 7 day week with NGT | 8004552 |
| 126 | 37400.37600.39600.44300.46100.145100.425700 | Slab Formwork | 5d | 2026-07-18 | 2026-07-22 | 125FS-2d |  | 7 day week with NGT | 8004562 |
| 127 | 37400.37600.39600.44300.46100.145100.425800 | Slab Reinforcement | 5d | 2026-07-20 | 2026-07-24 | 126FF+2d |  | 7 day week with NGT | 8004572 |
| 128 | 37400.37600.39600.44300.46100.145100.425900 | Monolithic Casting | 2d | 2026-07-24 | 2026-07-25 | 127FF+1d |  | 7 day week with NGT | 8004582 |

| ID | WBS | Task | Duration | Start | Finish | Predecessors | Constraint | Calendar | Unique_Task_ID |
| --- | --- | --- | --- | --- | --- | --- | --- | --- | --- |
| 129 | 37400.37600.39600.44300.46100.145200 | **13th Floor Roof** | 12d | 2026-07-26 | 2026-08-06 |  | start no earlier than 2026-07-26 | 7 day week with NGT | 7999712 |
| 130 | 37400.37600.39600.44300.46100.145200.426000 | Column and Shear Wall Reinforcement | 5d | 2026-07-26 | 2026-07-30 | 128 |  | 7 day week with NGT | 8004592 |
| 131 | 37400.37600.39600.44300.46100.145200.426100 | Column and Shear Wall Formwork | 5d | 2026-07-27 | 2026-07-31 | 130FF+1d |  | 7 day week with NGT | 8004602 |
| 132 | 37400.37600.39600.44300.46100.145200.426200 | Slab Formwork | 5d | 2026-07-30 | 2026-08-03 | 131FS-2d |  | 7 day week with NGT | 8004612 |
| 133 | 37400.37600.39600.44300.46100.145200.426300 | Slab Reinforcement | 5d | 2026-08-01 | 2026-08-05 | 132FF+2d |  | 7 day week with NGT | 8004622 |
| 134 | 37400.37600.39600.44300.46100.145200.426400 | Monolithic Casting | 2d | 2026-08-05 | 2026-08-06 | 133FF+1d |  | 7 day week with NGT | 8004632 |
| 135 | 37400.37600.39600.44300.46100.145300 | **14th Floor Roof** | 12d | 2026-08-07 | 2026-08-18 |  | start no earlier than 2026-08-07 | 7 day week with NGT | 7999702 |
| 136 | 37400.37600.39600.44300.46100.145300.426500 | Column and Shear Wall Reinforcement | 5d | 2026-08-07 | 2026-08-11 | 134 |  | 7 day week with NGT | 8004642 |
| 137 | 37400.37600.39600.44300.46100.145300.426600 | Column and Shear Wall Formwork | 5d | 2026-08-08 | 2026-08-12 | 136FF+1d |  | 7 day week with NGT | 8004652 |
| 138 | 37400.37600.39600.44300.46100.145300.426700 | Slab Formwork | 5d | 2026-08-11 | 2026-08-15 | 137FS-2d |  | 7 day week with NGT | 8004662 |
| 139 | 37400.37600.39600.44300.46100.145300.426800 | Slab Reinforcement | 5d | 2026-08-13 | 2026-08-17 | 138FF+2d |  | 7 day week with NGT | 8004672 |
| 140 | 37400.37600.39600.44300.46100.145300.426900 | Monolithic Casting | 2d | 2026-08-17 | 2026-08-18 | 139FF+1d |  | 7 day week with NGT | 8004682 |
| 141 | 37400.37600.39600.44300.46100.145400 | **15th Floor Roof** | 12d | 2026-08-19 | 2026-08-30 |  | start no earlier than 2026-08-19 | 7 day week with NGT | 7999692 |
| 142 | 37400.37600.39600.44300.46100.145400.427000 | Column and Shear Wall Reinforcement | 5d | 2026-08-19 | 2026-08-23 | 140 |  | 7 day week with NGT | 8004692 |
| 143 | 37400.37600.39600.44300.46100.145400.427100 | Column and Shear Wall Formwork | 5d | 2026-08-20 | 2026-08-24 | 142FF+1d |  | 7 day week with NGT | 8004702 |
| 144 | 37400.37600.39600.44300.46100.145400.427200 | Slab Formwork | 5d | 2026-08-23 | 2026-08-27 | 143FS-2d |  | 7 day week with NGT | 8004712 |
| 145 | 37400.37600.39600.44300.46100.145400.427300 | Slab Reinforcement | 5d | 2026-08-25 | 2026-08-29 | 144FF+2d |  | 7 day week with NGT | 8004722 |
| 146 | 37400.37600.39600.44300.46100.145400.427400 | Monolithic Casting | 2d | 2026-08-29 | 2026-08-30 | 145FF+1d |  | 7 day week with NGT | 8004732 |
| 147 | 37400.37600.39600.44300.46100.145500 | **16th Floor Roof** | 17d | 2026-08-31 | 2026-09-16 |  | start no earlier than 2026-08-31 | 7 day week with NGT | 7999682 |
| 148 | 37400.37600.39600.44300.46100.145500.427500 | Column and Shear Wall Reinforcement | 7d | 2026-08-31 | 2026-09-06 | 146 |  | 7 day week with NGT | 8004742 |
| 149 | 37400.37600.39600.44300.46100.145500.427600 | Column and Shear Wall Formwork | 7d | 2026-09-01 | 2026-09-07 | 148FF+1d |  | 7 day week with NGT | 8004752 |
| 150 | 37400.37600.39600.44300.46100.145500.427700 | Slab Formwork | 8d | 2026-09-06 | 2026-09-13 | 149FS-2d |  | 7 day week with NGT | 8004762 |
| 151 | 37400.37600.39600.44300.46100.145500.427800 | Slab Reinforcement | 7d | 2026-09-09 | 2026-09-15 | 150FF+2d |  | 7 day week with NGT | 8004772 |
| 152 | 37400.37600.39600.44300.46100.145500.427900 | Monolithic Casting | 4d | 2026-09-13 | 2026-09-16 | 151FF+1d |  | 7 day week with NGT | 8004782 |

| ID | WBS | Task | Duration | Start | Finish | Predecessors | Constraint | Calendar | Unique_Task_ID |
| --- | --- | --- | --- | --- | --- | --- | --- | --- | --- |
| 153 | 37400.37600.39600.44300.46100.145600 | **17th Floor Roof** | 12d | 2026-09-17 | 2026-09-28 |  | start no earlier than 2026-09-17 | 7 day week with NGT | 7999672 |
| 154 | 37400.37600.39600.44300.46100.145600.428000 | Column and Shear Wall Reinforcement | 5d | 2026-09-17 | 2026-09-21 | 152 |  | 7 day week with NGT | 8004792 |
| 155 | 37400.37600.39600.44300.46100.145600.428100 | Column and Shear Wall Formwork | 5d | 2026-09-18 | 2026-09-22 | 154FF+1d |  | 7 day week with NGT | 8004802 |
| 156 | 37400.37600.39600.44300.46100.145600.428200 | Slab Formwork | 5d | 2026-09-21 | 2026-09-25 | 155FS-2d |  | 7 day week with NGT | 8004812 |
| 157 | 37400.37600.39600.44300.46100.145600.428300 | Slab Reinforcement | 5d | 2026-09-23 | 2026-09-27 | 156FF+2d |  | 7 day week with NGT | 8004822 |
| 158 | 37400.37600.39600.44300.46100.145600.428400 | Monolithic Casting | 2d | 2026-09-27 | 2026-09-28 | 157FF+1d |  | 7 day week with NGT | 8004832 |
| 159 | 37400.37600.39600.44300.46100.145700 | **18th Floor Roof** | 12d | 2026-09-29 | 2026-10-10 |  | start no earlier than 2026-09-29 | 7 day week with NGT | 7999662 |
| 160 | 37400.37600.39600.44300.46100.145700.428500 | Column and Shear Wall Reinforcement | 6d | 2026-09-29 | 2026-10-04 | 158 |  | 7 day week with NGT | 8004842 |
| 161 | 37400.37600.39600.44300.46100.145700.428600 | Column and Shear Wall Formwork | 5d | 2026-10-01 | 2026-10-05 | 160FF+1d |  | 7 day week with NGT | 8004852 |
| 162 | 37400.37600.39600.44300.46100.145700.428700 | Slab Formwork | 5d | 2026-10-04 | 2026-10-08 | 161FS-2d |  | 7 day week with NGT | 8004862 |
| 163 | 37400.37600.39600.44300.46100.145700.428800 | Slab Reinforcement | 5d | 2026-10-05 | 2026-10-09 | 162FF+1d |  | 7 day week with NGT | 8004872 |
| 164 | 37400.37600.39600.44300.46100.145700.428900 | Monolithic Casting | 2d | 2026-10-09 | 2026-10-10 | 163FF+1d |  | 7 day week with NGT | 8004882 |
| 165 | 37400.37600.39600.44300.46100.145800 | **19th Floor Roof** | 11d | 2026-10-11 | 2026-10-21 |  | start no earlier than 2026-10-11 | 7 day week with NGT | 7999652 |
| 166 | 37400.37600.39600.44300.46100.145800.429000 | Column and Shear Wall Reinforcement | 4d | 2026-10-11 | 2026-10-14 | 164 |  | 7 day week with NGT | 8004892 |
| 167 | 37400.37600.39600.44300.46100.145800.429100 | Column and Shear Wall Formwork | 4d | 2026-10-12 | 2026-10-15 | 166FF+1d |  | 7 day week with NGT | 8004902 |
| 168 | 37400.37600.39600.44300.46100.145800.429200 | Slab Formwork | 6d | 2026-10-14 | 2026-10-19 | 167FS-2d |  | 7 day week with NGT | 8004912 |
| 169 | 37400.37600.39600.44300.46100.145800.429300 | Slab Reinforcement | 5d | 2026-10-16 | 2026-10-20 | 168FF+1d |  | 7 day week with NGT | 8004922 |
| 170 | 37400.37600.39600.44300.46100.145800.429400 | Monolithic Casting | 4d | 2026-10-18 | 2026-10-21 | 169FF+1d |  | 7 day week with NGT | 8004932 |
| 171 | 37400.37600.39600.44300.46100.145900 | **20th Floor Roof** | 11d | 2026-10-22 | 2026-12-16 |  | start no earlier than 2026-10-22 | 7 day week with NGT | 7999642 |
| 172 | 37400.37600.39600.44300.46100.145900.429500 | Column and Shear Wall Reinforcement | 4d | 2026-10-22 | 2026-10-25 | 170 |  | 7 day week with NGT | 8004942 |
| 173 | 37400.37600.39600.44300.46100.145900.429600 | Column and Shear Wall Formwork | 4d | 2026-10-23 | 2026-10-26 | 172FF+1d |  | 7 day week with NGT | 8004952 |
| 174 | 37400.37600.39600.44300.46100.145900.429700 | Slab Formwork | 6d | 2026-10-25 | 2026-10-30 | 173FS-2d |  | 7 day week with NGT | 8004962 |
| 175 | 37400.37600.39600.44300.46100.145900.429800 | Slab Reinforcement | 5d | 2026-10-27 | 2026-10-31 | 174FF+1d |  | 7 day week with NGT | 8004972 |
| 176 | 37400.37600.39600.44300.46100.145900.429900 | Monolithic Casting | 4d | 2026-10-29 | 2026-12-16 | 175FF+1d |  | 7 day week with NGT | 8004982 |

| ID | WBS | Task | Duration | Start | Finish | Predecessors | Constraint | Calendar | Unique_Task_ID |
| --- | --- | --- | --- | --- | --- | --- | --- | --- | --- |
| 177 | 37400.37600.39600.44300.46100.146000 | **21th Floor Roof** | 11d | 2026-12-17 | 2026-12-27 |  | start no earlier than 2026-12-17 | 7 day week with NGT | 7999632 |
| 178 | 37400.37600.39600.44300.46100.146000.430000 | Column and Shear Wall Reinforcement | 4d | 2026-12-17 | 2026-12-20 | 176 |  | 7 day week with NGT | 8004992 |
| 179 | 37400.37600.39600.44300.46100.146000.430100 | Column and Shear Wall Formwork | 4d | 2026-12-18 | 2026-12-21 | 178FF+1d |  | 7 day week with NGT | 8005002 |
| 180 | 37400.37600.39600.44300.46100.146000.430200 | Slab Formwork | 6d | 2026-12-20 | 2026-12-25 | 179FS-2d |  | 7 day week with NGT | 8005012 |
| 181 | 37400.37600.39600.44300.46100.146000.430300 | Slab Reinforcement | 5d | 2026-12-22 | 2026-12-26 | 180FF+1d |  | 7 day week with NGT | 8005022 |
| 182 | 37400.37600.39600.44300.46100.146000.430400 | Monolithic Casting | 4d | 2026-12-24 | 2026-12-27 | 181FF+1d |  | 7 day week with NGT | 8005032 |
| 183 | 37400.37600.39600.44300.46100.146100 | **22th Floor Roof** | 11d | 2026-12-28 | 2027-01-07 |  | start no earlier than 2026-12-28 | 7 day week with NGT | 7999622 |
| 184 | 37400.37600.39600.44300.46100.146100.430500 | Column and Shear Wall Reinforcement | 4d | 2026-12-28 | 2026-12-31 | 182 |  | 7 day week with NGT | 8005042 |
| 185 | 37400.37600.39600.44300.46100.146100.430600 | Column and Shear Wall Formwork | 4d | 2026-12-29 | 2027-01-01 | 184FF+1d |  | 7 day week with NGT | 8005052 |
| 186 | 37400.37600.39600.44300.46100.146100.430700 | Slab Formwork | 6d | 2026-12-31 | 2027-01-05 | 185FS-2d |  | 7 day week with NGT | 8005062 |
| 187 | 37400.37600.39600.44300.46100.146100.430800 | Slab Reinforcement | 5d | 2027-01-02 | 2027-01-06 | 186FF+1d |  | 7 day week with NGT | 8005072 |
| 188 | 37400.37600.39600.44300.46100.146100.430900 | Monolithic Casting | 4d | 2027-01-04 | 2027-01-07 | 187FF+1d |  | 7 day week with NGT | 8005082 |
| 189 | 37400.37600.39600.44300.46100.146200 | **23th Floor Roof** | 11d | 2027-01-08 | 2027-01-18 |  | start no earlier than 2027-01-08 | 7 day week with NGT | 7999612 |
| 190 | 37400.37600.39600.44300.46100.146200.431000 | Column and Shear Wall Reinforcement | 4d | 2027-01-08 | 2027-01-11 | 188 |  | 7 day week with NGT | 8005092 |
| 191 | 37400.37600.39600.44300.46100.146200.431100 | Column and Shear Wall Formwork | 4d | 2027-01-09 | 2027-01-12 | 190FF+1d |  | 7 day week with NGT | 8005102 |
| 192 | 37400.37600.39600.44300.46100.146200.431200 | Slab Formwork | 6d | 2027-01-11 | 2027-01-16 | 191FS-2d |  | 7 day week with NGT | 8005112 |
| 193 | 37400.37600.39600.44300.46100.146200.431300 | Slab Reinforcement | 5d | 2027-01-13 | 2027-01-17 | 192FF+1d |  | 7 day week with NGT | 8005122 |
| 194 | 37400.37600.39600.44300.46100.146200.431400 | Monolithic Casting | 4d | 2027-01-15 | 2027-01-18 | 193FF+1d |  | 7 day week with NGT | 8005132 |
| 195 | 37400.37600.39600.44300.46100.146300 | **24th Floor Roof** | 11d | 2027-01-19 | 2027-01-29 |  | start no earlier than 2027-01-19 | 7 day week with NGT | 7999602 |
| 196 | 37400.37600.39600.44300.46100.146300.431500 | Column and Shear Wall Reinforcement | 4d | 2027-01-19 | 2027-01-22 | 194 |  | 7 day week with NGT | 8005142 |
| 197 | 37400.37600.39600.44300.46100.146300.431600 | Column and Shear Wall Formwork | 4d | 2027-01-20 | 2027-01-23 | 196FF+1d |  | 7 day week with NGT | 8005152 |
| 198 | 37400.37600.39600.44300.46100.146300.431700 | Slab Formwork | 6d | 2027-01-22 | 2027-01-27 | 197FS-2d |  | 7 day week with NGT | 8005162 |
| 199 | 37400.37600.39600.44300.46100.146300.431800 | Slab Reinforcement | 5d | 2027-01-24 | 2027-01-28 | 198FF+1d |  | 7 day week with NGT | 8005172 |
| 200 | 37400.37600.39600.44300.46100.146300.431900 | Monolithic Casting | 4d | 2027-01-26 | 2027-01-29 | 199FF+1d |  | 7 day week with NGT | 8005182 |

| ID | WBS | Task | Duration | Start | Finish | Predecessors | Constraint | Calendar | Unique_Task_ID |
| --- | --- | --- | --- | --- | --- | --- | --- | --- | --- |
| 201 | 37400.37600.39600.44300.46100.146400 | **25th Floor Roof** | 11d | 2027-01-30 | 2027-02-09 |  | start no earlier than 2027-01-30 | 7 day week with NGT | 7999592 |
| 202 | 37400.37600.39600.44300.46100.146400.432000 | Column and Shear Wall Reinforcement | 4d | 2027-01-30 | 2027-02-02 | 200 |  | 7 day week with NGT | 8005192 |
| 203 | 37400.37600.39600.44300.46100.146400.432100 | Column and Shear Wall Formwork | 4d | 2027-01-31 | 2027-02-03 | 202FF+1d |  | 7 day week with NGT | 8005202 |
| 204 | 37400.37600.39600.44300.46100.146400.432200 | Slab Formwork | 6d | 2027-02-02 | 2027-02-07 | 203FS-2d |  | 7 day week with NGT | 8005212 |
| 205 | 37400.37600.39600.44300.46100.146400.432300 | Slab Reinforcement | 5d | 2027-02-04 | 2027-02-08 | 204FF+1d |  | 7 day week with NGT | 8005222 |
| 206 | 37400.37600.39600.44300.46100.146400.432400 | Monolithic Casting | 4d | 2027-02-06 | 2027-02-09 | 205FF+1d |  | 7 day week with NGT | 8005232 |
| 207 | 37400.37600.39600.44300.46100.146500 | **26th Floor Roof** | 17d | 2027-02-10 | 2027-02-26 |  | start no earlier than 2027-02-10 | 7 day week with NGT | 7999582 |
| 208 | 37400.37600.39600.44300.46100.146500.432500 | Column and Shear Wall Reinforcement | 8d | 2027-02-10 | 2027-02-17 | 206 |  | 7 day week with NGT | 8005242 |
| 209 | 37400.37600.39600.44300.46100.146500.432600 | Column and Shear Wall Formwork | 8d | 2027-02-11 | 2027-02-18 | 208FF+1d |  | 7 day week with NGT | 8005252 |
| 210 | 37400.37600.39600.44300.46100.146500.432700 | Slab Formwork | 8d | 2027-02-17 | 2027-02-24 | 209FS-2d |  | 7 day week with NGT | 8005262 |
| 211 | 37400.37600.39600.44300.46100.146500.432800 | Slab Reinforcement | 8d | 2027-02-18 | 2027-02-25 | 210FF+1d |  | 7 day week with NGT | 8005272 |
| 212 | 37400.37600.39600.44300.46100.146500.432900 | Monolithic Casting | 4d | 2027-02-23 | 2027-02-26 | 211FF+1d |  | 7 day week with NGT | 8005282 |
| 213 | 37400.37600.39600.44300.46100.146600 | **27th Floor Roof** | 11d | 2027-02-27 | 2027-03-09 |  | start no earlier than 2027-02-27 | 7 day week with NGT | 7999572 |
| 214 | 37400.37600.39600.44300.46100.146600.433000 | Column and Shear Wall Reinforcement | 4d | 2027-02-27 | 2027-03-02 | 212 |  | 7 day week with NGT | 8005292 |
| 215 | 37400.37600.39600.44300.46100.146600.433100 | Column and Shear Wall Formwork | 4d | 2027-02-28 | 2027-03-03 | 214FF+1d |  | 7 day week with NGT | 8005302 |
| 216 | 37400.37600.39600.44300.46100.146600.433200 | Slab Formwork | 6d | 2027-03-02 | 2027-03-07 | 215FS-2d |  | 7 day week with NGT | 8005312 |
| 217 | 37400.37600.39600.44300.46100.146600.433300 | Slab Reinforcement | 5d | 2027-03-04 | 2027-03-08 | 216FF+1d |  | 7 day week with NGT | 8005322 |
| 218 | 37400.37600.39600.44300.46100.146600.433400 | Monolithic Casting | 4d | 2027-03-06 | 2027-03-09 | 217FF+1d |  | 7 day week with NGT | 8005332 |
| 219 | 37400.37600.39600.44300.46100.146700 | **28th Floor Roof** | 11d | 2027-03-10 | 2027-03-20 |  | start no earlier than 2027-03-10 | 7 day week with NGT | 7999562 |
| 220 | 37400.37600.39600.44300.46100.146700.433500 | Column and Shear Wall Reinforcement | 4d | 2027-03-10 | 2027-03-13 | 218 |  | 7 day week with NGT | 8005342 |
| 221 | 37400.37600.39600.44300.46100.146700.433600 | Column and Shear Wall Formwork | 4d | 2027-03-11 | 2027-03-14 | 220FF+1d |  | 7 day week with NGT | 8005352 |
| 222 | 37400.37600.39600.44300.46100.146700.433700 | Slab Formwork | 6d | 2027-03-13 | 2027-03-18 | 221FS-2d |  | 7 day week with NGT | 8005362 |
| 223 | 37400.37600.39600.44300.46100.146700.433800 | Slab Reinforcement | 5d | 2027-03-15 | 2027-03-19 | 222FF+1d |  | 7 day week with NGT | 8005372 |
| 224 | 37400.37600.39600.44300.46100.146700.433900 | Monolithic Casting | 4d | 2027-03-17 | 2027-03-20 | 223FF+1d |  | 7 day week with NGT | 8005382 |

| ID | WBS | Task | Duration | Start | Finish | Predecessors | Constraint | Calendar | Unique_Task_ID |
| --- | --- | --- | --- | --- | --- | --- | --- | --- | --- |
| 225 | 37400.37600.39600.44300.46100.146800 | **29th Floor Roof** | 11d | 2027-03-21 | 2027-03-31 |  | start no earlier than 2027-03-21 | 7 day week with NGT | 7999552 |
| 226 | 37400.37600.39600.44300.46100.146800.434000 | Column and Shear Wall Reinforcement | 4d | 2027-03-21 | 2027-03-24 | 224 |  | 7 day week with NGT | 8005392 |
| 227 | 37400.37600.39600.44300.46100.146800.434100 | Column and Shear Wall Formwork | 4d | 2027-03-22 | 2027-03-25 | 226FF+1d |  | 7 day week with NGT | 8005402 |
| 228 | 37400.37600.39600.44300.46100.146800.434200 | Slab Formwork | 6d | 2027-03-24 | 2027-03-29 | 227FS-2d |  | 7 day week with NGT | 8005412 |
| 229 | 37400.37600.39600.44300.46100.146800.434300 | Slab Reinforcement | 5d | 2027-03-26 | 2027-03-30 | 228FF+1d |  | 7 day week with NGT | 8005422 |
| 230 | 37400.37600.39600.44300.46100.146800.434400 | Monolithic Casting | 4d | 2027-03-28 | 2027-03-31 | 229FF+1d |  | 7 day week with NGT | 8005432 |
| 231 | 37400.37600.39600.44300.46100.146900 | **30th Floor Roof** | 11d | 2027-04-01 | 2027-04-11 |  | start no earlier than 2027-04-01 | 7 day week with NGT | 7999542 |
| 232 | 37400.37600.39600.44300.46100.146900.434500 | Column and Shear Wall Reinforcement | 4d | 2027-04-01 | 2027-04-04 | 230 |  | 7 day week with NGT | 8005442 |
| 233 | 37400.37600.39600.44300.46100.146900.434600 | Column and Shear Wall Formwork | 4d | 2027-04-02 | 2027-04-05 | 232FF+1d |  | 7 day week with NGT | 8005452 |
| 234 | 37400.37600.39600.44300.46100.146900.434700 | Slab Formwork | 6d | 2027-04-04 | 2027-04-09 | 233FS-2d |  | 7 day week with NGT | 8005462 |
| 235 | 37400.37600.39600.44300.46100.146900.434800 | Slab Reinforcement | 5d | 2027-04-06 | 2027-04-10 | 234FF+1d |  | 7 day week with NGT | 8005472 |
| 236 | 37400.37600.39600.44300.46100.146900.434900 | Monolithic Casting | 4d | 2027-04-08 | 2027-04-11 | 235FF+1d |  | 7 day week with NGT | 8005482 |
| 237 | 37400.37600.39600.44300.46100.147000 | **31th Floor Roof** | 13d | 2027-04-12 | 2027-04-24 |  | start no earlier than 2027-04-12 | 7 day week with NGT | 134975 |
| 238 | 37400.37600.39600.44300.46100.147000.435000 | Column and Shear Wall Reinforcement | 6d | 2027-04-12 | 2027-04-17 | 236 |  | 7 day week with NGT | 134985 |
| 239 | 37400.37600.39600.44300.46100.147000.435100 | Column and Shear Wall Formwork | 5d | 2027-04-14 | 2027-04-18 | 238FF+1d |  | 7 day week with NGT | 134995 |
| 240 | 37400.37600.39600.44300.46100.147000.435200 | Slab Formwork | 5d | 2027-04-17 | 2027-04-21 | 239FS-2d |  | 7 day week with NGT | 135005 |
| 241 | 37400.37600.39600.44300.46100.147000.435300 | Slab Reinforcement | 6d | 2027-04-18 | 2027-04-23 | 240FF+2d |  | 7 day week with NGT | 135015 |
| 242 | 37400.37600.39600.44300.46100.147000.435400 | Monolithic Casting | 4d | 2027-04-21 | 2027-04-24 | 241FF+1d |  | 7 day week with NGT | 135025 |
| 243 | 37400.37600.39600.44300.46100.147100 | **32th Floor Roof** | 17d | 2027-04-25 | 2027-05-11 |  | start no earlier than 2027-04-25 | 7 day week with NGT | 7999532 |
| 244 | 37400.37600.39600.44300.46100.147100.435500 | Column and Shear Wall Reinforcement | 8d | 2027-04-25 | 2027-05-02 | 242 |  | 7 day week with NGT | 8005492 |
| 245 | 37400.37600.39600.44300.46100.147100.435600 | Column and Shear Wall Formwork | 8d | 2027-04-26 | 2027-05-03 | 244FF+1d |  | 7 day week with NGT | 8005502 |
| 246 | 37400.37600.39600.44300.46100.147100.435700 | Slab Formwork | 8d | 2027-05-02 | 2027-05-09 | 245FS-2d |  | 7 day week with NGT | 8005512 |
| 247 | 37400.37600.39600.44300.46100.147100.435800 | Slab Reinforcement | 8d | 2027-05-03 | 2027-05-10 | 246FF+1d |  | 7 day week with NGT | 8005522 |
| 248 | 37400.37600.39600.44300.46100.147100.435900 | Monolithic Casting | 4d | 2027-05-08 | 2027-05-11 | 247FF+1d |  | 7 day week with NGT | 8005532 |

| ID | WBS | Task | Duration | Start | Finish | Predecessors | Constraint | Calendar | Unique_Task_ID |
| --- | --- | --- | --- | --- | --- | --- | --- | --- | --- |
| 249 | 37400.37600.39600.44300.49500 | **Post Pour Activitis** | 383d | 2026-03-29 | 2027-05-30 |  | start no earlier than 2026-03-29 | 7 day week with NGT | 7997842 |
| 250 | 37400.37600.39600.44300.49500.322700 | 1st Floor | 11d | 2026-03-29 | 2026-04-08 | 74FF |  | 7 day week with NGT | 8001162 |
| 251 | 37400.37600.39600.44300.49500.322800 | 2nd Floor | 11d | 2026-04-10 | 2026-04-20 | 80FF |  | 7 day week with NGT | 8001172 |
| 252 | 37400.37600.39600.44300.49500.322900 | 3rd Floor | 11d | 2026-04-22 | 2026-05-02 | 86FF |  | 7 day week with NGT | 8001182 |
| 253 | 37400.37600.39600.44300.49500.323000 | 4th Floor | 11d | 2026-05-04 | 2026-05-14 | 92FF |  | 7 day week with NGT | 8001192 |
| 254 | 37400.37600.39600.44300.49500.323100 | 5th Floor | 11d | 2026-05-16 | 2026-05-26 | 98FF |  | 7 day week with NGT | 8001202 |
| 255 | 37400.37600.39600.44300.49500.323200 | 6th Floor | 11d | 2026-05-28 | 2026-06-08 | 104FF+0.25d |  | 7 day week with NGT | 8001212 |
| 256 | 37400.37600.39600.44300.49500.323300 | 7th Floor | 11d | 2026-06-09 | 2026-06-20 | 110FF+0.25d |  | 7 day week with NGT | 8001222 |
| 257 | 37400.37600.39600.44300.49500.323400 | 8th Floor | 11d | 2026-06-21 | 2026-07-02 | 116FF+0.25d |  | 7 day week with NGT | 8001232 |
| 258 | 37400.37600.39600.44300.49500.323500 | 9th Floor | 11d | 2026-07-03 | 2026-07-14 | 122FF+0.25d |  | 7 day week with NGT | 8001242 |
| 259 | 37400.37600.39600.44300.49500.323600 | 10th Floor | 11d | 2026-07-15 | 2026-07-26 | 128FF+0.25d |  | 7 day week with NGT | 8001252 |
| 260 | 37400.37600.39600.44300.49500.323700 | 11th Floor | 11d | 2026-07-27 | 2026-08-07 | 134FF+0.25d |  | 7 day week with NGT | 8001262 |
| 261 | 37400.37600.39600.44300.49500.323800 | 12th Floor | 11d | 2026-08-08 | 2026-08-19 | 140FF+0.25d |  | 7 day week with NGT | 8001272 |
| 262 | 37400.37600.39600.44300.49500.323900 | 13th Floor | 11d | 2026-08-20 | 2026-08-31 | 146FF+0.25d |  | 7 day week with NGT | 8001282 |
| 263 | 37400.37600.39600.44300.49500.324000 | 14th floor | 11d | 2026-09-06 | 2026-09-17 | 152FF+0.25d |  | 7 day week with NGT | 8001292 |
| 264 | 37400.37600.39600.44300.49500.324100 | 15th Floor | 11d | 2026-09-18 | 2026-09-29 | 158FF+0.25d |  | 7 day week with NGT | 8001302 |
| 265 | 37400.37600.39600.44300.49500.324200 | 16th Floor | 11d | 2026-09-30 | 2026-10-11 | 164FF+0.25d |  | 7 day week with NGT | 8001312 |
| 266 | 37400.37600.39600.44300.49500.324300 | 17th Floor | 11d | 2026-10-11 | 2026-10-22 | 170FF+0.25d |  | 7 day week with NGT | 8001322 |
| 267 | 37400.37600.39600.44300.49500.324400 | 18th Floor | 11d | 2026-10-22 | 2026-12-17 | 176FF+0.25d |  | 7 day week with NGT | 8001332 |
| 268 | 37400.37600.39600.44300.49500.324500 | 19th Floor | 11d | 2026-12-17 | 2026-12-28 | 182FF+0.25d |  | 7 day week with NGT | 8001342 |
| 269 | 37400.37600.39600.44300.49500.324600 | 20th Floor | 11d | 2026-12-28 | 2027-01-08 | 188FF+0.25d |  | 7 day week with NGT | 8001352 |
| 270 | 37400.37600.39600.44300.49500.324700 | 21th Floor | 11d | 2027-01-08 | 2027-01-19 | 194FF+0.25d |  | 7 day week with NGT | 8001362 |
| 271 | 37400.37600.39600.44300.49500.324800 | 22th Floor | 11d | 2027-01-19 | 2027-01-30 | 200FF+0.25d |  | 7 day week with NGT | 8001372 |
| 272 | 37400.37600.39600.44300.49500.324900 | 23rd Floor | 11d | 2027-01-30 | 2027-02-10 | 206FF+0.25d |  | 7 day week with NGT | 8001382 |
| 273 | 37400.37600.39600.44300.49500.325000 | 24th Floor | 11d | 2027-02-16 | 2027-02-27 | 212FF+0.25d |  | 7 day week with NGT | 8001392 |
| 274 | 37400.37600.39600.44300.49500.325100 | 25th Floor | 11d | 2027-02-27 | 2027-03-10 | 218FF+0.25d |  | 7 day week with NGT | 8001402 |
| 275 | 37400.37600.39600.44300.49500.325200 | 26th Floor | 11d | 2027-03-10 | 2027-03-20 | 224FF |  | 7 day week with NGT | 8001412 |
| 276 | 37400.37600.39600.44300.49500.325300 | 27th Floor | 11d | 2027-03-21 | 2027-03-31 | 230FF |  | 7 day week with NGT | 8001422 |
| 277 | 37400.37600.39600.44300.49500.325400 | 28th Floor | 11d | 2027-04-01 | 2027-04-11 | 236FF |  | 7 day week with NGT | 8001432 |
| 278 | 37400.37600.39600.44300.49500.325500 | 29th Floor | 11d | 2027-04-14 | 2027-04-24 | 242FF |  | 7 day week with NGT | 8001442 |
| 279 | 37400.37600.39600.44300.49500.325600 | 30th Floor | 11d | 2027-04-30 | 2027-05-10 | 248FF-1d |  | 7 day week with NGT | 8001452 |
| 280 | 37400.37600.39600.44300.49500.325700 | 31st Floor | 11d | 2027-05-10 | 2027-05-20 | 279FS-1d |  | 7 day week with NGT | 8001462 |
| 281 | 37400.37600.39600.44300.49500.325800 | 32nd Floor | 11d | 2027-05-20 | 2027-05-30 | 280FS-1d |  | 7 day week with NGT | 135035 |

| ID | WBS | Task | Duration | Start | Finish | Predecessors | Constraint | Calendar | Unique_Task_ID |
| --- | --- | --- | --- | --- | --- | --- | --- | --- | --- |
| 282 | 37400.37600.39600.42000 | **Finishing Works** | 694d | 2026-02-15 | 2028-04-08 |  | start no earlier than 2026-02-15 | 7 day week with NGT | 7997722 |
| 283 | 37400.37600.39600.42000.43200 | **Flat Finishing** | 605d | 2026-02-15 | 2028-01-10 |  | start no earlier than 2026-02-15 | 7 day week with NGT | 7997752 |
| 284 | 37400.37600.39600.42000.43200.216000 | **Podium** | 215d | 2026-02-15 | 2026-09-17 |  | start no earlier than 2026-02-15 | 7 day week with NGT | 8000152 |
| 285 | 37400.37600.39600.42000.43200.216000.436000 | Blockwork | 30d | 2026-02-15 | 2026-03-16 | 55FS+30d |  | 7 day week with NGT | 8005542 |
| 286 | 37400.37600.39600.42000.43200.216000.436100 | Plaster Works | 20d | 2026-04-21 | 2026-05-10 | 285FS+35d |  | 7 day week with NGT | 8005552 |
| 287 | 37400.37600.39600.42000.43200.216000.436200 | Paint Work | 30d | 2026-06-15 | 2026-07-14 | 286FS+35d |  | 7 day week with NGT | 8005562 |
| 288 | 37400.37600.39600.42000.43200.216000.436300 | Flooring Works | 35d | 2026-08-14 | 2026-09-17 | 46, 287FS+30d |  | 7 day week with NGT | 3081 |
| 289 | 37400.37600.39600.42000.43200.215900 | **First Floor** | 187d | 2026-04-09 | 2026-10-12 |  | start no earlier than 2026-04-09 | 7 day week with NGT | 8000142 |
| 290 | 37400.37600.39600.42000.43200.215900.436400 | Blockwork | 30d | 2026-04-09 | 2026-05-08 | 250 |  | 7 day week with NGT | 135745 |
| 291 | 37400.37600.39600.42000.43200.215900.436500 | Plaster Works | 20d | 2026-04-24 | 2026-05-13 | 290SS+15d |  | 7 day week with NGT | 135755 |
| 292 | 37400.37600.39600.42000.43200.215900.436600 | Paint Works | 18d | 2026-05-09 | 2026-05-26 | 291SS+15d |  | 7 day week with NGT | 135765 |
| 293 | 37400.37600.39600.42000.43200.215900.436700 | Flooring Works | 25d | 2026-09-18 | 2026-10-12 | 288, 292 |  | 7 day week with NGT | 135775 |
| 294 | 37400.37600.39600.42000.43200.64400 | **Second Floor** | 115d | 2026-04-21 | 2026-08-13 |  | start no earlier than 2026-04-21 | 7 day week with NGT | 7997922 |
| 295 | 37400.37600.39600.42000.43200.64400.436800 | Blockwork | 10d | 2026-04-21 | 2026-04-30 | 251 |  | 7 day week with NGT | 8005572 |
| 296 | 37400.37600.39600.42000.43200.64400.436900 | Internal Plumbing Works | 6d | 2026-05-01 | 2026-05-06 | 295 |  | 7 day week with NGT | 8005582 |
| 297 | 37400.37600.39600.42000.43200.64400.437000 | Waterproofing Works | 10d | 2026-05-03 | 2026-05-12 | 296SS+2d |  | 7 day week with NGT | 8005592 |
| 298 | 37400.37600.39600.42000.43200.64400.437100 | PCC | 8d | 2026-05-15 | 2026-05-22 | 297, 300SS |  | 7 day week with NGT | 8005602 |
| 299 | 37400.37600.39600.42000.43200.64400.437200 | Electrical Wiring works | 12d | 2026-05-03 | 2026-05-14 | 297SS |  | 7 day week with NGT | 8005612 |
| 300 | 37400.37600.39600.42000.43200.64400.437300 | Internal Plaster Works | 9d | 2026-05-15 | 2026-05-23 | 296, 297, 299 |  | 7 day week with NGT | 8005622 |
| 301 | 37400.37600.39600.42000.43200.64400.437400 | Toilet Dado Works | 9d | 2026-05-24 | 2026-06-01 | 296, 297, 299, 300 |  | 7 day week with NGT | 8005632 |
| 302 | 37400.37600.39600.42000.43200.64400.437500 | Toilet Flooring Works | 7d | 2026-06-02 | 2026-06-08 | 298, 301 |  | 7 day week with NGT | 8005642 |
| 303 | 37400.37600.39600.42000.43200.64400.437600 | Living Dining Flooring | 15d | 2026-06-09 | 2026-06-23 | 302 |  | 7 day week with NGT | 8005652 |
| 304 | 37400.37600.39600.42000.43200.64400.437700 | Temporary Door Fixing | 9d | 2026-05-01 | 2026-05-09 | 295 |  | 7 day week with NGT | 8005662 |
| 305 | 37400.37600.39600.42000.43200.64400.437800 | Aluminium Door Widnow Fixing | 15d | 2026-06-24 | 2026-07-08 | 303, 304 |  | 7 day week with NGT | 8005672 |
| 306 | 37400.37600.39600.42000.43200.64400.437900 | Rehung Door Fixing | 8d | 2026-07-09 | 2026-07-16 | 305 |  | 7 day week with NGT | 8005682 |
| 307 | 37400.37600.39600.42000.43200.64400.438000 | Putty Primer coat | 6d | 2026-07-17 | 2026-07-22 | 306 |  | 7 day week with NGT | 8005692 |
| 308 | 37400.37600.39600.42000.43200.64400.438100 | Painting First Coat | 12d | 2026-07-23 | 2026-08-03 | 297, 299, 306, 307 |  | 7 day week with NGT | 8005702 |
| 309 | 37400.37600.39600.42000.43200.64400.438200 | False ceiling works | 10d | 2026-08-04 | 2026-08-13 | 308 |  | 7 day week with NGT | 8005712 |

| ID | WBS | Task | Duration | Start | Finish | Predecessors | Constraint | Calendar | Unique_Task_ID |
| --- | --- | --- | --- | --- | --- | --- | --- | --- | --- |
| 310 | 37400.37600.39600.42000.43200.64500 | **Third Floor** | 115d | 2026-05-03 | 2026-08-26 |  | start no earlier than 2026-05-03 | 7 day week with NGT | 7997932 |
| 311 | 37400.37600.39600.42000.43200.64500.438300 | Blockwork | 10d | 2026-05-03 | 2026-05-13 | 252FS+0.25d |  | 7 day week with NGT | 8005722 |
| 312 | 37400.37600.39600.42000.43200.64500.438400 | Internal Plumbing Works | 6d | 2026-05-13 | 2026-05-19 | 311 |  | 7 day week with NGT | 8005732 |
| 313 | 37400.37600.39600.42000.43200.64500.438500 | Waterproofing Works | 10d | 2026-05-15 | 2026-05-25 | 312SS+2d |  | 7 day week with NGT | 8005742 |
| 314 | 37400.37600.39600.42000.43200.64500.438600 | PCC | 8d | 2026-05-27 | 2026-06-04 | 313, 316SS |  | 7 day week with NGT | 8005752 |
| 315 | 37400.37600.39600.42000.43200.64500.438700 | Electrical Wiring works | 12d | 2026-05-15 | 2026-05-27 | 313SS |  | 7 day week with NGT | 8005762 |
| 316 | 37400.37600.39600.42000.43200.64500.438800 | Internal Plaster Works | 9d | 2026-05-27 | 2026-06-05 | 312, 313, 315 |  | 7 day week with NGT | 8005772 |
| 317 | 37400.37600.39600.42000.43200.64500.438900 | Toilet Dado Works | 9d | 2026-06-05 | 2026-06-14 | 312, 313, 315, 316 |  | 7 day week with NGT | 8005782 |
| 318 | 37400.37600.39600.42000.43200.64500.439000 | Toilet Flooring Works | 7d | 2026-06-14 | 2026-06-21 | 314, 317 |  | 7 day week with NGT | 8005792 |
| 319 | 37400.37600.39600.42000.43200.64500.439100 | Living Dining Flooring | 15d | 2026-06-21 | 2026-07-06 | 318 |  | 7 day week with NGT | 8005802 |
| 320 | 37400.37600.39600.42000.43200.64500.439200 | Temporary Door Fixing | 9d | 2026-05-13 | 2026-05-22 | 311 |  | 7 day week with NGT | 8005812 |
| 321 | 37400.37600.39600.42000.43200.64500.439300 | Aluminium Door Widnow Fixing | 15d | 2026-07-06 | 2026-07-21 | 319, 320 |  | 7 day week with NGT | 8005822 |
| 322 | 37400.37600.39600.42000.43200.64500.439400 | Rehung Door Fixing | 8d | 2026-07-21 | 2026-07-29 | 321 |  | 7 day week with NGT | 8005832 |
| 323 | 37400.37600.39600.42000.43200.64500.439500 | Putty Primer coat | 6d | 2026-07-29 | 2026-08-04 | 322 |  | 7 day week with NGT | 8005842 |
| 324 | 37400.37600.39600.42000.43200.64500.439600 | Painting First Coat | 12d | 2026-08-04 | 2026-08-16 | 313, 315, 322, 323 |  | 7 day week with NGT | 8005852 |
| 325 | 37400.37600.39600.42000.43200.64500.439700 | False ceiling works | 10d | 2026-08-16 | 2026-08-26 | 309, 324 |  | 7 day week with NGT | 8005862 |
| 326 | 37400.37600.39600.42000.43200.64600 | **Fourth Floor** | 115d | 2026-05-15 | 2026-09-07 |  | start no earlier than 2026-05-15 | 7 day week with NGT | 7997942 |
| 327 | 37400.37600.39600.42000.43200.64600.439800 | Blockwork | 10d | 2026-05-15 | 2026-05-25 | 253FS+0.25d |  | 7 day week with NGT | 8005872 |
| 328 | 37400.37600.39600.42000.43200.64600.439900 | Internal Plumbing Works | 6d | 2026-05-25 | 2026-05-31 | 327 |  | 7 day week with NGT | 8005882 |
| 329 | 37400.37600.39600.42000.43200.64600.440000 | Waterproofing Works | 10d | 2026-05-27 | 2026-06-06 | 328SS+2d |  | 7 day week with NGT | 8005892 |
| 330 | 37400.37600.39600.42000.43200.64600.440100 | PCC | 8d | 2026-06-08 | 2026-06-16 | 329, 332SS |  | 7 day week with NGT | 8005902 |
| 331 | 37400.37600.39600.42000.43200.64600.440200 | Electrical Wiring works | 12d | 2026-05-27 | 2026-06-08 | 329SS |  | 7 day week with NGT | 8005912 |
| 332 | 37400.37600.39600.42000.43200.64600.440300 | Internal Plaster Works | 9d | 2026-06-08 | 2026-06-17 | 328, 329, 331 |  | 7 day week with NGT | 8005922 |
| 333 | 37400.37600.39600.42000.43200.64600.440400 | Toilet Dado Works | 9d | 2026-06-17 | 2026-06-26 | 328, 329, 331, 332 |  | 7 day week with NGT | 8005932 |
| 334 | 37400.37600.39600.42000.43200.64600.440500 | Toilet Flooring Works | 7d | 2026-06-26 | 2026-07-03 | 330, 333 |  | 7 day week with NGT | 8005942 |
| 335 | 37400.37600.39600.42000.43200.64600.440600 | Living Dining Flooring | 15d | 2026-07-03 | 2026-07-18 | 334 |  | 7 day week with NGT | 8005952 |
| 336 | 37400.37600.39600.42000.43200.64600.440700 | Temporary Door Fixing | 9d | 2026-05-25 | 2026-06-03 | 327 |  | 7 day week with NGT | 8005962 |
| 337 | 37400.37600.39600.42000.43200.64600.440800 | Aluminium Door Widnow Fixing | 15d | 2026-07-18 | 2026-08-02 | 335, 336 |  | 7 day week with NGT | 8005972 |
| 338 | 37400.37600.39600.42000.43200.64600.440900 | Rehung Door Fixing | 8d | 2026-08-02 | 2026-08-10 | 337 |  | 7 day week with NGT | 8005982 |
| 339 | 37400.37600.39600.42000.43200.64600.441000 | Putty Primer coat | 6d | 2026-08-10 | 2026-08-16 | 338 |  | 7 day week with NGT | 8005992 |
| 340 | 37400.37600.39600.42000.43200.64600.441100 | Painting First Coat | 12d | 2026-08-16 | 2026-08-28 | 329, 331, 338, 339 |  | 7 day week with NGT | 8006002 |
| 341 | 37400.37600.39600.42000.43200.64600.441200 | False ceiling works | 10d | 2026-08-28 | 2026-09-07 | 325, 340 |  | 7 day week with NGT | 8006012 |

| ID | WBS | Task | Duration | Start | Finish | Predecessors | Constraint | Calendar | Unique_Task_ID |
| --- | --- | --- | --- | --- | --- | --- | --- | --- | --- |
| 342 | 37400.37600.39600.42000.43200.64700 | **Fifth Floor** | 115d | 2026-05-27 | 2026-09-19 |  | start no earlier than 2026-05-27 | 7 day week with NGT | 7997952 |
| 343 | 37400.37600.39600.42000.43200.64700.441300 | Blockwork | 10d | 2026-05-27 | 2026-06-06 | 254FS+0.25d |  | 7 day week with NGT | 8006022 |
| 344 | 37400.37600.39600.42000.43200.64700.441400 | Internal Plumbing Works | 6d | 2026-06-06 | 2026-06-12 | 343 |  | 7 day week with NGT | 8006032 |
| 345 | 37400.37600.39600.42000.43200.64700.441500 | Waterproofing Works | 10d | 2026-06-08 | 2026-06-18 | 344SS+2d |  | 7 day week with NGT | 8006042 |
| 346 | 37400.37600.39600.42000.43200.64700.441600 | PCC | 8d | 2026-06-20 | 2026-06-28 | 345, 348SS |  | 7 day week with NGT | 8006052 |
| 347 | 37400.37600.39600.42000.43200.64700.441700 | Electrical Wiring works | 12d | 2026-06-08 | 2026-06-20 | 345SS |  | 7 day week with NGT | 8006062 |
| 348 | 37400.37600.39600.42000.43200.64700.441800 | Internal Plaster Works | 9d | 2026-06-20 | 2026-06-29 | 344, 345, 347 |  | 7 day week with NGT | 8006072 |
| 349 | 37400.37600.39600.42000.43200.64700.441900 | Toilet Dado Works | 9d | 2026-06-29 | 2026-07-08 | 344, 345, 347, 348 |  | 7 day week with NGT | 8006082 |
| 350 | 37400.37600.39600.42000.43200.64700.442000 | Toilet Flooring Works | 7d | 2026-07-08 | 2026-07-15 | 346, 349 |  | 7 day week with NGT | 8006092 |
| 351 | 37400.37600.39600.42000.43200.64700.442100 | Living Dining Flooring | 15d | 2026-07-15 | 2026-07-30 | 350 |  | 7 day week with NGT | 8006102 |
| 352 | 37400.37600.39600.42000.43200.64700.442200 | Temporary Door Fixing | 9d | 2026-06-06 | 2026-06-15 | 343 |  | 7 day week with NGT | 8006112 |
| 353 | 37400.37600.39600.42000.43200.64700.442300 | Aluminium Door Widnow Fixing | 15d | 2026-07-30 | 2026-08-14 | 351, 352 |  | 7 day week with NGT | 8006122 |
| 354 | 37400.37600.39600.42000.43200.64700.442400 | Rehung Door Fixing | 8d | 2026-08-14 | 2026-08-22 | 353 |  | 7 day week with NGT | 8006132 |
| 355 | 37400.37600.39600.42000.43200.64700.442500 | Putty Primer coat | 6d | 2026-08-22 | 2026-08-28 | 354 |  | 7 day week with NGT | 8006142 |
| 356 | 37400.37600.39600.42000.43200.64700.442600 | Painting First Coat | 12d | 2026-08-28 | 2026-09-09 | 345, 347, 354, 355 |  | 7 day week with NGT | 8006152 |
| 357 | 37400.37600.39600.42000.43200.64700.442700 | False ceiling works | 10d | 2026-09-09 | 2026-09-19 | 341, 356 |  | 7 day week with NGT | 8006162 |
| 358 | 37400.37600.39600.42000.43200.64800 | **Sixth Floor** | 135d | 2026-06-08 | 2026-10-21 |  | start no earlier than 2026-06-08 | 7 day week with NGT | 7997962 |
| 359 | 37400.37600.39600.42000.43200.64800.442800 | Blockwork | 10d | 2026-06-08 | 2026-06-18 | 255FS+0.25d |  | 7 day week with NGT | 8006172 |
| 360 | 37400.37600.39600.42000.43200.64800.442900 | Internal Plumbing Works | 6d | 2026-06-18 | 2026-06-24 | 359 |  | 7 day week with NGT | 8006182 |
| 361 | 37400.37600.39600.42000.43200.64800.443000 | Waterproofing Works | 10d | 2026-06-20 | 2026-06-30 | 360SS+2d |  | 7 day week with NGT | 8006192 |
| 362 | 37400.37600.39600.42000.43200.64800.443100 | PCC | 8d | 2026-07-02 | 2026-07-10 | 361, 364SS |  | 7 day week with NGT | 8006202 |
| 363 | 37400.37600.39600.42000.43200.64800.443200 | Electrical Wiring works | 12d | 2026-06-20 | 2026-07-02 | 361SS |  | 7 day week with NGT | 8006212 |
| 364 | 37400.37600.39600.42000.43200.64800.443300 | Internal Plaster Works | 9d | 2026-07-02 | 2026-07-11 | 360, 361, 363 |  | 7 day week with NGT | 8006222 |
| 365 | 37400.37600.39600.42000.43200.64800.443400 | Toilet Dado Works | 9d | 2026-07-11 | 2026-07-20 | 360, 361, 363, 364 |  | 7 day week with NGT | 8006232 |
| 366 | 37400.37600.39600.42000.43200.64800.443500 | Toilet Flooring Works | 7d | 2026-07-20 | 2026-07-27 | 362, 365 |  | 7 day week with NGT | 8006242 |
| 367 | 37400.37600.39600.42000.43200.64800.443600 | Living Dining Flooring | 15d | 2026-07-27 | 2026-08-11 | 366 |  | 7 day week with NGT | 8006252 |
| 368 | 37400.37600.39600.42000.43200.64800.443700 | Temporary Door Fixing | 9d | 2026-06-18 | 2026-06-27 | 359 |  | 7 day week with NGT | 8006262 |
| 369 | 37400.37600.39600.42000.43200.64800.443800 | Aluminium Door Widnow Fixing | 35d | 2026-08-11 | 2026-09-15 | 367, 368 |  | 7 day week with NGT | 8006272 |
| 370 | 37400.37600.39600.42000.43200.64800.443900 | Rehung Door Fixing | 8d | 2026-09-15 | 2026-09-23 | 369 |  | 7 day week with NGT | 8006282 |
| 371 | 37400.37600.39600.42000.43200.64800.444000 | Putty Primer coat | 6d | 2026-09-23 | 2026-09-29 | 370 |  | 7 day week with NGT | 8006292 |
| 372 | 37400.37600.39600.42000.43200.64800.444100 | Painting First Coat | 12d | 2026-09-29 | 2026-10-11 | 361, 363, 370, 371 |  | 7 day week with NGT | 8006302 |
| 373 | 37400.37600.39600.42000.43200.64800.444200 | False ceiling works | 10d | 2026-10-11 | 2026-10-21 | 357, 372 |  | 7 day week with NGT | 8006312 |

| ID | WBS | Task | Duration | Start | Finish | Predecessors | Constraint | Calendar | Unique_Task_ID |
| --- | --- | --- | --- | --- | --- | --- | --- | --- | --- |
| 374 | 37400.37600.39600.42000.43200.64900 | **Seventh Floor** | 135d | 2026-06-20 | 2026-12-17 |  | start no earlier than 2026-06-20 | 7 day week with NGT | 7997972 |
| 375 | 37400.37600.39600.42000.43200.64900.444300 | Blockwork | 10d | 2026-06-20 | 2026-06-30 | 256FS+0.25d |  | 7 day week with NGT | 8006322 |
| 376 | 37400.37600.39600.42000.43200.64900.444400 | Internal Plumbing Works | 6d | 2026-06-30 | 2026-07-06 | 375 |  | 7 day week with NGT | 8006332 |
| 377 | 37400.37600.39600.42000.43200.64900.444500 | Waterproofing Works | 10d | 2026-07-02 | 2026-07-12 | 376SS+2d |  | 7 day week with NGT | 8006342 |
| 378 | 37400.37600.39600.42000.43200.64900.444600 | PCC | 8d | 2026-07-14 | 2026-07-22 | 377, 380SS |  | 7 day week with NGT | 8006352 |
| 379 | 37400.37600.39600.42000.43200.64900.444700 | Electrical Wiring works | 12d | 2026-07-02 | 2026-07-14 | 377SS |  | 7 day week with NGT | 8006362 |
| 380 | 37400.37600.39600.42000.43200.64900.444800 | Internal Plaster Works | 9d | 2026-07-14 | 2026-07-23 | 376, 377, 379 |  | 7 day week with NGT | 8006372 |
| 381 | 37400.37600.39600.42000.43200.64900.444900 | Toilet Dado Works | 9d | 2026-07-23 | 2026-08-01 | 376, 377, 379, 380 |  | 7 day week with NGT | 8006382 |
| 382 | 37400.37600.39600.42000.43200.64900.445000 | Toilet Flooring Works | 7d | 2026-08-01 | 2026-08-08 | 378, 381 |  | 7 day week with NGT | 8006392 |
| 383 | 37400.37600.39600.42000.43200.64900.445100 | Living Dining Flooring | 15d | 2026-08-08 | 2026-08-23 | 382 |  | 7 day week with NGT | 8006402 |
| 384 | 37400.37600.39600.42000.43200.64900.445200 | Temporary Door Fixing | 9d | 2026-06-30 | 2026-07-09 | 375 |  | 7 day week with NGT | 8006412 |
| 385 | 37400.37600.39600.42000.43200.64900.445300 | Aluminium Door Widnow Fixing | 35d | 2026-08-23 | 2026-09-27 | 383, 384 |  | 7 day week with NGT | 8006422 |
| 386 | 37400.37600.39600.42000.43200.64900.445400 | Rehung Door Fixing | 8d | 2026-09-27 | 2026-10-05 | 385 |  | 7 day week with NGT | 8006432 |
| 387 | 37400.37600.39600.42000.43200.64900.445500 | Putty Primer coat | 6d | 2026-10-05 | 2026-10-11 | 386 |  | 7 day week with NGT | 8006442 |
| 388 | 37400.37600.39600.42000.43200.64900.445600 | Painting First Coat | 12d | 2026-10-11 | 2026-10-23 | 377, 379, 386, 387 |  | 7 day week with NGT | 8006452 |
| 389 | 37400.37600.39600.42000.43200.64900.445700 | False ceiling works | 10d | 2026-10-23 | 2026-12-17 | 373, 388 |  | 7 day week with NGT | 8006462 |
| 390 | 37400.37600.39600.42000.43200.65000 | **Eighth Floor** | 135d | 2026-07-02 | 2026-12-29 |  | start no earlier than 2026-07-02 | 7 day week with NGT | 7997982 |
| 391 | 37400.37600.39600.42000.43200.65000.445800 | Blockwork | 10d | 2026-07-02 | 2026-07-12 | 257FS+0.25d |  | 7 day week with NGT | 8006472 |
| 392 | 37400.37600.39600.42000.43200.65000.445900 | Internal Plumbing Works | 6d | 2026-07-12 | 2026-07-18 | 391 |  | 7 day week with NGT | 8006482 |
| 393 | 37400.37600.39600.42000.43200.65000.446000 | Waterproofing Works | 10d | 2026-07-14 | 2026-07-24 | 392SS+2d |  | 7 day week with NGT | 8006492 |
| 394 | 37400.37600.39600.42000.43200.65000.446100 | PCC | 8d | 2026-07-26 | 2026-08-03 | 393, 396SS |  | 7 day week with NGT | 8006502 |
| 395 | 37400.37600.39600.42000.43200.65000.446200 | Electrical Wiring works | 12d | 2026-07-14 | 2026-07-26 | 393SS |  | 7 day week with NGT | 8006512 |
| 396 | 37400.37600.39600.42000.43200.65000.446300 | Internal Plaster Works | 9d | 2026-07-26 | 2026-08-04 | 392, 393, 395 |  | 7 day week with NGT | 8006522 |
| 397 | 37400.37600.39600.42000.43200.65000.446400 | Toilet Dado Works | 9d | 2026-08-04 | 2026-08-13 | 392, 393, 395, 396 |  | 7 day week with NGT | 8006532 |
| 398 | 37400.37600.39600.42000.43200.65000.446500 | Toilet Flooring Works | 7d | 2026-08-13 | 2026-08-20 | 394, 397 |  | 7 day week with NGT | 8006542 |
| 399 | 37400.37600.39600.42000.43200.65000.446600 | Living Dining Flooring | 15d | 2026-08-20 | 2026-09-04 | 398 |  | 7 day week with NGT | 8006552 |
| 400 | 37400.37600.39600.42000.43200.65000.446700 | Temporary Door Fixing | 9d | 2026-07-12 | 2026-07-21 | 391 |  | 7 day week with NGT | 8006562 |
| 401 | 37400.37600.39600.42000.43200.65000.446800 | Aluminium Door Widnow Fixing | 35d | 2026-09-04 | 2026-10-09 | 399, 400 |  | 7 day week with NGT | 8006572 |
| 402 | 37400.37600.39600.42000.43200.65000.446900 | Rehung Door Fixing | 8d | 2026-10-09 | 2026-10-17 | 401 |  | 7 day week with NGT | 8006582 |
| 403 | 37400.37600.39600.42000.43200.65000.447000 | Putty Primer coat | 6d | 2026-10-17 | 2026-10-23 | 402 |  | 7 day week with NGT | 8006592 |
| 404 | 37400.37600.39600.42000.43200.65000.447100 | Painting First Coat | 12d | 2026-10-23 | 2026-12-19 | 393, 395, 402, 403 |  | 7 day week with NGT | 8006602 |
| 405 | 37400.37600.39600.42000.43200.65000.447200 | False ceiling works | 10d | 2026-12-19 | 2026-12-29 | 389, 404 |  | 7 day week with NGT | 8006612 |

| ID | WBS | Task | Duration | Start | Finish | Predecessors | Constraint | Calendar | Unique_Task_ID |
| --- | --- | --- | --- | --- | --- | --- | --- | --- | --- |
| 406 | 37400.37600.39600.42000.43200.65100 | **Ninth Floor** | 135d | 2026-07-14 | 2027-01-10 |  | start no earlier than 2026-07-14 | 7 day week with NGT | 7997992 |
| 407 | 37400.37600.39600.42000.43200.65100.447300 | Blockwork | 10d | 2026-07-14 | 2026-07-24 | 258FS+0.25d |  | 7 day week with NGT | 8006622 |
| 408 | 37400.37600.39600.42000.43200.65100.447400 | Internal Plumbing Works | 6d | 2026-07-24 | 2026-07-30 | 407 |  | 7 day week with NGT | 8006632 |
| 409 | 37400.37600.39600.42000.43200.65100.447500 | Waterproofing Works | 10d | 2026-07-26 | 2026-08-05 | 408SS+2d |  | 7 day week with NGT | 8006642 |
| 410 | 37400.37600.39600.42000.43200.65100.447600 | PCC | 8d | 2026-08-07 | 2026-08-15 | 409, 412SS |  | 7 day week with NGT | 8006652 |
| 411 | 37400.37600.39600.42000.43200.65100.447700 | Electrical Wiring works | 12d | 2026-07-26 | 2026-08-07 | 409SS |  | 7 day week with NGT | 8006662 |
| 412 | 37400.37600.39600.42000.43200.65100.447800 | Internal Plaster Works | 9d | 2026-08-07 | 2026-08-16 | 408, 409, 411 |  | 7 day week with NGT | 8006672 |
| 413 | 37400.37600.39600.42000.43200.65100.447900 | Toilet Dado Works | 9d | 2026-08-16 | 2026-08-25 | 408, 409, 411, 412 |  | 7 day week with NGT | 8006682 |
| 414 | 37400.37600.39600.42000.43200.65100.448000 | Toilet Flooring Works | 7d | 2026-08-25 | 2026-09-01 | 410, 413 |  | 7 day week with NGT | 8006692 |
| 415 | 37400.37600.39600.42000.43200.65100.448100 | Living Dining Flooring | 15d | 2026-09-01 | 2026-09-16 | 414 |  | 7 day week with NGT | 8006702 |
| 416 | 37400.37600.39600.42000.43200.65100.448200 | Temporary Door Fixing | 9d | 2026-07-24 | 2026-08-02 | 407 |  | 7 day week with NGT | 8006712 |
| 417 | 37400.37600.39600.42000.43200.65100.448300 | Aluminium Door Widnow Fixing | 35d | 2026-09-16 | 2026-10-21 | 415, 416 |  | 7 day week with NGT | 8006722 |
| 418 | 37400.37600.39600.42000.43200.65100.448400 | Rehung Door Fixing | 8d | 2026-10-21 | 2026-10-29 | 417 |  | 7 day week with NGT | 8006732 |
| 419 | 37400.37600.39600.42000.43200.65100.448500 | Putty Primer coat | 6d | 2026-10-29 | 2026-12-19 | 418 |  | 7 day week with NGT | 8006742 |
| 420 | 37400.37600.39600.42000.43200.65100.448600 | Painting First Coat | 12d | 2026-12-19 | 2026-12-31 | 409, 411, 418, 419 |  | 7 day week with NGT | 8006752 |
| 421 | 37400.37600.39600.42000.43200.65100.448700 | False ceiling works | 10d | 2026-12-31 | 2027-01-10 | 405, 420 |  | 7 day week with NGT | 8006762 |
| 422 | 37400.37600.39600.42000.43200.65200 | **Tenth Floor** | 133d | 2026-07-26 | 2027-01-20 |  | start no earlier than 2026-07-26 | 7 day week with NGT | 7998002 |
| 423 | 37400.37600.39600.42000.43200.65200.448800 | Blockwork | 10d | 2026-07-26 | 2026-08-05 | 259FS+0.25d |  | 7 day week with NGT | 8006772 |
| 424 | 37400.37600.39600.42000.43200.65200.448900 | Internal Plumbing Works | 6d | 2026-08-05 | 2026-08-11 | 423 |  | 7 day week with NGT | 8006782 |
| 425 | 37400.37600.39600.42000.43200.65200.449000 | Waterproofing Works | 10d | 2026-08-07 | 2026-08-17 | 424SS+2d |  | 7 day week with NGT | 8006792 |
| 426 | 37400.37600.39600.42000.43200.65200.449100 | PCC | 8d | 2026-08-19 | 2026-08-27 | 425, 428SS |  | 7 day week with NGT | 8006802 |
| 427 | 37400.37600.39600.42000.43200.65200.449200 | Electrical Wiring works | 12d | 2026-08-07 | 2026-08-19 | 425SS |  | 7 day week with NGT | 8006812 |
| 428 | 37400.37600.39600.42000.43200.65200.449300 | Internal Plaster Works | 9d | 2026-08-19 | 2026-08-28 | 424, 425, 427 |  | 7 day week with NGT | 8006822 |
| 429 | 37400.37600.39600.42000.43200.65200.449400 | Toilet Dado Works | 9d | 2026-08-28 | 2026-09-06 | 424, 425, 427, 428 |  | 7 day week with NGT | 8006832 |
| 430 | 37400.37600.39600.42000.43200.65200.449500 | Toilet Flooring Works | 7d | 2026-09-06 | 2026-09-13 | 426, 429 |  | 7 day week with NGT | 8006842 |
| 431 | 37400.37600.39600.42000.43200.65200.449600 | Living Dining Flooring | 15d | 2026-09-13 | 2026-09-28 | 430 |  | 7 day week with NGT | 8006852 |
| 432 | 37400.37600.39600.42000.43200.65200.449700 | Temporary Door Fixing | 9d | 2026-08-05 | 2026-08-14 | 423 |  | 7 day week with NGT | 8006862 |
| 433 | 37400.37600.39600.42000.43200.65200.449800 | Aluminium Door Widnow Fixing | 29d | 2026-09-28 | 2026-10-27 | 431, 432 |  | 7 day week with NGT | 8006872 |
| 434 | 37400.37600.39600.42000.43200.65200.449900 | Rehung Door Fixing | 8d | 2026-10-27 | 2026-12-19 | 433 |  | 7 day week with NGT | 8006882 |
| 435 | 37400.37600.39600.42000.43200.65200.450000 | Putty Primer coat | 6d | 2026-12-19 | 2026-12-25 | 434 |  | 7 day week with NGT | 8006892 |
| 436 | 37400.37600.39600.42000.43200.65200.450100 | Painting First Coat | 12d | 2026-12-25 | 2027-01-06 | 425, 427, 434, 435 |  | 7 day week with NGT | 8006902 |
| 437 | 37400.37600.39600.42000.43200.65200.450200 | False ceiling works | 10d | 2027-01-10 | 2027-01-20 | 421, 436 |  | 7 day week with NGT | 8006912 |

| ID | WBS | Task | Duration | Start | Finish | Predecessors | Constraint | Calendar | Unique_Task_ID |
| --- | --- | --- | --- | --- | --- | --- | --- | --- | --- |
| 438 | 37400.37600.39600.42000.43200.65300 | **Eleventh Floor** | 131d | 2026-08-07 | 2027-01-30 |  | start no earlier than 2026-08-07 | 7 day week with NGT | 7998012 |
| 439 | 37400.37600.39600.42000.43200.65300.450300 | Blockwork | 10d | 2026-08-07 | 2026-08-17 | 260FS+0.25d |  | 7 day week with NGT | 8006922 |
| 440 | 37400.37600.39600.42000.43200.65300.450400 | Internal Plumbing Works | 6d | 2026-08-17 | 2026-08-23 | 439 |  | 7 day week with NGT | 8006932 |
| 441 | 37400.37600.39600.42000.43200.65300.450500 | Waterproofing Works | 10d | 2026-08-19 | 2026-08-29 | 440SS+2d |  | 7 day week with NGT | 8006942 |
| 442 | 37400.37600.39600.42000.43200.65300.450600 | PCC | 8d | 2026-08-31 | 2026-09-08 | 441, 444SS |  | 7 day week with NGT | 8006952 |
| 443 | 37400.37600.39600.42000.43200.65300.450700 | Electrical Wiring works | 12d | 2026-08-19 | 2026-08-31 | 441SS |  | 7 day week with NGT | 8006962 |
| 444 | 37400.37600.39600.42000.43200.65300.450800 | Internal Plaster Works | 9d | 2026-08-31 | 2026-09-09 | 440, 441, 443 |  | 7 day week with NGT | 8006972 |
| 445 | 37400.37600.39600.42000.43200.65300.450900 | Toilet Dado Works | 9d | 2026-09-09 | 2026-09-18 | 440, 441, 443, 444 |  | 7 day week with NGT | 8006982 |
| 446 | 37400.37600.39600.42000.43200.65300.451000 | Toilet Flooring Works | 7d | 2026-09-18 | 2026-09-25 | 442, 445 |  | 7 day week with NGT | 8006992 |
| 447 | 37400.37600.39600.42000.43200.65300.451100 | Living Dining Flooring | 15d | 2026-09-25 | 2026-10-10 | 446 |  | 7 day week with NGT | 8007002 |
| 448 | 37400.37600.39600.42000.43200.65300.451200 | Temporary Door Fixing | 9d | 2026-08-17 | 2026-08-26 | 439 |  | 7 day week with NGT | 8007012 |
| 449 | 37400.37600.39600.42000.43200.65300.451300 | Aluminium Door Widnow Fixing | 27d | 2026-10-10 | 2026-12-21 | 447, 448 |  | 7 day week with NGT | 8007022 |
| 450 | 37400.37600.39600.42000.43200.65300.451400 | Rehung Door Fixing | 8d | 2026-12-21 | 2026-12-29 | 449 |  | 7 day week with NGT | 8007032 |
| 451 | 37400.37600.39600.42000.43200.65300.451500 | Putty Primer coat | 6d | 2026-12-29 | 2027-01-04 | 450 |  | 7 day week with NGT | 8007042 |
| 452 | 37400.37600.39600.42000.43200.65300.451600 | Painting First Coat | 12d | 2027-01-04 | 2027-01-16 | 441, 443, 450, 451 |  | 7 day week with NGT | 8007052 |
| 453 | 37400.37600.39600.42000.43200.65300.451700 | False ceiling works | 10d | 2027-01-20 | 2027-01-30 | 437, 452 |  | 7 day week with NGT | 8007062 |
| 454 | 37400.37600.39600.42000.43200.65400 | **Twelth Floor** | 135d | 2026-09-17 | 2027-03-16 |  | start no earlier than 2026-09-17 | 7 day week with NGT | 7998022 |
| 455 | 37400.37600.39600.42000.43200.65400.451800 | Blockwork | 10d | 2026-09-17 | 2026-09-27 | 263 |  | 7 day week with NGT | 8007072 |
| 456 | 37400.37600.39600.42000.43200.65400.451900 | Internal Plumbing Works | 6d | 2026-09-27 | 2026-10-03 | 455 |  | 7 day week with NGT | 8007082 |
| 457 | 37400.37600.39600.42000.43200.65400.452000 | Waterproofing Works | 10d | 2026-09-29 | 2026-10-09 | 456SS+2d |  | 7 day week with NGT | 8007092 |
| 458 | 37400.37600.39600.42000.43200.65400.452100 | PCC | 8d | 2026-10-11 | 2026-10-19 | 457, 460SS |  | 7 day week with NGT | 8007102 |
| 459 | 37400.37600.39600.42000.43200.65400.452200 | Electrical Wiring works | 12d | 2026-09-29 | 2026-10-11 | 457SS |  | 7 day week with NGT | 8007112 |
| 460 | 37400.37600.39600.42000.43200.65400.452300 | Internal Plaster Works | 9d | 2026-10-11 | 2026-10-20 | 456, 457, 459 |  | 7 day week with NGT | 8007122 |
| 461 | 37400.37600.39600.42000.43200.65400.452400 | Toilet Dado Works | 9d | 2026-10-20 | 2026-10-29 | 456, 457, 459, 460 |  | 7 day week with NGT | 8007132 |
| 462 | 37400.37600.39600.42000.43200.65400.452500 | Toilet Flooring Works | 7d | 2026-10-29 | 2026-12-20 | 458, 461 |  | 7 day week with NGT | 8007142 |
| 463 | 37400.37600.39600.42000.43200.65400.452600 | Living Dining Flooring | 15d | 2026-12-20 | 2027-01-04 | 462 |  | 7 day week with NGT | 8007152 |
| 464 | 37400.37600.39600.42000.43200.65400.452700 | Temporary Door Fixing | 9d | 2026-09-27 | 2026-10-06 | 455 |  | 7 day week with NGT | 8007162 |
| 465 | 37400.37600.39600.42000.43200.65400.452800 | Aluminium Door Widnow Fixing | 35d | 2027-01-04 | 2027-02-08 | 463, 464 |  | 7 day week with NGT | 8007172 |
| 466 | 37400.37600.39600.42000.43200.65400.452900 | Rehung Door Fixing | 8d | 2027-02-08 | 2027-02-16 | 465 |  | 7 day week with NGT | 8007182 |
| 467 | 37400.37600.39600.42000.43200.65400.453000 | Putty Primer coat | 6d | 2027-02-16 | 2027-02-22 | 466 |  | 7 day week with NGT | 8007192 |
| 468 | 37400.37600.39600.42000.43200.65400.453100 | Painting First Coat | 12d | 2027-02-22 | 2027-03-06 | 457, 459, 466, 467 |  | 7 day week with NGT | 8007202 |
| 469 | 37400.37600.39600.42000.43200.65400.453200 | False ceiling works | 10d | 2027-03-06 | 2027-03-16 | 453, 468 |  | 7 day week with NGT | 8007212 |

| ID | WBS | Task | Duration | Start | Finish | Predecessors | Constraint | Calendar | Unique_Task_ID |
| --- | --- | --- | --- | --- | --- | --- | --- | --- | --- |
| 470 | 37400.37600.39600.42000.43200.65500 | **Thirteen Floor** | 135d | 2026-09-19 | 2027-03-18 |  | start no earlier than 2026-09-19 | 7 day week with NGT | 7998032 |
| 471 | 37400.37600.39600.42000.43200.65500.453300 | Blockwork | 10d | 2026-09-19 | 2026-09-29 | 264FF+0.25d |  | 7 day week with NGT | 8007222 |
| 472 | 37400.37600.39600.42000.43200.65500.453400 | Internal Plumbing Works | 6d | 2026-09-29 | 2026-10-05 | 471 |  | 7 day week with NGT | 8007232 |
| 473 | 37400.37600.39600.42000.43200.65500.453500 | Waterproofing Works | 10d | 2026-10-01 | 2026-10-11 | 472SS+2d |  | 7 day week with NGT | 8007242 |
| 474 | 37400.37600.39600.42000.43200.65500.453600 | PCC | 8d | 2026-10-13 | 2026-10-21 | 473, 476SS |  | 7 day week with NGT | 8007252 |
| 475 | 37400.37600.39600.42000.43200.65500.453700 | Electrical Wiring works | 12d | 2026-10-01 | 2026-10-13 | 473SS |  | 7 day week with NGT | 8007262 |
| 476 | 37400.37600.39600.42000.43200.65500.453800 | Internal Plaster Works | 9d | 2026-10-13 | 2026-10-22 | 472, 473, 475 |  | 7 day week with NGT | 8007272 |
| 477 | 37400.37600.39600.42000.43200.65500.453900 | Toilet Dado Works | 9d | 2026-10-22 | 2026-10-31 | 472, 473, 475, 476 |  | 7 day week with NGT | 8007282 |
| 478 | 37400.37600.39600.42000.43200.65500.454000 | Toilet Flooring Works | 7d | 2026-10-31 | 2026-12-22 | 474, 477 |  | 7 day week with NGT | 8007292 |
| 479 | 37400.37600.39600.42000.43200.65500.454100 | Living Dining Flooring | 15d | 2026-12-22 | 2027-01-06 | 478 |  | 7 day week with NGT | 8007302 |
| 480 | 37400.37600.39600.42000.43200.65500.454200 | Temporary Door Fixing | 9d | 2026-09-29 | 2026-10-08 | 471 |  | 7 day week with NGT | 8007312 |
| 481 | 37400.37600.39600.42000.43200.65500.454300 | Aluminium Door Widnow Fixing | 35d | 2027-01-06 | 2027-02-10 | 479, 480 |  | 7 day week with NGT | 8007322 |
| 482 | 37400.37600.39600.42000.43200.65500.454400 | Rehung Door Fixing | 8d | 2027-02-10 | 2027-02-18 | 481 |  | 7 day week with NGT | 8007332 |
| 483 | 37400.37600.39600.42000.43200.65500.454500 | Putty Primer coat | 6d | 2027-02-18 | 2027-02-24 | 482 |  | 7 day week with NGT | 8007342 |
| 484 | 37400.37600.39600.42000.43200.65500.454600 | Painting First Coat | 12d | 2027-02-24 | 2027-03-08 | 473, 475, 482, 483 |  | 7 day week with NGT | 8007352 |
| 485 | 37400.37600.39600.42000.43200.65500.454700 | False ceiling works | 10d | 2027-03-08 | 2027-03-18 | 471, 484 |  | 7 day week with NGT | 8007362 |
| 486 | 37400.37600.39600.42000.43200.65600 | **Fourteen Floor** | 130d | 2026-10-04 | 2027-03-28 |  | start no earlier than 2026-10-04 | 7 day week with NGT | 7998042 |
| 487 | 37400.37600.39600.42000.43200.65600.454800 | Blockwork | 7d | 2026-10-04 | 2026-10-11 | 265FF+0.25d |  | 7 day week with NGT | 8007372 |
| 488 | 37400.37600.39600.42000.43200.65600.454900 | Internal Plumbing Works | 4d | 2026-10-11 | 2026-10-15 | 487 |  | 7 day week with NGT | 8007382 |
| 489 | 37400.37600.39600.42000.43200.65600.455000 | Waterproofing Works | 4d | 2026-10-13 | 2026-10-17 | 488SS+2d |  | 7 day week with NGT | 8007392 |
| 490 | 37400.37600.39600.42000.43200.65600.455100 | PCC | 3d | 2026-10-18 | 2026-10-21 | 489, 492SS |  | 7 day week with NGT | 8007402 |
| 491 | 37400.37600.39600.42000.43200.65600.455200 | Electrical Wiring works | 5d | 2026-10-13 | 2026-10-18 | 489SS |  | 7 day week with NGT | 8007412 |
| 492 | 37400.37600.39600.42000.43200.65600.455300 | Internal Plaster Works | 5d | 2026-10-18 | 2026-10-23 | 488FS+0.25d, 491FS+0.25d |  | 7 day week with NGT | 8007422 |
| 493 | 37400.37600.39600.42000.43200.65600.455400 | Toilet Dado Works | 5d | 2026-10-23 | 2026-10-28 | 488, 489, 491, 492 |  | 7 day week with NGT | 8007432 |
| 494 | 37400.37600.39600.42000.43200.65600.455500 | Toilet Flooring Works | 5d | 2026-10-28 | 2026-12-17 | 490, 493 |  | 7 day week with NGT | 8007442 |
| 495 | 37400.37600.39600.42000.43200.65600.455600 | Living Dining Flooring | 7d | 2026-12-17 | 2026-12-24 | 494 |  | 7 day week with NGT | 8007452 |
| 496 | 37400.37600.39600.42000.43200.65600.455700 | Temporary Door Fixing | 9d | 2026-10-11 | 2026-10-20 | 487 |  | 7 day week with NGT | 8007462 |
| 497 | 37400.37600.39600.42000.43200.65600.455800 | Aluminium Door Widnow Fixing | 35d | 2026-12-24 | 2027-01-28 | 495, 496 |  | 7 day week with NGT | 8007472 |
| 498 | 37400.37600.39600.42000.43200.65600.455900 | Rehung Door Fixing | 8d | 2027-01-28 | 2027-02-05 | 497 |  | 7 day week with NGT | 8007482 |
| 499 | 37400.37600.39600.42000.43200.65600.456000 | Putty Primer coat | 6d | 2027-02-05 | 2027-02-11 | 498 |  | 7 day week with NGT | 8007492 |
| 500 | 37400.37600.39600.42000.43200.65600.456100 | Painting First Coat | 12d | 2027-02-11 | 2027-02-23 | 489, 491, 498, 499 |  | 7 day week with NGT | 8007502 |
| 501 | 37400.37600.39600.42000.43200.65600.456200 | False ceiling works | 10d | 2027-03-18 | 2027-03-28 | 485, 500 |  | 7 day week with NGT | 8007512 |

| ID | WBS | Task | Duration | Start | Finish | Predecessors | Constraint | Calendar | Unique_Task_ID |
| --- | --- | --- | --- | --- | --- | --- | --- | --- | --- |
| 502 | 37400.37600.39600.42000.43200.65700 | **Fifteen Floor** | 122d | 2026-10-22 | 2027-04-07 |  | start no earlier than 2026-10-22 | 7 day week with NGT | 7998052 |
| 503 | 37400.37600.39600.42000.43200.65700.456300 | Blockwork | 7d | 2026-10-22 | 2026-10-29 | 266FS+0.25d |  | 7 day week with NGT | 8007522 |
| 504 | 37400.37600.39600.42000.43200.65700.456400 | Internal Plumbing Works | 4d | 2026-10-27 | 2026-10-31 | 503FF+2d |  | 7 day week with NGT | 8007532 |
| 505 | 37400.37600.39600.42000.43200.65700.456500 | Waterproofing Works | 4d | 2026-10-29 | 2026-12-17 | 504SS+2d |  | 7 day week with NGT | 8007542 |
| 506 | 37400.37600.39600.42000.43200.65700.456600 | PCC | 3d | 2026-12-18 | 2026-12-21 | 505, 508SS |  | 7 day week with NGT | 8007552 |
| 507 | 37400.37600.39600.42000.43200.65700.456700 | Electrical Wiring works | 5d | 2026-10-29 | 2026-12-18 | 505SS |  | 7 day week with NGT | 8007562 |
| 508 | 37400.37600.39600.42000.43200.65700.456800 | Internal Plaster Works | 5d | 2026-12-18 | 2026-12-23 | 504FS+0.25d, 507FS+0.25d |  | 7 day week with NGT | 8007572 |
| 509 | 37400.37600.39600.42000.43200.65700.456900 | Toilet Dado Works | 5d | 2026-12-23 | 2026-12-28 | 504, 505, 507, 508 |  | 7 day week with NGT | 8007582 |
| 510 | 37400.37600.39600.42000.43200.65700.457000 | Toilet Flooring Works | 5d | 2026-12-26 | 2026-12-31 | 506FS+0.25d, 509FF+3d |  | 7 day week with NGT | 8007592 |
| 511 | 37400.37600.39600.42000.43200.65700.457100 | Living Dining Flooring | 10d | 2026-12-31 | 2027-01-10 | 510 |  | 7 day week with NGT | 8007602 |
| 512 | 37400.37600.39600.42000.43200.65700.457200 | Temporary Door Fixing | 9d | 2026-10-29 | 2026-12-22 | 503 |  | 7 day week with NGT | 8007612 |
| 513 | 37400.37600.39600.42000.43200.65700.457300 | Aluminium Door Widnow Fixing | 35d | 2027-01-10 | 2027-02-14 | 511, 512 |  | 7 day week with NGT | 8007622 |
| 514 | 37400.37600.39600.42000.43200.65700.457400 | Rehung Door Fixing | 8d | 2027-02-14 | 2027-02-22 | 513 |  | 7 day week with NGT | 8007632 |
| 515 | 37400.37600.39600.42000.43200.65700.457500 | Putty Primer coat | 6d | 2027-02-22 | 2027-02-28 | 514 |  | 7 day week with NGT | 8007642 |
| 516 | 37400.37600.39600.42000.43200.65700.457600 | Painting First Coat | 12d | 2027-02-28 | 2027-03-12 | 505, 507, 514, 515 |  | 7 day week with NGT | 8007652 |
| 517 | 37400.37600.39600.42000.43200.65700.457700 | False ceiling works | 10d | 2027-03-28 | 2027-04-07 | 501, 516 |  | 7 day week with NGT | 8007662 |
| 518 | 37400.37600.39600.42000.43200.65800 | **Sixteen Floor** | 128.25d | 2026-10-26 | 2027-04-17 |  | start no earlier than 2026-10-26 | 7 day week with NGT | 7998062 |
| 519 | 37400.37600.39600.42000.43200.65800.457800 | Blockwork | 7d | 2026-10-26 | 2026-12-17 | 267FF |  | 7 day week with NGT | 8007672 |
| 520 | 37400.37600.39600.42000.43200.65800.457900 | Internal Plumbing Works | 6d | 2026-12-17 | 2026-12-23 | 519 |  | 7 day week with NGT | 8007682 |
| 521 | 37400.37600.39600.42000.43200.65800.458000 | Waterproofing Works | 7d | 2026-12-19 | 2026-12-26 | 520SS+2d |  | 7 day week with NGT | 8007692 |
| 522 | 37400.37600.39600.42000.43200.65800.458100 | PCC | 8d | 2026-12-26 | 2027-01-03 | 521, 524SS |  | 7 day week with NGT | 8007702 |
| 523 | 37400.37600.39600.42000.43200.65800.458200 | Electrical Wiring works | 7d | 2026-12-19 | 2026-12-26 | 521SS |  | 7 day week with NGT | 8007712 |
| 524 | 37400.37600.39600.42000.43200.65800.458300 | Internal Plaster Works | 7d | 2026-12-26 | 2027-01-02 | 520, 521, 523 |  | 7 day week with NGT | 8007722 |
| 525 | 37400.37600.39600.42000.43200.65800.458400 | Toilet Dado Works | 7d | 2027-01-02 | 2027-01-09 | 520, 521, 523, 524 |  | 7 day week with NGT | 8007732 |
| 526 | 37400.37600.39600.42000.43200.65800.458500 | Toilet Flooring Works | 5d | 2027-01-09 | 2027-01-14 | 522, 525 |  | 7 day week with NGT | 8007742 |
| 527 | 37400.37600.39600.42000.43200.65800.458600 | Living Dining Flooring | 15d | 2027-01-14 | 2027-01-29 | 526 |  | 7 day week with NGT | 8007752 |
| 528 | 37400.37600.39600.42000.43200.65800.458700 | Temporary Door Fixing | 9d | 2026-12-17 | 2026-12-26 | 519 |  | 7 day week with NGT | 8007762 |
| 529 | 37400.37600.39600.42000.43200.65800.458800 | Aluminium Door Widnow Fixing | 35d | 2027-01-29 | 2027-03-05 | 527, 528 |  | 7 day week with NGT | 8007772 |
| 530 | 37400.37600.39600.42000.43200.65800.458900 | Rehung Door Fixing | 8d | 2027-03-05 | 2027-03-13 | 529 |  | 7 day week with NGT | 8007782 |
| 531 | 37400.37600.39600.42000.43200.65800.459000 | Putty Primer coat | 6d | 2027-03-13 | 2027-03-19 | 530 |  | 7 day week with NGT | 8007792 |
| 532 | 37400.37600.39600.42000.43200.65800.459100 | Painting First Coat | 12d | 2027-03-19 | 2027-03-31 | 521, 523, 530, 531 |  | 7 day week with NGT | 8007802 |
| 533 | 37400.37600.39600.42000.43200.65800.459200 | False ceiling works | 10d | 2027-04-07 | 2027-04-17 | 517, 532 |  | 7 day week with NGT | 8007812 |

| ID | WBS | Task | Duration | Start | Finish | Predecessors | Constraint | Calendar | Unique_Task_ID |
| --- | --- | --- | --- | --- | --- | --- | --- | --- | --- |
| 534 | 37400.37600.39600.42000.43200.65900 | **Seventeen Floor** | 130d | 2026-12-18 | 2027-04-27 |  | start no earlier than 2026-12-18 | 7 day week with NGT | 7998072 |
| 535 | 37400.37600.39600.42000.43200.65900.459300 | Blockwork | 10d | 2026-12-18 | 2026-12-28 | 268FF+0.25d |  | 7 day week with NGT | 8007822 |
| 536 | 37400.37600.39600.42000.43200.65900.459400 | Internal Plumbing Works | 4d | 2026-12-27 | 2026-12-31 | 535FF+3d |  | 7 day week with NGT | 8007832 |
| 537 | 37400.37600.39600.42000.43200.65900.459500 | Waterproofing Works | 4d | 2026-12-29 | 2027-01-02 | 536SS+2d |  | 7 day week with NGT | 8007842 |
| 538 | 37400.37600.39600.42000.43200.65900.459600 | PCC | 3d | 2027-01-02 | 2027-01-05 | 537, 540SS |  | 7 day week with NGT | 8007852 |
| 539 | 37400.37600.39600.42000.43200.65900.459700 | Electrical Wiring works | 5d | 2026-12-29 | 2027-01-03 | 537SS |  | 7 day week with NGT | 8007862 |
| 540 | 37400.37600.39600.42000.43200.65900.459800 | Internal Plaster Works | 5d | 2026-12-31 | 2027-01-05 | 536FS+0.25d |  | 7 day week with NGT | 8007872 |
| 541 | 37400.37600.39600.42000.43200.65900.459900 | Toilet Dado Works | 5d | 2027-01-05 | 2027-01-10 | 536, 537, 539, 540 |  | 7 day week with NGT | 8007882 |
| 542 | 37400.37600.39600.42000.43200.65900.460000 | Toilet Flooring Works | 5d | 2027-01-10 | 2027-01-15 | 538, 541 |  | 7 day week with NGT | 8007892 |
| 543 | 37400.37600.39600.42000.43200.65900.460100 | Living Dining Flooring | 15d | 2027-01-15 | 2027-01-30 | 542 |  | 7 day week with NGT | 8007902 |
| 544 | 37400.37600.39600.42000.43200.65900.460200 | Temporary Door Fixing | 9d | 2026-12-28 | 2027-01-06 | 535 |  | 7 day week with NGT | 8007912 |
| 545 | 37400.37600.39600.42000.43200.65900.460300 | Aluminium Door Widnow Fixing | 35d | 2027-01-30 | 2027-03-06 | 543, 544 |  | 7 day week with NGT | 8007922 |
| 546 | 37400.37600.39600.42000.43200.65900.460400 | Rehung Door Fixing | 8d | 2027-03-06 | 2027-03-14 | 545 |  | 7 day week with NGT | 8007932 |
| 547 | 37400.37600.39600.42000.43200.65900.460500 | Putty Primer coat | 6d | 2027-03-14 | 2027-03-20 | 546 |  | 7 day week with NGT | 8007942 |
| 548 | 37400.37600.39600.42000.43200.65900.460600 | Painting First Coat | 12d | 2027-03-20 | 2027-04-01 | 537, 539, 546, 547 |  | 7 day week with NGT | 8007952 |
| 549 | 37400.37600.39600.42000.43200.65900.460700 | False ceiling works | 10d | 2027-04-17 | 2027-04-27 | 533, 548 |  | 7 day week with NGT | 8007962 |
| 550 | 37400.37600.39600.42000.43200.66000 | **Eighteenth Floor** | 126d | 2027-01-01 | 2027-05-07 |  | start no earlier than 2027-01-01 | 7 day week with NGT | 7998082 |
| 551 | 37400.37600.39600.42000.43200.66000.460800 | Blockwork | 7d | 2027-01-01 | 2027-01-08 | 269FF+0.25d |  | 7 day week with NGT | 8007972 |
| 552 | 37400.37600.39600.42000.43200.66000.460900 | Internal Plumbing Works | 6d | 2027-01-08 | 2027-01-14 | 551 |  | 7 day week with NGT | 8007982 |
| 553 | 37400.37600.39600.42000.43200.66000.461000 | Waterproofing Works | 7d | 2027-01-10 | 2027-01-17 | 552SS+2d |  | 7 day week with NGT | 8007992 |
| 554 | 37400.37600.39600.42000.43200.66000.461100 | PCC | 8d | 2027-01-17 | 2027-01-25 | 553, 556SS |  | 7 day week with NGT | 8008002 |
| 555 | 37400.37600.39600.42000.43200.66000.461200 | Electrical Wiring works | 7d | 2027-01-10 | 2027-01-17 | 553SS |  | 7 day week with NGT | 8008012 |
| 556 | 37400.37600.39600.42000.43200.66000.461300 | Internal Plaster Works | 5d | 2027-01-17 | 2027-01-22 | 552, 553, 555 |  | 7 day week with NGT | 8008022 |
| 557 | 37400.37600.39600.42000.43200.66000.461400 | Toilet Dado Works | 9d | 2027-01-22 | 2027-01-31 | 552, 553, 555, 556 |  | 7 day week with NGT | 8008032 |
| 558 | 37400.37600.39600.42000.43200.66000.461500 | Toilet Flooring Works | 7d | 2027-01-31 | 2027-02-07 | 554, 557 |  | 7 day week with NGT | 8008042 |
| 559 | 37400.37600.39600.42000.43200.66000.461600 | Living Dining Flooring | 15d | 2027-02-07 | 2027-02-22 | 558 |  | 7 day week with NGT | 8008052 |
| 560 | 37400.37600.39600.42000.43200.66000.461700 | Temporary Door Fixing | 9d | 2027-01-08 | 2027-01-17 | 551 |  | 7 day week with NGT | 8008062 |
| 561 | 37400.37600.39600.42000.43200.66000.461800 | Aluminium Door Widnow Fixing | 35d | 2027-02-22 | 2027-03-29 | 559, 560 |  | 7 day week with NGT | 8008072 |
| 562 | 37400.37600.39600.42000.43200.66000.461900 | Rehung Door Fixing | 8d | 2027-03-29 | 2027-04-06 | 561 |  | 7 day week with NGT | 8008082 |
| 563 | 37400.37600.39600.42000.43200.66000.462000 | Putty Primer coat | 6d | 2027-04-06 | 2027-04-12 | 562 |  | 7 day week with NGT | 8008092 |
| 564 | 37400.37600.39600.42000.43200.66000.462100 | Painting First Coat | 12d | 2027-04-12 | 2027-04-24 | 553, 555, 562, 563 |  | 7 day week with NGT | 8008102 |
| 565 | 37400.37600.39600.42000.43200.66000.462200 | False ceiling works | 10d | 2027-04-27 | 2027-05-07 | 549, 564 |  | 7 day week with NGT | 8008112 |

| ID | WBS | Task | Duration | Start | Finish | Predecessors | Constraint | Calendar | Unique_Task_ID |
| --- | --- | --- | --- | --- | --- | --- | --- | --- | --- |
| 566 | 37400.37600.39600.42000.43200.66100 | **Ninteenth Floor** | 132d | 2027-01-12 | 2027-05-24 |  | start no earlier than 2027-01-12 | 7 day week with NGT | 7998092 |
| 567 | 37400.37600.39600.42000.43200.66100.462300 | Blockwork | 7d | 2027-01-12 | 2027-01-19 | 270FF+0.25d |  | 7 day week with NGT | 8008122 |
| 568 | 37400.37600.39600.42000.43200.66100.462400 | Internal Plumbing Works | 6d | 2027-01-19 | 2027-01-25 | 567 |  | 7 day week with NGT | 8008132 |
| 569 | 37400.37600.39600.42000.43200.66100.462500 | Waterproofing Works | 10d | 2027-01-21 | 2027-01-31 | 568SS+2d |  | 7 day week with NGT | 8008142 |
| 570 | 37400.37600.39600.42000.43200.66100.462600 | PCC | 8d | 2027-02-02 | 2027-02-10 | 569, 572SS |  | 7 day week with NGT | 8008152 |
| 571 | 37400.37600.39600.42000.43200.66100.462700 | Electrical Wiring works | 12d | 2027-01-21 | 2027-02-02 | 569SS |  | 7 day week with NGT | 8008162 |
| 572 | 37400.37600.39600.42000.43200.66100.462800 | Internal Plaster Works | 9d | 2027-02-02 | 2027-02-11 | 568, 569, 571 |  | 7 day week with NGT | 8008172 |
| 573 | 37400.37600.39600.42000.43200.66100.462900 | Toilet Dado Works | 9d | 2027-02-11 | 2027-02-20 | 568, 569, 571, 572 |  | 7 day week with NGT | 8008182 |
| 574 | 37400.37600.39600.42000.43200.66100.463000 | Toilet Flooring Works | 7d | 2027-02-20 | 2027-02-27 | 570, 573 |  | 7 day week with NGT | 8008192 |
| 575 | 37400.37600.39600.42000.43200.66100.463100 | Living Dining Flooring | 15d | 2027-02-27 | 2027-03-14 | 574 |  | 7 day week with NGT | 8008202 |
| 576 | 37400.37600.39600.42000.43200.66100.463200 | Temporary Door Fixing | 9d | 2027-01-19 | 2027-01-28 | 567 |  | 7 day week with NGT | 8008212 |
| 577 | 37400.37600.39600.42000.43200.66100.463300 | Aluminium Door Widnow Fixing | 35d | 2027-03-14 | 2027-04-18 | 575, 576 |  | 7 day week with NGT | 8008222 |
| 578 | 37400.37600.39600.42000.43200.66100.463400 | Rehung Door Fixing | 8d | 2027-04-18 | 2027-04-26 | 577 |  | 7 day week with NGT | 8008232 |
| 579 | 37400.37600.39600.42000.43200.66100.463500 | Putty Primer coat | 6d | 2027-04-26 | 2027-05-02 | 578 |  | 7 day week with NGT | 8008242 |
| 580 | 37400.37600.39600.42000.43200.66100.463600 | Painting First Coat | 12d | 2027-05-02 | 2027-05-14 | 569, 571, 578, 579 |  | 7 day week with NGT | 8008252 |
| 581 | 37400.37600.39600.42000.43200.66100.463700 | False ceiling works | 10d | 2027-05-14 | 2027-05-24 | 565, 580 |  | 7 day week with NGT | 8008262 |
| 582 | 37400.37600.39600.42000.43200.66200 | **Twenty Floor** | 135d | 2027-01-30 | 2027-06-14 |  | start no earlier than 2027-01-30 | 7 day week with NGT | 7998102 |
| 583 | 37400.37600.39600.42000.43200.66200.463800 | Blockwork | 10d | 2027-01-30 | 2027-02-09 | 271FS+0.25d |  | 7 day week with NGT | 8008272 |
| 584 | 37400.37600.39600.42000.43200.66200.463900 | Internal Plumbing Works | 6d | 2027-02-09 | 2027-02-15 | 583 |  | 7 day week with NGT | 8008282 |
| 585 | 37400.37600.39600.42000.43200.66200.464000 | Waterproofing Works | 10d | 2027-02-11 | 2027-02-21 | 584SS+2d |  | 7 day week with NGT | 8008292 |
| 586 | 37400.37600.39600.42000.43200.66200.464100 | PCC | 8d | 2027-02-23 | 2027-03-03 | 585, 588SS |  | 7 day week with NGT | 8008302 |
| 587 | 37400.37600.39600.42000.43200.66200.464200 | Electrical Wiring works | 12d | 2027-02-11 | 2027-02-23 | 585SS |  | 7 day week with NGT | 8008312 |
| 588 | 37400.37600.39600.42000.43200.66200.464300 | Internal Plaster Works | 9d | 2027-02-23 | 2027-03-04 | 584, 585, 587 |  | 7 day week with NGT | 8008322 |
| 589 | 37400.37600.39600.42000.43200.66200.464400 | Toilet Dado Works | 9d | 2027-03-04 | 2027-03-13 | 584, 585, 587, 588 |  | 7 day week with NGT | 8008332 |
| 590 | 37400.37600.39600.42000.43200.66200.464500 | Toilet Flooring Works | 7d | 2027-03-13 | 2027-03-20 | 586, 589 |  | 7 day week with NGT | 8008342 |
| 591 | 37400.37600.39600.42000.43200.66200.464600 | Living Dining Flooring | 15d | 2027-03-20 | 2027-04-04 | 590 |  | 7 day week with NGT | 8008352 |
| 592 | 37400.37600.39600.42000.43200.66200.464700 | Temporary Door Fixing | 9d | 2027-02-09 | 2027-02-18 | 583 |  | 7 day week with NGT | 8008362 |
| 593 | 37400.37600.39600.42000.43200.66200.464800 | Aluminium Door Widnow Fixing | 35d | 2027-04-04 | 2027-05-09 | 591, 592 |  | 7 day week with NGT | 8008372 |
| 594 | 37400.37600.39600.42000.43200.66200.464900 | Rehung Door Fixing | 8d | 2027-05-09 | 2027-05-17 | 593 |  | 7 day week with NGT | 8008382 |
| 595 | 37400.37600.39600.42000.43200.66200.465000 | Putty Primer coat | 6d | 2027-05-17 | 2027-05-23 | 594 |  | 7 day week with NGT | 8008392 |
| 596 | 37400.37600.39600.42000.43200.66200.465100 | Painting First Coat | 12d | 2027-05-23 | 2027-06-04 | 585, 587, 594, 595 |  | 7 day week with NGT | 8008402 |
| 597 | 37400.37600.39600.42000.43200.66200.465200 | False ceiling works | 10d | 2027-06-04 | 2027-06-14 | 581, 596 |  | 7 day week with NGT | 8008412 |

| ID | WBS | Task | Duration | Start | Finish | Predecessors | Constraint | Calendar | Unique_Task_ID |
| --- | --- | --- | --- | --- | --- | --- | --- | --- | --- |
| 598 | 37400.37600.39600.42000.43200.66300 | **Twentyone Floor** | 144d | 2027-01-31 | 2027-06-24 |  | start no earlier than 2027-01-31 | 7 day week with NGT | 7998112 |
| 599 | 37400.37600.39600.42000.43200.66300.465300 | Blockwork | 10d | 2027-01-31 | 2027-02-10 | 272FF+0.25d |  | 7 day week with NGT | 8008422 |
| 600 | 37400.37600.39600.42000.43200.66300.465400 | Internal Plumbing Works | 6d | 2027-02-10 | 2027-02-16 | 599 |  | 7 day week with NGT | 8008432 |
| 601 | 37400.37600.39600.42000.43200.66300.465500 | Waterproofing Works | 10d | 2027-02-12 | 2027-02-22 | 600SS+2d |  | 7 day week with NGT | 8008442 |
| 602 | 37400.37600.39600.42000.43200.66300.465600 | PCC | 8d | 2027-02-24 | 2027-03-04 | 601, 604SS |  | 7 day week with NGT | 8008452 |
| 603 | 37400.37600.39600.42000.43200.66300.465700 | Electrical Wiring works | 12d | 2027-02-12 | 2027-02-24 | 601SS |  | 7 day week with NGT | 8008462 |
| 604 | 37400.37600.39600.42000.43200.66300.465800 | Internal Plaster Works | 9d | 2027-02-24 | 2027-03-05 | 600, 601, 603 |  | 7 day week with NGT | 8008472 |
| 605 | 37400.37600.39600.42000.43200.66300.465900 | Toilet Dado Works | 9d | 2027-03-05 | 2027-03-14 | 600, 601, 603, 604 |  | 7 day week with NGT | 8008482 |
| 606 | 37400.37600.39600.42000.43200.66300.466000 | Toilet Flooring Works | 7d | 2027-03-14 | 2027-03-21 | 602, 605 |  | 7 day week with NGT | 8008492 |
| 607 | 37400.37600.39600.42000.43200.66300.466100 | Living Dining Flooring | 15d | 2027-03-21 | 2027-04-05 | 606 |  | 7 day week with NGT | 8008502 |
| 608 | 37400.37600.39600.42000.43200.66300.466200 | Temporary Door Fixing | 9d | 2027-02-10 | 2027-02-19 | 599 |  | 7 day week with NGT | 8008512 |
| 609 | 37400.37600.39600.42000.43200.66300.466300 | Aluminium Door Widnow Fixing | 35d | 2027-04-05 | 2027-05-10 | 607, 608 |  | 7 day week with NGT | 8008522 |
| 610 | 37400.37600.39600.42000.43200.66300.466400 | Rehung Door Fixing | 8d | 2027-05-10 | 2027-05-18 | 609 |  | 7 day week with NGT | 8008532 |
| 611 | 37400.37600.39600.42000.43200.66300.466500 | Putty Primer coat | 6d | 2027-05-18 | 2027-05-24 | 610 |  | 7 day week with NGT | 8008542 |
| 612 | 37400.37600.39600.42000.43200.66300.466600 | Painting First Coat | 12d | 2027-05-24 | 2027-06-05 | 601, 603, 610, 611 |  | 7 day week with NGT | 8008552 |
| 613 | 37400.37600.39600.42000.43200.66300.466700 | False ceiling works | 10d | 2027-06-14 | 2027-06-24 | 597, 612 |  | 7 day week with NGT | 8008562 |
| 614 | 37400.37600.39600.42000.43200.66400 | **Twenty two Floor** | 137d | 2027-02-17 | 2027-07-04 |  | start no earlier than 2027-02-17 | 7 day week with NGT | 7998122 |
| 615 | 37400.37600.39600.42000.43200.66400.466800 | Blockwork | 10d | 2027-02-17 | 2027-02-27 | 273FF+0.25d |  | 7 day week with NGT | 8008572 |
| 616 | 37400.37600.39600.42000.43200.66400.466900 | Internal Plumbing Works | 6d | 2027-02-27 | 2027-03-05 | 615 |  | 7 day week with NGT | 8008582 |
| 617 | 37400.37600.39600.42000.43200.66400.467000 | Waterproofing Works | 10d | 2027-03-01 | 2027-03-11 | 616SS+2d |  | 7 day week with NGT | 8008592 |
| 618 | 37400.37600.39600.42000.43200.66400.467100 | PCC | 8d | 2027-03-13 | 2027-03-21 | 617, 620SS |  | 7 day week with NGT | 8008602 |
| 619 | 37400.37600.39600.42000.43200.66400.467200 | Electrical Wiring works | 12d | 2027-03-01 | 2027-03-13 | 617SS |  | 7 day week with NGT | 8008612 |
| 620 | 37400.37600.39600.42000.43200.66400.467300 | Internal Plaster Works | 9d | 2027-03-13 | 2027-03-22 | 616, 617, 619 |  | 7 day week with NGT | 8008622 |
| 621 | 37400.37600.39600.42000.43200.66400.467400 | Toilet Dado Works | 9d | 2027-03-22 | 2027-03-31 | 616, 617, 619, 620 |  | 7 day week with NGT | 8008632 |
| 622 | 37400.37600.39600.42000.43200.66400.467500 | Toilet Flooring Works | 7d | 2027-03-31 | 2027-04-07 | 618, 621 |  | 7 day week with NGT | 8008642 |
| 623 | 37400.37600.39600.42000.43200.66400.467600 | Living Dining Flooring | 15d | 2027-04-07 | 2027-04-22 | 622 |  | 7 day week with NGT | 8008652 |
| 624 | 37400.37600.39600.42000.43200.66400.467700 | Temporary Door Fixing | 9d | 2027-02-27 | 2027-03-08 | 615 |  | 7 day week with NGT | 8008662 |
| 625 | 37400.37600.39600.42000.43200.66400.467800 | Aluminium Door Widnow Fixing | 35d | 2027-04-22 | 2027-05-27 | 623, 624 |  | 7 day week with NGT | 8008672 |
| 626 | 37400.37600.39600.42000.43200.66400.467900 | Rehung Door Fixing | 8d | 2027-05-27 | 2027-06-04 | 625 |  | 7 day week with NGT | 8008682 |
| 627 | 37400.37600.39600.42000.43200.66400.468000 | Putty Primer coat | 6d | 2027-06-04 | 2027-06-10 | 626 |  | 7 day week with NGT | 8008692 |
| 628 | 37400.37600.39600.42000.43200.66400.468100 | Painting First Coat | 12d | 2027-06-10 | 2027-06-22 | 617, 619, 626, 627 |  | 7 day week with NGT | 8008702 |
| 629 | 37400.37600.39600.42000.43200.66400.468200 | False ceiling works | 10d | 2027-06-24 | 2027-07-04 | 613, 628 |  | 7 day week with NGT | 8008712 |

| ID | WBS | Task | Duration | Start | Finish | Predecessors | Constraint | Calendar | Unique_Task_ID |
| --- | --- | --- | --- | --- | --- | --- | --- | --- | --- |
| 630 | 37400.37600.39600.42000.43200.66500 | **Twenty Three Floor** | 136d | 2027-02-28 | 2027-07-14 |  | start no earlier than 2027-02-28 | 7 day week with NGT | 7998132 |
| 631 | 37400.37600.39600.42000.43200.66500.468300 | Blockwork | 10d | 2027-02-28 | 2027-03-10 | 274FF+0.25d |  | 7 day week with NGT | 8008722 |
| 632 | 37400.37600.39600.42000.43200.66500.468400 | Internal Plumbing Works | 6d | 2027-03-10 | 2027-03-16 | 631 |  | 7 day week with NGT | 8008732 |
| 633 | 37400.37600.39600.42000.43200.66500.468500 | Waterproofing Works | 10d | 2027-03-12 | 2027-03-22 | 632SS+2d |  | 7 day week with NGT | 8008742 |
| 634 | 37400.37600.39600.42000.43200.66500.468600 | PCC | 8d | 2027-03-24 | 2027-04-01 | 633, 636SS |  | 7 day week with NGT | 8008752 |
| 635 | 37400.37600.39600.42000.43200.66500.468700 | Electrical Wiring works | 12d | 2027-03-12 | 2027-03-24 | 633SS |  | 7 day week with NGT | 8008762 |
| 636 | 37400.37600.39600.42000.43200.66500.468800 | Internal Plaster Works | 9d | 2027-03-24 | 2027-04-02 | 632, 633, 635 |  | 7 day week with NGT | 8008772 |
| 637 | 37400.37600.39600.42000.43200.66500.468900 | Toilet Dado Works | 9d | 2027-04-02 | 2027-04-11 | 632, 633, 635, 636 |  | 7 day week with NGT | 8008782 |
| 638 | 37400.37600.39600.42000.43200.66500.469000 | Toilet Flooring Works | 7d | 2027-04-11 | 2027-04-18 | 634, 637 |  | 7 day week with NGT | 8008792 |
| 639 | 37400.37600.39600.42000.43200.66500.469100 | Living Dining Flooring | 15d | 2027-04-18 | 2027-05-03 | 638 |  | 7 day week with NGT | 8008802 |
| 640 | 37400.37600.39600.42000.43200.66500.469200 | Temporary Door Fixing | 9d | 2027-03-10 | 2027-03-19 | 631 |  | 7 day week with NGT | 8008812 |
| 641 | 37400.37600.39600.42000.43200.66500.469300 | Aluminium Door Widnow Fixing | 35d | 2027-05-03 | 2027-06-07 | 639, 640 |  | 7 day week with NGT | 8008822 |
| 642 | 37400.37600.39600.42000.43200.66500.469400 | Rehung Door Fixing | 8d | 2027-06-07 | 2027-06-15 | 641 |  | 7 day week with NGT | 8008832 |
| 643 | 37400.37600.39600.42000.43200.66500.469500 | Putty Primer coat | 6d | 2027-06-15 | 2027-06-21 | 642 |  | 7 day week with NGT | 8008842 |
| 644 | 37400.37600.39600.42000.43200.66500.469600 | Painting First Coat | 12d | 2027-06-21 | 2027-07-03 | 633, 635, 642, 643 |  | 7 day week with NGT | 8008852 |
| 645 | 37400.37600.39600.42000.43200.66500.469700 | False ceiling works | 10d | 2027-07-04 | 2027-07-14 | 629, 644 |  | 7 day week with NGT | 8008862 |
| 646 | 37400.37600.39600.42000.43200.66600 | **Twenty Four Floor** | 135d | 2027-03-21 | 2027-08-02 |  | start no earlier than 2027-03-21 | 7 day week with NGT | 7998142 |
| 647 | 37400.37600.39600.42000.43200.66600.469800 | Blockwork | 10d | 2027-03-21 | 2027-03-30 | 275 |  | 7 day week with NGT | 8008872 |
| 648 | 37400.37600.39600.42000.43200.66600.469900 | Internal Plumbing Works | 6d | 2027-03-31 | 2027-04-05 | 647 |  | 7 day week with NGT | 8008882 |
| 649 | 37400.37600.39600.42000.43200.66600.470000 | Waterproofing Works | 10d | 2027-04-02 | 2027-04-11 | 648SS+2d |  | 7 day week with NGT | 8008892 |
| 650 | 37400.37600.39600.42000.43200.66600.470100 | PCC | 8d | 2027-04-14 | 2027-04-21 | 649, 652SS |  | 7 day week with NGT | 8008902 |
| 651 | 37400.37600.39600.42000.43200.66600.470200 | Electrical Wiring works | 12d | 2027-04-02 | 2027-04-13 | 649SS |  | 7 day week with NGT | 8008912 |
| 652 | 37400.37600.39600.42000.43200.66600.470300 | Internal Plaster Works | 9d | 2027-04-14 | 2027-04-22 | 648, 649, 651 |  | 7 day week with NGT | 8008922 |
| 653 | 37400.37600.39600.42000.43200.66600.470400 | Toilet Dado Works | 9d | 2027-04-23 | 2027-05-01 | 648, 649, 651, 652 |  | 7 day week with NGT | 8008932 |
| 654 | 37400.37600.39600.42000.43200.66600.470500 | Toilet Flooring Works | 7d | 2027-05-02 | 2027-05-08 | 650, 653 |  | 7 day week with NGT | 8008942 |
| 655 | 37400.37600.39600.42000.43200.66600.470600 | Living Dining Flooring | 15d | 2027-05-09 | 2027-05-23 | 654 |  | 7 day week with NGT | 8008952 |
| 656 | 37400.37600.39600.42000.43200.66600.470700 | Temporary Door Fixing | 9d | 2027-03-31 | 2027-04-08 | 647 |  | 7 day week with NGT | 8008962 |
| 657 | 37400.37600.39600.42000.43200.66600.470800 | Aluminium Door Widnow Fixing | 35d | 2027-05-24 | 2027-06-27 | 655, 656 |  | 7 day week with NGT | 8008972 |
| 658 | 37400.37600.39600.42000.43200.66600.470900 | Rehung Door Fixing | 8d | 2027-06-28 | 2027-07-05 | 657 |  | 7 day week with NGT | 8008982 |
| 659 | 37400.37600.39600.42000.43200.66600.471000 | Putty Primer coat | 6d | 2027-07-06 | 2027-07-11 | 658 |  | 7 day week with NGT | 8008992 |
| 660 | 37400.37600.39600.42000.43200.66600.471100 | Painting First Coat | 12d | 2027-07-12 | 2027-07-23 | 649, 651, 658, 659 |  | 7 day week with NGT | 8009002 |
| 661 | 37400.37600.39600.42000.43200.66600.471200 | False ceiling works | 10d | 2027-07-24 | 2027-08-02 | 645, 660 |  | 7 day week with NGT | 8009012 |

| ID | WBS | Task | Duration | Start | Finish | Predecessors | Constraint | Calendar | Unique_Task_ID |
| --- | --- | --- | --- | --- | --- | --- | --- | --- | --- |
| 662 | 37400.37600.39600.42000.43200.66700 | **Twenty Five Floors** | 135d | 2027-04-01 | 2027-08-13 |  | start no earlier than 2027-04-01 | 7 day week with NGT | 7998152 |
| 663 | 37400.37600.39600.42000.43200.66700.471300 | Blockwork | 10d | 2027-04-01 | 2027-04-10 | 276 |  | 7 day week with NGT | 8009022 |
| 664 | 37400.37600.39600.42000.43200.66700.471400 | Internal Plumbing Works | 6d | 2027-04-11 | 2027-04-16 | 663 |  | 7 day week with NGT | 8009032 |
| 665 | 37400.37600.39600.42000.43200.66700.471500 | Waterproofing Works | 10d | 2027-04-13 | 2027-04-22 | 664SS+2d |  | 7 day week with NGT | 8009042 |
| 666 | 37400.37600.39600.42000.43200.66700.471600 | PCC | 8d | 2027-04-25 | 2027-05-02 | 665, 668SS |  | 7 day week with NGT | 8009052 |
| 667 | 37400.37600.39600.42000.43200.66700.471700 | Electrical Wiring works | 12d | 2027-04-13 | 2027-04-24 | 665SS |  | 7 day week with NGT | 8009062 |
| 668 | 37400.37600.39600.42000.43200.66700.471800 | Internal Plaster Works | 9d | 2027-04-25 | 2027-05-03 | 664, 665, 667 |  | 7 day week with NGT | 8009072 |
| 669 | 37400.37600.39600.42000.43200.66700.471900 | Toilet Dado Works | 9d | 2027-05-04 | 2027-05-12 | 664, 665, 667, 668 |  | 7 day week with NGT | 8009082 |
| 670 | 37400.37600.39600.42000.43200.66700.472000 | Toilet Flooring Works | 7d | 2027-05-13 | 2027-05-19 | 666, 669 |  | 7 day week with NGT | 8009092 |
| 671 | 37400.37600.39600.42000.43200.66700.472100 | Living Dining Flooring | 15d | 2027-05-20 | 2027-06-03 | 670 |  | 7 day week with NGT | 8009102 |
| 672 | 37400.37600.39600.42000.43200.66700.472200 | Temporary Door Fixing | 9d | 2027-04-11 | 2027-04-19 | 663 |  | 7 day week with NGT | 8009112 |
| 673 | 37400.37600.39600.42000.43200.66700.472300 | Aluminium Door Widnow Fixing | 35d | 2027-06-04 | 2027-07-08 | 671, 672 |  | 7 day week with NGT | 8009122 |
| 674 | 37400.37600.39600.42000.43200.66700.472400 | Rehung Door Fixing | 8d | 2027-07-09 | 2027-07-16 | 673 |  | 7 day week with NGT | 8009132 |
| 675 | 37400.37600.39600.42000.43200.66700.472500 | Putty Primer coat | 6d | 2027-07-17 | 2027-07-22 | 674 |  | 7 day week with NGT | 8009142 |
| 676 | 37400.37600.39600.42000.43200.66700.472600 | Painting First Coat | 12d | 2027-07-23 | 2027-08-03 | 665, 667, 674, 675 |  | 7 day week with NGT | 8009152 |
| 677 | 37400.37600.39600.42000.43200.66700.472700 | False ceiling works | 10d | 2027-08-04 | 2027-08-13 | 661, 676 |  | 7 day week with NGT | 8009162 |
| 678 | 37400.37600.39600.42000.43200.66800 | **Twenty Six Floor** | 135d | 2027-04-12 | 2027-08-24 |  | start no earlier than 2027-04-12 | 7 day week with NGT | 7998162 |
| 679 | 37400.37600.39600.42000.43200.66800.472800 | Blockwork | 10d | 2027-04-12 | 2027-04-21 | 277 |  | 7 day week with NGT | 8009172 |
| 680 | 37400.37600.39600.42000.43200.66800.472900 | Internal Plumbing Works | 6d | 2027-04-22 | 2027-04-27 | 679 |  | 7 day week with NGT | 8009182 |
| 681 | 37400.37600.39600.42000.43200.66800.473000 | Waterproofing Works | 10d | 2027-04-24 | 2027-05-03 | 680SS+2d |  | 7 day week with NGT | 8009192 |
| 682 | 37400.37600.39600.42000.43200.66800.473100 | PCC | 8d | 2027-05-06 | 2027-05-13 | 681, 684SS |  | 7 day week with NGT | 8009202 |
| 683 | 37400.37600.39600.42000.43200.66800.473200 | Electrical Wiring works | 12d | 2027-04-24 | 2027-05-05 | 681SS |  | 7 day week with NGT | 8009212 |
| 684 | 37400.37600.39600.42000.43200.66800.473300 | Internal Plaster Works | 9d | 2027-05-06 | 2027-05-14 | 680, 681, 683 |  | 7 day week with NGT | 8009222 |
| 685 | 37400.37600.39600.42000.43200.66800.473400 | Toilet Dado Works | 9d | 2027-05-15 | 2027-05-23 | 680, 681, 683, 684 |  | 7 day week with NGT | 8009232 |
| 686 | 37400.37600.39600.42000.43200.66800.473500 | Toilet Flooring Works | 7d | 2027-05-24 | 2027-05-30 | 682, 685 |  | 7 day week with NGT | 8009242 |
| 687 | 37400.37600.39600.42000.43200.66800.473600 | Living Dining Flooring | 15d | 2027-05-31 | 2027-06-14 | 686 |  | 7 day week with NGT | 8009252 |
| 688 | 37400.37600.39600.42000.43200.66800.473700 | Temporary Door Fixing | 9d | 2027-04-22 | 2027-04-30 | 679 |  | 7 day week with NGT | 8009262 |
| 689 | 37400.37600.39600.42000.43200.66800.473800 | Aluminium Door Widnow Fixing | 35d | 2027-06-15 | 2027-07-19 | 687, 688 |  | 7 day week with NGT | 8009272 |
| 690 | 37400.37600.39600.42000.43200.66800.473900 | Rehung Door Fixing | 8d | 2027-07-20 | 2027-07-27 | 689 |  | 7 day week with NGT | 8009282 |
| 691 | 37400.37600.39600.42000.43200.66800.474000 | Putty Primer coat | 6d | 2027-07-28 | 2027-08-02 | 690 |  | 7 day week with NGT | 8009292 |
| 692 | 37400.37600.39600.42000.43200.66800.474100 | Painting First Coat | 12d | 2027-08-03 | 2027-08-14 | 681, 683, 690, 691 |  | 7 day week with NGT | 8009302 |
| 693 | 37400.37600.39600.42000.43200.66800.474200 | False ceiling works | 10d | 2027-08-15 | 2027-08-24 | 677, 692 |  | 7 day week with NGT | 8009312 |

| ID | WBS | Task | Duration | Start | Finish | Predecessors | Constraint | Calendar | Unique_Task_ID |
| --- | --- | --- | --- | --- | --- | --- | --- | --- | --- |
| 694 | 37400.37600.39600.42000.43200.66900 | **Twenty Seven Floors** | 135d | 2027-04-25 | 2027-09-06 |  | start no earlier than 2027-04-25 | 7 day week with NGT | 7998172 |
| 695 | 37400.37600.39600.42000.43200.66900.474300 | Blockwork | 10d | 2027-04-25 | 2027-05-04 | 278 |  | 7 day week with NGT | 8009322 |
| 696 | 37400.37600.39600.42000.43200.66900.474400 | Internal Plumbing Works | 6d | 2027-05-05 | 2027-05-10 | 695 |  | 7 day week with NGT | 8009332 |
| 697 | 37400.37600.39600.42000.43200.66900.474500 | Waterproofing Works | 10d | 2027-05-07 | 2027-05-16 | 696SS+2d |  | 7 day week with NGT | 8009342 |
| 698 | 37400.37600.39600.42000.43200.66900.474600 | PCC | 8d | 2027-05-19 | 2027-05-26 | 697, 700SS |  | 7 day week with NGT | 8009352 |
| 699 | 37400.37600.39600.42000.43200.66900.474700 | Electrical Wiring works | 12d | 2027-05-07 | 2027-05-18 | 697SS |  | 7 day week with NGT | 8009362 |
| 700 | 37400.37600.39600.42000.43200.66900.474800 | Internal Plaster Works | 9d | 2027-05-19 | 2027-05-27 | 696, 697, 699 |  | 7 day week with NGT | 8009372 |
| 701 | 37400.37600.39600.42000.43200.66900.474900 | Toilet Dado Works | 9d | 2027-05-28 | 2027-06-05 | 696, 697, 699, 700 |  | 7 day week with NGT | 8009382 |
| 702 | 37400.37600.39600.42000.43200.66900.475000 | Toilet Flooring Works | 7d | 2027-06-06 | 2027-06-12 | 698, 701 |  | 7 day week with NGT | 8009392 |
| 703 | 37400.37600.39600.42000.43200.66900.475100 | Living Dining Flooring | 15d | 2027-06-13 | 2027-06-27 | 702 |  | 7 day week with NGT | 8009402 |
| 704 | 37400.37600.39600.42000.43200.66900.475200 | Temporary Door Fixing | 9d | 2027-05-05 | 2027-05-13 | 695 |  | 7 day week with NGT | 8009412 |
| 705 | 37400.37600.39600.42000.43200.66900.475300 | Aluminium Door Widnow Fixing | 35d | 2027-06-28 | 2027-08-01 | 703, 704 |  | 7 day week with NGT | 8009422 |
| 706 | 37400.37600.39600.42000.43200.66900.475400 | Rehung Door Fixing | 8d | 2027-08-02 | 2027-08-09 | 705 |  | 7 day week with NGT | 8009432 |
| 707 | 37400.37600.39600.42000.43200.66900.475500 | Putty Primer coat | 6d | 2027-08-10 | 2027-08-15 | 706 |  | 7 day week with NGT | 8009442 |
| 708 | 37400.37600.39600.42000.43200.66900.475600 | Painting First Coat | 12d | 2027-08-16 | 2027-08-27 | 697, 699, 706, 707 |  | 7 day week with NGT | 8009452 |
| 709 | 37400.37600.39600.42000.43200.66900.475700 | False ceiling works | 10d | 2027-08-28 | 2027-09-06 | 693, 708 |  | 7 day week with NGT | 8009462 |
| 710 | 37400.37600.39600.42000.43200.67000 | **Twenty Eight Floor** | 135d | 2027-05-11 | 2027-09-22 |  | start no earlier than 2027-05-11 | 7 day week with NGT | 7998182 |
| 711 | 37400.37600.39600.42000.43200.67000.475800 | Blockwork | 10d | 2027-05-11 | 2027-05-20 | 279 |  | 7 day week with NGT | 8009472 |
| 712 | 37400.37600.39600.42000.43200.67000.475900 | Internal Plumbing Works | 6d | 2027-05-21 | 2027-05-26 | 711 |  | 7 day week with NGT | 8009482 |
| 713 | 37400.37600.39600.42000.43200.67000.476000 | Waterproofing Works | 10d | 2027-05-23 | 2027-06-01 | 712SS+2d |  | 7 day week with NGT | 8009492 |
| 714 | 37400.37600.39600.42000.43200.67000.476100 | PCC | 8d | 2027-06-04 | 2027-06-11 | 713, 716SS |  | 7 day week with NGT | 8009502 |
| 715 | 37400.37600.39600.42000.43200.67000.476200 | Electrical Wiring works | 12d | 2027-05-23 | 2027-06-03 | 713SS |  | 7 day week with NGT | 8009512 |
| 716 | 37400.37600.39600.42000.43200.67000.476300 | Internal Plaster Works | 9d | 2027-06-04 | 2027-06-12 | 712, 713, 715 |  | 7 day week with NGT | 8009522 |
| 717 | 37400.37600.39600.42000.43200.67000.476400 | Toilet Dado Works | 9d | 2027-06-13 | 2027-06-21 | 712, 713, 715, 716 |  | 7 day week with NGT | 8009532 |
| 718 | 37400.37600.39600.42000.43200.67000.476500 | Toilet Flooring Works | 7d | 2027-06-22 | 2027-06-28 | 714, 717 |  | 7 day week with NGT | 8009542 |
| 719 | 37400.37600.39600.42000.43200.67000.476600 | Living Dining Flooring | 15d | 2027-06-29 | 2027-07-13 | 718 |  | 7 day week with NGT | 8009552 |
| 720 | 37400.37600.39600.42000.43200.67000.476700 | Temporary Door Fixing | 9d | 2027-05-21 | 2027-05-29 | 711 |  | 7 day week with NGT | 8009562 |
| 721 | 37400.37600.39600.42000.43200.67000.476800 | Aluminium Door Widnow Fixing | 35d | 2027-07-14 | 2027-08-17 | 719, 720 |  | 7 day week with NGT | 8009572 |
| 722 | 37400.37600.39600.42000.43200.67000.476900 | Rehung Door Fixing | 8d | 2027-08-18 | 2027-08-25 | 721 |  | 7 day week with NGT | 8009582 |
| 723 | 37400.37600.39600.42000.43200.67000.477000 | Putty Primer coat | 6d | 2027-08-26 | 2027-08-31 | 722 |  | 7 day week with NGT | 8009592 |
| 724 | 37400.37600.39600.42000.43200.67000.477100 | Painting First Coat | 12d | 2027-09-01 | 2027-09-12 | 713, 715, 722, 723 |  | 7 day week with NGT | 8009602 |
| 725 | 37400.37600.39600.42000.43200.67000.477200 | False ceiling works | 10d | 2027-09-13 | 2027-09-22 | 709, 724 |  | 7 day week with NGT | 8009612 |

| ID | WBS | Task | Duration | Start | Finish | Predecessors | Constraint | Calendar | Unique_Task_ID |
| --- | --- | --- | --- | --- | --- | --- | --- | --- | --- |
| 726 | 37400.37600.39600.42000.43200.67100 | **Twenty Nine Floors** | 135d | 2027-05-21 | 2027-10-02 |  | start no earlier than 2027-05-21 | 7 day week with NGT | 7998192 |
| 727 | 37400.37600.39600.42000.43200.67100.477300 | Blockwork | 10d | 2027-05-21 | 2027-05-30 | 280 |  | 7 day week with NGT | 8009622 |
| 728 | 37400.37600.39600.42000.43200.67100.477400 | Internal Plumbing Works | 6d | 2027-05-31 | 2027-06-05 | 727 |  | 7 day week with NGT | 8009632 |
| 729 | 37400.37600.39600.42000.43200.67100.477500 | Waterproofing Works | 10d | 2027-06-02 | 2027-06-11 | 728SS+2d |  | 7 day week with NGT | 8009642 |
| 730 | 37400.37600.39600.42000.43200.67100.477600 | PCC | 8d | 2027-06-14 | 2027-06-21 | 729, 732SS |  | 7 day week with NGT | 8009652 |
| 731 | 37400.37600.39600.42000.43200.67100.477700 | Electrical Wiring works | 12d | 2027-06-02 | 2027-06-13 | 729SS |  | 7 day week with NGT | 8009662 |
| 732 | 37400.37600.39600.42000.43200.67100.477800 | Internal Plaster Works | 8d | 2027-06-14 | 2027-06-21 | 728, 729, 731 |  | 7 day week with NGT | 8009672 |
| 733 | 37400.37600.39600.42000.43200.67100.477900 | Toilet Dado Works | 9d | 2027-06-22 | 2027-06-30 | 728, 729, 731, 732 |  | 7 day week with NGT | 8009682 |
| 734 | 37400.37600.39600.42000.43200.67100.478000 | Toilet Flooring Works | 7d | 2027-07-01 | 2027-07-07 | 730, 733 |  | 7 day week with NGT | 8009692 |
| 735 | 37400.37600.39600.42000.43200.67100.478100 | Living Dining Flooring | 15d | 2027-07-08 | 2027-07-22 | 734 |  | 7 day week with NGT | 8009702 |
| 736 | 37400.37600.39600.42000.43200.67100.478200 | Temporary Door Fixing | 9d | 2027-05-31 | 2027-06-08 | 727 |  | 7 day week with NGT | 8009712 |
| 737 | 37400.37600.39600.42000.43200.67100.478300 | Aluminium Door Widnow Fixing | 35d | 2027-07-23 | 2027-08-26 | 735, 736 |  | 7 day week with NGT | 8009722 |
| 738 | 37400.37600.39600.42000.43200.67100.478400 | Rehung Door Fixing | 8d | 2027-08-27 | 2027-09-03 | 737 |  | 7 day week with NGT | 8009732 |
| 739 | 37400.37600.39600.42000.43200.67100.478500 | Putty Primer coat | 6d | 2027-09-04 | 2027-09-09 | 738 |  | 7 day week with NGT | 8009742 |
| 740 | 37400.37600.39600.42000.43200.67100.478600 | Painting First Coat | 12d | 2027-09-10 | 2027-09-21 | 729, 731, 738, 739 |  | 7 day week with NGT | 8009752 |
| 741 | 37400.37600.39600.42000.43200.67100.478700 | False ceiling works | 10d | 2027-09-23 | 2027-10-02 | 725, 740 |  | 7 day week with NGT | 8009762 |
| 742 | 37400.37600.39600.42000.43200.67200 | **Thirty Floor** | 135d | 2027-05-31 | 2027-10-12 |  | start no earlier than 2027-05-31 | 7 day week with NGT | 7998202 |
| 743 | 37400.37600.39600.42000.43200.67200.478800 | Blockwork | 10d | 2027-05-31 | 2027-06-09 | 281 |  | 7 day week with NGT | 8009772 |
| 744 | 37400.37600.39600.42000.43200.67200.478900 | Internal Plumbing Works | 6d | 2027-06-10 | 2027-06-15 | 743 |  | 7 day week with NGT | 8009782 |
| 745 | 37400.37600.39600.42000.43200.67200.479000 | Waterproofing Works | 10d | 2027-06-12 | 2027-06-21 | 744SS+2d |  | 7 day week with NGT | 8009792 |
| 746 | 37400.37600.39600.42000.43200.67200.479100 | PCC | 8d | 2027-06-23 | 2027-06-30 | 745, 748SS |  | 7 day week with NGT | 8009802 |
| 747 | 37400.37600.39600.42000.43200.67200.479200 | Electrical Wiring works | 11d | 2027-06-12 | 2027-06-22 | 745SS |  | 7 day week with NGT | 8009812 |
| 748 | 37400.37600.39600.42000.43200.67200.479300 | Internal Plaster Works | 8d | 2027-06-23 | 2027-06-30 | 744, 745, 747 |  | 7 day week with NGT | 8009822 |
| 749 | 37400.37600.39600.42000.43200.67200.479400 | Toilet Dado Works | 9d | 2027-07-01 | 2027-07-09 | 744, 745, 747, 748 |  | 7 day week with NGT | 8009832 |
| 750 | 37400.37600.39600.42000.43200.67200.479500 | Toilet Flooring Works | 7d | 2027-07-10 | 2027-07-16 | 746, 749 |  | 7 day week with NGT | 8009842 |
| 751 | 37400.37600.39600.42000.43200.67200.479600 | Living Dining Flooring | 15d | 2027-07-17 | 2027-07-31 | 750 |  | 7 day week with NGT | 8009852 |
| 752 | 37400.37600.39600.42000.43200.67200.479700 | Temporary Door Fixing | 9d | 2027-06-10 | 2027-06-18 | 743 |  | 7 day week with NGT | 8009862 |
| 753 | 37400.37600.39600.42000.43200.67200.479800 | Aluminium Door Widnow Fixing | 35d | 2027-08-01 | 2027-09-04 | 751, 752 |  | 7 day week with NGT | 8009872 |
| 754 | 37400.37600.39600.42000.43200.67200.479900 | Rehung Door Fixing | 8d | 2027-09-05 | 2027-09-12 | 753 |  | 7 day week with NGT | 8009882 |
| 755 | 37400.37600.39600.42000.43200.67200.480000 | Putty Primer coat | 6d | 2027-09-13 | 2027-09-18 | 754 |  | 7 day week with NGT | 8009892 |
| 756 | 37400.37600.39600.42000.43200.67200.480100 | Painting First Coat | 12d | 2027-09-19 | 2027-09-30 | 745, 747, 754, 755 |  | 7 day week with NGT | 8009902 |
| 757 | 37400.37600.39600.42000.43200.67200.480200 | False ceiling works | 10d | 2027-10-03 | 2027-10-12 | 741, 756 |  | 7 day week with NGT | 8009912 |

| ID | WBS | Task | Duration | Start | Finish | Predecessors | Constraint | Calendar | Unique_Task_ID |
| --- | --- | --- | --- | --- | --- | --- | --- | --- | --- |
| 758 | 37400.37600.39600.42000.43200.67300 | **Thirty one Floor** | 135d | 2027-06-10 | 2027-10-22 |  | start no earlier than 2027-06-10 | 7 day week with NGT | 135045 |
| 759 | 37400.37600.39600.42000.43200.67300.480300 | Blockwork | 10d | 2027-06-10 | 2027-06-19 | 743 |  | 7 day week with NGT | 135055 |
| 760 | 37400.37600.39600.42000.43200.67300.480400 | Internal Plumbing Works | 6d | 2027-06-20 | 2027-06-25 | 759 |  | 7 day week with NGT | 135065 |
| 761 | 37400.37600.39600.42000.43200.67300.480500 | Waterproofing Works | 10d | 2027-06-22 | 2027-07-01 | 760SS+2d |  | 7 day week with NGT | 135075 |
| 762 | 37400.37600.39600.42000.43200.67300.480600 | PCC | 8d | 2027-07-03 | 2027-07-10 | 761, 764SS |  | 7 day week with NGT | 135115 |
| 763 | 37400.37600.39600.42000.43200.67300.480700 | Electrical Wiring works | 11d | 2027-06-22 | 2027-07-02 | 761SS |  | 7 day week with NGT | 135085 |
| 764 | 37400.37600.39600.42000.43200.67300.480800 | Internal Plaster Works | 8d | 2027-07-03 | 2027-07-10 | 760, 761, 763 |  | 7 day week with NGT | 135095 |
| 765 | 37400.37600.39600.42000.43200.67300.480900 | Toilet Dado Works | 9d | 2027-07-11 | 2027-07-19 | 760, 761, 763, 764 |  | 7 day week with NGT | 135105 |
| 766 | 37400.37600.39600.42000.43200.67300.481000 | Toilet Flooring Works | 7d | 2027-07-20 | 2027-07-26 | 762, 765 |  | 7 day week with NGT | 135125 |
| 767 | 37400.37600.39600.42000.43200.67300.481100 | Living Dining Flooring | 15d | 2027-07-27 | 2027-08-10 | 766 |  | 7 day week with NGT | 135135 |
| 768 | 37400.37600.39600.42000.43200.67300.481200 | Temporary Door Fixing | 9d | 2027-06-20 | 2027-06-28 | 759 |  | 7 day week with NGT | 135145 |
| 769 | 37400.37600.39600.42000.43200.67300.481300 | Aluminium Door Widnow Fixing | 35d | 2027-08-11 | 2027-09-14 | 767, 768 |  | 7 day week with NGT | 135155 |
| 770 | 37400.37600.39600.42000.43200.67300.481400 | Rehung Door Fixing | 8d | 2027-09-15 | 2027-09-22 | 769 |  | 7 day week with NGT | 135165 |
| 771 | 37400.37600.39600.42000.43200.67300.481500 | Putty Primer coat | 6d | 2027-09-23 | 2027-09-28 | 770 |  | 7 day week with NGT | 135175 |
| 772 | 37400.37600.39600.42000.43200.67300.481600 | Painting First Coat | 12d | 2027-09-29 | 2027-10-10 | 761, 763, 770, 771 |  | 7 day week with NGT | 135185 |
| 773 | 37400.37600.39600.42000.43200.67300.481700 | False ceiling works | 10d | 2027-10-13 | 2027-10-22 | 757, 772 |  | 7 day week with NGT | 135195 |
| 774 | 37400.37600.39600.42000.43200.67400 | **Thirty two Floor** | 160d | 2027-06-20 | 2028-01-10 |  | start no earlier than 2027-06-20 | 7 day week with NGT | 7998212 |
| 775 | 37400.37600.39600.42000.43200.67400.481800 | Blockwork | 10d | 2027-06-20 | 2027-06-29 | 759 |  | 7 day week with NGT | 8009922 |
| 776 | 37400.37600.39600.42000.43200.67400.481900 | Internal Plumbing Works | 15d | 2027-06-30 | 2027-07-14 | 775 |  | 7 day week with NGT | 8009932 |
| 777 | 37400.37600.39600.42000.43200.67400.482000 | Waterproofing Works | 15d | 2027-07-02 | 2027-07-16 | 776SS+2d |  | 7 day week with NGT | 8009942 |
| 778 | 37400.37600.39600.42000.43200.67400.482100 | PCC | 12d | 2027-07-17 | 2027-07-28 | 777, 780SS |  | 7 day week with NGT | 8009952 |
| 779 | 37400.37600.39600.42000.43200.67400.482200 | Electrical Wiring works | 15d | 2027-07-02 | 2027-07-16 | 777SS |  | 7 day week with NGT | 8009962 |
| 780 | 37400.37600.39600.42000.43200.67400.482300 | Internal Plaster Works | 17d | 2027-07-17 | 2027-08-02 | 776, 777, 779 |  | 7 day week with NGT | 8009972 |
| 781 | 37400.37600.39600.42000.43200.67400.482400 | Toilet Dado Works | 30d | 2027-08-03 | 2027-09-01 | 776, 777, 779, 780 |  | 7 day week with NGT | 8009982 |
| 782 | 37400.37600.39600.42000.43200.67400.482500 | Toilet Flooring Works | 25d | 2027-09-02 | 2027-09-26 | 778, 781 |  | 7 day week with NGT | 8009992 |
| 783 | 37400.37600.39600.42000.43200.67400.482600 | Living Dining Flooring | 10d | 2027-09-27 | 2027-10-06 | 782 |  | 7 day week with NGT | 8010002 |
| 784 | 37400.37600.39600.42000.43200.67400.482700 | Temporary Door Fixing | 9d | 2027-06-30 | 2027-07-08 | 775 |  | 7 day week with NGT | 8010012 |
| 785 | 37400.37600.39600.42000.43200.67400.482800 | Aluminium Door Widnow Fixing | 15d | 2027-10-07 | 2027-10-21 | 783, 784 |  | 7 day week with NGT | 8010022 |
| 786 | 37400.37600.39600.42000.43200.67400.482900 | Rehung Door Fixing | 8d | 2027-10-22 | 2027-10-29 | 785 |  | 7 day week with NGT | 8010032 |
| 787 | 37400.37600.39600.42000.43200.67400.483000 | Putty Primer coat | 6d | 2027-10-30 | 2027-12-19 | 786 |  | 7 day week with NGT | 8010042 |
| 788 | 37400.37600.39600.42000.43200.67400.483100 | Painting First Coat | 12d | 2027-12-20 | 2027-12-31 | 777, 779, 786, 787 |  | 7 day week with NGT | 8010052 |
| 789 | 37400.37600.39600.42000.43200.67400.483200 | False ceiling works | 10d | 2028-01-01 | 2028-01-10 | 773, 788 |  | 7 day week with NGT | 8010062 |

| ID | WBS | Task | Duration | Start | Finish | Predecessors | Constraint | Calendar | Unique_Task_ID |
| --- | --- | --- | --- | --- | --- | --- | --- | --- | --- |
| 790 | 37400.37600.39600.42000.223600 | **Terrace Finishing** | 80d | 2027-05-12 | 2027-07-30 |  | start no earlier than 2027-05-12 | 7 day week with NGT | 3411 |
| 791 | 37400.37600.39600.42000.223600.325900 | Terrace Waterproofing | 40d | 2027-05-12 | 2027-06-20 | 248 |  | 7 day week with NGT | 8001472 |
| 792 | 37400.37600.39600.42000.223600.326000 | Terrace Finishing | 40d | 2027-06-21 | 2027-07-30 | 791 |  | 7 day week with NGT | 8001482 |
| 793 | 37400.37600.39600.42000.122900 | **Common Area Finishing** | 288d | 2027-05-12 | 2028-04-08 |  | start no earlier than 2027-05-12 | 7 day week with NGT | 7998912 |
| 794 | 37400.37600.39600.42000.122900.326100 | Blockwork | 40d | 2027-05-12 | 2027-06-20 | 248 |  | 7 day week with NGT | 8001492 |
| 795 | 37400.37600.39600.42000.122900.326200 | Internal Plaster | 120d | 2027-06-01 | 2027-09-28 | 794SS+20d |  | 7 day week with NGT | 8001502 |
| 796 | 37400.37600.39600.42000.122900.326300 | Staircase railing fixing | 150d | 2027-06-21 | 2028-01-01 | 795SS+20d |  | 7 day week with NGT | 8001512 |
| 797 | 37400.37600.39600.42000.122900.326400 | Main Staircase flooring | 150d | 2027-08-30 | 2028-03-11 | 796SS+70d |  | 7 day week with NGT | 8001522 |
| 798 | 37400.37600.39600.42000.122900.326500 | Fire Staircase railing | 98d | 2028-01-02 | 2028-04-08 | 797FS-70d |  | 7 day week with NGT | 8001532 |
| 799 | 37400.37600.39600.42000.122900.326600 | Fire Door Work | 60d | 2027-09-29 | 2028-01-11 | 797SS+30d |  | 7 day week with NGT | 8001542 |
| 800 | 37400.37600.39600.42000.122900.326700 | Electrical wiring work | 120d | 2027-06-01 | 2027-09-28 | 794SS+20d |  | 7 day week with NGT | 8001552 |
| 801 | 37400.37600.39600.42000.122900.326800 | Lobby Flooring | 150d | 2027-07-01 | 2028-01-11 | 800SS+30d |  | 7 day week with NGT | 8001562 |
| 802 | 37400.37600.39600.42000.122900.326900 | Ceiling & wall putty-primer | 110d | 2027-07-01 | 2027-10-18 | 795SS+30d |  | 7 day week with NGT | 8001572 |
| 803 | 37400.37600.39600.42000.122900.327000 | Ceiling and wall painting | 100d | 2027-07-11 | 2027-10-18 | 795SS+40d |  | 7 day week with NGT | 8001582 |
| 804 | 37400.37600.39600.42000.122900.327100 | Light fixture supply & installation | 45d | 2027-09-09 | 2027-10-23 | 803SS+60d |  | 7 day week with NGT | 8001592 |
| 805 | 37400.37600.39600.42000.50100 | **Glass Railing Fixing** | 62d | 2027-10-28 | 2028-02-11 |  | start no earlier than 2027-10-28 | 7 day week with NGT | 7997862 |
| 806 | 37400.37600.39600.42000.50100.327200 | 2nd Floor | 2d | 2027-10-28 | 2027-10-29 | 871 |  | 7 day week with NGT | 8001602 |
| 807 | 37400.37600.39600.42000.50100.327300 | 3rd Floor | 2d | 2027-10-30 | 2027-10-31 | 806 |  | 7 day week with NGT | 8001612 |
| 808 | 37400.37600.39600.42000.50100.327400 | 4th Floor | 2d | 2027-12-16 | 2027-12-17 | 807 |  | 7 day week with NGT | 3424 |
| 809 | 37400.37600.39600.42000.50100.327500 | 5th Floor | 2d | 2027-12-18 | 2027-12-19 | 808 |  | 7 day week with NGT | 3425 |
| 810 | 37400.37600.39600.42000.50100.327600 | 6th Floor | 2d | 2027-12-20 | 2027-12-21 | 809 |  | 7 day week with NGT | 3426 |
| 811 | 37400.37600.39600.42000.50100.327700 | 7th Floor | 2d | 2027-12-22 | 2027-12-23 | 810 |  | 7 day week with NGT | 3427 |
| 812 | 37400.37600.39600.42000.50100.327800 | 8th Floor | 2d | 2027-12-24 | 2027-12-25 | 811 |  | 7 day week with NGT | 3428 |
| 813 | 37400.37600.39600.42000.50100.327900 | 9th Floor | 2d | 2027-12-26 | 2027-12-27 | 812 |  | 7 day week with NGT | 3429 |
| 814 | 37400.37600.39600.42000.50100.328000 | 10th Floor | 2d | 2027-12-28 | 2027-12-29 | 813 |  | 7 day week with NGT | 3439 |
| 815 | 37400.37600.39600.42000.50100.328100 | 11th Floor | 2d | 2027-12-30 | 2027-12-31 | 814 |  | 7 day week with NGT | 3449 |
| 816 | 37400.37600.39600.42000.50100.328200 | 12th Floor | 2d | 2028-01-01 | 2028-01-02 | 815 |  | 7 day week with NGT | 3459 |
| 817 | 37400.37600.39600.42000.50100.328300 | 13th Floor | 2d | 2028-01-03 | 2028-01-04 | 816 |  | 7 day week with NGT | 3469 |
| 818 | 37400.37600.39600.42000.50100.328400 | 14th Floor | 2d | 2028-01-05 | 2028-01-06 | 817 |  | 7 day week with NGT | 3479 |
| 819 | 37400.37600.39600.42000.50100.328500 | 15th Floor | 2d | 2028-01-07 | 2028-01-08 | 818 |  | 7 day week with NGT | 3489 |
| 820 | 37400.37600.39600.42000.50100.328600 | 16th Floor | 2d | 2028-01-09 | 2028-01-10 | 819 |  | 7 day week with NGT | 3499 |
| 821 | 37400.37600.39600.42000.50100.328700 | 17th Floor | 2d | 2028-01-11 | 2028-01-12 | 820 |  | 7 day week with NGT | 3509 |
| 822 | 37400.37600.39600.42000.50100.328800 | 18th Floor | 2d | 2028-01-13 | 2028-01-14 | 821 |  | 7 day week with NGT | 3519 |
| 823 | 37400.37600.39600.42000.50100.328900 | 19th Floor | 2d | 2028-01-15 | 2028-01-16 | 822 |  | 7 day week with NGT | 3529 |
| 824 | 37400.37600.39600.42000.50100.329000 | 20th Floor | 2d | 2028-01-17 | 2028-01-18 | 823 |  | 7 day week with NGT | 3539 |
| 825 | 37400.37600.39600.42000.50100.329100 | 21st Floor | 2d | 2028-01-19 | 2028-01-20 | 824 |  | 7 day week with NGT | 3549 |
| 826 | 37400.37600.39600.42000.50100.329200 | 22nd Floor | 2d | 2028-01-21 | 2028-01-22 | 825 |  | 7 day week with NGT | 3559 |
| 827 | 37400.37600.39600.42000.50100.329300 | 23rd Floor | 2d | 2028-01-23 | 2028-01-24 | 826 |  | 7 day week with NGT | 3569 |
| 828 | 37400.37600.39600.42000.50100.329400 | 24th Floor | 2d | 2028-01-25 | 2028-01-26 | 827 |  | 7 day week with NGT | 3579 |
| 829 | 37400.37600.39600.42000.50100.329500 | 25th Floor | 2d | 2028-01-27 | 2028-01-28 | 828 |  | 7 day week with NGT | 3589 |
| 830 | 37400.37600.39600.42000.50100.329600 | 26th Floor | 2d | 2028-01-29 | 2028-01-30 | 829 |  | 7 day week with NGT | 3599 |
| 831 | 37400.37600.39600.42000.50100.329700 | 27th Floor | 2d | 2028-01-31 | 2028-02-01 | 830 |  | 7 day week with NGT | 3609 |
| 832 | 37400.37600.39600.42000.50100.329800 | 28th Floor | 2d | 2028-02-02 | 2028-02-03 | 831 |  | 7 day week with NGT | 3619 |
| 833 | 37400.37600.39600.42000.50100.329900 | 29th Floor | 2d | 2028-02-04 | 2028-02-05 | 832 |  | 7 day week with NGT | 3629 |
| 834 | 37400.37600.39600.42000.50100.330000 | 30th Floor | 2d | 2028-02-06 | 2028-02-07 | 833 |  | 7 day week with NGT | 3639 |
| 835 | 37400.37600.39600.42000.50100.330100 | 31st Floor | 2d | 2028-02-08 | 2028-02-09 | 834 |  | 7 day week with NGT | 3649 |
| 836 | 37400.37600.39600.42000.50100.330200 | 32nd Floor | 2d | 2028-02-10 | 2028-02-11 | 835 |  | 7 day week with NGT | 135665 |

| ID | WBS | Task | Duration | Start | Finish | Predecessors | Constraint | Calendar | Unique_Task_ID |
| --- | --- | --- | --- | --- | --- | --- | --- | --- | --- |
| 837 | 37400.37600.39600.115000 | **MEP** | 420d | 2027-05-12 | 2028-08-18 |  | start no earlier than 2027-05-12 | 7 day week with NGT | 7998802 |
| 838 | 37400.37600.39600.115000.118000 | **Electrical Works** | 265d | 2027-05-12 | 2028-03-16 |  | start no earlier than 2027-05-12 | 7 day week with NGT | 7998882 |
| 839 | 37400.37600.39600.115000.118000.330300 | Cable Tray | 90d | 2027-05-12 | 2027-08-09 | 248 |  | 7 day week with NGT | 8001622 |
| 840 | 37400.37600.39600.115000.118000.330400 | Cable, main & sub main | 80d | 2027-06-26 | 2027-09-13 | 839SS+45d |  | 7 day week with NGT | 8001632 |
| 841 | 37400.37600.39600.115000.118000.330500 | LT panel & DB | 120d | 2027-08-10 | 2028-01-21 | 839 |  | 7 day week with NGT | 8001642 |
| 842 | 37400.37600.39600.115000.118000.330600 | Rising main | 90d | 2027-07-11 | 2027-10-08 | 839SS+60d |  | 7 day week with NGT | 8001652 |
| 843 | 37400.37600.39600.115000.118000.330700 | EARTHING Works | 60d | 2027-05-27 | 2027-07-25 | 839SS+15d |  | 7 day week with NGT | 8001662 |
| 844 | 37400.37600.39600.115000.118000.330800 | Advance lightening protection | 60d | 2027-07-31 | 2027-09-28 | 792 |  | 7 day week with NGT | 8001672 |
| 845 | 37400.37600.39600.115000.118000.330900 | Inverter | 35d | 2027-12-28 | 2028-01-31 | 842, 843, 846 |  | 7 day week with NGT | 8001682 |
| 846 | 37400.37600.39600.115000.118000.331000 | Energy meter | 60d | 2027-09-14 | 2027-12-27 | 840 |  | 7 day week with NGT | 8001692 |
| 847 | 37400.37600.39600.115000.118000.331100 | Exhast fan | 60d | 2027-08-28 | 2027-10-26 | 785FF+5d |  | 7 day week with NGT | 8001702 |
| 848 | 37400.37600.39600.115000.118000.331200 | FTTH | 60d | 2027-07-16 | 2027-09-13 | 843FS-10d |  | 7 day week with NGT | 8001712 |
| 849 | 37400.37600.39600.115000.118000.331300 | Security System - FA & PA | 55d | 2028-01-22 | 2028-03-16 | 841, 848 |  | 7 day week with NGT | 8001722 |
| 850 | 37400.37600.39600.115000.118000.331400 | Solar water heater | 60d | 2027-07-31 | 2027-09-28 | 792 |  | 7 day week with NGT | 8001732 |
| 851 | 37400.37600.39600.115000.163900 | **Plumbing Works** | 165d | 2027-06-21 | 2028-01-16 |  | start no earlier than 2027-06-21 | 7 day week with NGT | 7999522 |
| 852 | 37400.37600.39600.115000.163900.331500 | Terrace looping | 45d | 2027-06-21 | 2027-08-04 | 791 |  | 7 day week with NGT | 8001742 |
| 853 | 37400.37600.39600.115000.163900.331600 | Shaft Plumbing | 120d | 2027-08-05 | 2028-01-16 | 852 |  | 7 day week with NGT | 8001752 |
| 854 | 37400.37600.39600.115000.163900.331700 | CP sanitary fixture supply | 75d | 2027-08-03 | 2027-10-16 | 780 |  | 7 day week with NGT | 8001762 |
| 855 | 37400.37600.39600.115000.163900.331800 | Cold & flushing water supply | 90d | 2027-08-03 | 2027-10-31 | 780 |  | 7 day week with NGT | 8001772 |
| 856 | 37400.37600.39600.115000.163900.331900 | Misc work | 30d | 2027-10-22 | 2028-01-04 | 855FS-10d |  | 7 day week with NGT | 8001782 |
| 857 | 37400.37600.39600.115000.212600 | **Fire Fighting Works** | 218d | 2027-07-21 | 2028-04-08 |  | start no earlier than 2027-07-21 | 7 day week with NGT | 8000222 |
| 858 | 37400.37600.39600.115000.212600.332000 | Fire hydrant work | 90d | 2027-07-31 | 2027-10-28 | 795SS+60d |  | 7 day week with NGT | 8001792 |
| 859 | 37400.37600.39600.115000.212600.332100 | Sprinkler & piping work | 88d | 2028-01-12 | 2028-04-08 | 858FS+30d |  | 7 day week with NGT | 8001802 |
| 860 | 37400.37600.39600.115000.212600.332200 | Shaft Downtake works | 90d | 2027-07-21 | 2027-10-18 | 791FS+30d |  | 7 day week with NGT | 8001812 |
| 861 | 37400.37600.39600.115000.212600.332300 | Connection to pump room | 30d | 2027-10-19 | 2028-01-01 | 860 |  | 7 day week with NGT | 9131 |

| ID | WBS | Task | Duration | Start | Finish | Predecessors | Complete | Constraint | Calendar | Unique_Task_ID |
| --- | --- | --- | --- | --- | --- | --- | --- | --- | --- | --- |
| 862 | 37400.37600.39600.115000.219800 | **Lift Works** | 170d | 2027-05-12 | 2027-10-28 |  |  | start no earlier than 2027-05-12 | 7 day week with NGT | 8000332 |
| 863 | 37400.37600.39600.115000.219800.332400 | Lift Shaft Handover | 40d | 2027-05-12 | 2027-06-20 | 248 |  |  | 7 day week with NGT | 8001822 |
| 864 | 37400.37600.39600.115000.219800.332500 | Lift installation work | 45d | 2027-06-21 | 2027-08-04 | 863 |  |  | 7 day week with NGT | 8001832 |
| 865 | 37400.37600.39600.115000.219800.332600 | Lift testing and commissioning | 85d | 2027-08-05 | 2027-10-28 | 864 |  |  | 7 day week with NGT | 8001842 |
| 866 | 37400.37600.39600.115000.227000 | **AC Works** | 100d | 2028-05-11 | 2028-08-18 |  |  | start no earlier than 2028-05-11 | 7 day week with NGT | 8000362 |
| 867 | 37400.37600.39600.115000.227000.332700 | Split AC | 100d | 2028-05-11 | 2028-08-18 | 883FS-30d |  |  | 7 day week with NGT | 8001852 |
| 868 | 37400.37600.39600.166200 | **Tower Completion** | 270d | 2027-04-01 | 2028-02-09 |  |  | start no earlier than 2027-04-01 | 7 day week with NGT | 8000132 |
| 869 | 37400.37600.39600.166200.286800 | SURFACE PREPARATION | 80d | 2027-04-01 | 2027-06-19 | 276 |  |  | 7 day week with NGT | 8000442 |
| 870 | 37400.37600.39600.166200.286900 | External Painting | 100d | 2027-06-20 | 2027-09-27 | 869 |  |  | 7 day week with NGT | 8000452 |
| 871 | 37400.37600.39600.166200.287000 | Final coat of painting | 30d | 2027-09-28 | 2027-10-27 | 870 |  |  | 7 day week with NGT | 8000462 |
| 872 | 37400.37600.39600.166200.287100 | Misc. work | 60d | 2027-10-28 | 2028-02-09 | 871 |  |  | 7 day week with NGT | 8000472 |
| 873 | 37400.37600.39600.227700 | **Basement Lobby** | 60d | 2028-01-12 | 2028-03-11 |  |  | start no earlier than 2028-01-12 | 7 day week with NGT | 8000412 |
| 874 | 37400.37600.39600.227700.287200 | Basement Lobby | 60d | 2028-01-12 | 2028-03-11 | 801 |  |  | 7 day week with NGT | 8000482 |
| 875 | 37400.37600.39600.125900 | **Post OC Activities** | 558d | 2027-07-17 | 2029-03-10 |  |  | start no earlier than 2027-07-17 | 7 day week with NGT | 7998962 |
| 876 | 37400.37600.39600.125900.287300 | Wardrobe installation | 180d | 2028-05-11 | 2028-11-06 | 883FS-30d |  |  | 7 day week with NGT | 8000492 |
| 877 | 37400.37600.39600.125900.287400 | CP & SANITARYWARE | 120d | 2027-10-17 | 2028-03-29 | 854 |  |  | 7 day week with NGT | 8000502 |
| 878 | 37400.37600.39600.125900.287500 | Wooden Flooring | 180d | 2028-05-11 | 2028-11-06 | 883FS-30d |  |  | 7 day week with NGT | 8000512 |
| 879 | 37400.37600.39600.125900.287600 | Electrical Fixtures And Fittings | 120d | 2027-07-17 | 2027-12-28 | 779 |  |  | 7 day week with NGT | 8000522 |
| 880 | 37400.37600.39600.125900.287700 | Modular Kitchen | 180d | 2028-05-11 | 2028-11-06 | 876SS |  |  | 7 day week with NGT | 8000532 |
| 881 | 37400.37600.39600.125900.287800 | Final Coat Paint | 90d | 2027-10-24 | 2028-03-06 | 804 |  |  | 7 day week with NGT | 8000542 |
| 882 | 37400.37600.39600.125900.287900 | OC Application/Readiness | 1d | 2028-04-09 | 2028-04-09 | 872FS-2d, 248, 796, 865, 847, 849, 850, 845, 844, 799, 853, 856, 859, 861, 789, 293, 798, 802, 836, 469 |  |  | 7 day week with NGT | 8000552 |
| 883 | 37400.37600.39600.125900.288000 | OC Receipt | 1d | 2028-06-09 | 2028-06-09 | 871, 874, 882FS+60d |  |  | 7 day week with NGT | 8000562 |
| 884 | 37400.37600.39600.125900.288100 | Offer To Possession | 30d | 2029-02-09 | 2029-03-10 | 876, 877, 878, 879, 880, 881, 883FF+274d, 867 |  |  | 7 day week with NGT | 8000572 |
| 885 | 37400.37600.39700 | **Tower 5** | 1395d | 2024-10-11 | 2029-02-01 |  | 4% | start no earlier than 2024-10-11 | 7 day week with NGT | 147535 |
| 886 | 37400.37600.39700.115100 | **Substructure Works** | 439d | 2024-10-11 | 2026-03-23 |  | 70% | start no earlier than 2024-10-11 | 7 day week with NGT | 147925 |
| 887 | 37400.37600.39700.115100.118100 | **RCC Works** | 173d | 2024-10-11 | 2025-05-16 |  | 100% | start no earlier than 2024-10-11 | 7 day week with NGT | 147955 |
| 888 | 37400.37600.39700.115100.118100.131400 | **Raft** | 21d | 2024-10-11 | 2024-11-05 |  | 100% | start no earlier than 2024-10-11 | 7 day week with NGT | 148035 |
| 889 | 37400.37600.39700.115100.118100.131400.282800 | Surface Dressing | 2d | 2024-10-14 | 2024-10-15 | 1769SS+15d | 100% | start no earlier than 2024-10-14 | 7 day week with NGT | 149615 |
| 890 | 37400.37600.39700.115100.118100.131400.282700 | Anti Termite Treatment | 5d | 2024-10-11 | 2024-10-15 | 889 | 100% | start no earlier than 2024-10-11 | 7 day week with NGT | 149625 |
| 891 | 37400.37600.39700.115100.118100.131400.282600 | PCC | 3d | 2024-10-13 | 2024-10-15 | 890 | 100% | start no earlier than 2024-10-13 | 7 day week with NGT | 149635 |
| 892 | 37400.37600.39700.115100.118100.131400.282500 | Reinforcement Laying | 14d | 2024-10-15 | 2024-11-01 | 891 | 100% | start no earlier than 2024-10-15 | 7 day week with NGT | 149645 |
| 893 | 37400.37600.39700.115100.118100.131400.282400 | Outer Shuttering of Raft Area | 1d | 2024-10-31 | 2024-11-01 | 892FF | 100% | start no earlier than 2024-10-31 | 7 day week with NGT | 149655 |
| 894 | 37400.37600.39700.115100.118100.131400.282300 | Raft Concreting | 1d | 2024-10-31 | 2024-11-05 | 893 | 100% | start no earlier than 2024-10-31 | 7 day week with NGT | 149665 |

| ID | WBS | Task | Duration | Start | Finish | Predecessors | Complete | Constraint | Calendar | Unique_Task_ID |
| --- | --- | --- | --- | --- | --- | --- | --- | --- | --- | --- |
| 895 | 37400.37600.39700.115100.118100.131500 | **Dummy Basement** | 50d | 2024-10-26 | 2025-01-28 |  | 100% | start no earlier than 2024-10-26 | 7 day week with NGT | 148025 |
| 896 | 37400.37600.39700.115100.118100.131500.282200 | Column and Shear Wall Reinforcement | 6d | 2024-10-26 | 2024-10-31 | 894 | 100% | start no earlier than 2024-10-26 | 7 day week with NGT | 149675 |
| 897 | 37400.37600.39700.115100.118100.131500.282100 | Column and Shear Wall Formwork | 33d | 2024-10-30 | 2025-01-27 | 896FF+1d | 100% | start no earlier than 2024-10-30 | 7 day week with NGT | 149685 |
| 898 | 37400.37600.39700.115100.118100.131500.282000 | Column and Shear Wall Casting | 33d | 2024-10-30 | 2025-01-28 | 897FF+1d | 100% | start no earlier than 2024-10-30 | 7 day week with NGT | 149695 |
| 899 | 37400.37600.39700.115100.118100.131500.281900 | Slab Formwork | 37d | 2024-12-20 | 2025-01-28 | 898SS+6d | 100% | start no earlier than 2024-12-20 | 7 day week with NGT | 149705 |
| 900 | 37400.37600.39700.115100.118100.131500.281800 | Slab Reinforcement | 29d | 2024-12-31 | 2025-01-28 | 899FS-33d | 100% | start no earlier than 2024-12-31 | 7 day week with NGT | 149715 |
| 901 | 37400.37600.39700.115100.118100.131500.281700 | Slab Casting | 24d | 2025-01-05 | 2025-01-28 | 900FF+3d | 100% | start no earlier than 2025-01-05 | 7 day week with NGT | 149725 |
| 902 | 37400.37600.39700.115100.118100.131600 | **B2 Roof** | 61d | 2025-01-22 | 2025-03-23 |  | 100% | start no earlier than 2025-01-22 | 7 day week with NGT | 148015 |
| 903 | 37400.37600.39700.115100.118100.131600.281600 | Column and Shear Wall Reinforcement | 42d | 2025-01-22 | 2025-03-04 | 901 | 100% | start no earlier than 2025-01-22 | 7 day week with NGT | 149735 |
| 904 | 37400.37600.39700.115100.118100.131600.281500 | Column and Shear Wall Formwork | 44.63d | 2025-01-24 | 2025-03-09 | 903FF+1d | 100% | start no earlier than 2025-01-24 | 7 day week with NGT | 149745 |
| 905 | 37400.37600.39700.115100.118100.131600.281400 | Column and Shear Wall Casting | 4.69d | 2025-01-29 | 2025-03-17 | 904FF+0.37d | 100% | start no earlier than 2025-01-29 | 7 day week with NGT | 149755 |
| 906 | 37400.37600.39700.115100.118100.131600.281300 | Slab Formwork | 13d | 2025-01-30 | 2025-03-19 | 905SS+39d | 100% | start no earlier than 2025-01-30 | 7 day week with NGT | 149765 |
| 907 | 37400.37600.39700.115100.118100.131600.281200 | Slab Reinforcement | 10d | 2025-01-31 | 2025-03-20 | 906FS-47.02d | 100% | start no earlier than 2025-01-31 | 7 day week with NGT | 149775 |
| 908 | 37400.37600.39700.115100.118100.131600.281100 | Slab Casting | 17d | 2025-02-28 | 2025-03-23 | 907FF+3d | 100% | start no earlier than 2025-02-28 | 7 day week with NGT | 149785 |
| 909 | 37400.37600.39700.115100.118100.131700 | **B1 Roof** | 88d | 2025-02-18 | 2025-05-16 |  | 100% | start no earlier than 2025-02-18 | 7 day week with NGT | 148005 |
| 910 | 37400.37600.39700.115100.118100.131700.281000 | Column and Shear Wall Reinforcement | 35d | 2025-02-18 | 2025-04-13 | 908FS-47d | 100% | start no earlier than 2025-02-18 | 7 day week with NGT | 149795 |
| 911 | 37400.37600.39700.115100.118100.131700.280900 | Column and Shear Wall Formwork | 26d | 2025-03-01 | 2025-05-14 | 910FF+1d | 100% | start no earlier than 2025-03-01 | 7 day week with NGT | 149805 |
| 912 | 37400.37600.39700.115100.118100.131700.280800 | Column and Shear Wall Casting | 15d | 2025-03-09 | 2025-05-14 | 911FF+1d | 100% | start no earlier than 2025-03-09 | 7 day week with NGT | 149815 |
| 913 | 37400.37600.39700.115100.118100.131700.280700 | Slab Formwork | 15d | 2025-04-10 | 2025-05-11 | 912SS+32d | 100% | start no earlier than 2025-04-10 | 7 day week with NGT | 149825 |
| 914 | 37400.37600.39700.115100.118100.131700.280600 | Slab Reinforcement | 14d | 2025-04-08 | 2025-05-16 | 913FS-40d | 100% | start no earlier than 2025-04-08 | 7 day week with NGT | 149835 |
| 915 | 37400.37600.39700.115100.118100.131700.280500 | Slab Casting | 12d | 2025-04-23 | 2025-05-16 | 914FF+1d | 100% | start no earlier than 2025-04-23 | 7 day week with NGT | 149845 |
| 916 | 37400.37600.39700.115100.130400 | **Substructure Finishing Works** | 98d | 2025-12-16 | 2026-03-23 |  |  | start no earlier than 2025-12-16 | 7 day week with NGT | 147975 |
| 917 | 37400.37600.39700.115100.130400.215800 | **Basement - 2** | 73d | 2025-12-16 | 2026-02-26 |  |  | start no earlier than 2025-12-16 | 7 day week with NGT | 148395 |
| 918 | 37400.37600.39700.115100.130400.215800.483300 | Masonary Works | 30d | 2025-12-16 | 2026-01-14 | 908FS+30d |  |  | 7 day week with NGT | 149855 |
| 919 | 37400.37600.39700.115100.130400.215800.483400 | Plaster Works | 20d | 2025-12-31 | 2026-01-19 | 918SS+15d |  |  | 7 day week with NGT | 149865 |
| 920 | 37400.37600.39700.115100.130400.215800.483500 | White Wash | 18d | 2026-01-15 | 2026-02-01 | 919SS+15d |  |  | 7 day week with NGT | 149875 |
| 921 | 37400.37600.39700.115100.130400.215800.483600 | VDF | 25d | 2026-02-02 | 2026-02-26 | 920 |  |  | 7 day week with NGT | 149885 |

| ID | WBS | Task | Duration | Start | Finish | Predecessors | Complete | Constraint | Calendar | Unique_Task_ID |
| --- | --- | --- | --- | --- | --- | --- | --- | --- | --- | --- |
| 922 | 37400.37600.39700.115100.130400.215700 | **Basement - 1** | 98d | 2025-12-16 | 2026-03-23 |  |  | start no earlier than 2025-12-16 | 7 day week with NGT | 148385 |
| 923 | 37400.37600.39700.115100.130400.215700.483700 | Masonary Works | 30d | 2025-12-16 | 2026-01-14 | 915FS+30d |  |  | 7 day week with NGT | 149895 |
| 924 | 37400.37600.39700.115100.130400.215700.483800 | Plaster Works | 20d | 2025-12-31 | 2026-01-19 | 923SS+15d |  |  | 7 day week with NGT | 149905 |
| 925 | 37400.37600.39700.115100.130400.215700.483900 | White Wash | 18d | 2026-01-15 | 2026-02-01 | 924SS+15d |  |  | 7 day week with NGT | 149915 |
| 926 | 37400.37600.39700.115100.130400.215700.484000 | VDF | 25d | 2026-02-27 | 2026-03-23 | 921, 925 |  |  | 7 day week with NGT | 149925 |
| 927 | 37400.37600.39700.44400 | **Superstructure Works** | 568d | 2025-06-23 | 2027-04-11 |  | 7% | start no earlier than 2025-06-23 | 7 day week with NGT | 147565 |
| 928 | 37400.37600.39700.44400.46200 | **RCC Works** | 561d | 2025-06-23 | 2027-04-04 |  | 9% | start no earlier than 2025-06-23 | 7 day week with NGT | 147575 |
| 929 | 37400.37600.39700.44400.46200.131800 | **Podium Roof** | 130d | 2025-06-23 | 2025-10-30 |  | 100% | start no earlier than 2025-06-23 | 7 day week with NGT | 147995 |
| 930 | 37400.37600.39700.44400.46200.131800.280400 | Column and Shear Wall Reinforcement | 13d | 2025-06-23 | 2025-10-23 | 915 | 100% | start no earlier than 2025-06-23 | 7 day week with NGT | 149935 |
| 931 | 37400.37600.39700.44400.46200.131800.280300 | Column and Shear Wall Formwork | 11d | 2025-06-24 | 2025-10-28 | 930FF+1d | 100% | start no earlier than 2025-06-24 | 7 day week with NGT | 149945 |
| 932 | 37400.37600.39700.44400.46200.131800.280200 | Column and Shear Wall Casting | 10d | 2025-06-26 | 2025-10-28 | 931FF+1d | 100% | start no earlier than 2025-06-26 | 7 day week with NGT | 149955 |
| 933 | 37400.37600.39700.44400.46200.131800.280100 | Slab Formwork | 12d | 2025-09-13 | 2025-10-30 | 932SS+100d | 100% | start no earlier than 2025-09-13 | 7 day week with NGT | 149965 |
| 934 | 37400.37600.39700.44400.46200.131800.280000 | Slab Reinforcement | 11d | 2025-09-22 | 2025-10-30 | 933FS-48d | 100% | start no earlier than 2025-09-22 | 7 day week with NGT | 149975 |
| 935 | 37400.37600.39700.44400.46200.131800.279900 | Slab Casting | 14d | 2025-09-28 | 2025-10-30 | 934FF+4d | 100% | start no earlier than 2025-09-28 | 7 day week with NGT | 149985 |
| 936 | 37400.37600.39700.44400.46200.140400 | **First Floor Roof** | 45d | 2025-10-18 | 2026-01-15 |  | 21% | start no earlier than 2025-10-18 | 7 day week with NGT | 147985 |
| 937 | 37400.37600.39700.44400.46200.140400.279800 | Column and Shear Wall Reinforcement | 14d | 2025-10-18 | 2025-12-20 | 935FS-12d | 78% | start no earlier than 2025-10-18 | 7 day week with NGT | 149995 |
| 938 | 37400.37600.39700.44400.46200.140400.279700 | Column and Shear Wall Formwork | 5d | 2025-10-30 | 2025-12-18 | 937FS-6d | 40% | start no earlier than 2025-10-30 | 7 day week with NGT | 150005 |
| 939 | 37400.37600.39700.44400.46200.140400.279600 | Column and Shear Wall Casting | 4d | 2025-10-30 | 2025-12-19 | 938FF+1d | 50% |  | 7 day week with NGT | 150015 |
| 940 | 37400.37600.39700.44400.46200.140400.279500 | Slab Formwork | 28d | 2025-10-30 | 2026-01-10 | 939SS+1d | 7% | start no earlier than 2025-10-30 | 7 day week with NGT | 150025 |
| 941 | 37400.37600.39700.44400.46200.140400.484100 | Slab Reinforcement | 15d | 2025-12-30 | 2026-01-13 | 940FS-12d |  |  | 7 day week with NGT | 150035 |
| 942 | 37400.37600.39700.44400.46200.140400.484200 | Slab Casting | 14d | 2026-01-02 | 2026-01-15 | 941FF+2d |  |  | 7 day week with NGT | 150045 |
| 943 | 37400.37600.39700.44400.46200.147300 | **Second Floor Roof** | 28d | 2026-01-16 | 2026-02-12 |  |  | start no earlier than 2026-01-16 | 7 day week with NGT | 148055 |
| 944 | 37400.37600.39700.44400.46200.147300.484300 | Column and Shear Wall Reinforcement | 10d | 2026-01-16 | 2026-01-25 | 942 |  |  | 7 day week with NGT | 150055 |
| 945 | 37400.37600.39700.44400.46200.147300.484400 | Column and Shear Wall Formwork | 10d | 2026-01-17 | 2026-01-26 | 944FF+1d |  |  | 7 day week with NGT | 150065 |
| 946 | 37400.37600.39700.44400.46200.147300.484500 | Slab Formwork | 16d | 2026-01-25 | 2026-02-09 | 945FS-2d |  |  | 7 day week with NGT | 150075 |
| 947 | 37400.37600.39700.44400.46200.147300.484600 | Slab Reinforcement | 14d | 2026-01-29 | 2026-02-11 | 946FS-12d |  |  | 7 day week with NGT | 150085 |
| 948 | 37400.37600.39700.44400.46200.147300.484700 | Monolithic Casting | 8d | 2026-02-05 | 2026-02-12 | 947FF+1d |  |  | 7 day week with NGT | 150095 |

| ID | WBS | Task | Duration | Start | Finish | Predecessors | Constraint | Calendar | Unique_Task_ID |
| --- | --- | --- | --- | --- | --- | --- | --- | --- | --- |
| 949 | 37400.37600.39700.44400.46200.147400 | **Third Floor Roof** | 18d | 2026-02-13 | 2026-03-02 |  | start no earlier than 2026-02-13 | 7 day week with NGT | 148065 |
| 950 | 37400.37600.39700.44400.46200.147400.484800 | Column and Shear Wall Reinforcement | 7d | 2026-02-13 | 2026-02-19 | 948 |  | 7 day week with NGT | 150105 |
| 951 | 37400.37600.39700.44400.46200.147400.484900 | Column and Shear Wall Formwork | 7d | 2026-02-14 | 2026-02-20 | 950FF+1d |  | 7 day week with NGT | 150115 |
| 952 | 37400.37600.39700.44400.46200.147400.485000 | Slab Formwork | 9d | 2026-02-19 | 2026-02-27 | 951FS-2d |  | 7 day week with NGT | 150125 |
| 953 | 37400.37600.39700.44400.46200.147400.485100 | Slab Reinforcement | 10d | 2026-02-20 | 2026-03-01 | 952FF+2d |  | 7 day week with NGT | 150135 |
| 954 | 37400.37600.39700.44400.46200.147400.485200 | Monolithic Casting | 8d | 2026-02-23 | 2026-03-02 | 953FF+1d |  | 7 day week with NGT | 150145 |
| 955 | 37400.37600.39700.44400.46200.147500 | **4th Floor Roof** | 12d | 2026-03-03 | 2026-03-14 |  | start no earlier than 2026-03-03 | 7 day week with NGT | 148075 |
| 956 | 37400.37600.39700.44400.46200.147500.485300 | Column and Shear Wall Reinforcement | 5d | 2026-03-03 | 2026-03-07 | 954 |  | 7 day week with NGT | 150155 |
| 957 | 37400.37600.39700.44400.46200.147500.485400 | Column and Shear Wall Formwork | 5d | 2026-03-04 | 2026-03-08 | 956FF+1d |  | 7 day week with NGT | 150165 |
| 958 | 37400.37600.39700.44400.46200.147500.485500 | Slab Formwork | 5d | 2026-03-07 | 2026-03-11 | 957FS-2d |  | 7 day week with NGT | 150175 |
| 959 | 37400.37600.39700.44400.46200.147500.485600 | Slab Reinforcement | 5d | 2026-03-09 | 2026-03-13 | 958FF+2d |  | 7 day week with NGT | 150185 |
| 960 | 37400.37600.39700.44400.46200.147500.485700 | Monolithic Casting | 2d | 2026-03-13 | 2026-03-14 | 959FF+1d |  | 7 day week with NGT | 150195 |
| 961 | 37400.37600.39700.44400.46200.147600 | **5th Floor Roof** | 12d | 2026-03-15 | 2026-03-26 |  | start no earlier than 2026-03-15 | 7 day week with NGT | 148085 |
| 962 | 37400.37600.39700.44400.46200.147600.485800 | Column and Shear Wall Reinforcement | 5d | 2026-03-15 | 2026-03-19 | 960 |  | 7 day week with NGT | 150205 |
| 963 | 37400.37600.39700.44400.46200.147600.485900 | Column and Shear Wall Formwork | 5d | 2026-03-16 | 2026-03-20 | 962FF+1d |  | 7 day week with NGT | 150215 |
| 964 | 37400.37600.39700.44400.46200.147600.486000 | Slab Formwork | 5d | 2026-03-19 | 2026-03-23 | 963FS-2d |  | 7 day week with NGT | 150225 |
| 965 | 37400.37600.39700.44400.46200.147600.486100 | Slab Reinforcement | 5d | 2026-03-21 | 2026-03-25 | 964FF+2d |  | 7 day week with NGT | 150235 |
| 966 | 37400.37600.39700.44400.46200.147600.486200 | Monolithic Casting | 2d | 2026-03-25 | 2026-03-26 | 965FF+1d |  | 7 day week with NGT | 150245 |
| 967 | 37400.37600.39700.44400.46200.147700 | **6th Floor Roof** | 12d | 2026-03-27 | 2026-04-07 |  | start no earlier than 2026-03-27 | 7 day week with NGT | 148095 |
| 968 | 37400.37600.39700.44400.46200.147700.486300 | Column and Shear Wall Reinforcement | 5d | 2026-03-27 | 2026-03-31 | 966 |  | 7 day week with NGT | 150255 |
| 969 | 37400.37600.39700.44400.46200.147700.486400 | Column and Shear Wall Formwork | 5d | 2026-03-28 | 2026-04-01 | 968FF+1d |  | 7 day week with NGT | 150265 |
| 970 | 37400.37600.39700.44400.46200.147700.486500 | Slab Formwork | 5d | 2026-03-31 | 2026-04-04 | 969FS-2d |  | 7 day week with NGT | 150275 |
| 971 | 37400.37600.39700.44400.46200.147700.486600 | Slab Reinforcement | 5d | 2026-04-02 | 2026-04-06 | 970FF+2d |  | 7 day week with NGT | 150285 |
| 972 | 37400.37600.39700.44400.46200.147700.486700 | Monolithic Casting | 2d | 2026-04-06 | 2026-04-07 | 971FF+1d |  | 7 day week with NGT | 150295 |

| ID | WBS | Task | Duration | Start | Finish | Predecessors | Constraint | Calendar | Unique_Task_ID |
| --- | --- | --- | --- | --- | --- | --- | --- | --- | --- |
| 973 | 37400.37600.39700.44400.46200.147800 | **7th Floor Roof** | 12d | 2026-04-08 | 2026-04-19 |  | start no earlier than 2026-04-08 | 7 day week with NGT | 148105 |
| 974 | 37400.37600.39700.44400.46200.147800.486800 | Column and Shear Wall Reinforcement | 5d | 2026-04-08 | 2026-04-12 | 972 |  | 7 day week with NGT | 150305 |
| 975 | 37400.37600.39700.44400.46200.147800.486900 | Column and Shear Wall Formwork | 5d | 2026-04-09 | 2026-04-13 | 974FF+1d |  | 7 day week with NGT | 150315 |
| 976 | 37400.37600.39700.44400.46200.147800.487000 | Slab Formwork | 5d | 2026-04-12 | 2026-04-16 | 975FS-2d |  | 7 day week with NGT | 150325 |
| 977 | 37400.37600.39700.44400.46200.147800.487100 | Slab Reinforcement | 5d | 2026-04-14 | 2026-04-18 | 976FF+2d |  | 7 day week with NGT | 150335 |
| 978 | 37400.37600.39700.44400.46200.147800.487200 | Monolithic Casting | 2d | 2026-04-18 | 2026-04-19 | 977FF+1d |  | 7 day week with NGT | 150345 |
| 979 | 37400.37600.39700.44400.46200.147900 | **8th Floor Roof** | 12d | 2026-04-20 | 2026-05-01 |  | start no earlier than 2026-04-20 | 7 day week with NGT | 148115 |
| 980 | 37400.37600.39700.44400.46200.147900.487300 | Column and Shear Wall Reinforcement | 5d | 2026-04-20 | 2026-04-24 | 978 |  | 7 day week with NGT | 150355 |
| 981 | 37400.37600.39700.44400.46200.147900.487400 | Column and Shear Wall Formwork | 5d | 2026-04-21 | 2026-04-25 | 980FF+1d |  | 7 day week with NGT | 150365 |
| 982 | 37400.37600.39700.44400.46200.147900.487500 | Slab Formwork | 5d | 2026-04-24 | 2026-04-28 | 981FS-2d |  | 7 day week with NGT | 150375 |
| 983 | 37400.37600.39700.44400.46200.147900.487600 | Slab Reinforcement | 5d | 2026-04-26 | 2026-04-30 | 982FF+2d |  | 7 day week with NGT | 150385 |
| 984 | 37400.37600.39700.44400.46200.147900.487700 | Monolithic Casting | 2d | 2026-04-30 | 2026-05-01 | 983FF+1d |  | 7 day week with NGT | 150395 |
| 985 | 37400.37600.39700.44400.46200.148000 | **9th Floor Roof** | 12d | 2026-05-02 | 2026-05-13 |  | start no earlier than 2026-05-02 | 7 day week with NGT | 148125 |
| 986 | 37400.37600.39700.44400.46200.148000.487800 | Column and Shear Wall Reinforcement | 5d | 2026-05-02 | 2026-05-06 | 984 |  | 7 day week with NGT | 150405 |
| 987 | 37400.37600.39700.44400.46200.148000.487900 | Column and Shear Wall Formwork | 5d | 2026-05-03 | 2026-05-07 | 986FF+1d |  | 7 day week with NGT | 150415 |
| 988 | 37400.37600.39700.44400.46200.148000.488000 | Slab Formwork | 5d | 2026-05-06 | 2026-05-10 | 987FS-2d |  | 7 day week with NGT | 150425 |
| 989 | 37400.37600.39700.44400.46200.148000.488100 | Slab Reinforcement | 5d | 2026-05-08 | 2026-05-12 | 988FF+2d |  | 7 day week with NGT | 150435 |
| 990 | 37400.37600.39700.44400.46200.148000.488200 | Monolithic Casting | 2d | 2026-05-12 | 2026-05-13 | 989FF+1d |  | 7 day week with NGT | 150445 |
| 991 | 37400.37600.39700.44400.46200.148100 | **10th Floor Roof** | 12d | 2026-05-14 | 2026-05-25 |  | start no earlier than 2026-05-14 | 7 day week with NGT | 148135 |
| 992 | 37400.37600.39700.44400.46200.148100.488300 | Column and Shear Wall Reinforcement | 5d | 2026-05-14 | 2026-05-18 | 990 |  | 7 day week with NGT | 150455 |
| 993 | 37400.37600.39700.44400.46200.148100.488400 | Column and Shear Wall Formwork | 5d | 2026-05-15 | 2026-05-19 | 992FF+1d |  | 7 day week with NGT | 150465 |
| 994 | 37400.37600.39700.44400.46200.148100.488500 | Slab Formwork | 5d | 2026-05-18 | 2026-05-22 | 993FS-2d |  | 7 day week with NGT | 150475 |
| 995 | 37400.37600.39700.44400.46200.148100.488600 | Slab Reinforcement | 5d | 2026-05-20 | 2026-05-24 | 994FF+2d |  | 7 day week with NGT | 150485 |
| 996 | 37400.37600.39700.44400.46200.148100.488700 | Monolithic Casting | 2d | 2026-05-24 | 2026-05-25 | 995FF+1d |  | 7 day week with NGT | 150495 |

| ID | WBS | Task | Duration | Start | Finish | Predecessors | Constraint | Calendar | Unique_Task_ID |
| --- | --- | --- | --- | --- | --- | --- | --- | --- | --- |
| 997 | 37400.37600.39700.44400.46200.148200 | **11th Floor Roof** | 12d | 2026-05-26 | 2026-06-06 |  | start no earlier than 2026-05-26 | 7 day week with NGT | 148145 |
| 998 | 37400.37600.39700.44400.46200.148200.488800 | Column and Shear Wall Reinforcement | 5d | 2026-05-26 | 2026-05-30 | 996 |  | 7 day week with NGT | 150505 |
| 999 | 37400.37600.39700.44400.46200.148200.488900 | Column and Shear Wall Formwork | 5d | 2026-05-27 | 2026-05-31 | 998FF+1d |  | 7 day week with NGT | 150515 |
| 1000 | 37400.37600.39700.44400.46200.148200.489000 | Slab Formwork | 5d | 2026-05-30 | 2026-06-03 | 999FS-2d |  | 7 day week with NGT | 150525 |
| 1001 | 37400.37600.39700.44400.46200.148200.489100 | Slab Reinforcement | 5d | 2026-06-01 | 2026-06-05 | 1000FF+2d |  | 7 day week with NGT | 150535 |
| 1002 | 37400.37600.39700.44400.46200.148200.489200 | Monolithic Casting | 2d | 2026-06-05 | 2026-06-06 | 1001FF+1d |  | 7 day week with NGT | 150545 |
| 1003 | 37400.37600.39700.44400.46200.148300 | **12th Floor Roof** | 12d | 2026-06-07 | 2026-06-18 |  | start no earlier than 2026-06-07 | 7 day week with NGT | 148155 |
| 1004 | 37400.37600.39700.44400.46200.148300.489300 | Column and Shear Wall Reinforcement | 5d | 2026-06-07 | 2026-06-11 | 1002 |  | 7 day week with NGT | 150555 |
| 1005 | 37400.37600.39700.44400.46200.148300.489400 | Column and Shear Wall Formwork | 5d | 2026-06-08 | 2026-06-12 | 1004FF+1d |  | 7 day week with NGT | 150565 |
| 1006 | 37400.37600.39700.44400.46200.148300.489500 | Slab Formwork | 5d | 2026-06-11 | 2026-06-15 | 1005FS-2d |  | 7 day week with NGT | 150575 |
| 1007 | 37400.37600.39700.44400.46200.148300.489600 | Slab Reinforcement | 5d | 2026-06-13 | 2026-06-17 | 1006FF+2d |  | 7 day week with NGT | 150585 |
| 1008 | 37400.37600.39700.44400.46200.148300.489700 | Monolithic Casting | 2d | 2026-06-17 | 2026-06-18 | 1007FF+1d |  | 7 day week with NGT | 150595 |
| 1009 | 37400.37600.39700.44400.46200.148400 | **13th Floor Roof** | 12d | 2026-06-19 | 2026-06-30 |  | start no earlier than 2026-06-19 | 7 day week with NGT | 148165 |
| 1010 | 37400.37600.39700.44400.46200.148400.489800 | Column and Shear Wall Reinforcement | 5d | 2026-06-19 | 2026-06-23 | 1008 |  | 7 day week with NGT | 150605 |
| 1011 | 37400.37600.39700.44400.46200.148400.489900 | Column and Shear Wall Formwork | 5d | 2026-06-20 | 2026-06-24 | 1010FF+1d |  | 7 day week with NGT | 150615 |
| 1012 | 37400.37600.39700.44400.46200.148400.490000 | Slab Formwork | 5d | 2026-06-23 | 2026-06-27 | 1011FS-2d |  | 7 day week with NGT | 150625 |
| 1013 | 37400.37600.39700.44400.46200.148400.490100 | Slab Reinforcement | 5d | 2026-06-25 | 2026-06-29 | 1012FF+2d |  | 7 day week with NGT | 150635 |
| 1014 | 37400.37600.39700.44400.46200.148400.490200 | Monolithic Casting | 2d | 2026-06-29 | 2026-06-30 | 1013FF+1d |  | 7 day week with NGT | 150645 |
| 1015 | 37400.37600.39700.44400.46200.148500 | **14th Floor Roof** | 12d | 2026-07-01 | 2026-07-12 |  | start no earlier than 2026-07-01 | 7 day week with NGT | 148175 |
| 1016 | 37400.37600.39700.44400.46200.148500.490300 | Column and Shear Wall Reinforcement | 5d | 2026-07-01 | 2026-07-05 | 1014 |  | 7 day week with NGT | 150655 |
| 1017 | 37400.37600.39700.44400.46200.148500.490400 | Column and Shear Wall Formwork | 5d | 2026-07-02 | 2026-07-06 | 1016FF+1d |  | 7 day week with NGT | 150665 |
| 1018 | 37400.37600.39700.44400.46200.148500.490500 | Slab Formwork | 5d | 2026-07-05 | 2026-07-09 | 1017FS-2d |  | 7 day week with NGT | 150675 |
| 1019 | 37400.37600.39700.44400.46200.148500.490600 | Slab Reinforcement | 5d | 2026-07-07 | 2026-07-11 | 1018FF+2d |  | 7 day week with NGT | 150685 |
| 1020 | 37400.37600.39700.44400.46200.148500.490700 | Monolithic Casting | 2d | 2026-07-11 | 2026-07-12 | 1019FF+1d |  | 7 day week with NGT | 150695 |

| ID | WBS | Task | Duration | Start | Finish | Predecessors | Constraint | Calendar | Unique_Task_ID |
| --- | --- | --- | --- | --- | --- | --- | --- | --- | --- |
| 1021 | 37400.37600.39700.44400.46200.148600 | **15th Floor Roof** | 12d | 2026-07-13 | 2026-07-24 |  | start no earlier than 2026-07-13 | 7 day week with NGT | 148185 |
| 1022 | 37400.37600.39700.44400.46200.148600.490800 | Column and Shear Wall Reinforcement | 5d | 2026-07-13 | 2026-07-17 | 1020 |  | 7 day week with NGT | 150705 |
| 1023 | 37400.37600.39700.44400.46200.148600.490900 | Column and Shear Wall Formwork | 5d | 2026-07-14 | 2026-07-18 | 1022FF+1d |  | 7 day week with NGT | 150715 |
| 1024 | 37400.37600.39700.44400.46200.148600.491000 | Slab Formwork | 5d | 2026-07-17 | 2026-07-21 | 1023FS-2d |  | 7 day week with NGT | 150725 |
| 1025 | 37400.37600.39700.44400.46200.148600.491100 | Slab Reinforcement | 5d | 2026-07-19 | 2026-07-23 | 1024FF+2d |  | 7 day week with NGT | 150735 |
| 1026 | 37400.37600.39700.44400.46200.148600.491200 | Monolithic Casting | 2d | 2026-07-23 | 2026-07-24 | 1025FF+1d |  | 7 day week with NGT | 150745 |
| 1027 | 37400.37600.39700.44400.46200.148700 | **16th Floor Roof** | 17d | 2026-07-25 | 2026-08-10 |  | start no earlier than 2026-07-25 | 7 day week with NGT | 148195 |
| 1028 | 37400.37600.39700.44400.46200.148700.491300 | Column and Shear Wall Reinforcement | 7d | 2026-07-25 | 2026-07-31 | 1026 |  | 7 day week with NGT | 150755 |
| 1029 | 37400.37600.39700.44400.46200.148700.491400 | Column and Shear Wall Formwork | 7d | 2026-07-26 | 2026-08-01 | 1028FF+1d |  | 7 day week with NGT | 150765 |
| 1030 | 37400.37600.39700.44400.46200.148700.491500 | Slab Formwork | 8d | 2026-07-31 | 2026-08-07 | 1029FS-2d |  | 7 day week with NGT | 150775 |
| 1031 | 37400.37600.39700.44400.46200.148700.491600 | Slab Reinforcement | 7d | 2026-08-03 | 2026-08-09 | 1030FF+2d |  | 7 day week with NGT | 150785 |
| 1032 | 37400.37600.39700.44400.46200.148700.491700 | Monolithic Casting | 4d | 2026-08-07 | 2026-08-10 | 1031FF+1d |  | 7 day week with NGT | 150795 |
| 1033 | 37400.37600.39700.44400.46200.148800 | **17th Floor Roof** | 12d | 2026-08-11 | 2026-08-22 |  | start no earlier than 2026-08-11 | 7 day week with NGT | 148205 |
| 1034 | 37400.37600.39700.44400.46200.148800.491800 | Column and Shear Wall Reinforcement | 5d | 2026-08-11 | 2026-08-15 | 1032 |  | 7 day week with NGT | 150805 |
| 1035 | 37400.37600.39700.44400.46200.148800.491900 | Column and Shear Wall Formwork | 5d | 2026-08-12 | 2026-08-16 | 1034FF+1d |  | 7 day week with NGT | 150815 |
| 1036 | 37400.37600.39700.44400.46200.148800.492000 | Slab Formwork | 5d | 2026-08-15 | 2026-08-19 | 1035FS-2d |  | 7 day week with NGT | 150825 |
| 1037 | 37400.37600.39700.44400.46200.148800.492100 | Slab Reinforcement | 5d | 2026-08-17 | 2026-08-21 | 1036FF+2d |  | 7 day week with NGT | 150835 |
| 1038 | 37400.37600.39700.44400.46200.148800.492200 | Monolithic Casting | 2d | 2026-08-21 | 2026-08-22 | 1037FF+1d |  | 7 day week with NGT | 150845 |
| 1039 | 37400.37600.39700.44400.46200.148900 | **18th Floor Roof** | 12d | 2026-08-23 | 2026-09-03 |  | start no earlier than 2026-08-23 | 7 day week with NGT | 148215 |
| 1040 | 37400.37600.39700.44400.46200.148900.492300 | Column and Shear Wall Reinforcement | 6d | 2026-08-23 | 2026-08-28 | 1038 |  | 7 day week with NGT | 150855 |
| 1041 | 37400.37600.39700.44400.46200.148900.492400 | Column and Shear Wall Formwork | 5d | 2026-08-25 | 2026-08-29 | 1040FF+1d |  | 7 day week with NGT | 150865 |
| 1042 | 37400.37600.39700.44400.46200.148900.492500 | Slab Formwork | 5d | 2026-08-28 | 2026-09-01 | 1041FS-2d |  | 7 day week with NGT | 150875 |
| 1043 | 37400.37600.39700.44400.46200.148900.492600 | Slab Reinforcement | 5d | 2026-08-29 | 2026-09-02 | 1042FF+1d |  | 7 day week with NGT | 150885 |
| 1044 | 37400.37600.39700.44400.46200.148900.492700 | Monolithic Casting | 2d | 2026-09-02 | 2026-09-03 | 1043FF+1d |  | 7 day week with NGT | 150895 |

| ID | WBS | Task | Duration | Start | Finish | Predecessors | Constraint | Calendar | Unique_Task_ID |
| --- | --- | --- | --- | --- | --- | --- | --- | --- | --- |
| 1045 | 37400.37600.39700.44400.46200.149000 | **19th Floor Roof** | 11d | 2026-09-04 | 2026-09-14 |  | start no earlier than 2026-09-04 | 7 day week with NGT | 148225 |
| 1046 | 37400.37600.39700.44400.46200.149000.492800 | Column and Shear Wall Reinforcement | 4d | 2026-09-04 | 2026-09-07 | 1044 |  | 7 day week with NGT | 150905 |
| 1047 | 37400.37600.39700.44400.46200.149000.492900 | Column and Shear Wall Formwork | 4d | 2026-09-05 | 2026-09-08 | 1046FF+1d |  | 7 day week with NGT | 150915 |
| 1048 | 37400.37600.39700.44400.46200.149000.493000 | Slab Formwork | 6d | 2026-09-07 | 2026-09-12 | 1047FS-2d |  | 7 day week with NGT | 150925 |
| 1049 | 37400.37600.39700.44400.46200.149000.493100 | Slab Reinforcement | 5d | 2026-09-09 | 2026-09-13 | 1048FF+1d |  | 7 day week with NGT | 150935 |
| 1050 | 37400.37600.39700.44400.46200.149000.493200 | Monolithic Casting | 4d | 2026-09-11 | 2026-09-14 | 1049FF+1d |  | 7 day week with NGT | 150945 |
| 1051 | 37400.37600.39700.44400.46200.149100 | **20th Floor Roof** | 11d | 2026-09-15 | 2026-09-25 |  | start no earlier than 2026-09-15 | 7 day week with NGT | 148235 |
| 1052 | 37400.37600.39700.44400.46200.149100.493300 | Column and Shear Wall Reinforcement | 4d | 2026-09-15 | 2026-09-18 | 1050 |  | 7 day week with NGT | 150955 |
| 1053 | 37400.37600.39700.44400.46200.149100.493400 | Column and Shear Wall Formwork | 4d | 2026-09-16 | 2026-09-19 | 1052FF+1d |  | 7 day week with NGT | 150965 |
| 1054 | 37400.37600.39700.44400.46200.149100.493500 | Slab Formwork | 6d | 2026-09-18 | 2026-09-23 | 1053FS-2d |  | 7 day week with NGT | 150975 |
| 1055 | 37400.37600.39700.44400.46200.149100.493600 | Slab Reinforcement | 5d | 2026-09-20 | 2026-09-24 | 1054FF+1d |  | 7 day week with NGT | 150985 |
| 1056 | 37400.37600.39700.44400.46200.149100.493700 | Monolithic Casting | 4d | 2026-09-22 | 2026-09-25 | 1055FF+1d |  | 7 day week with NGT | 150995 |
| 1057 | 37400.37600.39700.44400.46200.149200 | **21th Floor Roof** | 11d | 2026-09-26 | 2026-10-06 |  | start no earlier than 2026-09-26 | 7 day week with NGT | 148245 |
| 1058 | 37400.37600.39700.44400.46200.149200.493800 | Column and Shear Wall Reinforcement | 4d | 2026-09-26 | 2026-09-29 | 1056 |  | 7 day week with NGT | 151005 |
| 1059 | 37400.37600.39700.44400.46200.149200.493900 | Column and Shear Wall Formwork | 4d | 2026-09-27 | 2026-09-30 | 1058FF+1d |  | 7 day week with NGT | 151015 |
| 1060 | 37400.37600.39700.44400.46200.149200.494000 | Slab Formwork | 6d | 2026-09-29 | 2026-10-04 | 1059FS-2d |  | 7 day week with NGT | 151025 |
| 1061 | 37400.37600.39700.44400.46200.149200.494100 | Slab Reinforcement | 5d | 2026-10-01 | 2026-10-05 | 1060FF+1d |  | 7 day week with NGT | 151035 |
| 1062 | 37400.37600.39700.44400.46200.149200.494200 | Monolithic Casting | 4d | 2026-10-03 | 2026-10-06 | 1061FF+1d |  | 7 day week with NGT | 151045 |
| 1063 | 37400.37600.39700.44400.46200.149300 | **22th Floor Roof** | 11d | 2026-10-07 | 2026-10-17 |  | start no earlier than 2026-10-07 | 7 day week with NGT | 148255 |
| 1064 | 37400.37600.39700.44400.46200.149300.494300 | Column and Shear Wall Reinforcement | 4d | 2026-10-07 | 2026-10-10 | 1062 |  | 7 day week with NGT | 151055 |
| 1065 | 37400.37600.39700.44400.46200.149300.494400 | Column and Shear Wall Formwork | 4d | 2026-10-08 | 2026-10-11 | 1064FF+1d |  | 7 day week with NGT | 151065 |
| 1066 | 37400.37600.39700.44400.46200.149300.494500 | Slab Formwork | 6d | 2026-10-10 | 2026-10-15 | 1065FS-2d |  | 7 day week with NGT | 151075 |
| 1067 | 37400.37600.39700.44400.46200.149300.494600 | Slab Reinforcement | 5d | 2026-10-12 | 2026-10-16 | 1066FF+1d |  | 7 day week with NGT | 151085 |
| 1068 | 37400.37600.39700.44400.46200.149300.494700 | Monolithic Casting | 4d | 2026-10-14 | 2026-10-17 | 1067FF+1d |  | 7 day week with NGT | 151095 |

| ID | WBS | Task | Duration | Start | Finish | Predecessors | Constraint | Calendar | Unique_Task_ID |
| --- | --- | --- | --- | --- | --- | --- | --- | --- | --- |
| 1069 | 37400.37600.39700.44400.46200.149400 | **23th Floor Roof** | 11d | 2026-10-18 | 2026-10-28 |  | start no earlier than 2026-10-18 | 7 day week with NGT | 148265 |
| 1070 | 37400.37600.39700.44400.46200.149400.494800 | Column and Shear Wall Reinforcement | 4d | 2026-10-18 | 2026-10-21 | 1068 |  | 7 day week with NGT | 151105 |
| 1071 | 37400.37600.39700.44400.46200.149400.494900 | Column and Shear Wall Formwork | 4d | 2026-10-19 | 2026-10-22 | 1070FF+1d |  | 7 day week with NGT | 151115 |
| 1072 | 37400.37600.39700.44400.46200.149400.495000 | Slab Formwork | 6d | 2026-10-21 | 2026-10-26 | 1071FS-2d |  | 7 day week with NGT | 151125 |
| 1073 | 37400.37600.39700.44400.46200.149400.495100 | Slab Reinforcement | 5d | 2026-10-23 | 2026-10-27 | 1072FF+1d |  | 7 day week with NGT | 151135 |
| 1074 | 37400.37600.39700.44400.46200.149400.495200 | Monolithic Casting | 4d | 2026-10-25 | 2026-10-28 | 1073FF+1d |  | 7 day week with NGT | 151145 |
| 1075 | 37400.37600.39700.44400.46200.149500 | **24th Floor Roof** | 11d | 2026-10-29 | 2026-12-23 |  | start no earlier than 2026-10-29 | 7 day week with NGT | 148275 |
| 1076 | 37400.37600.39700.44400.46200.149500.495300 | Column and Shear Wall Reinforcement | 4d | 2026-10-29 | 2026-12-16 | 1074 |  | 7 day week with NGT | 151155 |
| 1077 | 37400.37600.39700.44400.46200.149500.495400 | Column and Shear Wall Formwork | 4d | 2026-10-30 | 2026-12-17 | 1076FF+1d |  | 7 day week with NGT | 151165 |
| 1078 | 37400.37600.39700.44400.46200.149500.495500 | Slab Formwork | 6d | 2026-12-16 | 2026-12-21 | 1077FS-2d |  | 7 day week with NGT | 151175 |
| 1079 | 37400.37600.39700.44400.46200.149500.495600 | Slab Reinforcement | 5d | 2026-12-18 | 2026-12-22 | 1078FF+1d |  | 7 day week with NGT | 151185 |
| 1080 | 37400.37600.39700.44400.46200.149500.495700 | Monolithic Casting | 4d | 2026-12-20 | 2026-12-23 | 1079FF+1d |  | 7 day week with NGT | 151195 |
| 1081 | 37400.37600.39700.44400.46200.149600 | **25th Floor Roof** | 11d | 2026-12-24 | 2027-01-03 |  | start no earlier than 2026-12-24 | 7 day week with NGT | 148285 |
| 1082 | 37400.37600.39700.44400.46200.149600.495800 | Column and Shear Wall Reinforcement | 4d | 2026-12-24 | 2026-12-27 | 1080 |  | 7 day week with NGT | 151205 |
| 1083 | 37400.37600.39700.44400.46200.149600.495900 | Column and Shear Wall Formwork | 4d | 2026-12-25 | 2026-12-28 | 1082FF+1d |  | 7 day week with NGT | 151215 |
| 1084 | 37400.37600.39700.44400.46200.149600.496000 | Slab Formwork | 6d | 2026-12-27 | 2027-01-01 | 1083FS-2d |  | 7 day week with NGT | 151225 |
| 1085 | 37400.37600.39700.44400.46200.149600.496100 | Slab Reinforcement | 5d | 2026-12-29 | 2027-01-02 | 1084FF+1d |  | 7 day week with NGT | 151235 |
| 1086 | 37400.37600.39700.44400.46200.149600.496200 | Monolithic Casting | 4d | 2026-12-31 | 2027-01-03 | 1085FF+1d |  | 7 day week with NGT | 151245 |
| 1087 | 37400.37600.39700.44400.46200.149700 | **26th Floor Roof** | 17d | 2027-01-04 | 2027-01-20 |  | start no earlier than 2027-01-04 | 7 day week with NGT | 148295 |
| 1088 | 37400.37600.39700.44400.46200.149700.496300 | Column and Shear Wall Reinforcement | 7d | 2027-01-04 | 2027-01-10 | 1086 |  | 7 day week with NGT | 151255 |
| 1089 | 37400.37600.39700.44400.46200.149700.496400 | Column and Shear Wall Formwork | 7d | 2027-01-05 | 2027-01-11 | 1088FF+1d |  | 7 day week with NGT | 151265 |
| 1090 | 37400.37600.39700.44400.46200.149700.496500 | Slab Formwork | 8d | 2027-01-10 | 2027-01-17 | 1089FS-2d |  | 7 day week with NGT | 151275 |
| 1091 | 37400.37600.39700.44400.46200.149700.496600 | Slab Reinforcement | 8d | 2027-01-12 | 2027-01-19 | 1090FF+2d |  | 7 day week with NGT | 151285 |
| 1092 | 37400.37600.39700.44400.46200.149700.496700 | Monolithic Casting | 4d | 2027-01-17 | 2027-01-20 | 1091FF+1d |  | 7 day week with NGT | 151295 |

| ID | WBS | Task | Duration | Start | Finish | Predecessors | Constraint | Calendar | Unique_Task_ID |
| --- | --- | --- | --- | --- | --- | --- | --- | --- | --- |
| 1093 | 37400.37600.39700.44400.46200.149800 | **27th Floor Roof** | 11d | 2027-01-21 | 2027-01-31 |  | start no earlier than 2027-01-21 | 7 day week with NGT | 148305 |
| 1094 | 37400.37600.39700.44400.46200.149800.496800 | Column and Shear Wall Reinforcement | 4d | 2027-01-21 | 2027-01-24 | 1092 |  | 7 day week with NGT | 151305 |
| 1095 | 37400.37600.39700.44400.46200.149800.496900 | Column and Shear Wall Formwork | 4d | 2027-01-22 | 2027-01-25 | 1094FF+1d |  | 7 day week with NGT | 151315 |
| 1096 | 37400.37600.39700.44400.46200.149800.497000 | Slab Formwork | 6d | 2027-01-24 | 2027-01-29 | 1095FS-2d |  | 7 day week with NGT | 151325 |
| 1097 | 37400.37600.39700.44400.46200.149800.497100 | Slab Reinforcement | 5d | 2027-01-26 | 2027-01-30 | 1096FF+1d |  | 7 day week with NGT | 151335 |
| 1098 | 37400.37600.39700.44400.46200.149800.497200 | Monolithic Casting | 4d | 2027-01-28 | 2027-01-31 | 1097FF+1d |  | 7 day week with NGT | 151345 |
| 1099 | 37400.37600.39700.44400.46200.149900 | **28th Floor Roof** | 11d | 2027-02-01 | 2027-02-11 |  | start no earlier than 2027-02-01 | 7 day week with NGT | 148315 |
| 1100 | 37400.37600.39700.44400.46200.149900.497300 | Column and Shear Wall Reinforcement | 4d | 2027-02-01 | 2027-02-04 | 1098 |  | 7 day week with NGT | 151355 |
| 1101 | 37400.37600.39700.44400.46200.149900.497400 | Column and Shear Wall Formwork | 4d | 2027-02-02 | 2027-02-05 | 1100FF+1d |  | 7 day week with NGT | 151365 |
| 1102 | 37400.37600.39700.44400.46200.149900.497500 | Slab Formwork | 6d | 2027-02-04 | 2027-02-09 | 1101FS-2d |  | 7 day week with NGT | 151375 |
| 1103 | 37400.37600.39700.44400.46200.149900.497600 | Slab Reinforcement | 5d | 2027-02-06 | 2027-02-10 | 1102FF+1d |  | 7 day week with NGT | 151385 |
| 1104 | 37400.37600.39700.44400.46200.149900.497700 | Monolithic Casting | 4d | 2027-02-08 | 2027-02-11 | 1103FF+1d |  | 7 day week with NGT | 151395 |
| 1105 | 37400.37600.39700.44400.46200.150000 | **29th Floor Roof** | 11d | 2027-02-12 | 2027-02-22 |  | start no earlier than 2027-02-12 | 7 day week with NGT | 148325 |
| 1106 | 37400.37600.39700.44400.46200.150000.497800 | Column and Shear Wall Reinforcement | 4d | 2027-02-12 | 2027-02-15 | 1104 |  | 7 day week with NGT | 151405 |
| 1107 | 37400.37600.39700.44400.46200.150000.497900 | Column and Shear Wall Formwork | 4d | 2027-02-13 | 2027-02-16 | 1106FF+1d |  | 7 day week with NGT | 151415 |
| 1108 | 37400.37600.39700.44400.46200.150000.498000 | Slab Formwork | 6d | 2027-02-15 | 2027-02-20 | 1107FS-2d |  | 7 day week with NGT | 151425 |
| 1109 | 37400.37600.39700.44400.46200.150000.498100 | Slab Reinforcement | 5d | 2027-02-17 | 2027-02-21 | 1108FF+1d |  | 7 day week with NGT | 151435 |
| 1110 | 37400.37600.39700.44400.46200.150000.498200 | Monolithic Casting | 4d | 2027-02-19 | 2027-02-22 | 1109FF+1d |  | 7 day week with NGT | 151445 |
| 1111 | 37400.37600.39700.44400.46200.150100 | **30th Floor Roof** | 11d | 2027-02-23 | 2027-03-05 |  | start no earlier than 2027-02-23 | 7 day week with NGT | 148335 |
| 1112 | 37400.37600.39700.44400.46200.150100.498300 | Column and Shear Wall Reinforcement | 4d | 2027-02-23 | 2027-02-26 | 1110 |  | 7 day week with NGT | 151455 |
| 1113 | 37400.37600.39700.44400.46200.150100.498400 | Column and Shear Wall Formwork | 4d | 2027-02-24 | 2027-02-27 | 1112FF+1d |  | 7 day week with NGT | 151465 |
| 1114 | 37400.37600.39700.44400.46200.150100.498500 | Slab Formwork | 6d | 2027-02-26 | 2027-03-03 | 1113FS-2d |  | 7 day week with NGT | 151475 |
| 1115 | 37400.37600.39700.44400.46200.150100.498600 | Slab Reinforcement | 5d | 2027-02-28 | 2027-03-04 | 1114FF+1d |  | 7 day week with NGT | 151485 |
| 1116 | 37400.37600.39700.44400.46200.150100.498700 | Monolithic Casting | 4d | 2027-03-02 | 2027-03-05 | 1115FF+1d |  | 7 day week with NGT | 151495 |

| ID | WBS | Task | Duration | Start | Finish | Predecessors | Constraint | Calendar | Unique_Task_ID |
| --- | --- | --- | --- | --- | --- | --- | --- | --- | --- |
| 1117 | 37400.37600.39700.44400.46200.150200 | **31th Floor Roof** | 13d | 2027-03-06 | 2027-03-18 |  | start no earlier than 2027-03-06 | 7 day week with NGT | 148345 |
| 1118 | 37400.37600.39700.44400.46200.150200.498800 | Column and Shear Wall Reinforcement | 6d | 2027-03-06 | 2027-03-11 | 1116 |  | 7 day week with NGT | 151505 |
| 1119 | 37400.37600.39700.44400.46200.150200.498900 | Column and Shear Wall Formwork | 5d | 2027-03-08 | 2027-03-12 | 1118FF+1d |  | 7 day week with NGT | 151515 |
| 1120 | 37400.37600.39700.44400.46200.150200.499000 | Slab Formwork | 5d | 2027-03-11 | 2027-03-15 | 1119FS-2d |  | 7 day week with NGT | 151525 |
| 1121 | 37400.37600.39700.44400.46200.150200.499100 | Slab Reinforcement | 6d | 2027-03-12 | 2027-03-17 | 1120FF+2d |  | 7 day week with NGT | 151535 |
| 1122 | 37400.37600.39700.44400.46200.150200.499200 | Monolithic Casting | 4d | 2027-03-15 | 2027-03-18 | 1121FF+1d |  | 7 day week with NGT | 151545 |
| 1123 | 37400.37600.39700.44400.46200.150300 | **32th Floor Roof** | 17d | 2027-03-19 | 2027-04-04 |  | start no earlier than 2027-03-19 | 7 day week with NGT | 148355 |
| 1124 | 37400.37600.39700.44400.46200.150300.499300 | Column and Shear Wall Reinforcement | 8d | 2027-03-19 | 2027-03-26 | 1122 |  | 7 day week with NGT | 151555 |
| 1125 | 37400.37600.39700.44400.46200.150300.499400 | Column and Shear Wall Formwork | 8d | 2027-03-20 | 2027-03-27 | 1124FF+1d |  | 7 day week with NGT | 151565 |
| 1126 | 37400.37600.39700.44400.46200.150300.499500 | Slab Formwork | 8d | 2027-03-26 | 2027-04-02 | 1125FS-2d |  | 7 day week with NGT | 151575 |
| 1127 | 37400.37600.39700.44400.46200.150300.499600 | Slab Reinforcement | 8d | 2027-03-27 | 2027-04-03 | 1126FF+1d |  | 7 day week with NGT | 151585 |
| 1128 | 37400.37600.39700.44400.46200.150300.499700 | Monolithic Casting | 4d | 2027-04-01 | 2027-04-04 | 1127FF+1d |  | 7 day week with NGT | 151595 |
| 1129 | 37400.37600.39700.44400.49600 | **Post Pour Activitis** | 365d | 2026-02-26 | 2027-04-11 |  | start no earlier than 2026-02-26 | 7 day week with NGT | 147585 |
| 1130 | 37400.37600.39700.44400.49600.332800 | 1st Floor | 5d | 2026-02-26 | 2026-03-02 | 954FF |  | 7 day week with NGT | 148605 |
| 1131 | 37400.37600.39700.44400.49600.332900 | 2nd Floor | 5d | 2026-03-10 | 2026-03-14 | 960FF |  | 7 day week with NGT | 148615 |
| 1132 | 37400.37600.39700.44400.49600.333000 | 3rd Floor | 5d | 2026-03-22 | 2026-03-26 | 966FF |  | 7 day week with NGT | 148625 |
| 1133 | 37400.37600.39700.44400.49600.333100 | 4th Floor | 5d | 2026-04-03 | 2026-04-07 | 972FF |  | 7 day week with NGT | 148635 |
| 1134 | 37400.37600.39700.44400.49600.333200 | 5th Floor | 5d | 2026-04-15 | 2026-04-19 | 978FF |  | 7 day week with NGT | 148645 |
| 1135 | 37400.37600.39700.44400.49600.333300 | 6th Floor | 5d | 2026-04-27 | 2026-05-02 | 984FF+0.25d |  | 7 day week with NGT | 148655 |
| 1136 | 37400.37600.39700.44400.49600.333400 | 7th Floor | 5d | 2026-05-09 | 2026-05-14 | 990FF+0.25d |  | 7 day week with NGT | 148665 |
| 1137 | 37400.37600.39700.44400.49600.333500 | 8th Floor | 5d | 2026-05-21 | 2026-05-26 | 996FF+0.25d |  | 7 day week with NGT | 148675 |
| 1138 | 37400.37600.39700.44400.49600.333600 | 9th Floor | 5d | 2026-06-02 | 2026-06-07 | 1002FF+0.25d |  | 7 day week with NGT | 148685 |
| 1139 | 37400.37600.39700.44400.49600.333700 | 10th Floor | 5d | 2026-06-14 | 2026-06-19 | 1008FF+0.25d |  | 7 day week with NGT | 148695 |
| 1140 | 37400.37600.39700.44400.49600.333800 | 11th Floor | 5d | 2026-06-26 | 2026-07-01 | 1014FF+0.25d |  | 7 day week with NGT | 148705 |
| 1141 | 37400.37600.39700.44400.49600.333900 | 12th Floor | 5d | 2026-07-08 | 2026-07-13 | 1020FF+0.25d |  | 7 day week with NGT | 148715 |
| 1142 | 37400.37600.39700.44400.49600.334000 | 13th Floor | 5d | 2026-07-20 | 2026-07-25 | 1026FF+0.25d |  | 7 day week with NGT | 148725 |
| 1143 | 37400.37600.39700.44400.49600.334100 | 14th floor | 5d | 2026-08-06 | 2026-08-11 | 1032FF+0.25d |  | 7 day week with NGT | 8001862 |
| 1144 | 37400.37600.39700.44400.49600.334200 | 15th Floor | 5d | 2026-08-18 | 2026-08-23 | 1038FF+0.25d |  | 7 day week with NGT | 148745 |
| 1145 | 37400.37600.39700.44400.49600.334300 | 16th Floor | 5d | 2026-08-30 | 2026-09-04 | 1044FF+0.25d |  | 7 day week with NGT | 148755 |
| 1146 | 37400.37600.39700.44400.49600.334400 | 17th Floor | 5d | 2026-09-10 | 2026-09-15 | 1050FF+0.25d |  | 7 day week with NGT | 148765 |
| 1147 | 37400.37600.39700.44400.49600.334500 | 18th Floor | 5d | 2026-09-21 | 2026-09-26 | 1056FF+0.25d |  | 7 day week with NGT | 148775 |
| 1148 | 37400.37600.39700.44400.49600.334600 | 19th Floor | 5d | 2026-10-02 | 2026-10-07 | 1062FF+0.25d |  | 7 day week with NGT | 148785 |
| 1149 | 37400.37600.39700.44400.49600.334700 | 20th Floor | 5d | 2026-10-13 | 2026-10-18 | 1068FF+0.25d |  | 7 day week with NGT | 148795 |
| 1150 | 37400.37600.39700.44400.49600.334800 | 21th Floor | 5d | 2026-10-24 | 2026-10-29 | 1074FF+0.25d |  | 7 day week with NGT | 148805 |
| 1151 | 37400.37600.39700.44400.49600.334900 | 22th Floor | 5d | 2026-12-19 | 2026-12-24 | 1080FF+0.25d |  | 7 day week with NGT | 148815 |
| 1152 | 37400.37600.39700.44400.49600.335000 | 23rd Floor | 5d | 2026-12-30 | 2027-01-04 | 1086FF+0.25d |  | 7 day week with NGT | 148825 |
| 1153 | 37400.37600.39700.44400.49600.335100 | 24th Floor | 5d | 2027-01-16 | 2027-01-21 | 1092FF+0.25d |  | 7 day week with NGT | 148835 |
| 1154 | 37400.37600.39700.44400.49600.335200 | 25th Floor | 5d | 2027-01-27 | 2027-02-01 | 1098FF+0.25d |  | 7 day week with NGT | 148845 |
| 1155 | 37400.37600.39700.44400.49600.335300 | 26th Floor | 5d | 2027-02-07 | 2027-02-11 | 1104FF |  | 7 day week with NGT | 148855 |
| 1156 | 37400.37600.39700.44400.49600.335400 | 27th Floor | 5d | 2027-02-18 | 2027-02-22 | 1110FF |  | 7 day week with NGT | 148865 |
| 1157 | 37400.37600.39700.44400.49600.335500 | 28th Floor | 5d | 2027-03-01 | 2027-03-05 | 1116FF |  | 7 day week with NGT | 148875 |
| 1158 | 37400.37600.39700.44400.49600.335600 | 29th Floor | 5d | 2027-03-14 | 2027-03-18 | 1122FF |  | 7 day week with NGT | 148885 |
| 1159 | 37400.37600.39700.44400.49600.335700 | 30th Floor | 5d | 2027-03-30 | 2027-04-03 | 1128FF-1d |  | 7 day week with NGT | 148895 |
| 1160 | 37400.37600.39700.44400.49600.335800 | 31st Floor | 5d | 2027-04-03 | 2027-04-07 | 1159FS-1d |  | 7 day week with NGT | 148905 |
| 1161 | 37400.37600.39700.44400.49600.335900 | 32nd Floor | 5d | 2027-04-07 | 2027-04-11 | 1160FS-1d |  | 7 day week with NGT | 148915 |

| ID | WBS | Task | Duration | Start | Finish | Predecessors | Constraint | Calendar | Unique_Task_ID |
| --- | --- | --- | --- | --- | --- | --- | --- | --- | --- |
| 1162 | 37400.37600.39700.42100 | **Finishing Works** | 689d | 2026-01-14 | 2028-03-02 |  | start no earlier than 2026-01-14 | 7 day week with NGT | 147545 |
| 1163 | 37400.37600.39700.42100.43300 | **Flat Finishing** | 587d | 2026-01-14 | 2027-10-07 |  | start no earlier than 2026-01-14 | 7 day week with NGT | 147555 |
| 1164 | 37400.37600.39700.42100.43300.215600 | **Podium** | 173d | 2026-01-14 | 2026-07-05 |  | start no earlier than 2026-01-14 | 7 day week with NGT | 148365 |
| 1165 | 37400.37600.39700.42100.43300.215600.499800 | Blockwork | 30d | 2026-01-14 | 2026-02-12 | 935FS+30d |  | 7 day week with NGT | 151605 |
| 1166 | 37400.37600.39700.42100.43300.215600.499900 | Plaster Works | 20d | 2026-02-28 | 2026-03-19 | 1165FS+15d |  | 7 day week with NGT | 151615 |
| 1167 | 37400.37600.39700.42100.43300.215600.500000 | Paint Work | 28d | 2026-04-14 | 2026-05-11 | 1166FS+25d |  | 7 day week with NGT | 151625 |
| 1168 | 37400.37600.39700.42100.43300.215600.500100 | Flooring Works | 35d | 2026-06-01 | 2026-07-05 | 926, 1167FS+20d |  | 7 day week with NGT | 151635 |
| 1169 | 37400.37600.39700.42100.43300.215500 | **First Floor** | 150d | 2026-03-03 | 2026-07-30 |  | start no earlier than 2026-03-03 | 7 day week with NGT | 148375 |
| 1170 | 37400.37600.39700.42100.43300.215500.500200 | Blockwork | 30d | 2026-03-03 | 2026-04-01 | 1130 |  | 7 day week with NGT | 151645 |
| 1171 | 37400.37600.39700.42100.43300.215500.500300 | Plaster Works | 20d | 2026-03-18 | 2026-04-06 | 1170SS+15d |  | 7 day week with NGT | 151655 |
| 1172 | 37400.37600.39700.42100.43300.215500.500400 | Paint Works | 18d | 2026-04-02 | 2026-04-19 | 1171SS+15d |  | 7 day week with NGT | 151665 |
| 1173 | 37400.37600.39700.42100.43300.215500.500500 | Flooring Works | 25d | 2026-07-06 | 2026-07-30 | 1168, 1172 |  | 7 day week with NGT | 151675 |
| 1174 | 37400.37600.39700.42100.43300.67500 | **Second Floor** | 135d | 2026-04-02 | 2026-08-14 |  | start no earlier than 2026-04-02 | 7 day week with NGT | 147605 |
| 1175 | 37400.37600.39700.42100.43300.67500.500600 | Blockwork | 10d | 2026-04-02 | 2026-04-11 | 1131, 1170 |  | 7 day week with NGT | 151685 |
| 1176 | 37400.37600.39700.42100.43300.67500.500700 | Internal Plumbing Works | 6d | 2026-04-12 | 2026-04-17 | 1175 |  | 7 day week with NGT | 151695 |
| 1177 | 37400.37600.39700.42100.43300.67500.500800 | Waterproofing Works | 10d | 2026-04-14 | 2026-04-23 | 1176SS+2d |  | 7 day week with NGT | 151705 |
| 1178 | 37400.37600.39700.42100.43300.67500.500900 | PCC | 8d | 2026-04-26 | 2026-05-03 | 1177, 1180SS |  | 7 day week with NGT | 151715 |
| 1179 | 37400.37600.39700.42100.43300.67500.501000 | Electrical Wiring works | 12d | 2026-04-14 | 2026-04-25 | 1177SS |  | 7 day week with NGT | 151725 |
| 1180 | 37400.37600.39700.42100.43300.67500.501100 | Internal Plaster Works | 9d | 2026-04-26 | 2026-05-04 | 1176, 1177, 1179 |  | 7 day week with NGT | 151735 |
| 1181 | 37400.37600.39700.42100.43300.67500.501200 | Toilet Dado Works | 9d | 2026-05-05 | 2026-05-13 | 1176, 1177, 1179, 1180 |  | 7 day week with NGT | 151745 |
| 1182 | 37400.37600.39700.42100.43300.67500.501300 | Toilet Flooring Works | 7d | 2026-05-14 | 2026-05-20 | 1178, 1181 |  | 7 day week with NGT | 151755 |
| 1183 | 37400.37600.39700.42100.43300.67500.501400 | Living Dining Flooring | 15d | 2026-05-21 | 2026-06-04 | 1182 |  | 7 day week with NGT | 151765 |
| 1184 | 37400.37600.39700.42100.43300.67500.501500 | Temporary Door Fixing | 9d | 2026-04-12 | 2026-04-20 | 1175 |  | 7 day week with NGT | 151775 |
| 1185 | 37400.37600.39700.42100.43300.67500.501600 | Aluminium Door Widnow Fixing | 35d | 2026-06-05 | 2026-07-09 | 1183, 1184 |  | 7 day week with NGT | 151785 |
| 1186 | 37400.37600.39700.42100.43300.67500.501700 | Rehung Door Fixing | 8d | 2026-07-10 | 2026-07-17 | 1185 |  | 7 day week with NGT | 151795 |
| 1187 | 37400.37600.39700.42100.43300.67500.501800 | Putty Primer coat | 6d | 2026-07-18 | 2026-07-23 | 1186 |  | 7 day week with NGT | 151805 |
| 1188 | 37400.37600.39700.42100.43300.67500.501900 | Painting First Coat | 12d | 2026-07-24 | 2026-08-04 | 1177, 1179, 1186, 1187 |  | 7 day week with NGT | 151815 |
| 1189 | 37400.37600.39700.42100.43300.67500.502000 | False ceiling works | 10d | 2026-08-05 | 2026-08-14 | 1188 |  | 7 day week with NGT | 151825 |

| ID | WBS | Task | Duration | Start | Finish | Predecessors | Constraint | Calendar | Unique_Task_ID |
| --- | --- | --- | --- | --- | --- | --- | --- | --- | --- |
| 1190 | 37400.37600.39700.42100.43300.67600 | **Third Floor** | 135d | 2026-04-12 | 2026-08-24 |  | start no earlier than 2026-04-12 | 7 day week with NGT | 147615 |
| 1191 | 37400.37600.39700.42100.43300.67600.502100 | Blockwork | 10d | 2026-04-12 | 2026-04-21 | 1132, 1175 |  | 7 day week with NGT | 151835 |
| 1192 | 37400.37600.39700.42100.43300.67600.502200 | Internal Plumbing Works | 6d | 2026-04-22 | 2026-04-27 | 1191 |  | 7 day week with NGT | 151845 |
| 1193 | 37400.37600.39700.42100.43300.67600.502300 | Waterproofing Works | 10d | 2026-04-24 | 2026-05-03 | 1192SS+2d |  | 7 day week with NGT | 151855 |
| 1194 | 37400.37600.39700.42100.43300.67600.502400 | PCC | 8d | 2026-05-06 | 2026-05-13 | 1193, 1196SS |  | 7 day week with NGT | 151865 |
| 1195 | 37400.37600.39700.42100.43300.67600.502500 | Electrical Wiring works | 12d | 2026-04-24 | 2026-05-05 | 1193SS |  | 7 day week with NGT | 151875 |
| 1196 | 37400.37600.39700.42100.43300.67600.502600 | Internal Plaster Works | 9d | 2026-05-06 | 2026-05-14 | 1192, 1193, 1195 |  | 7 day week with NGT | 151885 |
| 1197 | 37400.37600.39700.42100.43300.67600.502700 | Toilet Dado Works | 9d | 2026-05-15 | 2026-05-23 | 1192, 1193, 1195, 1196 |  | 7 day week with NGT | 151895 |
| 1198 | 37400.37600.39700.42100.43300.67600.502800 | Toilet Flooring Works | 7d | 2026-05-24 | 2026-05-30 | 1194, 1197 |  | 7 day week with NGT | 151905 |
| 1199 | 37400.37600.39700.42100.43300.67600.502900 | Living Dining Flooring | 15d | 2026-05-31 | 2026-06-14 | 1198 |  | 7 day week with NGT | 151915 |
| 1200 | 37400.37600.39700.42100.43300.67600.503000 | Temporary Door Fixing | 9d | 2026-04-22 | 2026-04-30 | 1191 |  | 7 day week with NGT | 151925 |
| 1201 | 37400.37600.39700.42100.43300.67600.503100 | Aluminium Door Widnow Fixing | 15d | 2026-06-15 | 2026-06-29 | 1199, 1200 |  | 7 day week with NGT | 151935 |
| 1202 | 37400.37600.39700.42100.43300.67600.503200 | Rehung Door Fixing | 8d | 2026-06-30 | 2026-07-07 | 1201 |  | 7 day week with NGT | 151945 |
| 1203 | 37400.37600.39700.42100.43300.67600.503300 | Putty Primer coat | 6d | 2026-07-08 | 2026-07-13 | 1202 |  | 7 day week with NGT | 151955 |
| 1204 | 37400.37600.39700.42100.43300.67600.503400 | Painting First Coat | 12d | 2026-07-14 | 2026-07-25 | 1193, 1195, 1202, 1203 |  | 7 day week with NGT | 151965 |
| 1205 | 37400.37600.39700.42100.43300.67600.503500 | False ceiling works | 10d | 2026-08-15 | 2026-08-24 | 1189, 1204 |  | 7 day week with NGT | 151975 |
| 1206 | 37400.37600.39700.42100.43300.67700 | **Fourth Floor** | 135d | 2026-04-22 | 2026-09-03 |  | start no earlier than 2026-04-22 | 7 day week with NGT | 147625 |
| 1207 | 37400.37600.39700.42100.43300.67700.503600 | Blockwork | 10d | 2026-04-22 | 2026-05-01 | 1133, 1191 |  | 7 day week with NGT | 151985 |
| 1208 | 37400.37600.39700.42100.43300.67700.503700 | Internal Plumbing Works | 6d | 2026-05-02 | 2026-05-07 | 1207 |  | 7 day week with NGT | 151995 |
| 1209 | 37400.37600.39700.42100.43300.67700.503800 | Waterproofing Works | 10d | 2026-05-04 | 2026-05-13 | 1208SS+2d |  | 7 day week with NGT | 152005 |
| 1210 | 37400.37600.39700.42100.43300.67700.503900 | PCC | 8d | 2026-05-16 | 2026-05-23 | 1209, 1212SS |  | 7 day week with NGT | 152015 |
| 1211 | 37400.37600.39700.42100.43300.67700.504000 | Electrical Wiring works | 12d | 2026-05-04 | 2026-05-15 | 1209SS |  | 7 day week with NGT | 152025 |
| 1212 | 37400.37600.39700.42100.43300.67700.504100 | Internal Plaster Works | 9d | 2026-05-16 | 2026-05-24 | 1208, 1209, 1211 |  | 7 day week with NGT | 152035 |
| 1213 | 37400.37600.39700.42100.43300.67700.504200 | Toilet Dado Works | 9d | 2026-05-25 | 2026-06-02 | 1208, 1209, 1211, 1212 |  | 7 day week with NGT | 152045 |
| 1214 | 37400.37600.39700.42100.43300.67700.504300 | Toilet Flooring Works | 7d | 2026-06-03 | 2026-06-09 | 1210, 1213 |  | 7 day week with NGT | 152055 |
| 1215 | 37400.37600.39700.42100.43300.67700.504400 | Living Dining Flooring | 15d | 2026-06-10 | 2026-06-24 | 1214 |  | 7 day week with NGT | 152065 |
| 1216 | 37400.37600.39700.42100.43300.67700.504500 | Temporary Door Fixing | 9d | 2026-05-02 | 2026-05-10 | 1207 |  | 7 day week with NGT | 152075 |
| 1217 | 37400.37600.39700.42100.43300.67700.504600 | Aluminium Door Widnow Fixing | 15d | 2026-06-25 | 2026-07-09 | 1215, 1216 |  | 7 day week with NGT | 152085 |
| 1218 | 37400.37600.39700.42100.43300.67700.504700 | Rehung Door Fixing | 8d | 2026-07-10 | 2026-07-17 | 1217 |  | 7 day week with NGT | 152095 |
| 1219 | 37400.37600.39700.42100.43300.67700.504800 | Putty Primer coat | 6d | 2026-07-18 | 2026-07-23 | 1218 |  | 7 day week with NGT | 152105 |
| 1220 | 37400.37600.39700.42100.43300.67700.504900 | Painting First Coat | 12d | 2026-07-24 | 2026-08-04 | 1209, 1211, 1218, 1219 |  | 7 day week with NGT | 152115 |
| 1221 | 37400.37600.39700.42100.43300.67700.505000 | False ceiling works | 10d | 2026-08-25 | 2026-09-03 | 1205, 1220 |  | 7 day week with NGT | 152125 |

| ID | WBS | Task | Duration | Start | Finish | Predecessors | Constraint | Calendar | Unique_Task_ID |
| --- | --- | --- | --- | --- | --- | --- | --- | --- | --- |
| 1222 | 37400.37600.39700.42100.43300.67800 | **Fifth Floor** | 135d | 2026-05-02 | 2026-09-13 |  | start no earlier than 2026-05-02 | 7 day week with NGT | 147635 |
| 1223 | 37400.37600.39700.42100.43300.67800.505100 | Blockwork | 10d | 2026-05-02 | 2026-05-11 | 1134, 1207 |  | 7 day week with NGT | 152135 |
| 1224 | 37400.37600.39700.42100.43300.67800.505200 | Internal Plumbing Works | 6d | 2026-05-12 | 2026-05-17 | 1223 |  | 7 day week with NGT | 152145 |
| 1225 | 37400.37600.39700.42100.43300.67800.505300 | Waterproofing Works | 10d | 2026-05-14 | 2026-05-23 | 1224SS+2d |  | 7 day week with NGT | 152155 |
| 1226 | 37400.37600.39700.42100.43300.67800.505400 | PCC | 8d | 2026-05-26 | 2026-06-02 | 1225, 1228SS |  | 7 day week with NGT | 152165 |
| 1227 | 37400.37600.39700.42100.43300.67800.505500 | Electrical Wiring works | 12d | 2026-05-14 | 2026-05-25 | 1225SS |  | 7 day week with NGT | 152175 |
| 1228 | 37400.37600.39700.42100.43300.67800.505600 | Internal Plaster Works | 9d | 2026-05-26 | 2026-06-03 | 1224, 1225, 1227 |  | 7 day week with NGT | 152185 |
| 1229 | 37400.37600.39700.42100.43300.67800.505700 | Toilet Dado Works | 9d | 2026-06-04 | 2026-06-12 | 1224, 1225, 1227, 1228 |  | 7 day week with NGT | 152195 |
| 1230 | 37400.37600.39700.42100.43300.67800.505800 | Toilet Flooring Works | 7d | 2026-06-13 | 2026-06-19 | 1226, 1229 |  | 7 day week with NGT | 152205 |
| 1231 | 37400.37600.39700.42100.43300.67800.505900 | Living Dining Flooring | 15d | 2026-06-20 | 2026-07-04 | 1230 |  | 7 day week with NGT | 152215 |
| 1232 | 37400.37600.39700.42100.43300.67800.506000 | Temporary Door Fixing | 9d | 2026-05-12 | 2026-05-20 | 1223 |  | 7 day week with NGT | 152225 |
| 1233 | 37400.37600.39700.42100.43300.67800.506100 | Aluminium Door Widnow Fixing | 15d | 2026-07-05 | 2026-07-19 | 1231, 1232 |  | 7 day week with NGT | 152235 |
| 1234 | 37400.37600.39700.42100.43300.67800.506200 | Rehung Door Fixing | 8d | 2026-07-20 | 2026-07-27 | 1233 |  | 7 day week with NGT | 152245 |
| 1235 | 37400.37600.39700.42100.43300.67800.506300 | Putty Primer coat | 6d | 2026-07-28 | 2026-08-02 | 1234 |  | 7 day week with NGT | 152255 |
| 1236 | 37400.37600.39700.42100.43300.67800.506400 | Painting First Coat | 12d | 2026-08-03 | 2026-08-14 | 1225, 1227, 1234, 1235 |  | 7 day week with NGT | 152265 |
| 1237 | 37400.37600.39700.42100.43300.67800.506500 | False ceiling works | 10d | 2026-09-04 | 2026-09-13 | 1221, 1236 |  | 7 day week with NGT | 152275 |
| 1238 | 37400.37600.39700.42100.43300.67900 | **Sixth Floor** | 135d | 2026-05-12 | 2026-09-23 |  | start no earlier than 2026-05-12 | 7 day week with NGT | 147645 |
| 1239 | 37400.37600.39700.42100.43300.67900.506600 | Blockwork | 10d | 2026-05-12 | 2026-05-21 | 1135, 1223 |  | 7 day week with NGT | 152285 |
| 1240 | 37400.37600.39700.42100.43300.67900.506700 | Internal Plumbing Works | 6d | 2026-05-22 | 2026-05-27 | 1239 |  | 7 day week with NGT | 152295 |
| 1241 | 37400.37600.39700.42100.43300.67900.506800 | Waterproofing Works | 10d | 2026-05-24 | 2026-06-02 | 1240SS+2d |  | 7 day week with NGT | 152305 |
| 1242 | 37400.37600.39700.42100.43300.67900.506900 | PCC | 8d | 2026-06-05 | 2026-06-12 | 1241, 1244SS |  | 7 day week with NGT | 152315 |
| 1243 | 37400.37600.39700.42100.43300.67900.507000 | Electrical Wiring works | 12d | 2026-05-24 | 2026-06-04 | 1241SS |  | 7 day week with NGT | 152325 |
| 1244 | 37400.37600.39700.42100.43300.67900.507100 | Internal Plaster Works | 9d | 2026-06-05 | 2026-06-13 | 1240, 1241, 1243 |  | 7 day week with NGT | 152335 |
| 1245 | 37400.37600.39700.42100.43300.67900.507200 | Toilet Dado Works | 9d | 2026-06-14 | 2026-06-22 | 1240, 1241, 1243, 1244 |  | 7 day week with NGT | 152345 |
| 1246 | 37400.37600.39700.42100.43300.67900.507300 | Toilet Flooring Works | 7d | 2026-06-23 | 2026-06-29 | 1242, 1245 |  | 7 day week with NGT | 152355 |
| 1247 | 37400.37600.39700.42100.43300.67900.507400 | Living Dining Flooring | 15d | 2026-06-30 | 2026-07-14 | 1246 |  | 7 day week with NGT | 152365 |
| 1248 | 37400.37600.39700.42100.43300.67900.507500 | Temporary Door Fixing | 9d | 2026-05-22 | 2026-05-30 | 1239 |  | 7 day week with NGT | 152375 |
| 1249 | 37400.37600.39700.42100.43300.67900.507600 | Aluminium Door Widnow Fixing | 15d | 2026-07-15 | 2026-07-29 | 1247, 1248 |  | 7 day week with NGT | 152385 |
| 1250 | 37400.37600.39700.42100.43300.67900.507700 | Rehung Door Fixing | 8d | 2026-07-30 | 2026-08-06 | 1249 |  | 7 day week with NGT | 152395 |
| 1251 | 37400.37600.39700.42100.43300.67900.507800 | Putty Primer coat | 6d | 2026-08-07 | 2026-08-12 | 1250 |  | 7 day week with NGT | 152405 |
| 1252 | 37400.37600.39700.42100.43300.67900.507900 | Painting First Coat | 12d | 2026-08-13 | 2026-08-24 | 1241, 1243, 1250, 1251 |  | 7 day week with NGT | 152415 |
| 1253 | 37400.37600.39700.42100.43300.67900.508000 | False ceiling works | 10d | 2026-09-14 | 2026-09-23 | 1237, 1252 |  | 7 day week with NGT | 152425 |

| ID | WBS | Task | Duration | Start | Finish | Predecessors | Constraint | Calendar | Unique_Task_ID |
| --- | --- | --- | --- | --- | --- | --- | --- | --- | --- |
| 1254 | 37400.37600.39700.42100.43300.68000 | **Seventh Floor** | 135d | 2026-05-22 | 2026-10-03 |  | start no earlier than 2026-05-22 | 7 day week with NGT | 147655 |
| 1255 | 37400.37600.39700.42100.43300.68000.508100 | Blockwork | 10d | 2026-05-22 | 2026-05-31 | 1136, 1239 |  | 7 day week with NGT | 152435 |
| 1256 | 37400.37600.39700.42100.43300.68000.508200 | Internal Plumbing Works | 6d | 2026-06-01 | 2026-06-06 | 1255 |  | 7 day week with NGT | 152445 |
| 1257 | 37400.37600.39700.42100.43300.68000.508300 | Waterproofing Works | 10d | 2026-06-03 | 2026-06-12 | 1256SS+2d |  | 7 day week with NGT | 152455 |
| 1258 | 37400.37600.39700.42100.43300.68000.508400 | PCC | 8d | 2026-06-15 | 2026-06-22 | 1257, 1260SS |  | 7 day week with NGT | 152465 |
| 1259 | 37400.37600.39700.42100.43300.68000.508500 | Electrical Wiring works | 12d | 2026-06-03 | 2026-06-14 | 1257SS |  | 7 day week with NGT | 152475 |
| 1260 | 37400.37600.39700.42100.43300.68000.508600 | Internal Plaster Works | 9d | 2026-06-15 | 2026-06-23 | 1256, 1257, 1259 |  | 7 day week with NGT | 152485 |
| 1261 | 37400.37600.39700.42100.43300.68000.508700 | Toilet Dado Works | 9d | 2026-06-24 | 2026-07-02 | 1256, 1257, 1259, 1260 |  | 7 day week with NGT | 152495 |
| 1262 | 37400.37600.39700.42100.43300.68000.508800 | Toilet Flooring Works | 7d | 2026-07-03 | 2026-07-09 | 1258, 1261 |  | 7 day week with NGT | 152505 |
| 1263 | 37400.37600.39700.42100.43300.68000.508900 | Living Dining Flooring | 15d | 2026-07-10 | 2026-07-24 | 1262 |  | 7 day week with NGT | 152515 |
| 1264 | 37400.37600.39700.42100.43300.68000.509000 | Temporary Door Fixing | 9d | 2026-06-01 | 2026-06-09 | 1255 |  | 7 day week with NGT | 152525 |
| 1265 | 37400.37600.39700.42100.43300.68000.509100 | Aluminium Door Widnow Fixing | 33d | 2026-07-25 | 2026-08-26 | 1263, 1264 |  | 7 day week with NGT | 152535 |
| 1266 | 37400.37600.39700.42100.43300.68000.509200 | Rehung Door Fixing | 8d | 2026-08-27 | 2026-09-03 | 1265 |  | 7 day week with NGT | 152545 |
| 1267 | 37400.37600.39700.42100.43300.68000.509300 | Putty Primer coat | 6d | 2026-09-04 | 2026-09-09 | 1266 |  | 7 day week with NGT | 152555 |
| 1268 | 37400.37600.39700.42100.43300.68000.509400 | Painting First Coat | 12d | 2026-09-10 | 2026-09-21 | 1257, 1259, 1266, 1267 |  | 7 day week with NGT | 152565 |
| 1269 | 37400.37600.39700.42100.43300.68000.509500 | False ceiling works | 10d | 2026-09-24 | 2026-10-03 | 1253, 1268 |  | 7 day week with NGT | 152575 |
| 1270 | 37400.37600.39700.42100.43300.68100 | **Eighth Floor** | 135d | 2026-06-01 | 2026-10-13 |  | start no earlier than 2026-06-01 | 7 day week with NGT | 147665 |
| 1271 | 37400.37600.39700.42100.43300.68100.509600 | Blockwork | 10d | 2026-06-01 | 2026-06-10 | 1137, 1255 |  | 7 day week with NGT | 152585 |
| 1272 | 37400.37600.39700.42100.43300.68100.509700 | Internal Plumbing Works | 6d | 2026-06-11 | 2026-06-16 | 1271 |  | 7 day week with NGT | 152595 |
| 1273 | 37400.37600.39700.42100.43300.68100.509800 | Waterproofing Works | 10d | 2026-06-13 | 2026-06-22 | 1272SS+2d |  | 7 day week with NGT | 152605 |
| 1274 | 37400.37600.39700.42100.43300.68100.509900 | PCC | 8d | 2026-06-25 | 2026-07-02 | 1273, 1276SS |  | 7 day week with NGT | 152615 |
| 1275 | 37400.37600.39700.42100.43300.68100.510000 | Electrical Wiring works | 12d | 2026-06-13 | 2026-06-24 | 1273SS |  | 7 day week with NGT | 152625 |
| 1276 | 37400.37600.39700.42100.43300.68100.510100 | Internal Plaster Works | 9d | 2026-06-25 | 2026-07-03 | 1272, 1273, 1275 |  | 7 day week with NGT | 152635 |
| 1277 | 37400.37600.39700.42100.43300.68100.510200 | Toilet Dado Works | 9d | 2026-07-04 | 2026-07-12 | 1272, 1273, 1275, 1276 |  | 7 day week with NGT | 152645 |
| 1278 | 37400.37600.39700.42100.43300.68100.510300 | Toilet Flooring Works | 7d | 2026-07-13 | 2026-07-19 | 1274, 1277 |  | 7 day week with NGT | 152655 |
| 1279 | 37400.37600.39700.42100.43300.68100.510400 | Living Dining Flooring | 15d | 2026-07-20 | 2026-08-03 | 1278 |  | 7 day week with NGT | 152665 |
| 1280 | 37400.37600.39700.42100.43300.68100.510500 | Temporary Door Fixing | 9d | 2026-06-11 | 2026-06-19 | 1271 |  | 7 day week with NGT | 152675 |
| 1281 | 37400.37600.39700.42100.43300.68100.510600 | Aluminium Door Widnow Fixing | 31d | 2026-08-04 | 2026-09-03 | 1279, 1280 |  | 7 day week with NGT | 152685 |
| 1282 | 37400.37600.39700.42100.43300.68100.510700 | Rehung Door Fixing | 8d | 2026-09-04 | 2026-09-11 | 1281 |  | 7 day week with NGT | 152695 |
| 1283 | 37400.37600.39700.42100.43300.68100.510800 | Putty Primer coat | 6d | 2026-09-12 | 2026-09-17 | 1282 |  | 7 day week with NGT | 152705 |
| 1284 | 37400.37600.39700.42100.43300.68100.510900 | Painting First Coat | 12d | 2026-09-18 | 2026-09-29 | 1273, 1275, 1282, 1283 |  | 7 day week with NGT | 152715 |
| 1285 | 37400.37600.39700.42100.43300.68100.511000 | False ceiling works | 10d | 2026-10-04 | 2026-10-13 | 1269, 1284 |  | 7 day week with NGT | 152725 |

| ID | WBS | Task | Duration | Start | Finish | Predecessors | Constraint | Calendar | Unique_Task_ID |
| --- | --- | --- | --- | --- | --- | --- | --- | --- | --- |
| 1286 | 37400.37600.39700.42100.43300.68200 | **Ninth Floor** | 135d | 2026-06-11 | 2026-10-23 |  | start no earlier than 2026-06-11 | 7 day week with NGT | 147675 |
| 1287 | 37400.37600.39700.42100.43300.68200.511100 | Blockwork | 10d | 2026-06-11 | 2026-06-20 | 1138, 1271 |  | 7 day week with NGT | 152735 |
| 1288 | 37400.37600.39700.42100.43300.68200.511200 | Internal Plumbing Works | 6d | 2026-06-21 | 2026-06-26 | 1287 |  | 7 day week with NGT | 152745 |
| 1289 | 37400.37600.39700.42100.43300.68200.511300 | Waterproofing Works | 10d | 2026-06-23 | 2026-07-02 | 1288SS+2d |  | 7 day week with NGT | 152755 |
| 1290 | 37400.37600.39700.42100.43300.68200.511400 | PCC | 8d | 2026-07-05 | 2026-07-12 | 1289, 1292SS |  | 7 day week with NGT | 152765 |
| 1291 | 37400.37600.39700.42100.43300.68200.511500 | Electrical Wiring works | 12d | 2026-06-23 | 2026-07-04 | 1289SS |  | 7 day week with NGT | 152775 |
| 1292 | 37400.37600.39700.42100.43300.68200.511600 | Internal Plaster Works | 9d | 2026-07-05 | 2026-07-13 | 1288, 1289, 1291 |  | 7 day week with NGT | 152785 |
| 1293 | 37400.37600.39700.42100.43300.68200.511700 | Toilet Dado Works | 9d | 2026-07-14 | 2026-07-22 | 1288, 1289, 1291, 1292 |  | 7 day week with NGT | 152795 |
| 1294 | 37400.37600.39700.42100.43300.68200.511800 | Toilet Flooring Works | 7d | 2026-07-23 | 2026-07-29 | 1290, 1293 |  | 7 day week with NGT | 152805 |
| 1295 | 37400.37600.39700.42100.43300.68200.511900 | Living Dining Flooring | 15d | 2026-07-30 | 2026-08-13 | 1294 |  | 7 day week with NGT | 152815 |
| 1296 | 37400.37600.39700.42100.43300.68200.512000 | Temporary Door Fixing | 9d | 2026-06-21 | 2026-06-29 | 1287 |  | 7 day week with NGT | 152825 |
| 1297 | 37400.37600.39700.42100.43300.68200.512100 | Aluminium Door Widnow Fixing | 29d | 2026-08-14 | 2026-09-11 | 1295, 1296 |  | 7 day week with NGT | 152835 |
| 1298 | 37400.37600.39700.42100.43300.68200.512200 | Rehung Door Fixing | 8d | 2026-09-12 | 2026-09-19 | 1297 |  | 7 day week with NGT | 152845 |
| 1299 | 37400.37600.39700.42100.43300.68200.512300 | Putty Primer coat | 6d | 2026-09-20 | 2026-09-25 | 1298 |  | 7 day week with NGT | 152855 |
| 1300 | 37400.37600.39700.42100.43300.68200.512400 | Painting First Coat | 12d | 2026-09-26 | 2026-10-07 | 1289, 1291, 1298, 1299 |  | 7 day week with NGT | 152865 |
| 1301 | 37400.37600.39700.42100.43300.68200.512500 | False ceiling works | 10d | 2026-10-14 | 2026-10-23 | 1285, 1300 |  | 7 day week with NGT | 152875 |
| 1302 | 37400.37600.39700.42100.43300.68300 | **Tenth Floor** | 135d | 2026-06-21 | 2026-12-17 |  | start no earlier than 2026-06-21 | 7 day week with NGT | 147685 |
| 1303 | 37400.37600.39700.42100.43300.68300.512600 | Blockwork | 15d | 2026-06-21 | 2026-07-05 | 1139, 1287 |  | 7 day week with NGT | 152885 |
| 1304 | 37400.37600.39700.42100.43300.68300.512700 | Internal Plumbing Works | 6d | 2026-07-06 | 2026-07-11 | 1303 |  | 7 day week with NGT | 152895 |
| 1305 | 37400.37600.39700.42100.43300.68300.512800 | Waterproofing Works | 10d | 2026-07-08 | 2026-07-17 | 1304SS+2d |  | 7 day week with NGT | 152905 |
| 1306 | 37400.37600.39700.42100.43300.68300.512900 | PCC | 8d | 2026-07-20 | 2026-07-27 | 1305, 1308SS |  | 7 day week with NGT | 152915 |
| 1307 | 37400.37600.39700.42100.43300.68300.513000 | Electrical Wiring works | 12d | 2026-07-08 | 2026-07-19 | 1305SS |  | 7 day week with NGT | 152925 |
| 1308 | 37400.37600.39700.42100.43300.68300.513100 | Internal Plaster Works | 9d | 2026-07-20 | 2026-07-28 | 1304, 1305, 1307 |  | 7 day week with NGT | 152935 |
| 1309 | 37400.37600.39700.42100.43300.68300.513200 | Toilet Dado Works | 9d | 2026-07-29 | 2026-08-06 | 1304, 1305, 1307, 1308 |  | 7 day week with NGT | 152945 |
| 1310 | 37400.37600.39700.42100.43300.68300.513300 | Toilet Flooring Works | 7d | 2026-08-07 | 2026-08-13 | 1306, 1309 |  | 7 day week with NGT | 152955 |
| 1311 | 37400.37600.39700.42100.43300.68300.513400 | Living Dining Flooring | 15d | 2026-08-14 | 2026-08-28 | 1310 |  | 7 day week with NGT | 152965 |
| 1312 | 37400.37600.39700.42100.43300.68300.513500 | Temporary Door Fixing | 9d | 2026-07-06 | 2026-07-14 | 1303 |  | 7 day week with NGT | 152975 |
| 1313 | 37400.37600.39700.42100.43300.68300.513600 | Aluminium Door Widnow Fixing | 22d | 2026-08-29 | 2026-09-19 | 1311, 1312 |  | 7 day week with NGT | 152985 |
| 1314 | 37400.37600.39700.42100.43300.68300.513700 | Rehung Door Fixing | 8d | 2026-09-20 | 2026-09-27 | 1313 |  | 7 day week with NGT | 152995 |
| 1315 | 37400.37600.39700.42100.43300.68300.513800 | Putty Primer coat | 6d | 2026-09-28 | 2026-10-03 | 1314 |  | 7 day week with NGT | 153005 |
| 1316 | 37400.37600.39700.42100.43300.68300.513900 | Painting First Coat | 12d | 2026-10-04 | 2026-10-15 | 1305, 1307, 1314, 1315 |  | 7 day week with NGT | 153015 |
| 1317 | 37400.37600.39700.42100.43300.68300.514000 | False ceiling works | 10d | 2026-10-24 | 2026-12-17 | 1301, 1316 |  | 7 day week with NGT | 153025 |

| ID | WBS | Task | Duration | Start | Finish | Predecessors | Constraint | Calendar | Unique_Task_ID |
| --- | --- | --- | --- | --- | --- | --- | --- | --- | --- |
| 1318 | 37400.37600.39700.42100.43300.68400 | **Eleventh Floor** | 134.5d | 2026-07-01 | 2026-12-27 |  | start no earlier than 2026-07-01 | 7 day week with NGT | 147695 |
| 1319 | 37400.37600.39700.42100.43300.68400.514100 | Blockwork | 15d | 2026-07-01 | 2026-07-16 | 1140FS+0.25d |  | 7 day week with NGT | 153035 |
| 1320 | 37400.37600.39700.42100.43300.68400.514200 | Internal Plumbing Works | 6d | 2026-07-16 | 2026-07-22 | 1319 |  | 7 day week with NGT | 153045 |
| 1321 | 37400.37600.39700.42100.43300.68400.514300 | Waterproofing Works | 10d | 2026-07-18 | 2026-07-28 | 1320SS+2d |  | 7 day week with NGT | 153055 |
| 1322 | 37400.37600.39700.42100.43300.68400.514400 | PCC | 8d | 2026-07-30 | 2026-08-07 | 1321, 1324SS |  | 7 day week with NGT | 153065 |
| 1323 | 37400.37600.39700.42100.43300.68400.514500 | Electrical Wiring works | 12d | 2026-07-18 | 2026-07-30 | 1321SS |  | 7 day week with NGT | 153075 |
| 1324 | 37400.37600.39700.42100.43300.68400.514600 | Internal Plaster Works | 9d | 2026-07-30 | 2026-08-08 | 1320, 1321, 1323 |  | 7 day week with NGT | 153085 |
| 1325 | 37400.37600.39700.42100.43300.68400.514700 | Toilet Dado Works | 9d | 2026-08-08 | 2026-08-17 | 1320, 1321, 1323, 1324 |  | 7 day week with NGT | 153095 |
| 1326 | 37400.37600.39700.42100.43300.68400.514800 | Toilet Flooring Works | 7d | 2026-08-17 | 2026-08-24 | 1322, 1325 |  | 7 day week with NGT | 153105 |
| 1327 | 37400.37600.39700.42100.43300.68400.514900 | Living Dining Flooring | 15d | 2026-08-24 | 2026-09-08 | 1326 |  | 7 day week with NGT | 153115 |
| 1328 | 37400.37600.39700.42100.43300.68400.515000 | Temporary Door Fixing | 9d | 2026-07-16 | 2026-07-25 | 1319 |  | 7 day week with NGT | 153125 |
| 1329 | 37400.37600.39700.42100.43300.68400.515100 | Aluminium Door Widnow Fixing | 25d | 2026-09-08 | 2026-10-03 | 1327, 1328 |  | 7 day week with NGT | 153135 |
| 1330 | 37400.37600.39700.42100.43300.68400.515200 | Rehung Door Fixing | 8d | 2026-10-03 | 2026-10-11 | 1329 |  | 7 day week with NGT | 153145 |
| 1331 | 37400.37600.39700.42100.43300.68400.515300 | Putty Primer coat | 6d | 2026-10-11 | 2026-10-17 | 1330 |  | 7 day week with NGT | 153155 |
| 1332 | 37400.37600.39700.42100.43300.68400.515400 | Painting First Coat | 12d | 2026-10-17 | 2026-10-29 | 1321, 1323, 1330, 1331 |  | 7 day week with NGT | 153165 |
| 1333 | 37400.37600.39700.42100.43300.68400.515500 | False ceiling works | 10d | 2026-12-18 | 2026-12-27 | 1317, 1332 |  | 7 day week with NGT | 153175 |
| 1334 | 37400.37600.39700.42100.43300.68500 | **Twelth Floor** | 130.5d | 2026-07-15 | 2027-01-06 |  | start no earlier than 2026-07-15 | 7 day week with NGT | 147705 |
| 1335 | 37400.37600.39700.42100.43300.68500.515600 | Blockwork | 10d | 2026-07-15 | 2026-07-25 | 1142FF+0.25d |  | 7 day week with NGT | 153185 |
| 1336 | 37400.37600.39700.42100.43300.68500.515700 | Internal Plumbing Works | 6d | 2026-07-25 | 2026-07-31 | 1335 |  | 7 day week with NGT | 153195 |
| 1337 | 37400.37600.39700.42100.43300.68500.515800 | Waterproofing Works | 10d | 2026-07-27 | 2026-08-06 | 1336SS+2d |  | 7 day week with NGT | 153205 |
| 1338 | 37400.37600.39700.42100.43300.68500.515900 | PCC | 8d | 2026-08-08 | 2026-08-16 | 1337, 1340SS |  | 7 day week with NGT | 153215 |
| 1339 | 37400.37600.39700.42100.43300.68500.516000 | Electrical Wiring works | 12d | 2026-07-27 | 2026-08-08 | 1337SS |  | 7 day week with NGT | 153225 |
| 1340 | 37400.37600.39700.42100.43300.68500.516100 | Internal Plaster Works | 9d | 2026-08-08 | 2026-08-17 | 1336, 1337, 1339 |  | 7 day week with NGT | 153235 |
| 1341 | 37400.37600.39700.42100.43300.68500.516200 | Toilet Dado Works | 9d | 2026-08-17 | 2026-08-26 | 1336, 1337, 1339, 1340 |  | 7 day week with NGT | 153245 |
| 1342 | 37400.37600.39700.42100.43300.68500.516300 | Toilet Flooring Works | 7d | 2026-08-26 | 2026-09-02 | 1338, 1341 |  | 7 day week with NGT | 153255 |
| 1343 | 37400.37600.39700.42100.43300.68500.516400 | Living Dining Flooring | 15d | 2026-09-02 | 2026-09-17 | 1342 |  | 7 day week with NGT | 153265 |
| 1344 | 37400.37600.39700.42100.43300.68500.516500 | Temporary Door Fixing | 9d | 2026-07-25 | 2026-08-03 | 1335 |  | 7 day week with NGT | 153275 |
| 1345 | 37400.37600.39700.42100.43300.68500.516600 | Aluminium Door Widnow Fixing | 22d | 2026-09-17 | 2026-10-09 | 1343, 1344 |  | 7 day week with NGT | 153285 |
| 1346 | 37400.37600.39700.42100.43300.68500.516700 | Rehung Door Fixing | 8d | 2026-10-09 | 2026-10-17 | 1345 |  | 7 day week with NGT | 153295 |
| 1347 | 37400.37600.39700.42100.43300.68500.516800 | Putty Primer coat | 6d | 2026-10-17 | 2026-10-23 | 1346 |  | 7 day week with NGT | 153305 |
| 1348 | 37400.37600.39700.42100.43300.68500.516900 | Painting First Coat | 12d | 2026-10-23 | 2026-12-19 | 1337, 1339, 1346, 1347 |  | 7 day week with NGT | 153315 |
| 1349 | 37400.37600.39700.42100.43300.68500.517000 | False ceiling works | 10d | 2026-12-28 | 2027-01-06 | 1333, 1348 |  | 7 day week with NGT | 153325 |

| ID | WBS | Task | Duration | Start | Finish | Predecessors | Constraint | Calendar | Unique_Task_ID |
| --- | --- | --- | --- | --- | --- | --- | --- | --- | --- |
| 1350 | 37400.37600.39700.42100.43300.68600 | **Thirteen Floor** | 115d | 2026-08-01 | 2027-01-08 |  | start no earlier than 2026-08-01 | 7 day week with NGT | 147715 |
| 1351 | 37400.37600.39700.42100.43300.68600.517100 | Blockwork | 10d | 2026-08-01 | 2026-08-11 | 1143FF+0.25d, 1335FS+0.25d |  | 7 day week with NGT | 153335 |
| 1352 | 37400.37600.39700.42100.43300.68600.517200 | Internal Plumbing Works | 6d | 2026-08-11 | 2026-08-17 | 1351 |  | 7 day week with NGT | 153345 |
| 1353 | 37400.37600.39700.42100.43300.68600.517300 | Waterproofing Works | 10d | 2026-08-13 | 2026-08-23 | 1352SS+2d |  | 7 day week with NGT | 153355 |
| 1354 | 37400.37600.39700.42100.43300.68600.517400 | PCC | 8d | 2026-08-25 | 2026-09-02 | 1353, 1356SS |  | 7 day week with NGT | 153365 |
| 1355 | 37400.37600.39700.42100.43300.68600.517500 | Electrical Wiring works | 12d | 2026-08-13 | 2026-08-25 | 1353SS |  | 7 day week with NGT | 153375 |
| 1356 | 37400.37600.39700.42100.43300.68600.517600 | Internal Plaster Works | 9d | 2026-08-25 | 2026-09-03 | 1352, 1353, 1355 |  | 7 day week with NGT | 153385 |
| 1357 | 37400.37600.39700.42100.43300.68600.517700 | Toilet Dado Works | 9d | 2026-09-03 | 2026-09-12 | 1352, 1353, 1355, 1356 |  | 7 day week with NGT | 153395 |
| 1358 | 37400.37600.39700.42100.43300.68600.517800 | Toilet Flooring Works | 7d | 2026-09-12 | 2026-09-19 | 1354, 1357 |  | 7 day week with NGT | 153405 |
| 1359 | 37400.37600.39700.42100.43300.68600.517900 | Living Dining Flooring | 15d | 2026-09-19 | 2026-10-04 | 1358 |  | 7 day week with NGT | 153415 |
| 1360 | 37400.37600.39700.42100.43300.68600.518000 | Temporary Door Fixing | 9d | 2026-08-11 | 2026-08-20 | 1351 |  | 7 day week with NGT | 153425 |
| 1361 | 37400.37600.39700.42100.43300.68600.518100 | Aluminium Door Widnow Fixing | 15d | 2026-10-04 | 2026-10-19 | 1359, 1360 |  | 7 day week with NGT | 153435 |
| 1362 | 37400.37600.39700.42100.43300.68600.518200 | Rehung Door Fixing | 8d | 2026-10-19 | 2026-10-27 | 1361 |  | 7 day week with NGT | 153445 |
| 1363 | 37400.37600.39700.42100.43300.68600.518300 | Putty Primer coat | 6d | 2026-10-27 | 2026-12-17 | 1362 |  | 7 day week with NGT | 153455 |
| 1364 | 37400.37600.39700.42100.43300.68600.518400 | Painting First Coat | 12d | 2026-12-17 | 2026-12-29 | 1353, 1355, 1362, 1363 |  | 7 day week with NGT | 153465 |
| 1365 | 37400.37600.39700.42100.43300.68600.518500 | False ceiling works | 10d | 2026-12-29 | 2027-01-08 | 1351, 1364 |  | 7 day week with NGT | 153475 |
| 1366 | 37400.37600.39700.42100.43300.68700 | **Fourteen Floor** | 121d | 2026-08-13 | 2027-01-26 |  | start no earlier than 2026-08-13 | 7 day week with NGT | 147725 |
| 1367 | 37400.37600.39700.42100.43300.68700.518600 | Blockwork | 10d | 2026-08-13 | 2026-08-23 | 1144FF+0.25d, 1351FS+0.25d |  | 7 day week with NGT | 153485 |
| 1368 | 37400.37600.39700.42100.43300.68700.518700 | Internal Plumbing Works | 6d | 2026-08-23 | 2026-08-29 | 1367 |  | 7 day week with NGT | 153495 |
| 1369 | 37400.37600.39700.42100.43300.68700.518800 | Waterproofing Works | 10d | 2026-08-25 | 2026-09-04 | 1368SS+2d |  | 7 day week with NGT | 153505 |
| 1370 | 37400.37600.39700.42100.43300.68700.518900 | PCC | 8d | 2026-09-06 | 2026-09-14 | 1369, 1372SS |  | 7 day week with NGT | 153515 |
| 1371 | 37400.37600.39700.42100.43300.68700.519000 | Electrical Wiring works | 12d | 2026-08-25 | 2026-09-06 | 1369SS |  | 7 day week with NGT | 153525 |
| 1372 | 37400.37600.39700.42100.43300.68700.519100 | Internal Plaster Works | 9d | 2026-09-06 | 2026-09-15 | 1368, 1369, 1371 |  | 7 day week with NGT | 153535 |
| 1373 | 37400.37600.39700.42100.43300.68700.519200 | Toilet Dado Works | 9d | 2026-09-15 | 2026-09-24 | 1368, 1369, 1371, 1372 |  | 7 day week with NGT | 153545 |
| 1374 | 37400.37600.39700.42100.43300.68700.519300 | Toilet Flooring Works | 7d | 2026-09-24 | 2026-10-01 | 1370, 1373 |  | 7 day week with NGT | 153555 |
| 1375 | 37400.37600.39700.42100.43300.68700.519400 | Living Dining Flooring | 15d | 2026-10-01 | 2026-10-16 | 1374 |  | 7 day week with NGT | 153565 |
| 1376 | 37400.37600.39700.42100.43300.68700.519500 | Temporary Door Fixing | 9d | 2026-08-23 | 2026-09-01 | 1367 |  | 7 day week with NGT | 153575 |
| 1377 | 37400.37600.39700.42100.43300.68700.519600 | Aluminium Door Widnow Fixing | 21d | 2026-10-16 | 2026-12-21 | 1375, 1376 |  | 7 day week with NGT | 153585 |
| 1378 | 37400.37600.39700.42100.43300.68700.519700 | Rehung Door Fixing | 8d | 2026-12-21 | 2026-12-29 | 1377 |  | 7 day week with NGT | 153595 |
| 1379 | 37400.37600.39700.42100.43300.68700.519800 | Putty Primer coat | 6d | 2026-12-29 | 2027-01-04 | 1378 |  | 7 day week with NGT | 153605 |
| 1380 | 37400.37600.39700.42100.43300.68700.519900 | Painting First Coat | 12d | 2027-01-04 | 2027-01-16 | 1369, 1371, 1378, 1379 |  | 7 day week with NGT | 153615 |
| 1381 | 37400.37600.39700.42100.43300.68700.520000 | False ceiling works | 10d | 2027-01-16 | 2027-01-26 | 1365, 1380 |  | 7 day week with NGT | 153625 |

| ID | WBS | Task | Duration | Start | Finish | Predecessors | Constraint | Calendar | Unique_Task_ID |
| --- | --- | --- | --- | --- | --- | --- | --- | --- | --- |
| 1382 | 37400.37600.39700.42100.43300.68800 | **Fifteen Floor** | 115d | 2026-09-15 | 2027-02-22 |  | start no earlier than 2026-09-15 | 7 day week with NGT | 147735 |
| 1383 | 37400.37600.39700.42100.43300.68800.520100 | Blockwork | 10d | 2026-09-15 | 2026-09-25 | 1146, 1367 |  | 7 day week with NGT | 153635 |
| 1384 | 37400.37600.39700.42100.43300.68800.520200 | Internal Plumbing Works | 6d | 2026-09-25 | 2026-10-01 | 1383 |  | 7 day week with NGT | 153645 |
| 1385 | 37400.37600.39700.42100.43300.68800.520300 | Waterproofing Works | 10d | 2026-09-27 | 2026-10-07 | 1384SS+2d |  | 7 day week with NGT | 153655 |
| 1386 | 37400.37600.39700.42100.43300.68800.520400 | PCC | 8d | 2026-10-09 | 2026-10-17 | 1385, 1388SS |  | 7 day week with NGT | 153665 |
| 1387 | 37400.37600.39700.42100.43300.68800.520500 | Electrical Wiring works | 12d | 2026-09-27 | 2026-10-09 | 1385SS |  | 7 day week with NGT | 153675 |
| 1388 | 37400.37600.39700.42100.43300.68800.520600 | Internal Plaster Works | 9d | 2026-10-09 | 2026-10-18 | 1384, 1385, 1387 |  | 7 day week with NGT | 153685 |
| 1389 | 37400.37600.39700.42100.43300.68800.520700 | Toilet Dado Works | 9d | 2026-10-18 | 2026-10-27 | 1384, 1385, 1387, 1388 |  | 7 day week with NGT | 153695 |
| 1390 | 37400.37600.39700.42100.43300.68800.520800 | Toilet Flooring Works | 7d | 2026-10-27 | 2026-12-18 | 1386, 1389 |  | 7 day week with NGT | 153705 |
| 1391 | 37400.37600.39700.42100.43300.68800.520900 | Living Dining Flooring | 15d | 2026-12-18 | 2027-01-02 | 1390 |  | 7 day week with NGT | 153715 |
| 1392 | 37400.37600.39700.42100.43300.68800.521000 | Temporary Door Fixing | 9d | 2026-09-25 | 2026-10-04 | 1383 |  | 7 day week with NGT | 153725 |
| 1393 | 37400.37600.39700.42100.43300.68800.521100 | Aluminium Door Widnow Fixing | 15d | 2027-01-02 | 2027-01-17 | 1391, 1392 |  | 7 day week with NGT | 153735 |
| 1394 | 37400.37600.39700.42100.43300.68800.521200 | Rehung Door Fixing | 8d | 2027-01-17 | 2027-01-25 | 1393 |  | 7 day week with NGT | 153745 |
| 1395 | 37400.37600.39700.42100.43300.68800.521300 | Putty Primer coat | 6d | 2027-01-25 | 2027-01-31 | 1394 |  | 7 day week with NGT | 153755 |
| 1396 | 37400.37600.39700.42100.43300.68800.521400 | Painting First Coat | 12d | 2027-01-31 | 2027-02-12 | 1385, 1387, 1394, 1395 |  | 7 day week with NGT | 153765 |
| 1397 | 37400.37600.39700.42100.43300.68800.521500 | False ceiling works | 10d | 2027-02-12 | 2027-02-22 | 1381, 1396 |  | 7 day week with NGT | 153775 |
| 1398 | 37400.37600.39700.42100.43300.68900 | **Sixteen Floor** | 123.75d | 2026-09-16 | 2027-03-04 |  | start no earlier than 2026-09-16 | 7 day week with NGT | 147745 |
| 1399 | 37400.37600.39700.42100.43300.68900.521600 | Blockwork | 10d | 2026-09-16 | 2026-09-26 | 1147FF+0.25d |  | 7 day week with NGT | 153785 |
| 1400 | 37400.37600.39700.42100.43300.68900.521700 | Internal Plumbing Works | 6d | 2026-09-26 | 2026-10-02 | 1399 |  | 7 day week with NGT | 153795 |
| 1401 | 37400.37600.39700.42100.43300.68900.521800 | Waterproofing Works | 10d | 2026-09-28 | 2026-10-08 | 1400SS+2d |  | 7 day week with NGT | 153805 |
| 1402 | 37400.37600.39700.42100.43300.68900.521900 | PCC | 8d | 2026-10-10 | 2026-10-18 | 1401, 1404SS |  | 7 day week with NGT | 153815 |
| 1403 | 37400.37600.39700.42100.43300.68900.522000 | Electrical Wiring works | 12d | 2026-09-28 | 2026-10-10 | 1401SS |  | 7 day week with NGT | 153825 |
| 1404 | 37400.37600.39700.42100.43300.68900.522100 | Internal Plaster Works | 9d | 2026-10-10 | 2026-10-19 | 1400, 1401, 1403 |  | 7 day week with NGT | 153835 |
| 1405 | 37400.37600.39700.42100.43300.68900.522200 | Toilet Dado Works | 9d | 2026-10-19 | 2026-10-28 | 1400, 1401, 1403, 1404 |  | 7 day week with NGT | 153845 |
| 1406 | 37400.37600.39700.42100.43300.68900.522300 | Toilet Flooring Works | 7d | 2026-10-28 | 2026-12-19 | 1402, 1405 |  | 7 day week with NGT | 153855 |
| 1407 | 37400.37600.39700.42100.43300.68900.522400 | Living Dining Flooring | 15d | 2026-12-19 | 2027-01-03 | 1406 |  | 7 day week with NGT | 153865 |
| 1408 | 37400.37600.39700.42100.43300.68900.522500 | Temporary Door Fixing | 9d | 2026-09-26 | 2026-10-05 | 1399 |  | 7 day week with NGT | 153875 |
| 1409 | 37400.37600.39700.42100.43300.68900.522600 | Aluminium Door Widnow Fixing | 15d | 2027-01-03 | 2027-01-18 | 1407, 1408 |  | 7 day week with NGT | 153885 |
| 1410 | 37400.37600.39700.42100.43300.68900.522700 | Rehung Door Fixing | 8d | 2027-01-18 | 2027-01-26 | 1409 |  | 7 day week with NGT | 153895 |
| 1411 | 37400.37600.39700.42100.43300.68900.522800 | Putty Primer coat | 6d | 2027-01-26 | 2027-02-01 | 1410 |  | 7 day week with NGT | 153905 |
| 1412 | 37400.37600.39700.42100.43300.68900.522900 | Painting First Coat | 12d | 2027-02-01 | 2027-02-13 | 1401, 1403, 1410, 1411 |  | 7 day week with NGT | 153915 |
| 1413 | 37400.37600.39700.42100.43300.68900.523000 | False ceiling works | 10d | 2027-02-22 | 2027-03-04 | 1397, 1412 |  | 7 day week with NGT | 153925 |

| ID | WBS | Task | Duration | Start | Finish | Predecessors | Constraint | Calendar | Unique_Task_ID |
| --- | --- | --- | --- | --- | --- | --- | --- | --- | --- |
| 1414 | 37400.37600.39700.42100.43300.69000 | **Seventeen Floor** | 119.75d | 2026-09-30 | 2027-03-14 |  | start no earlier than 2026-09-30 | 7 day week with NGT | 147755 |
| 1415 | 37400.37600.39700.42100.43300.69000.523100 | Blockwork | 7d | 2026-09-30 | 2026-10-07 | 1148FF+0.25d |  | 7 day week with NGT | 153935 |
| 1416 | 37400.37600.39700.42100.43300.69000.523200 | Internal Plumbing Works | 6d | 2026-10-07 | 2026-10-13 | 1415 |  | 7 day week with NGT | 153945 |
| 1417 | 37400.37600.39700.42100.43300.69000.523300 | Waterproofing Works | 7d | 2026-10-09 | 2026-10-16 | 1416SS+2d |  | 7 day week with NGT | 153955 |
| 1418 | 37400.37600.39700.42100.43300.69000.523400 | PCC | 3d | 2026-10-16 | 2026-10-19 | 1417, 1420SS |  | 7 day week with NGT | 153965 |
| 1419 | 37400.37600.39700.42100.43300.69000.523500 | Electrical Wiring works | 5d | 2026-10-09 | 2026-10-14 | 1417SS |  | 7 day week with NGT | 153975 |
| 1420 | 37400.37600.39700.42100.43300.69000.523600 | Internal Plaster Works | 5d | 2026-10-16 | 2026-10-21 | 1416, 1417, 1419 |  | 7 day week with NGT | 153985 |
| 1421 | 37400.37600.39700.42100.43300.69000.523700 | Toilet Dado Works | 7d | 2026-10-21 | 2026-10-28 | 1416, 1417, 1419, 1420 |  | 7 day week with NGT | 153995 |
| 1422 | 37400.37600.39700.42100.43300.69000.523800 | Toilet Flooring Works | 5d | 2026-10-28 | 2026-12-17 | 1418, 1421 |  | 7 day week with NGT | 154005 |
| 1423 | 37400.37600.39700.42100.43300.69000.523900 | Living Dining Flooring | 8d | 2026-12-17 | 2026-12-25 | 1422 |  | 7 day week with NGT | 154015 |
| 1424 | 37400.37600.39700.42100.43300.69000.524000 | Temporary Door Fixing | 9d | 2026-10-07 | 2026-10-16 | 1415 |  | 7 day week with NGT | 154025 |
| 1425 | 37400.37600.39700.42100.43300.69000.524100 | Aluminium Door Widnow Fixing | 15d | 2026-12-25 | 2027-01-09 | 1423, 1424 |  | 7 day week with NGT | 154035 |
| 1426 | 37400.37600.39700.42100.43300.69000.524200 | Rehung Door Fixing | 8d | 2027-01-09 | 2027-01-17 | 1425 |  | 7 day week with NGT | 154045 |
| 1427 | 37400.37600.39700.42100.43300.69000.524300 | Putty Primer coat | 6d | 2027-01-17 | 2027-01-23 | 1426 |  | 7 day week with NGT | 154055 |
| 1428 | 37400.37600.39700.42100.43300.69000.524400 | Painting First Coat | 12d | 2027-01-23 | 2027-02-04 | 1417, 1419, 1426, 1427 |  | 7 day week with NGT | 154065 |
| 1429 | 37400.37600.39700.42100.43300.69000.524500 | False ceiling works | 10d | 2027-03-04 | 2027-03-14 | 1413, 1428 |  | 7 day week with NGT | 154075 |
| 1430 | 37400.37600.39700.42100.43300.69100 | **Eighteenth Floor** | 118.75d | 2026-10-11 | 2027-03-24 |  | start no earlier than 2026-10-11 | 7 day week with NGT | 147765 |
| 1431 | 37400.37600.39700.42100.43300.69100.524600 | Blockwork | 7d | 2026-10-11 | 2026-10-18 | 1149FF+0.25d |  | 7 day week with NGT | 154085 |
| 1432 | 37400.37600.39700.42100.43300.69100.524700 | Internal Plumbing Works | 6d | 2026-10-18 | 2026-10-24 | 1431 |  | 7 day week with NGT | 154095 |
| 1433 | 37400.37600.39700.42100.43300.69100.524800 | Waterproofing Works | 7d | 2026-10-20 | 2026-10-27 | 1432SS+2d |  | 7 day week with NGT | 154105 |
| 1434 | 37400.37600.39700.42100.43300.69100.524900 | PCC | 3d | 2026-10-27 | 2026-10-30 | 1433, 1436SS |  | 7 day week with NGT | 154115 |
| 1435 | 37400.37600.39700.42100.43300.69100.525000 | Electrical Wiring works | 5d | 2026-10-20 | 2026-10-25 | 1433SS |  | 7 day week with NGT | 154125 |
| 1436 | 37400.37600.39700.42100.43300.69100.525100 | Internal Plaster Works | 5d | 2026-10-27 | 2026-12-16 | 1432, 1433, 1435 |  | 7 day week with NGT | 154135 |
| 1437 | 37400.37600.39700.42100.43300.69100.525200 | Toilet Dado Works | 7d | 2026-12-16 | 2026-12-23 | 1432, 1433, 1435, 1436 |  | 7 day week with NGT | 154145 |
| 1438 | 37400.37600.39700.42100.43300.69100.525300 | Toilet Flooring Works | 5d | 2026-12-23 | 2026-12-28 | 1434, 1437 |  | 7 day week with NGT | 154155 |
| 1439 | 37400.37600.39700.42100.43300.69100.525400 | Living Dining Flooring | 8d | 2026-12-28 | 2027-01-05 | 1438 |  | 7 day week with NGT | 154165 |
| 1440 | 37400.37600.39700.42100.43300.69100.525500 | Temporary Door Fixing | 9d | 2026-10-18 | 2026-10-27 | 1431 |  | 7 day week with NGT | 154175 |
| 1441 | 37400.37600.39700.42100.43300.69100.525600 | Aluminium Door Widnow Fixing | 15d | 2027-01-05 | 2027-01-20 | 1439, 1440 |  | 7 day week with NGT | 154185 |
| 1442 | 37400.37600.39700.42100.43300.69100.525700 | Rehung Door Fixing | 8d | 2027-01-20 | 2027-01-28 | 1441 |  | 7 day week with NGT | 154195 |
| 1443 | 37400.37600.39700.42100.43300.69100.525800 | Putty Primer coat | 6d | 2027-01-28 | 2027-02-03 | 1442 |  | 7 day week with NGT | 154205 |
| 1444 | 37400.37600.39700.42100.43300.69100.525900 | Painting First Coat | 12d | 2027-02-03 | 2027-02-15 | 1433, 1435, 1442, 1443 |  | 7 day week with NGT | 154215 |
| 1445 | 37400.37600.39700.42100.43300.69100.526000 | False ceiling works | 10d | 2027-03-14 | 2027-03-24 | 1429, 1444 |  | 7 day week with NGT | 154225 |

| ID | WBS | Task | Duration | Start | Finish | Predecessors | Constraint | Calendar | Unique_Task_ID |
| --- | --- | --- | --- | --- | --- | --- | --- | --- | --- |
| 1446 | 37400.37600.39700.42100.43300.69200 | **Ninteenth Floor** | 117.75d | 2026-10-22 | 2027-04-03 |  | start no earlier than 2026-10-22 | 7 day week with NGT | 147775 |
| 1447 | 37400.37600.39700.42100.43300.69200.526100 | Blockwork | 7d | 2026-10-22 | 2026-10-29 | 1150FF+0.25d |  | 7 day week with NGT | 154235 |
| 1448 | 37400.37600.39700.42100.43300.69200.526200 | Internal Plumbing Works | 6d | 2026-10-29 | 2026-12-19 | 1447 |  | 7 day week with NGT | 154245 |
| 1449 | 37400.37600.39700.42100.43300.69200.526300 | Waterproofing Works | 7d | 2026-10-31 | 2026-12-22 | 1448SS+2d |  | 7 day week with NGT | 154255 |
| 1450 | 37400.37600.39700.42100.43300.69200.526400 | PCC | 3d | 2026-12-22 | 2026-12-25 | 1449, 1452SS |  | 7 day week with NGT | 154265 |
| 1451 | 37400.37600.39700.42100.43300.69200.526500 | Electrical Wiring works | 5d | 2026-10-31 | 2026-12-20 | 1449SS |  | 7 day week with NGT | 154275 |
| 1452 | 37400.37600.39700.42100.43300.69200.526600 | Internal Plaster Works | 5d | 2026-12-22 | 2026-12-27 | 1448, 1449, 1451 |  | 7 day week with NGT | 154285 |
| 1453 | 37400.37600.39700.42100.43300.69200.526700 | Toilet Dado Works | 7d | 2026-12-27 | 2027-01-03 | 1448, 1449, 1451, 1452 |  | 7 day week with NGT | 154295 |
| 1454 | 37400.37600.39700.42100.43300.69200.526800 | Toilet Flooring Works | 5d | 2027-01-03 | 2027-01-08 | 1450, 1453 |  | 7 day week with NGT | 154305 |
| 1455 | 37400.37600.39700.42100.43300.69200.526900 | Living Dining Flooring | 8d | 2027-01-08 | 2027-01-16 | 1454 |  | 7 day week with NGT | 154315 |
| 1456 | 37400.37600.39700.42100.43300.69200.527000 | Temporary Door Fixing | 9d | 2026-10-29 | 2026-12-22 | 1447 |  | 7 day week with NGT | 154325 |
| 1457 | 37400.37600.39700.42100.43300.69200.527100 | Aluminium Door Widnow Fixing | 27d | 2027-01-16 | 2027-02-12 | 1455, 1456 |  | 7 day week with NGT | 154335 |
| 1458 | 37400.37600.39700.42100.43300.69200.527200 | Rehung Door Fixing | 8d | 2027-02-12 | 2027-02-20 | 1457 |  | 7 day week with NGT | 154345 |
| 1459 | 37400.37600.39700.42100.43300.69200.527300 | Putty Primer coat | 6d | 2027-02-20 | 2027-02-26 | 1458 |  | 7 day week with NGT | 154355 |
| 1460 | 37400.37600.39700.42100.43300.69200.527400 | Painting First Coat | 12d | 2027-02-26 | 2027-03-10 | 1449, 1451, 1458, 1459 |  | 7 day week with NGT | 154365 |
| 1461 | 37400.37600.39700.42100.43300.69200.527500 | False ceiling works | 10d | 2027-03-24 | 2027-04-03 | 1445, 1460 |  | 7 day week with NGT | 154375 |
| 1462 | 37400.37600.39700.42100.43300.69300 | **Twenty Floor** | 114.75d | 2026-12-19 | 2027-04-13 |  | start no earlier than 2026-12-19 | 7 day week with NGT | 147785 |
| 1463 | 37400.37600.39700.42100.43300.69300.527600 | Blockwork | 5d | 2026-12-19 | 2026-12-24 | 1151FF+0.25d |  | 7 day week with NGT | 154385 |
| 1464 | 37400.37600.39700.42100.43300.69300.527700 | Internal Plumbing Works | 6d | 2026-12-24 | 2026-12-30 | 1463 |  | 7 day week with NGT | 154395 |
| 1465 | 37400.37600.39700.42100.43300.69300.527800 | Waterproofing Works | 5d | 2026-12-26 | 2026-12-31 | 1464SS+2d |  | 7 day week with NGT | 154405 |
| 1466 | 37400.37600.39700.42100.43300.69300.527900 | PCC | 3d | 2026-12-31 | 2027-01-03 | 1465, 1468SS |  | 7 day week with NGT | 154415 |
| 1467 | 37400.37600.39700.42100.43300.69300.528000 | Electrical Wiring works | 5d | 2026-12-26 | 2026-12-31 | 1465SS |  | 7 day week with NGT | 154425 |
| 1468 | 37400.37600.39700.42100.43300.69300.528100 | Internal Plaster Works | 5d | 2026-12-29 | 2027-01-03 | 1464FF+3d, 1467FF+3d |  | 7 day week with NGT | 154435 |
| 1469 | 37400.37600.39700.42100.43300.69300.528200 | Toilet Dado Works | 7d | 2027-01-03 | 2027-01-10 | 1464, 1465, 1467, 1468 |  | 7 day week with NGT | 154445 |
| 1470 | 37400.37600.39700.42100.43300.69300.528300 | Toilet Flooring Works | 5d | 2027-01-10 | 2027-01-15 | 1466, 1469 |  | 7 day week with NGT | 154455 |
| 1471 | 37400.37600.39700.42100.43300.69300.528400 | Living Dining Flooring | 8d | 2027-01-15 | 2027-01-23 | 1470 |  | 7 day week with NGT | 154465 |
| 1472 | 37400.37600.39700.42100.43300.69300.528500 | Temporary Door Fixing | 9d | 2026-12-24 | 2027-01-02 | 1463 |  | 7 day week with NGT | 154475 |
| 1473 | 37400.37600.39700.42100.43300.69300.528600 | Aluminium Door Widnow Fixing | 33d | 2027-01-23 | 2027-02-25 | 1471, 1472 |  | 7 day week with NGT | 154485 |
| 1474 | 37400.37600.39700.42100.43300.69300.528700 | Rehung Door Fixing | 8d | 2027-02-25 | 2027-03-05 | 1473 |  | 7 day week with NGT | 154495 |
| 1475 | 37400.37600.39700.42100.43300.69300.528800 | Putty Primer coat | 6d | 2027-03-05 | 2027-03-11 | 1474 |  | 7 day week with NGT | 154505 |
| 1476 | 37400.37600.39700.42100.43300.69300.528900 | Painting First Coat | 12d | 2027-03-11 | 2027-03-23 | 1465, 1467, 1474, 1475 |  | 7 day week with NGT | 154515 |
| 1477 | 37400.37600.39700.42100.43300.69300.529000 | False ceiling works | 10d | 2027-04-03 | 2027-04-13 | 1461, 1476 |  | 7 day week with NGT | 154525 |

| ID | WBS | Task | Duration | Start | Finish | Predecessors | Constraint | Calendar | Unique_Task_ID |
| --- | --- | --- | --- | --- | --- | --- | --- | --- | --- |
| 1478 | 37400.37600.39700.42100.43300.69400 | **Twentyone Floor** | 115.75d | 2026-12-28 | 2027-04-23 |  | start no earlier than 2026-12-28 | 7 day week with NGT | 147795 |
| 1479 | 37400.37600.39700.42100.43300.69400.529100 | Blockwork | 7d | 2026-12-28 | 2027-01-04 | 1152FF+0.25d |  | 7 day week with NGT | 154535 |
| 1480 | 37400.37600.39700.42100.43300.69400.529200 | Internal Plumbing Works | 6d | 2027-01-04 | 2027-01-10 | 1479 |  | 7 day week with NGT | 154545 |
| 1481 | 37400.37600.39700.42100.43300.69400.529300 | Waterproofing Works | 7d | 2027-01-06 | 2027-01-13 | 1480SS+2d |  | 7 day week with NGT | 154555 |
| 1482 | 37400.37600.39700.42100.43300.69400.529400 | PCC | 3d | 2027-01-13 | 2027-01-16 | 1481, 1484SS |  | 7 day week with NGT | 154565 |
| 1483 | 37400.37600.39700.42100.43300.69400.529500 | Electrical Wiring works | 5d | 2027-01-06 | 2027-01-11 | 1481SS |  | 7 day week with NGT | 154575 |
| 1484 | 37400.37600.39700.42100.43300.69400.529600 | Internal Plaster Works | 5d | 2027-01-13 | 2027-01-18 | 1480, 1481, 1483 |  | 7 day week with NGT | 154585 |
| 1485 | 37400.37600.39700.42100.43300.69400.529700 | Toilet Dado Works | 7d | 2027-01-18 | 2027-01-25 | 1480, 1481, 1483, 1484 |  | 7 day week with NGT | 154595 |
| 1486 | 37400.37600.39700.42100.43300.69400.529800 | Toilet Flooring Works | 5d | 2027-01-25 | 2027-01-30 | 1482, 1485 |  | 7 day week with NGT | 154605 |
| 1487 | 37400.37600.39700.42100.43300.69400.529900 | Living Dining Flooring | 8d | 2027-01-30 | 2027-02-07 | 1486 |  | 7 day week with NGT | 154615 |
| 1488 | 37400.37600.39700.42100.43300.69400.530000 | Temporary Door Fixing | 9d | 2027-01-04 | 2027-01-13 | 1479 |  | 7 day week with NGT | 154625 |
| 1489 | 37400.37600.39700.42100.43300.69400.530100 | Aluminium Door Widnow Fixing | 15d | 2027-02-07 | 2027-02-22 | 1487, 1488 |  | 7 day week with NGT | 154635 |
| 1490 | 37400.37600.39700.42100.43300.69400.530200 | Rehung Door Fixing | 8d | 2027-02-22 | 2027-03-02 | 1489 |  | 7 day week with NGT | 154645 |
| 1491 | 37400.37600.39700.42100.43300.69400.530300 | Putty Primer coat | 6d | 2027-03-02 | 2027-03-08 | 1490 |  | 7 day week with NGT | 154655 |
| 1492 | 37400.37600.39700.42100.43300.69400.530400 | Painting First Coat | 12d | 2027-03-08 | 2027-03-20 | 1481, 1483, 1490, 1491 |  | 7 day week with NGT | 154665 |
| 1493 | 37400.37600.39700.42100.43300.69400.530500 | False ceiling works | 10d | 2027-04-13 | 2027-04-23 | 1477, 1492 |  | 7 day week with NGT | 154675 |
| 1494 | 37400.37600.39700.42100.43300.69500 | **Twenty two Floor** | 102d | 2027-01-21 | 2027-05-03 |  | start no earlier than 2027-01-21 | 7 day week with NGT | 147805 |
| 1495 | 37400.37600.39700.42100.43300.69500.530600 | Blockwork | 3d | 2027-01-21 | 2027-01-24 | 1153 |  | 7 day week with NGT | 154685 |
| 1496 | 37400.37600.39700.42100.43300.69500.530700 | Internal Plumbing Works | 6d | 2027-01-24 | 2027-01-30 | 1495 |  | 7 day week with NGT | 154695 |
| 1497 | 37400.37600.39700.42100.43300.69500.530800 | Waterproofing Works | 7d | 2027-01-26 | 2027-02-02 | 1496SS+2d |  | 7 day week with NGT | 154705 |
| 1498 | 37400.37600.39700.42100.43300.69500.530900 | PCC | 3d | 2027-02-02 | 2027-02-05 | 1497, 1500SS |  | 7 day week with NGT | 154715 |
| 1499 | 37400.37600.39700.42100.43300.69500.531000 | Electrical Wiring works | 5d | 2027-01-26 | 2027-01-31 | 1497SS |  | 7 day week with NGT | 154725 |
| 1500 | 37400.37600.39700.42100.43300.69500.531100 | Internal Plaster Works | 5d | 2027-02-02 | 2027-02-07 | 1496, 1497, 1499 |  | 7 day week with NGT | 154735 |
| 1501 | 37400.37600.39700.42100.43300.69500.531200 | Toilet Dado Works | 7d | 2027-02-07 | 2027-02-14 | 1496, 1497, 1499, 1500 |  | 7 day week with NGT | 154745 |
| 1502 | 37400.37600.39700.42100.43300.69500.531300 | Toilet Flooring Works | 5d | 2027-02-14 | 2027-02-19 | 1498, 1501 |  | 7 day week with NGT | 154755 |
| 1503 | 37400.37600.39700.42100.43300.69500.531400 | Living Dining Flooring | 8d | 2027-02-19 | 2027-02-27 | 1502 |  | 7 day week with NGT | 154765 |
| 1504 | 37400.37600.39700.42100.43300.69500.531500 | Temporary Door Fixing | 9d | 2027-01-24 | 2027-02-02 | 1495 |  | 7 day week with NGT | 154775 |
| 1505 | 37400.37600.39700.42100.43300.69500.531600 | Aluminium Door Widnow Fixing | 15d | 2027-02-27 | 2027-03-14 | 1503, 1504 |  | 7 day week with NGT | 154785 |
| 1506 | 37400.37600.39700.42100.43300.69500.531700 | Rehung Door Fixing | 8d | 2027-03-14 | 2027-03-22 | 1505 |  | 7 day week with NGT | 154795 |
| 1507 | 37400.37600.39700.42100.43300.69500.531800 | Putty Primer coat | 6d | 2027-03-22 | 2027-03-28 | 1506 |  | 7 day week with NGT | 154805 |
| 1508 | 37400.37600.39700.42100.43300.69500.531900 | Painting First Coat | 12d | 2027-03-28 | 2027-04-09 | 1497, 1499, 1506, 1507 |  | 7 day week with NGT | 154815 |
| 1509 | 37400.37600.39700.42100.43300.69500.532000 | False ceiling works | 10d | 2027-04-23 | 2027-05-03 | 1493, 1508 |  | 7 day week with NGT | 154825 |

| ID | WBS | Task | Duration | Start | Finish | Predecessors | Constraint | Calendar | Unique_Task_ID |
| --- | --- | --- | --- | --- | --- | --- | --- | --- | --- |
| 1510 | 37400.37600.39700.42100.43300.69600 | **Twenty Three Floor** | 101d | 2027-02-01 | 2027-05-13 |  | start no earlier than 2027-02-01 | 7 day week with NGT | 147815 |
| 1511 | 37400.37600.39700.42100.43300.69600.532100 | Blockwork | 7d | 2027-02-01 | 2027-02-08 | 1154 |  | 7 day week with NGT | 154835 |
| 1512 | 37400.37600.39700.42100.43300.69600.532200 | Internal Plumbing Works | 6d | 2027-02-08 | 2027-02-14 | 1511 |  | 7 day week with NGT | 154845 |
| 1513 | 37400.37600.39700.42100.43300.69600.532300 | Waterproofing Works | 7d | 2027-02-10 | 2027-02-17 | 1512SS+2d |  | 7 day week with NGT | 154855 |
| 1514 | 37400.37600.39700.42100.43300.69600.532400 | PCC | 3d | 2027-02-17 | 2027-02-20 | 1513, 1516SS |  | 7 day week with NGT | 154865 |
| 1515 | 37400.37600.39700.42100.43300.69600.532500 | Electrical Wiring works | 5d | 2027-02-10 | 2027-02-15 | 1513SS |  | 7 day week with NGT | 154875 |
| 1516 | 37400.37600.39700.42100.43300.69600.532600 | Internal Plaster Works | 5d | 2027-02-17 | 2027-02-22 | 1512, 1513, 1515 |  | 7 day week with NGT | 154885 |
| 1517 | 37400.37600.39700.42100.43300.69600.532700 | Toilet Dado Works | 7d | 2027-02-22 | 2027-03-01 | 1512, 1513, 1515, 1516 |  | 7 day week with NGT | 154895 |
| 1518 | 37400.37600.39700.42100.43300.69600.532800 | Toilet Flooring Works | 5d | 2027-03-01 | 2027-03-06 | 1514, 1517 |  | 7 day week with NGT | 154905 |
| 1519 | 37400.37600.39700.42100.43300.69600.532900 | Living Dining Flooring | 8d | 2027-03-06 | 2027-03-14 | 1518 |  | 7 day week with NGT | 154915 |
| 1520 | 37400.37600.39700.42100.43300.69600.533000 | Temporary Door Fixing | 9d | 2027-02-08 | 2027-02-17 | 1511 |  | 7 day week with NGT | 154925 |
| 1521 | 37400.37600.39700.42100.43300.69600.533100 | Aluminium Door Widnow Fixing | 15d | 2027-03-14 | 2027-03-29 | 1519, 1520 |  | 7 day week with NGT | 154935 |
| 1522 | 37400.37600.39700.42100.43300.69600.533200 | Rehung Door Fixing | 8d | 2027-03-29 | 2027-04-06 | 1521 |  | 7 day week with NGT | 154945 |
| 1523 | 37400.37600.39700.42100.43300.69600.533300 | Putty Primer coat | 6d | 2027-04-06 | 2027-04-12 | 1522 |  | 7 day week with NGT | 154955 |
| 1524 | 37400.37600.39700.42100.43300.69600.533400 | Painting First Coat | 12d | 2027-04-12 | 2027-04-24 | 1513, 1515, 1522, 1523 |  | 7 day week with NGT | 154965 |
| 1525 | 37400.37600.39700.42100.43300.69600.533500 | False ceiling works | 10d | 2027-05-03 | 2027-05-13 | 1509, 1524 |  | 7 day week with NGT | 154975 |
| 1526 | 37400.37600.39700.42100.43300.69700 | **Twenty Four Floor** | 115d | 2027-02-12 | 2027-06-06 |  | start no earlier than 2027-02-12 | 7 day week with NGT | 147825 |
| 1527 | 37400.37600.39700.42100.43300.69700.533600 | Blockwork | 10d | 2027-02-12 | 2027-02-21 | 1155 |  | 7 day week with NGT | 154985 |
| 1528 | 37400.37600.39700.42100.43300.69700.533700 | Internal Plumbing Works | 6d | 2027-02-22 | 2027-02-27 | 1527 |  | 7 day week with NGT | 154995 |
| 1529 | 37400.37600.39700.42100.43300.69700.533800 | Waterproofing Works | 10d | 2027-02-24 | 2027-03-05 | 1528SS+2d |  | 7 day week with NGT | 155005 |
| 1530 | 37400.37600.39700.42100.43300.69700.533900 | PCC | 8d | 2027-03-08 | 2027-03-15 | 1529, 1532SS |  | 7 day week with NGT | 155015 |
| 1531 | 37400.37600.39700.42100.43300.69700.534000 | Electrical Wiring works | 12d | 2027-02-24 | 2027-03-07 | 1529SS |  | 7 day week with NGT | 155025 |
| 1532 | 37400.37600.39700.42100.43300.69700.534100 | Internal Plaster Works | 9d | 2027-03-08 | 2027-03-16 | 1528, 1529, 1531 |  | 7 day week with NGT | 155035 |
| 1533 | 37400.37600.39700.42100.43300.69700.534200 | Toilet Dado Works | 9d | 2027-03-17 | 2027-03-25 | 1528, 1529, 1531, 1532 |  | 7 day week with NGT | 155045 |
| 1534 | 37400.37600.39700.42100.43300.69700.534300 | Toilet Flooring Works | 7d | 2027-03-26 | 2027-04-01 | 1530, 1533 |  | 7 day week with NGT | 155055 |
| 1535 | 37400.37600.39700.42100.43300.69700.534400 | Living Dining Flooring | 15d | 2027-04-02 | 2027-04-16 | 1534 |  | 7 day week with NGT | 155065 |
| 1536 | 37400.37600.39700.42100.43300.69700.534500 | Temporary Door Fixing | 9d | 2027-02-22 | 2027-03-02 | 1527 |  | 7 day week with NGT | 155075 |
| 1537 | 37400.37600.39700.42100.43300.69700.534600 | Aluminium Door Widnow Fixing | 15d | 2027-04-17 | 2027-05-01 | 1535, 1536 |  | 7 day week with NGT | 155085 |
| 1538 | 37400.37600.39700.42100.43300.69700.534700 | Rehung Door Fixing | 8d | 2027-05-02 | 2027-05-09 | 1537 |  | 7 day week with NGT | 155095 |
| 1539 | 37400.37600.39700.42100.43300.69700.534800 | Putty Primer coat | 6d | 2027-05-10 | 2027-05-15 | 1538 |  | 7 day week with NGT | 155105 |
| 1540 | 37400.37600.39700.42100.43300.69700.534900 | Painting First Coat | 12d | 2027-05-16 | 2027-05-27 | 1529, 1531, 1538, 1539 |  | 7 day week with NGT | 155115 |
| 1541 | 37400.37600.39700.42100.43300.69700.535000 | False ceiling works | 10d | 2027-05-28 | 2027-06-06 | 1525, 1540 |  | 7 day week with NGT | 155125 |

| ID | WBS | Task | Duration | Start | Finish | Predecessors | Constraint | Calendar | Unique_Task_ID |
| --- | --- | --- | --- | --- | --- | --- | --- | --- | --- |
| 1542 | 37400.37600.39700.42100.43300.69800 | **Twenty Five Floors** | 115d | 2027-02-23 | 2027-06-17 |  | start no earlier than 2027-02-23 | 7 day week with NGT | 147835 |
| 1543 | 37400.37600.39700.42100.43300.69800.535100 | Blockwork | 10d | 2027-02-23 | 2027-03-04 | 1156 |  | 7 day week with NGT | 155135 |
| 1544 | 37400.37600.39700.42100.43300.69800.535200 | Internal Plumbing Works | 6d | 2027-03-05 | 2027-03-10 | 1543 |  | 7 day week with NGT | 155145 |
| 1545 | 37400.37600.39700.42100.43300.69800.535300 | Waterproofing Works | 10d | 2027-03-07 | 2027-03-16 | 1544SS+2d |  | 7 day week with NGT | 155155 |
| 1546 | 37400.37600.39700.42100.43300.69800.535400 | PCC | 8d | 2027-03-19 | 2027-03-26 | 1545, 1548SS |  | 7 day week with NGT | 155165 |
| 1547 | 37400.37600.39700.42100.43300.69800.535500 | Electrical Wiring works | 12d | 2027-03-07 | 2027-03-18 | 1545SS |  | 7 day week with NGT | 155175 |
| 1548 | 37400.37600.39700.42100.43300.69800.535600 | Internal Plaster Works | 9d | 2027-03-19 | 2027-03-27 | 1544, 1545, 1547 |  | 7 day week with NGT | 155185 |
| 1549 | 37400.37600.39700.42100.43300.69800.535700 | Toilet Dado Works | 9d | 2027-03-28 | 2027-04-05 | 1544, 1545, 1547, 1548 |  | 7 day week with NGT | 155195 |
| 1550 | 37400.37600.39700.42100.43300.69800.535800 | Toilet Flooring Works | 7d | 2027-04-06 | 2027-04-12 | 1546, 1549 |  | 7 day week with NGT | 155205 |
| 1551 | 37400.37600.39700.42100.43300.69800.535900 | Living Dining Flooring | 15d | 2027-04-13 | 2027-04-27 | 1550 |  | 7 day week with NGT | 155215 |
| 1552 | 37400.37600.39700.42100.43300.69800.536000 | Temporary Door Fixing | 9d | 2027-03-05 | 2027-03-13 | 1543 |  | 7 day week with NGT | 155225 |
| 1553 | 37400.37600.39700.42100.43300.69800.536100 | Aluminium Door Widnow Fixing | 15d | 2027-04-28 | 2027-05-12 | 1551, 1552 |  | 7 day week with NGT | 155235 |
| 1554 | 37400.37600.39700.42100.43300.69800.536200 | Rehung Door Fixing | 8d | 2027-05-13 | 2027-05-20 | 1553 |  | 7 day week with NGT | 155245 |
| 1555 | 37400.37600.39700.42100.43300.69800.536300 | Putty Primer coat | 6d | 2027-05-21 | 2027-05-26 | 1554 |  | 7 day week with NGT | 155255 |
| 1556 | 37400.37600.39700.42100.43300.69800.536400 | Painting First Coat | 12d | 2027-05-27 | 2027-06-07 | 1545, 1547, 1554, 1555 |  | 7 day week with NGT | 155265 |
| 1557 | 37400.37600.39700.42100.43300.69800.536500 | False ceiling works | 10d | 2027-06-08 | 2027-06-17 | 1541, 1556 |  | 7 day week with NGT | 155275 |
| 1558 | 37400.37600.39700.42100.43300.69900 | **Twenty Six Floor** | 115d | 2027-03-06 | 2027-06-28 |  | start no earlier than 2027-03-06 | 7 day week with NGT | 147845 |
| 1559 | 37400.37600.39700.42100.43300.69900.536600 | Blockwork | 10d | 2027-03-06 | 2027-03-15 | 1157 |  | 7 day week with NGT | 155285 |
| 1560 | 37400.37600.39700.42100.43300.69900.536700 | Internal Plumbing Works | 6d | 2027-03-16 | 2027-03-21 | 1559 |  | 7 day week with NGT | 155295 |
| 1561 | 37400.37600.39700.42100.43300.69900.536800 | Waterproofing Works | 10d | 2027-03-18 | 2027-03-27 | 1560SS+2d |  | 7 day week with NGT | 155305 |
| 1562 | 37400.37600.39700.42100.43300.69900.536900 | PCC | 8d | 2027-03-30 | 2027-04-06 | 1561, 1564SS |  | 7 day week with NGT | 155315 |
| 1563 | 37400.37600.39700.42100.43300.69900.537000 | Electrical Wiring works | 12d | 2027-03-18 | 2027-03-29 | 1561SS |  | 7 day week with NGT | 155325 |
| 1564 | 37400.37600.39700.42100.43300.69900.537100 | Internal Plaster Works | 9d | 2027-03-30 | 2027-04-07 | 1560, 1561, 1563 |  | 7 day week with NGT | 155335 |
| 1565 | 37400.37600.39700.42100.43300.69900.537200 | Toilet Dado Works | 9d | 2027-04-08 | 2027-04-16 | 1560, 1561, 1563, 1564 |  | 7 day week with NGT | 155345 |
| 1566 | 37400.37600.39700.42100.43300.69900.537300 | Toilet Flooring Works | 7d | 2027-04-17 | 2027-04-23 | 1562, 1565 |  | 7 day week with NGT | 155355 |
| 1567 | 37400.37600.39700.42100.43300.69900.537400 | Living Dining Flooring | 15d | 2027-04-24 | 2027-05-08 | 1566 |  | 7 day week with NGT | 155365 |
| 1568 | 37400.37600.39700.42100.43300.69900.537500 | Temporary Door Fixing | 9d | 2027-03-16 | 2027-03-24 | 1559 |  | 7 day week with NGT | 155375 |
| 1569 | 37400.37600.39700.42100.43300.69900.537600 | Aluminium Door Widnow Fixing | 15d | 2027-05-09 | 2027-05-23 | 1567, 1568 |  | 7 day week with NGT | 155385 |
| 1570 | 37400.37600.39700.42100.43300.69900.537700 | Rehung Door Fixing | 8d | 2027-05-24 | 2027-05-31 | 1569 |  | 7 day week with NGT | 155395 |
| 1571 | 37400.37600.39700.42100.43300.69900.537800 | Putty Primer coat | 6d | 2027-06-01 | 2027-06-06 | 1570 |  | 7 day week with NGT | 155405 |
| 1572 | 37400.37600.39700.42100.43300.69900.537900 | Painting First Coat | 12d | 2027-06-07 | 2027-06-18 | 1561, 1563, 1570, 1571 |  | 7 day week with NGT | 155415 |
| 1573 | 37400.37600.39700.42100.43300.69900.538000 | False ceiling works | 10d | 2027-06-19 | 2027-06-28 | 1557, 1572 |  | 7 day week with NGT | 155425 |

| ID | WBS | Task | Duration | Start | Finish | Predecessors | Constraint | Calendar | Unique_Task_ID |
| --- | --- | --- | --- | --- | --- | --- | --- | --- | --- |
| 1574 | 37400.37600.39700.42100.43300.70000 | **Twenty Seven Floors** | 115d | 2027-03-19 | 2027-07-11 |  | start no earlier than 2027-03-19 | 7 day week with NGT | 147855 |
| 1575 | 37400.37600.39700.42100.43300.70000.538100 | Blockwork | 10d | 2027-03-19 | 2027-03-28 | 1158 |  | 7 day week with NGT | 155435 |
| 1576 | 37400.37600.39700.42100.43300.70000.538200 | Internal Plumbing Works | 6d | 2027-03-29 | 2027-04-03 | 1575 |  | 7 day week with NGT | 155445 |
| 1577 | 37400.37600.39700.42100.43300.70000.538300 | Waterproofing Works | 10d | 2027-03-31 | 2027-04-09 | 1576SS+2d |  | 7 day week with NGT | 155455 |
| 1578 | 37400.37600.39700.42100.43300.70000.538400 | PCC | 8d | 2027-04-12 | 2027-04-19 | 1577, 1580SS |  | 7 day week with NGT | 155465 |
| 1579 | 37400.37600.39700.42100.43300.70000.538500 | Electrical Wiring works | 12d | 2027-03-31 | 2027-04-11 | 1577SS |  | 7 day week with NGT | 155475 |
| 1580 | 37400.37600.39700.42100.43300.70000.538600 | Internal Plaster Works | 9d | 2027-04-12 | 2027-04-20 | 1576, 1577, 1579 |  | 7 day week with NGT | 155485 |
| 1581 | 37400.37600.39700.42100.43300.70000.538700 | Toilet Dado Works | 9d | 2027-04-21 | 2027-04-29 | 1576, 1577, 1579, 1580 |  | 7 day week with NGT | 155495 |
| 1582 | 37400.37600.39700.42100.43300.70000.538800 | Toilet Flooring Works | 7d | 2027-04-30 | 2027-05-06 | 1578, 1581 |  | 7 day week with NGT | 155505 |
| 1583 | 37400.37600.39700.42100.43300.70000.538900 | Living Dining Flooring | 15d | 2027-05-07 | 2027-05-21 | 1582 |  | 7 day week with NGT | 155515 |
| 1584 | 37400.37600.39700.42100.43300.70000.539000 | Temporary Door Fixing | 9d | 2027-03-29 | 2027-04-06 | 1575 |  | 7 day week with NGT | 155525 |
| 1585 | 37400.37600.39700.42100.43300.70000.539100 | Aluminium Door Widnow Fixing | 15d | 2027-05-22 | 2027-06-05 | 1583, 1584 |  | 7 day week with NGT | 155535 |
| 1586 | 37400.37600.39700.42100.43300.70000.539200 | Rehung Door Fixing | 8d | 2027-06-06 | 2027-06-13 | 1585 |  | 7 day week with NGT | 155545 |
| 1587 | 37400.37600.39700.42100.43300.70000.539300 | Putty Primer coat | 6d | 2027-06-14 | 2027-06-19 | 1586 |  | 7 day week with NGT | 155555 |
| 1588 | 37400.37600.39700.42100.43300.70000.539400 | Painting First Coat | 12d | 2027-06-20 | 2027-07-01 | 1577, 1579, 1586, 1587 |  | 7 day week with NGT | 155565 |
| 1589 | 37400.37600.39700.42100.43300.70000.539500 | False ceiling works | 10d | 2027-07-02 | 2027-07-11 | 1573, 1588 |  | 7 day week with NGT | 155575 |
| 1590 | 37400.37600.39700.42100.43300.70100 | **Twenty Eight Floor** | 115d | 2027-04-04 | 2027-07-27 |  | start no earlier than 2027-04-04 | 7 day week with NGT | 147865 |
| 1591 | 37400.37600.39700.42100.43300.70100.539600 | Blockwork | 10d | 2027-04-04 | 2027-04-13 | 1159 |  | 7 day week with NGT | 155585 |
| 1592 | 37400.37600.39700.42100.43300.70100.539700 | Internal Plumbing Works | 6d | 2027-04-14 | 2027-04-19 | 1591 |  | 7 day week with NGT | 155595 |
| 1593 | 37400.37600.39700.42100.43300.70100.539800 | Waterproofing Works | 10d | 2027-04-16 | 2027-04-25 | 1592SS+2d |  | 7 day week with NGT | 155605 |
| 1594 | 37400.37600.39700.42100.43300.70100.539900 | PCC | 8d | 2027-04-28 | 2027-05-05 | 1593, 1596SS |  | 7 day week with NGT | 155615 |
| 1595 | 37400.37600.39700.42100.43300.70100.540000 | Electrical Wiring works | 12d | 2027-04-16 | 2027-04-27 | 1593SS |  | 7 day week with NGT | 155625 |
| 1596 | 37400.37600.39700.42100.43300.70100.540100 | Internal Plaster Works | 9d | 2027-04-28 | 2027-05-06 | 1592, 1593, 1595 |  | 7 day week with NGT | 155635 |
| 1597 | 37400.37600.39700.42100.43300.70100.540200 | Toilet Dado Works | 9d | 2027-05-07 | 2027-05-15 | 1592, 1593, 1595, 1596 |  | 7 day week with NGT | 155645 |
| 1598 | 37400.37600.39700.42100.43300.70100.540300 | Toilet Flooring Works | 7d | 2027-05-16 | 2027-05-22 | 1594, 1597 |  | 7 day week with NGT | 155655 |
| 1599 | 37400.37600.39700.42100.43300.70100.540400 | Living Dining Flooring | 15d | 2027-05-23 | 2027-06-06 | 1598 |  | 7 day week with NGT | 155665 |
| 1600 | 37400.37600.39700.42100.43300.70100.540500 | Temporary Door Fixing | 9d | 2027-04-14 | 2027-04-22 | 1591 |  | 7 day week with NGT | 155675 |
| 1601 | 37400.37600.39700.42100.43300.70100.540600 | Aluminium Door Widnow Fixing | 15d | 2027-06-07 | 2027-06-21 | 1599, 1600 |  | 7 day week with NGT | 155685 |
| 1602 | 37400.37600.39700.42100.43300.70100.540700 | Rehung Door Fixing | 8d | 2027-06-22 | 2027-06-29 | 1601 |  | 7 day week with NGT | 155695 |
| 1603 | 37400.37600.39700.42100.43300.70100.540800 | Putty Primer coat | 6d | 2027-06-30 | 2027-07-05 | 1602 |  | 7 day week with NGT | 155705 |
| 1604 | 37400.37600.39700.42100.43300.70100.540900 | Painting First Coat | 12d | 2027-07-06 | 2027-07-17 | 1593, 1595, 1602, 1603 |  | 7 day week with NGT | 155715 |
| 1605 | 37400.37600.39700.42100.43300.70100.541000 | False ceiling works | 10d | 2027-07-18 | 2027-07-27 | 1589, 1604 |  | 7 day week with NGT | 155725 |

| ID | WBS | Task | Duration | Start | Finish | Predecessors | Constraint | Calendar | Unique_Task_ID |
| --- | --- | --- | --- | --- | --- | --- | --- | --- | --- |
| 1606 | 37400.37600.39700.42100.43300.70200 | **Twenty Nine Floors** | 121d | 2027-04-08 | 2027-08-06 |  | start no earlier than 2027-04-08 | 7 day week with NGT | 147875 |
| 1607 | 37400.37600.39700.42100.43300.70200.541100 | Blockwork | 15d | 2027-04-08 | 2027-04-22 | 1160 |  | 7 day week with NGT | 155735 |
| 1608 | 37400.37600.39700.42100.43300.70200.541200 | Internal Plumbing Works | 6d | 2027-04-23 | 2027-04-28 | 1607 |  | 7 day week with NGT | 155745 |
| 1609 | 37400.37600.39700.42100.43300.70200.541300 | Waterproofing Works | 10d | 2027-04-25 | 2027-05-04 | 1608SS+2d |  | 7 day week with NGT | 155755 |
| 1610 | 37400.37600.39700.42100.43300.70200.541400 | PCC | 8d | 2027-05-07 | 2027-05-14 | 1609, 1612SS |  | 7 day week with NGT | 155765 |
| 1611 | 37400.37600.39700.42100.43300.70200.541500 | Electrical Wiring works | 12d | 2027-04-25 | 2027-05-06 | 1609SS |  | 7 day week with NGT | 155775 |
| 1612 | 37400.37600.39700.42100.43300.70200.541600 | Internal Plaster Works | 9d | 2027-05-07 | 2027-05-15 | 1608, 1609, 1611 |  | 7 day week with NGT | 155785 |
| 1613 | 37400.37600.39700.42100.43300.70200.541700 | Toilet Dado Works | 9d | 2027-05-16 | 2027-05-24 | 1608, 1609, 1611, 1612 |  | 7 day week with NGT | 155795 |
| 1614 | 37400.37600.39700.42100.43300.70200.541800 | Toilet Flooring Works | 7d | 2027-05-25 | 2027-05-31 | 1610, 1613 |  | 7 day week with NGT | 155805 |
| 1615 | 37400.37600.39700.42100.43300.70200.541900 | Living Dining Flooring | 15d | 2027-06-01 | 2027-06-15 | 1614 |  | 7 day week with NGT | 155815 |
| 1616 | 37400.37600.39700.42100.43300.70200.542000 | Temporary Door Fixing | 9d | 2027-04-23 | 2027-05-01 | 1607 |  | 7 day week with NGT | 155825 |
| 1617 | 37400.37600.39700.42100.43300.70200.542100 | Aluminium Door Widnow Fixing | 15d | 2027-06-16 | 2027-06-30 | 1615, 1616 |  | 7 day week with NGT | 155835 |
| 1618 | 37400.37600.39700.42100.43300.70200.542200 | Rehung Door Fixing | 8d | 2027-07-01 | 2027-07-08 | 1617 |  | 7 day week with NGT | 155845 |
| 1619 | 37400.37600.39700.42100.43300.70200.542300 | Putty Primer coat | 6d | 2027-07-09 | 2027-07-14 | 1618 |  | 7 day week with NGT | 155855 |
| 1620 | 37400.37600.39700.42100.43300.70200.542400 | Painting First Coat | 12d | 2027-07-15 | 2027-07-26 | 1609, 1611, 1618, 1619 |  | 7 day week with NGT | 155865 |
| 1621 | 37400.37600.39700.42100.43300.70200.542500 | False ceiling works | 10d | 2027-07-28 | 2027-08-06 | 1605, 1620 |  | 7 day week with NGT | 155875 |
| 1622 | 37400.37600.39700.42100.43300.70300 | **Thirty Floor** | 127d | 2027-04-12 | 2027-08-16 |  | start no earlier than 2027-04-12 | 7 day week with NGT | 147885 |
| 1623 | 37400.37600.39700.42100.43300.70300.542600 | Blockwork | 15d | 2027-04-12 | 2027-04-26 | 1161 |  | 7 day week with NGT | 155885 |
| 1624 | 37400.37600.39700.42100.43300.70300.542700 | Internal Plumbing Works | 6d | 2027-04-27 | 2027-05-02 | 1623 |  | 7 day week with NGT | 155895 |
| 1625 | 37400.37600.39700.42100.43300.70300.542800 | Waterproofing Works | 10d | 2027-04-29 | 2027-05-08 | 1624SS+2d |  | 7 day week with NGT | 155905 |
| 1626 | 37400.37600.39700.42100.43300.70300.542900 | PCC | 8d | 2027-05-11 | 2027-05-18 | 1625, 1628SS |  | 7 day week with NGT | 155915 |
| 1627 | 37400.37600.39700.42100.43300.70300.543000 | Electrical Wiring works | 12d | 2027-04-29 | 2027-05-10 | 1625SS |  | 7 day week with NGT | 155925 |
| 1628 | 37400.37600.39700.42100.43300.70300.543100 | Internal Plaster Works | 9d | 2027-05-11 | 2027-05-19 | 1624, 1625, 1627 |  | 7 day week with NGT | 155935 |
| 1629 | 37400.37600.39700.42100.43300.70300.543200 | Toilet Dado Works | 9d | 2027-05-20 | 2027-05-28 | 1624, 1625, 1627, 1628 |  | 7 day week with NGT | 155945 |
| 1630 | 37400.37600.39700.42100.43300.70300.543300 | Toilet Flooring Works | 7d | 2027-05-29 | 2027-06-04 | 1626, 1629 |  | 7 day week with NGT | 155955 |
| 1631 | 37400.37600.39700.42100.43300.70300.543400 | Living Dining Flooring | 15d | 2027-06-05 | 2027-06-19 | 1630 |  | 7 day week with NGT | 155965 |
| 1632 | 37400.37600.39700.42100.43300.70300.543500 | Temporary Door Fixing | 9d | 2027-04-27 | 2027-05-05 | 1623 |  | 7 day week with NGT | 155975 |
| 1633 | 37400.37600.39700.42100.43300.70300.543600 | Aluminium Door Widnow Fixing | 15d | 2027-06-20 | 2027-07-04 | 1631, 1632 |  | 7 day week with NGT | 155985 |
| 1634 | 37400.37600.39700.42100.43300.70300.543700 | Rehung Door Fixing | 8d | 2027-07-05 | 2027-07-12 | 1633 |  | 7 day week with NGT | 155995 |
| 1635 | 37400.37600.39700.42100.43300.70300.543800 | Putty Primer coat | 6d | 2027-07-13 | 2027-07-18 | 1634 |  | 7 day week with NGT | 156005 |
| 1636 | 37400.37600.39700.42100.43300.70300.543900 | Painting First Coat | 12d | 2027-07-19 | 2027-07-30 | 1625, 1627, 1634, 1635 |  | 7 day week with NGT | 156015 |
| 1637 | 37400.37600.39700.42100.43300.70300.544000 | False ceiling works | 10d | 2027-08-07 | 2027-08-16 | 1621, 1636 |  | 7 day week with NGT | 156025 |

| ID | WBS | Task | Duration | Start | Finish | Predecessors | Constraint | Calendar | Unique_Task_ID |
| --- | --- | --- | --- | --- | --- | --- | --- | --- | --- |
| 1638 | 37400.37600.39700.42100.43300.70400 | **Thirty one Floor** | 122d | 2027-04-27 | 2027-08-26 |  | start no earlier than 2027-04-27 | 7 day week with NGT | 147895 |
| 1639 | 37400.37600.39700.42100.43300.70400.544100 | Blockwork | 15d | 2027-04-27 | 2027-05-11 | 1623 |  | 7 day week with NGT | 156035 |
| 1640 | 37400.37600.39700.42100.43300.70400.544200 | Internal Plumbing Works | 6d | 2027-05-12 | 2027-05-17 | 1639 |  | 7 day week with NGT | 156045 |
| 1641 | 37400.37600.39700.42100.43300.70400.544300 | Waterproofing Works | 10d | 2027-05-14 | 2027-05-23 | 1640SS+2d |  | 7 day week with NGT | 156055 |
| 1642 | 37400.37600.39700.42100.43300.70400.544400 | PCC | 8d | 2027-05-26 | 2027-06-02 | 1641, 1644SS |  | 7 day week with NGT | 156065 |
| 1643 | 37400.37600.39700.42100.43300.70400.544500 | Electrical Wiring works | 12d | 2027-05-14 | 2027-05-25 | 1641SS |  | 7 day week with NGT | 156075 |
| 1644 | 37400.37600.39700.42100.43300.70400.544600 | Internal Plaster Works | 9d | 2027-05-26 | 2027-06-03 | 1640, 1641, 1643 |  | 7 day week with NGT | 156085 |
| 1645 | 37400.37600.39700.42100.43300.70400.544700 | Toilet Dado Works | 9d | 2027-06-04 | 2027-06-12 | 1640, 1641, 1643, 1644 |  | 7 day week with NGT | 156095 |
| 1646 | 37400.37600.39700.42100.43300.70400.544800 | Toilet Flooring Works | 7d | 2027-06-13 | 2027-06-19 | 1642, 1645 |  | 7 day week with NGT | 156105 |
| 1647 | 37400.37600.39700.42100.43300.70400.544900 | Living Dining Flooring | 15d | 2027-06-20 | 2027-07-04 | 1646 |  | 7 day week with NGT | 156115 |
| 1648 | 37400.37600.39700.42100.43300.70400.545000 | Temporary Door Fixing | 9d | 2027-05-12 | 2027-05-20 | 1639 |  | 7 day week with NGT | 156125 |
| 1649 | 37400.37600.39700.42100.43300.70400.545100 | Aluminium Door Widnow Fixing | 15d | 2027-07-05 | 2027-07-19 | 1647, 1648 |  | 7 day week with NGT | 156135 |
| 1650 | 37400.37600.39700.42100.43300.70400.545200 | Rehung Door Fixing | 8d | 2027-07-20 | 2027-07-27 | 1649 |  | 7 day week with NGT | 156145 |
| 1651 | 37400.37600.39700.42100.43300.70400.545300 | Putty Primer coat | 6d | 2027-07-28 | 2027-08-02 | 1650 |  | 7 day week with NGT | 156155 |
| 1652 | 37400.37600.39700.42100.43300.70400.545400 | Painting First Coat | 12d | 2027-08-03 | 2027-08-14 | 1641, 1643, 1650, 1651 |  | 7 day week with NGT | 156165 |
| 1653 | 37400.37600.39700.42100.43300.70400.545500 | False ceiling works | 10d | 2027-08-17 | 2027-08-26 | 1637, 1652 |  | 7 day week with NGT | 156175 |
| 1654 | 37400.37600.39700.42100.43300.70500 | **Thirty two Floor** | 149d | 2027-05-12 | 2027-10-07 |  | start no earlier than 2027-05-12 | 7 day week with NGT | 147905 |
| 1655 | 37400.37600.39700.42100.43300.70500.545600 | Blockwork | 10d | 2027-05-12 | 2027-05-21 | 1639 |  | 7 day week with NGT | 156185 |
| 1656 | 37400.37600.39700.42100.43300.70500.545700 | Internal Plumbing Works | 15d | 2027-05-22 | 2027-06-05 | 1655 |  | 7 day week with NGT | 156195 |
| 1657 | 37400.37600.39700.42100.43300.70500.545800 | Waterproofing Works | 15d | 2027-05-24 | 2027-06-07 | 1656SS+2d |  | 7 day week with NGT | 156205 |
| 1658 | 37400.37600.39700.42100.43300.70500.545900 | PCC | 12d | 2027-06-08 | 2027-06-19 | 1657, 1660SS |  | 7 day week with NGT | 156215 |
| 1659 | 37400.37600.39700.42100.43300.70500.546000 | Electrical Wiring works | 15d | 2027-05-24 | 2027-06-07 | 1657SS |  | 7 day week with NGT | 156225 |
| 1660 | 37400.37600.39700.42100.43300.70500.546100 | Internal Plaster Works | 7d | 2027-06-08 | 2027-06-14 | 1656, 1657, 1659 |  | 7 day week with NGT | 156235 |
| 1661 | 37400.37600.39700.42100.43300.70500.546200 | Toilet Dado Works | 20d | 2027-06-15 | 2027-07-04 | 1656, 1657, 1659, 1660 |  | 7 day week with NGT | 156245 |
| 1662 | 37400.37600.39700.42100.43300.70500.546300 | Toilet Flooring Works | 15d | 2027-07-05 | 2027-07-19 | 1658, 1661 |  | 7 day week with NGT | 156255 |
| 1663 | 37400.37600.39700.42100.43300.70500.546400 | Living Dining Flooring | 29d | 2027-07-20 | 2027-08-17 | 1662 |  | 7 day week with NGT | 156265 |
| 1664 | 37400.37600.39700.42100.43300.70500.546500 | Temporary Door Fixing | 9d | 2027-05-22 | 2027-05-30 | 1655 |  | 7 day week with NGT | 156275 |
| 1665 | 37400.37600.39700.42100.43300.70500.546600 | Aluminium Door Widnow Fixing | 15d | 2027-08-18 | 2027-09-01 | 1663, 1664 |  | 7 day week with NGT | 156285 |
| 1666 | 37400.37600.39700.42100.43300.70500.546700 | Rehung Door Fixing | 8d | 2027-09-02 | 2027-09-09 | 1665 |  | 7 day week with NGT | 156295 |
| 1667 | 37400.37600.39700.42100.43300.70500.546800 | Putty Primer coat | 6d | 2027-09-10 | 2027-09-15 | 1666 |  | 7 day week with NGT | 156305 |
| 1668 | 37400.37600.39700.42100.43300.70500.546900 | Painting First Coat | 12d | 2027-09-16 | 2027-09-27 | 1657, 1659, 1666, 1667 |  | 7 day week with NGT | 156315 |
| 1669 | 37400.37600.39700.42100.43300.70500.547000 | False ceiling works | 10d | 2027-09-28 | 2027-10-07 | 1653, 1668 |  | 7 day week with NGT | 156325 |

| ID | WBS | Task | Duration | Start | Finish | Predecessors | Constraint | Calendar | Unique_Task_ID |
| --- | --- | --- | --- | --- | --- | --- | --- | --- | --- |
| 1670 | 37400.37600.39700.42100.223500 | **Terrace Finishing** | 80d | 2027-04-05 | 2027-06-23 |  | start no earlier than 2027-04-05 | 7 day week with NGT | 148435 |
| 1671 | 37400.37600.39700.42100.223500.336000 | Terrace Waterproofing | 40d | 2027-04-05 | 2027-05-14 | 1128 |  | 7 day week with NGT | 148925 |
| 1672 | 37400.37600.39700.42100.223500.336100 | Terrace Finishing | 40d | 2027-05-15 | 2027-06-23 | 1671 |  | 7 day week with NGT | 148935 |
| 1673 | 37400.37600.39700.42100.122600 | **Common Area Finishing** | 288d | 2027-04-05 | 2028-03-02 |  | start no earlier than 2027-04-05 | 7 day week with NGT | 147945 |
| 1674 | 37400.37600.39700.42100.122600.336200 | Blockwork | 40d | 2027-04-05 | 2027-05-14 | 1128 |  | 7 day week with NGT | 148945 |
| 1675 | 37400.37600.39700.42100.122600.336300 | Internal Plaster | 120d | 2027-04-25 | 2027-08-22 | 1674SS+20d |  | 7 day week with NGT | 148955 |
| 1676 | 37400.37600.39700.42100.122600.336400 | Staircase railing fixing | 150d | 2027-05-15 | 2027-10-11 | 1675SS+20d |  | 7 day week with NGT | 148965 |
| 1677 | 37400.37600.39700.42100.122600.336500 | Main Staircase flooring | 150d | 2027-07-24 | 2028-02-03 | 1676SS+70d |  | 7 day week with NGT | 148975 |
| 1678 | 37400.37600.39700.42100.122600.336600 | Fire Staircase railing | 98d | 2027-10-12 | 2028-03-02 | 1677FS-70d |  | 7 day week with NGT | 148985 |
| 1679 | 37400.37600.39700.42100.122600.336700 | Fire Door Work | 60d | 2027-08-23 | 2027-10-21 | 1677SS+30d |  | 7 day week with NGT | 148995 |
| 1680 | 37400.37600.39700.42100.122600.336800 | Electrical wiring work | 120d | 2027-04-25 | 2027-08-22 | 1674SS+20d |  | 7 day week with NGT | 149005 |
| 1681 | 37400.37600.39700.42100.122600.336900 | Lobby Flooring | 150d | 2027-05-25 | 2027-10-21 | 1680SS+30d |  | 7 day week with NGT | 149015 |
| 1682 | 37400.37600.39700.42100.122600.337000 | Ceiling & wall putty-primer | 110d | 2027-05-25 | 2027-09-11 | 1675SS+30d |  | 7 day week with NGT | 149025 |
| 1683 | 37400.37600.39700.42100.122600.337100 | Ceiling and wall painting | 100d | 2027-06-04 | 2027-09-11 | 1675SS+40d |  | 7 day week with NGT | 149035 |
| 1684 | 37400.37600.39700.42100.122600.337200 | Light fixture supply & installation | 45d | 2027-08-03 | 2027-09-16 | 1683SS+60d |  | 7 day week with NGT | 149045 |
| 1685 | 37400.37600.39700.42100.50200 | **Glass Railing Fixing** | 62d | 2027-09-21 | 2028-01-05 |  | start no earlier than 2027-09-21 | 7 day week with NGT | 147595 |
| 1686 | 37400.37600.39700.42100.50200.337300 | 2nd Floor | 2d | 2027-09-21 | 2027-09-22 | 1751 |  | 7 day week with NGT | 149055 |
| 1687 | 37400.37600.39700.42100.50200.337400 | 3rd Floor | 2d | 2027-09-23 | 2027-09-24 | 1686 |  | 7 day week with NGT | 149065 |
| 1688 | 37400.37600.39700.42100.50200.337500 | 4th Floor | 2d | 2027-09-25 | 2027-09-26 | 1687 |  | 7 day week with NGT | 149075 |
| 1689 | 37400.37600.39700.42100.50200.337600 | 5th Floor | 2d | 2027-09-27 | 2027-09-28 | 1688 |  | 7 day week with NGT | 149085 |
| 1690 | 37400.37600.39700.42100.50200.337700 | 6th Floor | 2d | 2027-09-29 | 2027-09-30 | 1689 |  | 7 day week with NGT | 149095 |
| 1691 | 37400.37600.39700.42100.50200.337800 | 7th Floor | 2d | 2027-10-01 | 2027-10-02 | 1690 |  | 7 day week with NGT | 149105 |
| 1692 | 37400.37600.39700.42100.50200.337900 | 8th Floor | 2d | 2027-10-03 | 2027-10-04 | 1691 |  | 7 day week with NGT | 149115 |
| 1693 | 37400.37600.39700.42100.50200.338000 | 9th Floor | 2d | 2027-10-05 | 2027-10-06 | 1692 |  | 7 day week with NGT | 149125 |
| 1694 | 37400.37600.39700.42100.50200.338100 | 10th Floor | 2d | 2027-10-07 | 2027-10-08 | 1693 |  | 7 day week with NGT | 149135 |
| 1695 | 37400.37600.39700.42100.50200.338200 | 11th Floor | 2d | 2027-10-09 | 2027-10-10 | 1694 |  | 7 day week with NGT | 149145 |
| 1696 | 37400.37600.39700.42100.50200.338300 | 12th Floor | 2d | 2027-10-11 | 2027-10-12 | 1695 |  | 7 day week with NGT | 149155 |
| 1697 | 37400.37600.39700.42100.50200.338400 | 13th Floor | 2d | 2027-10-13 | 2027-10-14 | 1696 |  | 7 day week with NGT | 149165 |
| 1698 | 37400.37600.39700.42100.50200.338500 | 14th Floor | 2d | 2027-10-15 | 2027-10-16 | 1697 |  | 7 day week with NGT | 149175 |
| 1699 | 37400.37600.39700.42100.50200.338600 | 15th Floor | 2d | 2027-10-17 | 2027-10-18 | 1698 |  | 7 day week with NGT | 149185 |
| 1700 | 37400.37600.39700.42100.50200.338700 | 16th Floor | 2d | 2027-10-19 | 2027-10-20 | 1699 |  | 7 day week with NGT | 149195 |
| 1701 | 37400.37600.39700.42100.50200.338800 | 17th Floor | 2d | 2027-10-21 | 2027-10-22 | 1700 |  | 7 day week with NGT | 149205 |
| 1702 | 37400.37600.39700.42100.50200.338900 | 18th Floor | 2d | 2027-10-23 | 2027-10-24 | 1701 |  | 7 day week with NGT | 149215 |
| 1703 | 37400.37600.39700.42100.50200.339000 | 19th Floor | 2d | 2027-10-25 | 2027-10-26 | 1702 |  | 7 day week with NGT | 149225 |
| 1704 | 37400.37600.39700.42100.50200.339100 | 20th Floor | 2d | 2027-10-27 | 2027-10-28 | 1703 |  | 7 day week with NGT | 149235 |
| 1705 | 37400.37600.39700.42100.50200.339200 | 21st Floor | 2d | 2027-10-29 | 2027-10-30 | 1704 |  | 7 day week with NGT | 149245 |
| 1706 | 37400.37600.39700.42100.50200.339300 | 22nd Floor | 2d | 2027-10-31 | 2027-12-16 | 1705 |  | 7 day week with NGT | 149255 |
| 1707 | 37400.37600.39700.42100.50200.339400 | 23rd Floor | 2d | 2027-12-17 | 2027-12-18 | 1706 |  | 7 day week with NGT | 149265 |
| 1708 | 37400.37600.39700.42100.50200.339500 | 24th Floor | 2d | 2027-12-19 | 2027-12-20 | 1707 |  | 7 day week with NGT | 149275 |
| 1709 | 37400.37600.39700.42100.50200.339600 | 25th Floor | 2d | 2027-12-21 | 2027-12-22 | 1708 |  | 7 day week with NGT | 149285 |
| 1710 | 37400.37600.39700.42100.50200.339700 | 26th Floor | 2d | 2027-12-23 | 2027-12-24 | 1709 |  | 7 day week with NGT | 149295 |
| 1711 | 37400.37600.39700.42100.50200.339800 | 27th Floor | 2d | 2027-12-25 | 2027-12-26 | 1710 |  | 7 day week with NGT | 149305 |
| 1712 | 37400.37600.39700.42100.50200.339900 | 28th Floor | 2d | 2027-12-27 | 2027-12-28 | 1711 |  | 7 day week with NGT | 149315 |
| 1713 | 37400.37600.39700.42100.50200.340000 | 29th Floor | 2d | 2027-12-29 | 2027-12-30 | 1712 |  | 7 day week with NGT | 149325 |
| 1714 | 37400.37600.39700.42100.50200.340100 | 30th Floor | 2d | 2027-12-31 | 2028-01-01 | 1713 |  | 7 day week with NGT | 149335 |
| 1715 | 37400.37600.39700.42100.50200.340200 | 31st Floor | 2d | 2028-01-02 | 2028-01-03 | 1714 |  | 7 day week with NGT | 149345 |
| 1716 | 37400.37600.39700.42100.50200.340300 | 32nd Floor | 2d | 2028-01-04 | 2028-01-05 | 1715 |  | 7 day week with NGT | 149355 |

| ID | WBS | Task | Duration | Start | Finish | Predecessors | Constraint | Calendar | Unique_Task_ID |
| --- | --- | --- | --- | --- | --- | --- | --- | --- | --- |
| 1717 | 37400.37600.39700.115200 | **MEP** | 420d | 2027-04-05 | 2028-07-12 |  | start no earlier than 2027-04-05 | 7 day week with NGT | 147915 |
| 1718 | 37400.37600.39700.115200.118200 | **Electrical Works** | 265d | 2027-04-05 | 2028-02-08 |  | start no earlier than 2027-04-05 | 7 day week with NGT | 147935 |
| 1719 | 37400.37600.39700.115200.118200.340400 | Cable Tray | 90d | 2027-04-05 | 2027-07-03 | 1128 |  | 7 day week with NGT | 149365 |
| 1720 | 37400.37600.39700.115200.118200.340500 | Cable, main & sub main | 80d | 2027-05-20 | 2027-08-07 | 1719SS+45d |  | 7 day week with NGT | 149375 |
| 1721 | 37400.37600.39700.115200.118200.340600 | LT panel & DB | 120d | 2027-07-04 | 2027-10-31 | 1719 |  | 7 day week with NGT | 149385 |
| 1722 | 37400.37600.39700.115200.118200.340700 | Rising main | 90d | 2027-06-04 | 2027-09-01 | 1719SS+60d |  | 7 day week with NGT | 149395 |
| 1723 | 37400.37600.39700.115200.118200.340800 | EARTHING Works | 60d | 2027-04-20 | 2027-06-18 | 1719SS+15d |  | 7 day week with NGT | 149405 |
| 1724 | 37400.37600.39700.115200.118200.340900 | Advance lightening protection | 60d | 2027-06-24 | 2027-08-22 | 1672 |  | 7 day week with NGT | 149415 |
| 1725 | 37400.37600.39700.115200.118200.341000 | Inverter | 35d | 2027-10-07 | 2027-12-25 | 1722, 1723, 1726 |  | 7 day week with NGT | 149425 |
| 1726 | 37400.37600.39700.115200.118200.341100 | Energy meter | 60d | 2027-08-08 | 2027-10-06 | 1720 |  | 7 day week with NGT | 149435 |
| 1727 | 37400.37600.39700.115200.118200.341200 | Exhast fan | 60d | 2027-07-09 | 2027-09-06 | 1665FF+5d |  | 7 day week with NGT | 149445 |
| 1728 | 37400.37600.39700.115200.118200.341300 | FTTH | 60d | 2027-06-09 | 2027-08-07 | 1723FS-10d |  | 7 day week with NGT | 149455 |
| 1729 | 37400.37600.39700.115200.118200.341400 | Security System - FA & PA | 55d | 2027-12-16 | 2028-02-08 | 1721, 1728 |  | 7 day week with NGT | 149465 |
| 1730 | 37400.37600.39700.115200.118200.341500 | Solar water heater | 60d | 2027-06-24 | 2027-08-22 | 1672 |  | 7 day week with NGT | 149475 |
| 1731 | 37400.37600.39700.115200.163800 | **Plumbing Works** | 165d | 2027-05-15 | 2027-10-26 |  | start no earlier than 2027-05-15 | 7 day week with NGT | 148045 |
| 1732 | 37400.37600.39700.115200.163800.341600 | Terrace looping | 45d | 2027-05-15 | 2027-06-28 | 1671 |  | 7 day week with NGT | 149485 |
| 1733 | 37400.37600.39700.115200.163800.341700 | Shaft Plumbing | 120d | 2027-06-29 | 2027-10-26 | 1732 |  | 7 day week with NGT | 149495 |
| 1734 | 37400.37600.39700.115200.163800.341800 | CP sanitary fixture supply | 75d | 2027-06-15 | 2027-08-28 | 1660 |  | 7 day week with NGT | 149505 |
| 1735 | 37400.37600.39700.115200.163800.341900 | Cold & flushing water supply | 90d | 2027-06-15 | 2027-09-12 | 1660 |  | 7 day week with NGT | 149515 |
| 1736 | 37400.37600.39700.115200.163800.342000 | Misc work | 30d | 2027-09-03 | 2027-10-02 | 1735FS-10d |  | 7 day week with NGT | 149525 |
| 1737 | 37400.37600.39700.115200.212700 | **Fire Fighting Works** | 218d | 2027-06-14 | 2028-03-02 |  | start no earlier than 2027-06-14 | 7 day week with NGT | 148405 |
| 1738 | 37400.37600.39700.115200.212700.342100 | Fire hydrant work | 90d | 2027-06-24 | 2027-09-21 | 1675SS+60d |  | 7 day week with NGT | 149535 |
| 1739 | 37400.37600.39700.115200.212700.342200 | Sprinkler & piping work | 88d | 2027-10-22 | 2028-03-02 | 1738FS+30d |  | 7 day week with NGT | 149545 |
| 1740 | 37400.37600.39700.115200.212700.342300 | Shaft Downtake works | 90d | 2027-06-14 | 2027-09-11 | 1671FS+30d |  | 7 day week with NGT | 149555 |
| 1741 | 37400.37600.39700.115200.212700.342400 | Connection to pump room | 30d | 2027-09-12 | 2027-10-11 | 1740 |  | 7 day week with NGT | 149565 |

| ID | WBS | Task | Duration | Start | Finish | Predecessors | Complete | Constraint | Calendar | Unique_Task_ID |
| --- | --- | --- | --- | --- | --- | --- | --- | --- | --- | --- |
| 1742 | 37400.37600.39700.115200.219900 | **Lift Works** | 170d | 2027-04-05 | 2027-09-21 |  |  | start no earlier than 2027-04-05 | 7 day week with NGT | 148425 |
| 1743 | 37400.37600.39700.115200.219900.342500 | Lift Shaft Handover | 40d | 2027-04-05 | 2027-05-14 | 1128 |  |  | 7 day week with NGT | 149575 |
| 1744 | 37400.37600.39700.115200.219900.342600 | Lift installation work | 45d | 2027-05-15 | 2027-06-28 | 1743 |  |  | 7 day week with NGT | 149585 |
| 1745 | 37400.37600.39700.115200.219900.342700 | Lift testing and commissioning | 85d | 2027-06-29 | 2027-09-21 | 1744 |  |  | 7 day week with NGT | 149595 |
| 1746 | 37400.37600.39700.115200.226900 | **AC Works** | 100d | 2028-04-04 | 2028-07-12 |  |  | start no earlier than 2028-04-04 | 7 day week with NGT | 148445 |
| 1747 | 37400.37600.39700.115200.226900.342800 | Split AC | 100d | 2028-04-04 | 2028-07-12 | 1763FS-30d |  |  | 7 day week with NGT | 149605 |
| 1748 | 37400.37600.39700.166100 | **Tower Completion** | 270d | 2027-02-23 | 2028-01-03 |  |  | start no earlier than 2027-02-23 | 7 day week with NGT | 148415 |
| 1749 | 37400.37600.39700.166100.288200 | SURFACE PREPARATION | 80d | 2027-02-23 | 2027-05-13 | 1156 |  |  | 7 day week with NGT | 148465 |
| 1750 | 37400.37600.39700.166100.288300 | External Painting | 100d | 2027-05-14 | 2027-08-21 | 1749 |  |  | 7 day week with NGT | 148475 |
| 1751 | 37400.37600.39700.166100.288400 | Final coat of painting | 30d | 2027-08-22 | 2027-09-20 | 1750 |  |  | 7 day week with NGT | 148485 |
| 1752 | 37400.37600.39700.166100.288500 | Misc. work | 60d | 2027-09-21 | 2028-01-03 | 1751 |  |  | 7 day week with NGT | 148495 |
| 1753 | 37400.37600.39700.227600 | **Basement Lobby** | 60d | 2027-10-22 | 2028-02-03 |  |  | start no earlier than 2027-10-22 | 7 day week with NGT | 148455 |
| 1754 | 37400.37600.39700.227600.288600 | Basement Lobby | 60d | 2027-10-22 | 2028-02-03 | 1681 |  |  | 7 day week with NGT | 148505 |
| 1755 | 37400.37600.39700.126900 | **Post OC Activities** | 560d | 2027-06-08 | 2029-02-01 |  |  | start no earlier than 2027-06-08 | 7 day week with NGT | 147965 |
| 1756 | 37400.37600.39700.126900.288700 | Wardrobe installation | 180d | 2028-04-04 | 2028-09-30 | 1763FS-30d |  |  | 7 day week with NGT | 148515 |
| 1757 | 37400.37600.39700.126900.288800 | CP & SANITARYWARE | 120d | 2027-08-29 | 2028-02-09 | 1734 |  |  | 7 day week with NGT | 148525 |
| 1758 | 37400.37600.39700.126900.288900 | Wooden Flooring | 180d | 2028-04-04 | 2028-09-30 | 1763FS-30d |  |  | 7 day week with NGT | 148535 |
| 1759 | 37400.37600.39700.126900.289000 | Electrical Fixtures And Fittings | 120d | 2027-06-08 | 2027-10-05 | 1659 |  |  | 7 day week with NGT | 148545 |
| 1760 | 37400.37600.39700.126900.289100 | Modular Kitchen | 180d | 2028-04-04 | 2028-09-30 | 1756SS |  |  | 7 day week with NGT | 148555 |
| 1761 | 37400.37600.39700.126900.289200 | Final Coat Paint | 90d | 2027-09-17 | 2028-01-29 | 1684 |  |  | 7 day week with NGT | 148565 |
| 1762 | 37400.37600.39700.126900.289300 | OC Application/Readiness | 1d | 2028-03-03 | 2028-03-03 | 1752FS-2d, 1128, 1676, 1745, 1727, 1729, 1730, 1725, 1724, 1679, 1733, 1736, 1739, 1741, 1669, 1173, 1678, 1682, 1716, 1349 |  |  | 7 day week with NGT | 148575 |
| 1763 | 37400.37600.39700.126900.289400 | OC Receipt | 1d | 2028-05-03 | 2028-05-03 | 1751, 1754, 1762FS+60d |  |  | 7 day week with NGT | 148585 |
| 1764 | 37400.37600.39700.126900.289500 | Offer To Possession | 30d | 2029-01-03 | 2029-02-01 | 1756, 1757, 1758, 1759, 1760, 1761, 1763FF+274d, 1747 |  |  | 7 day week with NGT | 148595 |
| 1765 | 37400.37600.40700 | **Tower 4** | 1416d | 2024-09-19 | 2029-01-31 |  | 4% | start no earlier than 2024-09-19 | 7 day week with NGT | 7997712 |
| 1766 | 37400.37600.40700.115300 | **Substructure Works** | 461d | 2024-09-19 | 2026-03-23 |  | 66% | start no earlier than 2024-09-19 | 7 day week with NGT | 7998842 |
| 1767 | 37400.37600.40700.115300.118300 | **RCC Works** | 222d | 2024-09-19 | 2025-06-12 |  | 100% | start no earlier than 2024-09-19 | 7 day week with NGT | 7998922 |
| 1768 | 37400.37600.40700.115300.118300.131900 | **Raft** | 28d | 2024-09-19 | 2024-10-16 |  | 100% | start no earlier than 2024-09-19 | 7 day week with NGT | 7999082 |
| 1769 | 37400.37600.40700.115300.118300.131900.279400 | Surface Dressing | 2d | 2024-09-22 | 2024-09-23 | 2627SS+15d | 100% | start no earlier than 2024-09-22 | 7 day week with NGT | 8010072 |
| 1770 | 37400.37600.40700.115300.118300.131900.279300 | Anti Termite Treatment | 5d | 2024-09-19 | 2024-09-23 | 1769 | 100% | start no earlier than 2024-09-19 | 7 day week with NGT | 8010082 |
| 1771 | 37400.37600.40700.115300.118300.131900.279200 | PCC | 3d | 2024-09-23 | 2024-09-25 | 1770 | 100% | start no earlier than 2024-09-23 | 7 day week with NGT | 8010092 |
| 1772 | 37400.37600.40700.115300.118300.131900.279100 | Reinforcement Laying | 14d | 2024-09-25 | 2024-10-08 | 1771 | 100% | start no earlier than 2024-09-25 | 7 day week with NGT | 8010102 |
| 1773 | 37400.37600.40700.115300.118300.131900.279000 | Outer Shuttering of Raft Area | 8d | 2024-10-01 | 2024-10-08 | 1772FF | 100% | start no earlier than 2024-10-01 | 7 day week with NGT | 8010112 |
| 1774 | 37400.37600.40700.115300.118300.131900.278900 | Raft Concreting | 4d | 2024-10-13 | 2024-10-16 | 1773 | 100% | start no earlier than 2024-10-13 | 7 day week with NGT | 8010122 |

| ID | WBS | Task | Duration | Start | Finish | Predecessors | Complete | Constraint | Calendar | Unique_Task_ID |
| --- | --- | --- | --- | --- | --- | --- | --- | --- | --- | --- |
| 1775 | 37400.37600.40700.115300.118300.132000 | **Dummy Basement** | 97d | 2024-09-24 | 2025-02-12 |  | 100% | start no earlier than 2024-09-24 | 7 day week with NGT | 7999072 |
| 1776 | 37400.37600.40700.115300.118300.132000.278800 | Column and Shear Wall Reinforcement | 6d | 2024-10-26 | 2024-10-31 | 1774 | 100% | start no earlier than 2024-10-26 | 7 day week with NGT | 8010132 |
| 1777 | 37400.37600.40700.115300.118300.132000.278700 | Column and Shear Wall Formwork | 53d | 2024-09-24 | 2024-12-30 | 1776FF+1d | 100% | start no earlier than 2024-09-24 | 7 day week with NGT | 8010142 |
| 1778 | 37400.37600.40700.115300.118300.132000.278600 | Column and Shear Wall Casting | 36d | 2024-10-29 | 2025-01-30 | 1777FF+1d | 100% | start no earlier than 2024-10-29 | 7 day week with NGT | 8010152 |
| 1779 | 37400.37600.40700.115300.118300.132000.278500 | Slab Formwork | 27d | 2024-10-30 | 2025-01-25 | 1778SS+10d | 100% | start no earlier than 2024-10-30 | 7 day week with NGT | 8010162 |
| 1780 | 37400.37600.40700.115300.118300.132000.278400 | Slab Reinforcement | 39d | 2024-12-31 | 2025-02-07 | 1779FS-36d | 100% | start no earlier than 2024-12-31 | 7 day week with NGT | 8010172 |
| 1781 | 37400.37600.40700.115300.118300.132000.278300 | Slab Casting | 43d | 2025-01-01 | 2025-02-12 | 1780FF+3d | 100% | start no earlier than 2025-01-01 | 7 day week with NGT | 8010182 |
| 1782 | 37400.37600.40700.115300.118300.132100 | **B2 Roof** | 96d | 2025-02-03 | 2025-05-09 |  | 100% | start no earlier than 2025-02-03 | 7 day week with NGT | 7999062 |
| 1783 | 37400.37600.40700.115300.118300.132100.278200 | Column and Shear Wall Reinforcement | 7d | 2025-02-03 | 2025-04-29 | 1781 | 100% | start no earlier than 2025-02-03 | 7 day week with NGT | 8010192 |
| 1784 | 37400.37600.40700.115300.118300.132100.278100 | Column and Shear Wall Formwork | 10d | 2025-02-15 | 2025-04-29 | 1783FF+1d | 100% | start no earlier than 2025-02-15 | 7 day week with NGT | 8010202 |
| 1785 | 37400.37600.40700.115300.118300.132100.278000 | Column and Shear Wall Casting | 15d | 2025-02-25 | 2025-04-29 | 1784FF+1d | 100% | start no earlier than 2025-02-25 | 7 day week with NGT | 8010212 |
| 1786 | 37400.37600.40700.115300.118300.132100.277900 | Slab Formwork | 14d | 2025-03-25 | 2025-05-04 | 1785SS+27.7d | 100% | start no earlier than 2025-03-25 | 7 day week with NGT | 8010222 |
| 1787 | 37400.37600.40700.115300.118300.132100.277800 | Slab Reinforcement | 19d | 2025-04-04 | 2025-05-07 | 1786FS-54.3d | 100% | start no earlier than 2025-04-04 | 7 day week with NGT | 8010232 |
| 1788 | 37400.37600.40700.115300.118300.132100.277700 | Slab Casting | 12d | 2025-04-07 | 2025-05-09 | 1787FF+3d | 100% | start no earlier than 2025-04-07 | 7 day week with NGT | 8010242 |
| 1789 | 37400.37600.40700.115300.118300.132200 | **B1 Roof** | 41d | 2025-05-03 | 2025-06-12 |  | 100% | start no earlier than 2025-05-03 | 7 day week with NGT | 7999052 |
| 1790 | 37400.37600.40700.115300.118300.132200.277600 | Column and Shear Wall Reinforcement | 7d | 2025-05-03 | 2025-06-10 | 1788FS-8d | 100% | start no earlier than 2025-05-03 | 7 day week with NGT | 8010252 |
| 1791 | 37400.37600.40700.115300.118300.132200.277500 | Column and Shear Wall Formwork | 12d | 2025-05-12 | 2025-06-10 | 1790FF+1d | 100% | start no earlier than 2025-05-12 | 7 day week with NGT | 8010262 |
| 1792 | 37400.37600.40700.115300.118300.132200.277400 | Column and Shear Wall Casting | 5d | 2025-05-16 | 2025-06-10 | 1791FF+1d | 100% | start no earlier than 2025-05-16 | 7 day week with NGT | 8010272 |
| 1793 | 37400.37600.40700.115300.118300.132200.277300 | Slab Formwork | 13d | 2025-05-24 | 2025-06-12 | 1792SS+1d | 100% | start no earlier than 2025-05-24 | 7 day week with NGT | 8010282 |
| 1794 | 37400.37600.40700.115300.118300.132200.277200 | Slab Reinforcement | 11d | 2025-05-26 | 2025-06-12 | 1793FS-18d | 100% | start no earlier than 2025-05-26 | 7 day week with NGT | 8010292 |
| 1795 | 37400.37600.40700.115300.118300.132200.277100 | Slab Casting | 9d | 2025-05-26 | 2025-06-12 | 1794FF+2d | 100% | start no earlier than 2025-05-26 | 7 day week with NGT | 8010302 |
| 1796 | 37400.37600.40700.115300.130500 | **Substructure Finishing Works** | 98d | 2025-12-16 | 2026-03-23 |  |  | start no earlier than 2025-12-16 | 7 day week with NGT | 7999012 |
| 1797 | 37400.37600.40700.115300.130500.215400 | **Basement - 2** | 73d | 2025-12-16 | 2026-02-26 |  |  | start no earlier than 2025-12-16 | 7 day week with NGT | 8000282 |
| 1798 | 37400.37600.40700.115300.130500.215400.547100 | Masonary Works | 30d | 2025-12-16 | 2026-01-14 | 1788FS+30d |  |  | 7 day week with NGT | 8010312 |
| 1799 | 37400.37600.40700.115300.130500.215400.547200 | Plaster Works | 20d | 2025-12-31 | 2026-01-19 | 1798SS+15d |  |  | 7 day week with NGT | 8010322 |
| 1800 | 37400.37600.40700.115300.130500.215400.547300 | White Wash | 18d | 2026-01-15 | 2026-02-01 | 1799SS+15d |  |  | 7 day week with NGT | 8010332 |
| 1801 | 37400.37600.40700.115300.130500.215400.547400 | VDF | 25d | 2026-02-02 | 2026-02-26 | 1800 |  |  | 7 day week with NGT | 135675 |

| ID | WBS | Task | Duration | Start | Finish | Predecessors | Complete | Constraint | Calendar | Unique_Task_ID |
| --- | --- | --- | --- | --- | --- | --- | --- | --- | --- | --- |
| 1802 | 37400.37600.40700.115300.130500.215300 | **Basement - 1** | 98d | 2025-12-16 | 2026-03-23 |  |  | start no earlier than 2025-12-16 | 7 day week with NGT | 8000272 |
| 1803 | 37400.37600.40700.115300.130500.215300.547500 | Masonary Works | 30d | 2025-12-16 | 2026-01-14 | 1795FS+30d |  |  | 7 day week with NGT | 8010342 |
| 1804 | 37400.37600.40700.115300.130500.215300.547600 | Plaster Works | 20d | 2025-12-31 | 2026-01-19 | 1803SS+15d |  |  | 7 day week with NGT | 8010352 |
| 1805 | 37400.37600.40700.115300.130500.215300.547700 | White Wash | 18d | 2026-02-02 | 2026-02-19 | 1800, 1804SS+15d |  |  | 7 day week with NGT | 8010362 |
| 1806 | 37400.37600.40700.115300.130500.215300.547800 | VDF | 25d | 2026-02-27 | 2026-03-23 | 1801, 1805 |  |  | 7 day week with NGT | 135685 |
| 1807 | 37400.37600.40700.45500 | **Superstructure Works** | 568d | 2025-06-23 | 2027-04-11 |  | 6% | start no earlier than 2025-06-23 | 7 day week with NGT | 7997792 |
| 1808 | 37400.37600.40700.45500.46800 | **RCC Works** | 560d | 2025-06-23 | 2027-04-03 |  | 7% | start no earlier than 2025-06-23 | 7 day week with NGT | 7997832 |
| 1809 | 37400.37600.40700.45500.46800.132300 | **Podium Roof** | 139d | 2025-06-23 | 2025-12-23 |  | 75% | start no earlier than 2025-06-23 | 7 day week with NGT | 7999042 |
| 1810 | 37400.37600.40700.45500.46800.132300.277000 | Column and Shear Wall Reinforcement | 10d | 2025-06-23 | 2025-12-16 | 1795 | 90% | start no earlier than 2025-06-23 | 7 day week with NGT | 8010372 |
| 1811 | 37400.37600.40700.45500.46800.132300.276900 | Column and Shear Wall Formwork | 15d | 2025-06-24 | 2025-12-18 | 1810FF+1d | 80% |  | 7 day week with NGT | 8010382 |
| 1812 | 37400.37600.40700.45500.46800.132300.276800 | Column and Shear Wall Casting | 12d | 2025-06-26 | 2025-12-19 | 1811FF+1d | 83% |  | 7 day week with NGT | 8010392 |
| 1813 | 37400.37600.40700.45500.46800.132300.276700 | Slab Formwork | 13d | 2025-08-13 | 2025-12-18 | 1812SS+16.96d | 76% | start no earlier than 2025-08-13 | 7 day week with NGT | 8010402 |
| 1814 | 37400.37600.40700.45500.46800.132300.276600 | Slab Reinforcement | 13d | 2025-09-08 | 2025-12-20 | 1813FS-82d | 61% | start no earlier than 2025-09-08 | 7 day week with NGT | 8010412 |
| 1815 | 37400.37600.40700.45500.46800.132300.276500 | Slab Casting | 14d | 2025-09-13 | 2025-12-23 | 1814FF+3d | 64% |  | 7 day week with NGT | 8010422 |
| 1816 | 37400.37600.40700.45500.46800.138900 | **First Floor Roof** | 81d | 2025-09-24 | 2026-01-27 |  | 10% | start no earlier than 2025-09-24 | 7 day week with NGT | 7999032 |
| 1817 | 37400.37600.40700.45500.46800.138900.276400 | Column and Shear Wall Reinforcement | 12d | 2025-09-24 | 2025-12-25 | 1815FS-46d | 83% |  | 7 day week with NGT | 8010432 |
| 1818 | 37400.37600.40700.45500.46800.138900.547900 | Column and Shear Wall Formwork | 15d | 2025-12-16 | 2025-12-30 | 1817FS-43d |  |  | 7 day week with NGT | 8010442 |
| 1819 | 37400.37600.40700.45500.46800.138900.548000 | Column and Shear Wall Casting | 10d | 2025-12-22 | 2025-12-31 | 1818FF+1d |  |  | 7 day week with NGT | 8010452 |
| 1820 | 37400.37600.40700.45500.46800.138900.548100 | Slab Formwork | 25d | 2025-12-23 | 2026-01-16 | 1819SS+1d |  |  | 7 day week with NGT | 8010462 |
| 1821 | 37400.37600.40700.45500.46800.138900.548200 | Slab Reinforcement | 21d | 2026-01-05 | 2026-01-25 | 1820FS-12d |  |  | 7 day week with NGT | 8010472 |
| 1822 | 37400.37600.40700.45500.46800.138900.548300 | Slab Casting | 14d | 2026-01-14 | 2026-01-27 | 1821FF+2d |  |  | 7 day week with NGT | 8010482 |
| 1823 | 37400.37600.40700.45500.46800.150400 | **Second Floor Roof** | 28d | 2026-01-28 | 2026-02-24 |  |  | start no earlier than 2026-01-28 | 7 day week with NGT | 8000112 |
| 1824 | 37400.37600.40700.45500.46800.150400.548400 | Column and Shear Wall Reinforcement | 10d | 2026-01-28 | 2026-02-06 | 1822 |  |  | 7 day week with NGT | 8010492 |
| 1825 | 37400.37600.40700.45500.46800.150400.548500 | Column and Shear Wall Formwork | 10d | 2026-01-29 | 2026-02-07 | 1824FF+1d |  |  | 7 day week with NGT | 8010502 |
| 1826 | 37400.37600.40700.45500.46800.150400.548600 | Slab Formwork | 16d | 2026-02-06 | 2026-02-21 | 1825FS-2d |  |  | 7 day week with NGT | 8010512 |
| 1827 | 37400.37600.40700.45500.46800.150400.548700 | Slab Reinforcement | 14d | 2026-02-10 | 2026-02-23 | 1826FS-12d |  |  | 7 day week with NGT | 8010522 |
| 1828 | 37400.37600.40700.45500.46800.150400.548800 | Monolithic Casting | 8d | 2026-02-17 | 2026-02-24 | 1827FF+1d |  |  | 7 day week with NGT | 8010532 |

| ID | WBS | Task | Duration | Start | Finish | Predecessors | Constraint | Calendar | Unique_Task_ID |
| --- | --- | --- | --- | --- | --- | --- | --- | --- | --- |
| 1829 | 37400.37600.40700.45500.46800.150500 | **Third Floor Roof** | 18d | 2026-02-25 | 2026-03-14 |  | start no earlier than 2026-02-25 | 7 day week with NGT | 8000102 |
| 1830 | 37400.37600.40700.45500.46800.150500.548900 | Column and Shear Wall Reinforcement | 7d | 2026-02-25 | 2026-03-03 | 1828 |  | 7 day week with NGT | 8010542 |
| 1831 | 37400.37600.40700.45500.46800.150500.549000 | Column and Shear Wall Formwork | 7d | 2026-02-26 | 2026-03-04 | 1830FF+1d |  | 7 day week with NGT | 8010552 |
| 1832 | 37400.37600.40700.45500.46800.150500.549100 | Slab Formwork | 9d | 2026-03-03 | 2026-03-11 | 1831FS-2d |  | 7 day week with NGT | 8010562 |
| 1833 | 37400.37600.40700.45500.46800.150500.549200 | Slab Reinforcement | 10d | 2026-03-04 | 2026-03-13 | 1832FF+2d |  | 7 day week with NGT | 8010572 |
| 1834 | 37400.37600.40700.45500.46800.150500.549300 | Monolithic Casting | 8d | 2026-03-07 | 2026-03-14 | 1833FF+1d |  | 7 day week with NGT | 8010582 |
| 1835 | 37400.37600.40700.45500.46800.150600 | **4th Floor Roof** | 12d | 2026-03-15 | 2026-03-26 |  | start no earlier than 2026-03-15 | 7 day week with NGT | 8000092 |
| 1836 | 37400.37600.40700.45500.46800.150600.549400 | Column and Shear Wall Reinforcement | 5d | 2026-03-15 | 2026-03-19 | 1834 |  | 7 day week with NGT | 8010592 |
| 1837 | 37400.37600.40700.45500.46800.150600.549500 | Column and Shear Wall Formwork | 5d | 2026-03-16 | 2026-03-20 | 1836FF+1d |  | 7 day week with NGT | 8010602 |
| 1838 | 37400.37600.40700.45500.46800.150600.549600 | Slab Formwork | 5d | 2026-03-19 | 2026-03-23 | 1837FS-2d |  | 7 day week with NGT | 8010612 |
| 1839 | 37400.37600.40700.45500.46800.150600.549700 | Slab Reinforcement | 5d | 2026-03-21 | 2026-03-25 | 1838FF+2d |  | 7 day week with NGT | 8010622 |
| 1840 | 37400.37600.40700.45500.46800.150600.549800 | Monolithic Casting | 2d | 2026-03-25 | 2026-03-26 | 1839FF+1d |  | 7 day week with NGT | 8010632 |
| 1841 | 37400.37600.40700.45500.46800.150700 | **5th Floor Roof** | 12d | 2026-03-27 | 2026-04-07 |  | start no earlier than 2026-03-27 | 7 day week with NGT | 8000082 |
| 1842 | 37400.37600.40700.45500.46800.150700.549900 | Column and Shear Wall Reinforcement | 5d | 2026-03-27 | 2026-03-31 | 1840 |  | 7 day week with NGT | 8010642 |
| 1843 | 37400.37600.40700.45500.46800.150700.550000 | Column and Shear Wall Formwork | 5d | 2026-03-28 | 2026-04-01 | 1842FF+1d |  | 7 day week with NGT | 8010652 |
| 1844 | 37400.37600.40700.45500.46800.150700.550100 | Slab Formwork | 5d | 2026-03-31 | 2026-04-04 | 1843FS-2d |  | 7 day week with NGT | 8010662 |
| 1845 | 37400.37600.40700.45500.46800.150700.550200 | Slab Reinforcement | 5d | 2026-04-02 | 2026-04-06 | 1844FF+2d |  | 7 day week with NGT | 8010672 |
| 1846 | 37400.37600.40700.45500.46800.150700.550300 | Monolithic Casting | 2d | 2026-04-06 | 2026-04-07 | 1845FF+1d |  | 7 day week with NGT | 8010682 |
| 1847 | 37400.37600.40700.45500.46800.150800 | **6th Floor Roof** | 12d | 2026-04-08 | 2026-04-19 |  | start no earlier than 2026-04-08 | 7 day week with NGT | 8000072 |
| 1848 | 37400.37600.40700.45500.46800.150800.550400 | Column and Shear Wall Reinforcement | 5d | 2026-04-08 | 2026-04-12 | 1846 |  | 7 day week with NGT | 8010692 |
| 1849 | 37400.37600.40700.45500.46800.150800.550500 | Column and Shear Wall Formwork | 5d | 2026-04-09 | 2026-04-13 | 1848FF+1d |  | 7 day week with NGT | 8010702 |
| 1850 | 37400.37600.40700.45500.46800.150800.550600 | Slab Formwork | 5d | 2026-04-12 | 2026-04-16 | 1849FS-2d |  | 7 day week with NGT | 8010712 |
| 1851 | 37400.37600.40700.45500.46800.150800.550700 | Slab Reinforcement | 5d | 2026-04-14 | 2026-04-18 | 1850FF+2d |  | 7 day week with NGT | 8010722 |
| 1852 | 37400.37600.40700.45500.46800.150800.550800 | Monolithic Casting | 2d | 2026-04-18 | 2026-04-19 | 1851FF+1d |  | 7 day week with NGT | 8010732 |

| ID | WBS | Task | Duration | Start | Finish | Predecessors | Constraint | Calendar | Unique_Task_ID |
| --- | --- | --- | --- | --- | --- | --- | --- | --- | --- |
| 1853 | 37400.37600.40700.45500.46800.150900 | **7th Floor Roof** | 12d | 2026-04-20 | 2026-05-01 |  | start no earlier than 2026-04-20 | 7 day week with NGT | 8000062 |
| 1854 | 37400.37600.40700.45500.46800.150900.550900 | Column and Shear Wall Reinforcement | 5d | 2026-04-20 | 2026-04-24 | 1852 |  | 7 day week with NGT | 8010742 |
| 1855 | 37400.37600.40700.45500.46800.150900.551000 | Column and Shear Wall Formwork | 5d | 2026-04-21 | 2026-04-25 | 1854FF+1d |  | 7 day week with NGT | 8010752 |
| 1856 | 37400.37600.40700.45500.46800.150900.551100 | Slab Formwork | 5d | 2026-04-24 | 2026-04-28 | 1855FS-2d |  | 7 day week with NGT | 8010762 |
| 1857 | 37400.37600.40700.45500.46800.150900.551200 | Slab Reinforcement | 5d | 2026-04-26 | 2026-04-30 | 1856FF+2d |  | 7 day week with NGT | 8010772 |
| 1858 | 37400.37600.40700.45500.46800.150900.551300 | Monolithic Casting | 2d | 2026-04-30 | 2026-05-01 | 1857FF+1d |  | 7 day week with NGT | 8010782 |
| 1859 | 37400.37600.40700.45500.46800.151000 | **8th Floor Roof** | 12d | 2026-05-02 | 2026-05-13 |  | start no earlier than 2026-05-02 | 7 day week with NGT | 8000052 |
| 1860 | 37400.37600.40700.45500.46800.151000.551400 | Column and Shear Wall Reinforcement | 5d | 2026-05-02 | 2026-05-06 | 1858 |  | 7 day week with NGT | 8010792 |
| 1861 | 37400.37600.40700.45500.46800.151000.551500 | Column and Shear Wall Formwork | 5d | 2026-05-03 | 2026-05-07 | 1860FF+1d |  | 7 day week with NGT | 8010802 |
| 1862 | 37400.37600.40700.45500.46800.151000.551600 | Slab Formwork | 5d | 2026-05-06 | 2026-05-10 | 1861FS-2d |  | 7 day week with NGT | 8010812 |
| 1863 | 37400.37600.40700.45500.46800.151000.551700 | Slab Reinforcement | 5d | 2026-05-08 | 2026-05-12 | 1862FF+2d |  | 7 day week with NGT | 8010822 |
| 1864 | 37400.37600.40700.45500.46800.151000.551800 | Monolithic Casting | 2d | 2026-05-12 | 2026-05-13 | 1863FF+1d |  | 7 day week with NGT | 8010832 |
| 1865 | 37400.37600.40700.45500.46800.151100 | **9th Floor Roof** | 12d | 2026-05-14 | 2026-05-25 |  | start no earlier than 2026-05-14 | 7 day week with NGT | 8000042 |
| 1866 | 37400.37600.40700.45500.46800.151100.551900 | Column and Shear Wall Reinforcement | 5d | 2026-05-14 | 2026-05-18 | 1864 |  | 7 day week with NGT | 8010842 |
| 1867 | 37400.37600.40700.45500.46800.151100.552000 | Column and Shear Wall Formwork | 5d | 2026-05-15 | 2026-05-19 | 1866FF+1d |  | 7 day week with NGT | 8010852 |
| 1868 | 37400.37600.40700.45500.46800.151100.552100 | Slab Formwork | 5d | 2026-05-18 | 2026-05-22 | 1867FS-2d |  | 7 day week with NGT | 8010862 |
| 1869 | 37400.37600.40700.45500.46800.151100.552200 | Slab Reinforcement | 5d | 2026-05-20 | 2026-05-24 | 1868FF+2d |  | 7 day week with NGT | 8010872 |
| 1870 | 37400.37600.40700.45500.46800.151100.552300 | Monolithic Casting | 2d | 2026-05-24 | 2026-05-25 | 1869FF+1d |  | 7 day week with NGT | 8010882 |
| 1871 | 37400.37600.40700.45500.46800.151200 | **10th Floor Roof** | 12d | 2026-05-26 | 2026-06-06 |  | start no earlier than 2026-05-26 | 7 day week with NGT | 8000032 |
| 1872 | 37400.37600.40700.45500.46800.151200.552400 | Column and Shear Wall Reinforcement | 5d | 2026-05-26 | 2026-05-30 | 1870 |  | 7 day week with NGT | 8010892 |
| 1873 | 37400.37600.40700.45500.46800.151200.552500 | Column and Shear Wall Formwork | 5d | 2026-05-27 | 2026-05-31 | 1872FF+1d |  | 7 day week with NGT | 8010902 |
| 1874 | 37400.37600.40700.45500.46800.151200.552600 | Slab Formwork | 5d | 2026-05-30 | 2026-06-03 | 1873FS-2d |  | 7 day week with NGT | 8010912 |
| 1875 | 37400.37600.40700.45500.46800.151200.552700 | Slab Reinforcement | 5d | 2026-06-01 | 2026-06-05 | 1874FF+2d |  | 7 day week with NGT | 8010922 |
| 1876 | 37400.37600.40700.45500.46800.151200.552800 | Monolithic Casting | 2d | 2026-06-05 | 2026-06-06 | 1875FF+1d |  | 7 day week with NGT | 8010932 |

| ID | WBS | Task | Duration | Start | Finish | Predecessors | Constraint | Calendar | Unique_Task_ID |
| --- | --- | --- | --- | --- | --- | --- | --- | --- | --- |
| 1877 | 37400.37600.40700.45500.46800.151300 | **11th Floor Roof** | 12d | 2026-06-07 | 2026-06-18 |  | start no earlier than 2026-06-07 | 7 day week with NGT | 8000022 |
| 1878 | 37400.37600.40700.45500.46800.151300.552900 | Column and Shear Wall Reinforcement | 5d | 2026-06-07 | 2026-06-11 | 1876 |  | 7 day week with NGT | 8010942 |
| 1879 | 37400.37600.40700.45500.46800.151300.553000 | Column and Shear Wall Formwork | 5d | 2026-06-08 | 2026-06-12 | 1878FF+1d |  | 7 day week with NGT | 8010952 |
| 1880 | 37400.37600.40700.45500.46800.151300.553100 | Slab Formwork | 5d | 2026-06-11 | 2026-06-15 | 1879FS-2d |  | 7 day week with NGT | 8010962 |
| 1881 | 37400.37600.40700.45500.46800.151300.553200 | Slab Reinforcement | 5d | 2026-06-13 | 2026-06-17 | 1880FF+2d |  | 7 day week with NGT | 8010972 |
| 1882 | 37400.37600.40700.45500.46800.151300.553300 | Monolithic Casting | 2d | 2026-06-17 | 2026-06-18 | 1881FF+1d |  | 7 day week with NGT | 8010982 |
| 1883 | 37400.37600.40700.45500.46800.151400 | **12th Floor Roof** | 12d | 2026-06-19 | 2026-06-30 |  | start no earlier than 2026-06-19 | 7 day week with NGT | 8000012 |
| 1884 | 37400.37600.40700.45500.46800.151400.553400 | Column and Shear Wall Reinforcement | 5d | 2026-06-19 | 2026-06-23 | 1882 |  | 7 day week with NGT | 8010992 |
| 1885 | 37400.37600.40700.45500.46800.151400.553500 | Column and Shear Wall Formwork | 5d | 2026-06-20 | 2026-06-24 | 1884FF+1d |  | 7 day week with NGT | 8011002 |
| 1886 | 37400.37600.40700.45500.46800.151400.553600 | Slab Formwork | 5d | 2026-06-23 | 2026-06-27 | 1885FS-2d |  | 7 day week with NGT | 8011012 |
| 1887 | 37400.37600.40700.45500.46800.151400.553700 | Slab Reinforcement | 5d | 2026-06-25 | 2026-06-29 | 1886FF+2d |  | 7 day week with NGT | 8011022 |
| 1888 | 37400.37600.40700.45500.46800.151400.553800 | Monolithic Casting | 2d | 2026-06-29 | 2026-06-30 | 1887FF+1d |  | 7 day week with NGT | 8011032 |
| 1889 | 37400.37600.40700.45500.46800.151500 | **13th Floor Roof** | 12d | 2026-07-01 | 2026-07-12 |  | start no earlier than 2026-07-01 | 7 day week with NGT | 8000002 |
| 1890 | 37400.37600.40700.45500.46800.151500.553900 | Column and Shear Wall Reinforcement | 5d | 2026-07-01 | 2026-07-05 | 1888 |  | 7 day week with NGT | 8011042 |
| 1891 | 37400.37600.40700.45500.46800.151500.554000 | Column and Shear Wall Formwork | 5d | 2026-07-02 | 2026-07-06 | 1890FF+1d |  | 7 day week with NGT | 8011052 |
| 1892 | 37400.37600.40700.45500.46800.151500.554100 | Slab Formwork | 5d | 2026-07-05 | 2026-07-09 | 1891FS-2d |  | 7 day week with NGT | 8011062 |
| 1893 | 37400.37600.40700.45500.46800.151500.554200 | Slab Reinforcement | 5d | 2026-07-07 | 2026-07-11 | 1892FF+2d |  | 7 day week with NGT | 8011072 |
| 1894 | 37400.37600.40700.45500.46800.151500.554300 | Monolithic Casting | 2d | 2026-07-11 | 2026-07-12 | 1893FF+1d |  | 7 day week with NGT | 8011082 |
| 1895 | 37400.37600.40700.45500.46800.151600 | **14th Floor Roof** | 12d | 2026-07-13 | 2026-07-24 |  | start no earlier than 2026-07-13 | 7 day week with NGT | 7999992 |
| 1896 | 37400.37600.40700.45500.46800.151600.554400 | Column and Shear Wall Reinforcement | 5d | 2026-07-13 | 2026-07-17 | 1894 |  | 7 day week with NGT | 8011092 |
| 1897 | 37400.37600.40700.45500.46800.151600.554500 | Column and Shear Wall Formwork | 5d | 2026-07-14 | 2026-07-18 | 1896FF+1d |  | 7 day week with NGT | 8011102 |
| 1898 | 37400.37600.40700.45500.46800.151600.554600 | Slab Formwork | 5d | 2026-07-17 | 2026-07-21 | 1897FS-2d |  | 7 day week with NGT | 8011112 |
| 1899 | 37400.37600.40700.45500.46800.151600.554700 | Slab Reinforcement | 5d | 2026-07-19 | 2026-07-23 | 1898FF+2d |  | 7 day week with NGT | 8011122 |
| 1900 | 37400.37600.40700.45500.46800.151600.554800 | Monolithic Casting | 2d | 2026-07-23 | 2026-07-24 | 1899FF+1d |  | 7 day week with NGT | 8011132 |

| ID | WBS | Task | Duration | Start | Finish | Predecessors | Constraint | Calendar | Unique_Task_ID |
| --- | --- | --- | --- | --- | --- | --- | --- | --- | --- |
| 1901 | 37400.37600.40700.45500.46800.151700 | **15th Floor Roof** | 12d | 2026-07-25 | 2026-08-05 |  | start no earlier than 2026-07-25 | 7 day week with NGT | 7999982 |
| 1902 | 37400.37600.40700.45500.46800.151700.554900 | Column and Shear Wall Reinforcement | 5d | 2026-07-25 | 2026-07-29 | 1900 |  | 7 day week with NGT | 8011142 |
| 1903 | 37400.37600.40700.45500.46800.151700.555000 | Column and Shear Wall Formwork | 5d | 2026-07-26 | 2026-07-30 | 1902FF+1d |  | 7 day week with NGT | 8011152 |
| 1904 | 37400.37600.40700.45500.46800.151700.555100 | Slab Formwork | 5d | 2026-07-29 | 2026-08-02 | 1903FS-2d |  | 7 day week with NGT | 8011162 |
| 1905 | 37400.37600.40700.45500.46800.151700.555200 | Slab Reinforcement | 5d | 2026-07-31 | 2026-08-04 | 1904FF+2d |  | 7 day week with NGT | 8011172 |
| 1906 | 37400.37600.40700.45500.46800.151700.555300 | Monolithic Casting | 2d | 2026-08-04 | 2026-08-05 | 1905FF+1d |  | 7 day week with NGT | 8011182 |
| 1907 | 37400.37600.40700.45500.46800.151800 | **16th Floor Roof** | 17d | 2026-08-06 | 2026-08-22 |  | start no earlier than 2026-08-06 | 7 day week with NGT | 7999972 |
| 1908 | 37400.37600.40700.45500.46800.151800.555400 | Column and Shear Wall Reinforcement | 7d | 2026-08-06 | 2026-08-12 | 1906 |  | 7 day week with NGT | 8011192 |
| 1909 | 37400.37600.40700.45500.46800.151800.555500 | Column and Shear Wall Formwork | 7d | 2026-08-07 | 2026-08-13 | 1908FF+1d |  | 7 day week with NGT | 8011202 |
| 1910 | 37400.37600.40700.45500.46800.151800.555600 | Slab Formwork | 8d | 2026-08-12 | 2026-08-19 | 1909FS-2d |  | 7 day week with NGT | 8011212 |
| 1911 | 37400.37600.40700.45500.46800.151800.555700 | Slab Reinforcement | 7d | 2026-08-15 | 2026-08-21 | 1910FF+2d |  | 7 day week with NGT | 8011222 |
| 1912 | 37400.37600.40700.45500.46800.151800.555800 | Monolithic Casting | 4d | 2026-08-19 | 2026-08-22 | 1911FF+1d |  | 7 day week with NGT | 8011232 |
| 1913 | 37400.37600.40700.45500.46800.151900 | **17th Floor Roof** | 12d | 2026-08-23 | 2026-09-03 |  | start no earlier than 2026-08-23 | 7 day week with NGT | 7999962 |
| 1914 | 37400.37600.40700.45500.46800.151900.555900 | Column and Shear Wall Reinforcement | 5d | 2026-08-23 | 2026-08-27 | 1912 |  | 7 day week with NGT | 8011242 |
| 1915 | 37400.37600.40700.45500.46800.151900.556000 | Column and Shear Wall Formwork | 5d | 2026-08-24 | 2026-08-28 | 1914FF+1d |  | 7 day week with NGT | 8011252 |
| 1916 | 37400.37600.40700.45500.46800.151900.556100 | Slab Formwork | 5d | 2026-08-27 | 2026-08-31 | 1915FS-2d |  | 7 day week with NGT | 8011262 |
| 1917 | 37400.37600.40700.45500.46800.151900.556200 | Slab Reinforcement | 5d | 2026-08-29 | 2026-09-02 | 1916FF+2d |  | 7 day week with NGT | 8011272 |
| 1918 | 37400.37600.40700.45500.46800.151900.556300 | Monolithic Casting | 2d | 2026-09-02 | 2026-09-03 | 1917FF+1d |  | 7 day week with NGT | 8011282 |
| 1919 | 37400.37600.40700.45500.46800.152000 | **18th Floor Roof** | 12d | 2026-09-04 | 2026-09-15 |  | start no earlier than 2026-09-04 | 7 day week with NGT | 7999952 |
| 1920 | 37400.37600.40700.45500.46800.152000.556400 | Column and Shear Wall Reinforcement | 6d | 2026-09-04 | 2026-09-09 | 1918 |  | 7 day week with NGT | 8011292 |
| 1921 | 37400.37600.40700.45500.46800.152000.556500 | Column and Shear Wall Formwork | 5d | 2026-09-06 | 2026-09-10 | 1920FF+1d |  | 7 day week with NGT | 8011302 |
| 1922 | 37400.37600.40700.45500.46800.152000.556600 | Slab Formwork | 5d | 2026-09-09 | 2026-09-13 | 1921FS-2d |  | 7 day week with NGT | 8011312 |
| 1923 | 37400.37600.40700.45500.46800.152000.556700 | Slab Reinforcement | 5d | 2026-09-10 | 2026-09-14 | 1922FF+1d |  | 7 day week with NGT | 8011322 |
| 1924 | 37400.37600.40700.45500.46800.152000.556800 | Monolithic Casting | 2d | 2026-09-14 | 2026-09-15 | 1923FF+1d |  | 7 day week with NGT | 8011332 |

| ID | WBS | Task | Duration | Start | Finish | Predecessors | Constraint | Calendar | Unique_Task_ID |
| --- | --- | --- | --- | --- | --- | --- | --- | --- | --- |
| 1925 | 37400.37600.40700.45500.46800.152100 | **19th Floor Roof** | 11d | 2026-09-16 | 2026-09-26 |  | start no earlier than 2026-09-16 | 7 day week with NGT | 7999942 |
| 1926 | 37400.37600.40700.45500.46800.152100.556900 | Column and Shear Wall Reinforcement | 4d | 2026-09-16 | 2026-09-19 | 1924 |  | 7 day week with NGT | 8011342 |
| 1927 | 37400.37600.40700.45500.46800.152100.557000 | Column and Shear Wall Formwork | 4d | 2026-09-17 | 2026-09-20 | 1926FF+1d |  | 7 day week with NGT | 8011352 |
| 1928 | 37400.37600.40700.45500.46800.152100.557100 | Slab Formwork | 6d | 2026-09-19 | 2026-09-24 | 1927FS-2d |  | 7 day week with NGT | 8011362 |
| 1929 | 37400.37600.40700.45500.46800.152100.557200 | Slab Reinforcement | 5d | 2026-09-21 | 2026-09-25 | 1928FF+1d |  | 7 day week with NGT | 8011372 |
| 1930 | 37400.37600.40700.45500.46800.152100.557300 | Monolithic Casting | 4d | 2026-09-23 | 2026-09-26 | 1929FF+1d |  | 7 day week with NGT | 8011382 |
| 1931 | 37400.37600.40700.45500.46800.152200 | **20th Floor Roof** | 11d | 2026-09-27 | 2026-10-07 |  | start no earlier than 2026-09-27 | 7 day week with NGT | 7999932 |
| 1932 | 37400.37600.40700.45500.46800.152200.557400 | Column and Shear Wall Reinforcement | 4d | 2026-09-27 | 2026-09-30 | 1930 |  | 7 day week with NGT | 8011392 |
| 1933 | 37400.37600.40700.45500.46800.152200.557500 | Column and Shear Wall Formwork | 4d | 2026-09-28 | 2026-10-01 | 1932FF+1d |  | 7 day week with NGT | 8011402 |
| 1934 | 37400.37600.40700.45500.46800.152200.557600 | Slab Formwork | 6d | 2026-09-30 | 2026-10-05 | 1933FS-2d |  | 7 day week with NGT | 8011412 |
| 1935 | 37400.37600.40700.45500.46800.152200.557700 | Slab Reinforcement | 5d | 2026-10-02 | 2026-10-06 | 1934FF+1d |  | 7 day week with NGT | 8011422 |
| 1936 | 37400.37600.40700.45500.46800.152200.557800 | Monolithic Casting | 4d | 2026-10-04 | 2026-10-07 | 1935FF+1d |  | 7 day week with NGT | 8011432 |
| 1937 | 37400.37600.40700.45500.46800.152300 | **21th Floor Roof** | 11d | 2026-10-08 | 2026-10-18 |  | start no earlier than 2026-10-08 | 7 day week with NGT | 7999922 |
| 1938 | 37400.37600.40700.45500.46800.152300.557900 | Column and Shear Wall Reinforcement | 4d | 2026-10-08 | 2026-10-11 | 1936 |  | 7 day week with NGT | 8011442 |
| 1939 | 37400.37600.40700.45500.46800.152300.558000 | Column and Shear Wall Formwork | 4d | 2026-10-09 | 2026-10-12 | 1938FF+1d |  | 7 day week with NGT | 8011452 |
| 1940 | 37400.37600.40700.45500.46800.152300.558100 | Slab Formwork | 6d | 2026-10-11 | 2026-10-16 | 1939FS-2d |  | 7 day week with NGT | 8011462 |
| 1941 | 37400.37600.40700.45500.46800.152300.558200 | Slab Reinforcement | 5d | 2026-10-13 | 2026-10-17 | 1940FF+1d |  | 7 day week with NGT | 8011472 |
| 1942 | 37400.37600.40700.45500.46800.152300.558300 | Monolithic Casting | 4d | 2026-10-15 | 2026-10-18 | 1941FF+1d |  | 7 day week with NGT | 8011482 |
| 1943 | 37400.37600.40700.45500.46800.152400 | **22th Floor Roof** | 11d | 2026-10-19 | 2026-10-29 |  | start no earlier than 2026-10-19 | 7 day week with NGT | 7999912 |
| 1944 | 37400.37600.40700.45500.46800.152400.558400 | Column and Shear Wall Reinforcement | 4d | 2026-10-19 | 2026-10-22 | 1942 |  | 7 day week with NGT | 8011492 |
| 1945 | 37400.37600.40700.45500.46800.152400.558500 | Column and Shear Wall Formwork | 4d | 2026-10-20 | 2026-10-23 | 1944FF+1d |  | 7 day week with NGT | 8011502 |
| 1946 | 37400.37600.40700.45500.46800.152400.558600 | Slab Formwork | 6d | 2026-10-22 | 2026-10-27 | 1945FS-2d |  | 7 day week with NGT | 8011512 |
| 1947 | 37400.37600.40700.45500.46800.152400.558700 | Slab Reinforcement | 5d | 2026-10-24 | 2026-10-28 | 1946FF+1d |  | 7 day week with NGT | 8011522 |
| 1948 | 37400.37600.40700.45500.46800.152400.558800 | Monolithic Casting | 4d | 2026-10-26 | 2026-10-29 | 1947FF+1d |  | 7 day week with NGT | 8011532 |

| ID | WBS | Task | Duration | Start | Finish | Predecessors | Constraint | Calendar | Unique_Task_ID |
| --- | --- | --- | --- | --- | --- | --- | --- | --- | --- |
| 1949 | 37400.37600.40700.45500.46800.152500 | **23th Floor Roof** | 11d | 2026-10-30 | 2026-12-24 |  | start no earlier than 2026-10-30 | 7 day week with NGT | 7999902 |
| 1950 | 37400.37600.40700.45500.46800.152500.558900 | Column and Shear Wall Reinforcement | 4d | 2026-10-30 | 2026-12-17 | 1948 |  | 7 day week with NGT | 8011542 |
| 1951 | 37400.37600.40700.45500.46800.152500.559000 | Column and Shear Wall Formwork | 4d | 2026-10-31 | 2026-12-18 | 1950FF+1d |  | 7 day week with NGT | 8011552 |
| 1952 | 37400.37600.40700.45500.46800.152500.559100 | Slab Formwork | 6d | 2026-12-17 | 2026-12-22 | 1951FS-2d |  | 7 day week with NGT | 8011562 |
| 1953 | 37400.37600.40700.45500.46800.152500.559200 | Slab Reinforcement | 5d | 2026-12-19 | 2026-12-23 | 1952FF+1d |  | 7 day week with NGT | 8011572 |
| 1954 | 37400.37600.40700.45500.46800.152500.559300 | Monolithic Casting | 4d | 2026-12-21 | 2026-12-24 | 1953FF+1d |  | 7 day week with NGT | 8011582 |
| 1955 | 37400.37600.40700.45500.46800.152600 | **24th Floor Roof** | 11d | 2026-12-25 | 2027-01-04 |  | start no earlier than 2026-12-25 | 7 day week with NGT | 7999892 |
| 1956 | 37400.37600.40700.45500.46800.152600.559400 | Column and Shear Wall Reinforcement | 4d | 2026-12-25 | 2026-12-28 | 1954 |  | 7 day week with NGT | 8011592 |
| 1957 | 37400.37600.40700.45500.46800.152600.559500 | Column and Shear Wall Formwork | 4d | 2026-12-26 | 2026-12-29 | 1956FF+1d |  | 7 day week with NGT | 8011602 |
| 1958 | 37400.37600.40700.45500.46800.152600.559600 | Slab Formwork | 6d | 2026-12-28 | 2027-01-02 | 1957FS-2d |  | 7 day week with NGT | 8011612 |
| 1959 | 37400.37600.40700.45500.46800.152600.559700 | Slab Reinforcement | 5d | 2026-12-30 | 2027-01-03 | 1958FF+1d |  | 7 day week with NGT | 8011622 |
| 1960 | 37400.37600.40700.45500.46800.152600.559800 | Monolithic Casting | 4d | 2027-01-01 | 2027-01-04 | 1959FF+1d |  | 7 day week with NGT | 8011632 |
| 1961 | 37400.37600.40700.45500.46800.152700 | **25th Floor Roof** | 11d | 2027-01-05 | 2027-01-15 |  | start no earlier than 2027-01-05 | 7 day week with NGT | 7999882 |
| 1962 | 37400.37600.40700.45500.46800.152700.559900 | Column and Shear Wall Reinforcement | 4d | 2027-01-05 | 2027-01-08 | 1960 |  | 7 day week with NGT | 8011642 |
| 1963 | 37400.37600.40700.45500.46800.152700.560000 | Column and Shear Wall Formwork | 4d | 2027-01-06 | 2027-01-09 | 1962FF+1d |  | 7 day week with NGT | 8011652 |
| 1964 | 37400.37600.40700.45500.46800.152700.560100 | Slab Formwork | 6d | 2027-01-08 | 2027-01-13 | 1963FS-2d |  | 7 day week with NGT | 8011662 |
| 1965 | 37400.37600.40700.45500.46800.152700.560200 | Slab Reinforcement | 5d | 2027-01-10 | 2027-01-14 | 1964FF+1d |  | 7 day week with NGT | 8011672 |
| 1966 | 37400.37600.40700.45500.46800.152700.560300 | Monolithic Casting | 4d | 2027-01-12 | 2027-01-15 | 1965FF+1d |  | 7 day week with NGT | 8011682 |
| 1967 | 37400.37600.40700.45500.46800.152800 | **26th Floor Roof** | 17d | 2027-01-16 | 2027-02-01 |  | start no earlier than 2027-01-16 | 7 day week with NGT | 7999872 |
| 1968 | 37400.37600.40700.45500.46800.152800.560400 | Column and Shear Wall Reinforcement | 8d | 2027-01-16 | 2027-01-23 | 1966 |  | 7 day week with NGT | 8011692 |
| 1969 | 37400.37600.40700.45500.46800.152800.560500 | Column and Shear Wall Formwork | 7d | 2027-01-18 | 2027-01-24 | 1968FF+1d |  | 7 day week with NGT | 8011702 |
| 1970 | 37400.37600.40700.45500.46800.152800.560600 | Slab Formwork | 8d | 2027-01-23 | 2027-01-30 | 1969FS-2d |  | 7 day week with NGT | 8011712 |
| 1971 | 37400.37600.40700.45500.46800.152800.560700 | Slab Reinforcement | 8d | 2027-01-24 | 2027-01-31 | 1970FF+1d |  | 7 day week with NGT | 8011722 |
| 1972 | 37400.37600.40700.45500.46800.152800.560800 | Monolithic Casting | 4d | 2027-01-29 | 2027-02-01 | 1971FF+1d |  | 7 day week with NGT | 8011732 |

| ID | WBS | Task | Duration | Start | Finish | Predecessors | Constraint | Calendar | Unique_Task_ID |
| --- | --- | --- | --- | --- | --- | --- | --- | --- | --- |
| 1973 | 37400.37600.40700.45500.46800.152900 | **27th Floor Roof** | 11d | 2027-02-02 | 2027-02-12 |  | start no earlier than 2027-02-02 | 7 day week with NGT | 7999862 |
| 1974 | 37400.37600.40700.45500.46800.152900.560900 | Column and Shear Wall Reinforcement | 4d | 2027-02-02 | 2027-02-05 | 1972 |  | 7 day week with NGT | 8011742 |
| 1975 | 37400.37600.40700.45500.46800.152900.561000 | Column and Shear Wall Formwork | 4d | 2027-02-03 | 2027-02-06 | 1974FF+1d |  | 7 day week with NGT | 8011752 |
| 1976 | 37400.37600.40700.45500.46800.152900.561100 | Slab Formwork | 6d | 2027-02-05 | 2027-02-10 | 1975FS-2d |  | 7 day week with NGT | 8011762 |
| 1977 | 37400.37600.40700.45500.46800.152900.561200 | Slab Reinforcement | 5d | 2027-02-07 | 2027-02-11 | 1976FF+1d |  | 7 day week with NGT | 8011772 |
| 1978 | 37400.37600.40700.45500.46800.152900.561300 | Monolithic Casting | 4d | 2027-02-09 | 2027-02-12 | 1977FF+1d |  | 7 day week with NGT | 8011782 |
| 1979 | 37400.37600.40700.45500.46800.153000 | **28th Floor Roof** | 11d | 2027-02-13 | 2027-02-23 |  | start no earlier than 2027-02-13 | 7 day week with NGT | 7999852 |
| 1980 | 37400.37600.40700.45500.46800.153000.561400 | Column and Shear Wall Reinforcement | 4d | 2027-02-13 | 2027-02-16 | 1978 |  | 7 day week with NGT | 8011792 |
| 1981 | 37400.37600.40700.45500.46800.153000.561500 | Column and Shear Wall Formwork | 4d | 2027-02-14 | 2027-02-17 | 1980FF+1d |  | 7 day week with NGT | 8011802 |
| 1982 | 37400.37600.40700.45500.46800.153000.561600 | Slab Formwork | 6d | 2027-02-16 | 2027-02-21 | 1981FS-2d |  | 7 day week with NGT | 8011812 |
| 1983 | 37400.37600.40700.45500.46800.153000.561700 | Slab Reinforcement | 5d | 2027-02-18 | 2027-02-22 | 1982FF+1d |  | 7 day week with NGT | 8011822 |
| 1984 | 37400.37600.40700.45500.46800.153000.561800 | Monolithic Casting | 4d | 2027-02-20 | 2027-02-23 | 1983FF+1d |  | 7 day week with NGT | 8011832 |
| 1985 | 37400.37600.40700.45500.46800.153100 | **29th Floor Roof** | 11d | 2027-02-24 | 2027-03-06 |  | start no earlier than 2027-02-24 | 7 day week with NGT | 7999842 |
| 1986 | 37400.37600.40700.45500.46800.153100.561900 | Column and Shear Wall Reinforcement | 4d | 2027-02-24 | 2027-02-27 | 1984 |  | 7 day week with NGT | 8011842 |
| 1987 | 37400.37600.40700.45500.46800.153100.562000 | Column and Shear Wall Formwork | 4d | 2027-02-25 | 2027-02-28 | 1986FF+1d |  | 7 day week with NGT | 8011852 |
| 1988 | 37400.37600.40700.45500.46800.153100.562100 | Slab Formwork | 6d | 2027-02-27 | 2027-03-04 | 1987FS-2d |  | 7 day week with NGT | 8011862 |
| 1989 | 37400.37600.40700.45500.46800.153100.562200 | Slab Reinforcement | 5d | 2027-03-01 | 2027-03-05 | 1988FF+1d |  | 7 day week with NGT | 8011872 |
| 1990 | 37400.37600.40700.45500.46800.153100.562300 | Monolithic Casting | 4d | 2027-03-03 | 2027-03-06 | 1989FF+1d |  | 7 day week with NGT | 8011882 |
| 1991 | 37400.37600.40700.45500.46800.153200 | **30th Floor Roof** | 11d | 2027-03-07 | 2027-03-17 |  | start no earlier than 2027-03-07 | 7 day week with NGT | 135205 |
| 1992 | 37400.37600.40700.45500.46800.153200.562400 | Column and Shear Wall Reinforcement | 4d | 2027-03-07 | 2027-03-10 | 1990 |  | 7 day week with NGT | 135215 |
| 1993 | 37400.37600.40700.45500.46800.153200.562500 | Column and Shear Wall Formwork | 4d | 2027-03-08 | 2027-03-11 | 1992FF+1d |  | 7 day week with NGT | 135225 |
| 1994 | 37400.37600.40700.45500.46800.153200.562600 | Slab Formwork | 6d | 2027-03-10 | 2027-03-15 | 1993FS-2d |  | 7 day week with NGT | 135235 |
| 1995 | 37400.37600.40700.45500.46800.153200.562700 | Slab Reinforcement | 5d | 2027-03-12 | 2027-03-16 | 1994FF+1d |  | 7 day week with NGT | 135245 |
| 1996 | 37400.37600.40700.45500.46800.153200.562800 | Monolithic Casting | 4d | 2027-03-14 | 2027-03-17 | 1995FF+1d |  | 7 day week with NGT | 135255 |

| ID | WBS | Task | Duration | Start | Finish | Predecessors | Constraint | Calendar | Unique_Task_ID |
| --- | --- | --- | --- | --- | --- | --- | --- | --- | --- |
| 1997 | 37400.37600.40700.45500.46800.153300 | **31 th Floor Roof** | 17d | 2027-03-18 | 2027-04-03 |  | start no earlier than 2027-03-18 | 7 day week with NGT | 7999832 |
| 1998 | 37400.37600.40700.45500.46800.153300.562900 | Column and Shear Wall Reinforcement | 7d | 2027-03-18 | 2027-03-24 | 1996 |  | 7 day week with NGT | 8011892 |
| 1999 | 37400.37600.40700.45500.46800.153300.563000 | Column and Shear Wall Formwork | 7d | 2027-03-19 | 2027-03-25 | 1998FF+1d |  | 7 day week with NGT | 8011902 |
| 2000 | 37400.37600.40700.45500.46800.153300.563100 | Slab Formwork | 9d | 2027-03-24 | 2027-04-01 | 1999FS-2d |  | 7 day week with NGT | 8011912 |
| 2001 | 37400.37600.40700.45500.46800.153300.563200 | Slab Reinforcement | 7d | 2027-03-27 | 2027-04-02 | 2000FF+1d |  | 7 day week with NGT | 8011922 |
| 2002 | 37400.37600.40700.45500.46800.153300.563300 | Monolithic Casting | 4d | 2027-03-31 | 2027-04-03 | 2001FF+1d |  | 7 day week with NGT | 8011932 |
| 2003 | 37400.37600.40700.45500.50300 | **Post Pour Activitis** | 353d | 2026-03-10 | 2027-04-11 |  | start no earlier than 2026-03-10 | 7 day week with NGT | 7997872 |
| 2004 | 37400.37600.40700.45500.50300.342900 | 1st Floor | 5d | 2026-03-10 | 2026-03-14 | 1834FF |  | 7 day week with NGT | 8001872 |
| 2005 | 37400.37600.40700.45500.50300.343000 | 2nd Floor | 5d | 2026-03-22 | 2026-03-26 | 1840FF |  | 7 day week with NGT | 8001882 |
| 2006 | 37400.37600.40700.45500.50300.343100 | 3rd Floor | 5d | 2026-04-03 | 2026-04-07 | 1846FF |  | 7 day week with NGT | 8001892 |
| 2007 | 37400.37600.40700.45500.50300.343200 | 4th Floor | 5d | 2026-04-15 | 2026-04-19 | 1852FF |  | 7 day week with NGT | 8001902 |
| 2008 | 37400.37600.40700.45500.50300.343300 | 5th Floor | 5d | 2026-04-27 | 2026-05-01 | 1858FF |  | 7 day week with NGT | 8001912 |
| 2009 | 37400.37600.40700.45500.50300.343400 | 6th Floor | 5d | 2026-05-09 | 2026-05-14 | 1864FF+0.25d |  | 7 day week with NGT | 8001922 |
| 2010 | 37400.37600.40700.45500.50300.343500 | 7th Floor | 5d | 2026-05-21 | 2026-05-26 | 1870FF+0.25d |  | 7 day week with NGT | 8001932 |
| 2011 | 37400.37600.40700.45500.50300.343600 | 8th Floor | 5d | 2026-06-02 | 2026-06-07 | 1876FF+0.25d |  | 7 day week with NGT | 8001942 |
| 2012 | 37400.37600.40700.45500.50300.343700 | 9th Floor | 5d | 2026-06-14 | 2026-06-19 | 1882FF+0.25d |  | 7 day week with NGT | 8001952 |
| 2013 | 37400.37600.40700.45500.50300.343800 | 10th Floor | 5d | 2026-06-26 | 2026-07-01 | 1888FF+0.25d |  | 7 day week with NGT | 8001962 |
| 2014 | 37400.37600.40700.45500.50300.343900 | 11th Floor | 5d | 2026-07-08 | 2026-07-13 | 1894FF+0.25d |  | 7 day week with NGT | 8001972 |
| 2015 | 37400.37600.40700.45500.50300.344000 | 12th Floor | 5d | 2026-07-20 | 2026-07-25 | 1900FF+0.25d |  | 7 day week with NGT | 8001982 |
| 2016 | 37400.37600.40700.45500.50300.344100 | 13th Floor | 5d | 2026-08-01 | 2026-08-06 | 1906FF+0.25d |  | 7 day week with NGT | 8001992 |
| 2017 | 37400.37600.40700.45500.50300.344200 | 14th floor | 5d | 2026-08-18 | 2026-08-23 | 1912FF+0.25d |  | 7 day week with NGT | 8002002 |
| 2018 | 37400.37600.40700.45500.50300.344300 | 15th Floor | 5d | 2026-08-30 | 2026-09-04 | 1918FF+0.25d |  | 7 day week with NGT | 8002012 |
| 2019 | 37400.37600.40700.45500.50300.344400 | 16th Floor | 5d | 2026-09-11 | 2026-09-16 | 1924FF+0.25d |  | 7 day week with NGT | 8002022 |
| 2020 | 37400.37600.40700.45500.50300.344500 | 17th Floor | 5d | 2026-09-22 | 2026-09-27 | 1930FF+0.25d |  | 7 day week with NGT | 8002032 |
| 2021 | 37400.37600.40700.45500.50300.344600 | 18th Floor | 5d | 2026-10-03 | 2026-10-08 | 1936FF+0.25d |  | 7 day week with NGT | 8002042 |
| 2022 | 37400.37600.40700.45500.50300.344700 | 19th Floor | 5d | 2026-10-14 | 2026-10-19 | 1942FF+0.25d |  | 7 day week with NGT | 8002052 |
| 2023 | 37400.37600.40700.45500.50300.344800 | 20th Floor | 5d | 2026-10-25 | 2026-10-30 | 1948FF+0.25d |  | 7 day week with NGT | 8002062 |
| 2024 | 37400.37600.40700.45500.50300.344900 | 21th Floor | 5d | 2026-12-20 | 2026-12-25 | 1954FF+0.25d |  | 7 day week with NGT | 8002072 |
| 2025 | 37400.37600.40700.45500.50300.345000 | 22th Floor | 5d | 2026-12-31 | 2027-01-05 | 1960FF+0.25d |  | 7 day week with NGT | 8002082 |
| 2026 | 37400.37600.40700.45500.50300.345100 | 23rd Floor | 5d | 2027-01-11 | 2027-01-16 | 1966FF+0.25d |  | 7 day week with NGT | 8002092 |
| 2027 | 37400.37600.40700.45500.50300.345200 | 24th Floor | 5d | 2027-01-28 | 2027-02-02 | 1972FF+0.25d |  | 7 day week with NGT | 8002102 |
| 2028 | 37400.37600.40700.45500.50300.345300 | 25th Floor | 5d | 2027-02-08 | 2027-02-13 | 1978FF+0.25d |  | 7 day week with NGT | 8002112 |
| 2029 | 37400.37600.40700.45500.50300.345400 | 26th Floor | 5d | 2027-02-19 | 2027-02-23 | 1984FF |  | 7 day week with NGT | 8002122 |
| 2030 | 37400.37600.40700.45500.50300.345500 | 27th Floor | 5d | 2027-03-02 | 2027-03-06 | 1990FF |  | 7 day week with NGT | 8002132 |
| 2031 | 37400.37600.40700.45500.50300.345600 | 28th Floor | 5d | 2027-03-13 | 2027-03-17 | 1996FF |  | 7 day week with NGT | 8002142 |
| 2032 | 37400.37600.40700.45500.50300.345700 | 29th Floor | 5d | 2027-03-30 | 2027-04-03 | 2002FF |  | 7 day week with NGT | 8002152 |
| 2033 | 37400.37600.40700.45500.50300.345800 | 30th Floor | 5d | 2027-04-03 | 2027-04-07 | 2032FS-1d |  | 7 day week with NGT | 135265 |
| 2034 | 37400.37600.40700.45500.50300.345900 | 31st Floor | 5d | 2027-04-07 | 2027-04-11 | 2033FS-1d |  | 7 day week with NGT | 8002162 |

| ID | WBS | Task | Duration | Start | Finish | Predecessors | Constraint | Calendar | Unique_Task_ID |
| --- | --- | --- | --- | --- | --- | --- | --- | --- | --- |
| 2035 | 37400.37600.40700.42600 | **Finishing Works** | 717d | 2025-12-01 | 2028-03-01 |  | start no earlier than 2025-12-01 | 7 day week with NGT | 7997732 |
| 2036 | 37400.37600.40700.42600.43500 | **Flat Finishing** | 615d | 2025-12-01 | 2027-10-06 |  | start no earlier than 2025-12-01 | 7 day week with NGT | 7997762 |
| 2037 | 37400.37600.40700.42600.43500.215200 | **Podium** | 85d | 2026-01-23 | 2026-04-17 |  | start no earlier than 2026-01-23 | 7 day week with NGT | 8000262 |
| 2038 | 37400.37600.40700.42600.43500.215200.563400 | Masonary Works | 30d | 2026-01-23 | 2026-02-21 | 1815FS+30d |  | 7 day week with NGT | 8011942 |
| 2039 | 37400.37600.40700.42600.43500.215200.563500 | Plaster Works | 20d | 2026-02-07 | 2026-02-26 | 2038SS+15d |  | 7 day week with NGT | 8011952 |
| 2040 | 37400.37600.40700.42600.43500.215200.563600 | White Wash | 18d | 2026-02-22 | 2026-03-11 | 1805, 2039SS+15d |  | 7 day week with NGT | 8011962 |
| 2041 | 37400.37600.40700.42600.43500.215200.563700 | VDF | 25d | 2026-03-24 | 2026-04-17 | 1806, 2040 |  | 7 day week with NGT | 135695 |
| 2042 | 37400.37600.40700.42600.43500.215100 | **First Floor** | 73d | 2026-03-15 | 2026-05-26 |  | start no earlier than 2026-03-15 | 7 day week with NGT | 8000252 |
| 2043 | 37400.37600.40700.42600.43500.215100.563800 | Masonary Works | 30d | 2026-03-15 | 2026-04-13 | 2004 |  | 7 day week with NGT | 135705 |
| 2044 | 37400.37600.40700.42600.43500.215100.563900 | Plaster Works | 20d | 2026-03-30 | 2026-04-18 | 2043SS+15d |  | 7 day week with NGT | 135715 |
| 2045 | 37400.37600.40700.42600.43500.215100.564000 | White Wash | 18d | 2026-04-14 | 2026-05-01 | 2044SS+15d |  | 7 day week with NGT | 135725 |
| 2046 | 37400.37600.40700.42600.43500.215100.564100 | VDF | 25d | 2026-05-02 | 2026-05-26 | 2041, 2045 |  | 7 day week with NGT | 135735 |
| 2047 | 37400.37600.40700.42600.43500.70600 | **Second Floor** | 115d | 2026-03-27 | 2026-07-19 |  | start no earlier than 2026-03-27 | 7 day week with NGT | 7998222 |
| 2048 | 37400.37600.40700.42600.43500.70600.564200 | Blockwork | 10d | 2026-03-27 | 2026-04-05 | 2005 |  | 7 day week with NGT | 8011972 |
| 2049 | 37400.37600.40700.42600.43500.70600.564300 | Internal Plumbing Works | 6d | 2026-04-06 | 2026-04-11 | 2048 |  | 7 day week with NGT | 8011982 |
| 2050 | 37400.37600.40700.42600.43500.70600.564400 | Waterproofing Works | 10d | 2026-04-08 | 2026-04-17 | 2049SS+2d |  | 7 day week with NGT | 8011992 |
| 2051 | 37400.37600.40700.42600.43500.70600.564500 | PCC | 8d | 2026-04-20 | 2026-04-27 | 2050, 2053SS |  | 7 day week with NGT | 8012002 |
| 2052 | 37400.37600.40700.42600.43500.70600.564600 | Electrical Wiring works | 12d | 2026-04-08 | 2026-04-19 | 2050SS |  | 7 day week with NGT | 8012012 |
| 2053 | 37400.37600.40700.42600.43500.70600.564700 | Internal Plaster Works | 9d | 2026-04-20 | 2026-04-28 | 2049, 2050, 2052 |  | 7 day week with NGT | 8012022 |
| 2054 | 37400.37600.40700.42600.43500.70600.564800 | Toilet Dado Works | 9d | 2026-04-29 | 2026-05-07 | 2049, 2050, 2052, 2053 |  | 7 day week with NGT | 8012032 |
| 2055 | 37400.37600.40700.42600.43500.70600.564900 | Toilet Flooring Works | 7d | 2026-05-08 | 2026-05-14 | 2051, 2054 |  | 7 day week with NGT | 8012042 |
| 2056 | 37400.37600.40700.42600.43500.70600.565000 | Living Dining Flooring | 15d | 2026-05-15 | 2026-05-29 | 2055 |  | 7 day week with NGT | 8012052 |
| 2057 | 37400.37600.40700.42600.43500.70600.565100 | Temporary Door Fixing | 9d | 2026-04-06 | 2026-04-14 | 2048 |  | 7 day week with NGT | 8012062 |
| 2058 | 37400.37600.40700.42600.43500.70600.565200 | Aluminium Door Widnow Fixing | 15d | 2026-05-30 | 2026-06-13 | 2056, 2057 |  | 7 day week with NGT | 8012072 |
| 2059 | 37400.37600.40700.42600.43500.70600.565300 | Rehung Door Fixing | 8d | 2026-06-14 | 2026-06-21 | 2058 |  | 7 day week with NGT | 8012082 |
| 2060 | 37400.37600.40700.42600.43500.70600.565400 | Putty Primer coat | 6d | 2026-06-22 | 2026-06-27 | 2059 |  | 7 day week with NGT | 8012092 |
| 2061 | 37400.37600.40700.42600.43500.70600.565500 | Painting First Coat | 12d | 2026-06-28 | 2026-07-09 | 2050, 2052, 2059, 2060 |  | 7 day week with NGT | 8012102 |
| 2062 | 37400.37600.40700.42600.43500.70600.565600 | False ceiling works | 10d | 2026-07-10 | 2026-07-19 | 2061 |  | 7 day week with NGT | 8012112 |

| ID | WBS | Task | Duration | Start | Finish | Predecessors | Constraint | Calendar | Unique_Task_ID |
| --- | --- | --- | --- | --- | --- | --- | --- | --- | --- |
| 2063 | 37400.37600.40700.42600.43500.70700 | **Third Floor** | 135d | 2026-04-08 | 2026-08-20 |  | start no earlier than 2026-04-08 | 7 day week with NGT | 7998232 |
| 2064 | 37400.37600.40700.42600.43500.70700.565700 | Blockwork | 10d | 2026-04-08 | 2026-04-17 | 2006, 2048 |  | 7 day week with NGT | 8012122 |
| 2065 | 37400.37600.40700.42600.43500.70700.565800 | Internal Plumbing Works | 6d | 2026-04-18 | 2026-04-23 | 2064 |  | 7 day week with NGT | 8012132 |
| 2066 | 37400.37600.40700.42600.43500.70700.565900 | Waterproofing Works | 10d | 2026-04-20 | 2026-04-29 | 2065SS+2d |  | 7 day week with NGT | 8012142 |
| 2067 | 37400.37600.40700.42600.43500.70700.566000 | PCC | 8d | 2026-05-02 | 2026-05-09 | 2066, 2069SS |  | 7 day week with NGT | 8012152 |
| 2068 | 37400.37600.40700.42600.43500.70700.566100 | Electrical Wiring works | 12d | 2026-04-20 | 2026-05-01 | 2066SS |  | 7 day week with NGT | 8012162 |
| 2069 | 37400.37600.40700.42600.43500.70700.566200 | Internal Plaster Works | 9d | 2026-05-02 | 2026-05-10 | 2065, 2066, 2068 |  | 7 day week with NGT | 8012172 |
| 2070 | 37400.37600.40700.42600.43500.70700.566300 | Toilet Dado Works | 9d | 2026-05-11 | 2026-05-19 | 2065, 2066, 2068, 2069 |  | 7 day week with NGT | 8012182 |
| 2071 | 37400.37600.40700.42600.43500.70700.566400 | Toilet Flooring Works | 7d | 2026-05-20 | 2026-05-26 | 2067, 2070 |  | 7 day week with NGT | 8012192 |
| 2072 | 37400.37600.40700.42600.43500.70700.566500 | Living Dining Flooring | 15d | 2026-05-27 | 2026-06-10 | 2071 |  | 7 day week with NGT | 8012202 |
| 2073 | 37400.37600.40700.42600.43500.70700.566600 | Temporary Door Fixing | 9d | 2026-04-18 | 2026-04-26 | 2064 |  | 7 day week with NGT | 8012212 |
| 2074 | 37400.37600.40700.42600.43500.70700.566700 | Aluminium Door Widnow Fixing | 35d | 2026-06-11 | 2026-07-15 | 2072, 2073 |  | 7 day week with NGT | 8012222 |
| 2075 | 37400.37600.40700.42600.43500.70700.566800 | Rehung Door Fixing | 8d | 2026-07-16 | 2026-07-23 | 2074 |  | 7 day week with NGT | 8012232 |
| 2076 | 37400.37600.40700.42600.43500.70700.566900 | Putty Primer coat | 6d | 2026-07-24 | 2026-07-29 | 2075 |  | 7 day week with NGT | 8012242 |
| 2077 | 37400.37600.40700.42600.43500.70700.567000 | Painting First Coat | 12d | 2026-07-30 | 2026-08-10 | 2066, 2068, 2075, 2076 |  | 7 day week with NGT | 8012252 |
| 2078 | 37400.37600.40700.42600.43500.70700.567100 | False ceiling works | 10d | 2026-08-11 | 2026-08-20 | 2062, 2077 |  | 7 day week with NGT | 8012262 |
| 2079 | 37400.37600.40700.42600.43500.70800 | **Fourth Floor** | 133d | 2026-04-20 | 2026-08-30 |  | start no earlier than 2026-04-20 | 7 day week with NGT | 7998242 |
| 2080 | 37400.37600.40700.42600.43500.70800.567200 | Blockwork | 10d | 2026-04-20 | 2026-04-29 | 2007, 2064 |  | 7 day week with NGT | 8012272 |
| 2081 | 37400.37600.40700.42600.43500.70800.567300 | Internal Plumbing Works | 6d | 2026-04-30 | 2026-05-05 | 2080 |  | 7 day week with NGT | 8012282 |
| 2082 | 37400.37600.40700.42600.43500.70800.567400 | Waterproofing Works | 10d | 2026-05-02 | 2026-05-11 | 2081SS+2d |  | 7 day week with NGT | 8012292 |
| 2083 | 37400.37600.40700.42600.43500.70800.567500 | PCC | 8d | 2026-05-14 | 2026-05-21 | 2082, 2085SS |  | 7 day week with NGT | 8012302 |
| 2084 | 37400.37600.40700.42600.43500.70800.567600 | Electrical Wiring works | 12d | 2026-05-02 | 2026-05-13 | 2082SS |  | 7 day week with NGT | 8012312 |
| 2085 | 37400.37600.40700.42600.43500.70800.567700 | Internal Plaster Works | 9d | 2026-05-14 | 2026-05-22 | 2081, 2082, 2084 |  | 7 day week with NGT | 8012322 |
| 2086 | 37400.37600.40700.42600.43500.70800.567800 | Toilet Dado Works | 9d | 2026-05-23 | 2026-05-31 | 2081, 2082, 2084, 2085 |  | 7 day week with NGT | 8012332 |
| 2087 | 37400.37600.40700.42600.43500.70800.567900 | Toilet Flooring Works | 7d | 2026-06-01 | 2026-06-07 | 2083, 2086 |  | 7 day week with NGT | 8012342 |
| 2088 | 37400.37600.40700.42600.43500.70800.568000 | Living Dining Flooring | 15d | 2026-06-08 | 2026-06-22 | 2087 |  | 7 day week with NGT | 8012352 |
| 2089 | 37400.37600.40700.42600.43500.70800.568100 | Temporary Door Fixing | 9d | 2026-04-30 | 2026-05-08 | 2080 |  | 7 day week with NGT | 8012362 |
| 2090 | 37400.37600.40700.42600.43500.70800.568200 | Aluminium Door Widnow Fixing | 15d | 2026-06-23 | 2026-07-07 | 2088, 2089 |  | 7 day week with NGT | 8012372 |
| 2091 | 37400.37600.40700.42600.43500.70800.568300 | Rehung Door Fixing | 8d | 2026-07-08 | 2026-07-15 | 2090 |  | 7 day week with NGT | 8012382 |
| 2092 | 37400.37600.40700.42600.43500.70800.568400 | Putty Primer coat | 6d | 2026-07-16 | 2026-07-21 | 2091 |  | 7 day week with NGT | 8012392 |
| 2093 | 37400.37600.40700.42600.43500.70800.568500 | Painting First Coat | 12d | 2026-07-22 | 2026-08-02 | 2082, 2084, 2091, 2092 |  | 7 day week with NGT | 8012402 |
| 2094 | 37400.37600.40700.42600.43500.70800.568600 | False ceiling works | 10d | 2026-08-21 | 2026-08-30 | 2078, 2093 |  | 7 day week with NGT | 8012412 |

| ID | WBS | Task | Duration | Start | Finish | Predecessors | Constraint | Calendar | Unique_Task_ID |
| --- | --- | --- | --- | --- | --- | --- | --- | --- | --- |
| 2095 | 37400.37600.40700.42600.43500.70900 | **Fifth Floor** | 131d | 2026-05-02 | 2026-09-09 |  | start no earlier than 2026-05-02 | 7 day week with NGT | 7998252 |
| 2096 | 37400.37600.40700.42600.43500.70900.568700 | Blockwork | 10d | 2026-05-02 | 2026-05-11 | 2008, 2080 |  | 7 day week with NGT | 8012422 |
| 2097 | 37400.37600.40700.42600.43500.70900.568800 | Internal Plumbing Works | 6d | 2026-05-12 | 2026-05-17 | 2096 |  | 7 day week with NGT | 8012432 |
| 2098 | 37400.37600.40700.42600.43500.70900.568900 | Waterproofing Works | 10d | 2026-05-14 | 2026-05-23 | 2097SS+2d |  | 7 day week with NGT | 8012442 |
| 2099 | 37400.37600.40700.42600.43500.70900.569000 | PCC | 8d | 2026-05-26 | 2026-06-02 | 2098, 2101SS |  | 7 day week with NGT | 8012452 |
| 2100 | 37400.37600.40700.42600.43500.70900.569100 | Electrical Wiring works | 12d | 2026-05-14 | 2026-05-25 | 2098SS |  | 7 day week with NGT | 8012462 |
| 2101 | 37400.37600.40700.42600.43500.70900.569200 | Internal Plaster Works | 9d | 2026-05-26 | 2026-06-03 | 2097, 2098, 2100 |  | 7 day week with NGT | 8012472 |
| 2102 | 37400.37600.40700.42600.43500.70900.569300 | Toilet Dado Works | 9d | 2026-06-04 | 2026-06-12 | 2097, 2098, 2100, 2101 |  | 7 day week with NGT | 8012482 |
| 2103 | 37400.37600.40700.42600.43500.70900.569400 | Toilet Flooring Works | 7d | 2026-06-13 | 2026-06-19 | 2099, 2102 |  | 7 day week with NGT | 8012492 |
| 2104 | 37400.37600.40700.42600.43500.70900.569500 | Living Dining Flooring | 15d | 2026-06-20 | 2026-07-04 | 2103 |  | 7 day week with NGT | 8012502 |
| 2105 | 37400.37600.40700.42600.43500.70900.569600 | Temporary Door Fixing | 9d | 2026-05-12 | 2026-05-20 | 2096 |  | 7 day week with NGT | 8012512 |
| 2106 | 37400.37600.40700.42600.43500.70900.569700 | Aluminium Door Widnow Fixing | 15d | 2026-07-05 | 2026-07-19 | 2104, 2105 |  | 7 day week with NGT | 8012522 |
| 2107 | 37400.37600.40700.42600.43500.70900.569800 | Rehung Door Fixing | 8d | 2026-07-20 | 2026-07-27 | 2106 |  | 7 day week with NGT | 8012532 |
| 2108 | 37400.37600.40700.42600.43500.70900.569900 | Putty Primer coat | 6d | 2026-07-28 | 2026-08-02 | 2107 |  | 7 day week with NGT | 8012542 |
| 2109 | 37400.37600.40700.42600.43500.70900.570000 | Painting First Coat | 12d | 2026-08-03 | 2026-08-14 | 2098, 2100, 2107, 2108 |  | 7 day week with NGT | 8012552 |
| 2110 | 37400.37600.40700.42600.43500.70900.570100 | False ceiling works | 10d | 2026-08-31 | 2026-09-09 | 2094, 2109 |  | 7 day week with NGT | 8012562 |
| 2111 | 37400.37600.40700.42600.43500.71000 | **Sixth Floor** | 128.75d | 2026-05-14 | 2026-09-19 |  | start no earlier than 2026-05-14 | 7 day week with NGT | 7998262 |
| 2112 | 37400.37600.40700.42600.43500.71000.570200 | Blockwork | 10d | 2026-05-14 | 2026-05-24 | 2009, 2096 |  | 7 day week with NGT | 8012572 |
| 2113 | 37400.37600.40700.42600.43500.71000.570300 | Internal Plumbing Works | 6d | 2026-05-24 | 2026-05-30 | 2112 |  | 7 day week with NGT | 8012582 |
| 2114 | 37400.37600.40700.42600.43500.71000.570400 | Waterproofing Works | 10d | 2026-05-26 | 2026-06-05 | 2113SS+2d |  | 7 day week with NGT | 8012592 |
| 2115 | 37400.37600.40700.42600.43500.71000.570500 | PCC | 8d | 2026-06-07 | 2026-06-15 | 2114, 2117SS |  | 7 day week with NGT | 8012602 |
| 2116 | 37400.37600.40700.42600.43500.71000.570600 | Electrical Wiring works | 12d | 2026-05-26 | 2026-06-07 | 2114SS |  | 7 day week with NGT | 8012612 |
| 2117 | 37400.37600.40700.42600.43500.71000.570700 | Internal Plaster Works | 9d | 2026-06-07 | 2026-06-16 | 2113, 2114, 2116 |  | 7 day week with NGT | 8012622 |
| 2118 | 37400.37600.40700.42600.43500.71000.570800 | Toilet Dado Works | 9d | 2026-06-16 | 2026-06-25 | 2113, 2114, 2116, 2117 |  | 7 day week with NGT | 8012632 |
| 2119 | 37400.37600.40700.42600.43500.71000.570900 | Toilet Flooring Works | 7d | 2026-06-25 | 2026-07-02 | 2115, 2118 |  | 7 day week with NGT | 8012642 |
| 2120 | 37400.37600.40700.42600.43500.71000.571000 | Living Dining Flooring | 15d | 2026-07-02 | 2026-07-17 | 2119 |  | 7 day week with NGT | 8012652 |
| 2121 | 37400.37600.40700.42600.43500.71000.571100 | Temporary Door Fixing | 9d | 2026-05-24 | 2026-06-02 | 2112 |  | 7 day week with NGT | 8012662 |
| 2122 | 37400.37600.40700.42600.43500.71000.571200 | Aluminium Door Widnow Fixing | 15d | 2026-07-17 | 2026-08-01 | 2120, 2121 |  | 7 day week with NGT | 8012672 |
| 2123 | 37400.37600.40700.42600.43500.71000.571300 | Rehung Door Fixing | 8d | 2026-08-01 | 2026-08-09 | 2122 |  | 7 day week with NGT | 8012682 |
| 2124 | 37400.37600.40700.42600.43500.71000.571400 | Putty Primer coat | 6d | 2026-08-09 | 2026-08-15 | 2123 |  | 7 day week with NGT | 8012692 |
| 2125 | 37400.37600.40700.42600.43500.71000.571500 | Painting First Coat | 12d | 2026-08-15 | 2026-08-27 | 2114, 2116, 2123, 2124 |  | 7 day week with NGT | 8012702 |
| 2126 | 37400.37600.40700.42600.43500.71000.571600 | False ceiling works | 10d | 2026-09-10 | 2026-09-19 | 2110, 2125 |  | 7 day week with NGT | 8012712 |

| ID | WBS | Task | Duration | Start | Finish | Predecessors | Constraint | Calendar | Unique_Task_ID |
| --- | --- | --- | --- | --- | --- | --- | --- | --- | --- |
| 2127 | 37400.37600.40700.42600.43500.71100 | **Seventh Floor** | 126.75d | 2026-05-26 | 2026-09-29 |  | start no earlier than 2026-05-26 | 7 day week with NGT | 7998272 |
| 2128 | 37400.37600.40700.42600.43500.71100.571700 | Blockwork | 10d | 2026-05-26 | 2026-06-05 | 2010, 2112 |  | 7 day week with NGT | 8012722 |
| 2129 | 37400.37600.40700.42600.43500.71100.571800 | Internal Plumbing Works | 6d | 2026-06-05 | 2026-06-11 | 2128 |  | 7 day week with NGT | 8012732 |
| 2130 | 37400.37600.40700.42600.43500.71100.571900 | Waterproofing Works | 10d | 2026-06-07 | 2026-06-17 | 2129SS+2d |  | 7 day week with NGT | 8012742 |
| 2131 | 37400.37600.40700.42600.43500.71100.572000 | PCC | 8d | 2026-06-19 | 2026-06-27 | 2130, 2133SS |  | 7 day week with NGT | 8012752 |
| 2132 | 37400.37600.40700.42600.43500.71100.572100 | Electrical Wiring works | 12d | 2026-06-07 | 2026-06-19 | 2130SS |  | 7 day week with NGT | 8012762 |
| 2133 | 37400.37600.40700.42600.43500.71100.572200 | Internal Plaster Works | 9d | 2026-06-19 | 2026-06-28 | 2129, 2130, 2132 |  | 7 day week with NGT | 8012772 |
| 2134 | 37400.37600.40700.42600.43500.71100.572300 | Toilet Dado Works | 9d | 2026-06-28 | 2026-07-07 | 2129, 2130, 2132, 2133 |  | 7 day week with NGT | 8012782 |
| 2135 | 37400.37600.40700.42600.43500.71100.572400 | Toilet Flooring Works | 7d | 2026-07-07 | 2026-07-14 | 2131, 2134 |  | 7 day week with NGT | 8012792 |
| 2136 | 37400.37600.40700.42600.43500.71100.572500 | Living Dining Flooring | 15d | 2026-07-14 | 2026-07-29 | 2135 |  | 7 day week with NGT | 8012802 |
| 2137 | 37400.37600.40700.42600.43500.71100.572600 | Temporary Door Fixing | 9d | 2026-06-05 | 2026-06-14 | 2128 |  | 7 day week with NGT | 8012812 |
| 2138 | 37400.37600.40700.42600.43500.71100.572700 | Aluminium Door Widnow Fixing | 15d | 2026-07-29 | 2026-08-13 | 2136, 2137 |  | 7 day week with NGT | 8012822 |
| 2139 | 37400.37600.40700.42600.43500.71100.572800 | Rehung Door Fixing | 8d | 2026-08-13 | 2026-08-21 | 2138 |  | 7 day week with NGT | 8012832 |
| 2140 | 37400.37600.40700.42600.43500.71100.572900 | Putty Primer coat | 6d | 2026-08-21 | 2026-08-27 | 2139 |  | 7 day week with NGT | 8012842 |
| 2141 | 37400.37600.40700.42600.43500.71100.573000 | Painting First Coat | 12d | 2026-08-27 | 2026-09-08 | 2130, 2132, 2139, 2140 |  | 7 day week with NGT | 8012852 |
| 2142 | 37400.37600.40700.42600.43500.71100.573100 | False ceiling works | 10d | 2026-09-20 | 2026-09-29 | 2126, 2141 |  | 7 day week with NGT | 8012862 |
| 2143 | 37400.37600.40700.42600.43500.71200 | **Eighth Floor** | 124.75d | 2026-06-07 | 2026-10-09 |  | start no earlier than 2026-06-07 | 7 day week with NGT | 7998282 |
| 2144 | 37400.37600.40700.42600.43500.71200.573200 | Blockwork | 10d | 2026-06-07 | 2026-06-17 | 2011, 2128 |  | 7 day week with NGT | 8012872 |
| 2145 | 37400.37600.40700.42600.43500.71200.573300 | Internal Plumbing Works | 6d | 2026-06-17 | 2026-06-23 | 2144 |  | 7 day week with NGT | 8012882 |
| 2146 | 37400.37600.40700.42600.43500.71200.573400 | Waterproofing Works | 10d | 2026-06-19 | 2026-06-29 | 2145SS+2d |  | 7 day week with NGT | 8012892 |
| 2147 | 37400.37600.40700.42600.43500.71200.573500 | PCC | 8d | 2026-07-01 | 2026-07-09 | 2146, 2149SS |  | 7 day week with NGT | 8012902 |
| 2148 | 37400.37600.40700.42600.43500.71200.573600 | Electrical Wiring works | 12d | 2026-06-19 | 2026-07-01 | 2146SS |  | 7 day week with NGT | 8012912 |
| 2149 | 37400.37600.40700.42600.43500.71200.573700 | Internal Plaster Works | 9d | 2026-07-01 | 2026-07-10 | 2145, 2146, 2148 |  | 7 day week with NGT | 8012922 |
| 2150 | 37400.37600.40700.42600.43500.71200.573800 | Toilet Dado Works | 9d | 2026-07-10 | 2026-07-19 | 2145, 2146, 2148, 2149 |  | 7 day week with NGT | 8012932 |
| 2151 | 37400.37600.40700.42600.43500.71200.573900 | Toilet Flooring Works | 7d | 2026-07-19 | 2026-07-26 | 2147, 2150 |  | 7 day week with NGT | 8012942 |
| 2152 | 37400.37600.40700.42600.43500.71200.574000 | Living Dining Flooring | 15d | 2026-07-26 | 2026-08-10 | 2151 |  | 7 day week with NGT | 8012952 |
| 2153 | 37400.37600.40700.42600.43500.71200.574100 | Temporary Door Fixing | 9d | 2026-06-17 | 2026-06-26 | 2144 |  | 7 day week with NGT | 8012962 |
| 2154 | 37400.37600.40700.42600.43500.71200.574200 | Aluminium Door Widnow Fixing | 15d | 2026-08-10 | 2026-08-25 | 2152, 2153 |  | 7 day week with NGT | 8012972 |
| 2155 | 37400.37600.40700.42600.43500.71200.574300 | Rehung Door Fixing | 8d | 2026-08-25 | 2026-09-02 | 2154 |  | 7 day week with NGT | 8012982 |
| 2156 | 37400.37600.40700.42600.43500.71200.574400 | Putty Primer coat | 6d | 2026-09-02 | 2026-09-08 | 2155 |  | 7 day week with NGT | 8012992 |
| 2157 | 37400.37600.40700.42600.43500.71200.574500 | Painting First Coat | 12d | 2026-09-08 | 2026-09-20 | 2146, 2148, 2155, 2156 |  | 7 day week with NGT | 8013002 |
| 2158 | 37400.37600.40700.42600.43500.71200.574600 | False ceiling works | 10d | 2026-09-30 | 2026-10-09 | 2142, 2157 |  | 7 day week with NGT | 8013012 |

| ID | WBS | Task | Duration | Start | Finish | Predecessors | Constraint | Calendar | Unique_Task_ID |
| --- | --- | --- | --- | --- | --- | --- | --- | --- | --- |
| 2159 | 37400.37600.40700.42600.43500.71300 | **Ninth Floor** | 122.75d | 2026-06-19 | 2026-10-19 |  | start no earlier than 2026-06-19 | 7 day week with NGT | 7998292 |
| 2160 | 37400.37600.40700.42600.43500.71300.574700 | Blockwork | 10d | 2026-06-19 | 2026-06-29 | 2012, 2144 |  | 7 day week with NGT | 8013022 |
| 2161 | 37400.37600.40700.42600.43500.71300.574800 | Internal Plumbing Works | 6d | 2026-06-29 | 2026-07-05 | 2160 |  | 7 day week with NGT | 8013032 |
| 2162 | 37400.37600.40700.42600.43500.71300.574900 | Waterproofing Works | 10d | 2026-07-01 | 2026-07-11 | 2161SS+2d |  | 7 day week with NGT | 8013042 |
| 2163 | 37400.37600.40700.42600.43500.71300.575000 | PCC | 8d | 2026-07-13 | 2026-07-21 | 2162, 2165SS |  | 7 day week with NGT | 8013052 |
| 2164 | 37400.37600.40700.42600.43500.71300.575100 | Electrical Wiring works | 12d | 2026-07-01 | 2026-07-13 | 2162SS |  | 7 day week with NGT | 8013062 |
| 2165 | 37400.37600.40700.42600.43500.71300.575200 | Internal Plaster Works | 9d | 2026-07-13 | 2026-07-22 | 2161, 2162, 2164 |  | 7 day week with NGT | 8013072 |
| 2166 | 37400.37600.40700.42600.43500.71300.575300 | Toilet Dado Works | 9d | 2026-07-22 | 2026-07-31 | 2161, 2162, 2164, 2165 |  | 7 day week with NGT | 8013082 |
| 2167 | 37400.37600.40700.42600.43500.71300.575400 | Toilet Flooring Works | 7d | 2026-07-31 | 2026-08-07 | 2163, 2166 |  | 7 day week with NGT | 8013092 |
| 2168 | 37400.37600.40700.42600.43500.71300.575500 | Living Dining Flooring | 15d | 2026-08-07 | 2026-08-22 | 2167 |  | 7 day week with NGT | 8013102 |
| 2169 | 37400.37600.40700.42600.43500.71300.575600 | Temporary Door Fixing | 9d | 2026-06-29 | 2026-07-08 | 2160 |  | 7 day week with NGT | 8013112 |
| 2170 | 37400.37600.40700.42600.43500.71300.575700 | Aluminium Door Widnow Fixing | 15d | 2026-08-22 | 2026-09-06 | 2168, 2169 |  | 7 day week with NGT | 8013122 |
| 2171 | 37400.37600.40700.42600.43500.71300.575800 | Rehung Door Fixing | 8d | 2026-09-06 | 2026-09-14 | 2170 |  | 7 day week with NGT | 8013132 |
| 2172 | 37400.37600.40700.42600.43500.71300.575900 | Putty Primer coat | 6d | 2026-09-14 | 2026-09-20 | 2171 |  | 7 day week with NGT | 8013142 |
| 2173 | 37400.37600.40700.42600.43500.71300.576000 | Painting First Coat | 12d | 2026-09-20 | 2026-10-02 | 2162, 2164, 2171, 2172 |  | 7 day week with NGT | 8013152 |
| 2174 | 37400.37600.40700.42600.43500.71300.576100 | False ceiling works | 10d | 2026-10-10 | 2026-10-19 | 2158, 2173 |  | 7 day week with NGT | 8013162 |
| 2175 | 37400.37600.40700.42600.43500.71400 | **Tenth Floor** | 120.75d | 2026-07-01 | 2026-10-29 |  | start no earlier than 2026-07-01 | 7 day week with NGT | 7998302 |
| 2176 | 37400.37600.40700.42600.43500.71400.576200 | Blockwork | 10d | 2026-07-01 | 2026-07-11 | 2013, 2160 |  | 7 day week with NGT | 8013172 |
| 2177 | 37400.37600.40700.42600.43500.71400.576300 | Internal Plumbing Works | 6d | 2026-07-11 | 2026-07-17 | 2176 |  | 7 day week with NGT | 8013182 |
| 2178 | 37400.37600.40700.42600.43500.71400.576400 | Waterproofing Works | 10d | 2026-07-13 | 2026-07-23 | 2177SS+2d |  | 7 day week with NGT | 8013192 |
| 2179 | 37400.37600.40700.42600.43500.71400.576500 | PCC | 8d | 2026-07-25 | 2026-08-02 | 2178, 2181SS |  | 7 day week with NGT | 8013202 |
| 2180 | 37400.37600.40700.42600.43500.71400.576600 | Electrical Wiring works | 12d | 2026-07-13 | 2026-07-25 | 2178SS |  | 7 day week with NGT | 8013212 |
| 2181 | 37400.37600.40700.42600.43500.71400.576700 | Internal Plaster Works | 9d | 2026-07-25 | 2026-08-03 | 2177, 2178, 2180 |  | 7 day week with NGT | 8013222 |
| 2182 | 37400.37600.40700.42600.43500.71400.576800 | Toilet Dado Works | 9d | 2026-08-03 | 2026-08-12 | 2177, 2178, 2180, 2181 |  | 7 day week with NGT | 8013232 |
| 2183 | 37400.37600.40700.42600.43500.71400.576900 | Toilet Flooring Works | 7d | 2026-08-12 | 2026-08-19 | 2179, 2182 |  | 7 day week with NGT | 8013242 |
| 2184 | 37400.37600.40700.42600.43500.71400.577000 | Living Dining Flooring | 15d | 2026-08-19 | 2026-09-03 | 2183 |  | 7 day week with NGT | 8013252 |
| 2185 | 37400.37600.40700.42600.43500.71400.577100 | Temporary Door Fixing | 9d | 2026-07-11 | 2026-07-20 | 2176 |  | 7 day week with NGT | 8013262 |
| 2186 | 37400.37600.40700.42600.43500.71400.577200 | Aluminium Door Widnow Fixing | 15d | 2026-09-03 | 2026-09-18 | 2184, 2185 |  | 7 day week with NGT | 8013272 |
| 2187 | 37400.37600.40700.42600.43500.71400.577300 | Rehung Door Fixing | 8d | 2026-09-18 | 2026-09-26 | 2186 |  | 7 day week with NGT | 8013282 |
| 2188 | 37400.37600.40700.42600.43500.71400.577400 | Putty Primer coat | 6d | 2026-09-26 | 2026-10-02 | 2187 |  | 7 day week with NGT | 8013292 |
| 2189 | 37400.37600.40700.42600.43500.71400.577500 | Painting First Coat | 12d | 2026-10-02 | 2026-10-14 | 2178, 2180, 2187, 2188 |  | 7 day week with NGT | 8013302 |
| 2190 | 37400.37600.40700.42600.43500.71400.577600 | False ceiling works | 10d | 2026-10-20 | 2026-10-29 | 2174, 2189 |  | 7 day week with NGT | 8013312 |

| ID | WBS | Task | Duration | Start | Finish | Predecessors | Constraint | Calendar | Unique_Task_ID |
| --- | --- | --- | --- | --- | --- | --- | --- | --- | --- |
| 2191 | 37400.37600.40700.42600.43500.71500 | **Eleventh Floor** | 118.75d | 2026-07-13 | 2026-12-23 |  | start no earlier than 2026-07-13 | 7 day week with NGT | 7998312 |
| 2192 | 37400.37600.40700.42600.43500.71500.577700 | Blockwork | 10d | 2026-07-13 | 2026-07-23 | 2014, 2176 |  | 7 day week with NGT | 8013322 |
| 2193 | 37400.37600.40700.42600.43500.71500.577800 | Internal Plumbing Works | 6d | 2026-07-23 | 2026-07-29 | 2192 |  | 7 day week with NGT | 8013332 |
| 2194 | 37400.37600.40700.42600.43500.71500.577900 | Waterproofing Works | 10d | 2026-07-25 | 2026-08-04 | 2193SS+2d |  | 7 day week with NGT | 8013342 |
| 2195 | 37400.37600.40700.42600.43500.71500.578000 | PCC | 8d | 2026-08-06 | 2026-08-14 | 2194, 2197SS |  | 7 day week with NGT | 8013352 |
| 2196 | 37400.37600.40700.42600.43500.71500.578100 | Electrical Wiring works | 12d | 2026-07-25 | 2026-08-06 | 2194SS |  | 7 day week with NGT | 8013362 |
| 2197 | 37400.37600.40700.42600.43500.71500.578200 | Internal Plaster Works | 9d | 2026-08-06 | 2026-08-15 | 2193, 2194, 2196 |  | 7 day week with NGT | 8013372 |
| 2198 | 37400.37600.40700.42600.43500.71500.578300 | Toilet Dado Works | 9d | 2026-08-15 | 2026-08-24 | 2193, 2194, 2196, 2197 |  | 7 day week with NGT | 8013382 |
| 2199 | 37400.37600.40700.42600.43500.71500.578400 | Toilet Flooring Works | 7d | 2026-08-24 | 2026-08-31 | 2195, 2198 |  | 7 day week with NGT | 8013392 |
| 2200 | 37400.37600.40700.42600.43500.71500.578500 | Living Dining Flooring | 15d | 2026-08-31 | 2026-09-15 | 2199 |  | 7 day week with NGT | 8013402 |
| 2201 | 37400.37600.40700.42600.43500.71500.578600 | Temporary Door Fixing | 9d | 2026-07-23 | 2026-08-01 | 2192 |  | 7 day week with NGT | 8013412 |
| 2202 | 37400.37600.40700.42600.43500.71500.578700 | Aluminium Door Widnow Fixing | 15d | 2026-09-15 | 2026-09-30 | 2200, 2201 |  | 7 day week with NGT | 8013422 |
| 2203 | 37400.37600.40700.42600.43500.71500.578800 | Rehung Door Fixing | 8d | 2026-09-30 | 2026-10-08 | 2202 |  | 7 day week with NGT | 8013432 |
| 2204 | 37400.37600.40700.42600.43500.71500.578900 | Putty Primer coat | 6d | 2026-10-08 | 2026-10-14 | 2203 |  | 7 day week with NGT | 8013442 |
| 2205 | 37400.37600.40700.42600.43500.71500.579000 | Painting First Coat | 12d | 2026-10-14 | 2026-10-26 | 2194, 2196, 2203, 2204 |  | 7 day week with NGT | 8013452 |
| 2206 | 37400.37600.40700.42600.43500.71500.579100 | False ceiling works | 10d | 2026-10-30 | 2026-12-23 | 2190, 2205 |  | 7 day week with NGT | 8013462 |
| 2207 | 37400.37600.40700.42600.43500.71600 | **Twelth Floor** | 98d | 2026-08-23 | 2027-01-13 |  | start no earlier than 2026-08-23 | 7 day week with NGT | 7998322 |
| 2208 | 37400.37600.40700.42600.43500.71600.579200 | Blockwork | 7d | 2026-08-23 | 2026-08-30 | 2017 |  | 7 day week with NGT | 8013472 |
| 2209 | 37400.37600.40700.42600.43500.71600.579300 | Internal Plumbing Works | 6d | 2026-08-30 | 2026-09-05 | 2208 |  | 7 day week with NGT | 8013482 |
| 2210 | 37400.37600.40700.42600.43500.71600.579400 | Waterproofing Works | 7d | 2026-09-01 | 2026-09-08 | 2209SS+2d |  | 7 day week with NGT | 8013492 |
| 2211 | 37400.37600.40700.42600.43500.71600.579500 | PCC | 3d | 2026-09-08 | 2026-09-11 | 2210, 2213SS |  | 7 day week with NGT | 8013502 |
| 2212 | 37400.37600.40700.42600.43500.71600.579600 | Electrical Wiring works | 7d | 2026-09-01 | 2026-09-08 | 2210SS |  | 7 day week with NGT | 8013512 |
| 2213 | 37400.37600.40700.42600.43500.71600.579700 | Internal Plaster Works | 5d | 2026-09-08 | 2026-09-13 | 2209, 2210, 2212 |  | 7 day week with NGT | 8013522 |
| 2214 | 37400.37600.40700.42600.43500.71600.579800 | Toilet Dado Works | 9d | 2026-09-13 | 2026-09-22 | 2209, 2210, 2212, 2213 |  | 7 day week with NGT | 8013532 |
| 2215 | 37400.37600.40700.42600.43500.71600.579900 | Toilet Flooring Works | 7d | 2026-09-22 | 2026-09-29 | 2211, 2214 |  | 7 day week with NGT | 8013542 |
| 2216 | 37400.37600.40700.42600.43500.71600.580000 | Living Dining Flooring | 10d | 2026-09-29 | 2026-10-09 | 2215 |  | 7 day week with NGT | 8013552 |
| 2217 | 37400.37600.40700.42600.43500.71600.580100 | Temporary Door Fixing | 9d | 2026-08-30 | 2026-09-08 | 2208 |  | 7 day week with NGT | 8013562 |
| 2218 | 37400.37600.40700.42600.43500.71600.580200 | Aluminium Door Widnow Fixing | 15d | 2026-10-09 | 2026-10-24 | 2216, 2217 |  | 7 day week with NGT | 8013572 |
| 2219 | 37400.37600.40700.42600.43500.71600.580300 | Rehung Door Fixing | 8d | 2026-10-24 | 2026-12-16 | 2218 |  | 7 day week with NGT | 8013582 |
| 2220 | 37400.37600.40700.42600.43500.71600.580400 | Putty Primer coat | 6d | 2026-12-16 | 2026-12-22 | 2219 |  | 7 day week with NGT | 8013592 |
| 2221 | 37400.37600.40700.42600.43500.71600.580500 | Painting First Coat | 12d | 2026-12-22 | 2027-01-03 | 2210, 2212, 2219, 2220 |  | 7 day week with NGT | 8013602 |
| 2222 | 37400.37600.40700.42600.43500.71600.580600 | False ceiling works | 10d | 2027-01-03 | 2027-01-13 | 2206, 2221 |  | 7 day week with NGT | 8013612 |

| ID | WBS | Task | Duration | Start | Finish | Predecessors | Constraint | Calendar | Unique_Task_ID |
| --- | --- | --- | --- | --- | --- | --- | --- | --- | --- |
| 2223 | 37400.37600.40700.42600.43500.71700 | **Thirteen Floor** | 98d | 2026-09-04 | 2027-01-25 |  | start no earlier than 2026-09-04 | 7 day week with NGT | 7998332 |
| 2224 | 37400.37600.40700.42600.43500.71700.580700 | Blockwork | 7d | 2026-09-04 | 2026-09-11 | 2018FS+0.25d |  | 7 day week with NGT | 8013622 |
| 2225 | 37400.37600.40700.42600.43500.71700.580800 | Internal Plumbing Works | 6d | 2026-09-11 | 2026-09-17 | 2224 |  | 7 day week with NGT | 8013632 |
| 2226 | 37400.37600.40700.42600.43500.71700.580900 | Waterproofing Works | 7d | 2026-09-13 | 2026-09-20 | 2225SS+2d |  | 7 day week with NGT | 8013642 |
| 2227 | 37400.37600.40700.42600.43500.71700.581000 | PCC | 3d | 2026-09-20 | 2026-09-23 | 2226, 2229SS |  | 7 day week with NGT | 8013652 |
| 2228 | 37400.37600.40700.42600.43500.71700.581100 | Electrical Wiring works | 7d | 2026-09-13 | 2026-09-20 | 2226SS |  | 7 day week with NGT | 8013662 |
| 2229 | 37400.37600.40700.42600.43500.71700.581200 | Internal Plaster Works | 5d | 2026-09-20 | 2026-09-25 | 2225, 2226, 2228 |  | 7 day week with NGT | 8013672 |
| 2230 | 37400.37600.40700.42600.43500.71700.581300 | Toilet Dado Works | 9d | 2026-09-25 | 2026-10-04 | 2225, 2226, 2228, 2229 |  | 7 day week with NGT | 8013682 |
| 2231 | 37400.37600.40700.42600.43500.71700.581400 | Toilet Flooring Works | 7d | 2026-10-04 | 2026-10-11 | 2227, 2230 |  | 7 day week with NGT | 8013692 |
| 2232 | 37400.37600.40700.42600.43500.71700.581500 | Living Dining Flooring | 10d | 2026-10-11 | 2026-10-21 | 2231 |  | 7 day week with NGT | 8013702 |
| 2233 | 37400.37600.40700.42600.43500.71700.581600 | Temporary Door Fixing | 9d | 2026-09-11 | 2026-09-20 | 2224 |  | 7 day week with NGT | 8013712 |
| 2234 | 37400.37600.40700.42600.43500.71700.581700 | Aluminium Door Widnow Fixing | 15d | 2026-10-21 | 2026-12-20 | 2232, 2233 |  | 7 day week with NGT | 8013722 |
| 2235 | 37400.37600.40700.42600.43500.71700.581800 | Rehung Door Fixing | 8d | 2026-12-20 | 2026-12-28 | 2234 |  | 7 day week with NGT | 8013732 |
| 2236 | 37400.37600.40700.42600.43500.71700.581900 | Putty Primer coat | 6d | 2026-12-28 | 2027-01-03 | 2235 |  | 7 day week with NGT | 8013742 |
| 2237 | 37400.37600.40700.42600.43500.71700.582000 | Painting First Coat | 12d | 2027-01-03 | 2027-01-15 | 2226, 2228, 2235, 2236 |  | 7 day week with NGT | 8013752 |
| 2238 | 37400.37600.40700.42600.43500.71700.582100 | False ceiling works | 10d | 2027-01-15 | 2027-01-25 | 2222, 2237 |  | 7 day week with NGT | 8013762 |
| 2239 | 37400.37600.40700.42600.43500.71800 | **Fourteen Floor** | 370.5d | 2025-12-01 | 2027-02-04 |  | start no earlier than 2025-12-01 | 7 day week with NGT | 7998342 |
| 2240 | 37400.37600.40700.42600.43500.71800.582200 | Blockwork | 7d | 2026-09-09 | 2026-09-16 | 2019FF+0.25d |  | 7 day week with NGT | 8013772 |
| 2241 | 37400.37600.40700.42600.43500.71800.582300 | Internal Plumbing Works | 6d | 2026-09-16 | 2026-09-22 | 2240 |  | 7 day week with NGT | 8013782 |
| 2242 | 37400.37600.40700.42600.43500.71800.582400 | Waterproofing Works | 7d | 2026-09-18 | 2026-09-25 | 2241SS+2d |  | 7 day week with NGT | 8013792 |
| 2243 | 37400.37600.40700.42600.43500.71800.582500 | PCC | 3d | 2026-09-25 | 2026-09-28 | 2242, 2245SS |  | 7 day week with NGT | 8013802 |
| 2244 | 37400.37600.40700.42600.43500.71800.582600 | Electrical Wiring works | 7d | 2026-09-18 | 2026-09-25 | 2242SS |  | 7 day week with NGT | 8013812 |
| 2245 | 37400.37600.40700.42600.43500.71800.582700 | Internal Plaster Works | 5d | 2026-09-25 | 2026-09-30 | 2241, 2242, 2244 |  | 7 day week with NGT | 8013822 |
| 2246 | 37400.37600.40700.42600.43500.71800.582800 | Toilet Dado Works | 9d | 2026-09-30 | 2026-10-09 | 2241, 2242, 2244, 2245 |  | 7 day week with NGT | 8013832 |
| 2247 | 37400.37600.40700.42600.43500.71800.582900 | Toilet Flooring Works | 7d | 2026-10-09 | 2026-10-16 | 2243, 2246 |  | 7 day week with NGT | 8013842 |
| 2248 | 37400.37600.40700.42600.43500.71800.583000 | Living Dining Flooring | 7d | 2026-10-16 | 2026-10-23 | 2247 |  | 7 day week with NGT | 8013852 |
| 2249 | 37400.37600.40700.42600.43500.71800.583100 | Temporary Door Fixing | 9d | 2026-09-16 | 2026-09-25 | 2240 |  | 7 day week with NGT | 8013862 |
| 2250 | 37400.37600.40700.42600.43500.71800.583200 | Aluminium Door Widnow Fixing | 5d | 2025-12-01 | 2025-12-05 |  | start no earlier than 2025-12-01 | Indian Calendar | 8012823 |
| 2251 | 37400.37600.40700.42600.43500.71800.583300 | Aluminium Door Widnow Fixing | 15d | 2026-10-23 | 2026-12-22 | 2248, 2249, 2250 |  | 7 day week with NGT | 8013872 |
| 2252 | 37400.37600.40700.42600.43500.71800.583400 | Rehung Door Fixing | 8d | 2026-12-22 | 2026-12-30 | 2251 |  | 7 day week with NGT | 8013882 |
| 2253 | 37400.37600.40700.42600.43500.71800.583500 | Putty Primer coat | 6d | 2026-12-30 | 2027-01-05 | 2252 |  | 7 day week with NGT | 8013892 |
| 2254 | 37400.37600.40700.42600.43500.71800.583600 | Painting First Coat | 12d | 2027-01-05 | 2027-01-17 | 2242, 2244, 2252, 2253 |  | 7 day week with NGT | 8013902 |
| 2255 | 37400.37600.40700.42600.43500.71800.583700 | False ceiling works | 10d | 2027-01-25 | 2027-02-04 | 2238, 2254 |  | 7 day week with NGT | 8013912 |

| ID | WBS | Task | Duration | Start | Finish | Predecessors | Constraint | Calendar | Unique_Task_ID |
| --- | --- | --- | --- | --- | --- | --- | --- | --- | --- |
| 2256 | 37400.37600.40700.42600.43500.71900 | **Fifteen Floor** | 380.5d | 2025-12-01 | 2027-02-14 |  | start no earlier than 2025-12-01 | 7 day week with NGT | 7998352 |
| 2257 | 37400.37600.40700.42600.43500.71900.583800 | Blockwork | 7d | 2026-09-27 | 2026-10-04 | 2020, 2240 |  | 7 day week with NGT | 8013922 |
| 2258 | 37400.37600.40700.42600.43500.71900.583900 | Internal Plumbing Works | 6d | 2026-10-04 | 2026-10-10 | 2257 |  | 7 day week with NGT | 8013932 |
| 2259 | 37400.37600.40700.42600.43500.71900.584000 | Waterproofing Works | 7d | 2026-10-06 | 2026-10-13 | 2258SS+2d |  | 7 day week with NGT | 8013942 |
| 2260 | 37400.37600.40700.42600.43500.71900.584100 | PCC | 3d | 2026-10-13 | 2026-10-16 | 2259, 2262SS |  | 7 day week with NGT | 8013952 |
| 2261 | 37400.37600.40700.42600.43500.71900.584200 | Electrical Wiring works | 4d | 2026-10-06 | 2026-10-10 | 2259SS |  | 7 day week with NGT | 8013962 |
| 2262 | 37400.37600.40700.42600.43500.71900.584300 | Internal Plaster Works | 5d | 2026-10-10 | 2026-10-15 | 2258FS+0.25d, 2261FS+0.25d |  | 7 day week with NGT | 8013972 |
| 2263 | 37400.37600.40700.42600.43500.71900.584400 | Toilet Dado Works | 5d | 2026-10-15 | 2026-10-20 | 2258, 2259, 2261, 2262 |  | 7 day week with NGT | 8013982 |
| 2264 | 37400.37600.40700.42600.43500.71900.584500 | Toilet Flooring Works | 5d | 2026-10-20 | 2026-10-25 | 2260, 2263 |  | 7 day week with NGT | 8013992 |
| 2265 | 37400.37600.40700.42600.43500.71900.584600 | Living Dining Flooring | 10d | 2026-10-25 | 2026-12-19 | 2264 |  | 7 day week with NGT | 8014002 |
| 2266 | 37400.37600.40700.42600.43500.71900.584700 | Temporary Door Fixing | 9d | 2026-10-04 | 2026-10-13 | 2257 |  | 7 day week with NGT | 8014012 |
| 2267 | 37400.37600.40700.42600.43500.71900.584800 | Aluminium Door Widnow Fixing | 5d | 2025-12-01 | 2025-12-05 |  | start no earlier than 2025-12-01 | Indian Calendar | 10040599 |
| 2268 | 37400.37600.40700.42600.43500.71900.584900 | Aluminium Door Widnow Fixing | 15d | 2026-12-19 | 2027-01-03 | 2265, 2266, 2267 |  | 7 day week with NGT | 8014022 |
| 2269 | 37400.37600.40700.42600.43500.71900.585000 | Rehung Door Fixing | 8d | 2027-01-03 | 2027-01-11 | 2268 |  | 7 day week with NGT | 8014032 |
| 2270 | 37400.37600.40700.42600.43500.71900.585100 | Putty Primer coat | 6d | 2027-01-11 | 2027-01-17 | 2269 |  | 7 day week with NGT | 8014042 |
| 2271 | 37400.37600.40700.42600.43500.71900.585200 | Painting First Coat | 12d | 2027-01-17 | 2027-01-29 | 2259, 2261, 2269, 2270 |  | 7 day week with NGT | 8014052 |
| 2272 | 37400.37600.40700.42600.43500.71900.585300 | False ceiling works | 10d | 2027-02-04 | 2027-02-14 | 2255, 2271 |  | 7 day week with NGT | 8014062 |
| 2273 | 37400.37600.40700.42600.43500.72000 | **Sixteen Floor** | 98d | 2026-10-04 | 2027-02-24 |  | start no earlier than 2026-10-04 | 7 day week with NGT | 7998362 |
| 2274 | 37400.37600.40700.42600.43500.72000.585400 | Blockwork | 5d | 2026-10-04 | 2026-10-09 | 2021FF+0.25d, 2257FS+0.25d |  | 7 day week with NGT | 8014072 |
| 2275 | 37400.37600.40700.42600.43500.72000.585500 | Internal Plumbing Works | 4d | 2026-10-09 | 2026-10-13 | 2274 |  | 7 day week with NGT | 8014082 |
| 2276 | 37400.37600.40700.42600.43500.72000.585600 | Waterproofing Works | 7d | 2026-10-11 | 2026-10-18 | 2275SS+2d |  | 7 day week with NGT | 8014092 |
| 2277 | 37400.37600.40700.42600.43500.72000.585700 | PCC | 4d | 2026-10-18 | 2026-10-22 | 2276, 2279SS |  | 7 day week with NGT | 8014102 |
| 2278 | 37400.37600.40700.42600.43500.72000.585800 | Electrical Wiring works | 7d | 2026-10-11 | 2026-10-18 | 2276SS |  | 7 day week with NGT | 8014112 |
| 2279 | 37400.37600.40700.42600.43500.72000.585900 | Internal Plaster Works | 7d | 2026-10-18 | 2026-10-25 | 2275FS+0.25d, 2278FS+0.25d |  | 7 day week with NGT | 8014122 |
| 2280 | 37400.37600.40700.42600.43500.72000.586000 | Toilet Dado Works | 5d | 2026-10-25 | 2026-10-30 | 2275, 2276, 2278, 2279 |  | 7 day week with NGT | 8014132 |
| 2281 | 37400.37600.40700.42600.43500.72000.586100 | Toilet Flooring Works | 4d | 2026-10-30 | 2026-12-18 | 2277, 2280 |  | 7 day week with NGT | 8014142 |
| 2282 | 37400.37600.40700.42600.43500.72000.586200 | Living Dining Flooring | 5d | 2026-12-18 | 2026-12-23 | 2281 |  | 7 day week with NGT | 8014152 |
| 2283 | 37400.37600.40700.42600.43500.72000.586300 | Temporary Door Fixing | 9d | 2026-10-09 | 2026-10-18 | 2274 |  | 7 day week with NGT | 8014162 |
| 2284 | 37400.37600.40700.42600.43500.72000.586400 | Aluminium Door Widnow Fixing | 15d | 2026-12-23 | 2027-01-07 | 2282, 2283 |  | 7 day week with NGT | 8014172 |
| 2285 | 37400.37600.40700.42600.43500.72000.586500 | Rehung Door Fixing | 8d | 2027-01-07 | 2027-01-15 | 2284 |  | 7 day week with NGT | 8014182 |
| 2286 | 37400.37600.40700.42600.43500.72000.586600 | Putty Primer coat | 6d | 2027-01-15 | 2027-01-21 | 2285 |  | 7 day week with NGT | 8014192 |
| 2287 | 37400.37600.40700.42600.43500.72000.586700 | Painting First Coat | 12d | 2027-01-21 | 2027-02-02 | 2276, 2278, 2285, 2286 |  | 7 day week with NGT | 8014202 |
| 2288 | 37400.37600.40700.42600.43500.72000.586800 | False ceiling works | 10d | 2027-02-14 | 2027-02-24 | 2272, 2287 |  | 7 day week with NGT | 8014212 |

| ID | WBS | Task | Duration | Start | Finish | Predecessors | Constraint | Calendar | Unique_Task_ID |
| --- | --- | --- | --- | --- | --- | --- | --- | --- | --- |
| 2289 | 37400.37600.40700.42600.43500.72100 | **Seventeen Floor** | 98d | 2026-10-14 | 2027-03-06 |  | start no earlier than 2026-10-14 | 7 day week with NGT | 7998372 |
| 2290 | 37400.37600.40700.42600.43500.72100.586900 | Blockwork | 5d | 2026-10-14 | 2026-10-19 | 2022FF+0.25d |  | 7 day week with NGT | 8014222 |
| 2291 | 37400.37600.40700.42600.43500.72100.587000 | Internal Plumbing Works | 4d | 2026-10-19 | 2026-10-23 | 2290 |  | 7 day week with NGT | 8014232 |
| 2292 | 37400.37600.40700.42600.43500.72100.587100 | Waterproofing Works | 7d | 2026-10-21 | 2026-10-28 | 2291SS+2d |  | 7 day week with NGT | 8014242 |
| 2293 | 37400.37600.40700.42600.43500.72100.587200 | PCC | 4d | 2026-10-28 | 2026-12-16 | 2292, 2295SS |  | 7 day week with NGT | 8014252 |
| 2294 | 37400.37600.40700.42600.43500.72100.587300 | Electrical Wiring works | 7d | 2026-10-21 | 2026-10-28 | 2292SS |  | 7 day week with NGT | 8014262 |
| 2295 | 37400.37600.40700.42600.43500.72100.587400 | Internal Plaster Works | 7d | 2026-10-28 | 2026-12-19 | 2291, 2292, 2294 |  | 7 day week with NGT | 8014272 |
| 2296 | 37400.37600.40700.42600.43500.72100.587500 | Toilet Dado Works | 5d | 2026-12-19 | 2026-12-24 | 2291, 2292, 2294, 2295 |  | 7 day week with NGT | 8014282 |
| 2297 | 37400.37600.40700.42600.43500.72100.587600 | Toilet Flooring Works | 4d | 2026-12-24 | 2026-12-28 | 2293, 2296 |  | 7 day week with NGT | 8014292 |
| 2298 | 37400.37600.40700.42600.43500.72100.587700 | Living Dining Flooring | 15d | 2026-12-28 | 2027-01-12 | 2297 |  | 7 day week with NGT | 8014302 |
| 2299 | 37400.37600.40700.42600.43500.72100.587800 | Temporary Door Fixing | 9d | 2026-10-19 | 2026-10-28 | 2290 |  | 7 day week with NGT | 8014312 |
| 2300 | 37400.37600.40700.42600.43500.72100.587900 | Aluminium Door Widnow Fixing | 15d | 2027-01-12 | 2027-01-27 | 2298, 2299 |  | 7 day week with NGT | 8014322 |
| 2301 | 37400.37600.40700.42600.43500.72100.588000 | Rehung Door Fixing | 8d | 2027-01-27 | 2027-02-04 | 2300 |  | 7 day week with NGT | 8014332 |
| 2302 | 37400.37600.40700.42600.43500.72100.588100 | Putty Primer coat | 6d | 2027-02-04 | 2027-02-10 | 2301 |  | 7 day week with NGT | 8014342 |
| 2303 | 37400.37600.40700.42600.43500.72100.588200 | Painting First Coat | 12d | 2027-02-10 | 2027-02-22 | 2292, 2294, 2301, 2302 |  | 7 day week with NGT | 8014352 |
| 2304 | 37400.37600.40700.42600.43500.72100.588300 | False ceiling works | 10d | 2027-02-24 | 2027-03-06 | 2288, 2303 |  | 7 day week with NGT | 8014362 |
| 2305 | 37400.37600.40700.42600.43500.72200 | **Eighteenth Floor** | 110d | 2026-10-25 | 2027-03-29 |  | start no earlier than 2026-10-25 | 7 day week with NGT | 7998382 |
| 2306 | 37400.37600.40700.42600.43500.72200.588400 | Blockwork | 5d | 2026-10-25 | 2026-10-30 | 2023FF+0.25d |  | 7 day week with NGT | 8014372 |
| 2307 | 37400.37600.40700.42600.43500.72200.588500 | Internal Plumbing Works | 6d | 2026-10-30 | 2026-12-20 | 2306 |  | 7 day week with NGT | 8014382 |
| 2308 | 37400.37600.40700.42600.43500.72200.588600 | Waterproofing Works | 10d | 2026-12-16 | 2026-12-26 | 2307SS+2d |  | 7 day week with NGT | 8014392 |
| 2309 | 37400.37600.40700.42600.43500.72200.588700 | PCC | 8d | 2026-12-28 | 2027-01-05 | 2308, 2311SS |  | 7 day week with NGT | 8014402 |
| 2310 | 37400.37600.40700.42600.43500.72200.588800 | Electrical Wiring works | 12d | 2026-12-16 | 2026-12-28 | 2308SS |  | 7 day week with NGT | 8014412 |
| 2311 | 37400.37600.40700.42600.43500.72200.588900 | Internal Plaster Works | 9d | 2026-12-28 | 2027-01-06 | 2307, 2308, 2310 |  | 7 day week with NGT | 8014422 |
| 2312 | 37400.37600.40700.42600.43500.72200.589000 | Toilet Dado Works | 9d | 2027-01-06 | 2027-01-15 | 2307, 2308, 2310, 2311 |  | 7 day week with NGT | 8014432 |
| 2313 | 37400.37600.40700.42600.43500.72200.589100 | Toilet Flooring Works | 7d | 2027-01-15 | 2027-01-22 | 2309, 2312 |  | 7 day week with NGT | 8014442 |
| 2314 | 37400.37600.40700.42600.43500.72200.589200 | Living Dining Flooring | 15d | 2027-01-22 | 2027-02-06 | 2313 |  | 7 day week with NGT | 8014452 |
| 2315 | 37400.37600.40700.42600.43500.72200.589300 | Temporary Door Fixing | 9d | 2026-10-30 | 2026-12-23 | 2306 |  | 7 day week with NGT | 8014462 |
| 2316 | 37400.37600.40700.42600.43500.72200.589400 | Aluminium Door Widnow Fixing | 15d | 2027-02-06 | 2027-02-21 | 2314, 2315 |  | 7 day week with NGT | 8014472 |
| 2317 | 37400.37600.40700.42600.43500.72200.589500 | Rehung Door Fixing | 8d | 2027-02-21 | 2027-03-01 | 2316 |  | 7 day week with NGT | 8014482 |
| 2318 | 37400.37600.40700.42600.43500.72200.589600 | Putty Primer coat | 6d | 2027-03-01 | 2027-03-07 | 2317 |  | 7 day week with NGT | 8014492 |
| 2319 | 37400.37600.40700.42600.43500.72200.589700 | Painting First Coat | 12d | 2027-03-07 | 2027-03-19 | 2308, 2310, 2317, 2318 |  | 7 day week with NGT | 8014502 |
| 2320 | 37400.37600.40700.42600.43500.72200.589800 | False ceiling works | 10d | 2027-03-19 | 2027-03-29 | 2304, 2319 |  | 7 day week with NGT | 8014512 |

| ID | WBS | Task | Duration | Start | Finish | Predecessors | Constraint | Calendar | Unique_Task_ID |
| --- | --- | --- | --- | --- | --- | --- | --- | --- | --- |
| 2321 | 37400.37600.40700.42600.43500.72300 | **Ninteenth Floor** | 109.25d | 2026-12-20 | 2027-04-08 |  | start no earlier than 2026-12-20 | 7 day week with NGT | 7998392 |
| 2322 | 37400.37600.40700.42600.43500.72300.589900 | Blockwork | 5d | 2026-12-20 | 2026-12-25 | 2024FF, 2306 |  | 7 day week with NGT | 8014522 |
| 2323 | 37400.37600.40700.42600.43500.72300.590000 | Internal Plumbing Works | 5d | 2026-12-25 | 2026-12-30 | 2322 |  | 7 day week with NGT | 8014532 |
| 2324 | 37400.37600.40700.42600.43500.72300.590100 | Waterproofing Works | 5d | 2026-12-27 | 2027-01-01 | 2323SS+2d |  | 7 day week with NGT | 8014542 |
| 2325 | 37400.37600.40700.42600.43500.72300.590200 | PCC | 4d | 2027-01-01 | 2027-01-05 | 2324, 2327SS |  | 7 day week with NGT | 8014552 |
| 2326 | 37400.37600.40700.42600.43500.72300.590300 | Electrical Wiring works | 5d | 2026-12-27 | 2027-01-01 | 2324SS |  | 7 day week with NGT | 8014562 |
| 2327 | 37400.37600.40700.42600.43500.72300.590400 | Internal Plaster Works | 5d | 2026-12-30 | 2027-01-04 | 2323FS+0.25d, 2326FF+2d |  | 7 day week with NGT | 8014572 |
| 2328 | 37400.37600.40700.42600.43500.72300.590500 | Toilet Dado Works | 9d | 2027-01-04 | 2027-01-13 | 2323, 2324, 2326, 2327 |  | 7 day week with NGT | 8014582 |
| 2329 | 37400.37600.40700.42600.43500.72300.590600 | Toilet Flooring Works | 7d | 2027-01-13 | 2027-01-20 | 2325, 2328 |  | 7 day week with NGT | 8014592 |
| 2330 | 37400.37600.40700.42600.43500.72300.590700 | Living Dining Flooring | 15d | 2027-01-20 | 2027-02-04 | 2329 |  | 7 day week with NGT | 8014602 |
| 2331 | 37400.37600.40700.42600.43500.72300.590800 | Temporary Door Fixing | 9d | 2026-12-25 | 2027-01-03 | 2322 |  | 7 day week with NGT | 8014612 |
| 2332 | 37400.37600.40700.42600.43500.72300.590900 | Aluminium Door Widnow Fixing | 15d | 2027-02-04 | 2027-02-19 | 2330, 2331 |  | 7 day week with NGT | 8014622 |
| 2333 | 37400.37600.40700.42600.43500.72300.591000 | Rehung Door Fixing | 8d | 2027-02-19 | 2027-02-27 | 2332 |  | 7 day week with NGT | 8014632 |
| 2334 | 37400.37600.40700.42600.43500.72300.591100 | Putty Primer coat | 6d | 2027-02-27 | 2027-03-05 | 2333 |  | 7 day week with NGT | 8014642 |
| 2335 | 37400.37600.40700.42600.43500.72300.591200 | Painting First Coat | 12d | 2027-03-05 | 2027-03-17 | 2324, 2326, 2333, 2334 |  | 7 day week with NGT | 8014652 |
| 2336 | 37400.37600.40700.42600.43500.72300.591300 | False ceiling works | 10d | 2027-03-29 | 2027-04-08 | 2320, 2335 |  | 7 day week with NGT | 8014662 |
| 2337 | 37400.37600.40700.42600.43500.72400 | **Twenty Floor** | 110d | 2026-12-31 | 2027-04-20 |  | start no earlier than 2026-12-31 | 7 day week with NGT | 7998402 |
| 2338 | 37400.37600.40700.42600.43500.72400.591400 | Blockwork | 5d | 2026-12-31 | 2027-01-05 | 2025FF+0.25d, 2322FS+0.25d |  | 7 day week with NGT | 8014672 |
| 2339 | 37400.37600.40700.42600.43500.72400.591500 | Internal Plumbing Works | 6d | 2027-01-05 | 2027-01-11 | 2338 |  | 7 day week with NGT | 8014682 |
| 2340 | 37400.37600.40700.42600.43500.72400.591600 | Waterproofing Works | 10d | 2027-01-07 | 2027-01-17 | 2339SS+2d |  | 7 day week with NGT | 8014692 |
| 2341 | 37400.37600.40700.42600.43500.72400.591700 | PCC | 8d | 2027-01-19 | 2027-01-27 | 2340, 2343SS |  | 7 day week with NGT | 8014702 |
| 2342 | 37400.37600.40700.42600.43500.72400.591800 | Electrical Wiring works | 12d | 2027-01-07 | 2027-01-19 | 2340SS |  | 7 day week with NGT | 8014712 |
| 2343 | 37400.37600.40700.42600.43500.72400.591900 | Internal Plaster Works | 9d | 2027-01-19 | 2027-01-28 | 2339, 2340, 2342 |  | 7 day week with NGT | 8014722 |
| 2344 | 37400.37600.40700.42600.43500.72400.592000 | Toilet Dado Works | 9d | 2027-01-28 | 2027-02-06 | 2339, 2340, 2342, 2343 |  | 7 day week with NGT | 8014732 |
| 2345 | 37400.37600.40700.42600.43500.72400.592100 | Toilet Flooring Works | 7d | 2027-02-06 | 2027-02-13 | 2341, 2344 |  | 7 day week with NGT | 8014742 |
| 2346 | 37400.37600.40700.42600.43500.72400.592200 | Living Dining Flooring | 15d | 2027-02-13 | 2027-02-28 | 2345 |  | 7 day week with NGT | 8014752 |
| 2347 | 37400.37600.40700.42600.43500.72400.592300 | Temporary Door Fixing | 9d | 2027-01-05 | 2027-01-14 | 2338 |  | 7 day week with NGT | 8014762 |
| 2348 | 37400.37600.40700.42600.43500.72400.592400 | Aluminium Door Widnow Fixing | 15d | 2027-02-28 | 2027-03-15 | 2346, 2347 |  | 7 day week with NGT | 8014772 |
| 2349 | 37400.37600.40700.42600.43500.72400.592500 | Rehung Door Fixing | 8d | 2027-03-15 | 2027-03-23 | 2348 |  | 7 day week with NGT | 8014782 |
| 2350 | 37400.37600.40700.42600.43500.72400.592600 | Putty Primer coat | 6d | 2027-03-23 | 2027-03-29 | 2349 |  | 7 day week with NGT | 8014792 |
| 2351 | 37400.37600.40700.42600.43500.72400.592700 | Painting First Coat | 12d | 2027-03-29 | 2027-04-10 | 2340, 2342, 2349, 2350 |  | 7 day week with NGT | 8014802 |
| 2352 | 37400.37600.40700.42600.43500.72400.592800 | False ceiling works | 10d | 2027-04-10 | 2027-04-20 | 2336, 2351 |  | 7 day week with NGT | 8014812 |

| ID | WBS | Task | Duration | Start | Finish | Predecessors | Constraint | Calendar | Unique_Task_ID |
| --- | --- | --- | --- | --- | --- | --- | --- | --- | --- |
| 2353 | 37400.37600.40700.42600.43500.72500 | **Twentyone Floor** | 115d | 2027-01-16 | 2027-05-11 |  | start no earlier than 2027-01-16 | 7 day week with NGT | 7998412 |
| 2354 | 37400.37600.40700.42600.43500.72500.592900 | Blockwork | 10d | 2027-01-16 | 2027-01-26 | 2026 |  | 7 day week with NGT | 8014822 |
| 2355 | 37400.37600.40700.42600.43500.72500.593000 | Internal Plumbing Works | 6d | 2027-01-26 | 2027-02-01 | 2354 |  | 7 day week with NGT | 8014832 |
| 2356 | 37400.37600.40700.42600.43500.72500.593100 | Waterproofing Works | 10d | 2027-01-28 | 2027-02-07 | 2355SS+2d |  | 7 day week with NGT | 8014842 |
| 2357 | 37400.37600.40700.42600.43500.72500.593200 | PCC | 8d | 2027-02-09 | 2027-02-17 | 2356, 2359SS |  | 7 day week with NGT | 8014852 |
| 2358 | 37400.37600.40700.42600.43500.72500.593300 | Electrical Wiring works | 12d | 2027-01-28 | 2027-02-09 | 2356SS |  | 7 day week with NGT | 8014862 |
| 2359 | 37400.37600.40700.42600.43500.72500.593400 | Internal Plaster Works | 9d | 2027-02-09 | 2027-02-18 | 2355, 2356, 2358 |  | 7 day week with NGT | 8014872 |
| 2360 | 37400.37600.40700.42600.43500.72500.593500 | Toilet Dado Works | 9d | 2027-02-18 | 2027-02-27 | 2355, 2356, 2358, 2359 |  | 7 day week with NGT | 8014882 |
| 2361 | 37400.37600.40700.42600.43500.72500.593600 | Toilet Flooring Works | 7d | 2027-02-27 | 2027-03-06 | 2357, 2360 |  | 7 day week with NGT | 8014892 |
| 2362 | 37400.37600.40700.42600.43500.72500.593700 | Living Dining Flooring | 15d | 2027-03-06 | 2027-03-21 | 2361 |  | 7 day week with NGT | 8014902 |
| 2363 | 37400.37600.40700.42600.43500.72500.593800 | Temporary Door Fixing | 9d | 2027-01-26 | 2027-02-04 | 2354 |  | 7 day week with NGT | 8014912 |
| 2364 | 37400.37600.40700.42600.43500.72500.593900 | Aluminium Door Widnow Fixing | 15d | 2027-03-21 | 2027-04-05 | 2362, 2363 |  | 7 day week with NGT | 8014922 |
| 2365 | 37400.37600.40700.42600.43500.72500.594000 | Rehung Door Fixing | 8d | 2027-04-05 | 2027-04-13 | 2364 |  | 7 day week with NGT | 8014932 |
| 2366 | 37400.37600.40700.42600.43500.72500.594100 | Putty Primer coat | 6d | 2027-04-13 | 2027-04-19 | 2365 |  | 7 day week with NGT | 8014942 |
| 2367 | 37400.37600.40700.42600.43500.72500.594200 | Painting First Coat | 12d | 2027-04-19 | 2027-05-01 | 2356, 2358, 2365, 2366 |  | 7 day week with NGT | 8014952 |
| 2368 | 37400.37600.40700.42600.43500.72500.594300 | False ceiling works | 10d | 2027-05-01 | 2027-05-11 | 2352, 2367 |  | 7 day week with NGT | 8014962 |
| 2369 | 37400.37600.40700.42600.43500.72600 | **Twenty two Floor** | 115d | 2027-02-02 | 2027-05-28 |  | start no earlier than 2027-02-02 | 7 day week with NGT | 7998422 |
| 2370 | 37400.37600.40700.42600.43500.72600.594400 | Blockwork | 10d | 2027-02-02 | 2027-02-12 | 2027 |  | 7 day week with NGT | 8014972 |
| 2371 | 37400.37600.40700.42600.43500.72600.594500 | Internal Plumbing Works | 6d | 2027-02-12 | 2027-02-18 | 2370 |  | 7 day week with NGT | 8014982 |
| 2372 | 37400.37600.40700.42600.43500.72600.594600 | Waterproofing Works | 10d | 2027-02-14 | 2027-02-24 | 2371SS+2d |  | 7 day week with NGT | 8014992 |
| 2373 | 37400.37600.40700.42600.43500.72600.594700 | PCC | 8d | 2027-02-26 | 2027-03-06 | 2372, 2375SS |  | 7 day week with NGT | 8015002 |
| 2374 | 37400.37600.40700.42600.43500.72600.594800 | Electrical Wiring works | 12d | 2027-02-14 | 2027-02-26 | 2372SS |  | 7 day week with NGT | 8015012 |
| 2375 | 37400.37600.40700.42600.43500.72600.594900 | Internal Plaster Works | 9d | 2027-02-26 | 2027-03-07 | 2371, 2372, 2374 |  | 7 day week with NGT | 8015022 |
| 2376 | 37400.37600.40700.42600.43500.72600.595000 | Toilet Dado Works | 9d | 2027-03-07 | 2027-03-16 | 2371, 2372, 2374, 2375 |  | 7 day week with NGT | 8015032 |
| 2377 | 37400.37600.40700.42600.43500.72600.595100 | Toilet Flooring Works | 7d | 2027-03-16 | 2027-03-23 | 2373, 2376 |  | 7 day week with NGT | 8015042 |
| 2378 | 37400.37600.40700.42600.43500.72600.595200 | Living Dining Flooring | 15d | 2027-03-23 | 2027-04-07 | 2377 |  | 7 day week with NGT | 8015052 |
| 2379 | 37400.37600.40700.42600.43500.72600.595300 | Temporary Door Fixing | 9d | 2027-02-12 | 2027-02-21 | 2370 |  | 7 day week with NGT | 8015062 |
| 2380 | 37400.37600.40700.42600.43500.72600.595400 | Aluminium Door Widnow Fixing | 15d | 2027-04-07 | 2027-04-22 | 2378, 2379 |  | 7 day week with NGT | 8015072 |
| 2381 | 37400.37600.40700.42600.43500.72600.595500 | Rehung Door Fixing | 8d | 2027-04-22 | 2027-04-30 | 2380 |  | 7 day week with NGT | 8015082 |
| 2382 | 37400.37600.40700.42600.43500.72600.595600 | Putty Primer coat | 6d | 2027-04-30 | 2027-05-06 | 2381 |  | 7 day week with NGT | 8015092 |
| 2383 | 37400.37600.40700.42600.43500.72600.595700 | Painting First Coat | 12d | 2027-05-06 | 2027-05-18 | 2372, 2374, 2381, 2382 |  | 7 day week with NGT | 8015102 |
| 2384 | 37400.37600.40700.42600.43500.72600.595800 | False ceiling works | 10d | 2027-05-18 | 2027-05-28 | 2368, 2383 |  | 7 day week with NGT | 8015112 |

| ID | WBS | Task | Duration | Start | Finish | Predecessors | Constraint | Calendar | Unique_Task_ID |
| --- | --- | --- | --- | --- | --- | --- | --- | --- | --- |
| 2385 | 37400.37600.40700.42600.43500.72700 | **Twenty Three Floor** | 115d | 2027-02-13 | 2027-06-08 |  | start no earlier than 2027-02-13 | 7 day week with NGT | 7998432 |
| 2386 | 37400.37600.40700.42600.43500.72700.595900 | Blockwork | 10d | 2027-02-13 | 2027-02-23 | 2028 |  | 7 day week with NGT | 8015122 |
| 2387 | 37400.37600.40700.42600.43500.72700.596000 | Internal Plumbing Works | 6d | 2027-02-23 | 2027-03-01 | 2386 |  | 7 day week with NGT | 8015132 |
| 2388 | 37400.37600.40700.42600.43500.72700.596100 | Waterproofing Works | 10d | 2027-02-25 | 2027-03-07 | 2387SS+2d |  | 7 day week with NGT | 8015142 |
| 2389 | 37400.37600.40700.42600.43500.72700.596200 | PCC | 8d | 2027-03-09 | 2027-03-17 | 2388, 2391SS |  | 7 day week with NGT | 8015152 |
| 2390 | 37400.37600.40700.42600.43500.72700.596300 | Electrical Wiring works | 12d | 2027-02-25 | 2027-03-09 | 2388SS |  | 7 day week with NGT | 8015162 |
| 2391 | 37400.37600.40700.42600.43500.72700.596400 | Internal Plaster Works | 9d | 2027-03-09 | 2027-03-18 | 2387, 2388, 2390 |  | 7 day week with NGT | 8015172 |
| 2392 | 37400.37600.40700.42600.43500.72700.596500 | Toilet Dado Works | 9d | 2027-03-18 | 2027-03-27 | 2387, 2388, 2390, 2391 |  | 7 day week with NGT | 8015182 |
| 2393 | 37400.37600.40700.42600.43500.72700.596600 | Toilet Flooring Works | 7d | 2027-03-27 | 2027-04-03 | 2389, 2392 |  | 7 day week with NGT | 8015192 |
| 2394 | 37400.37600.40700.42600.43500.72700.596700 | Living Dining Flooring | 15d | 2027-04-03 | 2027-04-18 | 2393 |  | 7 day week with NGT | 8015202 |
| 2395 | 37400.37600.40700.42600.43500.72700.596800 | Temporary Door Fixing | 9d | 2027-02-23 | 2027-03-04 | 2386 |  | 7 day week with NGT | 8015212 |
| 2396 | 37400.37600.40700.42600.43500.72700.596900 | Aluminium Door Widnow Fixing | 15d | 2027-04-18 | 2027-05-03 | 2394, 2395 |  | 7 day week with NGT | 8015222 |
| 2397 | 37400.37600.40700.42600.43500.72700.597000 | Rehung Door Fixing | 8d | 2027-05-03 | 2027-05-11 | 2396 |  | 7 day week with NGT | 8015232 |
| 2398 | 37400.37600.40700.42600.43500.72700.597100 | Putty Primer coat | 6d | 2027-05-11 | 2027-05-17 | 2397 |  | 7 day week with NGT | 8015242 |
| 2399 | 37400.37600.40700.42600.43500.72700.597200 | Painting First Coat | 12d | 2027-05-17 | 2027-05-29 | 2388, 2390, 2397, 2398 |  | 7 day week with NGT | 8015252 |
| 2400 | 37400.37600.40700.42600.43500.72700.597300 | False ceiling works | 10d | 2027-05-29 | 2027-06-08 | 2384, 2399 |  | 7 day week with NGT | 8015262 |
| 2401 | 37400.37600.40700.42600.43500.72800 | **Twenty Four Floor** | 115d | 2027-02-24 | 2027-06-18 |  | start no earlier than 2027-02-24 | 7 day week with NGT | 7998442 |
| 2402 | 37400.37600.40700.42600.43500.72800.597400 | Blockwork | 10d | 2027-02-24 | 2027-03-05 | 2029 |  | 7 day week with NGT | 8015272 |
| 2403 | 37400.37600.40700.42600.43500.72800.597500 | Internal Plumbing Works | 6d | 2027-03-06 | 2027-03-11 | 2402 |  | 7 day week with NGT | 8015282 |
| 2404 | 37400.37600.40700.42600.43500.72800.597600 | Waterproofing Works | 10d | 2027-03-08 | 2027-03-17 | 2403SS+2d |  | 7 day week with NGT | 8015292 |
| 2405 | 37400.37600.40700.42600.43500.72800.597700 | PCC | 8d | 2027-03-20 | 2027-03-27 | 2404, 2407SS |  | 7 day week with NGT | 8015302 |
| 2406 | 37400.37600.40700.42600.43500.72800.597800 | Electrical Wiring works | 12d | 2027-03-08 | 2027-03-19 | 2404SS |  | 7 day week with NGT | 8015312 |
| 2407 | 37400.37600.40700.42600.43500.72800.597900 | Internal Plaster Works | 9d | 2027-03-20 | 2027-03-28 | 2403, 2404, 2406 |  | 7 day week with NGT | 8015322 |
| 2408 | 37400.37600.40700.42600.43500.72800.598000 | Toilet Dado Works | 9d | 2027-03-29 | 2027-04-06 | 2403, 2404, 2406, 2407 |  | 7 day week with NGT | 8015332 |
| 2409 | 37400.37600.40700.42600.43500.72800.598100 | Toilet Flooring Works | 7d | 2027-04-07 | 2027-04-13 | 2405, 2408 |  | 7 day week with NGT | 8015342 |
| 2410 | 37400.37600.40700.42600.43500.72800.598200 | Living Dining Flooring | 15d | 2027-04-14 | 2027-04-28 | 2409 |  | 7 day week with NGT | 8015352 |
| 2411 | 37400.37600.40700.42600.43500.72800.598300 | Temporary Door Fixing | 9d | 2027-03-06 | 2027-03-14 | 2402 |  | 7 day week with NGT | 8015362 |
| 2412 | 37400.37600.40700.42600.43500.72800.598400 | Aluminium Door Widnow Fixing | 15d | 2027-04-29 | 2027-05-13 | 2410, 2411 |  | 7 day week with NGT | 8015372 |
| 2413 | 37400.37600.40700.42600.43500.72800.598500 | Rehung Door Fixing | 8d | 2027-05-14 | 2027-05-21 | 2412 |  | 7 day week with NGT | 8015382 |
| 2414 | 37400.37600.40700.42600.43500.72800.598600 | Putty Primer coat | 6d | 2027-05-22 | 2027-05-27 | 2413 |  | 7 day week with NGT | 8015392 |
| 2415 | 37400.37600.40700.42600.43500.72800.598700 | Painting First Coat | 12d | 2027-05-28 | 2027-06-08 | 2404, 2406, 2413, 2414 |  | 7 day week with NGT | 8015402 |
| 2416 | 37400.37600.40700.42600.43500.72800.598800 | False ceiling works | 10d | 2027-06-09 | 2027-06-18 | 2400, 2415 |  | 7 day week with NGT | 8015412 |

| ID | WBS | Task | Duration | Start | Finish | Predecessors | Constraint | Calendar | Unique_Task_ID |
| --- | --- | --- | --- | --- | --- | --- | --- | --- | --- |
| 2417 | 37400.37600.40700.42600.43500.72900 | **Twenty Five Floors** | 115d | 2027-03-07 | 2027-06-29 |  | start no earlier than 2027-03-07 | 7 day week with NGT | 7998452 |
| 2418 | 37400.37600.40700.42600.43500.72900.598900 | Blockwork | 10d | 2027-03-07 | 2027-03-16 | 2030 |  | 7 day week with NGT | 8015422 |
| 2419 | 37400.37600.40700.42600.43500.72900.599000 | Internal Plumbing Works | 6d | 2027-03-17 | 2027-03-22 | 2418 |  | 7 day week with NGT | 8015432 |
| 2420 | 37400.37600.40700.42600.43500.72900.599100 | Waterproofing Works | 10d | 2027-03-19 | 2027-03-28 | 2419SS+2d |  | 7 day week with NGT | 8015442 |
| 2421 | 37400.37600.40700.42600.43500.72900.599200 | PCC | 8d | 2027-03-31 | 2027-04-07 | 2420, 2423SS |  | 7 day week with NGT | 8015452 |
| 2422 | 37400.37600.40700.42600.43500.72900.599300 | Electrical Wiring works | 12d | 2027-03-19 | 2027-03-30 | 2420SS |  | 7 day week with NGT | 8015462 |
| 2423 | 37400.37600.40700.42600.43500.72900.599400 | Internal Plaster Works | 9d | 2027-03-31 | 2027-04-08 | 2419, 2420, 2422 |  | 7 day week with NGT | 8015472 |
| 2424 | 37400.37600.40700.42600.43500.72900.599500 | Toilet Dado Works | 9d | 2027-04-09 | 2027-04-17 | 2419, 2420, 2422, 2423 |  | 7 day week with NGT | 8015482 |
| 2425 | 37400.37600.40700.42600.43500.72900.599600 | Toilet Flooring Works | 7d | 2027-04-18 | 2027-04-24 | 2421, 2424 |  | 7 day week with NGT | 8015492 |
| 2426 | 37400.37600.40700.42600.43500.72900.599700 | Living Dining Flooring | 15d | 2027-04-25 | 2027-05-09 | 2425 |  | 7 day week with NGT | 8015502 |
| 2427 | 37400.37600.40700.42600.43500.72900.599800 | Temporary Door Fixing | 9d | 2027-03-17 | 2027-03-25 | 2418 |  | 7 day week with NGT | 8015512 |
| 2428 | 37400.37600.40700.42600.43500.72900.599900 | Aluminium Door Widnow Fixing | 15d | 2027-05-10 | 2027-05-24 | 2426, 2427 |  | 7 day week with NGT | 8015522 |
| 2429 | 37400.37600.40700.42600.43500.72900.600000 | Rehung Door Fixing | 8d | 2027-05-25 | 2027-06-01 | 2428 |  | 7 day week with NGT | 8015532 |
| 2430 | 37400.37600.40700.42600.43500.72900.600100 | Putty Primer coat | 6d | 2027-06-02 | 2027-06-07 | 2429 |  | 7 day week with NGT | 8015542 |
| 2431 | 37400.37600.40700.42600.43500.72900.600200 | Painting First Coat | 12d | 2027-06-08 | 2027-06-19 | 2420, 2422, 2429, 2430 |  | 7 day week with NGT | 8015552 |
| 2432 | 37400.37600.40700.42600.43500.72900.600300 | False ceiling works | 10d | 2027-06-20 | 2027-06-29 | 2416, 2431 |  | 7 day week with NGT | 8015562 |
| 2433 | 37400.37600.40700.42600.43500.73000 | **Twenty Six Floor** | 115d | 2027-03-18 | 2027-07-10 |  | start no earlier than 2027-03-18 | 7 day week with NGT | 7998462 |
| 2434 | 37400.37600.40700.42600.43500.73000.600400 | Blockwork | 10d | 2027-03-18 | 2027-03-27 | 2031 |  | 7 day week with NGT | 8015572 |
| 2435 | 37400.37600.40700.42600.43500.73000.600500 | Internal Plumbing Works | 6d | 2027-03-28 | 2027-04-02 | 2434 |  | 7 day week with NGT | 8015582 |
| 2436 | 37400.37600.40700.42600.43500.73000.600600 | Waterproofing Works | 10d | 2027-03-30 | 2027-04-08 | 2435SS+2d |  | 7 day week with NGT | 8015592 |
| 2437 | 37400.37600.40700.42600.43500.73000.600700 | PCC | 8d | 2027-04-11 | 2027-04-18 | 2436, 2439SS |  | 7 day week with NGT | 8015602 |
| 2438 | 37400.37600.40700.42600.43500.73000.600800 | Electrical Wiring works | 12d | 2027-03-30 | 2027-04-10 | 2436SS |  | 7 day week with NGT | 8015612 |
| 2439 | 37400.37600.40700.42600.43500.73000.600900 | Internal Plaster Works | 9d | 2027-04-11 | 2027-04-19 | 2435, 2436, 2438 |  | 7 day week with NGT | 8015622 |
| 2440 | 37400.37600.40700.42600.43500.73000.601000 | Toilet Dado Works | 9d | 2027-04-20 | 2027-04-28 | 2435, 2436, 2438, 2439 |  | 7 day week with NGT | 8015632 |
| 2441 | 37400.37600.40700.42600.43500.73000.601100 | Toilet Flooring Works | 7d | 2027-04-29 | 2027-05-05 | 2437, 2440 |  | 7 day week with NGT | 8015642 |
| 2442 | 37400.37600.40700.42600.43500.73000.601200 | Living Dining Flooring | 15d | 2027-05-06 | 2027-05-20 | 2441 |  | 7 day week with NGT | 8015652 |
| 2443 | 37400.37600.40700.42600.43500.73000.601300 | Temporary Door Fixing | 9d | 2027-03-28 | 2027-04-05 | 2434 |  | 7 day week with NGT | 8015662 |
| 2444 | 37400.37600.40700.42600.43500.73000.601400 | Aluminium Door Widnow Fixing | 15d | 2027-05-21 | 2027-06-04 | 2442, 2443 |  | 7 day week with NGT | 8015672 |
| 2445 | 37400.37600.40700.42600.43500.73000.601500 | Rehung Door Fixing | 8d | 2027-06-05 | 2027-06-12 | 2444 |  | 7 day week with NGT | 8015682 |
| 2446 | 37400.37600.40700.42600.43500.73000.601600 | Putty Primer coat | 6d | 2027-06-13 | 2027-06-18 | 2445 |  | 7 day week with NGT | 8015692 |
| 2447 | 37400.37600.40700.42600.43500.73000.601700 | Painting First Coat | 12d | 2027-06-19 | 2027-06-30 | 2436, 2438, 2445, 2446 |  | 7 day week with NGT | 8015702 |
| 2448 | 37400.37600.40700.42600.43500.73000.601800 | False ceiling works | 10d | 2027-07-01 | 2027-07-10 | 2432, 2447 |  | 7 day week with NGT | 8015712 |

| ID | WBS | Task | Duration | Start | Finish | Predecessors | Constraint | Calendar | Unique_Task_ID |
| --- | --- | --- | --- | --- | --- | --- | --- | --- | --- |
| 2449 | 37400.37600.40700.42600.43500.73100 | **Twenty Seven Floors** | 115d | 2027-04-04 | 2027-07-27 |  | start no earlier than 2027-04-04 | 7 day week with NGT | 7998472 |
| 2450 | 37400.37600.40700.42600.43500.73100.601900 | Blockwork | 10d | 2027-04-04 | 2027-04-13 | 2032 |  | 7 day week with NGT | 8015722 |
| 2451 | 37400.37600.40700.42600.43500.73100.602000 | Internal Plumbing Works | 6d | 2027-04-14 | 2027-04-19 | 2450 |  | 7 day week with NGT | 8015732 |
| 2452 | 37400.37600.40700.42600.43500.73100.602100 | Waterproofing Works | 10d | 2027-04-16 | 2027-04-25 | 2451SS+2d |  | 7 day week with NGT | 8015742 |
| 2453 | 37400.37600.40700.42600.43500.73100.602200 | PCC | 8d | 2027-04-28 | 2027-05-05 | 2452, 2455SS |  | 7 day week with NGT | 8015752 |
| 2454 | 37400.37600.40700.42600.43500.73100.602300 | Electrical Wiring works | 12d | 2027-04-16 | 2027-04-27 | 2452SS |  | 7 day week with NGT | 8015762 |
| 2455 | 37400.37600.40700.42600.43500.73100.602400 | Internal Plaster Works | 9d | 2027-04-28 | 2027-05-06 | 2451, 2452, 2454 |  | 7 day week with NGT | 8015772 |
| 2456 | 37400.37600.40700.42600.43500.73100.602500 | Toilet Dado Works | 9d | 2027-05-07 | 2027-05-15 | 2451, 2452, 2454, 2455 |  | 7 day week with NGT | 8015782 |
| 2457 | 37400.37600.40700.42600.43500.73100.602600 | Toilet Flooring Works | 7d | 2027-05-16 | 2027-05-22 | 2453, 2456 |  | 7 day week with NGT | 8015792 |
| 2458 | 37400.37600.40700.42600.43500.73100.602700 | Living Dining Flooring | 15d | 2027-05-23 | 2027-06-06 | 2457 |  | 7 day week with NGT | 8015802 |
| 2459 | 37400.37600.40700.42600.43500.73100.602800 | Temporary Door Fixing | 9d | 2027-04-14 | 2027-04-22 | 2450 |  | 7 day week with NGT | 8015812 |
| 2460 | 37400.37600.40700.42600.43500.73100.602900 | Aluminium Door Widnow Fixing | 15d | 2027-06-07 | 2027-06-21 | 2458, 2459 |  | 7 day week with NGT | 8015822 |
| 2461 | 37400.37600.40700.42600.43500.73100.603000 | Rehung Door Fixing | 8d | 2027-06-22 | 2027-06-29 | 2460 |  | 7 day week with NGT | 8015832 |
| 2462 | 37400.37600.40700.42600.43500.73100.603100 | Putty Primer coat | 6d | 2027-06-30 | 2027-07-05 | 2461 |  | 7 day week with NGT | 8015842 |
| 2463 | 37400.37600.40700.42600.43500.73100.603200 | Painting First Coat | 12d | 2027-07-06 | 2027-07-17 | 2452, 2454, 2461, 2462 |  | 7 day week with NGT | 8015852 |
| 2464 | 37400.37600.40700.42600.43500.73100.603300 | False ceiling works | 10d | 2027-07-18 | 2027-07-27 | 2448, 2463 |  | 7 day week with NGT | 8015862 |
| 2465 | 37400.37600.40700.42600.43500.73200 | **Twenty Eight Floor** | 121d | 2027-04-08 | 2027-08-06 |  | start no earlier than 2027-04-08 | 7 day week with NGT | 7998482 |
| 2466 | 37400.37600.40700.42600.43500.73200.603400 | Blockwork | 10d | 2027-04-08 | 2027-04-17 | 2033 |  | 7 day week with NGT | 8015872 |
| 2467 | 37400.37600.40700.42600.43500.73200.603500 | Internal Plumbing Works | 6d | 2027-04-18 | 2027-04-23 | 2466 |  | 7 day week with NGT | 8015882 |
| 2468 | 37400.37600.40700.42600.43500.73200.603600 | Waterproofing Works | 10d | 2027-04-20 | 2027-04-29 | 2467SS+2d |  | 7 day week with NGT | 8015892 |
| 2469 | 37400.37600.40700.42600.43500.73200.603700 | PCC | 8d | 2027-05-02 | 2027-05-09 | 2468, 2471SS |  | 7 day week with NGT | 8015902 |
| 2470 | 37400.37600.40700.42600.43500.73200.603800 | Electrical Wiring works | 12d | 2027-04-20 | 2027-05-01 | 2468SS |  | 7 day week with NGT | 8015912 |
| 2471 | 37400.37600.40700.42600.43500.73200.603900 | Internal Plaster Works | 9d | 2027-05-02 | 2027-05-10 | 2467, 2468, 2470 |  | 7 day week with NGT | 8015922 |
| 2472 | 37400.37600.40700.42600.43500.73200.604000 | Toilet Dado Works | 9d | 2027-05-11 | 2027-05-19 | 2467, 2468, 2470, 2471 |  | 7 day week with NGT | 8015932 |
| 2473 | 37400.37600.40700.42600.43500.73200.604100 | Toilet Flooring Works | 7d | 2027-05-20 | 2027-05-26 | 2469, 2472 |  | 7 day week with NGT | 8015942 |
| 2474 | 37400.37600.40700.42600.43500.73200.604200 | Living Dining Flooring | 15d | 2027-05-27 | 2027-06-10 | 2473 |  | 7 day week with NGT | 8015952 |
| 2475 | 37400.37600.40700.42600.43500.73200.604300 | Temporary Door Fixing | 9d | 2027-04-18 | 2027-04-26 | 2466 |  | 7 day week with NGT | 8015962 |
| 2476 | 37400.37600.40700.42600.43500.73200.604400 | Aluminium Door Widnow Fixing | 15d | 2027-06-11 | 2027-06-25 | 2474, 2475 |  | 7 day week with NGT | 8015972 |
| 2477 | 37400.37600.40700.42600.43500.73200.604500 | Rehung Door Fixing | 8d | 2027-06-26 | 2027-07-03 | 2476 |  | 7 day week with NGT | 8015982 |
| 2478 | 37400.37600.40700.42600.43500.73200.604600 | Putty Primer coat | 6d | 2027-07-04 | 2027-07-09 | 2477 |  | 7 day week with NGT | 8015992 |
| 2479 | 37400.37600.40700.42600.43500.73200.604700 | Painting First Coat | 12d | 2027-07-10 | 2027-07-21 | 2468, 2470, 2477, 2478 |  | 7 day week with NGT | 8016002 |
| 2480 | 37400.37600.40700.42600.43500.73200.604800 | False ceiling works | 10d | 2027-07-28 | 2027-08-06 | 2464, 2479 |  | 7 day week with NGT | 8016012 |

| ID | WBS | Task | Duration | Start | Finish | Predecessors | Constraint | Calendar | Unique_Task_ID |
| --- | --- | --- | --- | --- | --- | --- | --- | --- | --- |
| 2481 | 37400.37600.40700.42600.43500.73300 | **Twenty Nine Floors** | 127d | 2027-04-12 | 2027-08-16 |  | start no earlier than 2027-04-12 | 7 day week with NGT | 7998492 |
| 2482 | 37400.37600.40700.42600.43500.73300.604900 | Blockwork | 22d | 2027-04-12 | 2027-05-03 | 2034 |  | 7 day week with NGT | 8016022 |
| 2483 | 37400.37600.40700.42600.43500.73300.605000 | Internal Plumbing Works | 6d | 2027-05-04 | 2027-05-09 | 2482 |  | 7 day week with NGT | 8016032 |
| 2484 | 37400.37600.40700.42600.43500.73300.605100 | Waterproofing Works | 10d | 2027-05-06 | 2027-05-15 | 2483SS+2d |  | 7 day week with NGT | 8016042 |
| 2485 | 37400.37600.40700.42600.43500.73300.605200 | PCC | 8d | 2027-05-18 | 2027-05-25 | 2484, 2487SS |  | 7 day week with NGT | 8016052 |
| 2486 | 37400.37600.40700.42600.43500.73300.605300 | Electrical Wiring works | 12d | 2027-05-06 | 2027-05-17 | 2484SS |  | 7 day week with NGT | 8016062 |
| 2487 | 37400.37600.40700.42600.43500.73300.605400 | Internal Plaster Works | 9d | 2027-05-18 | 2027-05-26 | 2483, 2484, 2486 |  | 7 day week with NGT | 8016072 |
| 2488 | 37400.37600.40700.42600.43500.73300.605500 | Toilet Dado Works | 9d | 2027-05-27 | 2027-06-04 | 2483, 2484, 2486, 2487 |  | 7 day week with NGT | 8016082 |
| 2489 | 37400.37600.40700.42600.43500.73300.605600 | Toilet Flooring Works | 7d | 2027-06-05 | 2027-06-11 | 2485, 2488 |  | 7 day week with NGT | 8016092 |
| 2490 | 37400.37600.40700.42600.43500.73300.605700 | Living Dining Flooring | 15d | 2027-06-12 | 2027-06-26 | 2489 |  | 7 day week with NGT | 8016102 |
| 2491 | 37400.37600.40700.42600.43500.73300.605800 | Temporary Door Fixing | 9d | 2027-05-04 | 2027-05-12 | 2482 |  | 7 day week with NGT | 8016112 |
| 2492 | 37400.37600.40700.42600.43500.73300.605900 | Aluminium Door Widnow Fixing | 15d | 2027-06-27 | 2027-07-11 | 2490, 2491 |  | 7 day week with NGT | 8016122 |
| 2493 | 37400.37600.40700.42600.43500.73300.606000 | Rehung Door Fixing | 8d | 2027-07-12 | 2027-07-19 | 2492 |  | 7 day week with NGT | 8016132 |
| 2494 | 37400.37600.40700.42600.43500.73300.606100 | Putty Primer coat | 6d | 2027-07-20 | 2027-07-25 | 2493 |  | 7 day week with NGT | 8016142 |
| 2495 | 37400.37600.40700.42600.43500.73300.606200 | Painting First Coat | 12d | 2027-07-26 | 2027-08-06 | 2484, 2486, 2493, 2494 |  | 7 day week with NGT | 8016152 |
| 2496 | 37400.37600.40700.42600.43500.73300.606300 | False ceiling works | 10d | 2027-08-07 | 2027-08-16 | 2480, 2495 |  | 7 day week with NGT | 8016162 |
| 2497 | 37400.37600.40700.42600.43500.73400 | **Thirty Floors** | 115d | 2027-05-04 | 2027-08-26 |  | start no earlier than 2027-05-04 | 7 day week with NGT | 135275 |
| 2498 | 37400.37600.40700.42600.43500.73400.606400 | Blockwork | 3d | 2027-05-04 | 2027-05-06 | 2482 |  | 7 day week with NGT | 135285 |
| 2499 | 37400.37600.40700.42600.43500.73400.606500 | Internal Plumbing Works | 6d | 2027-05-07 | 2027-05-12 | 2498 |  | 7 day week with NGT | 135295 |
| 2500 | 37400.37600.40700.42600.43500.73400.606600 | Waterproofing Works | 10d | 2027-05-09 | 2027-05-18 | 2499SS+2d |  | 7 day week with NGT | 135305 |
| 2501 | 37400.37600.40700.42600.43500.73400.606700 | PCC | 8d | 2027-05-21 | 2027-05-28 | 2500, 2503SS |  | 7 day week with NGT | 135345 |
| 2502 | 37400.37600.40700.42600.43500.73400.606800 | Electrical Wiring works | 12d | 2027-05-09 | 2027-05-20 | 2500SS |  | 7 day week with NGT | 135315 |
| 2503 | 37400.37600.40700.42600.43500.73400.606900 | Internal Plaster Works | 9d | 2027-05-21 | 2027-05-29 | 2499, 2500, 2502 |  | 7 day week with NGT | 135325 |
| 2504 | 37400.37600.40700.42600.43500.73400.607000 | Toilet Dado Works | 9d | 2027-05-30 | 2027-06-07 | 2499, 2500, 2502, 2503 |  | 7 day week with NGT | 135335 |
| 2505 | 37400.37600.40700.42600.43500.73400.607100 | Toilet Flooring Works | 7d | 2027-06-08 | 2027-06-14 | 2501, 2504 |  | 7 day week with NGT | 135355 |
| 2506 | 37400.37600.40700.42600.43500.73400.607200 | Living Dining Flooring | 15d | 2027-06-15 | 2027-06-29 | 2505 |  | 7 day week with NGT | 135365 |
| 2507 | 37400.37600.40700.42600.43500.73400.607300 | Temporary Door Fixing | 9d | 2027-05-07 | 2027-05-15 | 2498 |  | 7 day week with NGT | 135375 |
| 2508 | 37400.37600.40700.42600.43500.73400.607400 | Aluminium Door Widnow Fixing | 15d | 2027-06-30 | 2027-07-14 | 2506, 2507 |  | 7 day week with NGT | 135385 |
| 2509 | 37400.37600.40700.42600.43500.73400.607500 | Rehung Door Fixing | 8d | 2027-07-15 | 2027-07-22 | 2508 |  | 7 day week with NGT | 135395 |
| 2510 | 37400.37600.40700.42600.43500.73400.607600 | Putty Primer coat | 6d | 2027-07-23 | 2027-07-28 | 2509 |  | 7 day week with NGT | 135405 |
| 2511 | 37400.37600.40700.42600.43500.73400.607700 | Painting First Coat | 12d | 2027-07-29 | 2027-08-09 | 2500, 2502, 2509, 2510 |  | 7 day week with NGT | 135415 |
| 2512 | 37400.37600.40700.42600.43500.73400.607800 | False ceiling works | 10d | 2027-08-17 | 2027-08-26 | 2496, 2511 |  | 7 day week with NGT | 135425 |

| ID | WBS | Task | Duration | Start | Finish | Predecessors | Constraint | Calendar | Unique_Task_ID |
| --- | --- | --- | --- | --- | --- | --- | --- | --- | --- |
| 2513 | 37400.37600.40700.42600.43500.73500 | **Thirty one Floor** | 153d | 2027-05-07 | 2027-10-06 |  | start no earlier than 2027-05-07 | 7 day week with NGT | 7998502 |
| 2514 | 37400.37600.40700.42600.43500.73500.607900 | Blockwork | 7d | 2027-05-07 | 2027-05-13 | 2498 |  | 7 day week with NGT | 8016172 |
| 2515 | 37400.37600.40700.42600.43500.73500.608000 | Internal Plumbing Works | 15d | 2027-05-14 | 2027-05-28 | 2514 |  | 7 day week with NGT | 8016182 |
| 2516 | 37400.37600.40700.42600.43500.73500.608100 | Waterproofing Works | 15d | 2027-05-16 | 2027-05-30 | 2515SS+2d |  | 7 day week with NGT | 8016192 |
| 2517 | 37400.37600.40700.42600.43500.73500.608200 | PCC | 12d | 2027-05-31 | 2027-06-11 | 2516, 2519SS |  | 7 day week with NGT | 8016202 |
| 2518 | 37400.37600.40700.42600.43500.73500.608300 | Electrical Wiring works | 15d | 2027-05-16 | 2027-05-30 | 2516SS |  | 7 day week with NGT | 8016212 |
| 2519 | 37400.37600.40700.42600.43500.73500.608400 | Internal Plaster Works | 13d | 2027-05-31 | 2027-06-12 | 2515, 2516, 2518 |  | 7 day week with NGT | 8016222 |
| 2520 | 37400.37600.40700.42600.43500.73500.608500 | Toilet Dado Works | 20d | 2027-06-13 | 2027-07-02 | 2515, 2516, 2518, 2519 |  | 7 day week with NGT | 8016232 |
| 2521 | 37400.37600.40700.42600.43500.73500.608600 | Toilet Flooring Works | 30d | 2027-07-03 | 2027-08-01 | 2517, 2520 |  | 7 day week with NGT | 8016242 |
| 2522 | 37400.37600.40700.42600.43500.73500.608700 | Living Dining Flooring | 15d | 2027-08-02 | 2027-08-16 | 2521 |  | 7 day week with NGT | 8016252 |
| 2523 | 37400.37600.40700.42600.43500.73500.608800 | Temporary Door Fixing | 9d | 2027-05-14 | 2027-05-22 | 2514 |  | 7 day week with NGT | 8016262 |
| 2524 | 37400.37600.40700.42600.43500.73500.608900 | Aluminium Door Widnow Fixing | 15d | 2027-08-17 | 2027-08-31 | 2522, 2523 |  | 7 day week with NGT | 8016272 |
| 2525 | 37400.37600.40700.42600.43500.73500.609000 | Rehung Door Fixing | 8d | 2027-09-01 | 2027-09-08 | 2524 |  | 7 day week with NGT | 8016282 |
| 2526 | 37400.37600.40700.42600.43500.73500.609100 | Putty Primer coat | 6d | 2027-09-09 | 2027-09-14 | 2525 |  | 7 day week with NGT | 8016292 |
| 2527 | 37400.37600.40700.42600.43500.73500.609200 | Painting First Coat | 12d | 2027-09-15 | 2027-09-26 | 2516, 2518, 2525, 2526 |  | 7 day week with NGT | 8016302 |
| 2528 | 37400.37600.40700.42600.43500.73500.609300 | False ceiling works | 10d | 2027-09-27 | 2027-10-06 | 2512, 2527 |  | 7 day week with NGT | 8016312 |
| 2529 | 37400.37600.40700.42600.223400 | **Terrace Finishing** | 80d | 2027-04-04 | 2027-06-22 |  | start no earlier than 2027-04-04 | 7 day week with NGT | 8000352 |
| 2530 | 37400.37600.40700.42600.223400.346000 | Terrace Waterproofing | 40d | 2027-04-04 | 2027-05-13 | 2002 |  | 7 day week with NGT | 8002172 |
| 2531 | 37400.37600.40700.42600.223400.346100 | Terrace Finishing | 40d | 2027-05-14 | 2027-06-22 | 2530 |  | 7 day week with NGT | 8002182 |
| 2532 | 37400.37600.40700.42600.122500 | **Common Area Finishing** | 288d | 2027-04-04 | 2028-03-01 |  | start no earlier than 2027-04-04 | 7 day week with NGT | 7998932 |
| 2533 | 37400.37600.40700.42600.122500.346200 | Blockwork | 40d | 2027-04-04 | 2027-05-13 | 2002 |  | 7 day week with NGT | 8002192 |
| 2534 | 37400.37600.40700.42600.122500.346300 | Internal Plaster | 120d | 2027-04-24 | 2027-08-21 | 2533SS+20d |  | 7 day week with NGT | 8002202 |
| 2535 | 37400.37600.40700.42600.122500.346400 | Staircase railing fixing | 150d | 2027-05-14 | 2027-10-10 | 2534SS+20d |  | 7 day week with NGT | 8002212 |
| 2536 | 37400.37600.40700.42600.122500.346500 | Main Staircase flooring | 150d | 2027-07-23 | 2028-02-02 | 2535SS+70d |  | 7 day week with NGT | 8002222 |
| 2537 | 37400.37600.40700.42600.122500.346600 | Fire Staircase railing | 98d | 2027-10-11 | 2028-03-01 | 2536FS-70d |  | 7 day week with NGT | 8002232 |
| 2538 | 37400.37600.40700.42600.122500.346700 | Fire Door Work | 60d | 2027-08-22 | 2027-10-20 | 2536SS+30d |  | 7 day week with NGT | 8002242 |
| 2539 | 37400.37600.40700.42600.122500.346800 | Electrical wiring work | 120d | 2027-04-24 | 2027-08-21 | 2533SS+20d |  | 7 day week with NGT | 8002252 |
| 2540 | 37400.37600.40700.42600.122500.346900 | Lobby Flooring | 150d | 2027-05-24 | 2027-10-20 | 2539SS+30d |  | 7 day week with NGT | 8002262 |
| 2541 | 37400.37600.40700.42600.122500.347000 | Ceiling & wall putty-primer | 110d | 2027-05-24 | 2027-09-10 | 2534SS+30d |  | 7 day week with NGT | 8002272 |
| 2542 | 37400.37600.40700.42600.122500.347100 | Ceiling and wall painting | 100d | 2027-06-03 | 2027-09-10 | 2534SS+40d |  | 7 day week with NGT | 8002282 |
| 2543 | 37400.37600.40700.42600.122500.347200 | Light fixture supply & installation | 45d | 2027-08-02 | 2027-09-15 | 2542SS+60d |  | 7 day week with NGT | 8002292 |

| ID | WBS | Task | Duration | Start | Finish | Predecessors | Constraint | Calendar | Unique_Task_ID |
| --- | --- | --- | --- | --- | --- | --- | --- | --- | --- |
| 2544 | 37400.37600.40700.42600.50800 | **Glass Railing Fixing** | 60d | 2027-09-03 | 2027-12-16 |  | start no earlier than 2027-09-03 | 7 day week with NGT | 7997892 |
| 2545 | 37400.37600.40700.42600.50800.347300 | 2nd Floor | 2d | 2027-09-03 | 2027-09-04 | 2608 |  | 7 day week with NGT | 8002302 |
| 2546 | 37400.37600.40700.42600.50800.347400 | 3rd Floor | 2d | 2027-09-05 | 2027-09-06 | 2545 |  | 7 day week with NGT | 8002312 |
| 2547 | 37400.37600.40700.42600.50800.347500 | 4th Floor | 2d | 2027-09-07 | 2027-09-08 | 2546 |  | 7 day week with NGT | 8002322 |
| 2548 | 37400.37600.40700.42600.50800.347600 | 5th Floor | 2d | 2027-09-09 | 2027-09-10 | 2547 |  | 7 day week with NGT | 8002332 |
| 2549 | 37400.37600.40700.42600.50800.347700 | 6th Floor | 2d | 2027-09-11 | 2027-09-12 | 2548 |  | 7 day week with NGT | 8002342 |
| 2550 | 37400.37600.40700.42600.50800.347800 | 7th Floor | 2d | 2027-09-13 | 2027-09-14 | 2549 |  | 7 day week with NGT | 8002352 |
| 2551 | 37400.37600.40700.42600.50800.347900 | 8th Floor | 2d | 2027-09-15 | 2027-09-16 | 2550 |  | 7 day week with NGT | 8002362 |
| 2552 | 37400.37600.40700.42600.50800.348000 | 9th Floor | 2d | 2027-09-17 | 2027-09-18 | 2551 |  | 7 day week with NGT | 8002372 |
| 2553 | 37400.37600.40700.42600.50800.348100 | 10th Floor | 2d | 2027-09-19 | 2027-09-20 | 2552 |  | 7 day week with NGT | 8002382 |
| 2554 | 37400.37600.40700.42600.50800.348200 | 11th Floor | 2d | 2027-09-21 | 2027-09-22 | 2553 |  | 7 day week with NGT | 8002392 |
| 2555 | 37400.37600.40700.42600.50800.348300 | 12th Floor | 2d | 2027-09-23 | 2027-09-24 | 2554 |  | 7 day week with NGT | 8002402 |
| 2556 | 37400.37600.40700.42600.50800.348400 | 13th Floor | 2d | 2027-09-25 | 2027-09-26 | 2555 |  | 7 day week with NGT | 8002412 |
| 2557 | 37400.37600.40700.42600.50800.348500 | 14th Floor | 2d | 2027-09-27 | 2027-09-28 | 2556 |  | 7 day week with NGT | 8002422 |
| 2558 | 37400.37600.40700.42600.50800.348600 | 15th Floor | 2d | 2027-09-29 | 2027-09-30 | 2557 |  | 7 day week with NGT | 8002432 |
| 2559 | 37400.37600.40700.42600.50800.348700 | 16th Floor | 2d | 2027-10-01 | 2027-10-02 | 2558 |  | 7 day week with NGT | 8002442 |
| 2560 | 37400.37600.40700.42600.50800.348800 | 17th Floor | 2d | 2027-10-03 | 2027-10-04 | 2559 |  | 7 day week with NGT | 8002452 |
| 2561 | 37400.37600.40700.42600.50800.348900 | 18th Floor | 2d | 2027-10-05 | 2027-10-06 | 2560 |  | 7 day week with NGT | 8002462 |
| 2562 | 37400.37600.40700.42600.50800.349000 | 19th Floor | 2d | 2027-10-07 | 2027-10-08 | 2561 |  | 7 day week with NGT | 8002472 |
| 2563 | 37400.37600.40700.42600.50800.349100 | 20th Floor | 2d | 2027-10-09 | 2027-10-10 | 2562 |  | 7 day week with NGT | 8002482 |
| 2564 | 37400.37600.40700.42600.50800.349200 | 21st Floor | 2d | 2027-10-11 | 2027-10-12 | 2563 |  | 7 day week with NGT | 8002492 |
| 2565 | 37400.37600.40700.42600.50800.349300 | 22nd Floor | 2d | 2027-10-13 | 2027-10-14 | 2564 |  | 7 day week with NGT | 8002502 |
| 2566 | 37400.37600.40700.42600.50800.349400 | 23rd Floor | 2d | 2027-10-15 | 2027-10-16 | 2565 |  | 7 day week with NGT | 8002512 |
| 2567 | 37400.37600.40700.42600.50800.349500 | 24th Floor | 2d | 2027-10-17 | 2027-10-18 | 2566 |  | 7 day week with NGT | 8002522 |
| 2568 | 37400.37600.40700.42600.50800.349600 | 25th Floor | 2d | 2027-10-19 | 2027-10-20 | 2567 |  | 7 day week with NGT | 8002532 |
| 2569 | 37400.37600.40700.42600.50800.349700 | 26th Floor | 2d | 2027-10-21 | 2027-10-22 | 2568 |  | 7 day week with NGT | 8002542 |
| 2570 | 37400.37600.40700.42600.50800.349800 | 27th Floor | 2d | 2027-10-23 | 2027-10-24 | 2569 |  | 7 day week with NGT | 8002552 |
| 2571 | 37400.37600.40700.42600.50800.349900 | 28th Floor | 2d | 2027-10-25 | 2027-10-26 | 2570 |  | 7 day week with NGT | 8002562 |
| 2572 | 37400.37600.40700.42600.50800.350000 | 29th Floor | 2d | 2027-10-27 | 2027-10-28 | 2571 |  | 7 day week with NGT | 8002572 |
| 2573 | 37400.37600.40700.42600.50800.350100 | 30th Floor | 2d | 2027-10-29 | 2027-10-30 | 2572 |  | 7 day week with NGT | 8002582 |
| 2574 | 37400.37600.40700.42600.50800.350200 | 31st Floor | 2d | 2027-10-31 | 2027-12-16 | 2573 |  | 7 day week with NGT | 8002592 |

| ID | WBS | Task | Duration | Start | Finish | Predecessors | Constraint | Calendar | Unique_Task_ID |
| --- | --- | --- | --- | --- | --- | --- | --- | --- | --- |
| 2575 | 37400.37600.40700.115400 | **MEP** | 420d | 2027-04-04 | 2028-07-11 |  | start no earlier than 2027-04-04 | 7 day week with NGT | 7998812 |
| 2576 | 37400.37600.40700.115400.118400 | **Electrical Works** | 265d | 2027-04-04 | 2028-02-07 |  | start no earlier than 2027-04-04 | 7 day week with NGT | 7998892 |
| 2577 | 37400.37600.40700.115400.118400.350300 | Cable Tray | 90d | 2027-04-04 | 2027-07-02 | 2002 |  | 7 day week with NGT | 8002602 |
| 2578 | 37400.37600.40700.115400.118400.350400 | Cable, main & sub main | 80d | 2027-05-19 | 2027-08-06 | 2577SS+45d |  | 7 day week with NGT | 8002612 |
| 2579 | 37400.37600.40700.115400.118400.350500 | LT panel & DB | 120d | 2027-07-03 | 2027-10-30 | 2577 |  | 7 day week with NGT | 8002622 |
| 2580 | 37400.37600.40700.115400.118400.350600 | Rising main | 90d | 2027-06-03 | 2027-08-31 | 2577SS+60d |  | 7 day week with NGT | 8002632 |
| 2581 | 37400.37600.40700.115400.118400.350700 | EARTHING Works | 60d | 2027-04-19 | 2027-06-17 | 2577SS+15d |  | 7 day week with NGT | 8002642 |
| 2582 | 37400.37600.40700.115400.118400.350800 | Advance lightening protection | 60d | 2027-06-23 | 2027-08-21 | 2531 |  | 7 day week with NGT | 8002652 |
| 2583 | 37400.37600.40700.115400.118400.350900 | Inverter | 35d | 2027-10-06 | 2027-12-24 | 2580, 2581, 2584 |  | 7 day week with NGT | 8002662 |
| 2584 | 37400.37600.40700.115400.118400.351000 | Energy meter | 60d | 2027-08-07 | 2027-10-05 | 2578 |  | 7 day week with NGT | 8002672 |
| 2585 | 37400.37600.40700.115400.118400.351100 | Exhast fan | 60d | 2027-07-08 | 2027-09-05 | 2524FF+5d |  | 7 day week with NGT | 8002682 |
| 2586 | 37400.37600.40700.115400.118400.351200 | FTTH | 60d | 2027-06-08 | 2027-08-06 | 2581FS-10d |  | 7 day week with NGT | 8002692 |
| 2587 | 37400.37600.40700.115400.118400.351300 | Security System - FA & PA | 55d | 2027-10-31 | 2028-02-07 | 2579, 2586 |  | 7 day week with NGT | 8002702 |
| 2588 | 37400.37600.40700.115400.118400.351400 | Solar water heater | 60d | 2027-06-23 | 2027-08-21 | 2531 |  | 7 day week with NGT | 8002712 |
| 2589 | 37400.37600.40700.115400.163700 | **Plumbing Works** | 210d | 2027-05-14 | 2028-01-23 |  | start no earlier than 2027-05-14 | 7 day week with NGT | 7999222 |
| 2590 | 37400.37600.40700.115400.163700.351500 | Terrace looping | 45d | 2027-05-14 | 2027-06-27 | 2530 |  | 7 day week with NGT | 8002722 |
| 2591 | 37400.37600.40700.115400.163700.351600 | Shaft Plumbing | 120d | 2027-06-28 | 2027-10-25 | 2590 |  | 7 day week with NGT | 8002732 |
| 2592 | 37400.37600.40700.115400.163700.351700 | CP sanitary fixture supply | 75d | 2027-06-13 | 2027-08-26 | 2519 |  | 7 day week with NGT | 8002742 |
| 2593 | 37400.37600.40700.115400.163700.351800 | Cold & flushing water supply | 90d | 2027-08-22 | 2028-01-03 | 2534 |  | 7 day week with NGT | 8002752 |
| 2594 | 37400.37600.40700.115400.163700.351900 | Misc work | 30d | 2027-12-25 | 2028-01-23 | 2593FS-10d |  | 7 day week with NGT | 8002762 |
| 2595 | 37400.37600.40700.115400.212800 | **Fire Fighting Works** | 218d | 2027-06-13 | 2028-03-01 |  | start no earlier than 2027-06-13 | 7 day week with NGT | 8000172 |
| 2596 | 37400.37600.40700.115400.212800.352000 | Fire hydrant work | 90d | 2027-06-23 | 2027-09-20 | 2534SS+60d |  | 7 day week with NGT | 8002772 |
| 2597 | 37400.37600.40700.115400.212800.352100 | Sprinkler & piping work | 88d | 2027-10-21 | 2028-03-01 | 2596FS+30d |  | 7 day week with NGT | 8002782 |
| 2598 | 37400.37600.40700.115400.212800.352200 | Shaft Downtake works | 90d | 2027-06-13 | 2027-09-10 | 2530FS+30d |  | 7 day week with NGT | 8002792 |
| 2599 | 37400.37600.40700.115400.212800.352300 | Connection to pump room | 30d | 2027-09-11 | 2027-10-10 | 2598 |  | 7 day week with NGT | 8002802 |

| ID | WBS | Task | Duration | Start | Finish | Predecessors | Complete | Constraint | Calendar | Unique_Task_ID |
| --- | --- | --- | --- | --- | --- | --- | --- | --- | --- | --- |
| 2600 | 37400.37600.40700.115400.220000 | **Lift Works** | 170d | 2027-04-04 | 2027-09-20 |  |  | start no earlier than 2027-04-04 | 7 day week with NGT | 8000322 |
| 2601 | 37400.37600.40700.115400.220000.352400 | Lift Shaft Handover | 40d | 2027-04-04 | 2027-05-13 | 2002 |  |  | 7 day week with NGT | 8002812 |
| 2602 | 37400.37600.40700.115400.220000.352500 | Lift installation work | 45d | 2027-05-14 | 2027-06-27 | 2601 |  |  | 7 day week with NGT | 8002822 |
| 2603 | 37400.37600.40700.115400.220000.352600 | Lift testing and commissioning | 85d | 2027-06-28 | 2027-09-20 | 2602 |  |  | 7 day week with NGT | 8002832 |
| 2604 | 37400.37600.40700.115400.226800 | **AC Works** | 100d | 2028-04-03 | 2028-07-11 |  |  | start no earlier than 2028-04-03 | 7 day week with NGT | 8000372 |
| 2605 | 37400.37600.40700.115400.226800.352700 | Split AC | 100d | 2028-04-03 | 2028-07-11 | 2621FS-30d |  |  | 7 day week with NGT | 8002842 |
| 2606 | 37400.37600.40700.166000 | **Tower Completion** | 270d | 2027-03-07 | 2028-01-15 |  |  | start no earlier than 2027-03-07 | 7 day week with NGT | 8000122 |
| 2607 | 37400.37600.40700.166000.289600 | SURFACE PREPARATION | 80d | 2027-03-07 | 2027-05-25 | 2030 |  |  | 7 day week with NGT | 8000582 |
| 2608 | 37400.37600.40700.166000.289700 | External Painting | 100d | 2027-05-26 | 2027-09-02 | 2607 |  |  | 7 day week with NGT | 8000592 |
| 2609 | 37400.37600.40700.166000.289800 | Final coat of painting | 30d | 2027-09-03 | 2027-10-02 | 2608 |  |  | 7 day week with NGT | 8000602 |
| 2610 | 37400.37600.40700.166000.289900 | Misc. work | 60d | 2027-10-03 | 2028-01-15 | 2609 |  |  | 7 day week with NGT | 8000612 |
| 2611 | 37400.37600.40700.227500 | **Basement Lobby** | 60d | 2027-10-21 | 2028-02-02 |  |  | start no earlier than 2027-10-21 | 7 day week with NGT | 8000402 |
| 2612 | 37400.37600.40700.227500.290000 | Basement Lobby | 60d | 2027-10-21 | 2028-02-02 | 2540 |  |  | 7 day week with NGT | 8000622 |
| 2613 | 37400.37600.40700.127000 | **Post OC Activities** | 484d | 2027-08-22 | 2029-01-31 |  |  | start no earlier than 2027-08-22 | 7 day week with NGT | 7998972 |
| 2614 | 37400.37600.40700.127000.290100 | Wardrobe installation | 180d | 2028-04-03 | 2028-09-29 | 2621FS-30d |  |  | 7 day week with NGT | 8000632 |
| 2615 | 37400.37600.40700.127000.290200 | CP & SANITARYWARE | 120d | 2027-08-27 | 2028-02-07 | 2592 |  |  | 7 day week with NGT | 8000642 |
| 2616 | 37400.37600.40700.127000.290300 | Wooden Flooring | 180d | 2028-04-03 | 2028-09-29 | 2621FS-30d |  |  | 7 day week with NGT | 8000652 |
| 2617 | 37400.37600.40700.127000.290400 | Electrical Fixtures And Fittings | 120d | 2027-08-22 | 2028-02-02 | 2539 |  |  | 7 day week with NGT | 8000662 |
| 2618 | 37400.37600.40700.127000.290500 | Modular Kitchen | 180d | 2028-04-03 | 2028-09-29 | 2614SS |  |  | 7 day week with NGT | 8000672 |
| 2619 | 37400.37600.40700.127000.290600 | Final Coat Paint | 90d | 2027-09-16 | 2028-01-28 | 2543 |  |  | 7 day week with NGT | 8000682 |
| 2620 | 37400.37600.40700.127000.290700 | OC Application/Readiness | 1d | 2028-03-02 | 2028-03-02 | 2610FS-2d, 2002, 2535, 2603, 2585, 2587, 2588, 2583, 2582, 2538, 2591, 2594, 2597, 2599, 2528, 2046, 2537, 2541, 2574 |  |  | 7 day week with NGT | 8000692 |
| 2621 | 37400.37600.40700.127000.290800 | OC Receipt | 1d | 2028-05-02 | 2028-05-02 | 2609, 2612, 2620FS+60d |  |  | 7 day week with NGT | 8000702 |
| 2622 | 37400.37600.40700.127000.290900 | Offer To Possession | 30d | 2029-01-02 | 2029-01-31 | 2614, 2615, 2616, 2617, 2618, 2619, 2621FF+274d, 2605 |  |  | 7 day week with NGT | 8000712 |
| 2623 | 37400.37600.41000 | **Tower 3** | 1389d | 2024-09-19 | 2029-01-04 |  | 4% | start no earlier than 2024-09-19 | 7 day week with NGT | 156335 |
| 2624 | 37400.37600.41000.115500 | **Substructure Works** | 461d | 2024-09-19 | 2026-03-23 |  | 68% | start no earlier than 2024-09-19 | 7 day week with NGT | 156715 |
| 2625 | 37400.37600.41000.115500.118500 | **RCC Works** | 174d | 2024-09-19 | 2025-04-25 |  | 100% | start no earlier than 2024-09-19 | 7 day week with NGT | 156745 |
| 2626 | 37400.37600.41000.115500.118500.132400 | **Raft** | 25d | 2024-09-19 | 2024-10-13 |  | 100% | start no earlier than 2024-09-19 | 7 day week with NGT | 156795 |
| 2627 | 37400.37600.41000.115500.118500.132400.253900 | Surface Dressing | 2d | 2024-09-22 | 2024-09-23 | 3483SS+15d | 100% | start no earlier than 2024-09-22 | 7 day week with NGT | 158375 |
| 2628 | 37400.37600.41000.115500.118500.132400.253800 | Anti Termite Treatment | 5d | 2024-09-19 | 2024-09-23 | 2627 | 100% | start no earlier than 2024-09-19 | 7 day week with NGT | 158385 |
| 2629 | 37400.37600.41000.115500.118500.132400.253700 | PCC | 3d | 2024-09-23 | 2024-09-25 | 2628 | 100% | start no earlier than 2024-09-23 | 7 day week with NGT | 158395 |
| 2630 | 37400.37600.41000.115500.118500.132400.253600 | Reinforcement Laying | 14d | 2024-09-25 | 2024-10-08 | 2629 | 100% | start no earlier than 2024-09-25 | 7 day week with NGT | 158405 |
| 2631 | 37400.37600.41000.115500.118500.132400.253500 | Outer Shuttering of Raft Area | 8d | 2024-10-01 | 2024-10-08 | 2630FF | 100% | start no earlier than 2024-10-01 | 7 day week with NGT | 158415 |
| 2632 | 37400.37600.41000.115500.118500.132400.253400 | Raft Concreting | 2d | 2024-10-12 | 2024-10-13 | 2631 | 100% | start no earlier than 2024-10-12 | 7 day week with NGT | 158425 |

| ID | WBS | Task | Duration | Start | Finish | Predecessors | Complete | Constraint | Calendar | Unique_Task_ID |
| --- | --- | --- | --- | --- | --- | --- | --- | --- | --- | --- |
| 2633 | 37400.37600.41000.115500.118500.132500 | **Dummy Basement** | 58d | 2024-10-17 | 2025-01-27 |  | 100% | start no earlier than 2024-10-17 | 7 day week with NGT | 156805 |
| 2634 | 37400.37600.41000.115500.118500.132500.253300 | Column and Shear Wall Reinforcement | 6d | 2024-10-26 | 2024-10-31 | 2632 | 100% | start no earlier than 2024-10-26 | 7 day week with NGT | 158435 |
| 2635 | 37400.37600.41000.115500.118500.132500.253200 | Column and Shear Wall Formwork | 20d | 2024-10-27 | 2024-12-30 | 2634FF+1d | 100% | start no earlier than 2024-10-27 | 7 day week with NGT | 158445 |
| 2636 | 37400.37600.41000.115500.118500.132500.253100 | Column and Shear Wall Casting | 30d | 2024-10-17 | 2024-12-30 | 2635FF+1d | 100% | start no earlier than 2024-10-17 | 7 day week with NGT | 158455 |
| 2637 | 37400.37600.41000.115500.118500.132500.253000 | Slab Formwork | 25d | 2024-10-28 | 2025-01-24 | 2636SS+2d | 100% | start no earlier than 2024-10-28 | 7 day week with NGT | 158465 |
| 2638 | 37400.37600.41000.115500.118500.132500.252900 | Slab Reinforcement | 38d | 2024-12-17 | 2025-01-27 | 2637FS-39d | 100% | start no earlier than 2024-12-17 | 7 day week with NGT | 158475 |
| 2639 | 37400.37600.41000.115500.118500.132500.252800 | Slab Casting | 28d | 2024-12-31 | 2025-01-27 | 2638FF+1d | 100% | start no earlier than 2024-12-31 | 7 day week with NGT | 158485 |
| 2640 | 37400.37600.41000.115500.118500.132600 | **B2 Roof** | 67d | 2025-01-15 | 2025-03-22 |  | 100% | start no earlier than 2025-01-15 | 7 day week with NGT | 156815 |
| 2641 | 37400.37600.41000.115500.118500.132600.252700 | Column and Shear Wall Reinforcement | 34d | 2025-01-15 | 2025-02-17 | 2639 | 100% | start no earlier than 2025-01-15 | 7 day week with NGT | 158495 |
| 2642 | 37400.37600.41000.115500.118500.132600.252600 | Column and Shear Wall Formwork | 6.67d | 2025-01-25 | 2025-03-11 | 2641FF+1d | 100% | start no earlier than 2025-01-25 | 7 day week with NGT | 158505 |
| 2643 | 37400.37600.41000.115500.118500.132600.252500 | Column and Shear Wall Casting | 6.05d | 2025-01-18 | 2025-03-11 | 2642FF+0.33d | 100% | start no earlier than 2025-01-18 | 7 day week with NGT | 158515 |
| 2644 | 37400.37600.41000.115500.118500.132600.252400 | Slab Formwork | 13d | 2025-02-01 | 2025-03-17 | 2643SS+58d | 100% | start no earlier than 2025-02-01 | 7 day week with NGT | 158525 |
| 2645 | 37400.37600.41000.115500.118500.132600.252300 | Slab Reinforcement | 13d | 2025-02-15 | 2025-03-19 | 2644FS-43.77d | 100% | start no earlier than 2025-02-15 | 7 day week with NGT | 158535 |
| 2646 | 37400.37600.41000.115500.118500.132600.252200 | Slab Casting | 14d | 2025-02-19 | 2025-03-22 | 2645FF+3d | 100% | start no earlier than 2025-02-19 | 7 day week with NGT | 158545 |
| 2647 | 37400.37600.41000.115500.118500.132700 | **B1 Roof** | 65d | 2025-02-20 | 2025-04-25 |  | 100% | start no earlier than 2025-02-20 | 7 day week with NGT | 156825 |
| 2648 | 37400.37600.41000.115500.118500.132700.252100 | Column and Shear Wall Reinforcement | 15d | 2025-02-20 | 2025-04-12 | 2646FS-41d | 100% | start no earlier than 2025-02-20 | 7 day week with NGT | 158555 |
| 2649 | 37400.37600.41000.115500.118500.132700.252000 | Column and Shear Wall Formwork | 20d | 2025-03-04 | 2025-04-22 | 2648FF+1d | 100% | start no earlier than 2025-03-04 | 7 day week with NGT | 158565 |
| 2650 | 37400.37600.41000.115500.118500.132700.251900 | Column and Shear Wall Casting | 26d | 2025-03-04 | 2025-04-22 | 2649FF+1d | 100% | start no earlier than 2025-03-04 | 7 day week with NGT | 158575 |
| 2651 | 37400.37600.41000.115500.118500.132700.251800 | Slab Formwork | 31d | 2025-03-11 | 2025-04-25 | 2650SS+11d | 100% | start no earlier than 2025-03-11 | 7 day week with NGT | 158585 |
| 2652 | 37400.37600.41000.115500.118500.132700.251700 | Slab Reinforcement | 27d | 2025-03-28 | 2025-04-25 | 2651FS-29d | 100% | start no earlier than 2025-03-28 | 7 day week with NGT | 158595 |
| 2653 | 37400.37600.41000.115500.118500.132700.251600 | Slab Casting | 14d | 2025-04-08 | 2025-04-25 | 2652FF+3d | 100% | start no earlier than 2025-04-08 | 7 day week with NGT | 158605 |
| 2654 | 37400.37600.41000.115500.130600 | **Substructure Finishing Works** | 98d | 2025-12-16 | 2026-03-23 |  |  | start no earlier than 2025-12-16 | 7 day week with NGT | 156765 |
| 2655 | 37400.37600.41000.115500.130600.214400 | **Basement - 2** | 73d | 2025-12-16 | 2026-02-26 |  |  | start no earlier than 2025-12-16 | 7 day week with NGT | 157165 |
| 2656 | 37400.37600.41000.115500.130600.214400.609400 | Masonary Works | 30d | 2025-12-16 | 2026-01-14 | 2646FS+30d |  |  | 7 day week with NGT | 158615 |
| 2657 | 37400.37600.41000.115500.130600.214400.609500 | Plaster Works | 20d | 2025-12-31 | 2026-01-19 | 2656SS+15d |  |  | 7 day week with NGT | 158625 |
| 2658 | 37400.37600.41000.115500.130600.214400.609600 | White Wash | 18d | 2026-01-15 | 2026-02-01 | 2657SS+15d |  |  | 7 day week with NGT | 158635 |
| 2659 | 37400.37600.41000.115500.130600.214400.609700 | VDF | 25d | 2026-02-02 | 2026-02-26 | 2658 |  |  | 7 day week with NGT | 158645 |

| ID | WBS | Task | Duration | Start | Finish | Predecessors | Complete | Constraint | Calendar | Unique_Task_ID |
| --- | --- | --- | --- | --- | --- | --- | --- | --- | --- | --- |
| 2660 | 37400.37600.41000.115500.130600.214300 | **Basement - 1** | 98d | 2025-12-16 | 2026-03-23 |  |  | start no earlier than 2025-12-16 | 7 day week with NGT | 157155 |
| 2661 | 37400.37600.41000.115500.130600.214300.609800 | Masonary Works | 30d | 2025-12-16 | 2026-01-14 | 2653FS+30d |  |  | 7 day week with NGT | 158655 |
| 2662 | 37400.37600.41000.115500.130600.214300.609900 | Plaster Works | 20d | 2025-12-31 | 2026-01-19 | 2661SS+15d |  |  | 7 day week with NGT | 158665 |
| 2663 | 37400.37600.41000.115500.130600.214300.610000 | White Wash | 18d | 2026-02-02 | 2026-02-19 | 2658, 2662SS+15d |  |  | 7 day week with NGT | 158675 |
| 2664 | 37400.37600.41000.115500.130600.214300.610100 | VDF | 25d | 2026-02-27 | 2026-03-23 | 2659, 2663 |  |  | 7 day week with NGT | 158685 |
| 2665 | 37400.37600.41000.45400 | **Superstructure Works** | 601d | 2025-04-28 | 2027-03-19 |  | 8% | start no earlier than 2025-04-28 | 7 day week with NGT | 156365 |
| 2666 | 37400.37600.41000.45400.46500 | **RCC Works** | 589d | 2025-04-28 | 2027-03-07 |  | 10% | start no earlier than 2025-04-28 | 7 day week with NGT | 156375 |
| 2667 | 37400.37600.41000.45400.46500.132800 | **Podium Roof** | 185.2d | 2025-04-28 | 2025-10-30 |  | 100% | start no earlier than 2025-04-28 | 7 day week with NGT | 156785 |
| 2668 | 37400.37600.41000.45400.46500.132800.251200 | Column and Shear Wall Reinforcement | 14d | 2025-04-28 | 2025-08-13 | 2653 | 100% | start no earlier than 2025-04-28 | 7 day week with NGT | 158695 |
| 2669 | 37400.37600.41000.45400.46500.132800.251100 | Column and Shear Wall Formwork | 5d | 2025-06-29 | 2025-08-14 | 2668FF+1d | 100% | start no earlier than 2025-06-29 | 7 day week with NGT | 158705 |
| 2670 | 37400.37600.41000.45400.46500.132800.251000 | Column and Shear Wall Casting | 12d | 2025-06-29 | 2025-08-27 | 2669FF+1d | 100% | start no earlier than 2025-06-29 | 7 day week with NGT | 158715 |
| 2671 | 37400.37600.41000.45400.46500.132800.250900 | Slab Formwork | 13d | 2025-07-13 | 2025-08-27 | 2670SS+14d | 100% | start no earlier than 2025-07-13 | 7 day week with NGT | 158725 |
| 2672 | 37400.37600.41000.45400.46500.132800.250800 | Slab Reinforcement | 13d | 2025-07-21 | 2025-08-27 | 2671FS-45d | 100% | start no earlier than 2025-07-21 | 7 day week with NGT | 158735 |
| 2673 | 37400.37600.41000.45400.46500.132800.250700 | Slab Casting | 14d | 2025-08-11 | 2025-10-30 | 2672FF+3d | 100% | start no earlier than 2025-08-11 | 7 day week with NGT | 158745 |
| 2674 | 37400.37600.41000.45400.46500.138600 | **First Floor Roof** | 77d | 2025-09-01 | 2025-12-31 |  | 35% | start no earlier than 2025-09-01 | 7 day week with NGT | 156775 |
| 2675 | 37400.37600.41000.45400.46500.138600.250600 | Column and Shear Wall Reinforcement | 11d | 2025-09-01 | 2025-12-23 | 2673FS-53d | 90% | start no earlier than 2025-09-01 | 7 day week with NGT | 158755 |
| 2676 | 37400.37600.41000.45400.46500.138600.250500 | Column and Shear Wall Formwork | 10d | 2025-09-15 | 2025-12-18 | 2675FS-61.2d | 70% | start no earlier than 2025-09-15 | 7 day week with NGT | 158765 |
| 2677 | 37400.37600.41000.45400.46500.138600.250400 | Column and Shear Wall Casting | 10d | 2025-09-23 | 2025-12-19 | 2676FF+1d | 60% |  | 7 day week with NGT | 158775 |
| 2678 | 37400.37600.41000.45400.46500.138600.250300 | Slab Formwork | 15d | 2025-10-13 | 2025-12-28 | 2677SS+1d | 20% | start no earlier than 2025-10-13 | 7 day week with NGT | 158785 |
| 2679 | 37400.37600.41000.45400.46500.138600.610200 | Slab Reinforcement | 14d | 2025-12-16 | 2025-12-29 | 2678FS-13d |  |  | 7 day week with NGT | 158795 |
| 2680 | 37400.37600.41000.45400.46500.138600.610300 | Slab Casting | 13d | 2025-12-19 | 2025-12-31 | 2679FF+2d |  |  | 7 day week with NGT | 158805 |
| 2681 | 37400.37600.41000.45400.46500.154800 | **Second Floor Roof** | 28d | 2026-01-01 | 2026-01-28 |  |  | start no earlier than 2026-01-01 | 7 day week with NGT | 156845 |
| 2682 | 37400.37600.41000.45400.46500.154800.610400 | Column and Shear Wall Reinforcement | 10d | 2026-01-01 | 2026-01-10 | 2680 |  |  | 7 day week with NGT | 158815 |
| 2683 | 37400.37600.41000.45400.46500.154800.610500 | Column and Shear Wall Formwork | 10d | 2026-01-02 | 2026-01-11 | 2682FF+1d |  |  | 7 day week with NGT | 158825 |
| 2684 | 37400.37600.41000.45400.46500.154800.610600 | Slab Formwork | 16d | 2026-01-10 | 2026-01-25 | 2683FS-2d |  |  | 7 day week with NGT | 158835 |
| 2685 | 37400.37600.41000.45400.46500.154800.610700 | Slab Reinforcement | 14d | 2026-01-14 | 2026-01-27 | 2684FS-12d |  |  | 7 day week with NGT | 158845 |
| 2686 | 37400.37600.41000.45400.46500.154800.610800 | Monolithic Casting | 8d | 2026-01-21 | 2026-01-28 | 2685FF+1d |  |  | 7 day week with NGT | 158855 |

| ID | WBS | Task | Duration | Start | Finish | Predecessors | Constraint | Calendar | Unique_Task_ID |
| --- | --- | --- | --- | --- | --- | --- | --- | --- | --- |
| 2687 | 37400.37600.41000.45400.46500.154900 | **Third Floor Roof** | 18d | 2026-01-29 | 2026-02-15 |  | start no earlier than 2026-01-29 | 7 day week with NGT | 156855 |
| 2688 | 37400.37600.41000.45400.46500.154900.610900 | Column and Shear Wall Reinforcement | 7d | 2026-01-29 | 2026-02-04 | 2686 |  | 7 day week with NGT | 158865 |
| 2689 | 37400.37600.41000.45400.46500.154900.611000 | Column and Shear Wall Formwork | 7d | 2026-01-30 | 2026-02-05 | 2688FF+1d |  | 7 day week with NGT | 158875 |
| 2690 | 37400.37600.41000.45400.46500.154900.611100 | Slab Formwork | 9d | 2026-02-04 | 2026-02-12 | 2689FS-2d |  | 7 day week with NGT | 158885 |
| 2691 | 37400.37600.41000.45400.46500.154900.611200 | Slab Reinforcement | 10d | 2026-02-05 | 2026-02-14 | 2690FF+2d |  | 7 day week with NGT | 158895 |
| 2692 | 37400.37600.41000.45400.46500.154900.611300 | Monolithic Casting | 8d | 2026-02-08 | 2026-02-15 | 2691FF+1d |  | 7 day week with NGT | 158905 |
| 2693 | 37400.37600.41000.45400.46500.155000 | **4th Floor Roof** | 12d | 2026-02-16 | 2026-02-27 |  | start no earlier than 2026-02-16 | 7 day week with NGT | 156865 |
| 2694 | 37400.37600.41000.45400.46500.155000.611400 | Column and Shear Wall Reinforcement | 5d | 2026-02-16 | 2026-02-20 | 2692 |  | 7 day week with NGT | 158915 |
| 2695 | 37400.37600.41000.45400.46500.155000.611500 | Column and Shear Wall Formwork | 5d | 2026-02-17 | 2026-02-21 | 2694FF+1d |  | 7 day week with NGT | 158925 |
| 2696 | 37400.37600.41000.45400.46500.155000.611600 | Slab Formwork | 5d | 2026-02-20 | 2026-02-24 | 2695FS-2d |  | 7 day week with NGT | 158935 |
| 2697 | 37400.37600.41000.45400.46500.155000.611700 | Slab Reinforcement | 5d | 2026-02-22 | 2026-02-26 | 2696FF+2d |  | 7 day week with NGT | 158945 |
| 2698 | 37400.37600.41000.45400.46500.155000.611800 | Monolithic Casting | 2d | 2026-02-26 | 2026-02-27 | 2697FF+1d |  | 7 day week with NGT | 158955 |
| 2699 | 37400.37600.41000.45400.46500.155100 | **5th Floor Roof** | 12d | 2026-02-28 | 2026-03-11 |  | start no earlier than 2026-02-28 | 7 day week with NGT | 156875 |
| 2700 | 37400.37600.41000.45400.46500.155100.611900 | Column and Shear Wall Reinforcement | 5d | 2026-02-28 | 2026-03-04 | 2698 |  | 7 day week with NGT | 158965 |
| 2701 | 37400.37600.41000.45400.46500.155100.612000 | Column and Shear Wall Formwork | 5d | 2026-03-01 | 2026-03-05 | 2700FF+1d |  | 7 day week with NGT | 158975 |
| 2702 | 37400.37600.41000.45400.46500.155100.612100 | Slab Formwork | 5d | 2026-03-04 | 2026-03-08 | 2701FS-2d |  | 7 day week with NGT | 158985 |
| 2703 | 37400.37600.41000.45400.46500.155100.612200 | Slab Reinforcement | 5d | 2026-03-06 | 2026-03-10 | 2702FF+2d |  | 7 day week with NGT | 158995 |
| 2704 | 37400.37600.41000.45400.46500.155100.612300 | Monolithic Casting | 2d | 2026-03-10 | 2026-03-11 | 2703FF+1d |  | 7 day week with NGT | 159005 |
| 2705 | 37400.37600.41000.45400.46500.155200 | **6th Floor Roof** | 12d | 2026-03-12 | 2026-03-23 |  | start no earlier than 2026-03-12 | 7 day week with NGT | 156885 |
| 2706 | 37400.37600.41000.45400.46500.155200.612400 | Column and Shear Wall Reinforcement | 5d | 2026-03-12 | 2026-03-16 | 2704 |  | 7 day week with NGT | 159015 |
| 2707 | 37400.37600.41000.45400.46500.155200.612500 | Column and Shear Wall Formwork | 5d | 2026-03-13 | 2026-03-17 | 2706FF+1d |  | 7 day week with NGT | 159025 |
| 2708 | 37400.37600.41000.45400.46500.155200.612600 | Slab Formwork | 5d | 2026-03-16 | 2026-03-20 | 2707FS-2d |  | 7 day week with NGT | 159035 |
| 2709 | 37400.37600.41000.45400.46500.155200.612700 | Slab Reinforcement | 5d | 2026-03-18 | 2026-03-22 | 2708FF+2d |  | 7 day week with NGT | 159045 |
| 2710 | 37400.37600.41000.45400.46500.155200.612800 | Monolithic Casting | 2d | 2026-03-22 | 2026-03-23 | 2709FF+1d |  | 7 day week with NGT | 159055 |

| ID | WBS | Task | Duration | Start | Finish | Predecessors | Constraint | Calendar | Unique_Task_ID |
| --- | --- | --- | --- | --- | --- | --- | --- | --- | --- |
| 2711 | 37400.37600.41000.45400.46500.155300 | **7th Floor Roof** | 12d | 2026-03-24 | 2026-04-04 |  | start no earlier than 2026-03-24 | 7 day week with NGT | 156895 |
| 2712 | 37400.37600.41000.45400.46500.155300.612900 | Column and Shear Wall Reinforcement | 5d | 2026-03-24 | 2026-03-28 | 2710 |  | 7 day week with NGT | 159065 |
| 2713 | 37400.37600.41000.45400.46500.155300.613000 | Column and Shear Wall Formwork | 5d | 2026-03-25 | 2026-03-29 | 2712FF+1d |  | 7 day week with NGT | 159075 |
| 2714 | 37400.37600.41000.45400.46500.155300.613100 | Slab Formwork | 5d | 2026-03-28 | 2026-04-01 | 2713FS-2d |  | 7 day week with NGT | 159085 |
| 2715 | 37400.37600.41000.45400.46500.155300.613200 | Slab Reinforcement | 5d | 2026-03-30 | 2026-04-03 | 2714FF+2d |  | 7 day week with NGT | 159095 |
| 2716 | 37400.37600.41000.45400.46500.155300.613300 | Monolithic Casting | 2d | 2026-04-03 | 2026-04-04 | 2715FF+1d |  | 7 day week with NGT | 159105 |
| 2717 | 37400.37600.41000.45400.46500.155400 | **8th Floor Roof** | 12d | 2026-04-05 | 2026-04-16 |  | start no earlier than 2026-04-05 | 7 day week with NGT | 156905 |
| 2718 | 37400.37600.41000.45400.46500.155400.613400 | Column and Shear Wall Reinforcement | 5d | 2026-04-05 | 2026-04-09 | 2716 |  | 7 day week with NGT | 159115 |
| 2719 | 37400.37600.41000.45400.46500.155400.613500 | Column and Shear Wall Formwork | 5d | 2026-04-06 | 2026-04-10 | 2718FF+1d |  | 7 day week with NGT | 159125 |
| 2720 | 37400.37600.41000.45400.46500.155400.613600 | Slab Formwork | 5d | 2026-04-09 | 2026-04-13 | 2719FS-2d |  | 7 day week with NGT | 159135 |
| 2721 | 37400.37600.41000.45400.46500.155400.613700 | Slab Reinforcement | 5d | 2026-04-11 | 2026-04-15 | 2720FF+2d |  | 7 day week with NGT | 159145 |
| 2722 | 37400.37600.41000.45400.46500.155400.613800 | Monolithic Casting | 2d | 2026-04-15 | 2026-04-16 | 2721FF+1d |  | 7 day week with NGT | 159155 |
| 2723 | 37400.37600.41000.45400.46500.155500 | **9th Floor Roof** | 12d | 2026-04-17 | 2026-04-28 |  | start no earlier than 2026-04-17 | 7 day week with NGT | 156915 |
| 2724 | 37400.37600.41000.45400.46500.155500.613900 | Column and Shear Wall Reinforcement | 5d | 2026-04-17 | 2026-04-21 | 2722 |  | 7 day week with NGT | 159165 |
| 2725 | 37400.37600.41000.45400.46500.155500.614000 | Column and Shear Wall Formwork | 5d | 2026-04-18 | 2026-04-22 | 2724FF+1d |  | 7 day week with NGT | 159175 |
| 2726 | 37400.37600.41000.45400.46500.155500.614100 | Slab Formwork | 5d | 2026-04-21 | 2026-04-25 | 2725FS-2d |  | 7 day week with NGT | 159185 |
| 2727 | 37400.37600.41000.45400.46500.155500.614200 | Slab Reinforcement | 5d | 2026-04-23 | 2026-04-27 | 2726FF+2d |  | 7 day week with NGT | 159195 |
| 2728 | 37400.37600.41000.45400.46500.155500.614300 | Monolithic Casting | 2d | 2026-04-27 | 2026-04-28 | 2727FF+1d |  | 7 day week with NGT | 159205 |
| 2729 | 37400.37600.41000.45400.46500.155600 | **10th Floor Roof** | 12d | 2026-04-29 | 2026-05-10 |  | start no earlier than 2026-04-29 | 7 day week with NGT | 156925 |
| 2730 | 37400.37600.41000.45400.46500.155600.614400 | Column and Shear Wall Reinforcement | 5d | 2026-04-29 | 2026-05-03 | 2728 |  | 7 day week with NGT | 159215 |
| 2731 | 37400.37600.41000.45400.46500.155600.614500 | Column and Shear Wall Formwork | 5d | 2026-04-30 | 2026-05-04 | 2730FF+1d |  | 7 day week with NGT | 159225 |
| 2732 | 37400.37600.41000.45400.46500.155600.614600 | Slab Formwork | 5d | 2026-05-03 | 2026-05-07 | 2731FS-2d |  | 7 day week with NGT | 159235 |
| 2733 | 37400.37600.41000.45400.46500.155600.614700 | Slab Reinforcement | 5d | 2026-05-05 | 2026-05-09 | 2732FF+2d |  | 7 day week with NGT | 159245 |
| 2734 | 37400.37600.41000.45400.46500.155600.614800 | Monolithic Casting | 2d | 2026-05-09 | 2026-05-10 | 2733FF+1d |  | 7 day week with NGT | 159255 |

| ID | WBS | Task | Duration | Start | Finish | Predecessors | Constraint | Calendar | Unique_Task_ID |
| --- | --- | --- | --- | --- | --- | --- | --- | --- | --- |
| 2735 | 37400.37600.41000.45400.46500.155700 | **11th Floor Roof** | 12d | 2026-05-11 | 2026-05-22 |  | start no earlier than 2026-05-11 | 7 day week with NGT | 156935 |
| 2736 | 37400.37600.41000.45400.46500.155700.614900 | Column and Shear Wall Reinforcement | 5d | 2026-05-11 | 2026-05-15 | 2734 |  | 7 day week with NGT | 159265 |
| 2737 | 37400.37600.41000.45400.46500.155700.615000 | Column and Shear Wall Formwork | 5d | 2026-05-12 | 2026-05-16 | 2736FF+1d |  | 7 day week with NGT | 159275 |
| 2738 | 37400.37600.41000.45400.46500.155700.615100 | Slab Formwork | 5d | 2026-05-15 | 2026-05-19 | 2737FS-2d |  | 7 day week with NGT | 159285 |
| 2739 | 37400.37600.41000.45400.46500.155700.615200 | Slab Reinforcement | 5d | 2026-05-17 | 2026-05-21 | 2738FF+2d |  | 7 day week with NGT | 159295 |
| 2740 | 37400.37600.41000.45400.46500.155700.615300 | Monolithic Casting | 2d | 2026-05-21 | 2026-05-22 | 2739FF+1d |  | 7 day week with NGT | 159305 |
| 2741 | 37400.37600.41000.45400.46500.155800 | **12th Floor Roof** | 12d | 2026-05-23 | 2026-06-03 |  | start no earlier than 2026-05-23 | 7 day week with NGT | 156945 |
| 2742 | 37400.37600.41000.45400.46500.155800.615400 | Column and Shear Wall Reinforcement | 5d | 2026-05-23 | 2026-05-27 | 2740 |  | 7 day week with NGT | 159315 |
| 2743 | 37400.37600.41000.45400.46500.155800.615500 | Column and Shear Wall Formwork | 5d | 2026-05-24 | 2026-05-28 | 2742FF+1d |  | 7 day week with NGT | 159325 |
| 2744 | 37400.37600.41000.45400.46500.155800.615600 | Slab Formwork | 5d | 2026-05-27 | 2026-05-31 | 2743FS-2d |  | 7 day week with NGT | 159335 |
| 2745 | 37400.37600.41000.45400.46500.155800.615700 | Slab Reinforcement | 5d | 2026-05-29 | 2026-06-02 | 2744FF+2d |  | 7 day week with NGT | 159345 |
| 2746 | 37400.37600.41000.45400.46500.155800.615800 | Monolithic Casting | 2d | 2026-06-02 | 2026-06-03 | 2745FF+1d |  | 7 day week with NGT | 159355 |
| 2747 | 37400.37600.41000.45400.46500.155900 | **13th Floor Roof** | 12d | 2026-06-04 | 2026-06-15 |  | start no earlier than 2026-06-04 | 7 day week with NGT | 156955 |
| 2748 | 37400.37600.41000.45400.46500.155900.615900 | Column and Shear Wall Reinforcement | 5d | 2026-06-04 | 2026-06-08 | 2746 |  | 7 day week with NGT | 159365 |
| 2749 | 37400.37600.41000.45400.46500.155900.616000 | Column and Shear Wall Formwork | 5d | 2026-06-05 | 2026-06-09 | 2748FF+1d |  | 7 day week with NGT | 159375 |
| 2750 | 37400.37600.41000.45400.46500.155900.616100 | Slab Formwork | 5d | 2026-06-08 | 2026-06-12 | 2749FS-2d |  | 7 day week with NGT | 159385 |
| 2751 | 37400.37600.41000.45400.46500.155900.616200 | Slab Reinforcement | 5d | 2026-06-10 | 2026-06-14 | 2750FF+2d |  | 7 day week with NGT | 159395 |
| 2752 | 37400.37600.41000.45400.46500.155900.616300 | Monolithic Casting | 2d | 2026-06-14 | 2026-06-15 | 2751FF+1d |  | 7 day week with NGT | 159405 |
| 2753 | 37400.37600.41000.45400.46500.156000 | **14th Floor Roof** | 12d | 2026-06-16 | 2026-06-27 |  | start no earlier than 2026-06-16 | 7 day week with NGT | 156965 |
| 2754 | 37400.37600.41000.45400.46500.156000.616400 | Column and Shear Wall Reinforcement | 5d | 2026-06-16 | 2026-06-20 | 2752 |  | 7 day week with NGT | 159415 |
| 2755 | 37400.37600.41000.45400.46500.156000.616500 | Column and Shear Wall Formwork | 5d | 2026-06-17 | 2026-06-21 | 2754FF+1d |  | 7 day week with NGT | 159425 |
| 2756 | 37400.37600.41000.45400.46500.156000.616600 | Slab Formwork | 5d | 2026-06-20 | 2026-06-24 | 2755FS-2d |  | 7 day week with NGT | 159435 |
| 2757 | 37400.37600.41000.45400.46500.156000.616700 | Slab Reinforcement | 5d | 2026-06-22 | 2026-06-26 | 2756FF+2d |  | 7 day week with NGT | 159445 |
| 2758 | 37400.37600.41000.45400.46500.156000.616800 | Monolithic Casting | 2d | 2026-06-26 | 2026-06-27 | 2757FF+1d |  | 7 day week with NGT | 159455 |

| ID | WBS | Task | Duration | Start | Finish | Predecessors | Constraint | Calendar | Unique_Task_ID |
| --- | --- | --- | --- | --- | --- | --- | --- | --- | --- |
| 2759 | 37400.37600.41000.45400.46500.156100 | **15th Floor Roof** | 12d | 2026-06-28 | 2026-07-09 |  | start no earlier than 2026-06-28 | 7 day week with NGT | 156975 |
| 2760 | 37400.37600.41000.45400.46500.156100.616900 | Column and Shear Wall Reinforcement | 5d | 2026-06-28 | 2026-07-02 | 2758 |  | 7 day week with NGT | 159465 |
| 2761 | 37400.37600.41000.45400.46500.156100.617000 | Column and Shear Wall Formwork | 5d | 2026-06-29 | 2026-07-03 | 2760FF+1d |  | 7 day week with NGT | 159475 |
| 2762 | 37400.37600.41000.45400.46500.156100.617100 | Slab Formwork | 5d | 2026-07-02 | 2026-07-06 | 2761FS-2d |  | 7 day week with NGT | 159485 |
| 2763 | 37400.37600.41000.45400.46500.156100.617200 | Slab Reinforcement | 5d | 2026-07-04 | 2026-07-08 | 2762FF+2d |  | 7 day week with NGT | 159495 |
| 2764 | 37400.37600.41000.45400.46500.156100.617300 | Monolithic Casting | 2d | 2026-07-08 | 2026-07-09 | 2763FF+1d |  | 7 day week with NGT | 159505 |
| 2765 | 37400.37600.41000.45400.46500.156200 | **16th Floor Roof** | 17d | 2026-07-10 | 2026-07-26 |  | start no earlier than 2026-07-10 | 7 day week with NGT | 156985 |
| 2766 | 37400.37600.41000.45400.46500.156200.617400 | Column and Shear Wall Reinforcement | 7d | 2026-07-10 | 2026-07-16 | 2764 |  | 7 day week with NGT | 159515 |
| 2767 | 37400.37600.41000.45400.46500.156200.617500 | Column and Shear Wall Formwork | 7d | 2026-07-11 | 2026-07-17 | 2766FF+1d |  | 7 day week with NGT | 159525 |
| 2768 | 37400.37600.41000.45400.46500.156200.617600 | Slab Formwork | 8d | 2026-07-16 | 2026-07-23 | 2767FS-2d |  | 7 day week with NGT | 159535 |
| 2769 | 37400.37600.41000.45400.46500.156200.617700 | Slab Reinforcement | 7d | 2026-07-19 | 2026-07-25 | 2768FF+2d |  | 7 day week with NGT | 159545 |
| 2770 | 37400.37600.41000.45400.46500.156200.617800 | Monolithic Casting | 4d | 2026-07-23 | 2026-07-26 | 2769FF+1d |  | 7 day week with NGT | 159555 |
| 2771 | 37400.37600.41000.45400.46500.156300 | **17th Floor Roof** | 12d | 2026-07-27 | 2026-08-07 |  | start no earlier than 2026-07-27 | 7 day week with NGT | 156995 |
| 2772 | 37400.37600.41000.45400.46500.156300.617900 | Column and Shear Wall Reinforcement | 5d | 2026-07-27 | 2026-07-31 | 2770 |  | 7 day week with NGT | 159565 |
| 2773 | 37400.37600.41000.45400.46500.156300.618000 | Column and Shear Wall Formwork | 5d | 2026-07-28 | 2026-08-01 | 2772FF+1d |  | 7 day week with NGT | 159575 |
| 2774 | 37400.37600.41000.45400.46500.156300.618100 | Slab Formwork | 5d | 2026-07-31 | 2026-08-04 | 2773FS-2d |  | 7 day week with NGT | 159585 |
| 2775 | 37400.37600.41000.45400.46500.156300.618200 | Slab Reinforcement | 5d | 2026-08-02 | 2026-08-06 | 2774FF+2d |  | 7 day week with NGT | 159595 |
| 2776 | 37400.37600.41000.45400.46500.156300.618300 | Monolithic Casting | 2d | 2026-08-06 | 2026-08-07 | 2775FF+1d |  | 7 day week with NGT | 159605 |
| 2777 | 37400.37600.41000.45400.46500.156400 | **18th Floor Roof** | 12d | 2026-08-08 | 2026-08-19 |  | start no earlier than 2026-08-08 | 7 day week with NGT | 157005 |
| 2778 | 37400.37600.41000.45400.46500.156400.618400 | Column and Shear Wall Reinforcement | 6d | 2026-08-08 | 2026-08-13 | 2776 |  | 7 day week with NGT | 159615 |
| 2779 | 37400.37600.41000.45400.46500.156400.618500 | Column and Shear Wall Formwork | 5d | 2026-08-10 | 2026-08-14 | 2778FF+1d |  | 7 day week with NGT | 159625 |
| 2780 | 37400.37600.41000.45400.46500.156400.618600 | Slab Formwork | 5d | 2026-08-13 | 2026-08-17 | 2779FS-2d |  | 7 day week with NGT | 159635 |
| 2781 | 37400.37600.41000.45400.46500.156400.618700 | Slab Reinforcement | 5d | 2026-08-14 | 2026-08-18 | 2780FF+1d |  | 7 day week with NGT | 159645 |
| 2782 | 37400.37600.41000.45400.46500.156400.618800 | Monolithic Casting | 2d | 2026-08-18 | 2026-08-19 | 2781FF+1d |  | 7 day week with NGT | 159655 |

| ID | WBS | Task | Duration | Start | Finish | Predecessors | Constraint | Calendar | Unique_Task_ID |
| --- | --- | --- | --- | --- | --- | --- | --- | --- | --- |
| 2783 | 37400.37600.41000.45400.46500.156500 | **19th Floor Roof** | 11d | 2026-08-20 | 2026-08-30 |  | start no earlier than 2026-08-20 | 7 day week with NGT | 157015 |
| 2784 | 37400.37600.41000.45400.46500.156500.618900 | Column and Shear Wall Reinforcement | 4d | 2026-08-20 | 2026-08-23 | 2782 |  | 7 day week with NGT | 159665 |
| 2785 | 37400.37600.41000.45400.46500.156500.619000 | Column and Shear Wall Formwork | 4d | 2026-08-21 | 2026-08-24 | 2784FF+1d |  | 7 day week with NGT | 159675 |
| 2786 | 37400.37600.41000.45400.46500.156500.619100 | Slab Formwork | 6d | 2026-08-23 | 2026-08-28 | 2785FS-2d |  | 7 day week with NGT | 159685 |
| 2787 | 37400.37600.41000.45400.46500.156500.619200 | Slab Reinforcement | 5d | 2026-08-25 | 2026-08-29 | 2786FF+1d |  | 7 day week with NGT | 159695 |
| 2788 | 37400.37600.41000.45400.46500.156500.619300 | Monolithic Casting | 4d | 2026-08-27 | 2026-08-30 | 2787FF+1d |  | 7 day week with NGT | 159705 |
| 2789 | 37400.37600.41000.45400.46500.156600 | **20th Floor Roof** | 11d | 2026-08-31 | 2026-09-10 |  | start no earlier than 2026-08-31 | 7 day week with NGT | 157025 |
| 2790 | 37400.37600.41000.45400.46500.156600.619400 | Column and Shear Wall Reinforcement | 4d | 2026-08-31 | 2026-09-03 | 2788 |  | 7 day week with NGT | 159715 |
| 2791 | 37400.37600.41000.45400.46500.156600.619500 | Column and Shear Wall Formwork | 4d | 2026-09-01 | 2026-09-04 | 2790FF+1d |  | 7 day week with NGT | 159725 |
| 2792 | 37400.37600.41000.45400.46500.156600.619600 | Slab Formwork | 6d | 2026-09-03 | 2026-09-08 | 2791FS-2d |  | 7 day week with NGT | 159735 |
| 2793 | 37400.37600.41000.45400.46500.156600.619700 | Slab Reinforcement | 5d | 2026-09-05 | 2026-09-09 | 2792FF+1d |  | 7 day week with NGT | 159745 |
| 2794 | 37400.37600.41000.45400.46500.156600.619800 | Monolithic Casting | 4d | 2026-09-07 | 2026-09-10 | 2793FF+1d |  | 7 day week with NGT | 159755 |
| 2795 | 37400.37600.41000.45400.46500.156700 | **21th Floor Roof** | 11d | 2026-09-11 | 2026-09-21 |  | start no earlier than 2026-09-11 | 7 day week with NGT | 157035 |
| 2796 | 37400.37600.41000.45400.46500.156700.619900 | Column and Shear Wall Reinforcement | 4d | 2026-09-11 | 2026-09-14 | 2794 |  | 7 day week with NGT | 159765 |
| 2797 | 37400.37600.41000.45400.46500.156700.620000 | Column and Shear Wall Formwork | 4d | 2026-09-12 | 2026-09-15 | 2796FF+1d |  | 7 day week with NGT | 159775 |
| 2798 | 37400.37600.41000.45400.46500.156700.620100 | Slab Formwork | 6d | 2026-09-14 | 2026-09-19 | 2797FS-2d |  | 7 day week with NGT | 159785 |
| 2799 | 37400.37600.41000.45400.46500.156700.620200 | Slab Reinforcement | 5d | 2026-09-16 | 2026-09-20 | 2798FF+1d |  | 7 day week with NGT | 159795 |
| 2800 | 37400.37600.41000.45400.46500.156700.620300 | Monolithic Casting | 4d | 2026-09-18 | 2026-09-21 | 2799FF+1d |  | 7 day week with NGT | 159805 |
| 2801 | 37400.37600.41000.45400.46500.156800 | **22th Floor Roof** | 11d | 2026-09-22 | 2026-10-02 |  | start no earlier than 2026-09-22 | 7 day week with NGT | 157045 |
| 2802 | 37400.37600.41000.45400.46500.156800.620400 | Column and Shear Wall Reinforcement | 4d | 2026-09-22 | 2026-09-25 | 2800 |  | 7 day week with NGT | 159815 |
| 2803 | 37400.37600.41000.45400.46500.156800.620500 | Column and Shear Wall Formwork | 4d | 2026-09-23 | 2026-09-26 | 2802FF+1d |  | 7 day week with NGT | 159825 |
| 2804 | 37400.37600.41000.45400.46500.156800.620600 | Slab Formwork | 6d | 2026-09-25 | 2026-09-30 | 2803FS-2d |  | 7 day week with NGT | 159835 |
| 2805 | 37400.37600.41000.45400.46500.156800.620700 | Slab Reinforcement | 5d | 2026-09-27 | 2026-10-01 | 2804FF+1d |  | 7 day week with NGT | 159845 |
| 2806 | 37400.37600.41000.45400.46500.156800.620800 | Monolithic Casting | 4d | 2026-09-29 | 2026-10-02 | 2805FF+1d |  | 7 day week with NGT | 159855 |

| ID | WBS | Task | Duration | Start | Finish | Predecessors | Constraint | Calendar | Unique_Task_ID |
| --- | --- | --- | --- | --- | --- | --- | --- | --- | --- |
| 2807 | 37400.37600.41000.45400.46500.156900 | **23th Floor Roof** | 11d | 2026-10-03 | 2026-10-13 |  | start no earlier than 2026-10-03 | 7 day week with NGT | 157055 |
| 2808 | 37400.37600.41000.45400.46500.156900.620900 | Column and Shear Wall Reinforcement | 4d | 2026-10-03 | 2026-10-06 | 2806 |  | 7 day week with NGT | 159865 |
| 2809 | 37400.37600.41000.45400.46500.156900.621000 | Column and Shear Wall Formwork | 4d | 2026-10-04 | 2026-10-07 | 2808FF+1d |  | 7 day week with NGT | 159875 |
| 2810 | 37400.37600.41000.45400.46500.156900.621100 | Slab Formwork | 6d | 2026-10-06 | 2026-10-11 | 2809FS-2d |  | 7 day week with NGT | 159885 |
| 2811 | 37400.37600.41000.45400.46500.156900.621200 | Slab Reinforcement | 5d | 2026-10-08 | 2026-10-12 | 2810FF+1d |  | 7 day week with NGT | 159895 |
| 2812 | 37400.37600.41000.45400.46500.156900.621300 | Monolithic Casting | 4d | 2026-10-10 | 2026-10-13 | 2811FF+1d |  | 7 day week with NGT | 159905 |
| 2813 | 37400.37600.41000.45400.46500.157000 | **24th Floor Roof** | 11d | 2026-10-14 | 2026-10-24 |  | start no earlier than 2026-10-14 | 7 day week with NGT | 157065 |
| 2814 | 37400.37600.41000.45400.46500.157000.621400 | Column and Shear Wall Reinforcement | 4d | 2026-10-14 | 2026-10-17 | 2812 |  | 7 day week with NGT | 159915 |
| 2815 | 37400.37600.41000.45400.46500.157000.621500 | Column and Shear Wall Formwork | 4d | 2026-10-15 | 2026-10-18 | 2814FF+1d |  | 7 day week with NGT | 159925 |
| 2816 | 37400.37600.41000.45400.46500.157000.621600 | Slab Formwork | 6d | 2026-10-17 | 2026-10-22 | 2815FS-2d |  | 7 day week with NGT | 159935 |
| 2817 | 37400.37600.41000.45400.46500.157000.621700 | Slab Reinforcement | 5d | 2026-10-19 | 2026-10-23 | 2816FF+1d |  | 7 day week with NGT | 159945 |
| 2818 | 37400.37600.41000.45400.46500.157000.621800 | Monolithic Casting | 4d | 2026-10-21 | 2026-10-24 | 2817FF+1d |  | 7 day week with NGT | 159955 |
| 2819 | 37400.37600.41000.45400.46500.157100 | **25th Floor Roof** | 11d | 2026-10-25 | 2026-12-19 |  | start no earlier than 2026-10-25 | 7 day week with NGT | 157075 |
| 2820 | 37400.37600.41000.45400.46500.157100.621900 | Column and Shear Wall Reinforcement | 4d | 2026-10-25 | 2026-10-28 | 2818 |  | 7 day week with NGT | 159965 |
| 2821 | 37400.37600.41000.45400.46500.157100.622000 | Column and Shear Wall Formwork | 4d | 2026-10-26 | 2026-10-29 | 2820FF+1d |  | 7 day week with NGT | 159975 |
| 2822 | 37400.37600.41000.45400.46500.157100.622100 | Slab Formwork | 6d | 2026-10-28 | 2026-12-17 | 2821FS-2d |  | 7 day week with NGT | 159985 |
| 2823 | 37400.37600.41000.45400.46500.157100.622200 | Slab Reinforcement | 5d | 2026-10-30 | 2026-12-18 | 2822FF+1d |  | 7 day week with NGT | 159995 |
| 2824 | 37400.37600.41000.45400.46500.157100.622300 | Monolithic Casting | 4d | 2026-12-16 | 2026-12-19 | 2823FF+1d |  | 7 day week with NGT | 160005 |
| 2825 | 37400.37600.41000.45400.46500.157200 | **26th Floor Roof** | 17d | 2026-12-20 | 2027-01-05 |  | start no earlier than 2026-12-20 | 7 day week with NGT | 157085 |
| 2826 | 37400.37600.41000.45400.46500.157200.622400 | Column and Shear Wall Reinforcement | 8d | 2026-12-20 | 2026-12-27 | 2824 |  | 7 day week with NGT | 160015 |
| 2827 | 37400.37600.41000.45400.46500.157200.622500 | Column and Shear Wall Formwork | 7d | 2026-12-22 | 2026-12-28 | 2826FF+1d |  | 7 day week with NGT | 160025 |
| 2828 | 37400.37600.41000.45400.46500.157200.622600 | Slab Formwork | 8d | 2026-12-27 | 2027-01-03 | 2827FS-2d |  | 7 day week with NGT | 160035 |
| 2829 | 37400.37600.41000.45400.46500.157200.622700 | Slab Reinforcement | 8d | 2026-12-28 | 2027-01-04 | 2828FF+1d |  | 7 day week with NGT | 160045 |
| 2830 | 37400.37600.41000.45400.46500.157200.622800 | Monolithic Casting | 4d | 2027-01-02 | 2027-01-05 | 2829FF+1d |  | 7 day week with NGT | 160055 |

| ID | WBS | Task | Duration | Start | Finish | Predecessors | Constraint | Calendar | Unique_Task_ID |
| --- | --- | --- | --- | --- | --- | --- | --- | --- | --- |
| 2831 | 37400.37600.41000.45400.46500.157300 | **27th Floor Roof** | 11d | 2027-01-06 | 2027-01-16 |  | start no earlier than 2027-01-06 | 7 day week with NGT | 157095 |
| 2832 | 37400.37600.41000.45400.46500.157300.622900 | Column and Shear Wall Reinforcement | 4d | 2027-01-06 | 2027-01-09 | 2830 |  | 7 day week with NGT | 160065 |
| 2833 | 37400.37600.41000.45400.46500.157300.623000 | Column and Shear Wall Formwork | 4d | 2027-01-07 | 2027-01-10 | 2832FF+1d |  | 7 day week with NGT | 160075 |
| 2834 | 37400.37600.41000.45400.46500.157300.623100 | Slab Formwork | 6d | 2027-01-09 | 2027-01-14 | 2833FS-2d |  | 7 day week with NGT | 160085 |
| 2835 | 37400.37600.41000.45400.46500.157300.623200 | Slab Reinforcement | 5d | 2027-01-11 | 2027-01-15 | 2834FF+1d |  | 7 day week with NGT | 160095 |
| 2836 | 37400.37600.41000.45400.46500.157300.623300 | Monolithic Casting | 4d | 2027-01-13 | 2027-01-16 | 2835FF+1d |  | 7 day week with NGT | 160105 |
| 2837 | 37400.37600.41000.45400.46500.157400 | **28th Floor Roof** | 11d | 2027-01-17 | 2027-01-27 |  | start no earlier than 2027-01-17 | 7 day week with NGT | 157105 |
| 2838 | 37400.37600.41000.45400.46500.157400.623400 | Column and Shear Wall Reinforcement | 4d | 2027-01-17 | 2027-01-20 | 2836 |  | 7 day week with NGT | 160115 |
| 2839 | 37400.37600.41000.45400.46500.157400.623500 | Column and Shear Wall Formwork | 4d | 2027-01-18 | 2027-01-21 | 2838FF+1d |  | 7 day week with NGT | 160125 |
| 2840 | 37400.37600.41000.45400.46500.157400.623600 | Slab Formwork | 6d | 2027-01-20 | 2027-01-25 | 2839FS-2d |  | 7 day week with NGT | 160135 |
| 2841 | 37400.37600.41000.45400.46500.157400.623700 | Slab Reinforcement | 5d | 2027-01-22 | 2027-01-26 | 2840FF+1d |  | 7 day week with NGT | 160145 |
| 2842 | 37400.37600.41000.45400.46500.157400.623800 | Monolithic Casting | 4d | 2027-01-24 | 2027-01-27 | 2841FF+1d |  | 7 day week with NGT | 160155 |
| 2843 | 37400.37600.41000.45400.46500.157500 | **29th Floor Roof** | 11d | 2027-01-28 | 2027-02-07 |  | start no earlier than 2027-01-28 | 7 day week with NGT | 157115 |
| 2844 | 37400.37600.41000.45400.46500.157500.623900 | Column and Shear Wall Reinforcement | 4d | 2027-01-28 | 2027-01-31 | 2842 |  | 7 day week with NGT | 160165 |
| 2845 | 37400.37600.41000.45400.46500.157500.624000 | Column and Shear Wall Formwork | 4d | 2027-01-29 | 2027-02-01 | 2844FF+1d |  | 7 day week with NGT | 160175 |
| 2846 | 37400.37600.41000.45400.46500.157500.624100 | Slab Formwork | 6d | 2027-01-31 | 2027-02-05 | 2845FS-2d |  | 7 day week with NGT | 160185 |
| 2847 | 37400.37600.41000.45400.46500.157500.624200 | Slab Reinforcement | 5d | 2027-02-02 | 2027-02-06 | 2846FF+1d |  | 7 day week with NGT | 160195 |
| 2848 | 37400.37600.41000.45400.46500.157500.624300 | Monolithic Casting | 4d | 2027-02-04 | 2027-02-07 | 2847FF+1d |  | 7 day week with NGT | 160205 |
| 2849 | 37400.37600.41000.45400.46500.157600 | **30th Floor Roof** | 11d | 2027-02-08 | 2027-02-18 |  | start no earlier than 2027-02-08 | 7 day week with NGT | 157125 |
| 2850 | 37400.37600.41000.45400.46500.157600.624400 | Column and Shear Wall Reinforcement | 4d | 2027-02-08 | 2027-02-11 | 2848 |  | 7 day week with NGT | 160215 |
| 2851 | 37400.37600.41000.45400.46500.157600.624500 | Column and Shear Wall Formwork | 4d | 2027-02-09 | 2027-02-12 | 2850FF+1d |  | 7 day week with NGT | 160225 |
| 2852 | 37400.37600.41000.45400.46500.157600.624600 | Slab Formwork | 6d | 2027-02-11 | 2027-02-16 | 2851FS-2d |  | 7 day week with NGT | 160235 |
| 2853 | 37400.37600.41000.45400.46500.157600.624700 | Slab Reinforcement | 5d | 2027-02-13 | 2027-02-17 | 2852FF+1d |  | 7 day week with NGT | 160245 |
| 2854 | 37400.37600.41000.45400.46500.157600.624800 | Monolithic Casting | 4d | 2027-02-15 | 2027-02-18 | 2853FF+1d |  | 7 day week with NGT | 160255 |

| ID | WBS | Task | Duration | Start | Finish | Predecessors | Constraint | Calendar | Unique_Task_ID |
| --- | --- | --- | --- | --- | --- | --- | --- | --- | --- |
| 2855 | 37400.37600.41000.45400.46500.157700 | **31 th Floor Roof** | 17d | 2027-02-19 | 2027-03-07 |  | start no earlier than 2027-02-19 | 7 day week with NGT | 157135 |
| 2856 | 37400.37600.41000.45400.46500.157700.624900 | Column and Shear Wall Reinforcement | 7d | 2027-02-19 | 2027-02-25 | 2854 |  | 7 day week with NGT | 160265 |
| 2857 | 37400.37600.41000.45400.46500.157700.625000 | Column and Shear Wall Formwork | 7d | 2027-02-20 | 2027-02-26 | 2856FF+1d |  | 7 day week with NGT | 160275 |
| 2858 | 37400.37600.41000.45400.46500.157700.625100 | Slab Formwork | 9d | 2027-02-25 | 2027-03-05 | 2857FS-2d |  | 7 day week with NGT | 160285 |
| 2859 | 37400.37600.41000.45400.46500.157700.625200 | Slab Reinforcement | 7d | 2027-02-28 | 2027-03-06 | 2858FF+1d |  | 7 day week with NGT | 160295 |
| 2860 | 37400.37600.41000.45400.46500.157700.625300 | Monolithic Casting | 4d | 2027-03-04 | 2027-03-07 | 2859FF+1d |  | 7 day week with NGT | 160305 |
| 2861 | 37400.37600.41000.45400.50400 | **Post Pour Activitis** | 359d | 2026-02-09 | 2027-03-19 |  | start no earlier than 2026-02-09 | 7 day week with NGT | 156385 |
| 2862 | 37400.37600.41000.45400.50400.352800 | 1st Floor | 7d | 2026-02-09 | 2026-02-15 | 2692FF |  | 7 day week with NGT | 157385 |
| 2863 | 37400.37600.41000.45400.50400.352900 | 2nd Floor | 7d | 2026-02-21 | 2026-02-27 | 2698FF |  | 7 day week with NGT | 157395 |
| 2864 | 37400.37600.41000.45400.50400.353000 | 3rd Floor | 7d | 2026-03-05 | 2026-03-11 | 2704FF |  | 7 day week with NGT | 157405 |
| 2865 | 37400.37600.41000.45400.50400.353100 | 4th Floor | 7d | 2026-03-17 | 2026-03-23 | 2710FF |  | 7 day week with NGT | 157415 |
| 2866 | 37400.37600.41000.45400.50400.353200 | 5th Floor | 7d | 2026-03-29 | 2026-04-04 | 2716FF |  | 7 day week with NGT | 157425 |
| 2867 | 37400.37600.41000.45400.50400.353300 | 6th Floor | 7d | 2026-04-10 | 2026-04-17 | 2722FF+0.25d |  | 7 day week with NGT | 157435 |
| 2868 | 37400.37600.41000.45400.50400.353400 | 7th Floor | 7d | 2026-04-22 | 2026-04-29 | 2728FF+0.25d |  | 7 day week with NGT | 157445 |
| 2869 | 37400.37600.41000.45400.50400.353500 | 8th Floor | 7d | 2026-05-04 | 2026-05-11 | 2734FF+0.25d |  | 7 day week with NGT | 157455 |
| 2870 | 37400.37600.41000.45400.50400.353600 | 9th Floor | 7d | 2026-05-16 | 2026-05-23 | 2740FF+0.25d |  | 7 day week with NGT | 157465 |
| 2871 | 37400.37600.41000.45400.50400.353700 | 10th Floor | 7d | 2026-05-28 | 2026-06-04 | 2746FF+0.25d |  | 7 day week with NGT | 157475 |
| 2872 | 37400.37600.41000.45400.50400.353800 | 11th Floor | 7d | 2026-06-09 | 2026-06-16 | 2752FF+0.25d |  | 7 day week with NGT | 157485 |
| 2873 | 37400.37600.41000.45400.50400.353900 | 12th Floor | 7d | 2026-06-21 | 2026-06-28 | 2758FF+0.25d |  | 7 day week with NGT | 157495 |
| 2874 | 37400.37600.41000.45400.50400.354000 | 13th Floor | 7d | 2026-07-03 | 2026-07-10 | 2764FF+0.25d |  | 7 day week with NGT | 157505 |
| 2875 | 37400.37600.41000.45400.50400.354100 | 14th floor | 7d | 2026-07-20 | 2026-07-27 | 2770FF+0.25d |  | 7 day week with NGT | 157515 |
| 2876 | 37400.37600.41000.45400.50400.354200 | 15th Floor | 7d | 2026-08-01 | 2026-08-08 | 2776FF+0.25d |  | 7 day week with NGT | 157525 |
| 2877 | 37400.37600.41000.45400.50400.354300 | 16th Floor | 7d | 2026-08-13 | 2026-08-20 | 2782FF+0.25d |  | 7 day week with NGT | 157535 |
| 2878 | 37400.37600.41000.45400.50400.354400 | 17th Floor | 7d | 2026-08-24 | 2026-08-31 | 2788FF+0.25d |  | 7 day week with NGT | 157545 |
| 2879 | 37400.37600.41000.45400.50400.354500 | 18th Floor | 7d | 2026-09-04 | 2026-09-11 | 2794FF+0.25d |  | 7 day week with NGT | 157555 |
| 2880 | 37400.37600.41000.45400.50400.354600 | 19th Floor | 7d | 2026-09-15 | 2026-09-22 | 2800FF+0.25d |  | 7 day week with NGT | 157565 |
| 2881 | 37400.37600.41000.45400.50400.354700 | 20th Floor | 7d | 2026-09-26 | 2026-10-03 | 2806FF+0.25d |  | 7 day week with NGT | 157575 |
| 2882 | 37400.37600.41000.45400.50400.354800 | 21th Floor | 7d | 2026-10-07 | 2026-10-14 | 2812FF+0.25d |  | 7 day week with NGT | 157585 |
| 2883 | 37400.37600.41000.45400.50400.354900 | 22th Floor | 7d | 2026-10-18 | 2026-10-25 | 2818FF+0.25d |  | 7 day week with NGT | 157595 |
| 2884 | 37400.37600.41000.45400.50400.355000 | 23rd Floor | 7d | 2026-10-29 | 2026-12-20 | 2824FF+0.25d |  | 7 day week with NGT | 157605 |
| 2885 | 37400.37600.41000.45400.50400.355100 | 24th Floor | 7d | 2026-12-30 | 2027-01-06 | 2830FF+0.25d |  | 7 day week with NGT | 157615 |
| 2886 | 37400.37600.41000.45400.50400.355200 | 25th Floor | 7d | 2027-01-10 | 2027-01-17 | 2836FF+0.25d |  | 7 day week with NGT | 157625 |
| 2887 | 37400.37600.41000.45400.50400.355300 | 26th Floor | 7d | 2027-01-21 | 2027-01-27 | 2842FF |  | 7 day week with NGT | 157635 |
| 2888 | 37400.37600.41000.45400.50400.355400 | 27th Floor | 7d | 2027-02-01 | 2027-02-07 | 2848FF |  | 7 day week with NGT | 157645 |
| 2889 | 37400.37600.41000.45400.50400.355500 | 28th Floor | 7d | 2027-02-12 | 2027-02-18 | 2854FF |  | 7 day week with NGT | 157655 |
| 2890 | 37400.37600.41000.45400.50400.355600 | 29th Floor | 7d | 2027-03-01 | 2027-03-07 | 2860FF |  | 7 day week with NGT | 157665 |
| 2891 | 37400.37600.41000.45400.50400.355700 | 30th Floor | 7d | 2027-03-07 | 2027-03-13 | 2890FS-1d |  | 7 day week with NGT | 157675 |
| 2892 | 37400.37600.41000.45400.50400.355800 | 31st Floor | 7d | 2027-03-13 | 2027-03-19 | 2891FS-1d |  | 7 day week with NGT | 157685 |

| ID | WBS | Task | Duration | Start | Finish | Predecessors | Constraint | Calendar | Unique_Task_ID |
| --- | --- | --- | --- | --- | --- | --- | --- | --- | --- |
| 2893 | 37400.37600.41000.42700 | **Finishing Works** | 654.8d | 2026-01-20 | 2028-02-03 |  | start no earlier than 2026-01-20 | 7 day week with NGT | 156345 |
| 2894 | 37400.37600.41000.42700.43600 | **Flat Finishing** | 537.8d | 2026-01-20 | 2027-08-25 |  | start no earlier than 2026-01-20 | 7 day week with NGT | 156355 |
| 2895 | 37400.37600.41000.42700.43600.214200 | **Podium** | 87.8d | 2026-01-20 | 2026-04-17 |  | start no earlier than 2026-01-20 | 7 day week with NGT | 157185 |
| 2896 | 37400.37600.41000.42700.43600.214200.625400 | Masonary Works | 30d | 2026-01-20 | 2026-02-19 | 2673FS+37d |  | 7 day week with NGT | 160315 |
| 2897 | 37400.37600.41000.42700.43600.214200.625500 | Plaster Works | 20d | 2026-02-04 | 2026-02-24 | 2896SS+15d |  | 7 day week with NGT | 160325 |
| 2898 | 37400.37600.41000.42700.43600.214200.625600 | White Wash | 18d | 2026-02-20 | 2026-03-09 | 2663, 2897SS+15d |  | 7 day week with NGT | 160335 |
| 2899 | 37400.37600.41000.42700.43600.214200.625700 | VDF | 25d | 2026-03-24 | 2026-04-17 | 2664, 2898 |  | 7 day week with NGT | 160345 |
| 2900 | 37400.37600.41000.42700.43600.214100 | **First Floor** | 86d | 2026-02-16 | 2026-05-12 |  | start no earlier than 2026-02-16 | 7 day week with NGT | 157175 |
| 2901 | 37400.37600.41000.42700.43600.214100.625800 | Masonary Works | 30d | 2026-02-16 | 2026-03-17 | 2862 |  | 7 day week with NGT | 160355 |
| 2902 | 37400.37600.41000.42700.43600.214100.625900 | Plaster Works | 20d | 2026-03-03 | 2026-03-22 | 2901SS+15d |  | 7 day week with NGT | 160365 |
| 2903 | 37400.37600.41000.42700.43600.214100.626000 | White Wash | 18d | 2026-03-18 | 2026-04-04 | 2902SS+15d |  | 7 day week with NGT | 160375 |
| 2904 | 37400.37600.41000.42700.43600.214100.626100 | VDF | 25d | 2026-04-18 | 2026-05-12 | 2899, 2903 |  | 7 day week with NGT | 160385 |
| 2905 | 37400.37600.41000.42700.43600.73600 | **Second Floor** | 115d | 2026-02-28 | 2026-06-22 |  | start no earlier than 2026-02-28 | 7 day week with NGT | 156405 |
| 2906 | 37400.37600.41000.42700.43600.73600.626200 | Blockwork | 10d | 2026-02-28 | 2026-03-09 | 2863 |  | 7 day week with NGT | 160395 |
| 2907 | 37400.37600.41000.42700.43600.73600.626300 | Internal Plumbing Works | 6d | 2026-03-10 | 2026-03-15 | 2906 |  | 7 day week with NGT | 160405 |
| 2908 | 37400.37600.41000.42700.43600.73600.626400 | Waterproofing Works | 10d | 2026-03-12 | 2026-03-21 | 2907SS+2d |  | 7 day week with NGT | 160415 |
| 2909 | 37400.37600.41000.42700.43600.73600.626500 | PCC | 8d | 2026-03-24 | 2026-03-31 | 2908, 2911SS |  | 7 day week with NGT | 160425 |
| 2910 | 37400.37600.41000.42700.43600.73600.626600 | Electrical Wiring works | 12d | 2026-03-12 | 2026-03-23 | 2908SS |  | 7 day week with NGT | 160435 |
| 2911 | 37400.37600.41000.42700.43600.73600.626700 | Internal Plaster Works | 9d | 2026-03-24 | 2026-04-01 | 2907, 2908, 2910 |  | 7 day week with NGT | 160445 |
| 2912 | 37400.37600.41000.42700.43600.73600.626800 | Toilet Dado Works | 9d | 2026-04-02 | 2026-04-10 | 2907, 2908, 2910, 2911 |  | 7 day week with NGT | 160455 |
| 2913 | 37400.37600.41000.42700.43600.73600.626900 | Toilet Flooring Works | 7d | 2026-04-11 | 2026-04-17 | 2909, 2912 |  | 7 day week with NGT | 160465 |
| 2914 | 37400.37600.41000.42700.43600.73600.627000 | Living Dining Flooring | 15d | 2026-04-18 | 2026-05-02 | 2913 |  | 7 day week with NGT | 160475 |
| 2915 | 37400.37600.41000.42700.43600.73600.627100 | Temporary Door Fixing | 9d | 2026-03-10 | 2026-03-18 | 2906 |  | 7 day week with NGT | 160485 |
| 2916 | 37400.37600.41000.42700.43600.73600.627200 | Aluminium Door Widnow Fixing | 15d | 2026-05-03 | 2026-05-17 | 2914, 2915 |  | 7 day week with NGT | 160495 |
| 2917 | 37400.37600.41000.42700.43600.73600.627300 | Rehung Door Fixing | 8d | 2026-05-18 | 2026-05-25 | 2916 |  | 7 day week with NGT | 160505 |
| 2918 | 37400.37600.41000.42700.43600.73600.627400 | Putty Primer coat | 6d | 2026-05-26 | 2026-05-31 | 2917 |  | 7 day week with NGT | 160515 |
| 2919 | 37400.37600.41000.42700.43600.73600.627500 | Painting First Coat | 12d | 2026-06-01 | 2026-06-12 | 2908, 2910, 2917, 2918 |  | 7 day week with NGT | 160525 |
| 2920 | 37400.37600.41000.42700.43600.73600.627600 | False ceiling works | 10d | 2026-06-13 | 2026-06-22 | 2919 |  | 7 day week with NGT | 160535 |

| ID | WBS | Task | Duration | Start | Finish | Predecessors | Constraint | Calendar | Unique_Task_ID |
| --- | --- | --- | --- | --- | --- | --- | --- | --- | --- |
| 2921 | 37400.37600.41000.42700.43600.73700 | **Third Floor** | 115d | 2026-03-12 | 2026-07-04 |  | start no earlier than 2026-03-12 | 7 day week with NGT | 156415 |
| 2922 | 37400.37600.41000.42700.43600.73700.627700 | Blockwork | 10d | 2026-03-12 | 2026-03-21 | 2864, 2906 |  | 7 day week with NGT | 160545 |
| 2923 | 37400.37600.41000.42700.43600.73700.627800 | Internal Plumbing Works | 6d | 2026-03-22 | 2026-03-27 | 2922 |  | 7 day week with NGT | 160555 |
| 2924 | 37400.37600.41000.42700.43600.73700.627900 | Waterproofing Works | 10d | 2026-03-24 | 2026-04-02 | 2923SS+2d |  | 7 day week with NGT | 160565 |
| 2925 | 37400.37600.41000.42700.43600.73700.628000 | PCC | 8d | 2026-04-05 | 2026-04-12 | 2924, 2927SS |  | 7 day week with NGT | 160575 |
| 2926 | 37400.37600.41000.42700.43600.73700.628100 | Electrical Wiring works | 12d | 2026-03-24 | 2026-04-04 | 2924SS |  | 7 day week with NGT | 160585 |
| 2927 | 37400.37600.41000.42700.43600.73700.628200 | Internal Plaster Works | 9d | 2026-04-05 | 2026-04-13 | 2923, 2924, 2926 |  | 7 day week with NGT | 160595 |
| 2928 | 37400.37600.41000.42700.43600.73700.628300 | Toilet Dado Works | 9d | 2026-04-14 | 2026-04-22 | 2923, 2924, 2926, 2927 |  | 7 day week with NGT | 160605 |
| 2929 | 37400.37600.41000.42700.43600.73700.628400 | Toilet Flooring Works | 7d | 2026-04-23 | 2026-04-29 | 2925, 2928 |  | 7 day week with NGT | 160615 |
| 2930 | 37400.37600.41000.42700.43600.73700.628500 | Living Dining Flooring | 15d | 2026-04-30 | 2026-05-14 | 2929 |  | 7 day week with NGT | 160625 |
| 2931 | 37400.37600.41000.42700.43600.73700.628600 | Temporary Door Fixing | 9d | 2026-03-22 | 2026-03-30 | 2922 |  | 7 day week with NGT | 160635 |
| 2932 | 37400.37600.41000.42700.43600.73700.628700 | Aluminium Door Widnow Fixing | 15d | 2026-05-15 | 2026-05-29 | 2930, 2931 |  | 7 day week with NGT | 160645 |
| 2933 | 37400.37600.41000.42700.43600.73700.628800 | Rehung Door Fixing | 8d | 2026-05-30 | 2026-06-06 | 2932 |  | 7 day week with NGT | 160655 |
| 2934 | 37400.37600.41000.42700.43600.73700.628900 | Putty Primer coat | 6d | 2026-06-07 | 2026-06-12 | 2933 |  | 7 day week with NGT | 160665 |
| 2935 | 37400.37600.41000.42700.43600.73700.629000 | Painting First Coat | 12d | 2026-06-13 | 2026-06-24 | 2924, 2926, 2933, 2934 |  | 7 day week with NGT | 160675 |
| 2936 | 37400.37600.41000.42700.43600.73700.629100 | False ceiling works | 10d | 2026-06-25 | 2026-07-04 | 2920, 2935 |  | 7 day week with NGT | 160685 |
| 2937 | 37400.37600.41000.42700.43600.73800 | **Fourth Floor** | 115d | 2026-03-24 | 2026-07-16 |  | start no earlier than 2026-03-24 | 7 day week with NGT | 156425 |
| 2938 | 37400.37600.41000.42700.43600.73800.629200 | Blockwork | 10d | 2026-03-24 | 2026-04-02 | 2865, 2922 |  | 7 day week with NGT | 160695 |
| 2939 | 37400.37600.41000.42700.43600.73800.629300 | Internal Plumbing Works | 6d | 2026-04-03 | 2026-04-08 | 2938 |  | 7 day week with NGT | 160705 |
| 2940 | 37400.37600.41000.42700.43600.73800.629400 | Waterproofing Works | 10d | 2026-04-05 | 2026-04-14 | 2939SS+2d |  | 7 day week with NGT | 160715 |
| 2941 | 37400.37600.41000.42700.43600.73800.629500 | PCC | 8d | 2026-04-17 | 2026-04-24 | 2940, 2943SS |  | 7 day week with NGT | 160725 |
| 2942 | 37400.37600.41000.42700.43600.73800.629600 | Electrical Wiring works | 12d | 2026-04-05 | 2026-04-16 | 2940SS |  | 7 day week with NGT | 160735 |
| 2943 | 37400.37600.41000.42700.43600.73800.629700 | Internal Plaster Works | 9d | 2026-04-17 | 2026-04-25 | 2939, 2940, 2942 |  | 7 day week with NGT | 160745 |
| 2944 | 37400.37600.41000.42700.43600.73800.629800 | Toilet Dado Works | 9d | 2026-04-26 | 2026-05-04 | 2939, 2940, 2942, 2943 |  | 7 day week with NGT | 160755 |
| 2945 | 37400.37600.41000.42700.43600.73800.629900 | Toilet Flooring Works | 7d | 2026-05-05 | 2026-05-11 | 2941, 2944 |  | 7 day week with NGT | 160765 |
| 2946 | 37400.37600.41000.42700.43600.73800.630000 | Living Dining Flooring | 15d | 2026-05-12 | 2026-05-26 | 2945 |  | 7 day week with NGT | 160775 |
| 2947 | 37400.37600.41000.42700.43600.73800.630100 | Temporary Door Fixing | 9d | 2026-04-03 | 2026-04-11 | 2938 |  | 7 day week with NGT | 160785 |
| 2948 | 37400.37600.41000.42700.43600.73800.630200 | Aluminium Door Widnow Fixing | 15d | 2026-05-27 | 2026-06-10 | 2946, 2947 |  | 7 day week with NGT | 160795 |
| 2949 | 37400.37600.41000.42700.43600.73800.630300 | Rehung Door Fixing | 8d | 2026-06-11 | 2026-06-18 | 2948 |  | 7 day week with NGT | 160805 |
| 2950 | 37400.37600.41000.42700.43600.73800.630400 | Putty Primer coat | 6d | 2026-06-19 | 2026-06-24 | 2949 |  | 7 day week with NGT | 160815 |
| 2951 | 37400.37600.41000.42700.43600.73800.630500 | Painting First Coat | 12d | 2026-06-25 | 2026-07-06 | 2940, 2942, 2949, 2950 |  | 7 day week with NGT | 160825 |
| 2952 | 37400.37600.41000.42700.43600.73800.630600 | False ceiling works | 10d | 2026-07-07 | 2026-07-16 | 2936, 2951 |  | 7 day week with NGT | 160835 |

| ID | WBS | Task | Duration | Start | Finish | Predecessors | Constraint | Calendar | Unique_Task_ID |
| --- | --- | --- | --- | --- | --- | --- | --- | --- | --- |
| 2953 | 37400.37600.41000.42700.43600.73900 | **Fifth Floor** | 115d | 2026-04-05 | 2026-07-28 |  | start no earlier than 2026-04-05 | 7 day week with NGT | 156435 |
| 2954 | 37400.37600.41000.42700.43600.73900.630700 | Blockwork | 10d | 2026-04-05 | 2026-04-14 | 2866, 2938 |  | 7 day week with NGT | 160845 |
| 2955 | 37400.37600.41000.42700.43600.73900.630800 | Internal Plumbing Works | 6d | 2026-04-15 | 2026-04-20 | 2954 |  | 7 day week with NGT | 160855 |
| 2956 | 37400.37600.41000.42700.43600.73900.630900 | Waterproofing Works | 10d | 2026-04-17 | 2026-04-26 | 2955SS+2d |  | 7 day week with NGT | 160865 |
| 2957 | 37400.37600.41000.42700.43600.73900.631000 | PCC | 8d | 2026-04-29 | 2026-05-06 | 2956, 2959SS |  | 7 day week with NGT | 160875 |
| 2958 | 37400.37600.41000.42700.43600.73900.631100 | Electrical Wiring works | 12d | 2026-04-17 | 2026-04-28 | 2956SS |  | 7 day week with NGT | 160885 |
| 2959 | 37400.37600.41000.42700.43600.73900.631200 | Internal Plaster Works | 9d | 2026-04-29 | 2026-05-07 | 2955, 2956, 2958 |  | 7 day week with NGT | 160895 |
| 2960 | 37400.37600.41000.42700.43600.73900.631300 | Toilet Dado Works | 9d | 2026-05-08 | 2026-05-16 | 2955, 2956, 2958, 2959 |  | 7 day week with NGT | 160905 |
| 2961 | 37400.37600.41000.42700.43600.73900.631400 | Toilet Flooring Works | 7d | 2026-05-17 | 2026-05-23 | 2957, 2960 |  | 7 day week with NGT | 160915 |
| 2962 | 37400.37600.41000.42700.43600.73900.631500 | Living Dining Flooring | 15d | 2026-05-24 | 2026-06-07 | 2961 |  | 7 day week with NGT | 160925 |
| 2963 | 37400.37600.41000.42700.43600.73900.631600 | Temporary Door Fixing | 9d | 2026-04-15 | 2026-04-23 | 2954 |  | 7 day week with NGT | 160935 |
| 2964 | 37400.37600.41000.42700.43600.73900.631700 | Aluminium Door Widnow Fixing | 15d | 2026-06-08 | 2026-06-22 | 2962, 2963 |  | 7 day week with NGT | 160945 |
| 2965 | 37400.37600.41000.42700.43600.73900.631800 | Rehung Door Fixing | 8d | 2026-06-23 | 2026-06-30 | 2964 |  | 7 day week with NGT | 160955 |
| 2966 | 37400.37600.41000.42700.43600.73900.631900 | Putty Primer coat | 6d | 2026-07-01 | 2026-07-06 | 2965 |  | 7 day week with NGT | 160965 |
| 2967 | 37400.37600.41000.42700.43600.73900.632000 | Painting First Coat | 12d | 2026-07-07 | 2026-07-18 | 2956, 2958, 2965, 2966 |  | 7 day week with NGT | 160975 |
| 2968 | 37400.37600.41000.42700.43600.73900.632100 | False ceiling works | 10d | 2026-07-19 | 2026-07-28 | 2952, 2967 |  | 7 day week with NGT | 160985 |
| 2969 | 37400.37600.41000.42700.43600.74000 | **Sixth Floor** | 115d | 2026-04-17 | 2026-08-10 |  | start no earlier than 2026-04-17 | 7 day week with NGT | 156445 |
| 2970 | 37400.37600.41000.42700.43600.74000.632200 | Blockwork | 10d | 2026-04-17 | 2026-04-27 | 2867, 2954 |  | 7 day week with NGT | 160995 |
| 2971 | 37400.37600.41000.42700.43600.74000.632300 | Internal Plumbing Works | 6d | 2026-04-27 | 2026-05-03 | 2970 |  | 7 day week with NGT | 161005 |
| 2972 | 37400.37600.41000.42700.43600.74000.632400 | Waterproofing Works | 10d | 2026-04-29 | 2026-05-09 | 2971SS+2d |  | 7 day week with NGT | 161015 |
| 2973 | 37400.37600.41000.42700.43600.74000.632500 | PCC | 8d | 2026-05-11 | 2026-05-19 | 2972, 2975SS |  | 7 day week with NGT | 161025 |
| 2974 | 37400.37600.41000.42700.43600.74000.632600 | Electrical Wiring works | 12d | 2026-04-29 | 2026-05-11 | 2972SS |  | 7 day week with NGT | 161035 |
| 2975 | 37400.37600.41000.42700.43600.74000.632700 | Internal Plaster Works | 9d | 2026-05-11 | 2026-05-20 | 2971, 2972, 2974 |  | 7 day week with NGT | 161045 |
| 2976 | 37400.37600.41000.42700.43600.74000.632800 | Toilet Dado Works | 9d | 2026-05-20 | 2026-05-29 | 2971, 2972, 2974, 2975 |  | 7 day week with NGT | 161055 |
| 2977 | 37400.37600.41000.42700.43600.74000.632900 | Toilet Flooring Works | 7d | 2026-05-29 | 2026-06-05 | 2973, 2976 |  | 7 day week with NGT | 161065 |
| 2978 | 37400.37600.41000.42700.43600.74000.633000 | Living Dining Flooring | 15d | 2026-06-05 | 2026-06-20 | 2977 |  | 7 day week with NGT | 161075 |
| 2979 | 37400.37600.41000.42700.43600.74000.633100 | Temporary Door Fixing | 9d | 2026-04-27 | 2026-05-06 | 2970 |  | 7 day week with NGT | 161085 |
| 2980 | 37400.37600.41000.42700.43600.74000.633200 | Aluminium Door Widnow Fixing | 15d | 2026-06-20 | 2026-07-05 | 2978, 2979 |  | 7 day week with NGT | 161095 |
| 2981 | 37400.37600.41000.42700.43600.74000.633300 | Rehung Door Fixing | 8d | 2026-07-05 | 2026-07-13 | 2980 |  | 7 day week with NGT | 161105 |
| 2982 | 37400.37600.41000.42700.43600.74000.633400 | Putty Primer coat | 6d | 2026-07-13 | 2026-07-19 | 2981 |  | 7 day week with NGT | 161115 |
| 2983 | 37400.37600.41000.42700.43600.74000.633500 | Painting First Coat | 12d | 2026-07-19 | 2026-07-31 | 2972, 2974, 2981, 2982 |  | 7 day week with NGT | 161125 |
| 2984 | 37400.37600.41000.42700.43600.74000.633600 | False ceiling works | 10d | 2026-07-31 | 2026-08-10 | 2968, 2983 |  | 7 day week with NGT | 161135 |

| ID | WBS | Task | Duration | Start | Finish | Predecessors | Constraint | Calendar | Unique_Task_ID |
| --- | --- | --- | --- | --- | --- | --- | --- | --- | --- |
| 2985 | 37400.37600.41000.42700.43600.74100 | **Seventh Floor** | 115d | 2026-04-29 | 2026-08-22 |  | start no earlier than 2026-04-29 | 7 day week with NGT | 156455 |
| 2986 | 37400.37600.41000.42700.43600.74100.633700 | Blockwork | 10d | 2026-04-29 | 2026-05-09 | 2868, 2970 |  | 7 day week with NGT | 161145 |
| 2987 | 37400.37600.41000.42700.43600.74100.633800 | Internal Plumbing Works | 6d | 2026-05-09 | 2026-05-15 | 2986 |  | 7 day week with NGT | 161155 |
| 2988 | 37400.37600.41000.42700.43600.74100.633900 | Waterproofing Works | 10d | 2026-05-11 | 2026-05-21 | 2987SS+2d |  | 7 day week with NGT | 161165 |
| 2989 | 37400.37600.41000.42700.43600.74100.634000 | PCC | 8d | 2026-05-23 | 2026-05-31 | 2988, 2991SS |  | 7 day week with NGT | 161175 |
| 2990 | 37400.37600.41000.42700.43600.74100.634100 | Electrical Wiring works | 12d | 2026-05-11 | 2026-05-23 | 2988SS |  | 7 day week with NGT | 161185 |
| 2991 | 37400.37600.41000.42700.43600.74100.634200 | Internal Plaster Works | 9d | 2026-05-23 | 2026-06-01 | 2987, 2988, 2990 |  | 7 day week with NGT | 161195 |
| 2992 | 37400.37600.41000.42700.43600.74100.634300 | Toilet Dado Works | 9d | 2026-06-01 | 2026-06-10 | 2987, 2988, 2990, 2991 |  | 7 day week with NGT | 161205 |
| 2993 | 37400.37600.41000.42700.43600.74100.634400 | Toilet Flooring Works | 7d | 2026-06-10 | 2026-06-17 | 2989, 2992 |  | 7 day week with NGT | 161215 |
| 2994 | 37400.37600.41000.42700.43600.74100.634500 | Living Dining Flooring | 15d | 2026-06-17 | 2026-07-02 | 2993 |  | 7 day week with NGT | 161225 |
| 2995 | 37400.37600.41000.42700.43600.74100.634600 | Temporary Door Fixing | 9d | 2026-05-09 | 2026-05-18 | 2986 |  | 7 day week with NGT | 161235 |
| 2996 | 37400.37600.41000.42700.43600.74100.634700 | Aluminium Door Widnow Fixing | 15d | 2026-07-02 | 2026-07-17 | 2994, 2995 |  | 7 day week with NGT | 161245 |
| 2997 | 37400.37600.41000.42700.43600.74100.634800 | Rehung Door Fixing | 8d | 2026-07-17 | 2026-07-25 | 2996 |  | 7 day week with NGT | 161255 |
| 2998 | 37400.37600.41000.42700.43600.74100.634900 | Putty Primer coat | 6d | 2026-07-25 | 2026-07-31 | 2997 |  | 7 day week with NGT | 161265 |
| 2999 | 37400.37600.41000.42700.43600.74100.635000 | Painting First Coat | 12d | 2026-07-31 | 2026-08-12 | 2988, 2990, 2997, 2998 |  | 7 day week with NGT | 161275 |
| 3000 | 37400.37600.41000.42700.43600.74100.635100 | False ceiling works | 10d | 2026-08-12 | 2026-08-22 | 2984, 2999 |  | 7 day week with NGT | 161285 |
| 3001 | 37400.37600.41000.42700.43600.74200 | **Eighth Floor** | 115d | 2026-05-11 | 2026-09-03 |  | start no earlier than 2026-05-11 | 7 day week with NGT | 156465 |
| 3002 | 37400.37600.41000.42700.43600.74200.635200 | Blockwork | 10d | 2026-05-11 | 2026-05-21 | 2869, 2986 |  | 7 day week with NGT | 161295 |
| 3003 | 37400.37600.41000.42700.43600.74200.635300 | Internal Plumbing Works | 6d | 2026-05-21 | 2026-05-27 | 3002 |  | 7 day week with NGT | 161305 |
| 3004 | 37400.37600.41000.42700.43600.74200.635400 | Waterproofing Works | 10d | 2026-05-23 | 2026-06-02 | 3003SS+2d |  | 7 day week with NGT | 161315 |
| 3005 | 37400.37600.41000.42700.43600.74200.635500 | PCC | 8d | 2026-06-04 | 2026-06-12 | 3004, 3007SS |  | 7 day week with NGT | 161325 |
| 3006 | 37400.37600.41000.42700.43600.74200.635600 | Electrical Wiring works | 12d | 2026-05-23 | 2026-06-04 | 3004SS |  | 7 day week with NGT | 161335 |
| 3007 | 37400.37600.41000.42700.43600.74200.635700 | Internal Plaster Works | 9d | 2026-06-04 | 2026-06-13 | 3003, 3004, 3006 |  | 7 day week with NGT | 161345 |
| 3008 | 37400.37600.41000.42700.43600.74200.635800 | Toilet Dado Works | 9d | 2026-06-13 | 2026-06-22 | 3003, 3004, 3006, 3007 |  | 7 day week with NGT | 161355 |
| 3009 | 37400.37600.41000.42700.43600.74200.635900 | Toilet Flooring Works | 7d | 2026-06-22 | 2026-06-29 | 3005, 3008 |  | 7 day week with NGT | 161365 |
| 3010 | 37400.37600.41000.42700.43600.74200.636000 | Living Dining Flooring | 15d | 2026-06-29 | 2026-07-14 | 3009 |  | 7 day week with NGT | 161375 |
| 3011 | 37400.37600.41000.42700.43600.74200.636100 | Temporary Door Fixing | 9d | 2026-05-21 | 2026-05-30 | 3002 |  | 7 day week with NGT | 161385 |
| 3012 | 37400.37600.41000.42700.43600.74200.636200 | Aluminium Door Widnow Fixing | 15d | 2026-07-14 | 2026-07-29 | 3010, 3011 |  | 7 day week with NGT | 161395 |
| 3013 | 37400.37600.41000.42700.43600.74200.636300 | Rehung Door Fixing | 8d | 2026-07-29 | 2026-08-06 | 3012 |  | 7 day week with NGT | 161405 |
| 3014 | 37400.37600.41000.42700.43600.74200.636400 | Putty Primer coat | 6d | 2026-08-06 | 2026-08-12 | 3013 |  | 7 day week with NGT | 161415 |
| 3015 | 37400.37600.41000.42700.43600.74200.636500 | Painting First Coat | 12d | 2026-08-12 | 2026-08-24 | 3004, 3006, 3013, 3014 |  | 7 day week with NGT | 161425 |
| 3016 | 37400.37600.41000.42700.43600.74200.636600 | False ceiling works | 10d | 2026-08-24 | 2026-09-03 | 3000, 3015 |  | 7 day week with NGT | 161435 |

| ID | WBS | Task | Duration | Start | Finish | Predecessors | Constraint | Calendar | Unique_Task_ID |
| --- | --- | --- | --- | --- | --- | --- | --- | --- | --- |
| 3017 | 37400.37600.41000.42700.43600.74300 | **Ninth Floor** | 115d | 2026-05-23 | 2026-09-15 |  | start no earlier than 2026-05-23 | 7 day week with NGT | 156475 |
| 3018 | 37400.37600.41000.42700.43600.74300.636700 | Blockwork | 10d | 2026-05-23 | 2026-06-02 | 2870, 3002 |  | 7 day week with NGT | 161445 |
| 3019 | 37400.37600.41000.42700.43600.74300.636800 | Internal Plumbing Works | 6d | 2026-06-02 | 2026-06-08 | 3018 |  | 7 day week with NGT | 161455 |
| 3020 | 37400.37600.41000.42700.43600.74300.636900 | Waterproofing Works | 10d | 2026-06-04 | 2026-06-14 | 3019SS+2d |  | 7 day week with NGT | 161465 |
| 3021 | 37400.37600.41000.42700.43600.74300.637000 | PCC | 8d | 2026-06-16 | 2026-06-24 | 3020, 3023SS |  | 7 day week with NGT | 161475 |
| 3022 | 37400.37600.41000.42700.43600.74300.637100 | Electrical Wiring works | 12d | 2026-06-04 | 2026-06-16 | 3020SS |  | 7 day week with NGT | 161485 |
| 3023 | 37400.37600.41000.42700.43600.74300.637200 | Internal Plaster Works | 9d | 2026-06-16 | 2026-06-25 | 3019, 3020, 3022 |  | 7 day week with NGT | 161495 |
| 3024 | 37400.37600.41000.42700.43600.74300.637300 | Toilet Dado Works | 9d | 2026-06-25 | 2026-07-04 | 3019, 3020, 3022, 3023 |  | 7 day week with NGT | 161505 |
| 3025 | 37400.37600.41000.42700.43600.74300.637400 | Toilet Flooring Works | 7d | 2026-07-04 | 2026-07-11 | 3021, 3024 |  | 7 day week with NGT | 161515 |
| 3026 | 37400.37600.41000.42700.43600.74300.637500 | Living Dining Flooring | 15d | 2026-07-11 | 2026-07-26 | 3025 |  | 7 day week with NGT | 161525 |
| 3027 | 37400.37600.41000.42700.43600.74300.637600 | Temporary Door Fixing | 9d | 2026-06-02 | 2026-06-11 | 3018 |  | 7 day week with NGT | 161535 |
| 3028 | 37400.37600.41000.42700.43600.74300.637700 | Aluminium Door Widnow Fixing | 15d | 2026-07-26 | 2026-08-10 | 3026, 3027 |  | 7 day week with NGT | 161545 |
| 3029 | 37400.37600.41000.42700.43600.74300.637800 | Rehung Door Fixing | 8d | 2026-08-10 | 2026-08-18 | 3028 |  | 7 day week with NGT | 161555 |
| 3030 | 37400.37600.41000.42700.43600.74300.637900 | Putty Primer coat | 6d | 2026-08-18 | 2026-08-24 | 3029 |  | 7 day week with NGT | 161565 |
| 3031 | 37400.37600.41000.42700.43600.74300.638000 | Painting First Coat | 12d | 2026-08-24 | 2026-09-05 | 3020, 3022, 3029, 3030 |  | 7 day week with NGT | 161575 |
| 3032 | 37400.37600.41000.42700.43600.74300.638100 | False ceiling works | 10d | 2026-09-05 | 2026-09-15 | 3016, 3031 |  | 7 day week with NGT | 161585 |
| 3033 | 37400.37600.41000.42700.43600.74400 | **Tenth Floor** | 115d | 2026-06-04 | 2026-09-27 |  | start no earlier than 2026-06-04 | 7 day week with NGT | 156485 |
| 3034 | 37400.37600.41000.42700.43600.74400.638200 | Blockwork | 10d | 2026-06-04 | 2026-06-14 | 2871, 3018 |  | 7 day week with NGT | 161595 |
| 3035 | 37400.37600.41000.42700.43600.74400.638300 | Internal Plumbing Works | 6d | 2026-06-14 | 2026-06-20 | 3034 |  | 7 day week with NGT | 161605 |
| 3036 | 37400.37600.41000.42700.43600.74400.638400 | Waterproofing Works | 10d | 2026-06-16 | 2026-06-26 | 3035SS+2d |  | 7 day week with NGT | 161615 |
| 3037 | 37400.37600.41000.42700.43600.74400.638500 | PCC | 8d | 2026-06-28 | 2026-07-06 | 3036, 3039SS |  | 7 day week with NGT | 161625 |
| 3038 | 37400.37600.41000.42700.43600.74400.638600 | Electrical Wiring works | 12d | 2026-06-16 | 2026-06-28 | 3036SS |  | 7 day week with NGT | 161635 |
| 3039 | 37400.37600.41000.42700.43600.74400.638700 | Internal Plaster Works | 9d | 2026-06-28 | 2026-07-07 | 3035, 3036, 3038 |  | 7 day week with NGT | 161645 |
| 3040 | 37400.37600.41000.42700.43600.74400.638800 | Toilet Dado Works | 9d | 2026-07-07 | 2026-07-16 | 3035, 3036, 3038, 3039 |  | 7 day week with NGT | 161655 |
| 3041 | 37400.37600.41000.42700.43600.74400.638900 | Toilet Flooring Works | 7d | 2026-07-16 | 2026-07-23 | 3037, 3040 |  | 7 day week with NGT | 161665 |
| 3042 | 37400.37600.41000.42700.43600.74400.639000 | Living Dining Flooring | 15d | 2026-07-23 | 2026-08-07 | 3041 |  | 7 day week with NGT | 161675 |
| 3043 | 37400.37600.41000.42700.43600.74400.639100 | Temporary Door Fixing | 9d | 2026-06-14 | 2026-06-23 | 3034 |  | 7 day week with NGT | 161685 |
| 3044 | 37400.37600.41000.42700.43600.74400.639200 | Aluminium Door Widnow Fixing | 15d | 2026-08-07 | 2026-08-22 | 3042, 3043 |  | 7 day week with NGT | 161695 |
| 3045 | 37400.37600.41000.42700.43600.74400.639300 | Rehung Door Fixing | 8d | 2026-08-22 | 2026-08-30 | 3044 |  | 7 day week with NGT | 161705 |
| 3046 | 37400.37600.41000.42700.43600.74400.639400 | Putty Primer coat | 6d | 2026-08-30 | 2026-09-05 | 3045 |  | 7 day week with NGT | 161715 |
| 3047 | 37400.37600.41000.42700.43600.74400.639500 | Painting First Coat | 12d | 2026-09-05 | 2026-09-17 | 3036, 3038, 3045, 3046 |  | 7 day week with NGT | 161725 |
| 3048 | 37400.37600.41000.42700.43600.74400.639600 | False ceiling works | 10d | 2026-09-17 | 2026-09-27 | 3032, 3047 |  | 7 day week with NGT | 161735 |

| ID | WBS | Task | Duration | Start | Finish | Predecessors | Constraint | Calendar | Unique_Task_ID |
| --- | --- | --- | --- | --- | --- | --- | --- | --- | --- |
| 3049 | 37400.37600.41000.42700.43600.74500 | **Eleventh Floor** | 115d | 2026-06-16 | 2026-10-09 |  | start no earlier than 2026-06-16 | 7 day week with NGT | 156495 |
| 3050 | 37400.37600.41000.42700.43600.74500.639700 | Blockwork | 10d | 2026-06-16 | 2026-06-26 | 2872, 3034 |  | 7 day week with NGT | 161745 |
| 3051 | 37400.37600.41000.42700.43600.74500.639800 | Internal Plumbing Works | 6d | 2026-06-26 | 2026-07-02 | 3050 |  | 7 day week with NGT | 161755 |
| 3052 | 37400.37600.41000.42700.43600.74500.639900 | Waterproofing Works | 10d | 2026-06-28 | 2026-07-08 | 3051SS+2d |  | 7 day week with NGT | 161765 |
| 3053 | 37400.37600.41000.42700.43600.74500.640000 | PCC | 8d | 2026-07-10 | 2026-07-18 | 3052, 3055SS |  | 7 day week with NGT | 161775 |
| 3054 | 37400.37600.41000.42700.43600.74500.640100 | Electrical Wiring works | 12d | 2026-06-28 | 2026-07-10 | 3052SS |  | 7 day week with NGT | 161785 |
| 3055 | 37400.37600.41000.42700.43600.74500.640200 | Internal Plaster Works | 9d | 2026-07-10 | 2026-07-19 | 3051, 3052, 3054 |  | 7 day week with NGT | 161795 |
| 3056 | 37400.37600.41000.42700.43600.74500.640300 | Toilet Dado Works | 9d | 2026-07-19 | 2026-07-28 | 3051, 3052, 3054, 3055 |  | 7 day week with NGT | 161805 |
| 3057 | 37400.37600.41000.42700.43600.74500.640400 | Toilet Flooring Works | 7d | 2026-07-28 | 2026-08-04 | 3053, 3056 |  | 7 day week with NGT | 161815 |
| 3058 | 37400.37600.41000.42700.43600.74500.640500 | Living Dining Flooring | 15d | 2026-08-04 | 2026-08-19 | 3057 |  | 7 day week with NGT | 161825 |
| 3059 | 37400.37600.41000.42700.43600.74500.640600 | Temporary Door Fixing | 9d | 2026-06-26 | 2026-07-05 | 3050 |  | 7 day week with NGT | 161835 |
| 3060 | 37400.37600.41000.42700.43600.74500.640700 | Aluminium Door Widnow Fixing | 15d | 2026-08-19 | 2026-09-03 | 3058, 3059 |  | 7 day week with NGT | 161845 |
| 3061 | 37400.37600.41000.42700.43600.74500.640800 | Rehung Door Fixing | 8d | 2026-09-03 | 2026-09-11 | 3060 |  | 7 day week with NGT | 161855 |
| 3062 | 37400.37600.41000.42700.43600.74500.640900 | Putty Primer coat | 6d | 2026-09-11 | 2026-09-17 | 3061 |  | 7 day week with NGT | 161865 |
| 3063 | 37400.37600.41000.42700.43600.74500.641000 | Painting First Coat | 12d | 2026-09-17 | 2026-09-29 | 3052, 3054, 3061, 3062 |  | 7 day week with NGT | 161875 |
| 3064 | 37400.37600.41000.42700.43600.74500.641100 | False ceiling works | 10d | 2026-09-29 | 2026-10-09 | 3048, 3063 |  | 7 day week with NGT | 161885 |
| 3065 | 37400.37600.41000.42700.43600.74600 | **Twelth Floor** | 115d | 2026-07-27 | 2027-01-03 |  | start no earlier than 2026-07-27 | 7 day week with NGT | 156505 |
| 3066 | 37400.37600.41000.42700.43600.74600.641200 | Blockwork | 10d | 2026-07-27 | 2026-08-06 | 2875 |  | 7 day week with NGT | 161895 |
| 3067 | 37400.37600.41000.42700.43600.74600.641300 | Internal Plumbing Works | 6d | 2026-08-06 | 2026-08-12 | 3066 |  | 7 day week with NGT | 161905 |
| 3068 | 37400.37600.41000.42700.43600.74600.641400 | Waterproofing Works | 10d | 2026-08-08 | 2026-08-18 | 3067SS+2d |  | 7 day week with NGT | 161915 |
| 3069 | 37400.37600.41000.42700.43600.74600.641500 | PCC | 8d | 2026-08-20 | 2026-08-28 | 3068, 3071SS |  | 7 day week with NGT | 161925 |
| 3070 | 37400.37600.41000.42700.43600.74600.641600 | Electrical Wiring works | 12d | 2026-08-08 | 2026-08-20 | 3068SS |  | 7 day week with NGT | 161935 |
| 3071 | 37400.37600.41000.42700.43600.74600.641700 | Internal Plaster Works | 9d | 2026-08-20 | 2026-08-29 | 3067, 3068, 3070 |  | 7 day week with NGT | 161945 |
| 3072 | 37400.37600.41000.42700.43600.74600.641800 | Toilet Dado Works | 9d | 2026-08-29 | 2026-09-07 | 3067, 3068, 3070, 3071 |  | 7 day week with NGT | 161955 |
| 3073 | 37400.37600.41000.42700.43600.74600.641900 | Toilet Flooring Works | 7d | 2026-09-07 | 2026-09-14 | 3069, 3072 |  | 7 day week with NGT | 161965 |
| 3074 | 37400.37600.41000.42700.43600.74600.642000 | Living Dining Flooring | 15d | 2026-09-14 | 2026-09-29 | 3073 |  | 7 day week with NGT | 161975 |
| 3075 | 37400.37600.41000.42700.43600.74600.642100 | Temporary Door Fixing | 9d | 2026-08-06 | 2026-08-15 | 3066 |  | 7 day week with NGT | 161985 |
| 3076 | 37400.37600.41000.42700.43600.74600.642200 | Aluminium Door Widnow Fixing | 15d | 2026-09-29 | 2026-10-14 | 3074, 3075 |  | 7 day week with NGT | 161995 |
| 3077 | 37400.37600.41000.42700.43600.74600.642300 | Rehung Door Fixing | 8d | 2026-10-14 | 2026-10-22 | 3076 |  | 7 day week with NGT | 162005 |
| 3078 | 37400.37600.41000.42700.43600.74600.642400 | Putty Primer coat | 6d | 2026-10-22 | 2026-10-28 | 3077 |  | 7 day week with NGT | 162015 |
| 3079 | 37400.37600.41000.42700.43600.74600.642500 | Painting First Coat | 12d | 2026-10-28 | 2026-12-24 | 3068, 3070, 3077, 3078 |  | 7 day week with NGT | 162025 |
| 3080 | 37400.37600.41000.42700.43600.74600.642600 | False ceiling works | 10d | 2026-12-24 | 2027-01-03 | 3064, 3079 |  | 7 day week with NGT | 162035 |

| ID | WBS | Task | Duration | Start | Finish | Predecessors | Constraint | Calendar | Unique_Task_ID |
| --- | --- | --- | --- | --- | --- | --- | --- | --- | --- |
| 3081 | 37400.37600.41000.42700.43600.74700 | **Thirteen Floor** | 113d | 2026-08-08 | 2027-01-13 |  | start no earlier than 2026-08-08 | 7 day week with NGT | 156515 |
| 3082 | 37400.37600.41000.42700.43600.74700.642700 | Blockwork | 7d | 2026-08-08 | 2026-08-15 | 2876, 3066 |  | 7 day week with NGT | 162045 |
| 3083 | 37400.37600.41000.42700.43600.74700.642800 | Internal Plumbing Works | 6d | 2026-08-15 | 2026-08-21 | 3082 |  | 7 day week with NGT | 162055 |
| 3084 | 37400.37600.41000.42700.43600.74700.642900 | Waterproofing Works | 7d | 2026-08-17 | 2026-08-24 | 3083SS+2d |  | 7 day week with NGT | 162065 |
| 3085 | 37400.37600.41000.42700.43600.74700.643000 | PCC | 8d | 2026-08-24 | 2026-09-01 | 3084, 3087SS |  | 7 day week with NGT | 162075 |
| 3086 | 37400.37600.41000.42700.43600.74700.643100 | Electrical Wiring works | 7d | 2026-08-17 | 2026-08-24 | 3084SS |  | 7 day week with NGT | 162085 |
| 3087 | 37400.37600.41000.42700.43600.74700.643200 | Internal Plaster Works | 5d | 2026-08-24 | 2026-08-29 | 3083, 3084, 3086 |  | 7 day week with NGT | 162095 |
| 3088 | 37400.37600.41000.42700.43600.74700.643300 | Toilet Dado Works | 7d | 2026-08-29 | 2026-09-05 | 3083, 3084, 3086, 3087 |  | 7 day week with NGT | 162105 |
| 3089 | 37400.37600.41000.42700.43600.74700.643400 | Toilet Flooring Works | 5d | 2026-09-05 | 2026-09-10 | 3085, 3088 |  | 7 day week with NGT | 162115 |
| 3090 | 37400.37600.41000.42700.43600.74700.643500 | Living Dining Flooring | 10d | 2026-09-10 | 2026-09-20 | 3089 |  | 7 day week with NGT | 162125 |
| 3091 | 37400.37600.41000.42700.43600.74700.643600 | Temporary Door Fixing | 9d | 2026-08-15 | 2026-08-24 | 3082 |  | 7 day week with NGT | 162135 |
| 3092 | 37400.37600.41000.42700.43600.74700.643700 | Aluminium Door Widnow Fixing | 7d | 2026-09-20 | 2026-09-27 | 3090, 3091 |  | 7 day week with NGT | 162145 |
| 3093 | 37400.37600.41000.42700.43600.74700.643800 | Rehung Door Fixing | 8d | 2026-09-27 | 2026-10-05 | 3092 |  | 7 day week with NGT | 162155 |
| 3094 | 37400.37600.41000.42700.43600.74700.643900 | Putty Primer coat | 6d | 2026-10-05 | 2026-10-11 | 3093 |  | 7 day week with NGT | 162165 |
| 3095 | 37400.37600.41000.42700.43600.74700.644000 | Painting First Coat | 12d | 2026-10-11 | 2026-10-23 | 3084, 3086, 3093, 3094 |  | 7 day week with NGT | 162175 |
| 3096 | 37400.37600.41000.42700.43600.74700.644100 | False ceiling works | 10d | 2027-01-03 | 2027-01-13 | 3080, 3095 |  | 7 day week with NGT | 162185 |
| 3097 | 37400.37600.41000.42700.43600.74800 | **Fourteen Floor** | 111d | 2026-08-20 | 2027-01-23 |  | start no earlier than 2026-08-20 | 7 day week with NGT | 156525 |
| 3098 | 37400.37600.41000.42700.43600.74800.644200 | Blockwork | 7d | 2026-08-20 | 2026-08-27 | 2877, 3082 |  | 7 day week with NGT | 162195 |
| 3099 | 37400.37600.41000.42700.43600.74800.644300 | Internal Plumbing Works | 6d | 2026-08-27 | 2026-09-02 | 3098 |  | 7 day week with NGT | 162205 |
| 3100 | 37400.37600.41000.42700.43600.74800.644400 | Waterproofing Works | 7d | 2026-08-29 | 2026-09-05 | 3099SS+2d |  | 7 day week with NGT | 162215 |
| 3101 | 37400.37600.41000.42700.43600.74800.644500 | PCC | 8d | 2026-09-05 | 2026-09-13 | 3100, 3103SS |  | 7 day week with NGT | 162225 |
| 3102 | 37400.37600.41000.42700.43600.74800.644600 | Electrical Wiring works | 7d | 2026-08-29 | 2026-09-05 | 3100SS |  | 7 day week with NGT | 162235 |
| 3103 | 37400.37600.41000.42700.43600.74800.644700 | Internal Plaster Works | 5d | 2026-09-05 | 2026-09-10 | 3099, 3100, 3102 |  | 7 day week with NGT | 162245 |
| 3104 | 37400.37600.41000.42700.43600.74800.644800 | Toilet Dado Works | 7d | 2026-09-10 | 2026-09-17 | 3099, 3100, 3102, 3103 |  | 7 day week with NGT | 162255 |
| 3105 | 37400.37600.41000.42700.43600.74800.644900 | Toilet Flooring Works | 5d | 2026-09-17 | 2026-09-22 | 3101, 3104 |  | 7 day week with NGT | 162265 |
| 3106 | 37400.37600.41000.42700.43600.74800.645000 | Living Dining Flooring | 10d | 2026-09-22 | 2026-10-02 | 3105 |  | 7 day week with NGT | 162275 |
| 3107 | 37400.37600.41000.42700.43600.74800.645100 | Temporary Door Fixing | 9d | 2026-08-27 | 2026-09-05 | 3098 |  | 7 day week with NGT | 162285 |
| 3108 | 37400.37600.41000.42700.43600.74800.645200 | Aluminium Door Widnow Fixing | 15d | 2026-10-02 | 2026-10-17 | 3106, 3107 |  | 7 day week with NGT | 162295 |
| 3109 | 37400.37600.41000.42700.43600.74800.645300 | Rehung Door Fixing | 8d | 2026-10-17 | 2026-10-25 | 3108 |  | 7 day week with NGT | 162305 |
| 3110 | 37400.37600.41000.42700.43600.74800.645400 | Putty Primer coat | 6d | 2026-10-25 | 2026-10-31 | 3109 |  | 7 day week with NGT | 162315 |
| 3111 | 37400.37600.41000.42700.43600.74800.645500 | Painting First Coat | 12d | 2026-10-31 | 2026-12-27 | 3100, 3102, 3109, 3110 |  | 7 day week with NGT | 162325 |
| 3112 | 37400.37600.41000.42700.43600.74800.645600 | False ceiling works | 10d | 2027-01-13 | 2027-01-23 | 3096, 3111 |  | 7 day week with NGT | 162335 |

| ID | WBS | Task | Duration | Start | Finish | Predecessors | Constraint | Calendar | Unique_Task_ID |
| --- | --- | --- | --- | --- | --- | --- | --- | --- | --- |
| 3113 | 37400.37600.41000.42700.43600.74900 | **Fifteen Floor** | 110d | 2026-08-31 | 2027-02-02 |  | start no earlier than 2026-08-31 | 7 day week with NGT | 156535 |
| 3114 | 37400.37600.41000.42700.43600.74900.645700 | Blockwork | 7d | 2026-08-31 | 2026-09-07 | 2878, 3098 |  | 7 day week with NGT | 162345 |
| 3115 | 37400.37600.41000.42700.43600.74900.645800 | Internal Plumbing Works | 6d | 2026-09-07 | 2026-09-13 | 3114 |  | 7 day week with NGT | 162355 |
| 3116 | 37400.37600.41000.42700.43600.74900.645900 | Waterproofing Works | 7d | 2026-09-09 | 2026-09-16 | 3115SS+2d |  | 7 day week with NGT | 162365 |
| 3117 | 37400.37600.41000.42700.43600.74900.646000 | PCC | 8d | 2026-09-16 | 2026-09-24 | 3116, 3119SS |  | 7 day week with NGT | 162375 |
| 3118 | 37400.37600.41000.42700.43600.74900.646100 | Electrical Wiring works | 7d | 2026-09-09 | 2026-09-16 | 3116SS |  | 7 day week with NGT | 162385 |
| 3119 | 37400.37600.41000.42700.43600.74900.646200 | Internal Plaster Works | 5d | 2026-09-16 | 2026-09-21 | 3115, 3116, 3118 |  | 7 day week with NGT | 162395 |
| 3120 | 37400.37600.41000.42700.43600.74900.646300 | Toilet Dado Works | 7d | 2026-09-21 | 2026-09-28 | 3115, 3116, 3118, 3119 |  | 7 day week with NGT | 162405 |
| 3121 | 37400.37600.41000.42700.43600.74900.646400 | Toilet Flooring Works | 5d | 2026-09-28 | 2026-10-03 | 3117, 3120 |  | 7 day week with NGT | 162415 |
| 3122 | 37400.37600.41000.42700.43600.74900.646500 | Living Dining Flooring | 10d | 2026-10-03 | 2026-10-13 | 3121 |  | 7 day week with NGT | 162425 |
| 3123 | 37400.37600.41000.42700.43600.74900.646600 | Temporary Door Fixing | 9d | 2026-09-07 | 2026-09-16 | 3114 |  | 7 day week with NGT | 162435 |
| 3124 | 37400.37600.41000.42700.43600.74900.646700 | Aluminium Door Widnow Fixing | 15d | 2026-10-13 | 2026-10-28 | 3122, 3123 |  | 7 day week with NGT | 162445 |
| 3125 | 37400.37600.41000.42700.43600.74900.646800 | Rehung Door Fixing | 8d | 2026-10-28 | 2026-12-20 | 3124 |  | 7 day week with NGT | 162455 |
| 3126 | 37400.37600.41000.42700.43600.74900.646900 | Putty Primer coat | 6d | 2026-12-20 | 2026-12-26 | 3125 |  | 7 day week with NGT | 162465 |
| 3127 | 37400.37600.41000.42700.43600.74900.647000 | Painting First Coat | 12d | 2026-12-26 | 2027-01-07 | 3116, 3118, 3125, 3126 |  | 7 day week with NGT | 162475 |
| 3128 | 37400.37600.41000.42700.43600.74900.647100 | False ceiling works | 10d | 2027-01-23 | 2027-02-02 | 3112, 3127 |  | 7 day week with NGT | 162485 |
| 3129 | 37400.37600.41000.42700.43600.75000 | **Sixteen Floor** | 109d | 2026-09-11 | 2027-02-12 |  | start no earlier than 2026-09-11 | 7 day week with NGT | 156545 |
| 3130 | 37400.37600.41000.42700.43600.75000.647200 | Blockwork | 7d | 2026-09-11 | 2026-09-18 | 2879, 3114 |  | 7 day week with NGT | 162495 |
| 3131 | 37400.37600.41000.42700.43600.75000.647300 | Internal Plumbing Works | 6d | 2026-09-18 | 2026-09-24 | 3130 |  | 7 day week with NGT | 162505 |
| 3132 | 37400.37600.41000.42700.43600.75000.647400 | Waterproofing Works | 7d | 2026-09-20 | 2026-09-27 | 3131SS+2d |  | 7 day week with NGT | 162515 |
| 3133 | 37400.37600.41000.42700.43600.75000.647500 | PCC | 8d | 2026-09-27 | 2026-10-05 | 3132, 3135SS |  | 7 day week with NGT | 162525 |
| 3134 | 37400.37600.41000.42700.43600.75000.647600 | Electrical Wiring works | 7d | 2026-09-20 | 2026-09-27 | 3132SS |  | 7 day week with NGT | 162535 |
| 3135 | 37400.37600.41000.42700.43600.75000.647700 | Internal Plaster Works | 5d | 2026-09-27 | 2026-10-02 | 3131, 3132, 3134 |  | 7 day week with NGT | 162545 |
| 3136 | 37400.37600.41000.42700.43600.75000.647800 | Toilet Dado Works | 7d | 2026-10-02 | 2026-10-09 | 3131, 3132, 3134, 3135 |  | 7 day week with NGT | 162555 |
| 3137 | 37400.37600.41000.42700.43600.75000.647900 | Toilet Flooring Works | 5d | 2026-10-09 | 2026-10-14 | 3133, 3136 |  | 7 day week with NGT | 162565 |
| 3138 | 37400.37600.41000.42700.43600.75000.648000 | Living Dining Flooring | 10d | 2026-10-14 | 2026-10-24 | 3137 |  | 7 day week with NGT | 162575 |
| 3139 | 37400.37600.41000.42700.43600.75000.648100 | Temporary Door Fixing | 9d | 2026-09-18 | 2026-09-27 | 3130 |  | 7 day week with NGT | 162585 |
| 3140 | 37400.37600.41000.42700.43600.75000.648200 | Aluminium Door Widnow Fixing | 15d | 2026-10-24 | 2026-12-23 | 3138, 3139 |  | 7 day week with NGT | 162595 |
| 3141 | 37400.37600.41000.42700.43600.75000.648300 | Rehung Door Fixing | 8d | 2026-12-23 | 2026-12-31 | 3140 |  | 7 day week with NGT | 162605 |
| 3142 | 37400.37600.41000.42700.43600.75000.648400 | Putty Primer coat | 6d | 2026-12-31 | 2027-01-06 | 3141 |  | 7 day week with NGT | 162615 |
| 3143 | 37400.37600.41000.42700.43600.75000.648500 | Painting First Coat | 12d | 2027-01-06 | 2027-01-18 | 3132, 3134, 3141, 3142 |  | 7 day week with NGT | 162625 |
| 3144 | 37400.37600.41000.42700.43600.75000.648600 | False ceiling works | 10d | 2027-02-02 | 2027-02-12 | 3128, 3143 |  | 7 day week with NGT | 162635 |

| ID | WBS | Task | Duration | Start | Finish | Predecessors | Constraint | Calendar | Unique_Task_ID |
| --- | --- | --- | --- | --- | --- | --- | --- | --- | --- |
| 3145 | 37400.37600.41000.42700.43600.75100 | **Seventeen Floor** | 107.75d | 2026-09-22 | 2027-02-22 |  | start no earlier than 2026-09-22 | 7 day week with NGT | 156555 |
| 3146 | 37400.37600.41000.42700.43600.75100.648700 | Blockwork | 7d | 2026-09-22 | 2026-09-29 | 2880FS+0.25d |  | 7 day week with NGT | 162645 |
| 3147 | 37400.37600.41000.42700.43600.75100.648800 | Internal Plumbing Works | 6d | 2026-09-29 | 2026-10-05 | 3146 |  | 7 day week with NGT | 162655 |
| 3148 | 37400.37600.41000.42700.43600.75100.648900 | Waterproofing Works | 5d | 2026-10-01 | 2026-10-06 | 3147SS+2d |  | 7 day week with NGT | 162665 |
| 3149 | 37400.37600.41000.42700.43600.75100.649000 | PCC | 8d | 2026-10-06 | 2026-10-14 | 3148, 3151SS |  | 7 day week with NGT | 162675 |
| 3150 | 37400.37600.41000.42700.43600.75100.649100 | Electrical Wiring works | 5d | 2026-10-01 | 2026-10-06 | 3148SS |  | 7 day week with NGT | 162685 |
| 3151 | 37400.37600.41000.42700.43600.75100.649200 | Internal Plaster Works | 5d | 2026-10-06 | 2026-10-11 | 3147FS+0.25d, 3150FS+0.25d |  | 7 day week with NGT | 162695 |
| 3152 | 37400.37600.41000.42700.43600.75100.649300 | Toilet Dado Works | 7d | 2026-10-06 | 2026-10-13 | 3147FS+0.25d, 3148FS+0.25d, 3150FF+2d, 3151FF+2d |  | 7 day week with NGT | 162705 |
| 3153 | 37400.37600.41000.42700.43600.75100.649400 | Toilet Flooring Works | 5d | 2026-10-14 | 2026-10-19 | 3149, 3152 |  | 7 day week with NGT | 162715 |
| 3154 | 37400.37600.41000.42700.43600.75100.649500 | Living Dining Flooring | 7d | 2026-10-19 | 2026-10-26 | 3153 |  | 7 day week with NGT | 162725 |
| 3155 | 37400.37600.41000.42700.43600.75100.649600 | Temporary Door Fixing | 9d | 2026-09-29 | 2026-10-08 | 3146 |  | 7 day week with NGT | 162735 |
| 3156 | 37400.37600.41000.42700.43600.75100.649700 | Aluminium Door Widnow Fixing | 15d | 2026-10-26 | 2026-12-25 | 3154, 3155 |  | 7 day week with NGT | 162745 |
| 3157 | 37400.37600.41000.42700.43600.75100.649800 | Rehung Door Fixing | 8d | 2026-12-25 | 2027-01-02 | 3156 |  | 7 day week with NGT | 162755 |
| 3158 | 37400.37600.41000.42700.43600.75100.649900 | Putty Primer coat | 6d | 2027-01-02 | 2027-01-08 | 3157 |  | 7 day week with NGT | 162765 |
| 3159 | 37400.37600.41000.42700.43600.75100.650000 | Painting First Coat | 12d | 2027-01-08 | 2027-01-20 | 3148, 3150, 3157, 3158 |  | 7 day week with NGT | 162775 |
| 3160 | 37400.37600.41000.42700.43600.75100.650100 | False ceiling works | 10d | 2027-02-12 | 2027-02-22 | 3144, 3159 |  | 7 day week with NGT | 162785 |
| 3161 | 37400.37600.41000.42700.43600.75200 | **Eighteenth Floor** | 106.75d | 2026-10-03 | 2027-03-04 |  | start no earlier than 2026-10-03 | 7 day week with NGT | 156565 |
| 3162 | 37400.37600.41000.42700.43600.75200.650200 | Blockwork | 7d | 2026-10-03 | 2026-10-10 | 2881FS+0.25d |  | 7 day week with NGT | 162795 |
| 3163 | 37400.37600.41000.42700.43600.75200.650300 | Internal Plumbing Works | 6d | 2026-10-10 | 2026-10-16 | 3162 |  | 7 day week with NGT | 162805 |
| 3164 | 37400.37600.41000.42700.43600.75200.650400 | Waterproofing Works | 7d | 2026-10-12 | 2026-10-19 | 3163SS+2d |  | 7 day week with NGT | 162815 |
| 3165 | 37400.37600.41000.42700.43600.75200.650500 | PCC | 4d | 2026-10-19 | 2026-10-23 | 3164, 3167SS |  | 7 day week with NGT | 162825 |
| 3166 | 37400.37600.41000.42700.43600.75200.650600 | Electrical Wiring works | 4d | 2026-10-12 | 2026-10-16 | 3164SS |  | 7 day week with NGT | 162835 |
| 3167 | 37400.37600.41000.42700.43600.75200.650700 | Internal Plaster Works | 4d | 2026-10-19 | 2026-10-23 | 3163, 3164, 3166 |  | 7 day week with NGT | 162845 |
| 3168 | 37400.37600.41000.42700.43600.75200.650800 | Toilet Dado Works | 4d | 2026-10-21 | 2026-10-25 | 3163FS+0.25d, 3164FS+0.25d, 3166FF+2d, 3167FF+2d |  | 7 day week with NGT | 162855 |
| 3169 | 37400.37600.41000.42700.43600.75200.650900 | Toilet Flooring Works | 4d | 2026-10-25 | 2026-10-29 | 3165, 3168 |  | 7 day week with NGT | 162865 |
| 3170 | 37400.37600.41000.42700.43600.75200.651000 | Living Dining Flooring | 10d | 2026-10-29 | 2026-12-23 | 3169 |  | 7 day week with NGT | 162875 |
| 3171 | 37400.37600.41000.42700.43600.75200.651100 | Temporary Door Fixing | 9d | 2026-10-10 | 2026-10-19 | 3162 |  | 7 day week with NGT | 162885 |
| 3172 | 37400.37600.41000.42700.43600.75200.651200 | Aluminium Door Widnow Fixing | 15d | 2026-12-23 | 2027-01-07 | 3170, 3171 |  | 7 day week with NGT | 162895 |
| 3173 | 37400.37600.41000.42700.43600.75200.651300 | Rehung Door Fixing | 8d | 2027-01-07 | 2027-01-15 | 3172 |  | 7 day week with NGT | 162905 |
| 3174 | 37400.37600.41000.42700.43600.75200.651400 | Putty Primer coat | 6d | 2027-01-15 | 2027-01-21 | 3173 |  | 7 day week with NGT | 162915 |
| 3175 | 37400.37600.41000.42700.43600.75200.651500 | Painting First Coat | 12d | 2027-01-21 | 2027-02-02 | 3164, 3166, 3173, 3174 |  | 7 day week with NGT | 162925 |
| 3176 | 37400.37600.41000.42700.43600.75200.651600 | False ceiling works | 10d | 2027-02-22 | 2027-03-04 | 3160, 3175 |  | 7 day week with NGT | 162935 |

| ID | WBS | Task | Duration | Start | Finish | Predecessors | Constraint | Calendar | Unique_Task_ID |
| --- | --- | --- | --- | --- | --- | --- | --- | --- | --- |
| 3177 | 37400.37600.41000.42700.43600.75300 | **Ninteenth Floor** | 106d | 2026-10-14 | 2027-03-14 |  | start no earlier than 2026-10-14 | 7 day week with NGT | 156575 |
| 3178 | 37400.37600.41000.42700.43600.75300.651700 | Blockwork | 7d | 2026-10-14 | 2026-10-21 | 2882, 3162 |  | 7 day week with NGT | 162945 |
| 3179 | 37400.37600.41000.42700.43600.75300.651800 | Internal Plumbing Works | 6d | 2026-10-21 | 2026-10-27 | 3178 |  | 7 day week with NGT | 162955 |
| 3180 | 37400.37600.41000.42700.43600.75300.651900 | Waterproofing Works | 7d | 2026-10-23 | 2026-10-30 | 3179SS+2d |  | 7 day week with NGT | 162965 |
| 3181 | 37400.37600.41000.42700.43600.75300.652000 | PCC | 4d | 2026-10-30 | 2026-12-18 | 3180, 3183SS |  | 7 day week with NGT | 162975 |
| 3182 | 37400.37600.41000.42700.43600.75300.652100 | Electrical Wiring works | 7d | 2026-10-23 | 2026-10-30 | 3180SS |  | 7 day week with NGT | 162985 |
| 3183 | 37400.37600.41000.42700.43600.75300.652200 | Internal Plaster Works | 5d | 2026-10-30 | 2026-12-19 | 3179, 3180, 3182 |  | 7 day week with NGT | 162995 |
| 3184 | 37400.37600.41000.42700.43600.75300.652300 | Toilet Dado Works | 5d | 2026-12-19 | 2026-12-24 | 3179, 3180, 3182, 3183 |  | 7 day week with NGT | 163005 |
| 3185 | 37400.37600.41000.42700.43600.75300.652400 | Toilet Flooring Works | 5d | 2026-12-24 | 2026-12-29 | 3181, 3184 |  | 7 day week with NGT | 163015 |
| 3186 | 37400.37600.41000.42700.43600.75300.652500 | Living Dining Flooring | 15d | 2026-12-29 | 2027-01-13 | 3185 |  | 7 day week with NGT | 163025 |
| 3187 | 37400.37600.41000.42700.43600.75300.652600 | Temporary Door Fixing | 9d | 2026-10-21 | 2026-10-30 | 3178 |  | 7 day week with NGT | 163035 |
| 3188 | 37400.37600.41000.42700.43600.75300.652700 | Aluminium Door Widnow Fixing | 15d | 2027-01-13 | 2027-01-28 | 3186, 3187 |  | 7 day week with NGT | 163045 |
| 3189 | 37400.37600.41000.42700.43600.75300.652800 | Rehung Door Fixing | 8d | 2027-01-28 | 2027-02-05 | 3188 |  | 7 day week with NGT | 163055 |
| 3190 | 37400.37600.41000.42700.43600.75300.652900 | Putty Primer coat | 6d | 2027-02-05 | 2027-02-11 | 3189 |  | 7 day week with NGT | 163065 |
| 3191 | 37400.37600.41000.42700.43600.75300.653000 | Painting First Coat | 12d | 2027-02-11 | 2027-02-23 | 3180, 3182, 3189, 3190 |  | 7 day week with NGT | 163075 |
| 3192 | 37400.37600.41000.42700.43600.75300.653100 | False ceiling works | 10d | 2027-03-04 | 2027-03-14 | 3176, 3191 |  | 7 day week with NGT | 163085 |
| 3193 | 37400.37600.41000.42700.43600.75400 | **Twenty Floor** | 111.75d | 2026-10-18 | 2027-03-24 |  | start no earlier than 2026-10-18 | 7 day week with NGT | 156585 |
| 3194 | 37400.37600.41000.42700.43600.75400.653200 | Blockwork | 7d | 2026-10-18 | 2026-10-25 | 2883FF+0.25d |  | 7 day week with NGT | 163095 |
| 3195 | 37400.37600.41000.42700.43600.75400.653300 | Internal Plumbing Works | 6d | 2026-10-22 | 2026-10-28 | 3194FF+3d |  | 7 day week with NGT | 163105 |
| 3196 | 37400.37600.41000.42700.43600.75400.653400 | Waterproofing Works | 6d | 2026-10-24 | 2026-10-30 | 3195SS+2d |  | 7 day week with NGT | 163115 |
| 3197 | 37400.37600.41000.42700.43600.75400.653500 | PCC | 4d | 2026-10-30 | 2026-12-18 | 3196, 3199SS |  | 7 day week with NGT | 163125 |
| 3198 | 37400.37600.41000.42700.43600.75400.653600 | Electrical Wiring works | 4d | 2026-10-24 | 2026-10-28 | 3196SS |  | 7 day week with NGT | 163135 |
| 3199 | 37400.37600.41000.42700.43600.75400.653700 | Internal Plaster Works | 5d | 2026-10-30 | 2026-12-19 | 3195, 3196, 3198 |  | 7 day week with NGT | 163145 |
| 3200 | 37400.37600.41000.42700.43600.75400.653800 | Toilet Dado Works | 7d | 2026-12-19 | 2026-12-26 | 3195, 3196, 3198, 3199 |  | 7 day week with NGT | 163155 |
| 3201 | 37400.37600.41000.42700.43600.75400.653900 | Toilet Flooring Works | 5d | 2026-12-26 | 2026-12-31 | 3197, 3200 |  | 7 day week with NGT | 163165 |
| 3202 | 37400.37600.41000.42700.43600.75400.654000 | Living Dining Flooring | 10d | 2026-12-31 | 2027-01-10 | 3201 |  | 7 day week with NGT | 163175 |
| 3203 | 37400.37600.41000.42700.43600.75400.654100 | Temporary Door Fixing | 9d | 2026-10-25 | 2026-12-18 | 3194 |  | 7 day week with NGT | 163185 |
| 3204 | 37400.37600.41000.42700.43600.75400.654200 | Aluminium Door Widnow Fixing | 15d | 2027-01-10 | 2027-01-25 | 3202, 3203 |  | 7 day week with NGT | 163195 |
| 3205 | 37400.37600.41000.42700.43600.75400.654300 | Rehung Door Fixing | 8d | 2027-01-25 | 2027-02-02 | 3204 |  | 7 day week with NGT | 163205 |
| 3206 | 37400.37600.41000.42700.43600.75400.654400 | Putty Primer coat | 6d | 2027-02-02 | 2027-02-08 | 3205 |  | 7 day week with NGT | 163215 |
| 3207 | 37400.37600.41000.42700.43600.75400.654500 | Painting First Coat | 12d | 2027-02-08 | 2027-02-20 | 3196, 3198, 3205, 3206 |  | 7 day week with NGT | 163225 |
| 3208 | 37400.37600.41000.42700.43600.75400.654600 | False ceiling works | 10d | 2027-03-14 | 2027-03-24 | 3192, 3207 |  | 7 day week with NGT | 163235 |

| ID | WBS | Task | Duration | Start | Finish | Predecessors | Constraint | Calendar | Unique_Task_ID |
| --- | --- | --- | --- | --- | --- | --- | --- | --- | --- |
| 3209 | 37400.37600.41000.42700.43600.75500 | **Twentyone Floor** | 110.75d | 2026-10-29 | 2027-04-03 |  | start no earlier than 2026-10-29 | 7 day week with NGT | 156595 |
| 3210 | 37400.37600.41000.42700.43600.75500.654700 | Blockwork | 7d | 2026-10-29 | 2026-12-20 | 2884FF+0.25d |  | 7 day week with NGT | 163245 |
| 3211 | 37400.37600.41000.42700.43600.75500.654800 | Internal Plumbing Works | 6d | 2026-12-20 | 2026-12-26 | 3210 |  | 7 day week with NGT | 163255 |
| 3212 | 37400.37600.41000.42700.43600.75500.654900 | Waterproofing Works | 7d | 2026-12-22 | 2026-12-29 | 3211SS+2d |  | 7 day week with NGT | 163265 |
| 3213 | 37400.37600.41000.42700.43600.75500.655000 | PCC | 8d | 2026-12-29 | 2027-01-06 | 3212, 3215SS |  | 7 day week with NGT | 163275 |
| 3214 | 37400.37600.41000.42700.43600.75500.655100 | Electrical Wiring works | 7d | 2026-12-22 | 2026-12-29 | 3212SS |  | 7 day week with NGT | 163285 |
| 3215 | 37400.37600.41000.42700.43600.75500.655200 | Internal Plaster Works | 6d | 2026-12-29 | 2027-01-04 | 3211, 3212, 3214 |  | 7 day week with NGT | 163295 |
| 3216 | 37400.37600.41000.42700.43600.75500.655300 | Toilet Dado Works | 9d | 2027-01-04 | 2027-01-13 | 3211, 3212, 3214, 3215 |  | 7 day week with NGT | 163305 |
| 3217 | 37400.37600.41000.42700.43600.75500.655400 | Toilet Flooring Works | 7d | 2027-01-13 | 2027-01-20 | 3213, 3216 |  | 7 day week with NGT | 163315 |
| 3218 | 37400.37600.41000.42700.43600.75500.655500 | Living Dining Flooring | 15d | 2027-01-20 | 2027-02-04 | 3217 |  | 7 day week with NGT | 163325 |
| 3219 | 37400.37600.41000.42700.43600.75500.655600 | Temporary Door Fixing | 9d | 2026-12-20 | 2026-12-29 | 3210 |  | 7 day week with NGT | 163335 |
| 3220 | 37400.37600.41000.42700.43600.75500.655700 | Aluminium Door Widnow Fixing | 15d | 2027-02-04 | 2027-02-19 | 3218, 3219 |  | 7 day week with NGT | 163345 |
| 3221 | 37400.37600.41000.42700.43600.75500.655800 | Rehung Door Fixing | 8d | 2027-02-19 | 2027-02-27 | 3220 |  | 7 day week with NGT | 163355 |
| 3222 | 37400.37600.41000.42700.43600.75500.655900 | Putty Primer coat | 6d | 2027-02-27 | 2027-03-05 | 3221 |  | 7 day week with NGT | 163365 |
| 3223 | 37400.37600.41000.42700.43600.75500.656000 | Painting First Coat | 12d | 2027-03-05 | 2027-03-17 | 3212, 3214, 3221, 3222 |  | 7 day week with NGT | 163375 |
| 3224 | 37400.37600.41000.42700.43600.75500.656100 | False ceiling works | 10d | 2027-03-24 | 2027-04-03 | 3208, 3223 |  | 7 day week with NGT | 163385 |
| 3225 | 37400.37600.41000.42700.43600.75600 | **Twenty two Floor** | 112d | 2026-12-30 | 2027-04-21 |  | start no earlier than 2026-12-30 | 7 day week with NGT | 156605 |
| 3226 | 37400.37600.41000.42700.43600.75600.656200 | Blockwork | 7d | 2026-12-30 | 2027-01-06 | 2885FF+0.25d |  | 7 day week with NGT | 163395 |
| 3227 | 37400.37600.41000.42700.43600.75600.656300 | Internal Plumbing Works | 6d | 2027-01-06 | 2027-01-12 | 3226 |  | 7 day week with NGT | 163405 |
| 3228 | 37400.37600.41000.42700.43600.75600.656400 | Waterproofing Works | 10d | 2027-01-08 | 2027-01-18 | 3227SS+2d |  | 7 day week with NGT | 163415 |
| 3229 | 37400.37600.41000.42700.43600.75600.656500 | PCC | 8d | 2027-01-20 | 2027-01-28 | 3228, 3231SS |  | 7 day week with NGT | 163425 |
| 3230 | 37400.37600.41000.42700.43600.75600.656600 | Electrical Wiring works | 12d | 2027-01-08 | 2027-01-20 | 3228SS |  | 7 day week with NGT | 163435 |
| 3231 | 37400.37600.41000.42700.43600.75600.656700 | Internal Plaster Works | 9d | 2027-01-20 | 2027-01-29 | 3227, 3228, 3230 |  | 7 day week with NGT | 163445 |
| 3232 | 37400.37600.41000.42700.43600.75600.656800 | Toilet Dado Works | 9d | 2027-01-29 | 2027-02-07 | 3227, 3228, 3230, 3231 |  | 7 day week with NGT | 163455 |
| 3233 | 37400.37600.41000.42700.43600.75600.656900 | Toilet Flooring Works | 7d | 2027-02-07 | 2027-02-14 | 3229, 3232 |  | 7 day week with NGT | 163465 |
| 3234 | 37400.37600.41000.42700.43600.75600.657000 | Living Dining Flooring | 15d | 2027-02-14 | 2027-03-01 | 3233 |  | 7 day week with NGT | 163475 |
| 3235 | 37400.37600.41000.42700.43600.75600.657100 | Temporary Door Fixing | 9d | 2027-01-06 | 2027-01-15 | 3226 |  | 7 day week with NGT | 163485 |
| 3236 | 37400.37600.41000.42700.43600.75600.657200 | Aluminium Door Widnow Fixing | 15d | 2027-03-01 | 2027-03-16 | 3234, 3235 |  | 7 day week with NGT | 163495 |
| 3237 | 37400.37600.41000.42700.43600.75600.657300 | Rehung Door Fixing | 8d | 2027-03-16 | 2027-03-24 | 3236 |  | 7 day week with NGT | 163505 |
| 3238 | 37400.37600.41000.42700.43600.75600.657400 | Putty Primer coat | 6d | 2027-03-24 | 2027-03-30 | 3237 |  | 7 day week with NGT | 163515 |
| 3239 | 37400.37600.41000.42700.43600.75600.657500 | Painting First Coat | 12d | 2027-03-30 | 2027-04-11 | 3228, 3230, 3237, 3238 |  | 7 day week with NGT | 163525 |
| 3240 | 37400.37600.41000.42700.43600.75600.657600 | False ceiling works | 10d | 2027-04-11 | 2027-04-21 | 3224, 3239 |  | 7 day week with NGT | 163535 |

| ID | WBS | Task | Duration | Start | Finish | Predecessors | Constraint | Calendar | Unique_Task_ID |
| --- | --- | --- | --- | --- | --- | --- | --- | --- | --- |
| 3241 | 37400.37600.41000.42700.43600.75700 | **Twenty Three Floor** | 115d | 2027-01-17 | 2027-05-12 |  | start no earlier than 2027-01-17 | 7 day week with NGT | 156615 |
| 3242 | 37400.37600.41000.42700.43600.75700.657700 | Blockwork | 10d | 2027-01-17 | 2027-01-27 | 2886 |  | 7 day week with NGT | 163545 |
| 3243 | 37400.37600.41000.42700.43600.75700.657800 | Internal Plumbing Works | 6d | 2027-01-27 | 2027-02-02 | 3242 |  | 7 day week with NGT | 163555 |
| 3244 | 37400.37600.41000.42700.43600.75700.657900 | Waterproofing Works | 10d | 2027-01-29 | 2027-02-08 | 3243SS+2d |  | 7 day week with NGT | 163565 |
| 3245 | 37400.37600.41000.42700.43600.75700.658000 | PCC | 8d | 2027-02-10 | 2027-02-18 | 3244, 3247SS |  | 7 day week with NGT | 163575 |
| 3246 | 37400.37600.41000.42700.43600.75700.658100 | Electrical Wiring works | 12d | 2027-01-29 | 2027-02-10 | 3244SS |  | 7 day week with NGT | 163585 |
| 3247 | 37400.37600.41000.42700.43600.75700.658200 | Internal Plaster Works | 9d | 2027-02-10 | 2027-02-19 | 3243, 3244, 3246 |  | 7 day week with NGT | 163595 |
| 3248 | 37400.37600.41000.42700.43600.75700.658300 | Toilet Dado Works | 9d | 2027-02-19 | 2027-02-28 | 3243, 3244, 3246, 3247 |  | 7 day week with NGT | 163605 |
| 3249 | 37400.37600.41000.42700.43600.75700.658400 | Toilet Flooring Works | 7d | 2027-02-28 | 2027-03-07 | 3245, 3248 |  | 7 day week with NGT | 163615 |
| 3250 | 37400.37600.41000.42700.43600.75700.658500 | Living Dining Flooring | 15d | 2027-03-07 | 2027-03-22 | 3249 |  | 7 day week with NGT | 163625 |
| 3251 | 37400.37600.41000.42700.43600.75700.658600 | Temporary Door Fixing | 9d | 2027-01-27 | 2027-02-05 | 3242 |  | 7 day week with NGT | 163635 |
| 3252 | 37400.37600.41000.42700.43600.75700.658700 | Aluminium Door Widnow Fixing | 15d | 2027-03-22 | 2027-04-06 | 3250, 3251 |  | 7 day week with NGT | 163645 |
| 3253 | 37400.37600.41000.42700.43600.75700.658800 | Rehung Door Fixing | 8d | 2027-04-06 | 2027-04-14 | 3252 |  | 7 day week with NGT | 163655 |
| 3254 | 37400.37600.41000.42700.43600.75700.658900 | Putty Primer coat | 6d | 2027-04-14 | 2027-04-20 | 3253 |  | 7 day week with NGT | 163665 |
| 3255 | 37400.37600.41000.42700.43600.75700.659000 | Painting First Coat | 12d | 2027-04-20 | 2027-05-02 | 3244, 3246, 3253, 3254 |  | 7 day week with NGT | 163675 |
| 3256 | 37400.37600.41000.42700.43600.75700.659100 | False ceiling works | 10d | 2027-05-02 | 2027-05-12 | 3240, 3255 |  | 7 day week with NGT | 163685 |
| 3257 | 37400.37600.41000.42700.43600.75800 | **Twenty Four Floor** | 115d | 2027-01-28 | 2027-05-22 |  | start no earlier than 2027-01-28 | 7 day week with NGT | 156625 |
| 3258 | 37400.37600.41000.42700.43600.75800.659200 | Blockwork | 10d | 2027-01-28 | 2027-02-06 | 2887 |  | 7 day week with NGT | 163695 |
| 3259 | 37400.37600.41000.42700.43600.75800.659300 | Internal Plumbing Works | 6d | 2027-02-07 | 2027-02-12 | 3258 |  | 7 day week with NGT | 163705 |
| 3260 | 37400.37600.41000.42700.43600.75800.659400 | Waterproofing Works | 10d | 2027-02-09 | 2027-02-18 | 3259SS+2d |  | 7 day week with NGT | 163715 |
| 3261 | 37400.37600.41000.42700.43600.75800.659500 | PCC | 8d | 2027-02-21 | 2027-02-28 | 3260, 3263SS |  | 7 day week with NGT | 163725 |
| 3262 | 37400.37600.41000.42700.43600.75800.659600 | Electrical Wiring works | 12d | 2027-02-09 | 2027-02-20 | 3260SS |  | 7 day week with NGT | 163735 |
| 3263 | 37400.37600.41000.42700.43600.75800.659700 | Internal Plaster Works | 9d | 2027-02-21 | 2027-03-01 | 3259, 3260, 3262 |  | 7 day week with NGT | 163745 |
| 3264 | 37400.37600.41000.42700.43600.75800.659800 | Toilet Dado Works | 9d | 2027-03-02 | 2027-03-10 | 3259, 3260, 3262, 3263 |  | 7 day week with NGT | 163755 |
| 3265 | 37400.37600.41000.42700.43600.75800.659900 | Toilet Flooring Works | 7d | 2027-03-11 | 2027-03-17 | 3261, 3264 |  | 7 day week with NGT | 163765 |
| 3266 | 37400.37600.41000.42700.43600.75800.660000 | Living Dining Flooring | 15d | 2027-03-18 | 2027-04-01 | 3265 |  | 7 day week with NGT | 163775 |
| 3267 | 37400.37600.41000.42700.43600.75800.660100 | Temporary Door Fixing | 9d | 2027-02-07 | 2027-02-15 | 3258 |  | 7 day week with NGT | 163785 |
| 3268 | 37400.37600.41000.42700.43600.75800.660200 | Aluminium Door Widnow Fixing | 15d | 2027-04-02 | 2027-04-16 | 3266, 3267 |  | 7 day week with NGT | 163795 |
| 3269 | 37400.37600.41000.42700.43600.75800.660300 | Rehung Door Fixing | 8d | 2027-04-17 | 2027-04-24 | 3268 |  | 7 day week with NGT | 163805 |
| 3270 | 37400.37600.41000.42700.43600.75800.660400 | Putty Primer coat | 6d | 2027-04-25 | 2027-04-30 | 3269 |  | 7 day week with NGT | 163815 |
| 3271 | 37400.37600.41000.42700.43600.75800.660500 | Painting First Coat | 12d | 2027-05-01 | 2027-05-12 | 3260, 3262, 3269, 3270 |  | 7 day week with NGT | 163825 |
| 3272 | 37400.37600.41000.42700.43600.75800.660600 | False ceiling works | 10d | 2027-05-13 | 2027-05-22 | 3256, 3271 |  | 7 day week with NGT | 163835 |

| ID | WBS | Task | Duration | Start | Finish | Predecessors | Constraint | Calendar | Unique_Task_ID |
| --- | --- | --- | --- | --- | --- | --- | --- | --- | --- |
| 3273 | 37400.37600.41000.42700.43600.75900 | **Twenty Five Floors** | 115d | 2027-02-08 | 2027-06-02 |  | start no earlier than 2027-02-08 | 7 day week with NGT | 156635 |
| 3274 | 37400.37600.41000.42700.43600.75900.660700 | Blockwork | 10d | 2027-02-08 | 2027-02-17 | 2888 |  | 7 day week with NGT | 163845 |
| 3275 | 37400.37600.41000.42700.43600.75900.660800 | Internal Plumbing Works | 6d | 2027-02-18 | 2027-02-23 | 3274 |  | 7 day week with NGT | 163855 |
| 3276 | 37400.37600.41000.42700.43600.75900.660900 | Waterproofing Works | 10d | 2027-02-20 | 2027-03-01 | 3275SS+2d |  | 7 day week with NGT | 163865 |
| 3277 | 37400.37600.41000.42700.43600.75900.661000 | PCC | 8d | 2027-03-04 | 2027-03-11 | 3276, 3279SS |  | 7 day week with NGT | 163875 |
| 3278 | 37400.37600.41000.42700.43600.75900.661100 | Electrical Wiring works | 12d | 2027-02-20 | 2027-03-03 | 3276SS |  | 7 day week with NGT | 163885 |
| 3279 | 37400.37600.41000.42700.43600.75900.661200 | Internal Plaster Works | 9d | 2027-03-04 | 2027-03-12 | 3275, 3276, 3278 |  | 7 day week with NGT | 163895 |
| 3280 | 37400.37600.41000.42700.43600.75900.661300 | Toilet Dado Works | 9d | 2027-03-13 | 2027-03-21 | 3275, 3276, 3278, 3279 |  | 7 day week with NGT | 163905 |
| 3281 | 37400.37600.41000.42700.43600.75900.661400 | Toilet Flooring Works | 7d | 2027-03-22 | 2027-03-28 | 3277, 3280 |  | 7 day week with NGT | 163915 |
| 3282 | 37400.37600.41000.42700.43600.75900.661500 | Living Dining Flooring | 15d | 2027-03-29 | 2027-04-12 | 3281 |  | 7 day week with NGT | 163925 |
| 3283 | 37400.37600.41000.42700.43600.75900.661600 | Temporary Door Fixing | 9d | 2027-02-18 | 2027-02-26 | 3274 |  | 7 day week with NGT | 163935 |
| 3284 | 37400.37600.41000.42700.43600.75900.661700 | Aluminium Door Widnow Fixing | 15d | 2027-04-13 | 2027-04-27 | 3282, 3283 |  | 7 day week with NGT | 163945 |
| 3285 | 37400.37600.41000.42700.43600.75900.661800 | Rehung Door Fixing | 8d | 2027-04-28 | 2027-05-05 | 3284 |  | 7 day week with NGT | 163955 |
| 3286 | 37400.37600.41000.42700.43600.75900.661900 | Putty Primer coat | 6d | 2027-05-06 | 2027-05-11 | 3285 |  | 7 day week with NGT | 163965 |
| 3287 | 37400.37600.41000.42700.43600.75900.662000 | Painting First Coat | 12d | 2027-05-12 | 2027-05-23 | 3276, 3278, 3285, 3286 |  | 7 day week with NGT | 163975 |
| 3288 | 37400.37600.41000.42700.43600.75900.662100 | False ceiling works | 10d | 2027-05-24 | 2027-06-02 | 3272, 3287 |  | 7 day week with NGT | 163985 |
| 3289 | 37400.37600.41000.42700.43600.76000 | **Twenty Six Floor** | 115d | 2027-02-19 | 2027-06-13 |  | start no earlier than 2027-02-19 | 7 day week with NGT | 156645 |
| 3290 | 37400.37600.41000.42700.43600.76000.662200 | Blockwork | 10d | 2027-02-19 | 2027-02-28 | 2889 |  | 7 day week with NGT | 163995 |
| 3291 | 37400.37600.41000.42700.43600.76000.662300 | Internal Plumbing Works | 6d | 2027-03-01 | 2027-03-06 | 3290 |  | 7 day week with NGT | 164005 |
| 3292 | 37400.37600.41000.42700.43600.76000.662400 | Waterproofing Works | 10d | 2027-03-03 | 2027-03-12 | 3291SS+2d |  | 7 day week with NGT | 164015 |
| 3293 | 37400.37600.41000.42700.43600.76000.662500 | PCC | 8d | 2027-03-15 | 2027-03-22 | 3292, 3295SS |  | 7 day week with NGT | 164025 |
| 3294 | 37400.37600.41000.42700.43600.76000.662600 | Electrical Wiring works | 12d | 2027-03-03 | 2027-03-14 | 3292SS |  | 7 day week with NGT | 164035 |
| 3295 | 37400.37600.41000.42700.43600.76000.662700 | Internal Plaster Works | 9d | 2027-03-15 | 2027-03-23 | 3291, 3292, 3294 |  | 7 day week with NGT | 164045 |
| 3296 | 37400.37600.41000.42700.43600.76000.662800 | Toilet Dado Works | 9d | 2027-03-24 | 2027-04-01 | 3291, 3292, 3294, 3295 |  | 7 day week with NGT | 164055 |
| 3297 | 37400.37600.41000.42700.43600.76000.662900 | Toilet Flooring Works | 7d | 2027-04-02 | 2027-04-08 | 3293, 3296 |  | 7 day week with NGT | 164065 |
| 3298 | 37400.37600.41000.42700.43600.76000.663000 | Living Dining Flooring | 15d | 2027-04-09 | 2027-04-23 | 3297 |  | 7 day week with NGT | 164075 |
| 3299 | 37400.37600.41000.42700.43600.76000.663100 | Temporary Door Fixing | 9d | 2027-03-01 | 2027-03-09 | 3290 |  | 7 day week with NGT | 164085 |
| 3300 | 37400.37600.41000.42700.43600.76000.663200 | Aluminium Door Widnow Fixing | 15d | 2027-04-24 | 2027-05-08 | 3298, 3299 |  | 7 day week with NGT | 164095 |
| 3301 | 37400.37600.41000.42700.43600.76000.663300 | Rehung Door Fixing | 8d | 2027-05-09 | 2027-05-16 | 3300 |  | 7 day week with NGT | 164105 |
| 3302 | 37400.37600.41000.42700.43600.76000.663400 | Putty Primer coat | 6d | 2027-05-17 | 2027-05-22 | 3301 |  | 7 day week with NGT | 164115 |
| 3303 | 37400.37600.41000.42700.43600.76000.663500 | Painting First Coat | 12d | 2027-05-23 | 2027-06-03 | 3292, 3294, 3301, 3302 |  | 7 day week with NGT | 164125 |
| 3304 | 37400.37600.41000.42700.43600.76000.663600 | False ceiling works | 10d | 2027-06-04 | 2027-06-13 | 3288, 3303 |  | 7 day week with NGT | 164135 |

| ID | WBS | Task | Duration | Start | Finish | Predecessors | Constraint | Calendar | Unique_Task_ID |
| --- | --- | --- | --- | --- | --- | --- | --- | --- | --- |
| 3305 | 37400.37600.41000.42700.43600.76100 | **Twenty Seven Floors** | 115d | 2027-03-08 | 2027-06-30 |  | start no earlier than 2027-03-08 | 7 day week with NGT | 156655 |
| 3306 | 37400.37600.41000.42700.43600.76100.663700 | Blockwork | 10d | 2027-03-08 | 2027-03-17 | 2890 |  | 7 day week with NGT | 164145 |
| 3307 | 37400.37600.41000.42700.43600.76100.663800 | Internal Plumbing Works | 6d | 2027-03-18 | 2027-03-23 | 3306 |  | 7 day week with NGT | 164155 |
| 3308 | 37400.37600.41000.42700.43600.76100.663900 | Waterproofing Works | 10d | 2027-03-20 | 2027-03-29 | 3307SS+2d |  | 7 day week with NGT | 164165 |
| 3309 | 37400.37600.41000.42700.43600.76100.664000 | PCC | 8d | 2027-04-01 | 2027-04-08 | 3308, 3311SS |  | 7 day week with NGT | 164175 |
| 3310 | 37400.37600.41000.42700.43600.76100.664100 | Electrical Wiring works | 12d | 2027-03-20 | 2027-03-31 | 3308SS |  | 7 day week with NGT | 164185 |
| 3311 | 37400.37600.41000.42700.43600.76100.664200 | Internal Plaster Works | 9d | 2027-04-01 | 2027-04-09 | 3307, 3308, 3310 |  | 7 day week with NGT | 164195 |
| 3312 | 37400.37600.41000.42700.43600.76100.664300 | Toilet Dado Works | 9d | 2027-04-10 | 2027-04-18 | 3307, 3308, 3310, 3311 |  | 7 day week with NGT | 164205 |
| 3313 | 37400.37600.41000.42700.43600.76100.664400 | Toilet Flooring Works | 7d | 2027-04-19 | 2027-04-25 | 3309, 3312 |  | 7 day week with NGT | 164215 |
| 3314 | 37400.37600.41000.42700.43600.76100.664500 | Living Dining Flooring | 15d | 2027-04-26 | 2027-05-10 | 3313 |  | 7 day week with NGT | 164225 |
| 3315 | 37400.37600.41000.42700.43600.76100.664600 | Temporary Door Fixing | 9d | 2027-03-18 | 2027-03-26 | 3306 |  | 7 day week with NGT | 164235 |
| 3316 | 37400.37600.41000.42700.43600.76100.664700 | Aluminium Door Widnow Fixing | 15d | 2027-05-11 | 2027-05-25 | 3314, 3315 |  | 7 day week with NGT | 164245 |
| 3317 | 37400.37600.41000.42700.43600.76100.664800 | Rehung Door Fixing | 8d | 2027-05-26 | 2027-06-02 | 3316 |  | 7 day week with NGT | 164255 |
| 3318 | 37400.37600.41000.42700.43600.76100.664900 | Putty Primer coat | 6d | 2027-06-03 | 2027-06-08 | 3317 |  | 7 day week with NGT | 164265 |
| 3319 | 37400.37600.41000.42700.43600.76100.665000 | Painting First Coat | 12d | 2027-06-09 | 2027-06-20 | 3308, 3310, 3317, 3318 |  | 7 day week with NGT | 164275 |
| 3320 | 37400.37600.41000.42700.43600.76100.665100 | False ceiling works | 10d | 2027-06-21 | 2027-06-30 | 3304, 3319 |  | 7 day week with NGT | 164285 |
| 3321 | 37400.37600.41000.42700.43600.76200 | **Twenty Eight Floor** | 119d | 2027-03-14 | 2027-07-10 |  | start no earlier than 2027-03-14 | 7 day week with NGT | 156665 |
| 3322 | 37400.37600.41000.42700.43600.76200.665200 | Blockwork | 5d | 2027-03-14 | 2027-03-18 | 2891 |  | 7 day week with NGT | 164295 |
| 3323 | 37400.37600.41000.42700.43600.76200.665300 | Internal Plumbing Works | 6d | 2027-03-19 | 2027-03-24 | 3322 |  | 7 day week with NGT | 164305 |
| 3324 | 37400.37600.41000.42700.43600.76200.665400 | Waterproofing Works | 10d | 2027-03-21 | 2027-03-30 | 3323SS+2d |  | 7 day week with NGT | 164315 |
| 3325 | 37400.37600.41000.42700.43600.76200.665500 | PCC | 8d | 2027-04-02 | 2027-04-09 | 3324, 3327SS |  | 7 day week with NGT | 164325 |
| 3326 | 37400.37600.41000.42700.43600.76200.665600 | Electrical Wiring works | 12d | 2027-03-21 | 2027-04-01 | 3324SS |  | 7 day week with NGT | 164335 |
| 3327 | 37400.37600.41000.42700.43600.76200.665700 | Internal Plaster Works | 9d | 2027-04-02 | 2027-04-10 | 3323, 3324, 3326 |  | 7 day week with NGT | 164345 |
| 3328 | 37400.37600.41000.42700.43600.76200.665800 | Toilet Dado Works | 9d | 2027-04-11 | 2027-04-19 | 3323, 3324, 3326, 3327 |  | 7 day week with NGT | 164355 |
| 3329 | 37400.37600.41000.42700.43600.76200.665900 | Toilet Flooring Works | 7d | 2027-04-20 | 2027-04-26 | 3325, 3328 |  | 7 day week with NGT | 164365 |
| 3330 | 37400.37600.41000.42700.43600.76200.666000 | Living Dining Flooring | 15d | 2027-04-27 | 2027-05-11 | 3329 |  | 7 day week with NGT | 164375 |
| 3331 | 37400.37600.41000.42700.43600.76200.666100 | Temporary Door Fixing | 9d | 2027-03-19 | 2027-03-27 | 3322 |  | 7 day week with NGT | 164385 |
| 3332 | 37400.37600.41000.42700.43600.76200.666200 | Aluminium Door Widnow Fixing | 15d | 2027-05-12 | 2027-05-26 | 3330, 3331 |  | 7 day week with NGT | 164395 |
| 3333 | 37400.37600.41000.42700.43600.76200.666300 | Rehung Door Fixing | 8d | 2027-05-27 | 2027-06-03 | 3332 |  | 7 day week with NGT | 164405 |
| 3334 | 37400.37600.41000.42700.43600.76200.666400 | Putty Primer coat | 6d | 2027-06-04 | 2027-06-09 | 3333 |  | 7 day week with NGT | 164415 |
| 3335 | 37400.37600.41000.42700.43600.76200.666500 | Painting First Coat | 12d | 2027-06-10 | 2027-06-21 | 3324, 3326, 3333, 3334 |  | 7 day week with NGT | 164425 |
| 3336 | 37400.37600.41000.42700.43600.76200.666600 | False ceiling works | 10d | 2027-07-01 | 2027-07-10 | 3320, 3335 |  | 7 day week with NGT | 164435 |

| ID | WBS | Task | Duration | Start | Finish | Predecessors | Constraint | Calendar | Unique_Task_ID |
| --- | --- | --- | --- | --- | --- | --- | --- | --- | --- |
| 3337 | 37400.37600.41000.42700.43600.76300 | **Twenty Nine Floors** | 123d | 2027-03-20 | 2027-07-20 |  | start no earlier than 2027-03-20 | 7 day week with NGT | 156675 |
| 3338 | 37400.37600.41000.42700.43600.76300.666700 | Blockwork | 5d | 2027-03-20 | 2027-03-24 | 2892 |  | 7 day week with NGT | 164445 |
| 3339 | 37400.37600.41000.42700.43600.76300.666800 | Internal Plumbing Works | 6d | 2027-03-25 | 2027-03-30 | 3338 |  | 7 day week with NGT | 164455 |
| 3340 | 37400.37600.41000.42700.43600.76300.666900 | Waterproofing Works | 10d | 2027-03-27 | 2027-04-05 | 3339SS+2d |  | 7 day week with NGT | 164465 |
| 3341 | 37400.37600.41000.42700.43600.76300.667000 | PCC | 8d | 2027-04-08 | 2027-04-15 | 3340, 3343SS |  | 7 day week with NGT | 164475 |
| 3342 | 37400.37600.41000.42700.43600.76300.667100 | Electrical Wiring works | 12d | 2027-03-27 | 2027-04-07 | 3340SS |  | 7 day week with NGT | 164485 |
| 3343 | 37400.37600.41000.42700.43600.76300.667200 | Internal Plaster Works | 10d | 2027-04-08 | 2027-04-17 | 3339, 3340, 3342 |  | 7 day week with NGT | 164495 |
| 3344 | 37400.37600.41000.42700.43600.76300.667300 | Toilet Dado Works | 9d | 2027-04-18 | 2027-04-26 | 3339, 3340, 3342, 3343 |  | 7 day week with NGT | 164505 |
| 3345 | 37400.37600.41000.42700.43600.76300.667400 | Toilet Flooring Works | 7d | 2027-04-27 | 2027-05-03 | 3341, 3344 |  | 7 day week with NGT | 164515 |
| 3346 | 37400.37600.41000.42700.43600.76300.667500 | Living Dining Flooring | 15d | 2027-05-04 | 2027-05-18 | 3345 |  | 7 day week with NGT | 164525 |
| 3347 | 37400.37600.41000.42700.43600.76300.667600 | Temporary Door Fixing | 9d | 2027-03-25 | 2027-04-02 | 3338 |  | 7 day week with NGT | 164535 |
| 3348 | 37400.37600.41000.42700.43600.76300.667700 | Aluminium Door Widnow Fixing | 15d | 2027-05-19 | 2027-06-02 | 3346, 3347 |  | 7 day week with NGT | 164545 |
| 3349 | 37400.37600.41000.42700.43600.76300.667800 | Rehung Door Fixing | 8d | 2027-06-03 | 2027-06-10 | 3348 |  | 7 day week with NGT | 164555 |
| 3350 | 37400.37600.41000.42700.43600.76300.667900 | Putty Primer coat | 6d | 2027-06-11 | 2027-06-16 | 3349 |  | 7 day week with NGT | 164565 |
| 3351 | 37400.37600.41000.42700.43600.76300.668000 | Painting First Coat | 12d | 2027-06-17 | 2027-06-28 | 3340, 3342, 3349, 3350 |  | 7 day week with NGT | 164575 |
| 3352 | 37400.37600.41000.42700.43600.76300.668100 | False ceiling works | 10d | 2027-07-11 | 2027-07-20 | 3336, 3351 |  | 7 day week with NGT | 164585 |
| 3353 | 37400.37600.41000.42700.43600.76400 | **Thirty Floors** | 144d | 2027-03-25 | 2027-08-15 |  | start no earlier than 2027-03-25 | 7 day week with NGT | 156685 |
| 3354 | 37400.37600.41000.42700.43600.76400.668200 | Blockwork | 5d | 2027-03-25 | 2027-03-29 | 3338 |  | 7 day week with NGT | 164595 |
| 3355 | 37400.37600.41000.42700.43600.76400.668300 | Internal Plumbing Works | 15d | 2027-03-30 | 2027-04-13 | 3354 |  | 7 day week with NGT | 164605 |
| 3356 | 37400.37600.41000.42700.43600.76400.668400 | Waterproofing Works | 15d | 2027-04-01 | 2027-04-15 | 3355SS+2d |  | 7 day week with NGT | 164615 |
| 3357 | 37400.37600.41000.42700.43600.76400.668500 | PCC | 12d | 2027-04-16 | 2027-04-27 | 3356, 3359SS |  | 7 day week with NGT | 164625 |
| 3358 | 37400.37600.41000.42700.43600.76400.668600 | Electrical Wiring works | 15d | 2027-04-01 | 2027-04-15 | 3356SS |  | 7 day week with NGT | 164635 |
| 3359 | 37400.37600.41000.42700.43600.76400.668700 | Internal Plaster Works | 21d | 2027-04-16 | 2027-05-06 | 3355, 3356, 3358 |  | 7 day week with NGT | 164645 |
| 3360 | 37400.37600.41000.42700.43600.76400.668800 | Toilet Dado Works | 20d | 2027-05-07 | 2027-05-26 | 3355, 3356, 3358, 3359 |  | 7 day week with NGT | 164655 |
| 3361 | 37400.37600.41000.42700.43600.76400.668900 | Toilet Flooring Works | 15d | 2027-05-27 | 2027-06-10 | 3357, 3360 |  | 7 day week with NGT | 164665 |
| 3362 | 37400.37600.41000.42700.43600.76400.669000 | Living Dining Flooring | 15d | 2027-06-11 | 2027-06-25 | 3361 |  | 7 day week with NGT | 164675 |
| 3363 | 37400.37600.41000.42700.43600.76400.669100 | Temporary Door Fixing | 9d | 2027-03-30 | 2027-04-07 | 3354 |  | 7 day week with NGT | 164685 |
| 3364 | 37400.37600.41000.42700.43600.76400.669200 | Aluminium Door Widnow Fixing | 15d | 2027-06-26 | 2027-07-10 | 3362, 3363 |  | 7 day week with NGT | 164695 |
| 3365 | 37400.37600.41000.42700.43600.76400.669300 | Rehung Door Fixing | 8d | 2027-07-11 | 2027-07-18 | 3364 |  | 7 day week with NGT | 164705 |
| 3366 | 37400.37600.41000.42700.43600.76400.669400 | Putty Primer coat | 6d | 2027-07-19 | 2027-07-24 | 3365 |  | 7 day week with NGT | 164715 |
| 3367 | 37400.37600.41000.42700.43600.76400.669500 | Painting First Coat | 12d | 2027-07-25 | 2027-08-05 | 3356, 3358, 3365, 3366 |  | 7 day week with NGT | 164725 |
| 3368 | 37400.37600.41000.42700.43600.76400.669600 | False ceiling works | 10d | 2027-08-06 | 2027-08-15 | 3352, 3367 |  | 7 day week with NGT | 164735 |

| ID | WBS | Task | Duration | Start | Finish | Predecessors | Constraint | Calendar | Unique_Task_ID |
| --- | --- | --- | --- | --- | --- | --- | --- | --- | --- |
| 3369 | 37400.37600.41000.42700.43600.76500 | **Thirty one Floor** | 148.75d | 2027-03-30 | 2027-08-25 |  | start no earlier than 2027-03-30 | 7 day week with NGT | 156695 |
| 3370 | 37400.37600.41000.42700.43600.76500.669700 | Blockwork | 18d | 2027-03-30 | 2027-04-17 | 3354FS+0.25d |  | 7 day week with NGT | 164745 |
| 3371 | 37400.37600.41000.42700.43600.76500.669800 | Internal Plumbing Works | 15d | 2027-04-17 | 2027-05-02 | 3370 |  | 7 day week with NGT | 164755 |
| 3372 | 37400.37600.41000.42700.43600.76500.669900 | Waterproofing Works | 15d | 2027-04-19 | 2027-05-04 | 3371SS+2d |  | 7 day week with NGT | 164765 |
| 3373 | 37400.37600.41000.42700.43600.76500.670000 | PCC | 12d | 2027-05-04 | 2027-05-16 | 3372, 3375SS |  | 7 day week with NGT | 164775 |
| 3374 | 37400.37600.41000.42700.43600.76500.670100 | Electrical Wiring works | 15d | 2027-04-19 | 2027-05-04 | 3372SS |  | 7 day week with NGT | 164785 |
| 3375 | 37400.37600.41000.42700.43600.76500.670200 | Internal Plaster Works | 12d | 2027-05-04 | 2027-05-16 | 3371, 3372, 3374 |  | 7 day week with NGT | 164795 |
| 3376 | 37400.37600.41000.42700.43600.76500.670300 | Toilet Dado Works | 20d | 2027-05-16 | 2027-06-05 | 3371, 3372, 3374, 3375 |  | 7 day week with NGT | 164805 |
| 3377 | 37400.37600.41000.42700.43600.76500.670400 | Toilet Flooring Works | 15d | 2027-06-05 | 2027-06-20 | 3373, 3376 |  | 7 day week with NGT | 164815 |
| 3378 | 37400.37600.41000.42700.43600.76500.670500 | Living Dining Flooring | 19d | 2027-06-20 | 2027-07-09 | 3377 |  | 7 day week with NGT | 164825 |
| 3379 | 37400.37600.41000.42700.43600.76500.670600 | Temporary Door Fixing | 9d | 2027-04-17 | 2027-04-26 | 3370 |  | 7 day week with NGT | 164835 |
| 3380 | 37400.37600.41000.42700.43600.76500.670700 | Aluminium Door Widnow Fixing | 11d | 2027-07-09 | 2027-07-20 | 3378, 3379 |  | 7 day week with NGT | 164845 |
| 3381 | 37400.37600.41000.42700.43600.76500.670800 | Rehung Door Fixing | 8d | 2027-07-20 | 2027-07-28 | 3380 |  | 7 day week with NGT | 164855 |
| 3382 | 37400.37600.41000.42700.43600.76500.670900 | Putty Primer coat | 6d | 2027-07-28 | 2027-08-03 | 3381 |  | 7 day week with NGT | 164865 |
| 3383 | 37400.37600.41000.42700.43600.76500.671000 | Painting First Coat | 12d | 2027-08-03 | 2027-08-15 | 3372, 3374, 3381, 3382 |  | 7 day week with NGT | 164875 |
| 3384 | 37400.37600.41000.42700.43600.76500.671100 | False ceiling works | 10d | 2027-08-16 | 2027-08-25 | 3368, 3383 |  | 7 day week with NGT | 164885 |
| 3385 | 37400.37600.41000.42700.223300 | **Terrace Finishing** | 80d | 2027-03-08 | 2027-05-26 |  | start no earlier than 2027-03-08 | 7 day week with NGT | 157215 |
| 3386 | 37400.37600.41000.42700.223300.355900 | Terrace Waterproofing | 40d | 2027-03-08 | 2027-04-16 | 2860 |  | 7 day week with NGT | 157695 |
| 3387 | 37400.37600.41000.42700.223300.356000 | Terrace Finishing | 40d | 2027-04-17 | 2027-05-26 | 3386 |  | 7 day week with NGT | 157705 |
| 3388 | 37400.37600.41000.42700.122200 | **Common Area Finishing** | 288d | 2027-03-08 | 2028-02-03 |  | start no earlier than 2027-03-08 | 7 day week with NGT | 156735 |
| 3389 | 37400.37600.41000.42700.122200.356100 | Blockwork | 40d | 2027-03-08 | 2027-04-16 | 2860 |  | 7 day week with NGT | 157715 |
| 3390 | 37400.37600.41000.42700.122200.356200 | Internal Plaster | 120d | 2027-03-28 | 2027-07-25 | 3389SS+20d |  | 7 day week with NGT | 157725 |
| 3391 | 37400.37600.41000.42700.122200.356300 | Staircase railing fixing | 150d | 2027-04-17 | 2027-09-13 | 3390SS+20d |  | 7 day week with NGT | 157735 |
| 3392 | 37400.37600.41000.42700.122200.356400 | Main Staircase flooring | 150d | 2027-06-26 | 2028-01-06 | 3391SS+70d |  | 7 day week with NGT | 157745 |
| 3393 | 37400.37600.41000.42700.122200.356500 | Fire Staircase railing | 98d | 2027-09-14 | 2028-02-03 | 3392FS-70d |  | 7 day week with NGT | 157755 |
| 3394 | 37400.37600.41000.42700.122200.356600 | Fire Door Work | 60d | 2027-07-26 | 2027-09-23 | 3392SS+30d |  | 7 day week with NGT | 157765 |
| 3395 | 37400.37600.41000.42700.122200.356700 | Electrical wiring work | 120d | 2027-03-28 | 2027-07-25 | 3389SS+20d |  | 7 day week with NGT | 157775 |
| 3396 | 37400.37600.41000.42700.122200.356800 | Lobby Flooring | 150d | 2027-04-27 | 2027-09-23 | 3395SS+30d |  | 7 day week with NGT | 157785 |
| 3397 | 37400.37600.41000.42700.122200.356900 | Ceiling & wall putty-primer | 110d | 2027-04-27 | 2027-08-14 | 3390SS+30d |  | 7 day week with NGT | 157795 |
| 3398 | 37400.37600.41000.42700.122200.357000 | Ceiling and wall painting | 100d | 2027-05-07 | 2027-08-14 | 3390SS+40d |  | 7 day week with NGT | 157805 |
| 3399 | 37400.37600.41000.42700.122200.357100 | Light fixture supply & installation | 45d | 2027-07-06 | 2027-08-19 | 3398SS+60d |  | 7 day week with NGT | 157815 |

| ID | WBS | Task | Duration | Start | Finish | Predecessors | Constraint | Calendar | Unique_Task_ID |
| --- | --- | --- | --- | --- | --- | --- | --- | --- | --- |
| 3400 | 37400.37600.41000.42700.50700 | **Glass Railing Fixing** | 60d | 2027-08-07 | 2027-10-05 |  | start no earlier than 2027-08-07 | 7 day week with NGT | 156395 |
| 3401 | 37400.37600.41000.42700.50700.357200 | 2nd Floor | 2d | 2027-08-07 | 2027-08-08 | 3464 |  | 7 day week with NGT | 157825 |
| 3402 | 37400.37600.41000.42700.50700.357300 | 3rd Floor | 2d | 2027-08-09 | 2027-08-10 | 3401 |  | 7 day week with NGT | 157835 |
| 3403 | 37400.37600.41000.42700.50700.357400 | 4th Floor | 2d | 2027-08-11 | 2027-08-12 | 3402 |  | 7 day week with NGT | 157845 |
| 3404 | 37400.37600.41000.42700.50700.357500 | 5th Floor | 2d | 2027-08-13 | 2027-08-14 | 3403 |  | 7 day week with NGT | 157855 |
| 3405 | 37400.37600.41000.42700.50700.357600 | 6th Floor | 2d | 2027-08-15 | 2027-08-16 | 3404 |  | 7 day week with NGT | 157865 |
| 3406 | 37400.37600.41000.42700.50700.357700 | 7th Floor | 2d | 2027-08-17 | 2027-08-18 | 3405 |  | 7 day week with NGT | 157875 |
| 3407 | 37400.37600.41000.42700.50700.357800 | 8th Floor | 2d | 2027-08-19 | 2027-08-20 | 3406 |  | 7 day week with NGT | 157885 |
| 3408 | 37400.37600.41000.42700.50700.357900 | 9th Floor | 2d | 2027-08-21 | 2027-08-22 | 3407 |  | 7 day week with NGT | 157895 |
| 3409 | 37400.37600.41000.42700.50700.358000 | 10th Floor | 2d | 2027-08-23 | 2027-08-24 | 3408 |  | 7 day week with NGT | 157905 |
| 3410 | 37400.37600.41000.42700.50700.358100 | 11th Floor | 2d | 2027-08-25 | 2027-08-26 | 3409 |  | 7 day week with NGT | 157915 |
| 3411 | 37400.37600.41000.42700.50700.358200 | 12th Floor | 2d | 2027-08-27 | 2027-08-28 | 3410 |  | 7 day week with NGT | 157925 |
| 3412 | 37400.37600.41000.42700.50700.358300 | 13th Floor | 2d | 2027-08-29 | 2027-08-30 | 3411 |  | 7 day week with NGT | 157935 |
| 3413 | 37400.37600.41000.42700.50700.358400 | 14th Floor | 2d | 2027-08-31 | 2027-09-01 | 3412 |  | 7 day week with NGT | 157945 |
| 3414 | 37400.37600.41000.42700.50700.358500 | 15th Floor | 2d | 2027-09-02 | 2027-09-03 | 3413 |  | 7 day week with NGT | 157955 |
| 3415 | 37400.37600.41000.42700.50700.358600 | 16th Floor | 2d | 2027-09-04 | 2027-09-05 | 3414 |  | 7 day week with NGT | 157965 |
| 3416 | 37400.37600.41000.42700.50700.358700 | 17th Floor | 2d | 2027-09-06 | 2027-09-07 | 3415 |  | 7 day week with NGT | 157975 |
| 3417 | 37400.37600.41000.42700.50700.358800 | 18th Floor | 2d | 2027-09-08 | 2027-09-09 | 3416 |  | 7 day week with NGT | 157985 |
| 3418 | 37400.37600.41000.42700.50700.358900 | 19th Floor | 2d | 2027-09-10 | 2027-09-11 | 3417 |  | 7 day week with NGT | 157995 |
| 3419 | 37400.37600.41000.42700.50700.359000 | 20th Floor | 2d | 2027-09-12 | 2027-09-13 | 3418 |  | 7 day week with NGT | 158005 |
| 3420 | 37400.37600.41000.42700.50700.359100 | 21st Floor | 2d | 2027-09-14 | 2027-09-15 | 3419 |  | 7 day week with NGT | 158015 |
| 3421 | 37400.37600.41000.42700.50700.359200 | 22nd Floor | 2d | 2027-09-16 | 2027-09-17 | 3420 |  | 7 day week with NGT | 158025 |
| 3422 | 37400.37600.41000.42700.50700.359300 | 23rd Floor | 2d | 2027-09-18 | 2027-09-19 | 3421 |  | 7 day week with NGT | 158035 |
| 3423 | 37400.37600.41000.42700.50700.359400 | 24th Floor | 2d | 2027-09-20 | 2027-09-21 | 3422 |  | 7 day week with NGT | 158045 |
| 3424 | 37400.37600.41000.42700.50700.359500 | 25th Floor | 2d | 2027-09-22 | 2027-09-23 | 3423 |  | 7 day week with NGT | 158055 |
| 3425 | 37400.37600.41000.42700.50700.359600 | 26th Floor | 2d | 2027-09-24 | 2027-09-25 | 3424 |  | 7 day week with NGT | 158065 |
| 3426 | 37400.37600.41000.42700.50700.359700 | 27th Floor | 2d | 2027-09-26 | 2027-09-27 | 3425 |  | 7 day week with NGT | 158075 |
| 3427 | 37400.37600.41000.42700.50700.359800 | 28th Floor | 2d | 2027-09-28 | 2027-09-29 | 3426 |  | 7 day week with NGT | 158085 |
| 3428 | 37400.37600.41000.42700.50700.359900 | 29th Floor | 2d | 2027-09-30 | 2027-10-01 | 3427 |  | 7 day week with NGT | 158095 |
| 3429 | 37400.37600.41000.42700.50700.360000 | 30th Floor | 2d | 2027-10-02 | 2027-10-03 | 3428 |  | 7 day week with NGT | 158105 |
| 3430 | 37400.37600.41000.42700.50700.360100 | 31st Floor | 2d | 2027-10-04 | 2027-10-05 | 3429 |  | 7 day week with NGT | 158115 |

| ID | WBS | Task | Duration | Start | Finish | Predecessors | Constraint | Calendar | Unique_Task_ID |
| --- | --- | --- | --- | --- | --- | --- | --- | --- | --- |
| 3431 | 37400.37600.41000.115600 | **MEP** | 420d | 2027-03-08 | 2028-06-14 |  | start no earlier than 2027-03-08 | 7 day week with NGT | 156705 |
| 3432 | 37400.37600.41000.115600.118600 | **Electrical Works** | 265d | 2027-03-08 | 2028-01-11 |  | start no earlier than 2027-03-08 | 7 day week with NGT | 156725 |
| 3433 | 37400.37600.41000.115600.118600.360200 | Cable Tray | 90d | 2027-03-08 | 2027-06-05 | 2860 |  | 7 day week with NGT | 158125 |
| 3434 | 37400.37600.41000.115600.118600.360300 | Cable, main & sub main | 80d | 2027-04-22 | 2027-07-10 | 3433SS+45d |  | 7 day week with NGT | 158135 |
| 3435 | 37400.37600.41000.115600.118600.360400 | LT panel & DB | 120d | 2027-06-06 | 2027-10-03 | 3433 |  | 7 day week with NGT | 158145 |
| 3436 | 37400.37600.41000.115600.118600.360500 | Rising main | 90d | 2027-05-07 | 2027-08-04 | 3433SS+60d |  | 7 day week with NGT | 158155 |
| 3437 | 37400.37600.41000.115600.118600.360600 | EARTHING Works | 60d | 2027-03-23 | 2027-05-21 | 3433SS+15d |  | 7 day week with NGT | 158165 |
| 3438 | 37400.37600.41000.115600.118600.360700 | Advance lightening protection | 60d | 2027-05-27 | 2027-07-25 | 3387 |  | 7 day week with NGT | 158175 |
| 3439 | 37400.37600.41000.115600.118600.360800 | Inverter | 35d | 2027-09-09 | 2027-10-13 | 3436, 3437, 3440 |  | 7 day week with NGT | 158185 |
| 3440 | 37400.37600.41000.115600.118600.360900 | Energy meter | 60d | 2027-07-11 | 2027-09-08 | 3434 |  | 7 day week with NGT | 158195 |
| 3441 | 37400.37600.41000.115600.118600.361000 | Exhast fan | 60d | 2027-05-26 | 2027-07-25 | 3380FF+5d |  | 7 day week with NGT | 158205 |
| 3442 | 37400.37600.41000.115600.118600.361100 | FTTH | 60d | 2027-05-12 | 2027-07-10 | 3437FS-10d |  | 7 day week with NGT | 158215 |
| 3443 | 37400.37600.41000.115600.118600.361200 | Security System - FA & PA | 55d | 2027-10-04 | 2028-01-11 | 3435, 3442 |  | 7 day week with NGT | 158225 |
| 3444 | 37400.37600.41000.115600.118600.361300 | Solar water heater | 60d | 2027-05-27 | 2027-07-25 | 3387 |  | 7 day week with NGT | 158235 |
| 3445 | 37400.37600.41000.115600.163600 | **Plumbing Works** | 210d | 2027-04-17 | 2027-12-27 |  | start no earlier than 2027-04-17 | 7 day week with NGT | 156835 |
| 3446 | 37400.37600.41000.115600.163600.361400 | Terrace looping | 45d | 2027-04-17 | 2027-05-31 | 3386 |  | 7 day week with NGT | 158245 |
| 3447 | 37400.37600.41000.115600.163600.361500 | Shaft Plumbing | 120d | 2027-06-01 | 2027-09-28 | 3446 |  | 7 day week with NGT | 158255 |
| 3448 | 37400.37600.41000.115600.163600.361600 | CP sanitary fixture supply | 75d | 2027-05-16 | 2027-07-30 | 3375 |  | 7 day week with NGT | 158265 |
| 3449 | 37400.37600.41000.115600.163600.361700 | Cold & flushing water supply | 90d | 2027-07-26 | 2027-10-23 | 3390 |  | 7 day week with NGT | 158275 |
| 3450 | 37400.37600.41000.115600.163600.361800 | Misc work | 30d | 2027-10-14 | 2027-12-27 | 3449FS-10d |  | 7 day week with NGT | 158285 |
| 3451 | 37400.37600.41000.115600.212900 | **Fire Fighting Works** | 218d | 2027-05-17 | 2028-02-03 |  | start no earlier than 2027-05-17 | 7 day week with NGT | 157145 |
| 3452 | 37400.37600.41000.115600.212900.361900 | Fire hydrant work | 90d | 2027-05-27 | 2027-08-24 | 3390SS+60d |  | 7 day week with NGT | 158295 |
| 3453 | 37400.37600.41000.115600.212900.362000 | Sprinkler & piping work | 88d | 2027-09-24 | 2028-02-03 | 3452FS+30d |  | 7 day week with NGT | 158305 |
| 3454 | 37400.37600.41000.115600.212900.362100 | Shaft Downtake works | 90d | 2027-05-17 | 2027-08-14 | 3386FS+30d |  | 7 day week with NGT | 158315 |
| 3455 | 37400.37600.41000.115600.212900.362200 | Connection to pump room | 30d | 2027-08-15 | 2027-09-13 | 3454 |  | 7 day week with NGT | 158325 |

| ID | WBS | Task | Duration | Start | Finish | Predecessors | Complete | Constraint | Calendar | Unique_Task_ID |
| --- | --- | --- | --- | --- | --- | --- | --- | --- | --- | --- |
| 3456 | 37400.37600.41000.115600.220100 | **Lift Works** | 170d | 2027-03-08 | 2027-08-24 |  |  | start no earlier than 2027-03-08 | 7 day week with NGT | 157205 |
| 3457 | 37400.37600.41000.115600.220100.362300 | Lift Shaft Handover | 40d | 2027-03-08 | 2027-04-16 | 2860 |  |  | 7 day week with NGT | 158335 |
| 3458 | 37400.37600.41000.115600.220100.362400 | Lift installation work | 45d | 2027-04-17 | 2027-05-31 | 3457 |  |  | 7 day week with NGT | 158345 |
| 3459 | 37400.37600.41000.115600.220100.362500 | Lift testing and commissioning | 85d | 2027-06-01 | 2027-08-24 | 3458 |  |  | 7 day week with NGT | 158355 |
| 3460 | 37400.37600.41000.115600.226700 | **AC Works** | 100d | 2028-03-07 | 2028-06-14 |  |  | start no earlier than 2028-03-07 | 7 day week with NGT | 157225 |
| 3461 | 37400.37600.41000.115600.226700.362600 | Split AC | 100d | 2028-03-07 | 2028-06-14 | 3477FS-30d |  |  | 7 day week with NGT | 158365 |
| 3462 | 37400.37600.41000.165900 | **Tower Completion** | 270d | 2027-02-08 | 2027-12-19 |  |  | start no earlier than 2027-02-08 | 7 day week with NGT | 157195 |
| 3463 | 37400.37600.41000.165900.291000 | SURFACE PREPARATION | 80d | 2027-02-08 | 2027-04-28 | 2888 |  |  | 7 day week with NGT | 157245 |
| 3464 | 37400.37600.41000.165900.291100 | External Painting | 100d | 2027-04-29 | 2027-08-06 | 3463 |  |  | 7 day week with NGT | 157255 |
| 3465 | 37400.37600.41000.165900.291200 | Final coat of painting | 30d | 2027-08-07 | 2027-09-05 | 3464 |  |  | 7 day week with NGT | 157265 |
| 3466 | 37400.37600.41000.165900.291300 | Misc. work | 60d | 2027-09-06 | 2027-12-19 | 3465 |  |  | 7 day week with NGT | 157275 |
| 3467 | 37400.37600.41000.227400 | **Basement Lobby** | 60d | 2027-09-24 | 2028-01-06 |  |  | start no earlier than 2027-09-24 | 7 day week with NGT | 157235 |
| 3468 | 37400.37600.41000.227400.291400 | Basement Lobby | 60d | 2027-09-24 | 2028-01-06 | 3396 |  |  | 7 day week with NGT | 157285 |
| 3469 | 37400.37600.41000.127100 | **Post OC Activities** | 484d | 2027-07-26 | 2029-01-04 |  |  | start no earlier than 2027-07-26 | 7 day week with NGT | 156755 |
| 3470 | 37400.37600.41000.127100.291500 | Wardrobe installation | 180d | 2028-03-07 | 2028-09-02 | 3477FS-30d |  |  | 7 day week with NGT | 157295 |
| 3471 | 37400.37600.41000.127100.291600 | CP & SANITARYWARE | 120d | 2027-07-30 | 2028-01-11 | 3448 |  |  | 7 day week with NGT | 157305 |
| 3472 | 37400.37600.41000.127100.291700 | Wooden Flooring | 180d | 2028-03-07 | 2028-09-02 | 3477FS-30d |  |  | 7 day week with NGT | 157315 |
| 3473 | 37400.37600.41000.127100.291800 | Electrical Fixtures And Fittings | 120d | 2027-07-26 | 2028-01-06 | 3395 |  |  | 7 day week with NGT | 157325 |
| 3474 | 37400.37600.41000.127100.291900 | Modular Kitchen | 180d | 2028-03-07 | 2028-09-02 | 3470SS |  |  | 7 day week with NGT | 157335 |
| 3475 | 37400.37600.41000.127100.292000 | Final Coat Paint | 90d | 2027-08-20 | 2028-01-01 | 3399 |  |  | 7 day week with NGT | 157345 |
| 3476 | 37400.37600.41000.127100.292100 | OC Application/Readiness | 1d | 2028-02-04 | 2028-02-04 | 3466FS-2d, 2860, 3391, 3459, 3441, 3443, 3444, 3439, 3438, 3394, 3447, 3450, 3453, 3455, 3384, 2904, 3393, 3397, 3430 |  |  | 7 day week with NGT | 157355 |
| 3477 | 37400.37600.41000.127100.292200 | OC Receipt | 1d | 2028-04-05 | 2028-04-05 | 3465, 3468, 3476FS+60d |  |  | 7 day week with NGT | 157365 |
| 3478 | 37400.37600.41000.127100.292300 | Offer To Possession | 30d | 2028-12-06 | 2029-01-04 | 3470, 3471, 3472, 3473, 3474, 3475, 3477FF+274d, 3461 |  |  | 7 day week with NGT | 157375 |
| 3479 | 37400.37600.39800 | **Tower 2** | 1400d | 2024-07-13 | 2028-11-08 |  | 6% | start no earlier than 2024-07-13 | 7 day week with NGT | 7997702 |
| 3480 | 37400.37600.39800.115700 | **Substructure Works** | 529d | 2024-07-13 | 2026-03-23 |  | 67% | start no earlier than 2024-07-13 | 7 day week with NGT | 7998832 |
| 3481 | 37400.37600.39800.115700.118700 | **RCC Works** | 193d | 2024-07-13 | 2025-03-07 |  | 100% | start no earlier than 2024-07-13 | 7 day week with NGT | 7998942 |
| 3482 | 37400.37600.39800.115700.118700.132900 | **Raft** | 73d | 2024-07-13 | 2024-09-23 |  | 100% | start no earlier than 2024-07-13 | 7 day week with NGT | 7999092 |
| 3483 | 37400.37600.39800.115700.118700.132900.244100 | Surface Dressing | 2d | 2024-08-14 | 2024-08-15 | 4339SS+15d | 100% | start no earlier than 2024-08-14 | 7 day week with NGT | 8016322 |
| 3484 | 37400.37600.39800.115700.118700.132900.244000 | Anti Termite Treatment | 5d | 2024-08-11 | 2024-08-15 | 3483 | 100% | start no earlier than 2024-08-11 | 7 day week with NGT | 8016332 |
| 3485 | 37400.37600.39800.115700.118700.132900.243900 | PCC | 3d | 2024-08-15 | 2024-08-17 | 3484 | 100% | start no earlier than 2024-08-15 | 7 day week with NGT | 8016342 |
| 3486 | 37400.37600.39800.115700.118700.132900.243800 | Reinforcement Laying | 52d | 2024-07-13 | 2024-09-10 | 3485 | 100% | start no earlier than 2024-07-13 | 7 day week with NGT | 8016352 |
| 3487 | 37400.37600.39800.115700.118700.132900.243700 | Outer Shuttering of Raft Area | 3d | 2024-09-09 | 2024-09-11 | 3486FF | 100% | start no earlier than 2024-09-09 | 7 day week with NGT | 8016362 |
| 3488 | 37400.37600.39800.115700.118700.132900.243600 | Raft Concreting | 2d | 2024-09-16 | 2024-09-23 | 3487 | 100% | start no earlier than 2024-09-16 | 7 day week with NGT | 8016372 |

| ID | WBS | Task | Duration | Start | Finish | Predecessors | Complete | Constraint | Calendar | Unique_Task_ID |
| --- | --- | --- | --- | --- | --- | --- | --- | --- | --- | --- |
| 3489 | 37400.37600.39800.115700.118700.133000 | **Dummy Basement** | 18d | 2024-10-14 | 2024-11-15 |  | 100% | start no earlier than 2024-10-14 | 7 day week with NGT | 7999102 |
| 3490 | 37400.37600.39800.115700.118700.133000.243500 | Column and Shear Wall Reinforcement | 6d | 2024-10-26 | 2024-11-07 | 3488 | 100% | start no earlier than 2024-10-26 | 7 day week with NGT | 8016382 |
| 3491 | 37400.37600.39800.115700.118700.133000.243400 | Column and Shear Wall Formwork | 6d | 2024-10-26 | 2024-11-07 | 3490FF+1d | 100% | start no earlier than 2024-10-26 | 7 day week with NGT | 8016392 |
| 3492 | 37400.37600.39800.115700.118700.133000.243300 | Column and Shear Wall Casting | 6d | 2024-10-26 | 2024-11-10 | 3491FF+1d | 100% | start no earlier than 2024-10-26 | 7 day week with NGT | 8016402 |
| 3493 | 37400.37600.39800.115700.118700.133000.243200 | Slab Formwork | 18d | 2024-10-14 | 2024-11-13 | 3492SS+5d | 100% | start no earlier than 2024-10-14 | 7 day week with NGT | 8016412 |
| 3494 | 37400.37600.39800.115700.118700.133000.243100 | Slab Reinforcement | 16d | 2024-10-16 | 2024-11-15 | 3493FS-12d | 100% | start no earlier than 2024-10-16 | 7 day week with NGT | 8016422 |
| 3495 | 37400.37600.39800.115700.118700.133000.243000 | Slab Casting | 17d | 2024-10-15 | 2024-11-15 | 3494FF+2d | 100% | start no earlier than 2024-10-15 | 7 day week with NGT | 8016432 |
| 3496 | 37400.37600.39800.115700.118700.133100 | **B2 Roof** | 68d | 2024-10-21 | 2025-02-10 |  | 100% | start no earlier than 2024-10-21 | 7 day week with NGT | 7999112 |
| 3497 | 37400.37600.39800.115700.118700.133100.242900 | Column and Shear Wall Reinforcement | 26d | 2024-10-21 | 2024-12-30 | 3495 | 100% | start no earlier than 2024-10-21 | 7 day week with NGT | 8016442 |
| 3498 | 37400.37600.39800.115700.118700.133100.242800 | Column and Shear Wall Formwork | 7d | 2024-10-31 | 2025-01-01 | 3497FF+1d | 100% | start no earlier than 2024-10-31 | 7 day week with NGT | 8016452 |
| 3499 | 37400.37600.39800.115700.118700.133100.242700 | Column and Shear Wall Casting | 6d | 2024-10-31 | 2025-01-01 | 3498FF+1d | 100% | start no earlier than 2024-10-31 | 7 day week with NGT | 8016462 |
| 3500 | 37400.37600.39800.115700.118700.133100.242600 | Slab Formwork | 40d | 2024-12-31 | 2025-02-08 | 3499SS+16d | 100% | start no earlier than 2024-12-31 | 7 day week with NGT | 8016472 |
| 3501 | 37400.37600.39800.115700.118700.133100.242500 | Slab Reinforcement | 35d | 2025-01-05 | 2025-02-08 | 3500FS-35d | 100% | start no earlier than 2025-01-05 | 7 day week with NGT | 8016482 |
| 3502 | 37400.37600.39800.115700.118700.133100.242400 | Slab Casting | 37d | 2025-01-05 | 2025-02-10 | 3501FF+2d | 100% | start no earlier than 2025-01-05 | 7 day week with NGT | 8016492 |
| 3503 | 37400.37600.39800.115700.118700.133200 | **B1 Roof** | 43d | 2025-01-24 | 2025-03-07 |  | 100% | start no earlier than 2025-01-24 | 7 day week with NGT | 7999122 |
| 3504 | 37400.37600.39800.115700.118700.133200.242300 | Column and Shear Wall Reinforcement | 30d | 2025-01-24 | 2025-02-22 | 3502 | 100% | start no earlier than 2025-01-24 | 7 day week with NGT | 8016502 |
| 3505 | 37400.37600.39800.115700.118700.133200.242200 | Column and Shear Wall Formwork | 30d | 2025-01-28 | 2025-02-26 | 3504FF+1d | 100% | start no earlier than 2025-01-28 | 7 day week with NGT | 8016512 |
| 3506 | 37400.37600.39800.115700.118700.133200.242100 | Column and Shear Wall Casting | 4.19d | 2025-01-28 | 2025-03-07 | 3505FF+1d | 100% | start no earlier than 2025-01-28 | 7 day week with NGT | 8016522 |
| 3507 | 37400.37600.39800.115700.118700.133200.242000 | Slab Formwork | 13d | 2025-01-27 | 2025-03-07 | 3506SS+2d | 100% | start no earlier than 2025-01-27 | 7 day week with NGT | 8016532 |
| 3508 | 37400.37600.39800.115700.118700.133200.241900 | Slab Reinforcement | 13d | 2025-02-17 | 2025-03-07 | 3507FS-38.27d | 100% | start no earlier than 2025-02-17 | 7 day week with NGT | 8016542 |
| 3509 | 37400.37600.39800.115700.118700.133200.241800 | Slab Casting | 13d | 2025-02-23 | 2025-03-07 | 3508FF+3d | 100% | start no earlier than 2025-02-23 | 7 day week with NGT | 8016552 |
| 3510 | 37400.37600.39800.115700.130700 | **Substructure Finishing Works** | 98d | 2025-12-16 | 2026-03-23 |  |  | start no earlier than 2025-12-16 | 7 day week with NGT | 7999002 |
| 3511 | 37400.37600.39800.115700.130700.214000 | **Basement - 2** | 73d | 2025-12-16 | 2026-02-26 |  |  | start no earlier than 2025-12-16 | 7 day week with NGT | 8000212 |
| 3512 | 37400.37600.39800.115700.130700.214000.671200 | Masonary Works | 30d | 2025-12-16 | 2026-01-14 | 3502FS+30d |  |  | 7 day week with NGT | 8016562 |
| 3513 | 37400.37600.39800.115700.130700.214000.671300 | Plaster Works | 20d | 2025-12-31 | 2026-01-19 | 3512SS+15d |  |  | 7 day week with NGT | 8016572 |
| 3514 | 37400.37600.39800.115700.130700.214000.671400 | White Wash | 18d | 2026-01-15 | 2026-02-01 | 3513SS+15d |  |  | 7 day week with NGT | 8016582 |
| 3515 | 37400.37600.39800.115700.130700.214000.671500 | VDF | 25d | 2026-02-02 | 2026-02-26 | 3514 |  |  | 7 day week with NGT | 135795 |

| ID | WBS | Task | Duration | Start | Finish | Predecessors | Complete | Constraint | Calendar | Unique_Task_ID |
| --- | --- | --- | --- | --- | --- | --- | --- | --- | --- | --- |
| 3516 | 37400.37600.39800.115700.130700.213900 | **Basement - 1** | 98d | 2025-12-16 | 2026-03-23 |  |  | start no earlier than 2025-12-16 | 7 day week with NGT | 8000202 |
| 3517 | 37400.37600.39800.115700.130700.213900.671600 | Masonary Works | 30d | 2025-12-16 | 2026-01-14 | 3509FS+30d |  |  | 7 day week with NGT | 8016592 |
| 3518 | 37400.37600.39800.115700.130700.213900.671700 | Plaster Works | 20d | 2025-12-31 | 2026-01-19 | 3517SS+15d |  |  | 7 day week with NGT | 8016602 |
| 3519 | 37400.37600.39800.115700.130700.213900.671800 | White Wash | 18d | 2026-01-15 | 2026-02-01 | 3518SS+15d |  |  | 7 day week with NGT | 8016612 |
| 3520 | 37400.37600.39800.115700.130700.213900.671900 | VDF | 25d | 2026-02-27 | 2026-03-23 | 3515, 3519 |  |  | 7 day week with NGT | 135805 |
| 3521 | 37400.37600.39800.45300 | **Superstructure Works** | 582d | 2025-03-10 | 2027-01-10 |  | 26% | start no earlier than 2025-03-10 | 7 day week with NGT | 7997802 |
| 3522 | 37400.37600.39800.45300.47100 | **RCC Works** | 582d | 2025-03-10 | 2027-01-10 |  | 26% | start no earlier than 2025-03-10 | 7 day week with NGT | 7997822 |
| 3523 | 37400.37600.39800.45300.47100.133300 | **Podium Roof** | 127d | 2025-03-10 | 2025-07-14 |  | 100% | start no earlier than 2025-03-10 | 7 day week with NGT | 7999132 |
| 3524 | 37400.37600.39800.45300.47100.133300.241700 | Column and Shear Wall Reinforcement | 17d | 2025-03-10 | 2025-05-03 | 3509 | 100% | start no earlier than 2025-03-10 | 7 day week with NGT | 8016622 |
| 3525 | 37400.37600.39800.45300.47100.133300.241600 | Column and Shear Wall Formwork | 22d | 2025-03-17 | 2025-05-23 | 3524FF+1d | 100% | start no earlier than 2025-03-17 | 7 day week with NGT | 8016632 |
| 3526 | 37400.37600.39800.45300.47100.133300.241500 | Column and Shear Wall Casting | 23d | 2025-03-19 | 2025-05-25 | 3525FF+1d | 100% | start no earlier than 2025-03-19 | 7 day week with NGT | 8016642 |
| 3527 | 37400.37600.39800.45300.47100.133300.241400 | Slab Formwork | 13d | 2025-05-18 | 2025-07-03 | 3526SS+32d | 100% | start no earlier than 2025-05-18 | 7 day week with NGT | 8016652 |
| 3528 | 37400.37600.39800.45300.47100.133300.241300 | Slab Reinforcement | 13d | 2025-05-18 | 2025-07-08 | 3527FS-46d | 100% | start no earlier than 2025-05-18 | 7 day week with NGT | 8016662 |
| 3529 | 37400.37600.39800.45300.47100.133300.241200 | Slab Casting | 10d | 2025-05-21 | 2025-07-14 | 3528FF+3d | 100% | start no earlier than 2025-05-21 | 7 day week with NGT | 8016672 |
| 3530 | 37400.37600.39800.45300.47100.133400 | **First Floor Roof** | 71d | 2025-07-06 | 2025-09-14 |  | 100% | start no earlier than 2025-07-06 | 7 day week with NGT | 7999142 |
| 3531 | 37400.37600.39800.45300.47100.133400.241100 | Column and Shear Wall Reinforcement | 6d | 2025-07-06 | 2025-08-31 | 3529FS-9d | 100% | start no earlier than 2025-07-06 | 7 day week with NGT | 8016682 |
| 3532 | 37400.37600.39800.45300.47100.133400.241000 | Column and Shear Wall Formwork | 10d | 2025-07-06 | 2025-09-03 | 3531FS-56d | 100% | start no earlier than 2025-07-06 | 7 day week with NGT | 8016692 |
| 3533 | 37400.37600.39800.45300.47100.133400.240900 | Column and Shear Wall Casting | 12d | 2025-07-06 | 2025-09-05 | 3532FF+1d | 100% | start no earlier than 2025-07-06 | 7 day week with NGT | 8016702 |
| 3534 | 37400.37600.39800.45300.47100.133400.240800 | Slab Formwork | 15d | 2025-07-07 | 2025-09-09 | 3533SS+1d | 100% | start no earlier than 2025-07-07 | 7 day week with NGT | 8016712 |
| 3535 | 37400.37600.39800.45300.47100.133400.240700 | Slab Reinforcement | 12d | 2025-07-16 | 2025-09-08 | 3534FS-56d | 100% | start no earlier than 2025-07-16 | 7 day week with NGT | 8016722 |
| 3536 | 37400.37600.39800.45300.47100.133400.240600 | Slab Casting | 14d | 2025-07-31 | 2025-09-14 | 3535FF+2d | 100% | start no earlier than 2025-07-31 | 7 day week with NGT | 8016732 |
| 3537 | 37400.37600.39800.45300.47100.139000 | **Second Floor Roof** | 60d | 2025-08-18 | 2025-10-16 |  | 100% | start no earlier than 2025-08-18 | 7 day week with NGT | 7999512 |
| 3538 | 37400.37600.39800.45300.47100.139000.240500 | Column and Shear Wall Reinforcement | 5d | 2025-08-18 | 2025-09-15 | 3536FS-27d | 100% | start no earlier than 2025-08-18 | 7 day week with NGT | 8016742 |
| 3539 | 37400.37600.39800.45300.47100.139000.240400 | Column and Shear Wall Formwork | 6d | 2025-08-19 | 2025-09-29 | 3538FF+1d | 100% | start no earlier than 2025-08-19 | 7 day week with NGT | 8016752 |
| 3540 | 37400.37600.39800.45300.47100.139000.240300 | Slab Formwork | 14d | 2025-08-22 | 2025-10-13 | 3539FS-38d | 100% | start no earlier than 2025-08-22 | 7 day week with NGT | 8016762 |
| 3541 | 37400.37600.39800.45300.47100.139000.240200 | Slab Reinforcement | 17d | 2025-09-26 | 2025-10-16 | 3540FS-51d | 100% | start no earlier than 2025-09-26 | 7 day week with NGT | 8016772 |
| 3542 | 37400.37600.39800.45300.47100.139000.240100 | Monolithic Casting | 4d | 2025-10-13 | 2025-10-16 | 3541FF+1d | 100% | start no earlier than 2025-10-13 | 7 day week with NGT | 8016782 |

| ID | WBS | Task | Duration | Start | Finish | Predecessors | Complete | Constraint | Calendar | Unique_Task_ID |
| --- | --- | --- | --- | --- | --- | --- | --- | --- | --- | --- |
| 3543 | 37400.37600.39800.45300.47100.139100 | **Third Floor Roof** | 17d | 2025-10-20 | 2025-12-20 |  | 72% | start no earlier than 2025-10-20 | 7 day week with NGT | 7999502 |
| 3544 | 37400.37600.39800.45300.47100.139100.240000 | Column and Shear Wall Reinforcement | 16.12d | 2025-10-20 | 2025-11-07 | 3542 | 100% | start no earlier than 2025-10-20 | GC1 | 8016792 |
| 3545 | 37400.37600.39800.45300.47100.139100.239900 | Column and Shear Wall Formwork | 7d | 2025-10-21 | 2025-12-18 | 3544FF | 57% |  | 7 day week with NGT | 8016802 |
| 3546 | 37400.37600.39800.45300.47100.139100.239800 | Slab Formwork | 9d | 2025-10-23 | 2025-12-17 | 3545FS-9d | 77% | start no earlier than 2025-10-23 | 7 day week with NGT | 8016812 |
| 3547 | 37400.37600.39800.45300.47100.139100.239700 | Slab Reinforcement | 10d | 2025-10-26 | 2025-12-19 | 3546FF+2d | 60% |  | 7 day week with NGT | 8016822 |
| 3548 | 37400.37600.39800.45300.47100.139100.239600 | Monolithic Casting | 8d | 2025-10-29 | 2025-12-20 | 3547FF+1d | 37% |  | 7 day week with NGT | 8016832 |
| 3549 | 37400.37600.39800.45300.47100.157800 | **4th Floor Roof** | 13d | 2025-12-21 | 2026-01-02 |  |  | start no earlier than 2025-12-21 | 7 day week with NGT | 7999492 |
| 3550 | 37400.37600.39800.45300.47100.157800.672000 | Column and Shear Wall Reinforcement | 6d | 2025-12-21 | 2025-12-26 | 3548 |  |  | 7 day week with NGT | 8016842 |
| 3551 | 37400.37600.39800.45300.47100.157800.672100 | Column and Shear Wall Formwork | 5d | 2025-12-23 | 2025-12-27 | 3550FF+1d |  |  | 7 day week with NGT | 8016852 |
| 3552 | 37400.37600.39800.45300.47100.157800.672200 | Slab Formwork | 5d | 2025-12-26 | 2025-12-30 | 3551FS-2d |  |  | 7 day week with NGT | 8016862 |
| 3553 | 37400.37600.39800.45300.47100.157800.672300 | Slab Reinforcement | 5d | 2025-12-28 | 2026-01-01 | 3552FF+2d |  |  | 7 day week with NGT | 8016872 |
| 3554 | 37400.37600.39800.45300.47100.157800.672400 | Monolithic Casting | 2d | 2026-01-01 | 2026-01-02 | 3553FF+1d |  |  | 7 day week with NGT | 8016882 |
| 3555 | 37400.37600.39800.45300.47100.157900 | **5th Floor Roof** | 12d | 2026-01-03 | 2026-01-14 |  |  | start no earlier than 2026-01-03 | 7 day week with NGT | 7999482 |
| 3556 | 37400.37600.39800.45300.47100.157900.672500 | Column and Shear Wall Reinforcement | 5d | 2026-01-03 | 2026-01-07 | 3554 |  |  | 7 day week with NGT | 8016892 |
| 3557 | 37400.37600.39800.45300.47100.157900.672600 | Column and Shear Wall Formwork | 5d | 2026-01-04 | 2026-01-08 | 3556FF+1d |  |  | 7 day week with NGT | 8016902 |
| 3558 | 37400.37600.39800.45300.47100.157900.672700 | Slab Formwork | 5d | 2026-01-07 | 2026-01-11 | 3557FS-2d |  |  | 7 day week with NGT | 8016912 |
| 3559 | 37400.37600.39800.45300.47100.157900.672800 | Slab Reinforcement | 5d | 2026-01-09 | 2026-01-13 | 3558FF+2d |  |  | 7 day week with NGT | 8016922 |
| 3560 | 37400.37600.39800.45300.47100.157900.672900 | Monolithic Casting | 2d | 2026-01-13 | 2026-01-14 | 3559FF+1d |  |  | 7 day week with NGT | 8016932 |
| 3561 | 37400.37600.39800.45300.47100.158000 | **6th Floor Roof** | 12d | 2026-01-15 | 2026-01-26 |  |  | start no earlier than 2026-01-15 | 7 day week with NGT | 7999472 |
| 3562 | 37400.37600.39800.45300.47100.158000.673000 | Column and Shear Wall Reinforcement | 5d | 2026-01-15 | 2026-01-19 | 3560 |  |  | 7 day week with NGT | 8016942 |
| 3563 | 37400.37600.39800.45300.47100.158000.673100 | Column and Shear Wall Formwork | 5d | 2026-01-16 | 2026-01-20 | 3562FF+1d |  |  | 7 day week with NGT | 8016952 |
| 3564 | 37400.37600.39800.45300.47100.158000.673200 | Slab Formwork | 5d | 2026-01-19 | 2026-01-23 | 3563FS-2d |  |  | 7 day week with NGT | 8016962 |
| 3565 | 37400.37600.39800.45300.47100.158000.673300 | Slab Reinforcement | 5d | 2026-01-21 | 2026-01-25 | 3564FF+2d |  |  | 7 day week with NGT | 8016972 |
| 3566 | 37400.37600.39800.45300.47100.158000.673400 | Monolithic Casting | 2d | 2026-01-25 | 2026-01-26 | 3565FF+1d |  |  | 7 day week with NGT | 8016982 |

| ID | WBS | Task | Duration | Start | Finish | Predecessors | Constraint | Calendar | Unique_Task_ID |
| --- | --- | --- | --- | --- | --- | --- | --- | --- | --- |
| 3567 | 37400.37600.39800.45300.47100.158100 | **7th Floor Roof** | 12d | 2026-01-27 | 2026-02-07 |  | start no earlier than 2026-01-27 | 7 day week with NGT | 7999462 |
| 3568 | 37400.37600.39800.45300.47100.158100.673500 | Column and Shear Wall Reinforcement | 5d | 2026-01-27 | 2026-01-31 | 3566 |  | 7 day week with NGT | 8016992 |
| 3569 | 37400.37600.39800.45300.47100.158100.673600 | Column and Shear Wall Formwork | 5d | 2026-01-28 | 2026-02-01 | 3568FF+1d |  | 7 day week with NGT | 8017002 |
| 3570 | 37400.37600.39800.45300.47100.158100.673700 | Slab Formwork | 5d | 2026-01-31 | 2026-02-04 | 3569FS-2d |  | 7 day week with NGT | 8017012 |
| 3571 | 37400.37600.39800.45300.47100.158100.673800 | Slab Reinforcement | 5d | 2026-02-02 | 2026-02-06 | 3570FF+2d |  | 7 day week with NGT | 8017022 |
| 3572 | 37400.37600.39800.45300.47100.158100.673900 | Monolithic Casting | 2d | 2026-02-06 | 2026-02-07 | 3571FF+1d |  | 7 day week with NGT | 8017032 |
| 3573 | 37400.37600.39800.45300.47100.158200 | **8th Floor Roof** | 12d | 2026-02-08 | 2026-02-19 |  | start no earlier than 2026-02-08 | 7 day week with NGT | 7999452 |
| 3574 | 37400.37600.39800.45300.47100.158200.674000 | Column and Shear Wall Reinforcement | 5d | 2026-02-08 | 2026-02-12 | 3572 |  | 7 day week with NGT | 8017042 |
| 3575 | 37400.37600.39800.45300.47100.158200.674100 | Column and Shear Wall Formwork | 5d | 2026-02-09 | 2026-02-13 | 3574FF+1d |  | 7 day week with NGT | 8017052 |
| 3576 | 37400.37600.39800.45300.47100.158200.674200 | Slab Formwork | 5d | 2026-02-12 | 2026-02-16 | 3575FS-2d |  | 7 day week with NGT | 8017062 |
| 3577 | 37400.37600.39800.45300.47100.158200.674300 | Slab Reinforcement | 5d | 2026-02-14 | 2026-02-18 | 3576FF+2d |  | 7 day week with NGT | 8017072 |
| 3578 | 37400.37600.39800.45300.47100.158200.674400 | Monolithic Casting | 2d | 2026-02-18 | 2026-02-19 | 3577FF+1d |  | 7 day week with NGT | 8017082 |
| 3579 | 37400.37600.39800.45300.47100.158300 | **9th Floor Roof** | 12d | 2026-02-20 | 2026-03-03 |  | start no earlier than 2026-02-20 | 7 day week with NGT | 7999442 |
| 3580 | 37400.37600.39800.45300.47100.158300.674500 | Column and Shear Wall Reinforcement | 5d | 2026-02-20 | 2026-02-24 | 3578 |  | 7 day week with NGT | 8017092 |
| 3581 | 37400.37600.39800.45300.47100.158300.674600 | Column and Shear Wall Formwork | 5d | 2026-02-21 | 2026-02-25 | 3580FF+1d |  | 7 day week with NGT | 8017102 |
| 3582 | 37400.37600.39800.45300.47100.158300.674700 | Slab Formwork | 5d | 2026-02-24 | 2026-02-28 | 3581FS-2d |  | 7 day week with NGT | 8017112 |
| 3583 | 37400.37600.39800.45300.47100.158300.674800 | Slab Reinforcement | 5d | 2026-02-26 | 2026-03-02 | 3582FF+2d |  | 7 day week with NGT | 8017122 |
| 3584 | 37400.37600.39800.45300.47100.158300.674900 | Monolithic Casting | 2d | 2026-03-02 | 2026-03-03 | 3583FF+1d |  | 7 day week with NGT | 8017132 |
| 3585 | 37400.37600.39800.45300.47100.158400 | **10th Floor Roof** | 12d | 2026-03-04 | 2026-03-15 |  | start no earlier than 2026-03-04 | 7 day week with NGT | 7999432 |
| 3586 | 37400.37600.39800.45300.47100.158400.675000 | Column and Shear Wall Reinforcement | 5d | 2026-03-04 | 2026-03-08 | 3584 |  | 7 day week with NGT | 8017142 |
| 3587 | 37400.37600.39800.45300.47100.158400.675100 | Column and Shear Wall Formwork | 5d | 2026-03-05 | 2026-03-09 | 3586FF+1d |  | 7 day week with NGT | 8017152 |
| 3588 | 37400.37600.39800.45300.47100.158400.675200 | Slab Formwork | 5d | 2026-03-08 | 2026-03-12 | 3587FS-2d |  | 7 day week with NGT | 8017162 |
| 3589 | 37400.37600.39800.45300.47100.158400.675300 | Slab Reinforcement | 5d | 2026-03-10 | 2026-03-14 | 3588FF+2d |  | 7 day week with NGT | 8017172 |
| 3590 | 37400.37600.39800.45300.47100.158400.675400 | Monolithic Casting | 2d | 2026-03-14 | 2026-03-15 | 3589FF+1d |  | 7 day week with NGT | 8017182 |

| ID | WBS | Task | Duration | Start | Finish | Predecessors | Constraint | Calendar | Unique_Task_ID |
| --- | --- | --- | --- | --- | --- | --- | --- | --- | --- |
| 3591 | 37400.37600.39800.45300.47100.158500 | **11th Floor Roof** | 12d | 2026-03-16 | 2026-03-27 |  | start no earlier than 2026-03-16 | 7 day week with NGT | 7999422 |
| 3592 | 37400.37600.39800.45300.47100.158500.675500 | Column and Shear Wall Reinforcement | 5d | 2026-03-16 | 2026-03-20 | 3590 |  | 7 day week with NGT | 8017192 |
| 3593 | 37400.37600.39800.45300.47100.158500.675600 | Column and Shear Wall Formwork | 5d | 2026-03-17 | 2026-03-21 | 3592FF+1d |  | 7 day week with NGT | 8017202 |
| 3594 | 37400.37600.39800.45300.47100.158500.675700 | Slab Formwork | 5d | 2026-03-20 | 2026-03-24 | 3593FS-2d |  | 7 day week with NGT | 8017212 |
| 3595 | 37400.37600.39800.45300.47100.158500.675800 | Slab Reinforcement | 5d | 2026-03-22 | 2026-03-26 | 3594FF+2d |  | 7 day week with NGT | 8017222 |
| 3596 | 37400.37600.39800.45300.47100.158500.675900 | Monolithic Casting | 2d | 2026-03-26 | 2026-03-27 | 3595FF+1d |  | 7 day week with NGT | 8017232 |
| 3597 | 37400.37600.39800.45300.47100.158600 | **12th Floor Roof** | 12d | 2026-03-28 | 2026-04-08 |  | start no earlier than 2026-03-28 | 7 day week with NGT | 7999412 |
| 3598 | 37400.37600.39800.45300.47100.158600.676000 | Column and Shear Wall Reinforcement | 5d | 2026-03-28 | 2026-04-01 | 3596 |  | 7 day week with NGT | 8017242 |
| 3599 | 37400.37600.39800.45300.47100.158600.676100 | Column and Shear Wall Formwork | 5d | 2026-03-29 | 2026-04-02 | 3598FF+1d |  | 7 day week with NGT | 8017252 |
| 3600 | 37400.37600.39800.45300.47100.158600.676200 | Slab Formwork | 5d | 2026-04-01 | 2026-04-05 | 3599FS-2d |  | 7 day week with NGT | 8017262 |
| 3601 | 37400.37600.39800.45300.47100.158600.676300 | Slab Reinforcement | 5d | 2026-04-03 | 2026-04-07 | 3600FF+2d |  | 7 day week with NGT | 8017272 |
| 3602 | 37400.37600.39800.45300.47100.158600.676400 | Monolithic Casting | 2d | 2026-04-07 | 2026-04-08 | 3601FF+1d |  | 7 day week with NGT | 8017282 |
| 3603 | 37400.37600.39800.45300.47100.158700 | **13th Floor Roof** | 12d | 2026-04-09 | 2026-04-20 |  | start no earlier than 2026-04-09 | 7 day week with NGT | 7999402 |
| 3604 | 37400.37600.39800.45300.47100.158700.676500 | Column and Shear Wall Reinforcement | 5d | 2026-04-09 | 2026-04-13 | 3602 |  | 7 day week with NGT | 8017292 |
| 3605 | 37400.37600.39800.45300.47100.158700.676600 | Column and Shear Wall Formwork | 5d | 2026-04-10 | 2026-04-14 | 3604FF+1d |  | 7 day week with NGT | 8017302 |
| 3606 | 37400.37600.39800.45300.47100.158700.676700 | Slab Formwork | 5d | 2026-04-13 | 2026-04-17 | 3605FS-2d |  | 7 day week with NGT | 8017312 |
| 3607 | 37400.37600.39800.45300.47100.158700.676800 | Slab Reinforcement | 5d | 2026-04-15 | 2026-04-19 | 3606FF+2d |  | 7 day week with NGT | 8017322 |
| 3608 | 37400.37600.39800.45300.47100.158700.676900 | Monolithic Casting | 2d | 2026-04-19 | 2026-04-20 | 3607FF+1d |  | 7 day week with NGT | 8017332 |
| 3609 | 37400.37600.39800.45300.47100.158800 | **14th Floor Roof** | 12d | 2026-04-21 | 2026-05-02 |  | start no earlier than 2026-04-21 | 7 day week with NGT | 7999392 |
| 3610 | 37400.37600.39800.45300.47100.158800.677000 | Column and Shear Wall Reinforcement | 5d | 2026-04-21 | 2026-04-25 | 3608 |  | 7 day week with NGT | 8017342 |
| 3611 | 37400.37600.39800.45300.47100.158800.677100 | Column and Shear Wall Formwork | 5d | 2026-04-22 | 2026-04-26 | 3610FF+1d |  | 7 day week with NGT | 8017352 |
| 3612 | 37400.37600.39800.45300.47100.158800.677200 | Slab Formwork | 5d | 2026-04-25 | 2026-04-29 | 3611FS-2d |  | 7 day week with NGT | 8017362 |
| 3613 | 37400.37600.39800.45300.47100.158800.677300 | Slab Reinforcement | 5d | 2026-04-27 | 2026-05-01 | 3612FF+2d |  | 7 day week with NGT | 8017372 |
| 3614 | 37400.37600.39800.45300.47100.158800.677400 | Monolithic Casting | 2d | 2026-05-01 | 2026-05-02 | 3613FF+1d |  | 7 day week with NGT | 8017382 |

| ID | WBS | Task | Duration | Start | Finish | Predecessors | Constraint | Calendar | Unique_Task_ID |
| --- | --- | --- | --- | --- | --- | --- | --- | --- | --- |
| 3615 | 37400.37600.39800.45300.47100.158900 | **15th Floor Roof** | 12d | 2026-05-03 | 2026-05-14 |  | start no earlier than 2026-05-03 | 7 day week with NGT | 7999382 |
| 3616 | 37400.37600.39800.45300.47100.158900.677500 | Column and Shear Wall Reinforcement | 5d | 2026-05-03 | 2026-05-07 | 3614 |  | 7 day week with NGT | 8017392 |
| 3617 | 37400.37600.39800.45300.47100.158900.677600 | Column and Shear Wall Formwork | 5d | 2026-05-04 | 2026-05-08 | 3616FF+1d |  | 7 day week with NGT | 8017402 |
| 3618 | 37400.37600.39800.45300.47100.158900.677700 | Slab Formwork | 5d | 2026-05-07 | 2026-05-11 | 3617FS-2d |  | 7 day week with NGT | 8017412 |
| 3619 | 37400.37600.39800.45300.47100.158900.677800 | Slab Reinforcement | 5d | 2026-05-09 | 2026-05-13 | 3618FF+2d |  | 7 day week with NGT | 8017422 |
| 3620 | 37400.37600.39800.45300.47100.158900.677900 | Monolithic Casting | 2d | 2026-05-13 | 2026-05-14 | 3619FF+1d |  | 7 day week with NGT | 8017432 |
| 3621 | 37400.37600.39800.45300.47100.159000 | **16th Floor Roof** | 17d | 2026-05-15 | 2026-05-31 |  | start no earlier than 2026-05-15 | 7 day week with NGT | 7999372 |
| 3622 | 37400.37600.39800.45300.47100.159000.678000 | Column and Shear Wall Reinforcement | 7d | 2026-05-15 | 2026-05-21 | 3620 |  | 7 day week with NGT | 8017442 |
| 3623 | 37400.37600.39800.45300.47100.159000.678100 | Column and Shear Wall Formwork | 7d | 2026-05-16 | 2026-05-22 | 3622FF+1d |  | 7 day week with NGT | 8017452 |
| 3624 | 37400.37600.39800.45300.47100.159000.678200 | Slab Formwork | 8d | 2026-05-21 | 2026-05-28 | 3623FS-2d |  | 7 day week with NGT | 8017462 |
| 3625 | 37400.37600.39800.45300.47100.159000.678300 | Slab Reinforcement | 7d | 2026-05-24 | 2026-05-30 | 3624FF+2d |  | 7 day week with NGT | 8017472 |
| 3626 | 37400.37600.39800.45300.47100.159000.678400 | Monolithic Casting | 4d | 2026-05-28 | 2026-05-31 | 3625FF+1d |  | 7 day week with NGT | 8017482 |
| 3627 | 37400.37600.39800.45300.47100.159100 | **17th Floor Roof** | 12d | 2026-06-01 | 2026-06-12 |  | start no earlier than 2026-06-01 | 7 day week with NGT | 7999362 |
| 3628 | 37400.37600.39800.45300.47100.159100.678500 | Column and Shear Wall Reinforcement | 5d | 2026-06-01 | 2026-06-05 | 3626 |  | 7 day week with NGT | 8017492 |
| 3629 | 37400.37600.39800.45300.47100.159100.678600 | Column and Shear Wall Formwork | 5d | 2026-06-02 | 2026-06-06 | 3628FF+1d |  | 7 day week with NGT | 8017502 |
| 3630 | 37400.37600.39800.45300.47100.159100.678700 | Slab Formwork | 5d | 2026-06-05 | 2026-06-09 | 3629FS-2d |  | 7 day week with NGT | 8017512 |
| 3631 | 37400.37600.39800.45300.47100.159100.678800 | Slab Reinforcement | 5d | 2026-06-07 | 2026-06-11 | 3630FF+2d |  | 7 day week with NGT | 8017522 |
| 3632 | 37400.37600.39800.45300.47100.159100.678900 | Monolithic Casting | 2d | 2026-06-11 | 2026-06-12 | 3631FF+1d |  | 7 day week with NGT | 8017532 |
| 3633 | 37400.37600.39800.45300.47100.159200 | **18th Floor Roof** | 12d | 2026-06-13 | 2026-06-24 |  | start no earlier than 2026-06-13 | 7 day week with NGT | 7999352 |
| 3634 | 37400.37600.39800.45300.47100.159200.679000 | Column and Shear Wall Reinforcement | 6d | 2026-06-13 | 2026-06-18 | 3632 |  | 7 day week with NGT | 8017542 |
| 3635 | 37400.37600.39800.45300.47100.159200.679100 | Column and Shear Wall Formwork | 5d | 2026-06-15 | 2026-06-19 | 3634FF+1d |  | 7 day week with NGT | 8017552 |
| 3636 | 37400.37600.39800.45300.47100.159200.679200 | Slab Formwork | 5d | 2026-06-18 | 2026-06-22 | 3635FS-2d |  | 7 day week with NGT | 8017562 |
| 3637 | 37400.37600.39800.45300.47100.159200.679300 | Slab Reinforcement | 5d | 2026-06-19 | 2026-06-23 | 3636FF+1d |  | 7 day week with NGT | 8017572 |
| 3638 | 37400.37600.39800.45300.47100.159200.679400 | Monolithic Casting | 2d | 2026-06-23 | 2026-06-24 | 3637FF+1d |  | 7 day week with NGT | 8017582 |

| ID | WBS | Task | Duration | Start | Finish | Predecessors | Constraint | Calendar | Unique_Task_ID |
| --- | --- | --- | --- | --- | --- | --- | --- | --- | --- |
| 3639 | 37400.37600.39800.45300.47100.159300 | **19th Floor Roof** | 11d | 2026-06-25 | 2026-07-05 |  | start no earlier than 2026-06-25 | 7 day week with NGT | 7999342 |
| 3640 | 37400.37600.39800.45300.47100.159300.679500 | Column and Shear Wall Reinforcement | 4d | 2026-06-25 | 2026-06-28 | 3638 |  | 7 day week with NGT | 8017592 |
| 3641 | 37400.37600.39800.45300.47100.159300.679600 | Column and Shear Wall Formwork | 4d | 2026-06-26 | 2026-06-29 | 3640FF+1d |  | 7 day week with NGT | 8017602 |
| 3642 | 37400.37600.39800.45300.47100.159300.679700 | Slab Formwork | 6d | 2026-06-28 | 2026-07-03 | 3641FS-2d |  | 7 day week with NGT | 8017612 |
| 3643 | 37400.37600.39800.45300.47100.159300.679800 | Slab Reinforcement | 5d | 2026-06-30 | 2026-07-04 | 3642FF+1d |  | 7 day week with NGT | 8017622 |
| 3644 | 37400.37600.39800.45300.47100.159300.679900 | Monolithic Casting | 4d | 2026-07-02 | 2026-07-05 | 3643FF+1d |  | 7 day week with NGT | 8017632 |
| 3645 | 37400.37600.39800.45300.47100.159400 | **20th Floor Roof** | 11d | 2026-07-06 | 2026-07-16 |  | start no earlier than 2026-07-06 | 7 day week with NGT | 7999332 |
| 3646 | 37400.37600.39800.45300.47100.159400.680000 | Column and Shear Wall Reinforcement | 4d | 2026-07-06 | 2026-07-09 | 3644 |  | 7 day week with NGT | 8017642 |
| 3647 | 37400.37600.39800.45300.47100.159400.680100 | Column and Shear Wall Formwork | 4d | 2026-07-07 | 2026-07-10 | 3646FF+1d |  | 7 day week with NGT | 8017652 |
| 3648 | 37400.37600.39800.45300.47100.159400.680200 | Slab Formwork | 6d | 2026-07-09 | 2026-07-14 | 3647FS-2d |  | 7 day week with NGT | 8017662 |
| 3649 | 37400.37600.39800.45300.47100.159400.680300 | Slab Reinforcement | 5d | 2026-07-11 | 2026-07-15 | 3648FF+1d |  | 7 day week with NGT | 8017672 |
| 3650 | 37400.37600.39800.45300.47100.159400.680400 | Monolithic Casting | 4d | 2026-07-13 | 2026-07-16 | 3649FF+1d |  | 7 day week with NGT | 8017682 |
| 3651 | 37400.37600.39800.45300.47100.159500 | **21th Floor Roof** | 11d | 2026-07-17 | 2026-07-27 |  | start no earlier than 2026-07-17 | 7 day week with NGT | 7999322 |
| 3652 | 37400.37600.39800.45300.47100.159500.680500 | Column and Shear Wall Reinforcement | 4d | 2026-07-17 | 2026-07-20 | 3650 |  | 7 day week with NGT | 8017692 |
| 3653 | 37400.37600.39800.45300.47100.159500.680600 | Column and Shear Wall Formwork | 4d | 2026-07-18 | 2026-07-21 | 3652FF+1d |  | 7 day week with NGT | 8017702 |
| 3654 | 37400.37600.39800.45300.47100.159500.680700 | Slab Formwork | 6d | 2026-07-20 | 2026-07-25 | 3653FS-2d |  | 7 day week with NGT | 8017712 |
| 3655 | 37400.37600.39800.45300.47100.159500.680800 | Slab Reinforcement | 5d | 2026-07-22 | 2026-07-26 | 3654FF+1d |  | 7 day week with NGT | 8017722 |
| 3656 | 37400.37600.39800.45300.47100.159500.680900 | Monolithic Casting | 4d | 2026-07-24 | 2026-07-27 | 3655FF+1d |  | 7 day week with NGT | 8017732 |
| 3657 | 37400.37600.39800.45300.47100.159600 | **22th Floor Roof** | 11d | 2026-07-28 | 2026-08-07 |  | start no earlier than 2026-07-28 | 7 day week with NGT | 7999312 |
| 3658 | 37400.37600.39800.45300.47100.159600.681000 | Column and Shear Wall Reinforcement | 4d | 2026-07-28 | 2026-07-31 | 3656 |  | 7 day week with NGT | 8017742 |
| 3659 | 37400.37600.39800.45300.47100.159600.681100 | Column and Shear Wall Formwork | 4d | 2026-07-29 | 2026-08-01 | 3658FF+1d |  | 7 day week with NGT | 8017752 |
| 3660 | 37400.37600.39800.45300.47100.159600.681200 | Slab Formwork | 6d | 2026-07-31 | 2026-08-05 | 3659FS-2d |  | 7 day week with NGT | 8017762 |
| 3661 | 37400.37600.39800.45300.47100.159600.681300 | Slab Reinforcement | 5d | 2026-08-02 | 2026-08-06 | 3660FF+1d |  | 7 day week with NGT | 8017772 |
| 3662 | 37400.37600.39800.45300.47100.159600.681400 | Monolithic Casting | 4d | 2026-08-04 | 2026-08-07 | 3661FF+1d |  | 7 day week with NGT | 8017782 |

| ID | WBS | Task | Duration | Start | Finish | Predecessors | Constraint | Calendar | Unique_Task_ID |
| --- | --- | --- | --- | --- | --- | --- | --- | --- | --- |
| 3663 | 37400.37600.39800.45300.47100.159700 | **23th Floor Roof** | 11d | 2026-08-08 | 2026-08-18 |  | start no earlier than 2026-08-08 | 7 day week with NGT | 7999302 |
| 3664 | 37400.37600.39800.45300.47100.159700.681500 | Column and Shear Wall Reinforcement | 4d | 2026-08-08 | 2026-08-11 | 3662 |  | 7 day week with NGT | 8017792 |
| 3665 | 37400.37600.39800.45300.47100.159700.681600 | Column and Shear Wall Formwork | 4d | 2026-08-09 | 2026-08-12 | 3664FF+1d |  | 7 day week with NGT | 8017802 |
| 3666 | 37400.37600.39800.45300.47100.159700.681700 | Slab Formwork | 6d | 2026-08-11 | 2026-08-16 | 3665FS-2d |  | 7 day week with NGT | 8017812 |
| 3667 | 37400.37600.39800.45300.47100.159700.681800 | Slab Reinforcement | 5d | 2026-08-13 | 2026-08-17 | 3666FF+1d |  | 7 day week with NGT | 8017822 |
| 3668 | 37400.37600.39800.45300.47100.159700.681900 | Monolithic Casting | 4d | 2026-08-15 | 2026-08-18 | 3667FF+1d |  | 7 day week with NGT | 8017832 |
| 3669 | 37400.37600.39800.45300.47100.159800 | **24th Floor Roof** | 11d | 2026-08-19 | 2026-08-29 |  | start no earlier than 2026-08-19 | 7 day week with NGT | 7999292 |
| 3670 | 37400.37600.39800.45300.47100.159800.682000 | Column and Shear Wall Reinforcement | 4d | 2026-08-19 | 2026-08-22 | 3668 |  | 7 day week with NGT | 8017842 |
| 3671 | 37400.37600.39800.45300.47100.159800.682100 | Column and Shear Wall Formwork | 4d | 2026-08-20 | 2026-08-23 | 3670FF+1d |  | 7 day week with NGT | 8017852 |
| 3672 | 37400.37600.39800.45300.47100.159800.682200 | Slab Formwork | 6d | 2026-08-22 | 2026-08-27 | 3671FS-2d |  | 7 day week with NGT | 8017862 |
| 3673 | 37400.37600.39800.45300.47100.159800.682300 | Slab Reinforcement | 5d | 2026-08-24 | 2026-08-28 | 3672FF+1d |  | 7 day week with NGT | 8017872 |
| 3674 | 37400.37600.39800.45300.47100.159800.682400 | Monolithic Casting | 4d | 2026-08-26 | 2026-08-29 | 3673FF+1d |  | 7 day week with NGT | 8017882 |
| 3675 | 37400.37600.39800.45300.47100.159900 | **25th Floor Roof** | 11d | 2026-08-30 | 2026-09-09 |  | start no earlier than 2026-08-30 | 7 day week with NGT | 7999282 |
| 3676 | 37400.37600.39800.45300.47100.159900.682500 | Column and Shear Wall Reinforcement | 4d | 2026-08-30 | 2026-09-02 | 3674 |  | 7 day week with NGT | 8017892 |
| 3677 | 37400.37600.39800.45300.47100.159900.682600 | Column and Shear Wall Formwork | 4d | 2026-08-31 | 2026-09-03 | 3676FF+1d |  | 7 day week with NGT | 8017902 |
| 3678 | 37400.37600.39800.45300.47100.159900.682700 | Slab Formwork | 6d | 2026-09-02 | 2026-09-07 | 3677FS-2d |  | 7 day week with NGT | 8017912 |
| 3679 | 37400.37600.39800.45300.47100.159900.682800 | Slab Reinforcement | 5d | 2026-09-04 | 2026-09-08 | 3678FF+1d |  | 7 day week with NGT | 8017922 |
| 3680 | 37400.37600.39800.45300.47100.159900.682900 | Monolithic Casting | 4d | 2026-09-06 | 2026-09-09 | 3679FF+1d |  | 7 day week with NGT | 8017932 |
| 3681 | 37400.37600.39800.45300.47100.160000 | **26th Floor Roof** | 17d | 2026-09-10 | 2026-09-26 |  | start no earlier than 2026-09-10 | 7 day week with NGT | 7999272 |
| 3682 | 37400.37600.39800.45300.47100.160000.683000 | Column and Shear Wall Reinforcement | 8d | 2026-09-10 | 2026-09-17 | 3680 |  | 7 day week with NGT | 8017942 |
| 3683 | 37400.37600.39800.45300.47100.160000.683100 | Column and Shear Wall Formwork | 7d | 2026-09-12 | 2026-09-18 | 3682FF+1d |  | 7 day week with NGT | 8017952 |
| 3684 | 37400.37600.39800.45300.47100.160000.683200 | Slab Formwork | 8d | 2026-09-17 | 2026-09-24 | 3683FS-2d |  | 7 day week with NGT | 8017962 |
| 3685 | 37400.37600.39800.45300.47100.160000.683300 | Slab Reinforcement | 8d | 2026-09-18 | 2026-09-25 | 3684FF+1d |  | 7 day week with NGT | 8017972 |
| 3686 | 37400.37600.39800.45300.47100.160000.683400 | Monolithic Casting | 4d | 2026-09-23 | 2026-09-26 | 3685FF+1d |  | 7 day week with NGT | 8017982 |

| ID | WBS | Task | Duration | Start | Finish | Predecessors | Constraint | Calendar | Unique_Task_ID |
| --- | --- | --- | --- | --- | --- | --- | --- | --- | --- |
| 3687 | 37400.37600.39800.45300.47100.160100 | **27th Floor Roof** | 11d | 2026-09-27 | 2026-10-07 |  | start no earlier than 2026-09-27 | 7 day week with NGT | 7999262 |
| 3688 | 37400.37600.39800.45300.47100.160100.683500 | Column and Shear Wall Reinforcement | 4d | 2026-09-27 | 2026-09-30 | 3686 |  | 7 day week with NGT | 8017992 |
| 3689 | 37400.37600.39800.45300.47100.160100.683600 | Column and Shear Wall Formwork | 4d | 2026-09-28 | 2026-10-01 | 3688FF+1d |  | 7 day week with NGT | 8018002 |
| 3690 | 37400.37600.39800.45300.47100.160100.683700 | Slab Formwork | 6d | 2026-09-30 | 2026-10-05 | 3689FS-2d |  | 7 day week with NGT | 8018012 |
| 3691 | 37400.37600.39800.45300.47100.160100.683800 | Slab Reinforcement | 5d | 2026-10-02 | 2026-10-06 | 3690FF+1d |  | 7 day week with NGT | 8018022 |
| 3692 | 37400.37600.39800.45300.47100.160100.683900 | Monolithic Casting | 4d | 2026-10-04 | 2026-10-07 | 3691FF+1d |  | 7 day week with NGT | 8018032 |
| 3693 | 37400.37600.39800.45300.47100.160200 | **28th Floor Roof** | 11d | 2026-10-08 | 2026-10-18 |  | start no earlier than 2026-10-08 | 7 day week with NGT | 7999252 |
| 3694 | 37400.37600.39800.45300.47100.160200.684000 | Column and Shear Wall Reinforcement | 4d | 2026-10-08 | 2026-10-11 | 3692 |  | 7 day week with NGT | 8018042 |
| 3695 | 37400.37600.39800.45300.47100.160200.684100 | Column and Shear Wall Formwork | 4d | 2026-10-09 | 2026-10-12 | 3694FF+1d |  | 7 day week with NGT | 8018052 |
| 3696 | 37400.37600.39800.45300.47100.160200.684200 | Slab Formwork | 6d | 2026-10-11 | 2026-10-16 | 3695FS-2d |  | 7 day week with NGT | 8018062 |
| 3697 | 37400.37600.39800.45300.47100.160200.684300 | Slab Reinforcement | 5d | 2026-10-13 | 2026-10-17 | 3696FF+1d |  | 7 day week with NGT | 8018072 |
| 3698 | 37400.37600.39800.45300.47100.160200.684400 | Monolithic Casting | 4d | 2026-10-15 | 2026-10-18 | 3697FF+1d |  | 7 day week with NGT | 8018082 |
| 3699 | 37400.37600.39800.45300.47100.160300 | **29th Floor Roof** | 11d | 2026-10-19 | 2026-10-29 |  | start no earlier than 2026-10-19 | 7 day week with NGT | 7999242 |
| 3700 | 37400.37600.39800.45300.47100.160300.684500 | Column and Shear Wall Reinforcement | 4d | 2026-10-19 | 2026-10-22 | 3698 |  | 7 day week with NGT | 8018092 |
| 3701 | 37400.37600.39800.45300.47100.160300.684600 | Column and Shear Wall Formwork | 4d | 2026-10-20 | 2026-10-23 | 3700FF+1d |  | 7 day week with NGT | 8018102 |
| 3702 | 37400.37600.39800.45300.47100.160300.684700 | Slab Formwork | 6d | 2026-10-22 | 2026-10-27 | 3701FS-2d |  | 7 day week with NGT | 8018112 |
| 3703 | 37400.37600.39800.45300.47100.160300.684800 | Slab Reinforcement | 5d | 2026-10-24 | 2026-10-28 | 3702FF+1d |  | 7 day week with NGT | 8018122 |
| 3704 | 37400.37600.39800.45300.47100.160300.684900 | Monolithic Casting | 4d | 2026-10-26 | 2026-10-29 | 3703FF+1d |  | 7 day week with NGT | 8018132 |
| 3705 | 37400.37600.39800.45300.47100.160400 | **30th Floor Roof** | 11d | 2026-10-30 | 2026-12-24 |  | start no earlier than 2026-10-30 | 7 day week with NGT | 135435 |
| 3706 | 37400.37600.39800.45300.47100.160400.685000 | Column and Shear Wall Reinforcement | 4d | 2026-10-30 | 2026-12-17 | 3704 |  | 7 day week with NGT | 135445 |
| 3707 | 37400.37600.39800.45300.47100.160400.685100 | Column and Shear Wall Formwork | 4d | 2026-10-31 | 2026-12-18 | 3706FF+1d |  | 7 day week with NGT | 135455 |
| 3708 | 37400.37600.39800.45300.47100.160400.685200 | Slab Formwork | 6d | 2026-12-17 | 2026-12-22 | 3707FS-2d |  | 7 day week with NGT | 135465 |
| 3709 | 37400.37600.39800.45300.47100.160400.685300 | Slab Reinforcement | 5d | 2026-12-19 | 2026-12-23 | 3708FF+1d |  | 7 day week with NGT | 135475 |
| 3710 | 37400.37600.39800.45300.47100.160400.685400 | Monolithic Casting | 4d | 2026-12-21 | 2026-12-24 | 3709FF+1d |  | 7 day week with NGT | 135485 |

| ID | WBS | Task | Duration | Start | Finish | Predecessors | Constraint | Calendar | Unique_Task_ID |
| --- | --- | --- | --- | --- | --- | --- | --- | --- | --- |
| 3711 | 37400.37600.39800.45300.47100.160500 | **31st Floor Roof** | 17d | 2026-12-25 | 2027-01-10 |  | start no earlier than 2026-12-25 | 7 day week with NGT | 7999232 |
| 3712 | 37400.37600.39800.45300.47100.160500.685500 | Column and Shear Wall Reinforcement | 7d | 2026-12-25 | 2026-12-31 | 3710 |  | 7 day week with NGT | 8018142 |
| 3713 | 37400.37600.39800.45300.47100.160500.685600 | Column and Shear Wall Formwork | 7d | 2026-12-26 | 2027-01-01 | 3712FF+1d |  | 7 day week with NGT | 8018152 |
| 3714 | 37400.37600.39800.45300.47100.160500.685700 | Slab Formwork | 9d | 2026-12-31 | 2027-01-08 | 3713FS-2d |  | 7 day week with NGT | 8018162 |
| 3715 | 37400.37600.39800.45300.47100.160500.685800 | Slab Reinforcement | 7d | 2027-01-03 | 2027-01-09 | 3714FF+1d |  | 7 day week with NGT | 8018172 |
| 3716 | 37400.37600.39800.45300.47100.160500.685900 | Monolithic Casting | 4d | 2027-01-07 | 2027-01-10 | 3715FF+1d |  | 7 day week with NGT | 8018182 |
| 3717 | 37400.37600.39800.50000 | **Post Pour Activitis** | 373d | 2026-01-02 | 2027-02-23 |  | start no earlier than 2026-01-02 | 7 day week with NGT | 7997852 |
| 3718 | 37400.37600.39800.50000.292400 | 1st Floor | 13d | 2026-01-02 | 2026-01-14 | 3560FF |  | 7 day week with NGT | 8000722 |
| 3719 | 37400.37600.39800.50000.292500 | 2nd Floor | 13d | 2026-01-14 | 2026-01-26 | 3718FS-1d, 3554FF |  | 7 day week with NGT | 8000732 |
| 3720 | 37400.37600.39800.50000.292600 | 3rd Floor | 13d | 2026-01-26 | 2026-02-07 | 3719FS-1d, 3560FF |  | 7 day week with NGT | 8000742 |
| 3721 | 37400.37600.39800.50000.292700 | 4th Floor | 13d | 2026-02-07 | 2026-02-19 | 3720FS-1d |  | 7 day week with NGT | 8000752 |
| 3722 | 37400.37600.39800.50000.292800 | 5th Floor | 13d | 2026-02-19 | 2026-03-03 | 3721FS-1d, 3572FF |  | 7 day week with NGT | 8000762 |
| 3723 | 37400.37600.39800.50000.292900 | 6th Floor | 13d | 2026-03-03 | 2026-03-15 | 3722FS-1d, 3578FF+0.25d |  | 7 day week with NGT | 8000772 |
| 3724 | 37400.37600.39800.50000.293000 | 7th Floor | 13d | 2026-03-15 | 2026-03-27 | 3723FS-1d, 3584FF+0.25d |  | 7 day week with NGT | 8000782 |
| 3725 | 37400.37600.39800.50000.293100 | 8th Floor | 13d | 2026-03-27 | 2026-04-08 | 3724FS-1d, 3590FF+0.25d |  | 7 day week with NGT | 8000792 |
| 3726 | 37400.37600.39800.50000.293200 | 9th Floor | 13d | 2026-04-08 | 2026-04-20 | 3725FS-1d, 3596FF+0.25d |  | 7 day week with NGT | 8000802 |
| 3727 | 37400.37600.39800.50000.293300 | 10th Floor | 13d | 2026-04-20 | 2026-05-02 | 3726FS-1d, 3602FF+0.25d |  | 7 day week with NGT | 8000812 |
| 3728 | 37400.37600.39800.50000.293400 | 11th Floor | 13d | 2026-05-02 | 2026-05-14 | 3727FS-1d, 3608FF+0.25d |  | 7 day week with NGT | 8000822 |
| 3729 | 37400.37600.39800.50000.293500 | 12th Floor | 13d | 2026-05-14 | 2026-05-26 | 3728FS-1d, 3614FF+0.25d |  | 7 day week with NGT | 8000832 |
| 3730 | 37400.37600.39800.50000.293600 | 13th Floor | 13d | 2026-05-26 | 2026-06-07 | 3729FS-1d, 3620FF+0.25d |  | 7 day week with NGT | 8000842 |
| 3731 | 37400.37600.39800.50000.293700 | 14th floor | 13d | 2026-06-07 | 2026-06-19 | 3730FS-1d, 3626FF+0.25d |  | 7 day week with NGT | 8000852 |
| 3732 | 37400.37600.39800.50000.293800 | 15th Floor | 13d | 2026-06-19 | 2026-07-01 | 3731FS-1d, 3632FF+0.25d |  | 7 day week with NGT | 8000862 |
| 3733 | 37400.37600.39800.50000.293900 | 16th Floor | 13d | 2026-07-01 | 2026-07-13 | 3732FS-1d, 3638FF+0.25d |  | 7 day week with NGT | 8000872 |
| 3734 | 37400.37600.39800.50000.294000 | 17th Floor | 13d | 2026-07-13 | 2026-07-25 | 3733FS-1d, 3644FF+0.25d |  | 7 day week with NGT | 8000882 |
| 3735 | 37400.37600.39800.50000.294100 | 18th Floor | 13d | 2026-07-25 | 2026-08-06 | 3734FS-1d, 3650FF+0.25d |  | 7 day week with NGT | 8000892 |
| 3736 | 37400.37600.39800.50000.294200 | 19th Floor | 13d | 2026-08-06 | 2026-08-18 | 3735FS-1d, 3656FF+0.25d |  | 7 day week with NGT | 8000902 |
| 3737 | 37400.37600.39800.50000.294300 | 20th Floor | 13d | 2026-08-18 | 2026-08-30 | 3736FS-1d, 3662FF+0.25d |  | 7 day week with NGT | 8000912 |
| 3738 | 37400.37600.39800.50000.294400 | 21th Floor | 13d | 2026-08-30 | 2026-09-11 | 3737FS-1d, 3668FF+0.25d |  | 7 day week with NGT | 8000922 |
| 3739 | 37400.37600.39800.50000.294500 | 22th Floor | 13d | 2026-09-11 | 2026-09-23 | 3738FS-1d, 3674FF+0.25d |  | 7 day week with NGT | 8000932 |
| 3740 | 37400.37600.39800.50000.294600 | 23rd Floor | 13d | 2026-09-23 | 2026-10-05 | 3739FS-1d, 3680FF+0.25d |  | 7 day week with NGT | 8000942 |
| 3741 | 37400.37600.39800.50000.294700 | 24th Floor | 13d | 2026-10-05 | 2026-10-17 | 3740FS-1d, 3686FF+0.25d |  | 7 day week with NGT | 8000952 |
| 3742 | 37400.37600.39800.50000.294800 | 25th Floor | 13d | 2026-10-17 | 2026-10-29 | 3741FS-1d, 3692FF+0.25d |  | 7 day week with NGT | 8000962 |
| 3743 | 37400.37600.39800.50000.294900 | 26th Floor | 13d | 2026-10-29 | 2026-12-25 | 3742FS-1d, 3698FF |  | 7 day week with NGT | 8000972 |
| 3744 | 37400.37600.39800.50000.295000 | 27th Floor | 13d | 2026-12-25 | 2027-01-06 | 3743FS-1d, 3704FF |  | 7 day week with NGT | 8000982 |
| 3745 | 37400.37600.39800.50000.295100 | 28th Floor | 13d | 2027-01-06 | 2027-01-18 | 3744FS-1d, 3710FF |  | 7 day week with NGT | 8000992 |
| 3746 | 37400.37600.39800.50000.295200 | 29th Floor | 13d | 2027-01-18 | 2027-01-30 | 3745FS-1d, 3716FF |  | 7 day week with NGT | 8001002 |
| 3747 | 37400.37600.39800.50000.295300 | 30th Floor | 13d | 2027-01-30 | 2027-02-11 | 3746FS-1d |  | 7 day week with NGT | 8001012 |
| 3748 | 37400.37600.39800.50000.295400 | 31st Floor | 13d | 2027-02-11 | 2027-02-23 | 3747FS-1d |  | 7 day week with NGT | 135495 |

| ID | WBS | Task | Duration | Start | Finish | Predecessors | Constraint | Calendar | Unique_Task_ID |
| --- | --- | --- | --- | --- | --- | --- | --- | --- | --- |
| 3749 | 37400.37600.39800.42800 | **Finishing Works** | 634d | 2025-12-16 | 2027-10-25 |  | start no earlier than 2025-12-16 | 7 day week with NGT | 7997742 |
| 3750 | 37400.37600.39800.42800.43700 | **Flat Finishing** | 567.5d | 2025-12-16 | 2027-08-20 |  | start no earlier than 2025-12-16 | 7 day week with NGT | 7997772 |
| 3751 | 37400.37600.39800.42800.43700.213800 | **Podium** | 123d | 2025-12-16 | 2026-04-17 |  | start no earlier than 2025-12-16 | 7 day week with NGT | 8000192 |
| 3752 | 37400.37600.39800.42800.43700.213800.686000 | Masonary Works | 30d | 2025-12-16 | 2026-01-14 | 3529FS+30d |  | 7 day week with NGT | 8018192 |
| 3753 | 37400.37600.39800.42800.43700.213800.686100 | Plaster Works | 20d | 2025-12-31 | 2026-01-19 | 3752SS+15d |  | 7 day week with NGT | 8018202 |
| 3754 | 37400.37600.39800.42800.43700.213800.686200 | White Wash | 18d | 2026-01-15 | 2026-02-01 | 3753SS+15d |  | 7 day week with NGT | 8018212 |
| 3755 | 37400.37600.39800.42800.43700.213800.686300 | VDF | 25d | 2026-03-24 | 2026-04-17 | 3520, 3754 |  | 7 day week with NGT | 135815 |
| 3756 | 37400.37600.39800.42800.43700.213700 | **First Floor** | 118d | 2026-01-15 | 2026-05-12 |  | start no earlier than 2026-01-15 | 7 day week with NGT | 8000182 |
| 3757 | 37400.37600.39800.42800.43700.213700.686400 | Masonary Works | 30d | 2026-01-15 | 2026-02-13 | 3718 |  | 7 day week with NGT | 135825 |
| 3758 | 37400.37600.39800.42800.43700.213700.686500 | Plaster Works | 20d | 2026-01-30 | 2026-02-18 | 3757SS+15d |  | 7 day week with NGT | 135835 |
| 3759 | 37400.37600.39800.42800.43700.213700.686600 | White Wash | 18d | 2026-02-14 | 2026-03-03 | 3758SS+15d |  | 7 day week with NGT | 135845 |
| 3760 | 37400.37600.39800.42800.43700.213700.686700 | VDF | 25d | 2026-04-18 | 2026-05-12 | 3755, 3759 |  | 7 day week with NGT | 135855 |
| 3761 | 37400.37600.39800.42800.43700.76600 | **Second Floor** | 147d | 2026-01-27 | 2026-06-22 |  | start no earlier than 2026-01-27 | 7 day week with NGT | 7998512 |
| 3762 | 37400.37600.39800.42800.43700.76600.686800 | Blockwork | 12d | 2026-01-27 | 2026-02-07 | 3719 |  | 7 day week with NGT | 8018222 |
| 3763 | 37400.37600.39800.42800.43700.76600.686900 | Internal Plumbing Works | 6d | 2026-02-08 | 2026-02-13 | 3762 |  | 7 day week with NGT | 8018232 |
| 3764 | 37400.37600.39800.42800.43700.76600.687000 | Waterproofing Works | 10d | 2026-02-10 | 2026-02-19 | 3763SS+2d |  | 7 day week with NGT | 8018242 |
| 3765 | 37400.37600.39800.42800.43700.76600.687100 | PCC | 8d | 2026-02-22 | 2026-03-01 | 3764, 3767SS |  | 7 day week with NGT | 8018252 |
| 3766 | 37400.37600.39800.42800.43700.76600.687200 | Electrical Wiring works | 12d | 2026-02-10 | 2026-02-21 | 3764SS |  | 7 day week with NGT | 8018262 |
| 3767 | 37400.37600.39800.42800.43700.76600.687300 | Internal Plaster Works | 9d | 2026-02-22 | 2026-03-02 | 3763, 3764, 3766 |  | 7 day week with NGT | 8018272 |
| 3768 | 37400.37600.39800.42800.43700.76600.687400 | Toilet Dado Works | 9d | 2026-03-03 | 2026-03-11 | 3763, 3764, 3766, 3767 |  | 7 day week with NGT | 8018282 |
| 3769 | 37400.37600.39800.42800.43700.76600.687500 | Toilet Flooring Works | 7d | 2026-03-12 | 2026-03-18 | 3765, 3768 |  | 7 day week with NGT | 8018292 |
| 3770 | 37400.37600.39800.42800.43700.76600.687600 | Living Dining Flooring | 15d | 2026-03-19 | 2026-04-02 | 3769 |  | 7 day week with NGT | 8018302 |
| 3771 | 37400.37600.39800.42800.43700.76600.687700 | Temporary Door Fixing | 9d | 2026-02-08 | 2026-02-16 | 3762 |  | 7 day week with NGT | 8018312 |
| 3772 | 37400.37600.39800.42800.43700.76600.687800 | Aluminium Door Widnow Fixing | 45d | 2026-04-03 | 2026-05-17 | 3770, 3771 |  | 7 day week with NGT | 8018322 |
| 3773 | 37400.37600.39800.42800.43700.76600.687900 | Rehung Door Fixing | 8d | 2026-05-18 | 2026-05-25 | 3772 |  | 7 day week with NGT | 8018332 |
| 3774 | 37400.37600.39800.42800.43700.76600.688000 | Putty Primer coat | 6d | 2026-05-26 | 2026-05-31 | 3773 |  | 7 day week with NGT | 8018342 |
| 3775 | 37400.37600.39800.42800.43700.76600.688100 | Painting First Coat | 12d | 2026-06-01 | 2026-06-12 | 3764, 3766, 3773, 3774 |  | 7 day week with NGT | 8018352 |
| 3776 | 37400.37600.39800.42800.43700.76600.688200 | False ceiling works | 10d | 2026-06-13 | 2026-06-22 | 3775 |  | 7 day week with NGT | 8018362 |

| ID | WBS | Task | Duration | Start | Finish | Predecessors | Constraint | Calendar | Unique_Task_ID |
| --- | --- | --- | --- | --- | --- | --- | --- | --- | --- |
| 3777 | 37400.37600.39800.42800.43700.76700 | **Third Floor** | 145d | 2026-02-08 | 2026-07-02 |  | start no earlier than 2026-02-08 | 7 day week with NGT | 7998522 |
| 3778 | 37400.37600.39800.42800.43700.76700.688300 | Blockwork | 8d | 2026-02-08 | 2026-02-15 | 3720, 3762 |  | 7 day week with NGT | 8018372 |
| 3779 | 37400.37600.39800.42800.43700.76700.688400 | Internal Plumbing Works | 6d | 2026-02-16 | 2026-02-21 | 3778 |  | 7 day week with NGT | 8018382 |
| 3780 | 37400.37600.39800.42800.43700.76700.688500 | Waterproofing Works | 10d | 2026-02-18 | 2026-02-27 | 3779SS+2d |  | 7 day week with NGT | 8018392 |
| 3781 | 37400.37600.39800.42800.43700.76700.688600 | PCC | 8d | 2026-03-02 | 2026-03-09 | 3780, 3783SS |  | 7 day week with NGT | 8018402 |
| 3782 | 37400.37600.39800.42800.43700.76700.688700 | Electrical Wiring works | 12d | 2026-02-18 | 2026-03-01 | 3780SS |  | 7 day week with NGT | 8018412 |
| 3783 | 37400.37600.39800.42800.43700.76700.688800 | Internal Plaster Works | 9d | 2026-03-02 | 2026-03-10 | 3779, 3780, 3782 |  | 7 day week with NGT | 8018422 |
| 3784 | 37400.37600.39800.42800.43700.76700.688900 | Toilet Dado Works | 9d | 2026-03-11 | 2026-03-19 | 3779, 3780, 3782, 3783 |  | 7 day week with NGT | 8018432 |
| 3785 | 37400.37600.39800.42800.43700.76700.689000 | Toilet Flooring Works | 7d | 2026-03-20 | 2026-03-26 | 3781, 3784 |  | 7 day week with NGT | 8018442 |
| 3786 | 37400.37600.39800.42800.43700.76700.689100 | Living Dining Flooring | 15d | 2026-03-27 | 2026-04-10 | 3785 |  | 7 day week with NGT | 8018452 |
| 3787 | 37400.37600.39800.42800.43700.76700.689200 | Temporary Door Fixing | 9d | 2026-02-16 | 2026-02-24 | 3778 |  | 7 day week with NGT | 8018462 |
| 3788 | 37400.37600.39800.42800.43700.76700.689300 | Aluminium Door Widnow Fixing | 15d | 2026-04-11 | 2026-04-25 | 3786, 3787 |  | 7 day week with NGT | 8018472 |
| 3789 | 37400.37600.39800.42800.43700.76700.689400 | Rehung Door Fixing | 8d | 2026-04-26 | 2026-05-03 | 3788 |  | 7 day week with NGT | 8018482 |
| 3790 | 37400.37600.39800.42800.43700.76700.689500 | Putty Primer coat | 6d | 2026-05-04 | 2026-05-09 | 3789 |  | 7 day week with NGT | 8018492 |
| 3791 | 37400.37600.39800.42800.43700.76700.689600 | Painting First Coat | 12d | 2026-05-10 | 2026-05-21 | 3780, 3782, 3789, 3790 |  | 7 day week with NGT | 8018502 |
| 3792 | 37400.37600.39800.42800.43700.76700.689700 | False ceiling works | 10d | 2026-06-23 | 2026-07-02 | 3776, 3791 |  | 7 day week with NGT | 8018512 |
| 3793 | 37400.37600.39800.42800.43700.76800 | **Fourth Floor** | 143d | 2026-02-20 | 2026-07-12 |  | start no earlier than 2026-02-20 | 7 day week with NGT | 7998532 |
| 3794 | 37400.37600.39800.42800.43700.76800.689800 | Blockwork | 8d | 2026-02-20 | 2026-02-27 | 3721, 3778 |  | 7 day week with NGT | 8018522 |
| 3795 | 37400.37600.39800.42800.43700.76800.689900 | Internal Plumbing Works | 6d | 2026-02-28 | 2026-03-05 | 3794 |  | 7 day week with NGT | 8018532 |
| 3796 | 37400.37600.39800.42800.43700.76800.690000 | Waterproofing Works | 10d | 2026-03-02 | 2026-03-11 | 3795SS+2d |  | 7 day week with NGT | 8018542 |
| 3797 | 37400.37600.39800.42800.43700.76800.690100 | PCC | 8d | 2026-03-14 | 2026-03-21 | 3796, 3799SS |  | 7 day week with NGT | 8018552 |
| 3798 | 37400.37600.39800.42800.43700.76800.690200 | Electrical Wiring works | 12d | 2026-03-02 | 2026-03-13 | 3796SS |  | 7 day week with NGT | 8018562 |
| 3799 | 37400.37600.39800.42800.43700.76800.690300 | Internal Plaster Works | 9d | 2026-03-14 | 2026-03-22 | 3795, 3796, 3798 |  | 7 day week with NGT | 8018572 |
| 3800 | 37400.37600.39800.42800.43700.76800.690400 | Toilet Dado Works | 9d | 2026-03-23 | 2026-03-31 | 3795, 3796, 3798, 3799 |  | 7 day week with NGT | 8018582 |
| 3801 | 37400.37600.39800.42800.43700.76800.690500 | Toilet Flooring Works | 7d | 2026-04-01 | 2026-04-07 | 3797, 3800 |  | 7 day week with NGT | 8018592 |
| 3802 | 37400.37600.39800.42800.43700.76800.690600 | Living Dining Flooring | 15d | 2026-04-08 | 2026-04-22 | 3801 |  | 7 day week with NGT | 8018602 |
| 3803 | 37400.37600.39800.42800.43700.76800.690700 | Temporary Door Fixing | 9d | 2026-02-28 | 2026-03-08 | 3794 |  | 7 day week with NGT | 8018612 |
| 3804 | 37400.37600.39800.42800.43700.76800.690800 | Aluminium Door Widnow Fixing | 15d | 2026-04-23 | 2026-05-07 | 3802, 3803 |  | 7 day week with NGT | 8018622 |
| 3805 | 37400.37600.39800.42800.43700.76800.690900 | Rehung Door Fixing | 8d | 2026-05-08 | 2026-05-15 | 3804 |  | 7 day week with NGT | 8018632 |
| 3806 | 37400.37600.39800.42800.43700.76800.691000 | Putty Primer coat | 6d | 2026-05-16 | 2026-05-21 | 3805 |  | 7 day week with NGT | 8018642 |
| 3807 | 37400.37600.39800.42800.43700.76800.691100 | Painting First Coat | 12d | 2026-05-22 | 2026-06-02 | 3796, 3798, 3805, 3806 |  | 7 day week with NGT | 8018652 |
| 3808 | 37400.37600.39800.42800.43700.76800.691200 | False ceiling works | 10d | 2026-07-03 | 2026-07-12 | 3792, 3807 |  | 7 day week with NGT | 8018662 |

| ID | WBS | Task | Duration | Start | Finish | Predecessors | Constraint | Calendar | Unique_Task_ID |
| --- | --- | --- | --- | --- | --- | --- | --- | --- | --- |
| 3809 | 37400.37600.39800.42800.43700.76900 | **Fifth Floor** | 141d | 2026-03-04 | 2026-07-22 |  | start no earlier than 2026-03-04 | 7 day week with NGT | 7998542 |
| 3810 | 37400.37600.39800.42800.43700.76900.691300 | Blockwork | 8d | 2026-03-04 | 2026-03-11 | 3722, 3794 |  | 7 day week with NGT | 8018672 |
| 3811 | 37400.37600.39800.42800.43700.76900.691400 | Internal Plumbing Works | 6d | 2026-03-12 | 2026-03-17 | 3810 |  | 7 day week with NGT | 8018682 |
| 3812 | 37400.37600.39800.42800.43700.76900.691500 | Waterproofing Works | 10d | 2026-03-14 | 2026-03-23 | 3811SS+2d |  | 7 day week with NGT | 8018692 |
| 3813 | 37400.37600.39800.42800.43700.76900.691600 | PCC | 8d | 2026-03-26 | 2026-04-02 | 3812, 3815SS |  | 7 day week with NGT | 8018702 |
| 3814 | 37400.37600.39800.42800.43700.76900.691700 | Electrical Wiring works | 12d | 2026-03-14 | 2026-03-25 | 3812SS |  | 7 day week with NGT | 8018712 |
| 3815 | 37400.37600.39800.42800.43700.76900.691800 | Internal Plaster Works | 9d | 2026-03-26 | 2026-04-03 | 3811, 3812, 3814 |  | 7 day week with NGT | 8018722 |
| 3816 | 37400.37600.39800.42800.43700.76900.691900 | Toilet Dado Works | 9d | 2026-04-04 | 2026-04-12 | 3811, 3812, 3814, 3815 |  | 7 day week with NGT | 8018732 |
| 3817 | 37400.37600.39800.42800.43700.76900.692000 | Toilet Flooring Works | 7d | 2026-04-13 | 2026-04-19 | 3813, 3816 |  | 7 day week with NGT | 8018742 |
| 3818 | 37400.37600.39800.42800.43700.76900.692100 | Living Dining Flooring | 15d | 2026-04-20 | 2026-05-04 | 3817 |  | 7 day week with NGT | 8018752 |
| 3819 | 37400.37600.39800.42800.43700.76900.692200 | Temporary Door Fixing | 9d | 2026-03-12 | 2026-03-20 | 3810 |  | 7 day week with NGT | 8018762 |
| 3820 | 37400.37600.39800.42800.43700.76900.692300 | Aluminium Door Widnow Fixing | 15d | 2026-05-05 | 2026-05-19 | 3818, 3819 |  | 7 day week with NGT | 8018772 |
| 3821 | 37400.37600.39800.42800.43700.76900.692400 | Rehung Door Fixing | 8d | 2026-05-20 | 2026-05-27 | 3820 |  | 7 day week with NGT | 8018782 |
| 3822 | 37400.37600.39800.42800.43700.76900.692500 | Putty Primer coat | 6d | 2026-05-28 | 2026-06-02 | 3821 |  | 7 day week with NGT | 8018792 |
| 3823 | 37400.37600.39800.42800.43700.76900.692600 | Painting First Coat | 12d | 2026-06-03 | 2026-06-14 | 3812, 3814, 3821, 3822 |  | 7 day week with NGT | 8018802 |
| 3824 | 37400.37600.39800.42800.43700.76900.692700 | False ceiling works | 10d | 2026-07-13 | 2026-07-22 | 3808, 3823 |  | 7 day week with NGT | 8018812 |
| 3825 | 37400.37600.39800.42800.43700.77000 | **Sixth Floor** | 139d | 2026-03-16 | 2026-08-01 |  | start no earlier than 2026-03-16 | 7 day week with NGT | 7998552 |
| 3826 | 37400.37600.39800.42800.43700.77000.692800 | Blockwork | 8d | 2026-03-16 | 2026-03-23 | 3723, 3810 |  | 7 day week with NGT | 8018822 |
| 3827 | 37400.37600.39800.42800.43700.77000.692900 | Internal Plumbing Works | 6d | 2026-03-24 | 2026-03-29 | 3826 |  | 7 day week with NGT | 8018832 |
| 3828 | 37400.37600.39800.42800.43700.77000.693000 | Waterproofing Works | 10d | 2026-03-26 | 2026-04-04 | 3827SS+2d |  | 7 day week with NGT | 8018842 |
| 3829 | 37400.37600.39800.42800.43700.77000.693100 | PCC | 8d | 2026-04-07 | 2026-04-14 | 3828, 3831SS |  | 7 day week with NGT | 8018852 |
| 3830 | 37400.37600.39800.42800.43700.77000.693200 | Electrical Wiring works | 12d | 2026-03-26 | 2026-04-06 | 3828SS |  | 7 day week with NGT | 8018862 |
| 3831 | 37400.37600.39800.42800.43700.77000.693300 | Internal Plaster Works | 9d | 2026-04-07 | 2026-04-15 | 3827, 3828, 3830 |  | 7 day week with NGT | 8018872 |
| 3832 | 37400.37600.39800.42800.43700.77000.693400 | Toilet Dado Works | 9d | 2026-04-16 | 2026-04-24 | 3827, 3828, 3830, 3831 |  | 7 day week with NGT | 8018882 |
| 3833 | 37400.37600.39800.42800.43700.77000.693500 | Toilet Flooring Works | 7d | 2026-04-25 | 2026-05-01 | 3829, 3832 |  | 7 day week with NGT | 8018892 |
| 3834 | 37400.37600.39800.42800.43700.77000.693600 | Living Dining Flooring | 15d | 2026-05-02 | 2026-05-16 | 3833 |  | 7 day week with NGT | 8018902 |
| 3835 | 37400.37600.39800.42800.43700.77000.693700 | Temporary Door Fixing | 9d | 2026-03-24 | 2026-04-01 | 3826 |  | 7 day week with NGT | 8018912 |
| 3836 | 37400.37600.39800.42800.43700.77000.693800 | Aluminium Door Widnow Fixing | 15d | 2026-05-17 | 2026-05-31 | 3834, 3835 |  | 7 day week with NGT | 8018922 |
| 3837 | 37400.37600.39800.42800.43700.77000.693900 | Rehung Door Fixing | 8d | 2026-06-01 | 2026-06-08 | 3836 |  | 7 day week with NGT | 8018932 |
| 3838 | 37400.37600.39800.42800.43700.77000.694000 | Putty Primer coat | 6d | 2026-06-09 | 2026-06-14 | 3837 |  | 7 day week with NGT | 8018942 |
| 3839 | 37400.37600.39800.42800.43700.77000.694100 | Painting First Coat | 12d | 2026-06-15 | 2026-06-26 | 3828, 3830, 3837, 3838 |  | 7 day week with NGT | 8018952 |
| 3840 | 37400.37600.39800.42800.43700.77000.694200 | False ceiling works | 10d | 2026-07-23 | 2026-08-01 | 3824, 3839 |  | 7 day week with NGT | 8018962 |

| ID | WBS | Task | Duration | Start | Finish | Predecessors | Constraint | Calendar | Unique_Task_ID |
| --- | --- | --- | --- | --- | --- | --- | --- | --- | --- |
| 3841 | 37400.37600.39800.42800.43700.77100 | **Seventh Floor** | 137d | 2026-03-28 | 2026-08-11 |  | start no earlier than 2026-03-28 | 7 day week with NGT | 7998562 |
| 3842 | 37400.37600.39800.42800.43700.77100.694300 | Blockwork | 8d | 2026-03-28 | 2026-04-04 | 3724, 3826 |  | 7 day week with NGT | 8018972 |
| 3843 | 37400.37600.39800.42800.43700.77100.694400 | Internal Plumbing Works | 6d | 2026-04-05 | 2026-04-10 | 3842 |  | 7 day week with NGT | 8018982 |
| 3844 | 37400.37600.39800.42800.43700.77100.694500 | Waterproofing Works | 10d | 2026-04-07 | 2026-04-16 | 3843SS+2d |  | 7 day week with NGT | 8018992 |
| 3845 | 37400.37600.39800.42800.43700.77100.694600 | PCC | 8d | 2026-04-19 | 2026-04-26 | 3844, 3847SS |  | 7 day week with NGT | 8019002 |
| 3846 | 37400.37600.39800.42800.43700.77100.694700 | Electrical Wiring works | 12d | 2026-04-07 | 2026-04-18 | 3844SS |  | 7 day week with NGT | 8019012 |
| 3847 | 37400.37600.39800.42800.43700.77100.694800 | Internal Plaster Works | 9d | 2026-04-19 | 2026-04-27 | 3843, 3844, 3846 |  | 7 day week with NGT | 8019022 |
| 3848 | 37400.37600.39800.42800.43700.77100.694900 | Toilet Dado Works | 9d | 2026-04-28 | 2026-05-06 | 3843, 3844, 3846, 3847 |  | 7 day week with NGT | 8019032 |
| 3849 | 37400.37600.39800.42800.43700.77100.695000 | Toilet Flooring Works | 7d | 2026-05-07 | 2026-05-13 | 3845, 3848 |  | 7 day week with NGT | 8019042 |
| 3850 | 37400.37600.39800.42800.43700.77100.695100 | Living Dining Flooring | 15d | 2026-05-14 | 2026-05-28 | 3849 |  | 7 day week with NGT | 8019052 |
| 3851 | 37400.37600.39800.42800.43700.77100.695200 | Temporary Door Fixing | 9d | 2026-04-05 | 2026-04-13 | 3842 |  | 7 day week with NGT | 8019062 |
| 3852 | 37400.37600.39800.42800.43700.77100.695300 | Aluminium Door Widnow Fixing | 15d | 2026-05-29 | 2026-06-12 | 3850, 3851 |  | 7 day week with NGT | 8019072 |
| 3853 | 37400.37600.39800.42800.43700.77100.695400 | Rehung Door Fixing | 8d | 2026-06-13 | 2026-06-20 | 3852 |  | 7 day week with NGT | 8019082 |
| 3854 | 37400.37600.39800.42800.43700.77100.695500 | Putty Primer coat | 6d | 2026-06-21 | 2026-06-26 | 3853 |  | 7 day week with NGT | 8019092 |
| 3855 | 37400.37600.39800.42800.43700.77100.695600 | Painting First Coat | 12d | 2026-06-27 | 2026-07-08 | 3844, 3846, 3853, 3854 |  | 7 day week with NGT | 8019102 |
| 3856 | 37400.37600.39800.42800.43700.77100.695700 | False ceiling works | 10d | 2026-08-02 | 2026-08-11 | 3840, 3855 |  | 7 day week with NGT | 8019112 |
| 3857 | 37400.37600.39800.42800.43700.77200 | **Eighth Floor** | 135d | 2026-04-09 | 2026-08-21 |  | start no earlier than 2026-04-09 | 7 day week with NGT | 7998572 |
| 3858 | 37400.37600.39800.42800.43700.77200.695800 | Blockwork | 8d | 2026-04-09 | 2026-04-16 | 3725, 3842 |  | 7 day week with NGT | 8019122 |
| 3859 | 37400.37600.39800.42800.43700.77200.695900 | Internal Plumbing Works | 6d | 2026-04-17 | 2026-04-22 | 3858 |  | 7 day week with NGT | 8019132 |
| 3860 | 37400.37600.39800.42800.43700.77200.696000 | Waterproofing Works | 10d | 2026-04-19 | 2026-04-28 | 3859SS+2d |  | 7 day week with NGT | 8019142 |
| 3861 | 37400.37600.39800.42800.43700.77200.696100 | PCC | 8d | 2026-05-01 | 2026-05-08 | 3860, 3863SS |  | 7 day week with NGT | 8019152 |
| 3862 | 37400.37600.39800.42800.43700.77200.696200 | Electrical Wiring works | 12d | 2026-04-19 | 2026-04-30 | 3860SS |  | 7 day week with NGT | 8019162 |
| 3863 | 37400.37600.39800.42800.43700.77200.696300 | Internal Plaster Works | 9d | 2026-05-01 | 2026-05-09 | 3859, 3860, 3862 |  | 7 day week with NGT | 8019172 |
| 3864 | 37400.37600.39800.42800.43700.77200.696400 | Toilet Dado Works | 9d | 2026-05-10 | 2026-05-18 | 3859, 3860, 3862, 3863 |  | 7 day week with NGT | 8019182 |
| 3865 | 37400.37600.39800.42800.43700.77200.696500 | Toilet Flooring Works | 7d | 2026-05-19 | 2026-05-25 | 3861, 3864 |  | 7 day week with NGT | 8019192 |
| 3866 | 37400.37600.39800.42800.43700.77200.696600 | Living Dining Flooring | 15d | 2026-05-26 | 2026-06-09 | 3865 |  | 7 day week with NGT | 8019202 |
| 3867 | 37400.37600.39800.42800.43700.77200.696700 | Temporary Door Fixing | 9d | 2026-04-17 | 2026-04-25 | 3858 |  | 7 day week with NGT | 8019212 |
| 3868 | 37400.37600.39800.42800.43700.77200.696800 | Aluminium Door Widnow Fixing | 15d | 2026-06-10 | 2026-06-24 | 3866, 3867 |  | 7 day week with NGT | 8019222 |
| 3869 | 37400.37600.39800.42800.43700.77200.696900 | Rehung Door Fixing | 8d | 2026-06-25 | 2026-07-02 | 3868 |  | 7 day week with NGT | 8019232 |
| 3870 | 37400.37600.39800.42800.43700.77200.697000 | Putty Primer coat | 6d | 2026-07-03 | 2026-07-08 | 3869 |  | 7 day week with NGT | 8019242 |
| 3871 | 37400.37600.39800.42800.43700.77200.697100 | Painting First Coat | 12d | 2026-07-09 | 2026-07-20 | 3860, 3862, 3869, 3870 |  | 7 day week with NGT | 8019252 |
| 3872 | 37400.37600.39800.42800.43700.77200.697200 | False ceiling works | 10d | 2026-08-12 | 2026-08-21 | 3856, 3871 |  | 7 day week with NGT | 8019262 |

| ID | WBS | Task | Duration | Start | Finish | Predecessors | Constraint | Calendar | Unique_Task_ID |
| --- | --- | --- | --- | --- | --- | --- | --- | --- | --- |
| 3873 | 37400.37600.39800.42800.43700.77300 | **Ninth Floor** | 133d | 2026-04-21 | 2026-08-31 |  | start no earlier than 2026-04-21 | 7 day week with NGT | 7998582 |
| 3874 | 37400.37600.39800.42800.43700.77300.697300 | Blockwork | 8d | 2026-04-21 | 2026-04-28 | 3726, 3858 |  | 7 day week with NGT | 8019272 |
| 3875 | 37400.37600.39800.42800.43700.77300.697400 | Internal Plumbing Works | 6d | 2026-04-29 | 2026-05-04 | 3874 |  | 7 day week with NGT | 8019282 |
| 3876 | 37400.37600.39800.42800.43700.77300.697500 | Waterproofing Works | 10d | 2026-05-01 | 2026-05-10 | 3875SS+2d |  | 7 day week with NGT | 8019292 |
| 3877 | 37400.37600.39800.42800.43700.77300.697600 | PCC | 8d | 2026-05-13 | 2026-05-20 | 3876, 3879SS |  | 7 day week with NGT | 8019302 |
| 3878 | 37400.37600.39800.42800.43700.77300.697700 | Electrical Wiring works | 12d | 2026-05-01 | 2026-05-12 | 3876SS |  | 7 day week with NGT | 8019312 |
| 3879 | 37400.37600.39800.42800.43700.77300.697800 | Internal Plaster Works | 9d | 2026-05-13 | 2026-05-21 | 3875, 3876, 3878 |  | 7 day week with NGT | 8019322 |
| 3880 | 37400.37600.39800.42800.43700.77300.697900 | Toilet Dado Works | 9d | 2026-05-22 | 2026-05-30 | 3875, 3876, 3878, 3879 |  | 7 day week with NGT | 8019332 |
| 3881 | 37400.37600.39800.42800.43700.77300.698000 | Toilet Flooring Works | 7d | 2026-05-31 | 2026-06-06 | 3877, 3880 |  | 7 day week with NGT | 8019342 |
| 3882 | 37400.37600.39800.42800.43700.77300.698100 | Living Dining Flooring | 15d | 2026-06-07 | 2026-06-21 | 3881 |  | 7 day week with NGT | 8019352 |
| 3883 | 37400.37600.39800.42800.43700.77300.698200 | Temporary Door Fixing | 9d | 2026-04-29 | 2026-05-07 | 3874 |  | 7 day week with NGT | 8019362 |
| 3884 | 37400.37600.39800.42800.43700.77300.698300 | Aluminium Door Widnow Fixing | 15d | 2026-06-22 | 2026-07-06 | 3882, 3883 |  | 7 day week with NGT | 8019372 |
| 3885 | 37400.37600.39800.42800.43700.77300.698400 | Rehung Door Fixing | 8d | 2026-07-07 | 2026-07-14 | 3884 |  | 7 day week with NGT | 8019382 |
| 3886 | 37400.37600.39800.42800.43700.77300.698500 | Putty Primer coat | 6d | 2026-07-15 | 2026-07-20 | 3885 |  | 7 day week with NGT | 8019392 |
| 3887 | 37400.37600.39800.42800.43700.77300.698600 | Painting First Coat | 12d | 2026-07-21 | 2026-08-01 | 3876, 3878, 3885, 3886 |  | 7 day week with NGT | 8019402 |
| 3888 | 37400.37600.39800.42800.43700.77300.698700 | False ceiling works | 10d | 2026-08-22 | 2026-08-31 | 3872, 3887 |  | 7 day week with NGT | 8019412 |
| 3889 | 37400.37600.39800.42800.43700.77400 | **Tenth Floor** | 131d | 2026-05-03 | 2026-09-10 |  | start no earlier than 2026-05-03 | 7 day week with NGT | 7998592 |
| 3890 | 37400.37600.39800.42800.43700.77400.698800 | Blockwork | 8d | 2026-05-03 | 2026-05-10 | 3727, 3874 |  | 7 day week with NGT | 8019422 |
| 3891 | 37400.37600.39800.42800.43700.77400.698900 | Internal Plumbing Works | 6d | 2026-05-11 | 2026-05-16 | 3890 |  | 7 day week with NGT | 8019432 |
| 3892 | 37400.37600.39800.42800.43700.77400.699000 | Waterproofing Works | 10d | 2026-05-13 | 2026-05-22 | 3891SS+2d |  | 7 day week with NGT | 8019442 |
| 3893 | 37400.37600.39800.42800.43700.77400.699100 | PCC | 8d | 2026-05-25 | 2026-06-01 | 3892, 3895SS |  | 7 day week with NGT | 8019452 |
| 3894 | 37400.37600.39800.42800.43700.77400.699200 | Electrical Wiring works | 12d | 2026-05-13 | 2026-05-24 | 3892SS |  | 7 day week with NGT | 8019462 |
| 3895 | 37400.37600.39800.42800.43700.77400.699300 | Internal Plaster Works | 9d | 2026-05-25 | 2026-06-02 | 3891, 3892, 3894 |  | 7 day week with NGT | 8019472 |
| 3896 | 37400.37600.39800.42800.43700.77400.699400 | Toilet Dado Works | 9d | 2026-06-03 | 2026-06-11 | 3891, 3892, 3894, 3895 |  | 7 day week with NGT | 8019482 |
| 3897 | 37400.37600.39800.42800.43700.77400.699500 | Toilet Flooring Works | 7d | 2026-06-12 | 2026-06-18 | 3893, 3896 |  | 7 day week with NGT | 8019492 |
| 3898 | 37400.37600.39800.42800.43700.77400.699600 | Living Dining Flooring | 15d | 2026-06-19 | 2026-07-03 | 3897 |  | 7 day week with NGT | 8019502 |
| 3899 | 37400.37600.39800.42800.43700.77400.699700 | Temporary Door Fixing | 9d | 2026-05-11 | 2026-05-19 | 3890 |  | 7 day week with NGT | 8019512 |
| 3900 | 37400.37600.39800.42800.43700.77400.699800 | Aluminium Door Widnow Fixing | 15d | 2026-07-04 | 2026-07-18 | 3898, 3899 |  | 7 day week with NGT | 8019522 |
| 3901 | 37400.37600.39800.42800.43700.77400.699900 | Rehung Door Fixing | 8d | 2026-07-19 | 2026-07-26 | 3900 |  | 7 day week with NGT | 8019532 |
| 3902 | 37400.37600.39800.42800.43700.77400.700000 | Putty Primer coat | 6d | 2026-07-27 | 2026-08-01 | 3901 |  | 7 day week with NGT | 8019542 |
| 3903 | 37400.37600.39800.42800.43700.77400.700100 | Painting First Coat | 12d | 2026-08-02 | 2026-08-13 | 3892, 3894, 3901, 3902 |  | 7 day week with NGT | 8019552 |
| 3904 | 37400.37600.39800.42800.43700.77400.700200 | False ceiling works | 10d | 2026-09-01 | 2026-09-10 | 3888, 3903 |  | 7 day week with NGT | 8019562 |

| ID | WBS | Task | Duration | Start | Finish | Predecessors | Constraint | Calendar | Unique_Task_ID |
| --- | --- | --- | --- | --- | --- | --- | --- | --- | --- |
| 3905 | 37400.37600.39800.42800.43700.77500 | **Eleventh Floor** | 129d | 2026-05-15 | 2026-09-20 |  | start no earlier than 2026-05-15 | 7 day week with NGT | 7998602 |
| 3906 | 37400.37600.39800.42800.43700.77500.700300 | Blockwork | 8d | 2026-05-15 | 2026-05-22 | 3728, 3890 |  | 7 day week with NGT | 8019572 |
| 3907 | 37400.37600.39800.42800.43700.77500.700400 | Internal Plumbing Works | 6d | 2026-05-23 | 2026-05-28 | 3906 |  | 7 day week with NGT | 8019582 |
| 3908 | 37400.37600.39800.42800.43700.77500.700500 | Waterproofing Works | 10d | 2026-05-25 | 2026-06-03 | 3907SS+2d |  | 7 day week with NGT | 8019592 |
| 3909 | 37400.37600.39800.42800.43700.77500.700600 | PCC | 8d | 2026-06-06 | 2026-06-13 | 3908, 3911SS |  | 7 day week with NGT | 8019602 |
| 3910 | 37400.37600.39800.42800.43700.77500.700700 | Electrical Wiring works | 12d | 2026-05-25 | 2026-06-05 | 3908SS |  | 7 day week with NGT | 8019612 |
| 3911 | 37400.37600.39800.42800.43700.77500.700800 | Internal Plaster Works | 9d | 2026-06-06 | 2026-06-14 | 3907, 3908, 3910 |  | 7 day week with NGT | 8019622 |
| 3912 | 37400.37600.39800.42800.43700.77500.700900 | Toilet Dado Works | 9d | 2026-06-15 | 2026-06-23 | 3907, 3908, 3910, 3911 |  | 7 day week with NGT | 8019632 |
| 3913 | 37400.37600.39800.42800.43700.77500.701000 | Toilet Flooring Works | 7d | 2026-06-24 | 2026-06-30 | 3909, 3912 |  | 7 day week with NGT | 8019642 |
| 3914 | 37400.37600.39800.42800.43700.77500.701100 | Living Dining Flooring | 15d | 2026-07-01 | 2026-07-15 | 3913 |  | 7 day week with NGT | 8019652 |
| 3915 | 37400.37600.39800.42800.43700.77500.701200 | Temporary Door Fixing | 9d | 2026-05-23 | 2026-05-31 | 3906 |  | 7 day week with NGT | 8019662 |
| 3916 | 37400.37600.39800.42800.43700.77500.701300 | Aluminium Door Widnow Fixing | 15d | 2026-07-16 | 2026-07-30 | 3914, 3915 |  | 7 day week with NGT | 8019672 |
| 3917 | 37400.37600.39800.42800.43700.77500.701400 | Rehung Door Fixing | 8d | 2026-07-31 | 2026-08-07 | 3916 |  | 7 day week with NGT | 8019682 |
| 3918 | 37400.37600.39800.42800.43700.77500.701500 | Putty Primer coat | 6d | 2026-08-08 | 2026-08-13 | 3917 |  | 7 day week with NGT | 8019692 |
| 3919 | 37400.37600.39800.42800.43700.77500.701600 | Painting First Coat | 12d | 2026-08-14 | 2026-08-25 | 3908, 3910, 3917, 3918 |  | 7 day week with NGT | 8019702 |
| 3920 | 37400.37600.39800.42800.43700.77500.701700 | False ceiling works | 10d | 2026-09-11 | 2026-09-20 | 3904, 3919 |  | 7 day week with NGT | 8019712 |
| 3921 | 37400.37600.39800.42800.43700.77600 | **Twelth Floor** | 113d | 2026-06-20 | 2026-10-10 |  | start no earlier than 2026-06-20 | 7 day week with NGT | 7998612 |
| 3922 | 37400.37600.39800.42800.43700.77600.701800 | Blockwork | 8d | 2026-06-20 | 2026-06-27 | 3731 |  | 7 day week with NGT | 8019722 |
| 3923 | 37400.37600.39800.42800.43700.77600.701900 | Internal Plumbing Works | 6d | 2026-06-28 | 2026-07-03 | 3922 |  | 7 day week with NGT | 8019732 |
| 3924 | 37400.37600.39800.42800.43700.77600.702000 | Waterproofing Works | 10d | 2026-06-30 | 2026-07-09 | 3923SS+2d |  | 7 day week with NGT | 8019742 |
| 3925 | 37400.37600.39800.42800.43700.77600.702100 | PCC | 8d | 2026-07-12 | 2026-07-19 | 3924, 3927SS |  | 7 day week with NGT | 8019752 |
| 3926 | 37400.37600.39800.42800.43700.77600.702200 | Electrical Wiring works | 12d | 2026-06-30 | 2026-07-11 | 3924SS |  | 7 day week with NGT | 8019762 |
| 3927 | 37400.37600.39800.42800.43700.77600.702300 | Internal Plaster Works | 9d | 2026-07-12 | 2026-07-20 | 3923, 3924, 3926 |  | 7 day week with NGT | 8019772 |
| 3928 | 37400.37600.39800.42800.43700.77600.702400 | Toilet Dado Works | 9d | 2026-07-21 | 2026-07-29 | 3923, 3924, 3926, 3927 |  | 7 day week with NGT | 8019782 |
| 3929 | 37400.37600.39800.42800.43700.77600.702500 | Toilet Flooring Works | 7d | 2026-07-30 | 2026-08-05 | 3925, 3928 |  | 7 day week with NGT | 8019792 |
| 3930 | 37400.37600.39800.42800.43700.77600.702600 | Living Dining Flooring | 15d | 2026-08-06 | 2026-08-20 | 3929 |  | 7 day week with NGT | 8019802 |
| 3931 | 37400.37600.39800.42800.43700.77600.702700 | Temporary Door Fixing | 9d | 2026-06-28 | 2026-07-06 | 3922 |  | 7 day week with NGT | 8019812 |
| 3932 | 37400.37600.39800.42800.43700.77600.702800 | Aluminium Door Widnow Fixing | 15d | 2026-08-21 | 2026-09-04 | 3930, 3931 |  | 7 day week with NGT | 8019822 |
| 3933 | 37400.37600.39800.42800.43700.77600.702900 | Rehung Door Fixing | 8d | 2026-09-05 | 2026-09-12 | 3932 |  | 7 day week with NGT | 8019832 |
| 3934 | 37400.37600.39800.42800.43700.77600.703000 | Putty Primer coat | 6d | 2026-09-13 | 2026-09-18 | 3933 |  | 7 day week with NGT | 8019842 |
| 3935 | 37400.37600.39800.42800.43700.77600.703100 | Painting First Coat | 12d | 2026-09-19 | 2026-09-30 | 3924, 3926, 3933, 3934 |  | 7 day week with NGT | 8019852 |
| 3936 | 37400.37600.39800.42800.43700.77600.703200 | False ceiling works | 10d | 2026-10-01 | 2026-10-10 | 3920, 3935 |  | 7 day week with NGT | 8019862 |

| ID | WBS | Task | Duration | Start | Finish | Predecessors | Constraint | Calendar | Unique_Task_ID |
| --- | --- | --- | --- | --- | --- | --- | --- | --- | --- |
| 3937 | 37400.37600.39800.42800.43700.77700 | **Thirteen Floor** | 113d | 2026-07-02 | 2026-10-22 |  | start no earlier than 2026-07-02 | 7 day week with NGT | 7998622 |
| 3938 | 37400.37600.39800.42800.43700.77700.703300 | Blockwork | 8d | 2026-07-02 | 2026-07-09 | 3732, 3922 |  | 7 day week with NGT | 8019872 |
| 3939 | 37400.37600.39800.42800.43700.77700.703400 | Internal Plumbing Works | 6d | 2026-07-10 | 2026-07-15 | 3938 |  | 7 day week with NGT | 8019882 |
| 3940 | 37400.37600.39800.42800.43700.77700.703500 | Waterproofing Works | 10d | 2026-07-12 | 2026-07-21 | 3939SS+2d |  | 7 day week with NGT | 8019892 |
| 3941 | 37400.37600.39800.42800.43700.77700.703600 | PCC | 8d | 2026-07-24 | 2026-07-31 | 3940, 3943SS |  | 7 day week with NGT | 8019902 |
| 3942 | 37400.37600.39800.42800.43700.77700.703700 | Electrical Wiring works | 12d | 2026-07-12 | 2026-07-23 | 3940SS |  | 7 day week with NGT | 8019912 |
| 3943 | 37400.37600.39800.42800.43700.77700.703800 | Internal Plaster Works | 9d | 2026-07-24 | 2026-08-01 | 3939, 3940, 3942 |  | 7 day week with NGT | 8019922 |
| 3944 | 37400.37600.39800.42800.43700.77700.703900 | Toilet Dado Works | 9d | 2026-08-02 | 2026-08-10 | 3939, 3940, 3942, 3943 |  | 7 day week with NGT | 8019932 |
| 3945 | 37400.37600.39800.42800.43700.77700.704000 | Toilet Flooring Works | 7d | 2026-08-11 | 2026-08-17 | 3941, 3944 |  | 7 day week with NGT | 8019942 |
| 3946 | 37400.37600.39800.42800.43700.77700.704100 | Living Dining Flooring | 15d | 2026-08-18 | 2026-09-01 | 3945 |  | 7 day week with NGT | 8019952 |
| 3947 | 37400.37600.39800.42800.43700.77700.704200 | Temporary Door Fixing | 9d | 2026-07-10 | 2026-07-18 | 3938 |  | 7 day week with NGT | 8019962 |
| 3948 | 37400.37600.39800.42800.43700.77700.704300 | Aluminium Door Widnow Fixing | 15d | 2026-09-02 | 2026-09-16 | 3946, 3947 |  | 7 day week with NGT | 8019972 |
| 3949 | 37400.37600.39800.42800.43700.77700.704400 | Rehung Door Fixing | 8d | 2026-09-17 | 2026-09-24 | 3948 |  | 7 day week with NGT | 8019982 |
| 3950 | 37400.37600.39800.42800.43700.77700.704500 | Putty Primer coat | 6d | 2026-09-25 | 2026-09-30 | 3949 |  | 7 day week with NGT | 8019992 |
| 3951 | 37400.37600.39800.42800.43700.77700.704600 | Painting First Coat | 12d | 2026-10-01 | 2026-10-12 | 3940, 3942, 3949, 3950 |  | 7 day week with NGT | 8020002 |
| 3952 | 37400.37600.39800.42800.43700.77700.704700 | False ceiling works | 10d | 2026-10-13 | 2026-10-22 | 3936, 3951 |  | 7 day week with NGT | 8020012 |
| 3953 | 37400.37600.39800.42800.43700.77800 | **Fourteen Floor** | 113d | 2026-07-14 | 2026-12-18 |  | start no earlier than 2026-07-14 | 7 day week with NGT | 7998632 |
| 3954 | 37400.37600.39800.42800.43700.77800.704800 | Blockwork | 8d | 2026-07-14 | 2026-07-21 | 3733, 3938 |  | 7 day week with NGT | 8020022 |
| 3955 | 37400.37600.39800.42800.43700.77800.704900 | Internal Plumbing Works | 6d | 2026-07-22 | 2026-07-27 | 3954 |  | 7 day week with NGT | 8020032 |
| 3956 | 37400.37600.39800.42800.43700.77800.705000 | Waterproofing Works | 10d | 2026-07-24 | 2026-08-02 | 3955SS+2d |  | 7 day week with NGT | 8020042 |
| 3957 | 37400.37600.39800.42800.43700.77800.705100 | PCC | 8d | 2026-08-05 | 2026-08-12 | 3956, 3959SS |  | 7 day week with NGT | 8020052 |
| 3958 | 37400.37600.39800.42800.43700.77800.705200 | Electrical Wiring works | 12d | 2026-07-24 | 2026-08-04 | 3956SS |  | 7 day week with NGT | 8020062 |
| 3959 | 37400.37600.39800.42800.43700.77800.705300 | Internal Plaster Works | 9d | 2026-08-05 | 2026-08-13 | 3955, 3956, 3958 |  | 7 day week with NGT | 8020072 |
| 3960 | 37400.37600.39800.42800.43700.77800.705400 | Toilet Dado Works | 9d | 2026-08-14 | 2026-08-22 | 3955, 3956, 3958, 3959 |  | 7 day week with NGT | 8020082 |
| 3961 | 37400.37600.39800.42800.43700.77800.705500 | Toilet Flooring Works | 7d | 2026-08-23 | 2026-08-29 | 3957, 3960 |  | 7 day week with NGT | 8020092 |
| 3962 | 37400.37600.39800.42800.43700.77800.705600 | Living Dining Flooring | 15d | 2026-08-30 | 2026-09-13 | 3961 |  | 7 day week with NGT | 8020102 |
| 3963 | 37400.37600.39800.42800.43700.77800.705700 | Temporary Door Fixing | 9d | 2026-07-22 | 2026-07-30 | 3954 |  | 7 day week with NGT | 8020112 |
| 3964 | 37400.37600.39800.42800.43700.77800.705800 | Aluminium Door Widnow Fixing | 15d | 2026-09-14 | 2026-09-28 | 3962, 3963 |  | 7 day week with NGT | 8020122 |
| 3965 | 37400.37600.39800.42800.43700.77800.705900 | Rehung Door Fixing | 8d | 2026-09-29 | 2026-10-06 | 3964 |  | 7 day week with NGT | 8020132 |
| 3966 | 37400.37600.39800.42800.43700.77800.706000 | Putty Primer coat | 6d | 2026-10-07 | 2026-10-12 | 3965 |  | 7 day week with NGT | 8020142 |
| 3967 | 37400.37600.39800.42800.43700.77800.706100 | Painting First Coat | 12d | 2026-10-13 | 2026-10-24 | 3956, 3958, 3965, 3966 |  | 7 day week with NGT | 8020152 |
| 3968 | 37400.37600.39800.42800.43700.77800.706200 | False ceiling works | 10d | 2026-10-25 | 2026-12-18 | 3952, 3967 |  | 7 day week with NGT | 8020162 |

| ID | WBS | Task | Duration | Start | Finish | Predecessors | Constraint | Calendar | Unique_Task_ID |
| --- | --- | --- | --- | --- | --- | --- | --- | --- | --- |
| 3969 | 37400.37600.39800.42800.43700.77900 | **Fifteen Floor** | 113d | 2026-07-26 | 2026-12-30 |  | start no earlier than 2026-07-26 | 7 day week with NGT | 7998642 |
| 3970 | 37400.37600.39800.42800.43700.77900.706300 | Blockwork | 8d | 2026-07-26 | 2026-08-02 | 3734, 3954 |  | 7 day week with NGT | 8020172 |
| 3971 | 37400.37600.39800.42800.43700.77900.706400 | Internal Plumbing Works | 6d | 2026-08-03 | 2026-08-08 | 3970 |  | 7 day week with NGT | 8020182 |
| 3972 | 37400.37600.39800.42800.43700.77900.706500 | Waterproofing Works | 10d | 2026-08-05 | 2026-08-14 | 3971SS+2d |  | 7 day week with NGT | 8020192 |
| 3973 | 37400.37600.39800.42800.43700.77900.706600 | PCC | 8d | 2026-08-17 | 2026-08-24 | 3972, 3975SS |  | 7 day week with NGT | 8020202 |
| 3974 | 37400.37600.39800.42800.43700.77900.706700 | Electrical Wiring works | 12d | 2026-08-05 | 2026-08-16 | 3972SS |  | 7 day week with NGT | 8020212 |
| 3975 | 37400.37600.39800.42800.43700.77900.706800 | Internal Plaster Works | 9d | 2026-08-17 | 2026-08-25 | 3971, 3972, 3974 |  | 7 day week with NGT | 8020222 |
| 3976 | 37400.37600.39800.42800.43700.77900.706900 | Toilet Dado Works | 9d | 2026-08-26 | 2026-09-03 | 3971, 3972, 3974, 3975 |  | 7 day week with NGT | 8020232 |
| 3977 | 37400.37600.39800.42800.43700.77900.707000 | Toilet Flooring Works | 7d | 2026-09-04 | 2026-09-10 | 3973, 3976 |  | 7 day week with NGT | 8020242 |
| 3978 | 37400.37600.39800.42800.43700.77900.707100 | Living Dining Flooring | 15d | 2026-09-11 | 2026-09-25 | 3977 |  | 7 day week with NGT | 8020252 |
| 3979 | 37400.37600.39800.42800.43700.77900.707200 | Temporary Door Fixing | 9d | 2026-08-03 | 2026-08-11 | 3970 |  | 7 day week with NGT | 8020262 |
| 3980 | 37400.37600.39800.42800.43700.77900.707300 | Aluminium Door Widnow Fixing | 15d | 2026-09-26 | 2026-10-10 | 3978, 3979 |  | 7 day week with NGT | 8020272 |
| 3981 | 37400.37600.39800.42800.43700.77900.707400 | Rehung Door Fixing | 8d | 2026-10-11 | 2026-10-18 | 3980 |  | 7 day week with NGT | 8020282 |
| 3982 | 37400.37600.39800.42800.43700.77900.707500 | Putty Primer coat | 6d | 2026-10-19 | 2026-10-24 | 3981 |  | 7 day week with NGT | 8020292 |
| 3983 | 37400.37600.39800.42800.43700.77900.707600 | Painting First Coat | 12d | 2026-10-25 | 2026-12-20 | 3972, 3974, 3981, 3982 |  | 7 day week with NGT | 8020302 |
| 3984 | 37400.37600.39800.42800.43700.77900.707700 | False ceiling works | 10d | 2026-12-21 | 2026-12-30 | 3968, 3983 |  | 7 day week with NGT | 8020312 |
| 3985 | 37400.37600.39800.42800.43700.78000 | **Sixteen Floor** | 111d | 2026-08-07 | 2027-01-09 |  | start no earlier than 2026-08-07 | 7 day week with NGT | 7998652 |
| 3986 | 37400.37600.39800.42800.43700.78000.707800 | Blockwork | 8d | 2026-08-07 | 2026-08-14 | 3735, 3970 |  | 7 day week with NGT | 8020322 |
| 3987 | 37400.37600.39800.42800.43700.78000.707900 | Internal Plumbing Works | 6d | 2026-08-15 | 2026-08-20 | 3986 |  | 7 day week with NGT | 8020332 |
| 3988 | 37400.37600.39800.42800.43700.78000.708000 | Waterproofing Works | 10d | 2026-08-17 | 2026-08-26 | 3987SS+2d |  | 7 day week with NGT | 8020342 |
| 3989 | 37400.37600.39800.42800.43700.78000.708100 | PCC | 8d | 2026-08-29 | 2026-09-05 | 3988, 3991SS |  | 7 day week with NGT | 8020352 |
| 3990 | 37400.37600.39800.42800.43700.78000.708200 | Electrical Wiring works | 12d | 2026-08-17 | 2026-08-28 | 3988SS |  | 7 day week with NGT | 8020362 |
| 3991 | 37400.37600.39800.42800.43700.78000.708300 | Internal Plaster Works | 9d | 2026-08-29 | 2026-09-06 | 3987, 3988, 3990 |  | 7 day week with NGT | 8020372 |
| 3992 | 37400.37600.39800.42800.43700.78000.708400 | Toilet Dado Works | 9d | 2026-09-07 | 2026-09-15 | 3987, 3988, 3990, 3991 |  | 7 day week with NGT | 8020382 |
| 3993 | 37400.37600.39800.42800.43700.78000.708500 | Toilet Flooring Works | 7d | 2026-09-16 | 2026-09-22 | 3989, 3992 |  | 7 day week with NGT | 8020392 |
| 3994 | 37400.37600.39800.42800.43700.78000.708600 | Living Dining Flooring | 10d | 2026-09-23 | 2026-10-02 | 3993 |  | 7 day week with NGT | 8020402 |
| 3995 | 37400.37600.39800.42800.43700.78000.708700 | Temporary Door Fixing | 5d | 2026-08-15 | 2026-08-19 | 3986 |  | 7 day week with NGT | 8020412 |
| 3996 | 37400.37600.39800.42800.43700.78000.708800 | Aluminium Door Widnow Fixing | 10d | 2026-10-03 | 2026-10-12 | 3994, 3995 |  | 7 day week with NGT | 8020422 |
| 3997 | 37400.37600.39800.42800.43700.78000.708900 | Rehung Door Fixing | 8d | 2026-10-13 | 2026-10-20 | 3996 |  | 7 day week with NGT | 8020432 |
| 3998 | 37400.37600.39800.42800.43700.78000.709000 | Putty Primer coat | 6d | 2026-10-21 | 2026-10-26 | 3997 |  | 7 day week with NGT | 8020442 |
| 3999 | 37400.37600.39800.42800.43700.78000.709100 | Painting First Coat | 12d | 2026-10-27 | 2026-12-22 | 3988, 3990, 3997, 3998 |  | 7 day week with NGT | 8020452 |
| 4000 | 37400.37600.39800.42800.43700.78000.709200 | False ceiling works | 10d | 2026-12-31 | 2027-01-09 | 3984, 3999 |  | 7 day week with NGT | 8020462 |

| ID | WBS | Task | Duration | Start | Finish | Predecessors | Constraint | Calendar | Unique_Task_ID |
| --- | --- | --- | --- | --- | --- | --- | --- | --- | --- |
| 4001 | 37400.37600.39800.42800.43700.78100 | **Seventeen Floor** | 108.75d | 2026-08-19 | 2027-01-19 |  | start no earlier than 2026-08-19 | 7 day week with NGT | 7998662 |
| 4002 | 37400.37600.39800.42800.43700.78100.709300 | Blockwork | 7d | 2026-08-19 | 2026-08-26 | 3736FS+0.25d |  | 7 day week with NGT | 8020472 |
| 4003 | 37400.37600.39800.42800.43700.78100.709400 | Internal Plumbing Works | 5d | 2026-08-26 | 2026-08-31 | 4002 |  | 7 day week with NGT | 8020482 |
| 4004 | 37400.37600.39800.42800.43700.78100.709500 | Waterproofing Works | 7d | 2026-08-28 | 2026-09-04 | 4003SS+2d |  | 7 day week with NGT | 8020492 |
| 4005 | 37400.37600.39800.42800.43700.78100.709600 | PCC | 4d | 2026-09-04 | 2026-09-08 | 4004, 4007SS |  | 7 day week with NGT | 8020502 |
| 4006 | 37400.37600.39800.42800.43700.78100.709700 | Electrical Wiring works | 7d | 2026-08-28 | 2026-09-04 | 4004SS |  | 7 day week with NGT | 8020512 |
| 4007 | 37400.37600.39800.42800.43700.78100.709800 | Internal Plaster Works | 5d | 2026-09-04 | 2026-09-09 | 4003, 4004, 4006 |  | 7 day week with NGT | 8020522 |
| 4008 | 37400.37600.39800.42800.43700.78100.709900 | Toilet Dado Works | 7d | 2026-09-09 | 2026-09-16 | 4003, 4004, 4006, 4007 |  | 7 day week with NGT | 8020532 |
| 4009 | 37400.37600.39800.42800.43700.78100.710000 | Toilet Flooring Works | 5d | 2026-09-16 | 2026-09-21 | 4005, 4008 |  | 7 day week with NGT | 8020542 |
| 4010 | 37400.37600.39800.42800.43700.78100.710100 | Living Dining Flooring | 10d | 2026-09-21 | 2026-10-01 | 4009 |  | 7 day week with NGT | 8020552 |
| 4011 | 37400.37600.39800.42800.43700.78100.710200 | Temporary Door Fixing | 9d | 2026-08-26 | 2026-09-04 | 4002 |  | 7 day week with NGT | 8020562 |
| 4012 | 37400.37600.39800.42800.43700.78100.710300 | Aluminium Door Widnow Fixing | 15d | 2026-10-01 | 2026-10-16 | 4010, 4011 |  | 7 day week with NGT | 8020572 |
| 4013 | 37400.37600.39800.42800.43700.78100.710400 | Rehung Door Fixing | 8d | 2026-10-16 | 2026-10-24 | 4012 |  | 7 day week with NGT | 8020582 |
| 4014 | 37400.37600.39800.42800.43700.78100.710500 | Putty Primer coat | 6d | 2026-10-24 | 2026-10-30 | 4013 |  | 7 day week with NGT | 8020592 |
| 4015 | 37400.37600.39800.42800.43700.78100.710600 | Painting First Coat | 12d | 2026-10-30 | 2026-12-26 | 4004, 4006, 4013, 4014 |  | 7 day week with NGT | 8020602 |
| 4016 | 37400.37600.39800.42800.43700.78100.710700 | False ceiling works | 10d | 2027-01-10 | 2027-01-19 | 4000, 4015 |  | 7 day week with NGT | 8020612 |
| 4017 | 37400.37600.39800.42800.43700.78200 | **Eighteenth Floor** | 107d | 2026-08-31 | 2027-01-29 |  | start no earlier than 2026-08-31 | 7 day week with NGT | 7998672 |
| 4018 | 37400.37600.39800.42800.43700.78200.710800 | Blockwork | 7d | 2026-08-31 | 2026-09-06 | 3737, 4002 |  | 7 day week with NGT | 8020622 |
| 4019 | 37400.37600.39800.42800.43700.78200.710900 | Internal Plumbing Works | 5d | 2026-09-07 | 2026-09-11 | 4018 |  | 7 day week with NGT | 8020632 |
| 4020 | 37400.37600.39800.42800.43700.78200.711000 | Waterproofing Works | 7d | 2026-09-09 | 2026-09-15 | 4019SS+2d |  | 7 day week with NGT | 8020642 |
| 4021 | 37400.37600.39800.42800.43700.78200.711100 | PCC | 4d | 2026-09-16 | 2026-09-19 | 4020, 4023SS |  | 7 day week with NGT | 8020652 |
| 4022 | 37400.37600.39800.42800.43700.78200.711200 | Electrical Wiring works | 7d | 2026-09-09 | 2026-09-15 | 4020SS |  | 7 day week with NGT | 8020662 |
| 4023 | 37400.37600.39800.42800.43700.78200.711300 | Internal Plaster Works | 5d | 2026-09-16 | 2026-09-20 | 4019, 4020, 4022 |  | 7 day week with NGT | 8020672 |
| 4024 | 37400.37600.39800.42800.43700.78200.711400 | Toilet Dado Works | 7d | 2026-09-21 | 2026-09-27 | 4019, 4020, 4022, 4023 |  | 7 day week with NGT | 8020682 |
| 4025 | 37400.37600.39800.42800.43700.78200.711500 | Toilet Flooring Works | 5d | 2026-09-28 | 2026-10-02 | 4021, 4024 |  | 7 day week with NGT | 8020692 |
| 4026 | 37400.37600.39800.42800.43700.78200.711600 | Living Dining Flooring | 10d | 2026-10-03 | 2026-10-12 | 4025 |  | 7 day week with NGT | 8020702 |
| 4027 | 37400.37600.39800.42800.43700.78200.711700 | Temporary Door Fixing | 9d | 2026-09-07 | 2026-09-15 | 4018 |  | 7 day week with NGT | 8020712 |
| 4028 | 37400.37600.39800.42800.43700.78200.711800 | Aluminium Door Widnow Fixing | 15d | 2026-10-13 | 2026-10-27 | 4026, 4027 |  | 7 day week with NGT | 8020722 |
| 4029 | 37400.37600.39800.42800.43700.78200.711900 | Rehung Door Fixing | 8d | 2026-10-28 | 2026-12-19 | 4028 |  | 7 day week with NGT | 8020732 |
| 4030 | 37400.37600.39800.42800.43700.78200.712000 | Putty Primer coat | 6d | 2026-12-20 | 2026-12-25 | 4029 |  | 7 day week with NGT | 8020742 |
| 4031 | 37400.37600.39800.42800.43700.78200.712100 | Painting First Coat | 12d | 2026-12-26 | 2027-01-06 | 4020, 4022, 4029, 4030 |  | 7 day week with NGT | 8020752 |
| 4032 | 37400.37600.39800.42800.43700.78200.712200 | False ceiling works | 10d | 2027-01-20 | 2027-01-29 | 4016, 4031 |  | 7 day week with NGT | 8020762 |

| ID | WBS | Task | Duration | Start | Finish | Predecessors | Constraint | Calendar | Unique_Task_ID |
| --- | --- | --- | --- | --- | --- | --- | --- | --- | --- |
| 4033 | 37400.37600.39800.42800.43700.78300 | **Ninteenth Floor** | 105d | 2026-09-12 | 2027-02-08 |  | start no earlier than 2026-09-12 | 7 day week with NGT | 7998682 |
| 4034 | 37400.37600.39800.42800.43700.78300.712300 | Blockwork | 7d | 2026-09-12 | 2026-09-18 | 3738, 4018 |  | 7 day week with NGT | 8020772 |
| 4035 | 37400.37600.39800.42800.43700.78300.712400 | Internal Plumbing Works | 5d | 2026-09-19 | 2026-09-23 | 4034 |  | 7 day week with NGT | 8020782 |
| 4036 | 37400.37600.39800.42800.43700.78300.712500 | Waterproofing Works | 7d | 2026-09-21 | 2026-09-27 | 4035SS+2d |  | 7 day week with NGT | 8020792 |
| 4037 | 37400.37600.39800.42800.43700.78300.712600 | PCC | 4d | 2026-09-28 | 2026-10-01 | 4036, 4039SS |  | 7 day week with NGT | 8020802 |
| 4038 | 37400.37600.39800.42800.43700.78300.712700 | Electrical Wiring works | 7d | 2026-09-21 | 2026-09-27 | 4036SS |  | 7 day week with NGT | 8020812 |
| 4039 | 37400.37600.39800.42800.43700.78300.712800 | Internal Plaster Works | 5d | 2026-09-28 | 2026-10-02 | 4035, 4036, 4038 |  | 7 day week with NGT | 8020822 |
| 4040 | 37400.37600.39800.42800.43700.78300.712900 | Toilet Dado Works | 7d | 2026-10-03 | 2026-10-09 | 4035, 4036, 4038, 4039 |  | 7 day week with NGT | 8020832 |
| 4041 | 37400.37600.39800.42800.43700.78300.713000 | Toilet Flooring Works | 5d | 2026-10-10 | 2026-10-14 | 4037, 4040 |  | 7 day week with NGT | 8020842 |
| 4042 | 37400.37600.39800.42800.43700.78300.713100 | Living Dining Flooring | 10d | 2026-10-15 | 2026-10-24 | 4041 |  | 7 day week with NGT | 8020852 |
| 4043 | 37400.37600.39800.42800.43700.78300.713200 | Temporary Door Fixing | 9d | 2026-09-19 | 2026-09-27 | 4034 |  | 7 day week with NGT | 8020862 |
| 4044 | 37400.37600.39800.42800.43700.78300.713300 | Aluminium Door Widnow Fixing | 15d | 2026-10-25 | 2026-12-23 | 4042, 4043 |  | 7 day week with NGT | 8020872 |
| 4045 | 37400.37600.39800.42800.43700.78300.713400 | Rehung Door Fixing | 8d | 2026-12-24 | 2026-12-31 | 4044 |  | 7 day week with NGT | 8020882 |
| 4046 | 37400.37600.39800.42800.43700.78300.713500 | Putty Primer coat | 6d | 2027-01-01 | 2027-01-06 | 4045 |  | 7 day week with NGT | 8020892 |
| 4047 | 37400.37600.39800.42800.43700.78300.713600 | Painting First Coat | 12d | 2027-01-07 | 2027-01-18 | 4036, 4038, 4045, 4046 |  | 7 day week with NGT | 8020902 |
| 4048 | 37400.37600.39800.42800.43700.78300.713700 | False ceiling works | 10d | 2027-01-30 | 2027-02-08 | 4032, 4047 |  | 7 day week with NGT | 8020912 |
| 4049 | 37400.37600.39800.42800.43700.78400 | **Twenty Floor** | 107.75d | 2026-09-19 | 2027-02-18 |  | start no earlier than 2026-09-19 | 7 day week with NGT | 7998692 |
| 4050 | 37400.37600.39800.42800.43700.78400.713800 | Blockwork | 7d | 2026-09-19 | 2026-09-26 | 3739FF+0.25d, 4034FS+0.25d |  | 7 day week with NGT | 8020922 |
| 4051 | 37400.37600.39800.42800.43700.78400.713900 | Internal Plumbing Works | 5d | 2026-09-26 | 2026-10-01 | 4050 |  | 7 day week with NGT | 8020932 |
| 4052 | 37400.37600.39800.42800.43700.78400.714000 | Waterproofing Works | 7d | 2026-09-28 | 2026-10-05 | 4051SS+2d |  | 7 day week with NGT | 8020942 |
| 4053 | 37400.37600.39800.42800.43700.78400.714100 | PCC | 4d | 2026-10-05 | 2026-10-09 | 4052, 4055SS |  | 7 day week with NGT | 8020952 |
| 4054 | 37400.37600.39800.42800.43700.78400.714200 | Electrical Wiring works | 7d | 2026-09-28 | 2026-10-05 | 4052SS |  | 7 day week with NGT | 8020962 |
| 4055 | 37400.37600.39800.42800.43700.78400.714300 | Internal Plaster Works | 5d | 2026-10-05 | 2026-10-10 | 4051, 4052, 4054 |  | 7 day week with NGT | 8020972 |
| 4056 | 37400.37600.39800.42800.43700.78400.714400 | Toilet Dado Works | 5d | 2026-10-10 | 2026-10-15 | 4051FS+0.25d, 4052FS+0.25d, 4054FF+4d, 4055FS+0.25d |  | 7 day week with NGT | 8020982 |
| 4057 | 37400.37600.39800.42800.43700.78400.714500 | Toilet Flooring Works | 5d | 2026-10-15 | 2026-10-20 | 4053, 4056 |  | 7 day week with NGT | 8020992 |
| 4058 | 37400.37600.39800.42800.43700.78400.714600 | Living Dining Flooring | 5d | 2026-10-20 | 2026-10-25 | 4057 |  | 7 day week with NGT | 8021002 |
| 4059 | 37400.37600.39800.42800.43700.78400.714700 | Temporary Door Fixing | 9d | 2026-09-26 | 2026-10-05 | 4050 |  | 7 day week with NGT | 8021012 |
| 4060 | 37400.37600.39800.42800.43700.78400.714800 | Aluminium Door Widnow Fixing | 15d | 2026-10-25 | 2026-12-24 | 4058, 4059 |  | 7 day week with NGT | 8021022 |
| 4061 | 37400.37600.39800.42800.43700.78400.714900 | Rehung Door Fixing | 8d | 2026-12-24 | 2027-01-01 | 4060 |  | 7 day week with NGT | 8021032 |
| 4062 | 37400.37600.39800.42800.43700.78400.715000 | Putty Primer coat | 6d | 2027-01-01 | 2027-01-07 | 4061 |  | 7 day week with NGT | 8021042 |
| 4063 | 37400.37600.39800.42800.43700.78400.715100 | Painting First Coat | 12d | 2027-01-07 | 2027-01-19 | 4052, 4054, 4061, 4062 |  | 7 day week with NGT | 8021052 |
| 4064 | 37400.37600.39800.42800.43700.78400.715200 | False ceiling works | 10d | 2027-02-09 | 2027-02-18 | 4048, 4063 |  | 7 day week with NGT | 8021062 |

| ID | WBS | Task | Duration | Start | Finish | Predecessors | Constraint | Calendar | Unique_Task_ID |
| --- | --- | --- | --- | --- | --- | --- | --- | --- | --- |
| 4065 | 37400.37600.39800.42800.43700.78500 | **Twentyone Floor** | 101d | 2026-10-06 | 2027-02-28 |  | start no earlier than 2026-10-06 | 7 day week with NGT | 7998702 |
| 4066 | 37400.37600.39800.42800.43700.78500.715300 | Blockwork | 7d | 2026-10-06 | 2026-10-12 | 3740 |  | 7 day week with NGT | 8021072 |
| 4067 | 37400.37600.39800.42800.43700.78500.715400 | Internal Plumbing Works | 5d | 2026-10-10 | 2026-10-14 | 4066FF+2d |  | 7 day week with NGT | 8021082 |
| 4068 | 37400.37600.39800.42800.43700.78500.715500 | Waterproofing Works | 5d | 2026-10-12 | 2026-10-16 | 4067SS+2d |  | 7 day week with NGT | 8021092 |
| 4069 | 37400.37600.39800.42800.43700.78500.715600 | PCC | 4d | 2026-10-19 | 2026-10-22 | 4068, 4071SS |  | 7 day week with NGT | 8021102 |
| 4070 | 37400.37600.39800.42800.43700.78500.715700 | Electrical Wiring works | 7d | 2026-10-12 | 2026-10-18 | 4068SS |  | 7 day week with NGT | 8021112 |
| 4071 | 37400.37600.39800.42800.43700.78500.715800 | Internal Plaster Works | 5d | 2026-10-19 | 2026-10-23 | 4067, 4068, 4070 |  | 7 day week with NGT | 8021122 |
| 4072 | 37400.37600.39800.42800.43700.78500.715900 | Toilet Dado Works | 5d | 2026-10-24 | 2026-10-28 | 4067, 4068, 4070, 4071 |  | 7 day week with NGT | 8021132 |
| 4073 | 37400.37600.39800.42800.43700.78500.716000 | Toilet Flooring Works | 4d | 2026-10-27 | 2026-10-30 | 4069FS+0.25d, 4072FF+2d |  | 7 day week with NGT | 8021142 |
| 4074 | 37400.37600.39800.42800.43700.78500.716100 | Living Dining Flooring | 10d | 2026-10-31 | 2026-12-24 | 4073 |  | 7 day week with NGT | 8021152 |
| 4075 | 37400.37600.39800.42800.43700.78500.716200 | Temporary Door Fixing | 9d | 2026-10-13 | 2026-10-21 | 4066 |  | 7 day week with NGT | 8021162 |
| 4076 | 37400.37600.39800.42800.43700.78500.716300 | Aluminium Door Widnow Fixing | 15d | 2026-12-25 | 2027-01-08 | 4074, 4075 |  | 7 day week with NGT | 8021172 |
| 4077 | 37400.37600.39800.42800.43700.78500.716400 | Rehung Door Fixing | 8d | 2027-01-09 | 2027-01-16 | 4076 |  | 7 day week with NGT | 8021182 |
| 4078 | 37400.37600.39800.42800.43700.78500.716500 | Putty Primer coat | 6d | 2027-01-17 | 2027-01-22 | 4077 |  | 7 day week with NGT | 8021192 |
| 4079 | 37400.37600.39800.42800.43700.78500.716600 | Painting First Coat | 12d | 2027-01-23 | 2027-02-03 | 4068, 4070, 4077, 4078 |  | 7 day week with NGT | 8021202 |
| 4080 | 37400.37600.39800.42800.43700.78500.716700 | False ceiling works | 10d | 2027-02-19 | 2027-02-28 | 4064, 4079 |  | 7 day week with NGT | 8021212 |
| 4081 | 37400.37600.39800.42800.43700.78600 | **Twenty two Floor** | 104d | 2026-10-13 | 2027-03-10 |  | start no earlier than 2026-10-13 | 7 day week with NGT | 7998712 |
| 4082 | 37400.37600.39800.42800.43700.78600.716800 | Blockwork | 7d | 2026-10-13 | 2026-10-19 | 3741FF+2d |  | 7 day week with NGT | 8021222 |
| 4083 | 37400.37600.39800.42800.43700.78600.716900 | Internal Plumbing Works | 5d | 2026-10-20 | 2026-10-24 | 4082 |  | 7 day week with NGT | 8021232 |
| 4084 | 37400.37600.39800.42800.43700.78600.717000 | Waterproofing Works | 7d | 2026-10-22 | 2026-10-28 | 4083SS+2d |  | 7 day week with NGT | 8021242 |
| 4085 | 37400.37600.39800.42800.43700.78600.717100 | PCC | 4d | 2026-10-29 | 2026-12-16 | 4084, 4087SS |  | 7 day week with NGT | 8021252 |
| 4086 | 37400.37600.39800.42800.43700.78600.717200 | Electrical Wiring works | 7d | 2026-10-22 | 2026-10-28 | 4084SS |  | 7 day week with NGT | 8021262 |
| 4087 | 37400.37600.39800.42800.43700.78600.717300 | Internal Plaster Works | 5d | 2026-10-29 | 2026-12-17 | 4083, 4084, 4086 |  | 7 day week with NGT | 8021272 |
| 4088 | 37400.37600.39800.42800.43700.78600.717400 | Toilet Dado Works | 7d | 2026-12-18 | 2026-12-24 | 4083, 4084, 4086, 4087 |  | 7 day week with NGT | 8021282 |
| 4089 | 37400.37600.39800.42800.43700.78600.717500 | Toilet Flooring Works | 5d | 2026-12-25 | 2026-12-29 | 4085, 4088 |  | 7 day week with NGT | 8021292 |
| 4090 | 37400.37600.39800.42800.43700.78600.717600 | Living Dining Flooring | 10d | 2026-12-30 | 2027-01-08 | 4089 |  | 7 day week with NGT | 8021302 |
| 4091 | 37400.37600.39800.42800.43700.78600.717700 | Temporary Door Fixing | 9d | 2026-10-20 | 2026-10-28 | 4082 |  | 7 day week with NGT | 8021312 |
| 4092 | 37400.37600.39800.42800.43700.78600.717800 | Aluminium Door Widnow Fixing | 15d | 2027-01-09 | 2027-01-23 | 4090, 4091 |  | 7 day week with NGT | 8021322 |
| 4093 | 37400.37600.39800.42800.43700.78600.717900 | Rehung Door Fixing | 8d | 2027-01-24 | 2027-01-31 | 4092 |  | 7 day week with NGT | 8021332 |
| 4094 | 37400.37600.39800.42800.43700.78600.718000 | Putty Primer coat | 6d | 2027-02-01 | 2027-02-06 | 4093 |  | 7 day week with NGT | 8021342 |
| 4095 | 37400.37600.39800.42800.43700.78600.718100 | Painting First Coat | 12d | 2027-02-07 | 2027-02-18 | 4084, 4086, 4093, 4094 |  | 7 day week with NGT | 8021352 |
| 4096 | 37400.37600.39800.42800.43700.78600.718200 | False ceiling works | 10d | 2027-03-01 | 2027-03-10 | 4080, 4095 |  | 7 day week with NGT | 8021362 |

| ID | WBS | Task | Duration | Start | Finish | Predecessors | Constraint | Calendar | Unique_Task_ID |
| --- | --- | --- | --- | --- | --- | --- | --- | --- | --- |
| 4097 | 37400.37600.39800.42800.43700.78700 | **Twenty Three Floor** | 103.75d | 2026-10-23 | 2027-03-20 |  | start no earlier than 2026-10-23 | 7 day week with NGT | 7998722 |
| 4098 | 37400.37600.39800.42800.43700.78700.718300 | Blockwork | 7d | 2026-10-23 | 2026-10-30 | 3742FF+0.25d |  | 7 day week with NGT | 8021372 |
| 4099 | 37400.37600.39800.42800.43700.78700.718400 | Internal Plumbing Works | 5d | 2026-10-27 | 2026-12-16 | 4098FF+2d |  | 7 day week with NGT | 8021382 |
| 4100 | 37400.37600.39800.42800.43700.78700.718500 | Waterproofing Works | 7d | 2026-10-29 | 2026-12-20 | 4099SS+2d |  | 7 day week with NGT | 8021392 |
| 4101 | 37400.37600.39800.42800.43700.78700.718600 | PCC | 4d | 2026-12-20 | 2026-12-24 | 4100, 4103SS |  | 7 day week with NGT | 8021402 |
| 4102 | 37400.37600.39800.42800.43700.78700.718700 | Electrical Wiring works | 5d | 2026-10-29 | 2026-12-18 | 4100SS |  | 7 day week with NGT | 8021412 |
| 4103 | 37400.37600.39800.42800.43700.78700.718800 | Internal Plaster Works | 5d | 2026-12-16 | 2026-12-21 | 4099FS+0.25d, 4102FF+2d |  | 7 day week with NGT | 8021422 |
| 4104 | 37400.37600.39800.42800.43700.78700.718900 | Toilet Dado Works | 7d | 2026-12-21 | 2026-12-28 | 4099, 4100, 4102, 4103 |  | 7 day week with NGT | 8021432 |
| 4105 | 37400.37600.39800.42800.43700.78700.719000 | Toilet Flooring Works | 5d | 2026-12-28 | 2027-01-02 | 4101, 4104 |  | 7 day week with NGT | 8021442 |
| 4106 | 37400.37600.39800.42800.43700.78700.719100 | Living Dining Flooring | 10d | 2027-01-02 | 2027-01-12 | 4105 |  | 7 day week with NGT | 8021452 |
| 4107 | 37400.37600.39800.42800.43700.78700.719200 | Temporary Door Fixing | 9d | 2026-10-30 | 2026-12-23 | 4098 |  | 7 day week with NGT | 8021462 |
| 4108 | 37400.37600.39800.42800.43700.78700.719300 | Aluminium Door Widnow Fixing | 15d | 2027-01-12 | 2027-01-27 | 4106, 4107 |  | 7 day week with NGT | 8021472 |
| 4109 | 37400.37600.39800.42800.43700.78700.719400 | Rehung Door Fixing | 8d | 2027-01-27 | 2027-02-04 | 4108 |  | 7 day week with NGT | 8021482 |
| 4110 | 37400.37600.39800.42800.43700.78700.719500 | Putty Primer coat | 6d | 2027-02-04 | 2027-02-10 | 4109 |  | 7 day week with NGT | 8021492 |
| 4111 | 37400.37600.39800.42800.43700.78700.719600 | Painting First Coat | 12d | 2027-02-10 | 2027-02-22 | 4100, 4102, 4109, 4110 |  | 7 day week with NGT | 8021502 |
| 4112 | 37400.37600.39800.42800.43700.78700.719700 | False ceiling works | 10d | 2027-03-11 | 2027-03-20 | 4096, 4111 |  | 7 day week with NGT | 8021512 |
| 4113 | 37400.37600.39800.42800.43700.78800 | **Twenty Four Floor** | 100.75d | 2026-12-20 | 2027-03-30 |  | start no earlier than 2026-12-20 | 7 day week with NGT | 7998732 |
| 4114 | 37400.37600.39800.42800.43700.78800.719800 | Blockwork | 6d | 2026-12-20 | 2026-12-26 | 3743FF+0.25d |  | 7 day week with NGT | 8021522 |
| 4115 | 37400.37600.39800.42800.43700.78800.719900 | Internal Plumbing Works | 5d | 2026-12-26 | 2026-12-31 | 4114 |  | 7 day week with NGT | 8021532 |
| 4116 | 37400.37600.39800.42800.43700.78800.720000 | Waterproofing Works | 5d | 2026-12-28 | 2027-01-02 | 4115SS+2d |  | 7 day week with NGT | 8021542 |
| 4117 | 37400.37600.39800.42800.43700.78800.720100 | PCC | 4d | 2027-01-02 | 2027-01-06 | 4116, 4119SS |  | 7 day week with NGT | 8021552 |
| 4118 | 37400.37600.39800.42800.43700.78800.720200 | Electrical Wiring works | 5d | 2026-12-28 | 2027-01-02 | 4116SS |  | 7 day week with NGT | 8021562 |
| 4119 | 37400.37600.39800.42800.43700.78800.720300 | Internal Plaster Works | 4d | 2027-01-02 | 2027-01-06 | 4115, 4116, 4118 |  | 7 day week with NGT | 8021572 |
| 4120 | 37400.37600.39800.42800.43700.78800.720400 | Toilet Dado Works | 7d | 2027-01-06 | 2027-01-13 | 4115, 4116, 4118, 4119 |  | 7 day week with NGT | 8021582 |
| 4121 | 37400.37600.39800.42800.43700.78800.720500 | Toilet Flooring Works | 5d | 2027-01-13 | 2027-01-18 | 4117, 4120 |  | 7 day week with NGT | 8021592 |
| 4122 | 37400.37600.39800.42800.43700.78800.720600 | Living Dining Flooring | 10d | 2027-01-18 | 2027-01-28 | 4121 |  | 7 day week with NGT | 8021602 |
| 4123 | 37400.37600.39800.42800.43700.78800.720700 | Temporary Door Fixing | 9d | 2026-12-26 | 2027-01-04 | 4114 |  | 7 day week with NGT | 8021612 |
| 4124 | 37400.37600.39800.42800.43700.78800.720800 | Aluminium Door Widnow Fixing | 15d | 2027-01-28 | 2027-02-12 | 4122, 4123 |  | 7 day week with NGT | 8021622 |
| 4125 | 37400.37600.39800.42800.43700.78800.720900 | Rehung Door Fixing | 8d | 2027-02-12 | 2027-02-20 | 4124 |  | 7 day week with NGT | 8021632 |
| 4126 | 37400.37600.39800.42800.43700.78800.721000 | Putty Primer coat | 6d | 2027-02-20 | 2027-02-26 | 4125 |  | 7 day week with NGT | 8021642 |
| 4127 | 37400.37600.39800.42800.43700.78800.721100 | Painting First Coat | 12d | 2027-02-26 | 2027-03-10 | 4116, 4118, 4125, 4126 |  | 7 day week with NGT | 8021652 |
| 4128 | 37400.37600.39800.42800.43700.78800.721200 | False ceiling works | 10d | 2027-03-21 | 2027-03-30 | 4112, 4127 |  | 7 day week with NGT | 8021662 |

| ID | WBS | Task | Duration | Start | Finish | Predecessors | Constraint | Calendar | Unique_Task_ID |
| --- | --- | --- | --- | --- | --- | --- | --- | --- | --- |
| 4129 | 37400.37600.39800.42800.43700.78900 | **Twenty Five Floors** | 116d | 2027-01-07 | 2027-05-02 |  | start no earlier than 2027-01-07 | 7 day week with NGT | 7998742 |
| 4130 | 37400.37600.39800.42800.43700.78900.721300 | Blockwork | 5d | 2027-01-07 | 2027-01-11 | 3744 |  | 7 day week with NGT | 8021672 |
| 4131 | 37400.37600.39800.42800.43700.78900.721400 | Internal Plumbing Works | 6d | 2027-01-12 | 2027-01-17 | 4130 |  | 7 day week with NGT | 8021682 |
| 4132 | 37400.37600.39800.42800.43700.78900.721500 | Waterproofing Works | 10d | 2027-01-14 | 2027-01-23 | 4131SS+2d |  | 7 day week with NGT | 8021692 |
| 4133 | 37400.37600.39800.42800.43700.78900.721600 | PCC | 8d | 2027-01-26 | 2027-02-02 | 4132, 4135SS |  | 7 day week with NGT | 8021702 |
| 4134 | 37400.37600.39800.42800.43700.78900.721700 | Electrical Wiring works | 12d | 2027-01-14 | 2027-01-25 | 4132SS |  | 7 day week with NGT | 8021712 |
| 4135 | 37400.37600.39800.42800.43700.78900.721800 | Internal Plaster Works | 9d | 2027-01-26 | 2027-02-03 | 4131, 4132, 4134 |  | 7 day week with NGT | 8021722 |
| 4136 | 37400.37600.39800.42800.43700.78900.721900 | Toilet Dado Works | 12d | 2027-02-04 | 2027-02-15 | 4131, 4132, 4134, 4135 |  | 7 day week with NGT | 8021732 |
| 4137 | 37400.37600.39800.42800.43700.78900.722000 | Toilet Flooring Works | 10d | 2027-02-16 | 2027-02-25 | 4133, 4136 |  | 7 day week with NGT | 8021742 |
| 4138 | 37400.37600.39800.42800.43700.78900.722100 | Living Dining Flooring | 15d | 2027-02-26 | 2027-03-12 | 4137 |  | 7 day week with NGT | 8021752 |
| 4139 | 37400.37600.39800.42800.43700.78900.722200 | Temporary Door Fixing | 9d | 2027-01-12 | 2027-01-20 | 4130 |  | 7 day week with NGT | 8021762 |
| 4140 | 37400.37600.39800.42800.43700.78900.722300 | Aluminium Door Widnow Fixing | 15d | 2027-03-13 | 2027-03-27 | 4138, 4139 |  | 7 day week with NGT | 8021772 |
| 4141 | 37400.37600.39800.42800.43700.78900.722400 | Rehung Door Fixing | 8d | 2027-03-28 | 2027-04-04 | 4140 |  | 7 day week with NGT | 8021782 |
| 4142 | 37400.37600.39800.42800.43700.78900.722500 | Putty Primer coat | 6d | 2027-04-05 | 2027-04-10 | 4141 |  | 7 day week with NGT | 8021792 |
| 4143 | 37400.37600.39800.42800.43700.78900.722600 | Painting First Coat | 12d | 2027-04-11 | 2027-04-22 | 4132, 4134, 4141, 4142 |  | 7 day week with NGT | 8021802 |
| 4144 | 37400.37600.39800.42800.43700.78900.722700 | False ceiling works | 10d | 2027-04-23 | 2027-05-02 | 4128, 4143 |  | 7 day week with NGT | 8021812 |
| 4145 | 37400.37600.39800.42800.43700.79000 | **Twenty Six Floor** | 119d | 2027-01-19 | 2027-05-17 |  | start no earlier than 2027-01-19 | 7 day week with NGT | 7998752 |
| 4146 | 37400.37600.39800.42800.43700.79000.722800 | Blockwork | 8d | 2027-01-19 | 2027-01-26 | 3745 |  | 7 day week with NGT | 8021822 |
| 4147 | 37400.37600.39800.42800.43700.79000.722900 | Internal Plumbing Works | 6d | 2027-01-27 | 2027-02-01 | 4146 |  | 7 day week with NGT | 8021832 |
| 4148 | 37400.37600.39800.42800.43700.79000.723000 | Waterproofing Works | 10d | 2027-01-29 | 2027-02-07 | 4147SS+2d |  | 7 day week with NGT | 8021842 |
| 4149 | 37400.37600.39800.42800.43700.79000.723100 | PCC | 8d | 2027-02-10 | 2027-02-17 | 4148, 4151SS |  | 7 day week with NGT | 8021852 |
| 4150 | 37400.37600.39800.42800.43700.79000.723200 | Electrical Wiring works | 12d | 2027-01-29 | 2027-02-09 | 4148SS |  | 7 day week with NGT | 8021862 |
| 4151 | 37400.37600.39800.42800.43700.79000.723300 | Internal Plaster Works | 9d | 2027-02-10 | 2027-02-18 | 4147, 4148, 4150 |  | 7 day week with NGT | 8021872 |
| 4152 | 37400.37600.39800.42800.43700.79000.723400 | Toilet Dado Works | 12d | 2027-02-19 | 2027-03-02 | 4147, 4148, 4150, 4151 |  | 7 day week with NGT | 8021882 |
| 4153 | 37400.37600.39800.42800.43700.79000.723500 | Toilet Flooring Works | 10d | 2027-03-03 | 2027-03-12 | 4149, 4152 |  | 7 day week with NGT | 8021892 |
| 4154 | 37400.37600.39800.42800.43700.79000.723600 | Living Dining Flooring | 15d | 2027-03-13 | 2027-03-27 | 4153 |  | 7 day week with NGT | 8021902 |
| 4155 | 37400.37600.39800.42800.43700.79000.723700 | Temporary Door Fixing | 9d | 2027-01-27 | 2027-02-04 | 4146 |  | 7 day week with NGT | 8021912 |
| 4156 | 37400.37600.39800.42800.43700.79000.723800 | Aluminium Door Widnow Fixing | 15d | 2027-03-28 | 2027-04-11 | 4154, 4155 |  | 7 day week with NGT | 8021922 |
| 4157 | 37400.37600.39800.42800.43700.79000.723900 | Rehung Door Fixing | 8d | 2027-04-12 | 2027-04-19 | 4156 |  | 7 day week with NGT | 8021932 |
| 4158 | 37400.37600.39800.42800.43700.79000.724000 | Putty Primer coat | 6d | 2027-04-20 | 2027-04-25 | 4157 |  | 7 day week with NGT | 8021942 |
| 4159 | 37400.37600.39800.42800.43700.79000.724100 | Painting First Coat | 12d | 2027-04-26 | 2027-05-07 | 4148, 4150, 4157, 4158 |  | 7 day week with NGT | 8021952 |
| 4160 | 37400.37600.39800.42800.43700.79000.724200 | False ceiling works | 10d | 2027-05-08 | 2027-05-17 | 4144, 4159 |  | 7 day week with NGT | 8021962 |

| ID | WBS | Task | Duration | Start | Finish | Predecessors | Constraint | Calendar | Unique_Task_ID |
| --- | --- | --- | --- | --- | --- | --- | --- | --- | --- |
| 4161 | 37400.37600.39800.42800.43700.79100 | **Twenty Seven Floors** | 119d | 2027-01-31 | 2027-05-29 |  | start no earlier than 2027-01-31 | 7 day week with NGT | 7998762 |
| 4162 | 37400.37600.39800.42800.43700.79100.724300 | Blockwork | 8d | 2027-01-31 | 2027-02-07 | 3746 |  | 7 day week with NGT | 8021972 |
| 4163 | 37400.37600.39800.42800.43700.79100.724400 | Internal Plumbing Works | 6d | 2027-02-08 | 2027-02-13 | 4162 |  | 7 day week with NGT | 8021982 |
| 4164 | 37400.37600.39800.42800.43700.79100.724500 | Waterproofing Works | 10d | 2027-02-10 | 2027-02-19 | 4163SS+2d |  | 7 day week with NGT | 8021992 |
| 4165 | 37400.37600.39800.42800.43700.79100.724600 | PCC | 8d | 2027-02-22 | 2027-03-01 | 4164, 4167SS |  | 7 day week with NGT | 8022002 |
| 4166 | 37400.37600.39800.42800.43700.79100.724700 | Electrical Wiring works | 12d | 2027-02-10 | 2027-02-21 | 4164SS |  | 7 day week with NGT | 8022012 |
| 4167 | 37400.37600.39800.42800.43700.79100.724800 | Internal Plaster Works | 9d | 2027-02-22 | 2027-03-02 | 4163, 4164, 4166 |  | 7 day week with NGT | 8022022 |
| 4168 | 37400.37600.39800.42800.43700.79100.724900 | Toilet Dado Works | 12d | 2027-03-03 | 2027-03-14 | 4163, 4164, 4166, 4167 |  | 7 day week with NGT | 8022032 |
| 4169 | 37400.37600.39800.42800.43700.79100.725000 | Toilet Flooring Works | 10d | 2027-03-15 | 2027-03-24 | 4165, 4168 |  | 7 day week with NGT | 8022042 |
| 4170 | 37400.37600.39800.42800.43700.79100.725100 | Living Dining Flooring | 15d | 2027-03-25 | 2027-04-08 | 4169 |  | 7 day week with NGT | 8022052 |
| 4171 | 37400.37600.39800.42800.43700.79100.725200 | Temporary Door Fixing | 9d | 2027-02-08 | 2027-02-16 | 4162 |  | 7 day week with NGT | 8022062 |
| 4172 | 37400.37600.39800.42800.43700.79100.725300 | Aluminium Door Widnow Fixing | 15d | 2027-04-09 | 2027-04-23 | 4170, 4171 |  | 7 day week with NGT | 8022072 |
| 4173 | 37400.37600.39800.42800.43700.79100.725400 | Rehung Door Fixing | 8d | 2027-04-24 | 2027-05-01 | 4172 |  | 7 day week with NGT | 8022082 |
| 4174 | 37400.37600.39800.42800.43700.79100.725500 | Putty Primer coat | 6d | 2027-05-02 | 2027-05-07 | 4173 |  | 7 day week with NGT | 8022092 |
| 4175 | 37400.37600.39800.42800.43700.79100.725600 | Painting First Coat | 12d | 2027-05-08 | 2027-05-19 | 4164, 4166, 4173, 4174 |  | 7 day week with NGT | 8022102 |
| 4176 | 37400.37600.39800.42800.43700.79100.725700 | False ceiling works | 10d | 2027-05-20 | 2027-05-29 | 4160, 4175 |  | 7 day week with NGT | 8022112 |
| 4177 | 37400.37600.39800.42800.43700.79200 | **Twenty Eight Floor** | 121d | 2027-02-12 | 2027-06-12 |  | start no earlier than 2027-02-12 | 7 day week with NGT | 7998772 |
| 4178 | 37400.37600.39800.42800.43700.79200.725800 | Blockwork | 8d | 2027-02-12 | 2027-02-19 | 3747 |  | 7 day week with NGT | 8022122 |
| 4179 | 37400.37600.39800.42800.43700.79200.725900 | Internal Plumbing Works | 6d | 2027-02-20 | 2027-02-25 | 4178 |  | 7 day week with NGT | 8022132 |
| 4180 | 37400.37600.39800.42800.43700.79200.726000 | Waterproofing Works | 10d | 2027-02-22 | 2027-03-03 | 4179SS+2d |  | 7 day week with NGT | 8022142 |
| 4181 | 37400.37600.39800.42800.43700.79200.726100 | PCC | 8d | 2027-03-06 | 2027-03-13 | 4180, 4183SS |  | 7 day week with NGT | 8022152 |
| 4182 | 37400.37600.39800.42800.43700.79200.726200 | Electrical Wiring works | 12d | 2027-02-22 | 2027-03-05 | 4180SS |  | 7 day week with NGT | 8022162 |
| 4183 | 37400.37600.39800.42800.43700.79200.726300 | Internal Plaster Works | 11d | 2027-03-06 | 2027-03-16 | 4179, 4180, 4182 |  | 7 day week with NGT | 8022172 |
| 4184 | 37400.37600.39800.42800.43700.79200.726400 | Toilet Dado Works | 12d | 2027-03-17 | 2027-03-28 | 4179, 4180, 4182, 4183 |  | 7 day week with NGT | 8022182 |
| 4185 | 37400.37600.39800.42800.43700.79200.726500 | Toilet Flooring Works | 10d | 2027-03-29 | 2027-04-07 | 4181, 4184 |  | 7 day week with NGT | 8022192 |
| 4186 | 37400.37600.39800.42800.43700.79200.726600 | Living Dining Flooring | 15d | 2027-04-08 | 2027-04-22 | 4185 |  | 7 day week with NGT | 8022202 |
| 4187 | 37400.37600.39800.42800.43700.79200.726700 | Temporary Door Fixing | 9d | 2027-02-20 | 2027-02-28 | 4178 |  | 7 day week with NGT | 8022212 |
| 4188 | 37400.37600.39800.42800.43700.79200.726800 | Aluminium Door Widnow Fixing | 15d | 2027-04-23 | 2027-05-07 | 4186, 4187 |  | 7 day week with NGT | 8022222 |
| 4189 | 37400.37600.39800.42800.43700.79200.726900 | Rehung Door Fixing | 8d | 2027-05-08 | 2027-05-15 | 4188 |  | 7 day week with NGT | 8022232 |
| 4190 | 37400.37600.39800.42800.43700.79200.727000 | Putty Primer coat | 6d | 2027-05-16 | 2027-05-21 | 4189 |  | 7 day week with NGT | 8022242 |
| 4191 | 37400.37600.39800.42800.43700.79200.727100 | Painting First Coat | 12d | 2027-05-22 | 2027-06-02 | 4180, 4182, 4189, 4190 |  | 7 day week with NGT | 8022252 |
| 4192 | 37400.37600.39800.42800.43700.79200.727200 | False ceiling works | 10d | 2027-06-03 | 2027-06-12 | 4176, 4191 |  | 7 day week with NGT | 8022262 |

| ID | WBS | Task | Duration | Start | Finish | Predecessors | Constraint | Calendar | Unique_Task_ID |
| --- | --- | --- | --- | --- | --- | --- | --- | --- | --- |
| 4193 | 37400.37600.39800.42800.43700.79300 | **Twenty Nine Floors** | 121d | 2027-02-24 | 2027-06-24 |  | start no earlier than 2027-02-24 | 7 day week with NGT | 7998782 |
| 4194 | 37400.37600.39800.42800.43700.79300.727300 | Blockwork | 8d | 2027-02-24 | 2027-03-03 | 3748 |  | 7 day week with NGT | 8022272 |
| 4195 | 37400.37600.39800.42800.43700.79300.727400 | Internal Plumbing Works | 6d | 2027-03-04 | 2027-03-09 | 4194 |  | 7 day week with NGT | 8022282 |
| 4196 | 37400.37600.39800.42800.43700.79300.727500 | Waterproofing Works | 10d | 2027-03-06 | 2027-03-15 | 4195SS+2d |  | 7 day week with NGT | 8022292 |
| 4197 | 37400.37600.39800.42800.43700.79300.727600 | PCC | 8d | 2027-03-18 | 2027-03-25 | 4196, 4199SS |  | 7 day week with NGT | 8022302 |
| 4198 | 37400.37600.39800.42800.43700.79300.727700 | Electrical Wiring works | 12d | 2027-03-06 | 2027-03-17 | 4196SS |  | 7 day week with NGT | 8022312 |
| 4199 | 37400.37600.39800.42800.43700.79300.727800 | Internal Plaster Works | 11d | 2027-03-18 | 2027-03-28 | 4195, 4196, 4198 |  | 7 day week with NGT | 8022322 |
| 4200 | 37400.37600.39800.42800.43700.79300.727900 | Toilet Dado Works | 12d | 2027-03-29 | 2027-04-09 | 4195, 4196, 4198, 4199 |  | 7 day week with NGT | 8022332 |
| 4201 | 37400.37600.39800.42800.43700.79300.728000 | Toilet Flooring Works | 10d | 2027-04-10 | 2027-04-19 | 4197, 4200 |  | 7 day week with NGT | 8022342 |
| 4202 | 37400.37600.39800.42800.43700.79300.728100 | Living Dining Flooring | 15d | 2027-04-20 | 2027-05-04 | 4201 |  | 7 day week with NGT | 8022352 |
| 4203 | 37400.37600.39800.42800.43700.79300.728200 | Temporary Door Fixing | 9d | 2027-03-04 | 2027-03-12 | 4194 |  | 7 day week with NGT | 8022362 |
| 4204 | 37400.37600.39800.42800.43700.79300.728300 | Aluminium Door Widnow Fixing | 15d | 2027-05-05 | 2027-05-19 | 4202, 4203 |  | 7 day week with NGT | 8022372 |
| 4205 | 37400.37600.39800.42800.43700.79300.728400 | Rehung Door Fixing | 8d | 2027-05-20 | 2027-05-27 | 4204 |  | 7 day week with NGT | 8022382 |
| 4206 | 37400.37600.39800.42800.43700.79300.728500 | Putty Primer coat | 6d | 2027-05-28 | 2027-06-02 | 4205 |  | 7 day week with NGT | 8022392 |
| 4207 | 37400.37600.39800.42800.43700.79300.728600 | Painting First Coat | 12d | 2027-06-03 | 2027-06-14 | 4196, 4198, 4205, 4206 |  | 7 day week with NGT | 8022402 |
| 4208 | 37400.37600.39800.42800.43700.79300.728700 | False ceiling works | 10d | 2027-06-15 | 2027-06-24 | 4192, 4207 |  | 7 day week with NGT | 8022412 |
| 4209 | 37400.37600.39800.42800.43700.79400 | **Thirty Floors** | 132d | 2027-02-24 | 2027-07-06 |  | start no earlier than 2027-02-24 | 7 day week with NGT | 135505 |
| 4210 | 37400.37600.39800.42800.43700.79400.728800 | Blockwork | 5d | 2027-02-24 | 2027-03-01 | 3748FS+0.25d |  | 7 day week with NGT | 135515 |
| 4211 | 37400.37600.39800.42800.43700.79400.728900 | Internal Plumbing Works | 6d | 2027-03-01 | 2027-03-07 | 4210 |  | 7 day week with NGT | 135525 |
| 4212 | 37400.37600.39800.42800.43700.79400.729000 | Waterproofing Works | 10d | 2027-03-03 | 2027-03-13 | 4211SS+2d |  | 7 day week with NGT | 135535 |
| 4213 | 37400.37600.39800.42800.43700.79400.729100 | PCC | 8d | 2027-03-15 | 2027-03-23 | 4212, 4215SS |  | 7 day week with NGT | 135575 |
| 4214 | 37400.37600.39800.42800.43700.79400.729200 | Electrical Wiring works | 12d | 2027-03-03 | 2027-03-15 | 4212SS |  | 7 day week with NGT | 135545 |
| 4215 | 37400.37600.39800.42800.43700.79400.729300 | Internal Plaster Works | 12d | 2027-03-15 | 2027-03-27 | 4211, 4212, 4214 |  | 7 day week with NGT | 135555 |
| 4216 | 37400.37600.39800.42800.43700.79400.729400 | Toilet Dado Works | 20d | 2027-03-27 | 2027-04-16 | 4211, 4212, 4214, 4215 |  | 7 day week with NGT | 135565 |
| 4217 | 37400.37600.39800.42800.43700.79400.729500 | Toilet Flooring Works | 15d | 2027-04-16 | 2027-05-01 | 4213, 4216 |  | 7 day week with NGT | 135585 |
| 4218 | 37400.37600.39800.42800.43700.79400.729600 | Living Dining Flooring | 15d | 2027-05-01 | 2027-05-16 | 4217 |  | 7 day week with NGT | 135595 |
| 4219 | 37400.37600.39800.42800.43700.79400.729700 | Temporary Door Fixing | 9d | 2027-03-01 | 2027-03-10 | 4210 |  | 7 day week with NGT | 135605 |
| 4220 | 37400.37600.39800.42800.43700.79400.729800 | Aluminium Door Widnow Fixing | 15d | 2027-05-16 | 2027-05-31 | 4218, 4219 |  | 7 day week with NGT | 135615 |
| 4221 | 37400.37600.39800.42800.43700.79400.729900 | Rehung Door Fixing | 8d | 2027-05-31 | 2027-06-08 | 4220 |  | 7 day week with NGT | 135625 |
| 4222 | 37400.37600.39800.42800.43700.79400.730000 | Putty Primer coat | 6d | 2027-06-08 | 2027-06-14 | 4221 |  | 7 day week with NGT | 135635 |
| 4223 | 37400.37600.39800.42800.43700.79400.730100 | Painting First Coat | 12d | 2027-06-14 | 2027-06-26 | 4212, 4214, 4221, 4222 |  | 7 day week with NGT | 135645 |
| 4224 | 37400.37600.39800.42800.43700.79400.730200 | False ceiling works | 10d | 2027-06-26 | 2027-07-06 | 4208, 4223 |  | 7 day week with NGT | 135655 |

| ID | WBS | Task | Duration | Start | Finish | Predecessors | Constraint | Calendar | Unique_Task_ID |
| --- | --- | --- | --- | --- | --- | --- | --- | --- | --- |
| 4225 | 37400.37600.39800.42800.43700.79500 | **Thirty one Floor** | 172.25d | 2027-03-01 | 2027-08-20 |  | start no earlier than 2027-03-01 | 7 day week with NGT | 7998792 |
| 4226 | 37400.37600.39800.42800.43700.79500.730300 | Blockwork | 12d | 2027-03-01 | 2027-03-13 | 4210 |  | 7 day week with NGT | 8022422 |
| 4227 | 37400.37600.39800.42800.43700.79500.730400 | Internal Plumbing Works | 10d | 2027-03-13 | 2027-03-23 | 4226 |  | 7 day week with NGT | 8022432 |
| 4228 | 37400.37600.39800.42800.43700.79500.730500 | Waterproofing Works | 20d | 2027-03-15 | 2027-04-04 | 4227SS+2d |  | 7 day week with NGT | 8022442 |
| 4229 | 37400.37600.39800.42800.43700.79500.730600 | PCC | 8d | 2027-04-19 | 2027-04-27 | 4228, 4231SS |  | 7 day week with NGT | 8022452 |
| 4230 | 37400.37600.39800.42800.43700.79500.730700 | Electrical Wiring works | 15d | 2027-04-04 | 2027-04-19 | 4228FS+0.25d |  | 7 day week with NGT | 8022462 |
| 4231 | 37400.37600.39800.42800.43700.79500.730800 | Internal Plaster Works | 7d | 2027-04-19 | 2027-04-26 | 4227, 4228, 4230 |  | 7 day week with NGT | 8022472 |
| 4232 | 37400.37600.39800.42800.43700.79500.730900 | Toilet Dado Works | 20d | 2027-04-26 | 2027-05-16 | 4227, 4228, 4230, 4231 |  | 7 day week with NGT | 8022482 |
| 4233 | 37400.37600.39800.42800.43700.79500.731000 | Toilet Flooring Works | 35d | 2027-05-16 | 2027-06-20 | 4229, 4232 |  | 7 day week with NGT | 8022492 |
| 4234 | 37400.37600.39800.42800.43700.79500.731100 | Living Dining Flooring | 10d | 2027-06-20 | 2027-06-30 | 4233 |  | 7 day week with NGT | 8022502 |
| 4235 | 37400.37600.39800.42800.43700.79500.731200 | Temporary Door Fixing | 9d | 2027-03-13 | 2027-03-22 | 4226 |  | 7 day week with NGT | 8022512 |
| 4236 | 37400.37600.39800.42800.43700.79500.731300 | Aluminium Door Widnow Fixing | 15d | 2027-06-30 | 2027-07-15 | 4234, 4235 |  | 7 day week with NGT | 8022522 |
| 4237 | 37400.37600.39800.42800.43700.79500.731400 | Rehung Door Fixing | 8d | 2027-07-15 | 2027-07-23 | 4236 |  | 7 day week with NGT | 8022532 |
| 4238 | 37400.37600.39800.42800.43700.79500.731500 | Putty Primer coat | 6d | 2027-07-23 | 2027-07-29 | 4237 |  | 7 day week with NGT | 8022542 |
| 4239 | 37400.37600.39800.42800.43700.79500.731600 | Painting First Coat | 12d | 2027-07-29 | 2027-08-10 | 4228, 4230, 4237, 4238 |  | 7 day week with NGT | 8022552 |
| 4240 | 37400.37600.39800.42800.43700.79500.731700 | False ceiling works | 10d | 2027-08-10 | 2027-08-20 | 4224, 4239 |  | 7 day week with NGT | 8022562 |
| 4241 | 37400.37600.39800.42800.223200 | **Terrace Finishing** | 80d | 2027-01-11 | 2027-03-31 |  | start no earlier than 2027-01-11 | 7 day week with NGT | 8000342 |
| 4242 | 37400.37600.39800.42800.223200.362700 | Terrace Waterproofing | 40d | 2027-01-11 | 2027-02-19 | 3716 |  | 7 day week with NGT | 8002852 |
| 4243 | 37400.37600.39800.42800.223200.362800 | Terrace Finishing | 40d | 2027-02-20 | 2027-03-31 | 4242 |  | 7 day week with NGT | 8002862 |
| 4244 | 37400.37600.39800.42800.121800 | **Common Area Finishing** | 288d | 2027-01-11 | 2027-10-25 |  | start no earlier than 2027-01-11 | 7 day week with NGT | 7998952 |
| 4245 | 37400.37600.39800.42800.121800.362900 | Blockwork | 35d | 2027-01-11 | 2027-02-14 | 3716 |  | 7 day week with NGT | 8002872 |
| 4246 | 37400.37600.39800.42800.121800.363000 | Internal Plaster | 120d | 2027-01-31 | 2027-05-30 | 4245SS+20d |  | 7 day week with NGT | 8002882 |
| 4247 | 37400.37600.39800.42800.121800.363100 | Staircase railing fixing | 150d | 2027-02-20 | 2027-07-19 | 4246SS+20d |  | 7 day week with NGT | 8002892 |
| 4248 | 37400.37600.39800.42800.121800.363200 | Main Staircase flooring | 150d | 2027-05-01 | 2027-09-27 | 4247SS+70d |  | 7 day week with NGT | 8002902 |
| 4249 | 37400.37600.39800.42800.121800.363300 | Fire Staircase railing | 150d | 2027-05-29 | 2027-10-25 | 4248FF+28d |  | 7 day week with NGT | 8002912 |
| 4250 | 37400.37600.39800.42800.121800.363400 | Fire Door Work | 60d | 2027-05-31 | 2027-07-29 | 4248SS+30d |  | 7 day week with NGT | 8002922 |
| 4251 | 37400.37600.39800.42800.121800.363500 | Electrical wiring work | 120d | 2027-01-31 | 2027-05-30 | 4245SS+20d |  | 7 day week with NGT | 8002932 |
| 4252 | 37400.37600.39800.42800.121800.363600 | Lobby Flooring | 140d | 2027-03-02 | 2027-07-19 | 4251SS+30d |  | 7 day week with NGT | 8002942 |
| 4253 | 37400.37600.39800.42800.121800.363700 | Ceiling & wall putty-primer | 110d | 2027-03-02 | 2027-06-19 | 4246SS+30d |  | 7 day week with NGT | 8002952 |
| 4254 | 37400.37600.39800.42800.121800.363800 | Ceiling and wall painting | 100d | 2027-03-12 | 2027-06-19 | 4246SS+40d |  | 7 day week with NGT | 8002962 |
| 4255 | 37400.37600.39800.42800.121800.363900 | Light fixture supply & installation | 45d | 2027-05-11 | 2027-06-24 | 4254SS+60d |  | 7 day week with NGT | 8002972 |

| ID | WBS | Task | Duration | Start | Finish | Predecessors | Constraint | Calendar | Unique_Task_ID |
| --- | --- | --- | --- | --- | --- | --- | --- | --- | --- |
| 4256 | 37400.37600.39800.42800.50600 | **Glass Railing Fixing** | 60d | 2027-07-06 | 2027-09-03 |  | start no earlier than 2027-07-06 | 7 day week with NGT | 7997882 |
| 4257 | 37400.37600.39800.42800.50600.364000 | 2nd Floor | 2d | 2027-07-06 | 2027-07-07 | 4320 |  | 7 day week with NGT | 8002982 |
| 4258 | 37400.37600.39800.42800.50600.364100 | 3rd Floor | 2d | 2027-07-08 | 2027-07-09 | 4257 |  | 7 day week with NGT | 8002992 |
| 4259 | 37400.37600.39800.42800.50600.364200 | 4th Floor | 2d | 2027-07-10 | 2027-07-11 | 4258 |  | 7 day week with NGT | 8003002 |
| 4260 | 37400.37600.39800.42800.50600.364300 | 5th Floor | 2d | 2027-07-12 | 2027-07-13 | 4259 |  | 7 day week with NGT | 8003012 |
| 4261 | 37400.37600.39800.42800.50600.364400 | 6th Floor | 2d | 2027-07-14 | 2027-07-15 | 4260 |  | 7 day week with NGT | 8003022 |
| 4262 | 37400.37600.39800.42800.50600.364500 | 7th Floor | 2d | 2027-07-16 | 2027-07-17 | 4261 |  | 7 day week with NGT | 8003032 |
| 4263 | 37400.37600.39800.42800.50600.364600 | 8th Floor | 2d | 2027-07-18 | 2027-07-19 | 4262 |  | 7 day week with NGT | 8003042 |
| 4264 | 37400.37600.39800.42800.50600.364700 | 9th Floor | 2d | 2027-07-20 | 2027-07-21 | 4263 |  | 7 day week with NGT | 8003052 |
| 4265 | 37400.37600.39800.42800.50600.364800 | 10th Floor | 2d | 2027-07-22 | 2027-07-23 | 4264 |  | 7 day week with NGT | 8003062 |
| 4266 | 37400.37600.39800.42800.50600.364900 | 11th Floor | 2d | 2027-07-24 | 2027-07-25 | 4265 |  | 7 day week with NGT | 8003072 |
| 4267 | 37400.37600.39800.42800.50600.365000 | 12th Floor | 2d | 2027-07-26 | 2027-07-27 | 4266 |  | 7 day week with NGT | 8003082 |
| 4268 | 37400.37600.39800.42800.50600.365100 | 13th Floor | 2d | 2027-07-28 | 2027-07-29 | 4267 |  | 7 day week with NGT | 8003092 |
| 4269 | 37400.37600.39800.42800.50600.365200 | 14th Floor | 2d | 2027-07-30 | 2027-07-31 | 4268 |  | 7 day week with NGT | 8003102 |
| 4270 | 37400.37600.39800.42800.50600.365300 | 15th Floor | 2d | 2027-08-01 | 2027-08-02 | 4269 |  | 7 day week with NGT | 8003112 |
| 4271 | 37400.37600.39800.42800.50600.365400 | 16th Floor | 2d | 2027-08-03 | 2027-08-04 | 4270 |  | 7 day week with NGT | 8003122 |
| 4272 | 37400.37600.39800.42800.50600.365500 | 17th Floor | 2d | 2027-08-05 | 2027-08-06 | 4271 |  | 7 day week with NGT | 8003132 |
| 4273 | 37400.37600.39800.42800.50600.365600 | 18th Floor | 2d | 2027-08-07 | 2027-08-08 | 4272 |  | 7 day week with NGT | 8003142 |
| 4274 | 37400.37600.39800.42800.50600.365700 | 19th Floor | 2d | 2027-08-09 | 2027-08-10 | 4273 |  | 7 day week with NGT | 8003152 |
| 4275 | 37400.37600.39800.42800.50600.365800 | 20th Floor | 2d | 2027-08-11 | 2027-08-12 | 4274 |  | 7 day week with NGT | 8003162 |
| 4276 | 37400.37600.39800.42800.50600.365900 | 21st Floor | 2d | 2027-08-13 | 2027-08-14 | 4275 |  | 7 day week with NGT | 8003172 |
| 4277 | 37400.37600.39800.42800.50600.366000 | 22nd Floor | 2d | 2027-08-15 | 2027-08-16 | 4276 |  | 7 day week with NGT | 8003182 |
| 4278 | 37400.37600.39800.42800.50600.366100 | 23rd Floor | 2d | 2027-08-17 | 2027-08-18 | 4277 |  | 7 day week with NGT | 8003192 |
| 4279 | 37400.37600.39800.42800.50600.366200 | 24th Floor | 2d | 2027-08-19 | 2027-08-20 | 4278 |  | 7 day week with NGT | 8003202 |
| 4280 | 37400.37600.39800.42800.50600.366300 | 25th Floor | 2d | 2027-08-21 | 2027-08-22 | 4279 |  | 7 day week with NGT | 8003212 |
| 4281 | 37400.37600.39800.42800.50600.366400 | 26th Floor | 2d | 2027-08-23 | 2027-08-24 | 4280 |  | 7 day week with NGT | 8003222 |
| 4282 | 37400.37600.39800.42800.50600.366500 | 27th Floor | 2d | 2027-08-25 | 2027-08-26 | 4281 |  | 7 day week with NGT | 8003232 |
| 4283 | 37400.37600.39800.42800.50600.366600 | 28th Floor | 2d | 2027-08-27 | 2027-08-28 | 4282 |  | 7 day week with NGT | 8003242 |
| 4284 | 37400.37600.39800.42800.50600.366700 | 29th Floor | 2d | 2027-08-29 | 2027-08-30 | 4283 |  | 7 day week with NGT | 8003252 |
| 4285 | 37400.37600.39800.42800.50600.366800 | 30th Floor | 2d | 2027-08-31 | 2027-09-01 | 4284 |  | 7 day week with NGT | 8003262 |
| 4286 | 37400.37600.39800.42800.50600.366900 | 31st Floor | 2d | 2027-09-02 | 2027-09-03 | 4285 |  | 7 day week with NGT | 8003272 |

| ID | WBS | Task | Duration | Start | Finish | Predecessors | Constraint | Calendar | Unique_Task_ID |
| --- | --- | --- | --- | --- | --- | --- | --- | --- | --- |
| 4287 | 37400.37600.39800.115800 | **MEP** | 419d | 2027-01-11 | 2028-04-18 |  | start no earlier than 2027-01-11 | 7 day week with NGT | 7998822 |
| 4288 | 37400.37600.39800.115800.118800 | **Electrical Works** | 265d | 2027-01-11 | 2027-10-02 |  | start no earlier than 2027-01-11 | 7 day week with NGT | 7998872 |
| 4289 | 37400.37600.39800.115800.118800.367000 | Cable Tray | 90d | 2027-01-11 | 2027-04-10 | 3716 |  | 7 day week with NGT | 8003282 |
| 4290 | 37400.37600.39800.115800.118800.367100 | Cable, main & sub main | 80d | 2027-02-25 | 2027-05-15 | 4289SS+45d |  | 7 day week with NGT | 8003292 |
| 4291 | 37400.37600.39800.115800.118800.367200 | LT panel & DB | 120d | 2027-04-11 | 2027-08-08 | 4289 |  | 7 day week with NGT | 8003302 |
| 4292 | 37400.37600.39800.115800.118800.367300 | Rising main | 90d | 2027-03-12 | 2027-06-09 | 4289SS+60d |  | 7 day week with NGT | 8003312 |
| 4293 | 37400.37600.39800.115800.118800.367400 | EARTHING Works | 60d | 2027-01-26 | 2027-03-26 | 4289SS+15d |  | 7 day week with NGT | 8003322 |
| 4294 | 37400.37600.39800.115800.118800.367500 | Advance lightening protection | 60d | 2027-04-01 | 2027-05-30 | 4243 |  | 7 day week with NGT | 8003332 |
| 4295 | 37400.37600.39800.115800.118800.367600 | Inverter | 35d | 2027-07-15 | 2027-08-18 | 4292, 4293, 4296 |  | 7 day week with NGT | 8003342 |
| 4296 | 37400.37600.39800.115800.118800.367700 | Energy meter | 60d | 2027-05-16 | 2027-07-14 | 4290 |  | 7 day week with NGT | 8003352 |
| 4297 | 37400.37600.39800.115800.118800.367800 | Exhast fan | 60d | 2027-05-21 | 2027-07-20 | 4236FF+5d |  | 7 day week with NGT | 8003362 |
| 4298 | 37400.37600.39800.115800.118800.367900 | FTTH | 60d | 2027-03-17 | 2027-05-15 | 4293FS-10d |  | 7 day week with NGT | 8003372 |
| 4299 | 37400.37600.39800.115800.118800.368000 | Security System - FA & PA | 55d | 2027-08-09 | 2027-10-02 | 4291, 4298 |  | 7 day week with NGT | 8003382 |
| 4300 | 37400.37600.39800.115800.118800.368100 | Solar water heater | 60d | 2027-04-01 | 2027-05-30 | 4243 |  | 7 day week with NGT | 8003392 |
| 4301 | 37400.37600.39800.115800.154700 | **Plumbing Works** | 210d | 2027-02-20 | 2027-09-17 |  | start no earlier than 2027-02-20 | 7 day week with NGT | 7999212 |
| 4302 | 37400.37600.39800.115800.154700.368200 | Terrace looping | 45d | 2027-02-20 | 2027-04-05 | 4242 |  | 7 day week with NGT | 8003402 |
| 4303 | 37400.37600.39800.115800.154700.368300 | Shaft Plumbing | 120d | 2027-04-06 | 2027-08-03 | 4302 |  | 7 day week with NGT | 8003412 |
| 4304 | 37400.37600.39800.115800.154700.368400 | CP sanitary fixture supply | 75d | 2027-04-26 | 2027-07-10 | 4231 |  | 7 day week with NGT | 8003422 |
| 4305 | 37400.37600.39800.115800.154700.368500 | Cold & flushing water supply | 90d | 2027-05-31 | 2027-08-28 | 4246 |  | 7 day week with NGT | 8003432 |
| 4306 | 37400.37600.39800.115800.154700.368600 | Misc work | 30d | 2027-08-19 | 2027-09-17 | 4305FS-10d |  | 7 day week with NGT | 8003442 |
| 4307 | 37400.37600.39800.115800.214500 | **Fire Fighting Works** | 218d | 2027-03-22 | 2027-10-25 |  | start no earlier than 2027-03-22 | 7 day week with NGT | 8000162 |
| 4308 | 37400.37600.39800.115800.214500.368700 | Fire hydrant work | 90d | 2027-04-01 | 2027-06-29 | 4246SS+60d |  | 7 day week with NGT | 8003452 |
| 4309 | 37400.37600.39800.115800.214500.368800 | Sprinkler & piping work | 90d | 2027-07-28 | 2027-10-25 | 4308FS+28d |  | 7 day week with NGT | 8003462 |
| 4310 | 37400.37600.39800.115800.214500.368900 | Shaft Downtake works | 90d | 2027-03-22 | 2027-06-19 | 4242FS+30d |  | 7 day week with NGT | 8003472 |
| 4311 | 37400.37600.39800.115800.214500.369000 | Connection to pump room | 30d | 2027-06-20 | 2027-07-19 | 4310 |  | 7 day week with NGT | 8003482 |

| ID | WBS | Task | Duration | Start | Finish | Predecessors | Complete | Constraint | Calendar | Unique_Task_ID |
| --- | --- | --- | --- | --- | --- | --- | --- | --- | --- | --- |
| 4312 | 37400.37600.39800.115800.220200 | **Lift Works** | 140d | 2027-01-11 | 2027-05-30 |  |  | start no earlier than 2027-01-11 | 7 day week with NGT | 8000312 |
| 4313 | 37400.37600.39800.115800.220200.369100 | Lift Shaft Handover | 40d | 2027-01-11 | 2027-02-19 | 3716 |  |  | 7 day week with NGT | 8003492 |
| 4314 | 37400.37600.39800.115800.220200.369200 | Lift installation work | 45d | 2027-02-20 | 2027-04-05 | 4313 |  |  | 7 day week with NGT | 8003502 |
| 4315 | 37400.37600.39800.115800.220200.369300 | Lift testing and commissioning | 55d | 2027-04-06 | 2027-05-30 | 4314 |  |  | 7 day week with NGT | 8003512 |
| 4316 | 37400.37600.39800.115800.225600 | **AC Works** | 100d | 2028-01-10 | 2028-04-18 |  |  | start no earlier than 2028-01-10 | 7 day week with NGT | 8000382 |
| 4317 | 37400.37600.39800.115800.225600.369400 | Split AC | 100d | 2028-01-10 | 2028-04-18 | 4333FS-30d |  |  | 7 day week with NGT | 8003522 |
| 4318 | 37400.37600.39800.165800 | **Tower Completion** | 270d | 2027-01-07 | 2027-10-03 |  |  | start no earlier than 2027-01-07 | 7 day week with NGT | 8000292 |
| 4319 | 37400.37600.39800.165800.295500 | SURFACE PREPARATION | 80d | 2027-01-07 | 2027-03-27 | 3744 |  |  | 7 day week with NGT | 8001022 |
| 4320 | 37400.37600.39800.165800.295600 | External Painting | 100d | 2027-03-28 | 2027-07-05 | 4319 |  |  | 7 day week with NGT | 8001032 |
| 4321 | 37400.37600.39800.165800.295700 | Final coat of painting | 30d | 2027-07-06 | 2027-08-04 | 4320 |  |  | 7 day week with NGT | 8001042 |
| 4322 | 37400.37600.39800.165800.295800 | Misc. work | 60d | 2027-08-05 | 2027-10-03 | 4321 |  |  | 7 day week with NGT | 8001052 |
| 4323 | 37400.37600.39800.227300 | **Basement Lobby** | 60d | 2027-07-20 | 2027-09-17 |  |  | start no earlier than 2027-07-20 | 7 day week with NGT | 8000392 |
| 4324 | 37400.37600.39800.227300.295900 | Basement Lobby | 60d | 2027-07-20 | 2027-09-17 | 4252 |  |  | 7 day week with NGT | 8001062 |
| 4325 | 37400.37600.39800.127200 | **Post OC Activities** | 483d | 2027-05-31 | 2028-11-08 |  |  | start no earlier than 2027-05-31 | 7 day week with NGT | 7998982 |
| 4326 | 37400.37600.39800.127200.296000 | Wardrobe installation | 180d | 2028-01-10 | 2028-07-07 | 4333FS-30d |  |  | 7 day week with NGT | 8001072 |
| 4327 | 37400.37600.39800.127200.296100 | CP & SANITARYWARE | 120d | 2027-07-10 | 2027-12-22 | 4304 |  |  | 7 day week with NGT | 8001082 |
| 4328 | 37400.37600.39800.127200.296200 | Wooden Flooring | 180d | 2028-01-10 | 2028-07-07 | 4333FS-30d |  |  | 7 day week with NGT | 8001092 |
| 4329 | 37400.37600.39800.127200.296300 | Electrical Fixtures And Fittings | 120d | 2027-05-31 | 2027-09-27 | 4251 |  |  | 7 day week with NGT | 8001102 |
| 4330 | 37400.37600.39800.127200.296400 | Modular Kitchen | 180d | 2028-01-10 | 2028-07-07 | 4326SS |  |  | 7 day week with NGT | 8001112 |
| 4331 | 37400.37600.39800.127200.296500 | Final Coat Paint | 90d | 2027-06-25 | 2027-09-22 | 4255 |  |  | 7 day week with NGT | 8001122 |
| 4332 | 37400.37600.39800.127200.296600 | OC Application/Readiness | 1d | 2027-10-26 | 2027-10-26 | 4322FS-2d, 3716, 4247, 4315, 4297, 4299, 4300, 4295, 4294, 4250, 4303, 4306, 4309, 4311, 4240, 3760, 4249, 4253, 4286, 5227FF |  |  | 7 day week with NGT | 8001132 |
| 4333 | 37400.37600.39800.127200.296700 | OC Receipt | 1d | 2028-02-08 | 2028-02-08 | 4321, 4324, 4332FS+59d |  |  | 7 day week with NGT | 8001142 |
| 4334 | 37400.37600.39800.127200.296800 | Offer To Possession | 30d | 2028-10-10 | 2028-11-08 | 4326, 4327, 4328, 4329, 4330, 4331, 4333FF+274d, 4317 |  |  | 7 day week with NGT | 8001152 |
| 4335 | 37400.37600.39900 | **Tower 1** | 1427d | 2024-08-10 | 2029-01-02 |  | 5% | start no earlier than 2024-08-10 | 7 day week with NGT | 164895 |
| 4336 | 37400.37600.39900.116000 | **Substructure Works** | 501d | 2024-08-10 | 2026-03-23 |  | 68% | start no earlier than 2024-08-10 | 7 day week with NGT | 165275 |
| 4337 | 37400.37600.39900.116000.118900 | **RCC Works** | 186d | 2024-08-10 | 2025-03-28 |  | 100% | start no earlier than 2024-08-10 | 7 day week with NGT | 165295 |
| 4338 | 37400.37600.39900.116000.118900.133500 | **Raft** | 38.3d | 2024-08-10 | 2024-09-17 |  | 100% | start no earlier than 2024-08-10 | 7 day week with NGT | 165385 |
| 4339 | 37400.37600.39900.116000.118900.133500.237300 | Surface Dressing | 2d | 2024-08-14 | 2024-08-15 | 4FS+2d | 100% | start no earlier than 2024-08-14 | 7 day week with NGT | 166935 |
| 4340 | 37400.37600.39900.116000.118900.133500.237200 | Anti Termite Treatment | 5d | 2024-08-11 | 2024-08-15 | 4339 | 100% | start no earlier than 2024-08-11 | 7 day week with NGT | 166945 |
| 4341 | 37400.37600.39900.116000.118900.133500.237100 | PCC | 3d | 2024-08-15 | 2024-08-17 | 4340 | 100% | start no earlier than 2024-08-15 | 7 day week with NGT | 166955 |
| 4342 | 37400.37600.39900.116000.118900.133500.237000 | Reinforcement Laying | 15d | 2024-08-10 | 2024-09-10 | 4341 | 100% | start no earlier than 2024-08-10 | 7 day week with NGT | 166965 |
| 4343 | 37400.37600.39900.116000.118900.133500.236900 | Outer Shuttering of Raft Area | 3d | 2024-09-09 | 2024-09-11 | 4342FF | 100% | start no earlier than 2024-09-09 | 7 day week with NGT | 166975 |
| 4344 | 37400.37600.39900.116000.118900.133500.236800 | Raft Concreting | 4d | 2024-09-12 | 2024-09-17 | 4343 | 100% | start no earlier than 2024-09-12 | 7 day week with NGT | 166985 |

| ID | WBS | Task | Duration | Start | Finish | Predecessors | Complete | Constraint | Calendar | Unique_Task_ID |
| --- | --- | --- | --- | --- | --- | --- | --- | --- | --- | --- |
| 4345 | 37400.37600.39900.116000.118900.133600 | **Dummy Basement** | 32d | 2024-10-15 | 2024-12-30 |  | 100% | start no earlier than 2024-10-15 | 7 day week with NGT | 165375 |
| 4346 | 37400.37600.39900.116000.118900.133600.236700 | Column and Shear Wall Reinforcement | 6d | 2024-10-27 | 2024-12-16 | 4344 | 100% | start no earlier than 2024-10-27 | 7 day week with NGT | 166995 |
| 4347 | 37400.37600.39900.116000.118900.133600.236600 | Column and Shear Wall Formwork | 6d | 2024-10-26 | 2024-10-31 | 4346FF+1d | 100% | start no earlier than 2024-10-26 | 7 day week with NGT | 167005 |
| 4348 | 37400.37600.39900.116000.118900.133600.236500 | Column and Shear Wall Casting | 6d | 2024-10-26 | 2024-10-31 | 4347FF+1d | 100% | start no earlier than 2024-10-26 | 7 day week with NGT | 167015 |
| 4349 | 37400.37600.39900.116000.118900.133600.236400 | Slab Formwork | 18d | 2024-10-15 | 2024-12-27 | 4348SS+5d | 100% | start no earlier than 2024-10-15 | 7 day week with NGT | 167025 |
| 4350 | 37400.37600.39900.116000.118900.133600.236300 | Slab Reinforcement | 22d | 2024-10-22 | 2024-12-27 | 4349FS-23d | 100% | start no earlier than 2024-10-22 | 7 day week with NGT | 167035 |
| 4351 | 37400.37600.39900.116000.118900.133600.236200 | Slab Casting | 24d | 2024-10-23 | 2024-12-30 | 4350FF+2d | 100% | start no earlier than 2024-10-23 | 7 day week with NGT | 167045 |
| 4352 | 37400.37600.39900.116000.118900.133700 | **B2 Roof** | 77d | 2024-10-30 | 2025-02-28 |  | 100% | start no earlier than 2024-10-30 | 7 day week with NGT | 165365 |
| 4353 | 37400.37600.39900.116000.118900.133700.236100 | Column and Shear Wall Reinforcement | 6d | 2024-10-30 | 2025-01-01 | 4351FS-15d | 100% | start no earlier than 2024-10-30 | 7 day week with NGT | 167055 |
| 4354 | 37400.37600.39900.116000.118900.133700.236000 | Column and Shear Wall Formwork | 39d | 2024-12-31 | 2025-02-07 | 4353FF+1d | 100% | start no earlier than 2024-12-31 | 7 day week with NGT | 167065 |
| 4355 | 37400.37600.39900.116000.118900.133700.235900 | Column and Shear Wall Casting | 41d | 2025-01-01 | 2025-02-10 | 4354FF+1d | 100% | start no earlier than 2025-01-01 | 7 day week with NGT | 167075 |
| 4356 | 37400.37600.39900.116000.118900.133700.235800 | Slab Formwork | 48d | 2025-01-06 | 2025-02-22 | 4355SS+5d | 100% | start no earlier than 2025-01-06 | 7 day week with NGT | 167085 |
| 4357 | 37400.37600.39900.116000.118900.133700.235700 | Slab Reinforcement | 48d | 2025-01-09 | 2025-02-25 | 4356FS-45d | 100% | start no earlier than 2025-01-09 | 7 day week with NGT | 167095 |
| 4358 | 37400.37600.39900.116000.118900.133700.235600 | Slab Casting | 32d | 2025-01-28 | 2025-02-28 | 4357FF+2d | 100% | start no earlier than 2025-01-28 | 7 day week with NGT | 167105 |
| 4359 | 37400.37600.39900.116000.118900.133800 | **B1 Roof** | 62d | 2025-01-26 | 2025-03-28 |  | 100% | start no earlier than 2025-01-26 | 7 day week with NGT | 165355 |
| 4360 | 37400.37600.39900.116000.118900.133800.235500 | Column and Shear Wall Reinforcement | 8.13d | 2025-01-26 | 2025-03-13 | 4358 | 100% | start no earlier than 2025-01-26 | 7 day week with NGT | 167115 |
| 4361 | 37400.37600.39900.116000.118900.133800.235400 | Column and Shear Wall Formwork | 5d | 2025-01-27 | 2025-03-26 | 4360FF+39.73d | 100% | start no earlier than 2025-01-27 | 7 day week with NGT | 167125 |
| 4362 | 37400.37600.39900.116000.118900.133800.235300 | Column and Shear Wall Casting | 4d | 2025-02-01 | 2025-03-26 | 4361FF+39.87d | 100% | start no earlier than 2025-02-01 | 7 day week with NGT | 167135 |
| 4363 | 37400.37600.39900.116000.118900.133800.235200 | Slab Formwork | 44d | 2025-02-06 | 2025-03-26 | 4362SS+91d | 100% | start no earlier than 2025-02-06 | 7 day week with NGT | 167145 |
| 4364 | 37400.37600.39900.116000.118900.133800.235100 | Slab Reinforcement | 10d | 2025-03-17 | 2025-03-26 | 4363FS-16.65d | 100% | start no earlier than 2025-03-17 | 7 day week with NGT | 167155 |
| 4365 | 37400.37600.39900.116000.118900.133800.235000 | Slab Casting | 10d | 2025-03-19 | 2025-03-28 | 4364FF+3d | 100% | start no earlier than 2025-03-19 | 7 day week with NGT | 167165 |
| 4366 | 37400.37600.39900.116000.130800 | **Substructure Finishing Works** | 98d | 2025-12-16 | 2026-03-23 |  |  | start no earlier than 2025-12-16 | 7 day week with NGT | 165325 |
| 4367 | 37400.37600.39900.116000.130800.213600 | **Basement - 2** | 73d | 2025-12-16 | 2026-02-26 |  |  | start no earlier than 2025-12-16 | 7 day week with NGT | 165725 |
| 4368 | 37400.37600.39900.116000.130800.213600.731800 | Masonary Works | 30d | 2025-12-16 | 2026-01-14 | 4358FS+30d |  |  | 7 day week with NGT | 167175 |
| 4369 | 37400.37600.39900.116000.130800.213600.731900 | Plaster Works | 20d | 2025-12-31 | 2026-01-19 | 4368SS+15d |  |  | 7 day week with NGT | 167185 |
| 4370 | 37400.37600.39900.116000.130800.213600.732000 | White Wash | 18d | 2026-01-15 | 2026-02-01 | 4369SS+15d |  |  | 7 day week with NGT | 167195 |
| 4371 | 37400.37600.39900.116000.130800.213600.732100 | VDF | 25d | 2026-02-02 | 2026-02-26 | 4370 |  |  | 7 day week with NGT | 167205 |

| ID | WBS | Task | Duration | Start | Finish | Predecessors | Complete | Constraint | Calendar | Unique_Task_ID |
| --- | --- | --- | --- | --- | --- | --- | --- | --- | --- | --- |
| 4372 | 37400.37600.39900.116000.130800.213500 | **Basement - 1** | 98d | 2025-12-16 | 2026-03-23 |  |  | start no earlier than 2025-12-16 | 7 day week with NGT | 165735 |
| 4373 | 37400.37600.39900.116000.130800.213500.732200 | Masonary Works | 30d | 2025-12-16 | 2026-01-14 | 4365FS+30d |  |  | 7 day week with NGT | 167215 |
| 4374 | 37400.37600.39900.116000.130800.213500.732300 | Plaster Works | 20d | 2025-12-31 | 2026-01-19 | 4373SS+15d |  |  | 7 day week with NGT | 167225 |
| 4375 | 37400.37600.39900.116000.130800.213500.732400 | White Wash | 18d | 2026-01-15 | 2026-02-01 | 4374SS+15d |  |  | 7 day week with NGT | 167235 |
| 4376 | 37400.37600.39900.116000.130800.213500.732500 | VDF | 25d | 2026-02-27 | 2026-03-23 | 4371, 4375 |  |  | 7 day week with NGT | 167245 |
| 4377 | 37400.37600.39900.45100 | **Superstructure Works** | 618d | 2025-04-01 | 2027-03-09 |  | 12% | start no earlier than 2025-04-01 | 7 day week with NGT | 164925 |
| 4378 | 37400.37600.39900.45100.46900 | **RCC Works** | 618d | 2025-04-01 | 2027-03-09 |  | 12% | start no earlier than 2025-04-01 | 7 day week with NGT | 164935 |
| 4379 | 37400.37600.39900.45100.46900.133900 | **Podium Roof** | 145d | 2025-04-01 | 2025-08-23 |  | 100% | start no earlier than 2025-04-01 | 7 day week with NGT | 165345 |
| 4380 | 37400.37600.39900.45100.46900.133900.234900 | Column and Shear Wall Reinforcement | 15d | 2025-04-01 | 2025-07-14 | 4365 | 100% | start no earlier than 2025-04-01 | 7 day week with NGT | 167255 |
| 4381 | 37400.37600.39900.45100.46900.133900.234800 | Column and Shear Wall Formwork | 15d | 2025-04-02 | 2025-08-11 | 4380FF+1d | 100% | start no earlier than 2025-04-02 | 7 day week with NGT | 167265 |
| 4382 | 37400.37600.39900.45100.46900.133900.234700 | Column and Shear Wall Casting | 14d | 2025-04-13 | 2025-08-13 | 4381FF+1d | 100% | start no earlier than 2025-04-13 | 7 day week with NGT | 167275 |
| 4383 | 37400.37600.39900.45100.46900.133900.234600 | Slab Formwork | 13d | 2025-07-05 | 2025-08-13 | 4382SS+83d | 100% | start no earlier than 2025-07-05 | 7 day week with NGT | 167285 |
| 4384 | 37400.37600.39900.45100.46900.133900.234500 | Slab Reinforcement | 14d | 2025-07-28 | 2025-08-14 | 4383FS-39d | 100% | start no earlier than 2025-07-28 | 7 day week with NGT | 167295 |
| 4385 | 37400.37600.39900.45100.46900.133900.234400 | Slab Casting | 13d | 2025-08-11 | 2025-08-23 | 4384FF+3d | 100% | start no earlier than 2025-08-11 | 7 day week with NGT | 167305 |
| 4386 | 37400.37600.39900.45100.46900.134000 | **First Floor Roof** | 77d | 2025-08-25 | 2025-12-24 |  | 53% | start no earlier than 2025-08-25 | 7 day week with NGT | 165335 |
| 4387 | 37400.37600.39900.45100.46900.134000.234300 | Column and Shear Wall Reinforcement | 5d | 2025-08-25 | 2025-12-16 | 4385 | 80% | start no earlier than 2025-08-25 | 7 day week with NGT | 167315 |
| 4388 | 37400.37600.39900.45100.46900.134000.234200 | Column and Shear Wall Formwork | 5d | 2025-08-31 | 2025-12-16 | 4387FS-68d | 80% | start no earlier than 2025-08-31 | 7 day week with NGT | 167325 |
| 4389 | 37400.37600.39900.45100.46900.134000.234100 | Column and Shear Wall Casting | 7d | 2025-09-02 | 2025-12-18 | 4388FF+1d | 57% |  | 7 day week with NGT | 167335 |
| 4390 | 37400.37600.39900.45100.46900.134000.234000 | Slab Formwork | 16d | 2025-09-15 | 2025-12-24 | 4389SS+1d | 43% | start no earlier than 2025-09-15 | 7 day week with NGT | 167345 |
| 4391 | 37400.37600.39900.45100.46900.134000.233900 | Slab Reinforcement | 15d | 2025-09-24 | 2025-12-23 | 4390FS-46d | 46% | start no earlier than 2025-09-24 | 7 day week with NGT | 167355 |
| 4392 | 37400.37600.39900.45100.46900.134000.233800 | Slab Casting | 14d | 2025-09-24 | 2025-12-24 | 4391FF+1d | 50% |  | 7 day week with NGT | 167365 |
| 4393 | 37400.37600.39900.45100.46900.160600 | **Second Floor Roof** | 66d | 2025-10-12 | 2026-01-30 |  | 2% | start no earlier than 2025-10-12 | 7 day week with NGT | 165405 |
| 4394 | 37400.37600.39900.45100.46900.160600.233700 | Column and Shear Wall Reinforcement | 5d | 2025-10-12 | 2025-12-27 | 4392FS-29d | 40% |  | 7 day week with NGT | 167375 |
| 4395 | 37400.37600.39900.45100.46900.160600.732600 | Column and Shear Wall Formwork | 20d | 2025-12-16 | 2026-01-04 | 4394FF+1d |  |  | 7 day week with NGT | 167385 |
| 4396 | 37400.37600.39900.45100.46900.160600.732700 | Slab Formwork | 25d | 2026-01-03 | 2026-01-27 | 4395FS-2d |  |  | 7 day week with NGT | 167395 |
| 4397 | 37400.37600.39900.45100.46900.160600.732800 | Slab Reinforcement | 14d | 2026-01-16 | 2026-01-29 | 4396FS-12d |  |  | 7 day week with NGT | 167405 |
| 4398 | 37400.37600.39900.45100.46900.160600.732900 | Monolithic Casting | 8d | 2026-01-23 | 2026-01-30 | 4397FF+1d |  |  | 7 day week with NGT | 167415 |

| ID | WBS | Task | Duration | Start | Finish | Predecessors | Constraint | Calendar | Unique_Task_ID |
| --- | --- | --- | --- | --- | --- | --- | --- | --- | --- |
| 4399 | 37400.37600.39900.45100.46900.160700 | **Third Floor Roof** | 18d | 2026-01-31 | 2026-02-17 |  | start no earlier than 2026-01-31 | 7 day week with NGT | 165415 |
| 4400 | 37400.37600.39900.45100.46900.160700.733000 | Column and Shear Wall Reinforcement | 7d | 2026-01-31 | 2026-02-06 | 4398 |  | 7 day week with NGT | 167425 |
| 4401 | 37400.37600.39900.45100.46900.160700.733100 | Column and Shear Wall Formwork | 7d | 2026-02-01 | 2026-02-07 | 4400FF+1d |  | 7 day week with NGT | 167435 |
| 4402 | 37400.37600.39900.45100.46900.160700.733200 | Slab Formwork | 9d | 2026-02-06 | 2026-02-14 | 4401FS-2d |  | 7 day week with NGT | 167445 |
| 4403 | 37400.37600.39900.45100.46900.160700.733300 | Slab Reinforcement | 9d | 2026-02-08 | 2026-02-16 | 4402FF+2d |  | 7 day week with NGT | 167455 |
| 4404 | 37400.37600.39900.45100.46900.160700.733400 | Monolithic Casting | 9d | 2026-02-09 | 2026-02-17 | 4403FF+1d |  | 7 day week with NGT | 167465 |
| 4405 | 37400.37600.39900.45100.46900.160800 | **4th Floor Roof** | 12d | 2026-02-18 | 2026-03-01 |  | start no earlier than 2026-02-18 | 7 day week with NGT | 165425 |
| 4406 | 37400.37600.39900.45100.46900.160800.733500 | Column and Shear Wall Reinforcement | 5d | 2026-02-18 | 2026-02-22 | 4404 |  | 7 day week with NGT | 167475 |
| 4407 | 37400.37600.39900.45100.46900.160800.733600 | Column and Shear Wall Formwork | 5d | 2026-02-19 | 2026-02-23 | 4406FF+1d |  | 7 day week with NGT | 167485 |
| 4408 | 37400.37600.39900.45100.46900.160800.733700 | Slab Formwork | 5d | 2026-02-22 | 2026-02-26 | 4407FS-2d |  | 7 day week with NGT | 167495 |
| 4409 | 37400.37600.39900.45100.46900.160800.733800 | Slab Reinforcement | 5d | 2026-02-24 | 2026-02-28 | 4408FF+2d |  | 7 day week with NGT | 167505 |
| 4410 | 37400.37600.39900.45100.46900.160800.733900 | Monolithic Casting | 2d | 2026-02-28 | 2026-03-01 | 4409FF+1d |  | 7 day week with NGT | 167515 |
| 4411 | 37400.37600.39900.45100.46900.160900 | **5th Floor Roof** | 12d | 2026-03-02 | 2026-03-13 |  | start no earlier than 2026-03-02 | 7 day week with NGT | 165435 |
| 4412 | 37400.37600.39900.45100.46900.160900.734000 | Column and Shear Wall Reinforcement | 5d | 2026-03-02 | 2026-03-06 | 4410 |  | 7 day week with NGT | 167525 |
| 4413 | 37400.37600.39900.45100.46900.160900.734100 | Column and Shear Wall Formwork | 5d | 2026-03-03 | 2026-03-07 | 4412FF+1d |  | 7 day week with NGT | 167535 |
| 4414 | 37400.37600.39900.45100.46900.160900.734200 | Slab Formwork | 5d | 2026-03-06 | 2026-03-10 | 4413FS-2d |  | 7 day week with NGT | 167545 |
| 4415 | 37400.37600.39900.45100.46900.160900.734300 | Slab Reinforcement | 5d | 2026-03-08 | 2026-03-12 | 4414FF+2d |  | 7 day week with NGT | 167555 |
| 4416 | 37400.37600.39900.45100.46900.160900.734400 | Monolithic Casting | 2d | 2026-03-12 | 2026-03-13 | 4415FF+1d |  | 7 day week with NGT | 167565 |
| 4417 | 37400.37600.39900.45100.46900.161000 | **6th Floor Roof** | 12d | 2026-03-14 | 2026-03-25 |  | start no earlier than 2026-03-14 | 7 day week with NGT | 165445 |
| 4418 | 37400.37600.39900.45100.46900.161000.734500 | Column and Shear Wall Reinforcement | 5d | 2026-03-14 | 2026-03-18 | 4416 |  | 7 day week with NGT | 167575 |
| 4419 | 37400.37600.39900.45100.46900.161000.734600 | Column and Shear Wall Formwork | 5d | 2026-03-15 | 2026-03-19 | 4418FF+1d |  | 7 day week with NGT | 167585 |
| 4420 | 37400.37600.39900.45100.46900.161000.734700 | Slab Formwork | 5d | 2026-03-18 | 2026-03-22 | 4419FS-2d |  | 7 day week with NGT | 167595 |
| 4421 | 37400.37600.39900.45100.46900.161000.734800 | Slab Reinforcement | 5d | 2026-03-20 | 2026-03-24 | 4420FF+2d |  | 7 day week with NGT | 167605 |
| 4422 | 37400.37600.39900.45100.46900.161000.734900 | Monolithic Casting | 2d | 2026-03-24 | 2026-03-25 | 4421FF+1d |  | 7 day week with NGT | 167615 |

| ID | WBS | Task | Duration | Start | Finish | Predecessors | Constraint | Calendar | Unique_Task_ID |
| --- | --- | --- | --- | --- | --- | --- | --- | --- | --- |
| 4423 | 37400.37600.39900.45100.46900.161100 | **7th Floor Roof** | 12d | 2026-03-26 | 2026-04-06 |  | start no earlier than 2026-03-26 | 7 day week with NGT | 165455 |
| 4424 | 37400.37600.39900.45100.46900.161100.735000 | Column and Shear Wall Reinforcement | 5d | 2026-03-26 | 2026-03-30 | 4422 |  | 7 day week with NGT | 167625 |
| 4425 | 37400.37600.39900.45100.46900.161100.735100 | Column and Shear Wall Formwork | 5d | 2026-03-27 | 2026-03-31 | 4424FF+1d |  | 7 day week with NGT | 167635 |
| 4426 | 37400.37600.39900.45100.46900.161100.735200 | Slab Formwork | 5d | 2026-03-30 | 2026-04-03 | 4425FS-2d |  | 7 day week with NGT | 167645 |
| 4427 | 37400.37600.39900.45100.46900.161100.735300 | Slab Reinforcement | 5d | 2026-04-01 | 2026-04-05 | 4426FF+2d |  | 7 day week with NGT | 167655 |
| 4428 | 37400.37600.39900.45100.46900.161100.735400 | Monolithic Casting | 2d | 2026-04-05 | 2026-04-06 | 4427FF+1d |  | 7 day week with NGT | 167665 |
| 4429 | 37400.37600.39900.45100.46900.161200 | **8th Floor Roof** | 12d | 2026-04-07 | 2026-04-18 |  | start no earlier than 2026-04-07 | 7 day week with NGT | 165465 |
| 4430 | 37400.37600.39900.45100.46900.161200.735500 | Column and Shear Wall Reinforcement | 5d | 2026-04-07 | 2026-04-11 | 4428 |  | 7 day week with NGT | 167675 |
| 4431 | 37400.37600.39900.45100.46900.161200.735600 | Column and Shear Wall Formwork | 5d | 2026-04-08 | 2026-04-12 | 4430FF+1d |  | 7 day week with NGT | 167685 |
| 4432 | 37400.37600.39900.45100.46900.161200.735700 | Slab Formwork | 5d | 2026-04-11 | 2026-04-15 | 4431FS-2d |  | 7 day week with NGT | 167695 |
| 4433 | 37400.37600.39900.45100.46900.161200.735800 | Slab Reinforcement | 5d | 2026-04-13 | 2026-04-17 | 4432FF+2d |  | 7 day week with NGT | 167705 |
| 4434 | 37400.37600.39900.45100.46900.161200.735900 | Monolithic Casting | 2d | 2026-04-17 | 2026-04-18 | 4433FF+1d |  | 7 day week with NGT | 167715 |
| 4435 | 37400.37600.39900.45100.46900.161300 | **9th Floor Roof** | 12d | 2026-04-19 | 2026-04-30 |  | start no earlier than 2026-04-19 | 7 day week with NGT | 165475 |
| 4436 | 37400.37600.39900.45100.46900.161300.736000 | Column and Shear Wall Reinforcement | 5d | 2026-04-19 | 2026-04-23 | 4434 |  | 7 day week with NGT | 167725 |
| 4437 | 37400.37600.39900.45100.46900.161300.736100 | Column and Shear Wall Formwork | 5d | 2026-04-20 | 2026-04-24 | 4436FF+1d |  | 7 day week with NGT | 167735 |
| 4438 | 37400.37600.39900.45100.46900.161300.736200 | Slab Formwork | 5d | 2026-04-23 | 2026-04-27 | 4437FS-2d |  | 7 day week with NGT | 167745 |
| 4439 | 37400.37600.39900.45100.46900.161300.736300 | Slab Reinforcement | 5d | 2026-04-25 | 2026-04-29 | 4438FF+2d |  | 7 day week with NGT | 167755 |
| 4440 | 37400.37600.39900.45100.46900.161300.736400 | Monolithic Casting | 2d | 2026-04-29 | 2026-04-30 | 4439FF+1d |  | 7 day week with NGT | 167765 |
| 4441 | 37400.37600.39900.45100.46900.161400 | **10th Floor Roof** | 12d | 2026-05-01 | 2026-05-12 |  | start no earlier than 2026-05-01 | 7 day week with NGT | 165485 |
| 4442 | 37400.37600.39900.45100.46900.161400.736500 | Column and Shear Wall Reinforcement | 5d | 2026-05-01 | 2026-05-05 | 4440 |  | 7 day week with NGT | 167775 |
| 4443 | 37400.37600.39900.45100.46900.161400.736600 | Column and Shear Wall Formwork | 5d | 2026-05-02 | 2026-05-06 | 4442FF+1d |  | 7 day week with NGT | 167785 |
| 4444 | 37400.37600.39900.45100.46900.161400.736700 | Slab Formwork | 5d | 2026-05-05 | 2026-05-09 | 4443FS-2d |  | 7 day week with NGT | 167795 |
| 4445 | 37400.37600.39900.45100.46900.161400.736800 | Slab Reinforcement | 5d | 2026-05-07 | 2026-05-11 | 4444FF+2d |  | 7 day week with NGT | 167805 |
| 4446 | 37400.37600.39900.45100.46900.161400.736900 | Monolithic Casting | 2d | 2026-05-11 | 2026-05-12 | 4445FF+1d |  | 7 day week with NGT | 167815 |

| ID | WBS | Task | Duration | Start | Finish | Predecessors | Constraint | Calendar | Unique_Task_ID |
| --- | --- | --- | --- | --- | --- | --- | --- | --- | --- |
| 4447 | 37400.37600.39900.45100.46900.161500 | **11th Floor Roof** | 12d | 2026-05-13 | 2026-05-24 |  | start no earlier than 2026-05-13 | 7 day week with NGT | 165495 |
| 4448 | 37400.37600.39900.45100.46900.161500.737000 | Column and Shear Wall Reinforcement | 5d | 2026-05-13 | 2026-05-17 | 4446 |  | 7 day week with NGT | 167825 |
| 4449 | 37400.37600.39900.45100.46900.161500.737100 | Column and Shear Wall Formwork | 5d | 2026-05-14 | 2026-05-18 | 4448FF+1d |  | 7 day week with NGT | 167835 |
| 4450 | 37400.37600.39900.45100.46900.161500.737200 | Slab Formwork | 5d | 2026-05-17 | 2026-05-21 | 4449FS-2d |  | 7 day week with NGT | 167845 |
| 4451 | 37400.37600.39900.45100.46900.161500.737300 | Slab Reinforcement | 5d | 2026-05-19 | 2026-05-23 | 4450FF+2d |  | 7 day week with NGT | 167855 |
| 4452 | 37400.37600.39900.45100.46900.161500.737400 | Monolithic Casting | 2d | 2026-05-23 | 2026-05-24 | 4451FF+1d |  | 7 day week with NGT | 167865 |
| 4453 | 37400.37600.39900.45100.46900.161600 | **12th Floor Roof** | 12d | 2026-05-25 | 2026-06-05 |  | start no earlier than 2026-05-25 | 7 day week with NGT | 165505 |
| 4454 | 37400.37600.39900.45100.46900.161600.737500 | Column and Shear Wall Reinforcement | 5d | 2026-05-25 | 2026-05-29 | 4452 |  | 7 day week with NGT | 167875 |
| 4455 | 37400.37600.39900.45100.46900.161600.737600 | Column and Shear Wall Formwork | 5d | 2026-05-26 | 2026-05-30 | 4454FF+1d |  | 7 day week with NGT | 167885 |
| 4456 | 37400.37600.39900.45100.46900.161600.737700 | Slab Formwork | 5d | 2026-05-29 | 2026-06-02 | 4455FS-2d |  | 7 day week with NGT | 167895 |
| 4457 | 37400.37600.39900.45100.46900.161600.737800 | Slab Reinforcement | 5d | 2026-05-31 | 2026-06-04 | 4456FF+2d |  | 7 day week with NGT | 167905 |
| 4458 | 37400.37600.39900.45100.46900.161600.737900 | Monolithic Casting | 2d | 2026-06-04 | 2026-06-05 | 4457FF+1d |  | 7 day week with NGT | 167915 |
| 4459 | 37400.37600.39900.45100.46900.161700 | **13th Floor Roof** | 12d | 2026-06-06 | 2026-06-17 |  | start no earlier than 2026-06-06 | 7 day week with NGT | 165515 |
| 4460 | 37400.37600.39900.45100.46900.161700.738000 | Column and Shear Wall Reinforcement | 5d | 2026-06-06 | 2026-06-10 | 4458 |  | 7 day week with NGT | 167925 |
| 4461 | 37400.37600.39900.45100.46900.161700.738100 | Column and Shear Wall Formwork | 5d | 2026-06-07 | 2026-06-11 | 4460FF+1d |  | 7 day week with NGT | 167935 |
| 4462 | 37400.37600.39900.45100.46900.161700.738200 | Slab Formwork | 5d | 2026-06-10 | 2026-06-14 | 4461FS-2d |  | 7 day week with NGT | 167945 |
| 4463 | 37400.37600.39900.45100.46900.161700.738300 | Slab Reinforcement | 5d | 2026-06-12 | 2026-06-16 | 4462FF+2d |  | 7 day week with NGT | 167955 |
| 4464 | 37400.37600.39900.45100.46900.161700.738400 | Monolithic Casting | 2d | 2026-06-16 | 2026-06-17 | 4463FF+1d |  | 7 day week with NGT | 167965 |
| 4465 | 37400.37600.39900.45100.46900.161800 | **14th Floor Roof** | 12d | 2026-06-18 | 2026-06-29 |  | start no earlier than 2026-06-18 | 7 day week with NGT | 165525 |
| 4466 | 37400.37600.39900.45100.46900.161800.738500 | Column and Shear Wall Reinforcement | 5d | 2026-06-18 | 2026-06-22 | 4464 |  | 7 day week with NGT | 167975 |
| 4467 | 37400.37600.39900.45100.46900.161800.738600 | Column and Shear Wall Formwork | 5d | 2026-06-19 | 2026-06-23 | 4466FF+1d |  | 7 day week with NGT | 167985 |
| 4468 | 37400.37600.39900.45100.46900.161800.738700 | Slab Formwork | 5d | 2026-06-22 | 2026-06-26 | 4467FS-2d |  | 7 day week with NGT | 167995 |
| 4469 | 37400.37600.39900.45100.46900.161800.738800 | Slab Reinforcement | 5d | 2026-06-24 | 2026-06-28 | 4468FF+2d |  | 7 day week with NGT | 168005 |
| 4470 | 37400.37600.39900.45100.46900.161800.738900 | Monolithic Casting | 2d | 2026-06-28 | 2026-06-29 | 4469FF+1d |  | 7 day week with NGT | 168015 |

| ID | WBS | Task | Duration | Start | Finish | Predecessors | Constraint | Calendar | Unique_Task_ID |
| --- | --- | --- | --- | --- | --- | --- | --- | --- | --- |
| 4471 | 37400.37600.39900.45100.46900.161900 | **15th Floor Roof** | 12d | 2026-06-30 | 2026-07-11 |  | start no earlier than 2026-06-30 | 7 day week with NGT | 165535 |
| 4472 | 37400.37600.39900.45100.46900.161900.739000 | Column and Shear Wall Reinforcement | 5d | 2026-06-30 | 2026-07-04 | 4470 |  | 7 day week with NGT | 168025 |
| 4473 | 37400.37600.39900.45100.46900.161900.739100 | Column and Shear Wall Formwork | 5d | 2026-07-01 | 2026-07-05 | 4472FF+1d |  | 7 day week with NGT | 168035 |
| 4474 | 37400.37600.39900.45100.46900.161900.739200 | Slab Formwork | 5d | 2026-07-04 | 2026-07-08 | 4473FS-2d |  | 7 day week with NGT | 168045 |
| 4475 | 37400.37600.39900.45100.46900.161900.739300 | Slab Reinforcement | 5d | 2026-07-06 | 2026-07-10 | 4474FF+2d |  | 7 day week with NGT | 168055 |
| 4476 | 37400.37600.39900.45100.46900.161900.739400 | Monolithic Casting | 2d | 2026-07-10 | 2026-07-11 | 4475FF+1d |  | 7 day week with NGT | 168065 |
| 4477 | 37400.37600.39900.45100.46900.162000 | **16th Floor Roof** | 17d | 2026-07-12 | 2026-07-28 |  | start no earlier than 2026-07-12 | 7 day week with NGT | 165545 |
| 4478 | 37400.37600.39900.45100.46900.162000.739500 | Column and Shear Wall Reinforcement | 7d | 2026-07-12 | 2026-07-18 | 4476 |  | 7 day week with NGT | 168075 |
| 4479 | 37400.37600.39900.45100.46900.162000.739600 | Column and Shear Wall Formwork | 7d | 2026-07-13 | 2026-07-19 | 4478FF+1d |  | 7 day week with NGT | 168085 |
| 4480 | 37400.37600.39900.45100.46900.162000.739700 | Slab Formwork | 8d | 2026-07-18 | 2026-07-25 | 4479FS-2d |  | 7 day week with NGT | 168095 |
| 4481 | 37400.37600.39900.45100.46900.162000.739800 | Slab Reinforcement | 7d | 2026-07-21 | 2026-07-27 | 4480FF+2d |  | 7 day week with NGT | 168105 |
| 4482 | 37400.37600.39900.45100.46900.162000.739900 | Monolithic Casting | 4d | 2026-07-25 | 2026-07-28 | 4481FF+1d |  | 7 day week with NGT | 168115 |
| 4483 | 37400.37600.39900.45100.46900.162100 | **17th Floor Roof** | 12d | 2026-07-29 | 2026-08-09 |  | start no earlier than 2026-07-29 | 7 day week with NGT | 165555 |
| 4484 | 37400.37600.39900.45100.46900.162100.740000 | Column and Shear Wall Reinforcement | 5d | 2026-07-29 | 2026-08-02 | 4482 |  | 7 day week with NGT | 168125 |
| 4485 | 37400.37600.39900.45100.46900.162100.740100 | Column and Shear Wall Formwork | 5d | 2026-07-30 | 2026-08-03 | 4484FF+1d |  | 7 day week with NGT | 168135 |
| 4486 | 37400.37600.39900.45100.46900.162100.740200 | Slab Formwork | 5d | 2026-08-02 | 2026-08-06 | 4485FS-2d |  | 7 day week with NGT | 168145 |
| 4487 | 37400.37600.39900.45100.46900.162100.740300 | Slab Reinforcement | 5d | 2026-08-04 | 2026-08-08 | 4486FF+2d |  | 7 day week with NGT | 168155 |
| 4488 | 37400.37600.39900.45100.46900.162100.740400 | Monolithic Casting | 2d | 2026-08-08 | 2026-08-09 | 4487FF+1d |  | 7 day week with NGT | 168165 |
| 4489 | 37400.37600.39900.45100.46900.162200 | **18th Floor Roof** | 12d | 2026-08-10 | 2026-08-21 |  | start no earlier than 2026-08-10 | 7 day week with NGT | 165565 |
| 4490 | 37400.37600.39900.45100.46900.162200.740500 | Column and Shear Wall Reinforcement | 6d | 2026-08-10 | 2026-08-15 | 4488 |  | 7 day week with NGT | 168175 |
| 4491 | 37400.37600.39900.45100.46900.162200.740600 | Column and Shear Wall Formwork | 5d | 2026-08-12 | 2026-08-16 | 4490FF+1d |  | 7 day week with NGT | 168185 |
| 4492 | 37400.37600.39900.45100.46900.162200.740700 | Slab Formwork | 5d | 2026-08-15 | 2026-08-19 | 4491FS-2d |  | 7 day week with NGT | 168195 |
| 4493 | 37400.37600.39900.45100.46900.162200.740800 | Slab Reinforcement | 5d | 2026-08-16 | 2026-08-20 | 4492FF+1d |  | 7 day week with NGT | 168205 |
| 4494 | 37400.37600.39900.45100.46900.162200.740900 | Monolithic Casting | 2d | 2026-08-20 | 2026-08-21 | 4493FF+1d |  | 7 day week with NGT | 168215 |

| ID | WBS | Task | Duration | Start | Finish | Predecessors | Constraint | Calendar | Unique_Task_ID |
| --- | --- | --- | --- | --- | --- | --- | --- | --- | --- |
| 4495 | 37400.37600.39900.45100.46900.162300 | **19th Floor Roof** | 11d | 2026-08-22 | 2026-09-01 |  | start no earlier than 2026-08-22 | 7 day week with NGT | 165575 |
| 4496 | 37400.37600.39900.45100.46900.162300.741000 | Column and Shear Wall Reinforcement | 4d | 2026-08-22 | 2026-08-25 | 4494 |  | 7 day week with NGT | 168225 |
| 4497 | 37400.37600.39900.45100.46900.162300.741100 | Column and Shear Wall Formwork | 4d | 2026-08-23 | 2026-08-26 | 4496FF+1d |  | 7 day week with NGT | 168235 |
| 4498 | 37400.37600.39900.45100.46900.162300.741200 | Slab Formwork | 6d | 2026-08-25 | 2026-08-30 | 4497FS-2d |  | 7 day week with NGT | 168245 |
| 4499 | 37400.37600.39900.45100.46900.162300.741300 | Slab Reinforcement | 5d | 2026-08-27 | 2026-08-31 | 4498FF+1d |  | 7 day week with NGT | 168255 |
| 4500 | 37400.37600.39900.45100.46900.162300.741400 | Monolithic Casting | 4d | 2026-08-29 | 2026-09-01 | 4499FF+1d |  | 7 day week with NGT | 168265 |
| 4501 | 37400.37600.39900.45100.46900.162400 | **20th Floor Roof** | 11d | 2026-09-02 | 2026-09-12 |  | start no earlier than 2026-09-02 | 7 day week with NGT | 165585 |
| 4502 | 37400.37600.39900.45100.46900.162400.741500 | Column and Shear Wall Reinforcement | 4d | 2026-09-02 | 2026-09-05 | 4500 |  | 7 day week with NGT | 168275 |
| 4503 | 37400.37600.39900.45100.46900.162400.741600 | Column and Shear Wall Formwork | 4d | 2026-09-03 | 2026-09-06 | 4502FF+1d |  | 7 day week with NGT | 168285 |
| 4504 | 37400.37600.39900.45100.46900.162400.741700 | Slab Formwork | 6d | 2026-09-05 | 2026-09-10 | 4503FS-2d |  | 7 day week with NGT | 168295 |
| 4505 | 37400.37600.39900.45100.46900.162400.741800 | Slab Reinforcement | 5d | 2026-09-07 | 2026-09-11 | 4504FF+1d |  | 7 day week with NGT | 168305 |
| 4506 | 37400.37600.39900.45100.46900.162400.741900 | Monolithic Casting | 4d | 2026-09-09 | 2026-09-12 | 4505FF+1d |  | 7 day week with NGT | 168315 |
| 4507 | 37400.37600.39900.45100.46900.162500 | **21th Floor Roof** | 11d | 2026-09-13 | 2026-09-23 |  | start no earlier than 2026-09-13 | 7 day week with NGT | 165595 |
| 4508 | 37400.37600.39900.45100.46900.162500.742000 | Column and Shear Wall Reinforcement | 4d | 2026-09-13 | 2026-09-16 | 4506 |  | 7 day week with NGT | 168325 |
| 4509 | 37400.37600.39900.45100.46900.162500.742100 | Column and Shear Wall Formwork | 4d | 2026-09-14 | 2026-09-17 | 4508FF+1d |  | 7 day week with NGT | 168335 |
| 4510 | 37400.37600.39900.45100.46900.162500.742200 | Slab Formwork | 6d | 2026-09-16 | 2026-09-21 | 4509FS-2d |  | 7 day week with NGT | 168345 |
| 4511 | 37400.37600.39900.45100.46900.162500.742300 | Slab Reinforcement | 5d | 2026-09-18 | 2026-09-22 | 4510FF+1d |  | 7 day week with NGT | 168355 |
| 4512 | 37400.37600.39900.45100.46900.162500.742400 | Monolithic Casting | 4d | 2026-09-20 | 2026-09-23 | 4511FF+1d |  | 7 day week with NGT | 168365 |
| 4513 | 37400.37600.39900.45100.46900.162600 | **22th Floor Roof** | 11d | 2026-09-24 | 2026-10-04 |  | start no earlier than 2026-09-24 | 7 day week with NGT | 165605 |
| 4514 | 37400.37600.39900.45100.46900.162600.742500 | Column and Shear Wall Reinforcement | 4d | 2026-09-24 | 2026-09-27 | 4512 |  | 7 day week with NGT | 168375 |
| 4515 | 37400.37600.39900.45100.46900.162600.742600 | Column and Shear Wall Formwork | 4d | 2026-09-25 | 2026-09-28 | 4514FF+1d |  | 7 day week with NGT | 168385 |
| 4516 | 37400.37600.39900.45100.46900.162600.742700 | Slab Formwork | 6d | 2026-09-27 | 2026-10-02 | 4515FS-2d |  | 7 day week with NGT | 168395 |
| 4517 | 37400.37600.39900.45100.46900.162600.742800 | Slab Reinforcement | 5d | 2026-09-29 | 2026-10-03 | 4516FF+1d |  | 7 day week with NGT | 168405 |
| 4518 | 37400.37600.39900.45100.46900.162600.742900 | Monolithic Casting | 4d | 2026-10-01 | 2026-10-04 | 4517FF+1d |  | 7 day week with NGT | 168415 |

| ID | WBS | Task | Duration | Start | Finish | Predecessors | Constraint | Calendar | Unique_Task_ID |
| --- | --- | --- | --- | --- | --- | --- | --- | --- | --- |
| 4519 | 37400.37600.39900.45100.46900.162700 | **23th Floor Roof** | 11d | 2026-10-05 | 2026-10-15 |  | start no earlier than 2026-10-05 | 7 day week with NGT | 165615 |
| 4520 | 37400.37600.39900.45100.46900.162700.743000 | Column and Shear Wall Reinforcement | 4d | 2026-10-05 | 2026-10-08 | 4518 |  | 7 day week with NGT | 168425 |
| 4521 | 37400.37600.39900.45100.46900.162700.743100 | Column and Shear Wall Formwork | 4d | 2026-10-06 | 2026-10-09 | 4520FF+1d |  | 7 day week with NGT | 168435 |
| 4522 | 37400.37600.39900.45100.46900.162700.743200 | Slab Formwork | 6d | 2026-10-08 | 2026-10-13 | 4521FS-2d |  | 7 day week with NGT | 168445 |
| 4523 | 37400.37600.39900.45100.46900.162700.743300 | Slab Reinforcement | 5d | 2026-10-10 | 2026-10-14 | 4522FF+1d |  | 7 day week with NGT | 168455 |
| 4524 | 37400.37600.39900.45100.46900.162700.743400 | Monolithic Casting | 4d | 2026-10-12 | 2026-10-15 | 4523FF+1d |  | 7 day week with NGT | 168465 |
| 4525 | 37400.37600.39900.45100.46900.162800 | **24th Floor Roof** | 11d | 2026-10-16 | 2026-10-26 |  | start no earlier than 2026-10-16 | 7 day week with NGT | 165625 |
| 4526 | 37400.37600.39900.45100.46900.162800.743500 | Column and Shear Wall Reinforcement | 4d | 2026-10-16 | 2026-10-19 | 4524 |  | 7 day week with NGT | 168475 |
| 4527 | 37400.37600.39900.45100.46900.162800.743600 | Column and Shear Wall Formwork | 4d | 2026-10-17 | 2026-10-20 | 4526FF+1d |  | 7 day week with NGT | 168485 |
| 4528 | 37400.37600.39900.45100.46900.162800.743700 | Slab Formwork | 6d | 2026-10-19 | 2026-10-24 | 4527FS-2d |  | 7 day week with NGT | 168495 |
| 4529 | 37400.37600.39900.45100.46900.162800.743800 | Slab Reinforcement | 5d | 2026-10-21 | 2026-10-25 | 4528FF+1d |  | 7 day week with NGT | 168505 |
| 4530 | 37400.37600.39900.45100.46900.162800.743900 | Monolithic Casting | 4d | 2026-10-23 | 2026-10-26 | 4529FF+1d |  | 7 day week with NGT | 168515 |
| 4531 | 37400.37600.39900.45100.46900.162900 | **25th Floor Roof** | 11d | 2026-10-27 | 2026-12-21 |  | start no earlier than 2026-10-27 | 7 day week with NGT | 165635 |
| 4532 | 37400.37600.39900.45100.46900.162900.744000 | Column and Shear Wall Reinforcement | 4d | 2026-10-27 | 2026-10-30 | 4530 |  | 7 day week with NGT | 168525 |
| 4533 | 37400.37600.39900.45100.46900.162900.744100 | Column and Shear Wall Formwork | 4d | 2026-10-28 | 2026-10-31 | 4532FF+1d |  | 7 day week with NGT | 168535 |
| 4534 | 37400.37600.39900.45100.46900.162900.744200 | Slab Formwork | 6d | 2026-10-30 | 2026-12-19 | 4533FS-2d |  | 7 day week with NGT | 168545 |
| 4535 | 37400.37600.39900.45100.46900.162900.744300 | Slab Reinforcement | 5d | 2026-12-16 | 2026-12-20 | 4534FF+1d |  | 7 day week with NGT | 168555 |
| 4536 | 37400.37600.39900.45100.46900.162900.744400 | Monolithic Casting | 4d | 2026-12-18 | 2026-12-21 | 4535FF+1d |  | 7 day week with NGT | 168565 |
| 4537 | 37400.37600.39900.45100.46900.163000 | **26th Floor Roof** | 17d | 2026-12-22 | 2027-01-07 |  | start no earlier than 2026-12-22 | 7 day week with NGT | 165645 |
| 4538 | 37400.37600.39900.45100.46900.163000.744500 | Column and Shear Wall Reinforcement | 8d | 2026-12-22 | 2026-12-29 | 4536 |  | 7 day week with NGT | 168575 |
| 4539 | 37400.37600.39900.45100.46900.163000.744600 | Column and Shear Wall Formwork | 7d | 2026-12-24 | 2026-12-30 | 4538FF+1d |  | 7 day week with NGT | 168585 |
| 4540 | 37400.37600.39900.45100.46900.163000.744700 | Slab Formwork | 8d | 2026-12-29 | 2027-01-05 | 4539FS-2d |  | 7 day week with NGT | 168595 |
| 4541 | 37400.37600.39900.45100.46900.163000.744800 | Slab Reinforcement | 8d | 2026-12-30 | 2027-01-06 | 4540FF+1d |  | 7 day week with NGT | 168605 |
| 4542 | 37400.37600.39900.45100.46900.163000.744900 | Monolithic Casting | 4d | 2027-01-04 | 2027-01-07 | 4541FF+1d |  | 7 day week with NGT | 168615 |

| ID | WBS | Task | Duration | Start | Finish | Predecessors | Constraint | Calendar | Unique_Task_ID |
| --- | --- | --- | --- | --- | --- | --- | --- | --- | --- |
| 4543 | 37400.37600.39900.45100.46900.163100 | **27th Floor Roof** | 11d | 2027-01-08 | 2027-01-18 |  | start no earlier than 2027-01-08 | 7 day week with NGT | 165655 |
| 4544 | 37400.37600.39900.45100.46900.163100.745000 | Column and Shear Wall Reinforcement | 4d | 2027-01-08 | 2027-01-11 | 4542 |  | 7 day week with NGT | 168625 |
| 4545 | 37400.37600.39900.45100.46900.163100.745100 | Column and Shear Wall Formwork | 4d | 2027-01-09 | 2027-01-12 | 4544FF+1d |  | 7 day week with NGT | 168635 |
| 4546 | 37400.37600.39900.45100.46900.163100.745200 | Slab Formwork | 6d | 2027-01-11 | 2027-01-16 | 4545FS-2d |  | 7 day week with NGT | 168645 |
| 4547 | 37400.37600.39900.45100.46900.163100.745300 | Slab Reinforcement | 5d | 2027-01-13 | 2027-01-17 | 4546FF+1d |  | 7 day week with NGT | 168655 |
| 4548 | 37400.37600.39900.45100.46900.163100.745400 | Monolithic Casting | 4d | 2027-01-15 | 2027-01-18 | 4547FF+1d |  | 7 day week with NGT | 168665 |
| 4549 | 37400.37600.39900.45100.46900.163200 | **28th Floor Roof** | 11d | 2027-01-19 | 2027-01-29 |  | start no earlier than 2027-01-19 | 7 day week with NGT | 165665 |
| 4550 | 37400.37600.39900.45100.46900.163200.745500 | Column and Shear Wall Reinforcement | 4d | 2027-01-19 | 2027-01-22 | 4548 |  | 7 day week with NGT | 168675 |
| 4551 | 37400.37600.39900.45100.46900.163200.745600 | Column and Shear Wall Formwork | 4d | 2027-01-20 | 2027-01-23 | 4550FF+1d |  | 7 day week with NGT | 168685 |
| 4552 | 37400.37600.39900.45100.46900.163200.745700 | Slab Formwork | 6d | 2027-01-22 | 2027-01-27 | 4551FS-2d |  | 7 day week with NGT | 168695 |
| 4553 | 37400.37600.39900.45100.46900.163200.745800 | Slab Reinforcement | 5d | 2027-01-24 | 2027-01-28 | 4552FF+1d |  | 7 day week with NGT | 168705 |
| 4554 | 37400.37600.39900.45100.46900.163200.745900 | Monolithic Casting | 4d | 2027-01-26 | 2027-01-29 | 4553FF+1d |  | 7 day week with NGT | 168715 |
| 4555 | 37400.37600.39900.45100.46900.163300 | **29th Floor Roof** | 11d | 2027-01-30 | 2027-02-09 |  | start no earlier than 2027-01-30 | 7 day week with NGT | 165675 |
| 4556 | 37400.37600.39900.45100.46900.163300.746000 | Column and Shear Wall Reinforcement | 4d | 2027-01-30 | 2027-02-02 | 4554 |  | 7 day week with NGT | 168725 |
| 4557 | 37400.37600.39900.45100.46900.163300.746100 | Column and Shear Wall Formwork | 4d | 2027-01-31 | 2027-02-03 | 4556FF+1d |  | 7 day week with NGT | 168735 |
| 4558 | 37400.37600.39900.45100.46900.163300.746200 | Slab Formwork | 6d | 2027-02-02 | 2027-02-07 | 4557FS-2d |  | 7 day week with NGT | 168745 |
| 4559 | 37400.37600.39900.45100.46900.163300.746300 | Slab Reinforcement | 5d | 2027-02-04 | 2027-02-08 | 4558FF+1d |  | 7 day week with NGT | 168755 |
| 4560 | 37400.37600.39900.45100.46900.163300.746400 | Monolithic Casting | 4d | 2027-02-06 | 2027-02-09 | 4559FF+1d |  | 7 day week with NGT | 168765 |
| 4561 | 37400.37600.39900.45100.46900.163400 | **30th Floor Roof** | 11d | 2027-02-10 | 2027-02-20 |  | start no earlier than 2027-02-10 | 7 day week with NGT | 165685 |
| 4562 | 37400.37600.39900.45100.46900.163400.746500 | Column and Shear Wall Reinforcement | 4d | 2027-02-10 | 2027-02-13 | 4560 |  | 7 day week with NGT | 168775 |
| 4563 | 37400.37600.39900.45100.46900.163400.746600 | Column and Shear Wall Formwork | 4d | 2027-02-11 | 2027-02-14 | 4562FF+1d |  | 7 day week with NGT | 168785 |
| 4564 | 37400.37600.39900.45100.46900.163400.746700 | Slab Formwork | 6d | 2027-02-13 | 2027-02-18 | 4563FS-2d |  | 7 day week with NGT | 168795 |
| 4565 | 37400.37600.39900.45100.46900.163400.746800 | Slab Reinforcement | 5d | 2027-02-15 | 2027-02-19 | 4564FF+1d |  | 7 day week with NGT | 168805 |
| 4566 | 37400.37600.39900.45100.46900.163400.746900 | Monolithic Casting | 4d | 2027-02-17 | 2027-02-20 | 4565FF+1d |  | 7 day week with NGT | 168815 |

| ID | WBS | Task | Duration | Start | Finish | Predecessors | Constraint | Calendar | Unique_Task_ID |
| --- | --- | --- | --- | --- | --- | --- | --- | --- | --- |
| 4567 | 37400.37600.39900.45100.46900.163500 | **31st Floor Roof** | 17d | 2027-02-21 | 2027-03-09 |  | start no earlier than 2027-02-21 | 7 day week with NGT | 165695 |
| 4568 | 37400.37600.39900.45100.46900.163500.747000 | Column and Shear Wall Reinforcement | 7d | 2027-02-21 | 2027-02-27 | 4566 |  | 7 day week with NGT | 168825 |
| 4569 | 37400.37600.39900.45100.46900.163500.747100 | Column and Shear Wall Formwork | 7d | 2027-02-22 | 2027-02-28 | 4568FF+1d |  | 7 day week with NGT | 168835 |
| 4570 | 37400.37600.39900.45100.46900.163500.747200 | Slab Formwork | 9d | 2027-02-27 | 2027-03-07 | 4569FS-2d |  | 7 day week with NGT | 168845 |
| 4571 | 37400.37600.39900.45100.46900.163500.747300 | Slab Reinforcement | 7d | 2027-03-02 | 2027-03-08 | 4570FF+1d |  | 7 day week with NGT | 168855 |
| 4572 | 37400.37600.39900.45100.46900.163500.747400 | Monolithic Casting | 4d | 2027-03-06 | 2027-03-09 | 4571FF+1d |  | 7 day week with NGT | 168865 |
| 4573 | 37400.37600.39900.49900 | **Post Pour Activitis** | 357.25d | 2026-02-07 | 2027-03-16 |  | start no earlier than 2026-02-07 | 7 day week with NGT | 164945 |
| 4574 | 37400.37600.39900.49900.296900 | 1st Floor | 11d | 2026-02-07 | 2026-02-17 | 4404FF |  | 7 day week with NGT | 165805 |
| 4575 | 37400.37600.39900.49900.297000 | 2nd Floor | 11d | 2026-02-19 | 2026-03-01 | 4574FS-1d, 4410FF |  | 7 day week with NGT | 165815 |
| 4576 | 37400.37600.39900.49900.297100 | 3rd Floor | 11d | 2026-03-03 | 2026-03-13 | 4575FS-1d, 4416FF |  | 7 day week with NGT | 165825 |
| 4577 | 37400.37600.39900.49900.297200 | 4th Floor | 11d | 2026-03-15 | 2026-03-25 | 4576FS-1d, 4422FF |  | 7 day week with NGT | 165835 |
| 4578 | 37400.37600.39900.49900.297300 | 5th Floor | 11d | 2026-03-27 | 2026-04-06 | 4577FS-1d, 4428FF |  | 7 day week with NGT | 165845 |
| 4579 | 37400.37600.39900.49900.297400 | 6th Floor | 11d | 2026-04-08 | 2026-04-19 | 4578FS-1d, 4434FF+0.25d |  | 7 day week with NGT | 165855 |
| 4580 | 37400.37600.39900.49900.297500 | 7th Floor | 11d | 2026-04-20 | 2026-05-01 | 4579FS-1d, 4440FF+0.25d |  | 7 day week with NGT | 165865 |
| 4581 | 37400.37600.39900.49900.297600 | 8th Floor | 11d | 2026-05-02 | 2026-05-13 | 4580FS-1d, 4446FF+0.25d |  | 7 day week with NGT | 165875 |
| 4582 | 37400.37600.39900.49900.297700 | 9th Floor | 11d | 2026-05-14 | 2026-05-25 | 4581FS-1d, 4452FF+0.25d |  | 7 day week with NGT | 165885 |
| 4583 | 37400.37600.39900.49900.297800 | 10th Floor | 6d | 2026-05-31 | 2026-06-06 | 4582FS-1d, 4458FF+0.25d |  | 7 day week with NGT | 165895 |
| 4584 | 37400.37600.39900.49900.297900 | 11th Floor | 6d | 2026-06-12 | 2026-06-18 | 4583FS-1d, 4464FF+0.25d |  | 7 day week with NGT | 165905 |
| 4585 | 37400.37600.39900.49900.298000 | 12th Floor | 6d | 2026-06-24 | 2026-06-30 | 4584FS-1d, 4470FF+0.25d |  | 7 day week with NGT | 165915 |
| 4586 | 37400.37600.39900.49900.298100 | 13th Floor | 6d | 2026-07-06 | 2026-07-12 | 4585FS-1d, 4476FF+0.25d |  | 7 day week with NGT | 165925 |
| 4587 | 37400.37600.39900.49900.298200 | 14th floor | 6d | 2026-07-23 | 2026-07-29 | 4586FS-1d, 4482FF+0.25d |  | 7 day week with NGT | 165935 |
| 4588 | 37400.37600.39900.49900.298300 | 15th Floor | 6d | 2026-08-04 | 2026-08-10 | 4587FS-1d, 4488FF+0.25d |  | 7 day week with NGT | 165945 |
| 4589 | 37400.37600.39900.49900.298400 | 16th Floor | 6d | 2026-08-16 | 2026-08-22 | 4588FS-1d, 4494FF+0.25d |  | 7 day week with NGT | 165955 |
| 4590 | 37400.37600.39900.49900.298500 | 17th Floor | 6d | 2026-08-27 | 2026-09-02 | 4589FS-1d, 4500FF+0.25d |  | 7 day week with NGT | 165965 |
| 4591 | 37400.37600.39900.49900.298600 | 18th Floor | 6d | 2026-09-07 | 2026-09-13 | 4590FS-1d, 4506FF+0.25d |  | 7 day week with NGT | 165975 |
| 4592 | 37400.37600.39900.49900.298700 | 19th Floor | 6d | 2026-09-18 | 2026-09-24 | 4591FS-1d, 4512FF+0.25d |  | 7 day week with NGT | 165985 |
| 4593 | 37400.37600.39900.49900.298800 | 20th Floor | 6d | 2026-09-29 | 2026-10-05 | 4592FS-1d, 4518FF+0.25d |  | 7 day week with NGT | 165995 |
| 4594 | 37400.37600.39900.49900.298900 | 21th Floor | 6d | 2026-10-10 | 2026-10-16 | 4593FS-1d, 4524FF+0.25d |  | 7 day week with NGT | 166005 |
| 4595 | 37400.37600.39900.49900.299000 | 22th Floor | 4d | 2026-10-23 | 2026-10-27 | 4594FS-1d, 4530FF+0.25d |  | 7 day week with NGT | 166015 |
| 4596 | 37400.37600.39900.49900.299100 | 23rd Floor | 4d | 2026-12-18 | 2026-12-22 | 4595FS-1d, 4536FF+0.25d |  | 7 day week with NGT | 166025 |
| 4597 | 37400.37600.39900.49900.299200 | 24th Floor | 4d | 2027-01-04 | 2027-01-08 | 4596FS-1d, 4542FF+0.25d |  | 7 day week with NGT | 166035 |
| 4598 | 37400.37600.39900.49900.299300 | 25th Floor | 4d | 2027-01-15 | 2027-01-19 | 4597FS-1d, 4548FF+0.25d |  | 7 day week with NGT | 166045 |
| 4599 | 37400.37600.39900.49900.299400 | 26th Floor | 4d | 2027-01-26 | 2027-01-30 | 4598FS-1d, 4554FF+0.25d |  | 7 day week with NGT | 166055 |
| 4600 | 37400.37600.39900.49900.299500 | 27th Floor | 4d | 2027-02-06 | 2027-02-10 | 4599FS-1d, 4560FF+0.25d |  | 7 day week with NGT | 166065 |
| 4601 | 37400.37600.39900.49900.299600 | 28th Floor | 4d | 2027-02-17 | 2027-02-21 | 4600FS-1d, 4566FF+0.25d |  | 7 day week with NGT | 166075 |
| 4602 | 37400.37600.39900.49900.299700 | 29th Floor | 4d | 2027-03-06 | 2027-03-10 | 4601FS-1d, 4572FF+0.25d |  | 7 day week with NGT | 166085 |
| 4603 | 37400.37600.39900.49900.299800 | 30th Floor | 4d | 2027-03-09 | 2027-03-13 | 4602FS-1d |  | 7 day week with NGT | 166095 |
| 4604 | 37400.37600.39900.49900.299900 | 31st Floor | 4d | 2027-03-12 | 2027-03-16 | 4603FS-1d |  | 7 day week with NGT | 166105 |

| ID | WBS | Task | Duration | Start | Finish | Predecessors | Constraint | Calendar | Unique_Task_ID |
| --- | --- | --- | --- | --- | --- | --- | --- | --- | --- |
| 4605 | 37400.37600.39900.42900 | **Finishing Works** | 688d | 2025-12-16 | 2028-02-01 |  | start no earlier than 2025-12-16 | 7 day week with NGT | 164905 |
| 4606 | 37400.37600.39900.42900.43800 | **Flat Finishing** | 571.25d | 2025-12-16 | 2027-08-24 |  | start no earlier than 2025-12-16 | 7 day week with NGT | 164915 |
| 4607 | 37400.37600.39900.42900.43800.213400 | **Podium** | 123d | 2025-12-16 | 2026-04-17 |  | start no earlier than 2025-12-16 | 7 day week with NGT | 165745 |
| 4608 | 37400.37600.39900.42900.43800.213400.747500 | Masonary Works | 30d | 2025-12-16 | 2026-01-14 | 4385FS+30d |  | 7 day week with NGT | 168875 |
| 4609 | 37400.37600.39900.42900.43800.213400.747600 | Plaster Works | 20d | 2025-12-31 | 2026-01-19 | 4608SS+15d |  | 7 day week with NGT | 168885 |
| 4610 | 37400.37600.39900.42900.43800.213400.747700 | White Wash | 18d | 2026-01-15 | 2026-02-01 | 4609SS+15d |  | 7 day week with NGT | 168895 |
| 4611 | 37400.37600.39900.42900.43800.213400.747800 | VDF | 25d | 2026-03-24 | 2026-04-17 | 4376, 4610 |  | 7 day week with NGT | 168905 |
| 4612 | 37400.37600.39900.42900.43800.213300 | **First Floor** | 84d | 2026-02-18 | 2026-05-12 |  | start no earlier than 2026-02-18 | 7 day week with NGT | 165755 |
| 4613 | 37400.37600.39900.42900.43800.213300.747900 | Masonary Works | 20d | 2026-02-18 | 2026-03-09 | 4574 |  | 7 day week with NGT | 168915 |
| 4614 | 37400.37600.39900.42900.43800.213300.748000 | Plaster Works | 20d | 2026-03-05 | 2026-03-24 | 4613SS+15d |  | 7 day week with NGT | 168925 |
| 4615 | 37400.37600.39900.42900.43800.213300.748100 | White Wash | 18d | 2026-03-20 | 2026-04-06 | 4614SS+15d |  | 7 day week with NGT | 168935 |
| 4616 | 37400.37600.39900.42900.43800.213300.748200 | VDF | 25d | 2026-04-18 | 2026-05-12 | 4611, 4615 |  | 7 day week with NGT | 168945 |
| 4617 | 37400.37600.39900.42900.43800.79600 | **Second Floor** | 123.25d | 2026-03-14 | 2026-07-15 |  | start no earlier than 2026-03-14 | 7 day week with NGT | 164965 |
| 4618 | 37400.37600.39900.42900.43800.79600.748300 | Blockwork | 7d | 2026-03-14 | 2026-03-21 | 4576FS+0.25d |  | 7 day week with NGT | 168955 |
| 4619 | 37400.37600.39900.42900.43800.79600.748400 | Internal Plumbing Works | 6d | 2026-03-21 | 2026-03-27 | 4618 |  | 7 day week with NGT | 168965 |
| 4620 | 37400.37600.39900.42900.43800.79600.748500 | Waterproofing Works | 7d | 2026-03-23 | 2026-03-30 | 4619SS+2d |  | 7 day week with NGT | 168975 |
| 4621 | 37400.37600.39900.42900.43800.79600.748600 | PCC | 8d | 2026-03-30 | 2026-04-07 | 4620, 4623SS |  | 7 day week with NGT | 168985 |
| 4622 | 37400.37600.39900.42900.43800.79600.748700 | Electrical Wiring works | 5d | 2026-03-23 | 2026-03-28 | 4620SS |  | 7 day week with NGT | 168995 |
| 4623 | 37400.37600.39900.42900.43800.79600.748800 | Internal Plaster Works | 3d | 2026-03-28 | 2026-03-31 | 4619FS+0.25d, 4622FS+0.25d |  | 7 day week with NGT | 169005 |
| 4624 | 37400.37600.39900.42900.43800.79600.748900 | Toilet Dado Works | 10d | 2026-03-31 | 2026-04-10 | 4619, 4620, 4622, 4623 |  | 7 day week with NGT | 169015 |
| 4625 | 37400.37600.39900.42900.43800.79600.749000 | Toilet Flooring Works | 10d | 2026-04-10 | 2026-04-20 | 4621, 4624 |  | 7 day week with NGT | 169025 |
| 4626 | 37400.37600.39900.42900.43800.79600.749100 | Living Dining Flooring | 10d | 2026-04-20 | 2026-04-30 | 4625 |  | 7 day week with NGT | 169035 |
| 4627 | 37400.37600.39900.42900.43800.79600.749200 | Temporary Door Fixing | 9d | 2026-03-21 | 2026-03-30 | 4618 |  | 7 day week with NGT | 169045 |
| 4628 | 37400.37600.39900.42900.43800.79600.749300 | Aluminium Door Widnow Fixing | 40d | 2026-04-30 | 2026-06-09 | 4626, 4627 |  | 7 day week with NGT | 169055 |
| 4629 | 37400.37600.39900.42900.43800.79600.749400 | Rehung Door Fixing | 8d | 2026-06-09 | 2026-06-17 | 4628 |  | 7 day week with NGT | 169065 |
| 4630 | 37400.37600.39900.42900.43800.79600.749500 | Putty Primer coat | 6d | 2026-06-17 | 2026-06-23 | 4629 |  | 7 day week with NGT | 169075 |
| 4631 | 37400.37600.39900.42900.43800.79600.749600 | Painting First Coat | 12d | 2026-06-23 | 2026-07-05 | 4620, 4622, 4629, 4630 |  | 7 day week with NGT | 169085 |
| 4632 | 37400.37600.39900.42900.43800.79600.749700 | False ceiling works | 10d | 2026-07-05 | 2026-07-15 | 4631 |  | 7 day week with NGT | 169095 |

| ID | WBS | Task | Duration | Start | Finish | Predecessors | Constraint | Calendar | Unique_Task_ID |
| --- | --- | --- | --- | --- | --- | --- | --- | --- | --- |
| 4633 | 37400.37600.39900.42900.43800.79700 | **Third Floor** | 123.25d | 2026-03-26 | 2026-07-27 |  | start no earlier than 2026-03-26 | 7 day week with NGT | 164975 |
| 4634 | 37400.37600.39900.42900.43800.79700.749800 | Blockwork | 7d | 2026-03-26 | 2026-04-02 | 4577FS+0.25d, 4618 |  | 7 day week with NGT | 169105 |
| 4635 | 37400.37600.39900.42900.43800.79700.749900 | Internal Plumbing Works | 6d | 2026-04-02 | 2026-04-08 | 4634 |  | 7 day week with NGT | 169115 |
| 4636 | 37400.37600.39900.42900.43800.79700.750000 | Waterproofing Works | 7d | 2026-04-04 | 2026-04-11 | 4635SS+2d |  | 7 day week with NGT | 169125 |
| 4637 | 37400.37600.39900.42900.43800.79700.750100 | PCC | 8d | 2026-04-11 | 2026-04-19 | 4636, 4639SS |  | 7 day week with NGT | 169135 |
| 4638 | 37400.37600.39900.42900.43800.79700.750200 | Electrical Wiring works | 5d | 2026-04-04 | 2026-04-09 | 4636SS |  | 7 day week with NGT | 169145 |
| 4639 | 37400.37600.39900.42900.43800.79700.750300 | Internal Plaster Works | 3d | 2026-04-09 | 2026-04-12 | 4635FS+0.25d, 4638FS+0.25d |  | 7 day week with NGT | 169155 |
| 4640 | 37400.37600.39900.42900.43800.79700.750400 | Toilet Dado Works | 10d | 2026-04-12 | 2026-04-22 | 4635, 4636, 4638, 4639 |  | 7 day week with NGT | 169165 |
| 4641 | 37400.37600.39900.42900.43800.79700.750500 | Toilet Flooring Works | 10d | 2026-04-22 | 2026-05-02 | 4637, 4640 |  | 7 day week with NGT | 169175 |
| 4642 | 37400.37600.39900.42900.43800.79700.750600 | Living Dining Flooring | 10d | 2026-05-02 | 2026-05-12 | 4641 |  | 7 day week with NGT | 169185 |
| 4643 | 37400.37600.39900.42900.43800.79700.750700 | Temporary Door Fixing | 9d | 2026-04-02 | 2026-04-11 | 4634 |  | 7 day week with NGT | 169195 |
| 4644 | 37400.37600.39900.42900.43800.79700.750800 | Aluminium Door Widnow Fixing | 40d | 2026-05-12 | 2026-06-21 | 4642, 4643 |  | 7 day week with NGT | 169205 |
| 4645 | 37400.37600.39900.42900.43800.79700.750900 | Rehung Door Fixing | 8d | 2026-06-21 | 2026-06-29 | 4644 |  | 7 day week with NGT | 169215 |
| 4646 | 37400.37600.39900.42900.43800.79700.751000 | Putty Primer coat | 6d | 2026-06-29 | 2026-07-05 | 4645 |  | 7 day week with NGT | 169225 |
| 4647 | 37400.37600.39900.42900.43800.79700.751100 | Painting First Coat | 12d | 2026-07-05 | 2026-07-17 | 4636, 4638, 4645, 4646 |  | 7 day week with NGT | 169235 |
| 4648 | 37400.37600.39900.42900.43800.79700.751200 | False ceiling works | 10d | 2026-07-17 | 2026-07-27 | 4632, 4647 |  | 7 day week with NGT | 169245 |
| 4649 | 37400.37600.39900.42900.43800.79800 | **Fourth Floor** | 125d | 2026-04-07 | 2026-08-10 |  | start no earlier than 2026-04-07 | 7 day week with NGT | 164985 |
| 4650 | 37400.37600.39900.42900.43800.79800.751300 | Blockwork | 7d | 2026-04-07 | 2026-04-14 | 4578FS+0.25d, 4634 |  | 7 day week with NGT | 169255 |
| 4651 | 37400.37600.39900.42900.43800.79800.751400 | Internal Plumbing Works | 6d | 2026-04-14 | 2026-04-20 | 4650 |  | 7 day week with NGT | 169265 |
| 4652 | 37400.37600.39900.42900.43800.79800.751500 | Waterproofing Works | 7d | 2026-04-16 | 2026-04-23 | 4651SS+2d |  | 7 day week with NGT | 169275 |
| 4653 | 37400.37600.39900.42900.43800.79800.751600 | PCC | 8d | 2026-04-23 | 2026-05-01 | 4652, 4655SS |  | 7 day week with NGT | 169285 |
| 4654 | 37400.37600.39900.42900.43800.79800.751700 | Electrical Wiring works | 5d | 2026-04-16 | 2026-04-21 | 4652SS |  | 7 day week with NGT | 169295 |
| 4655 | 37400.37600.39900.42900.43800.79800.751800 | Internal Plaster Works | 3d | 2026-04-23 | 2026-04-26 | 4651, 4652, 4654 |  | 7 day week with NGT | 169305 |
| 4656 | 37400.37600.39900.42900.43800.79800.751900 | Toilet Dado Works | 10d | 2026-04-26 | 2026-05-06 | 4651, 4652, 4654, 4655 |  | 7 day week with NGT | 169315 |
| 4657 | 37400.37600.39900.42900.43800.79800.752000 | Toilet Flooring Works | 10d | 2026-05-06 | 2026-05-16 | 4653, 4656 |  | 7 day week with NGT | 169325 |
| 4658 | 37400.37600.39900.42900.43800.79800.752100 | Living Dining Flooring | 10d | 2026-05-16 | 2026-05-26 | 4657 |  | 7 day week with NGT | 169335 |
| 4659 | 37400.37600.39900.42900.43800.79800.752200 | Temporary Door Fixing | 9d | 2026-04-14 | 2026-04-23 | 4650 |  | 7 day week with NGT | 169345 |
| 4660 | 37400.37600.39900.42900.43800.79800.752300 | Aluminium Door Widnow Fixing | 40d | 2026-05-26 | 2026-07-05 | 4658, 4659 |  | 7 day week with NGT | 169355 |
| 4661 | 37400.37600.39900.42900.43800.79800.752400 | Rehung Door Fixing | 8d | 2026-07-05 | 2026-07-13 | 4660 |  | 7 day week with NGT | 169365 |
| 4662 | 37400.37600.39900.42900.43800.79800.752500 | Putty Primer coat | 6d | 2026-07-13 | 2026-07-19 | 4661 |  | 7 day week with NGT | 169375 |
| 4663 | 37400.37600.39900.42900.43800.79800.752600 | Painting First Coat | 12d | 2026-07-19 | 2026-07-31 | 4652, 4654, 4661, 4662 |  | 7 day week with NGT | 169385 |
| 4664 | 37400.37600.39900.42900.43800.79800.752700 | False ceiling works | 10d | 2026-07-31 | 2026-08-10 | 4648, 4663 |  | 7 day week with NGT | 169395 |

| ID | WBS | Task | Duration | Start | Finish | Predecessors | Constraint | Calendar | Unique_Task_ID |
| --- | --- | --- | --- | --- | --- | --- | --- | --- | --- |
| 4665 | 37400.37600.39900.42900.43800.79900 | **Fifth Floor** | 125d | 2026-04-19 | 2026-08-22 |  | start no earlier than 2026-04-19 | 7 day week with NGT | 164995 |
| 4666 | 37400.37600.39900.42900.43800.79900.752800 | Blockwork | 7d | 2026-04-19 | 2026-04-26 | 4579FS+0.25d, 4650 |  | 7 day week with NGT | 169405 |
| 4667 | 37400.37600.39900.42900.43800.79900.752900 | Internal Plumbing Works | 6d | 2026-04-26 | 2026-05-02 | 4666 |  | 7 day week with NGT | 169415 |
| 4668 | 37400.37600.39900.42900.43800.79900.753000 | Waterproofing Works | 7d | 2026-04-28 | 2026-05-05 | 4667SS+2d |  | 7 day week with NGT | 169425 |
| 4669 | 37400.37600.39900.42900.43800.79900.753100 | PCC | 8d | 2026-05-05 | 2026-05-13 | 4668, 4671SS |  | 7 day week with NGT | 169435 |
| 4670 | 37400.37600.39900.42900.43800.79900.753200 | Electrical Wiring works | 5d | 2026-04-28 | 2026-05-03 | 4668SS |  | 7 day week with NGT | 169445 |
| 4671 | 37400.37600.39900.42900.43800.79900.753300 | Internal Plaster Works | 3d | 2026-05-05 | 2026-05-08 | 4667, 4668, 4670 |  | 7 day week with NGT | 169455 |
| 4672 | 37400.37600.39900.42900.43800.79900.753400 | Toilet Dado Works | 10d | 2026-05-08 | 2026-05-18 | 4667, 4668, 4670, 4671 |  | 7 day week with NGT | 169465 |
| 4673 | 37400.37600.39900.42900.43800.79900.753500 | Toilet Flooring Works | 10d | 2026-05-18 | 2026-05-28 | 4669, 4672 |  | 7 day week with NGT | 169475 |
| 4674 | 37400.37600.39900.42900.43800.79900.753600 | Living Dining Flooring | 10d | 2026-05-28 | 2026-06-07 | 4673 |  | 7 day week with NGT | 169485 |
| 4675 | 37400.37600.39900.42900.43800.79900.753700 | Temporary Door Fixing | 9d | 2026-04-26 | 2026-05-05 | 4666 |  | 7 day week with NGT | 169495 |
| 4676 | 37400.37600.39900.42900.43800.79900.753800 | Aluminium Door Widnow Fixing | 40d | 2026-06-07 | 2026-07-17 | 4674, 4675 |  | 7 day week with NGT | 169505 |
| 4677 | 37400.37600.39900.42900.43800.79900.753900 | Rehung Door Fixing | 8d | 2026-07-17 | 2026-07-25 | 4676 |  | 7 day week with NGT | 169515 |
| 4678 | 37400.37600.39900.42900.43800.79900.754000 | Putty Primer coat | 6d | 2026-07-25 | 2026-07-31 | 4677 |  | 7 day week with NGT | 169525 |
| 4679 | 37400.37600.39900.42900.43800.79900.754100 | Painting First Coat | 12d | 2026-07-31 | 2026-08-12 | 4668, 4670, 4677, 4678 |  | 7 day week with NGT | 169535 |
| 4680 | 37400.37600.39900.42900.43800.79900.754200 | False ceiling works | 10d | 2026-08-12 | 2026-08-22 | 4664, 4679 |  | 7 day week with NGT | 169545 |
| 4681 | 37400.37600.39900.42900.43800.80000 | **Sixth Floor** | 125d | 2026-05-01 | 2026-09-03 |  | start no earlier than 2026-05-01 | 7 day week with NGT | 165005 |
| 4682 | 37400.37600.39900.42900.43800.80000.754300 | Blockwork | 7d | 2026-05-01 | 2026-05-08 | 4580FS+0.25d, 4666FS+0.25d |  | 7 day week with NGT | 169555 |
| 4683 | 37400.37600.39900.42900.43800.80000.754400 | Internal Plumbing Works | 6d | 2026-05-08 | 2026-05-14 | 4682 |  | 7 day week with NGT | 169565 |
| 4684 | 37400.37600.39900.42900.43800.80000.754500 | Waterproofing Works | 7d | 2026-05-10 | 2026-05-17 | 4683SS+2d |  | 7 day week with NGT | 169575 |
| 4685 | 37400.37600.39900.42900.43800.80000.754600 | PCC | 8d | 2026-05-17 | 2026-05-25 | 4684, 4687SS |  | 7 day week with NGT | 169585 |
| 4686 | 37400.37600.39900.42900.43800.80000.754700 | Electrical Wiring works | 5d | 2026-05-10 | 2026-05-15 | 4684SS |  | 7 day week with NGT | 169595 |
| 4687 | 37400.37600.39900.42900.43800.80000.754800 | Internal Plaster Works | 3d | 2026-05-17 | 2026-05-20 | 4683, 4684, 4686 |  | 7 day week with NGT | 169605 |
| 4688 | 37400.37600.39900.42900.43800.80000.754900 | Toilet Dado Works | 10d | 2026-05-20 | 2026-05-30 | 4683, 4684, 4686, 4687 |  | 7 day week with NGT | 169615 |
| 4689 | 37400.37600.39900.42900.43800.80000.755000 | Toilet Flooring Works | 10d | 2026-05-30 | 2026-06-09 | 4685, 4688 |  | 7 day week with NGT | 169625 |
| 4690 | 37400.37600.39900.42900.43800.80000.755100 | Living Dining Flooring | 10d | 2026-06-09 | 2026-06-19 | 4689 |  | 7 day week with NGT | 169635 |
| 4691 | 37400.37600.39900.42900.43800.80000.755200 | Temporary Door Fixing | 9d | 2026-05-08 | 2026-05-17 | 4682 |  | 7 day week with NGT | 169645 |
| 4692 | 37400.37600.39900.42900.43800.80000.755300 | Aluminium Door Widnow Fixing | 40d | 2026-06-19 | 2026-07-29 | 4690, 4691 |  | 7 day week with NGT | 169655 |
| 4693 | 37400.37600.39900.42900.43800.80000.755400 | Rehung Door Fixing | 8d | 2026-07-29 | 2026-08-06 | 4692 |  | 7 day week with NGT | 169665 |
| 4694 | 37400.37600.39900.42900.43800.80000.755500 | Putty Primer coat | 6d | 2026-08-06 | 2026-08-12 | 4693 |  | 7 day week with NGT | 169675 |
| 4695 | 37400.37600.39900.42900.43800.80000.755600 | Painting First Coat | 12d | 2026-08-12 | 2026-08-24 | 4684, 4686, 4693, 4694 |  | 7 day week with NGT | 169685 |
| 4696 | 37400.37600.39900.42900.43800.80000.755700 | False ceiling works | 10d | 2026-08-24 | 2026-09-03 | 4680, 4695 |  | 7 day week with NGT | 169695 |

| ID | WBS | Task | Duration | Start | Finish | Predecessors | Constraint | Calendar | Unique_Task_ID |
| --- | --- | --- | --- | --- | --- | --- | --- | --- | --- |
| 4697 | 37400.37600.39900.42900.43800.80100 | **Seventh Floor** | 123d | 2026-05-13 | 2026-09-13 |  | start no earlier than 2026-05-13 | 7 day week with NGT | 165015 |
| 4698 | 37400.37600.39900.42900.43800.80100.755800 | Blockwork | 7d | 2026-05-13 | 2026-05-20 | 4581FS+0.25d, 4682FS+0.25d |  | 7 day week with NGT | 169705 |
| 4699 | 37400.37600.39900.42900.43800.80100.755900 | Internal Plumbing Works | 6d | 2026-05-20 | 2026-05-26 | 4698 |  | 7 day week with NGT | 169715 |
| 4700 | 37400.37600.39900.42900.43800.80100.756000 | Waterproofing Works | 7d | 2026-05-22 | 2026-05-29 | 4699SS+2d |  | 7 day week with NGT | 169725 |
| 4701 | 37400.37600.39900.42900.43800.80100.756100 | PCC | 8d | 2026-05-29 | 2026-06-06 | 4700, 4703SS |  | 7 day week with NGT | 169735 |
| 4702 | 37400.37600.39900.42900.43800.80100.756200 | Electrical Wiring works | 5d | 2026-05-22 | 2026-05-27 | 4700SS |  | 7 day week with NGT | 169745 |
| 4703 | 37400.37600.39900.42900.43800.80100.756300 | Internal Plaster Works | 3d | 2026-05-29 | 2026-06-01 | 4699, 4700, 4702 |  | 7 day week with NGT | 169755 |
| 4704 | 37400.37600.39900.42900.43800.80100.756400 | Toilet Dado Works | 10d | 2026-06-01 | 2026-06-11 | 4699, 4700, 4702, 4703 |  | 7 day week with NGT | 169765 |
| 4705 | 37400.37600.39900.42900.43800.80100.756500 | Toilet Flooring Works | 10d | 2026-06-11 | 2026-06-21 | 4701, 4704 |  | 7 day week with NGT | 169775 |
| 4706 | 37400.37600.39900.42900.43800.80100.756600 | Living Dining Flooring | 10d | 2026-06-21 | 2026-07-01 | 4705 |  | 7 day week with NGT | 169785 |
| 4707 | 37400.37600.39900.42900.43800.80100.756700 | Temporary Door Fixing | 9d | 2026-05-20 | 2026-05-29 | 4698 |  | 7 day week with NGT | 169795 |
| 4708 | 37400.37600.39900.42900.43800.80100.756800 | Aluminium Door Widnow Fixing | 36d | 2026-07-01 | 2026-08-06 | 4706, 4707 |  | 7 day week with NGT | 169805 |
| 4709 | 37400.37600.39900.42900.43800.80100.756900 | Rehung Door Fixing | 8d | 2026-08-06 | 2026-08-14 | 4708 |  | 7 day week with NGT | 169815 |
| 4710 | 37400.37600.39900.42900.43800.80100.757000 | Putty Primer coat | 6d | 2026-08-14 | 2026-08-20 | 4709 |  | 7 day week with NGT | 169825 |
| 4711 | 37400.37600.39900.42900.43800.80100.757100 | Painting First Coat | 12d | 2026-08-20 | 2026-09-01 | 4700, 4702, 4709, 4710 |  | 7 day week with NGT | 169835 |
| 4712 | 37400.37600.39900.42900.43800.80100.757200 | False ceiling works | 10d | 2026-09-03 | 2026-09-13 | 4696, 4711 |  | 7 day week with NGT | 169845 |
| 4713 | 37400.37600.39900.42900.43800.80200 | **Eighth Floor** | 121d | 2026-05-25 | 2026-09-23 |  | start no earlier than 2026-05-25 | 7 day week with NGT | 165025 |
| 4714 | 37400.37600.39900.42900.43800.80200.757300 | Blockwork | 7d | 2026-05-25 | 2026-06-01 | 4582FS+0.25d, 4698FS+0.25d |  | 7 day week with NGT | 169855 |
| 4715 | 37400.37600.39900.42900.43800.80200.757400 | Internal Plumbing Works | 6d | 2026-06-01 | 2026-06-07 | 4714 |  | 7 day week with NGT | 169865 |
| 4716 | 37400.37600.39900.42900.43800.80200.757500 | Waterproofing Works | 7d | 2026-06-03 | 2026-06-10 | 4715SS+2d |  | 7 day week with NGT | 169875 |
| 4717 | 37400.37600.39900.42900.43800.80200.757600 | PCC | 8d | 2026-06-10 | 2026-06-18 | 4716, 4719SS |  | 7 day week with NGT | 169885 |
| 4718 | 37400.37600.39900.42900.43800.80200.757700 | Electrical Wiring works | 5d | 2026-06-03 | 2026-06-08 | 4716SS |  | 7 day week with NGT | 169895 |
| 4719 | 37400.37600.39900.42900.43800.80200.757800 | Internal Plaster Works | 3d | 2026-06-10 | 2026-06-13 | 4715, 4716, 4718 |  | 7 day week with NGT | 169905 |
| 4720 | 37400.37600.39900.42900.43800.80200.757900 | Toilet Dado Works | 10d | 2026-06-13 | 2026-06-23 | 4715, 4716, 4718, 4719 |  | 7 day week with NGT | 169915 |
| 4721 | 37400.37600.39900.42900.43800.80200.758000 | Toilet Flooring Works | 10d | 2026-06-23 | 2026-07-03 | 4717, 4720 |  | 7 day week with NGT | 169925 |
| 4722 | 37400.37600.39900.42900.43800.80200.758100 | Living Dining Flooring | 10d | 2026-07-03 | 2026-07-13 | 4721 |  | 7 day week with NGT | 169935 |
| 4723 | 37400.37600.39900.42900.43800.80200.758200 | Temporary Door Fixing | 9d | 2026-06-01 | 2026-06-10 | 4714 |  | 7 day week with NGT | 169945 |
| 4724 | 37400.37600.39900.42900.43800.80200.758300 | Aluminium Door Widnow Fixing | 36d | 2026-07-13 | 2026-08-18 | 4722, 4723 |  | 7 day week with NGT | 169955 |
| 4725 | 37400.37600.39900.42900.43800.80200.758400 | Rehung Door Fixing | 8d | 2026-08-18 | 2026-08-26 | 4724 |  | 7 day week with NGT | 169965 |
| 4726 | 37400.37600.39900.42900.43800.80200.758500 | Putty Primer coat | 6d | 2026-08-26 | 2026-09-01 | 4725 |  | 7 day week with NGT | 169975 |
| 4727 | 37400.37600.39900.42900.43800.80200.758600 | Painting First Coat | 12d | 2026-09-01 | 2026-09-13 | 4716, 4718, 4725, 4726 |  | 7 day week with NGT | 169985 |
| 4728 | 37400.37600.39900.42900.43800.80200.758700 | False ceiling works | 10d | 2026-09-13 | 2026-09-23 | 4712, 4727 |  | 7 day week with NGT | 169995 |

| ID | WBS | Task | Duration | Start | Finish | Predecessors | Constraint | Calendar | Unique_Task_ID |
| --- | --- | --- | --- | --- | --- | --- | --- | --- | --- |
| 4729 | 37400.37600.39900.42900.43800.80300 | **Ninth Floor** | 119d | 2026-06-06 | 2026-10-03 |  | start no earlier than 2026-06-06 | 7 day week with NGT | 165035 |
| 4730 | 37400.37600.39900.42900.43800.80300.758800 | Blockwork | 7d | 2026-06-06 | 2026-06-13 | 4583FS+0.25d, 4714FS+0.25d |  | 7 day week with NGT | 170005 |
| 4731 | 37400.37600.39900.42900.43800.80300.758900 | Internal Plumbing Works | 6d | 2026-06-13 | 2026-06-19 | 4730 |  | 7 day week with NGT | 170015 |
| 4732 | 37400.37600.39900.42900.43800.80300.759000 | Waterproofing Works | 7d | 2026-06-15 | 2026-06-22 | 4731SS+2d |  | 7 day week with NGT | 170025 |
| 4733 | 37400.37600.39900.42900.43800.80300.759100 | PCC | 8d | 2026-06-22 | 2026-06-30 | 4732, 4735SS |  | 7 day week with NGT | 170035 |
| 4734 | 37400.37600.39900.42900.43800.80300.759200 | Electrical Wiring works | 5d | 2026-06-15 | 2026-06-20 | 4732SS |  | 7 day week with NGT | 170045 |
| 4735 | 37400.37600.39900.42900.43800.80300.759300 | Internal Plaster Works | 3d | 2026-06-22 | 2026-06-25 | 4731, 4732, 4734 |  | 7 day week with NGT | 170055 |
| 4736 | 37400.37600.39900.42900.43800.80300.759400 | Toilet Dado Works | 10d | 2026-06-25 | 2026-07-05 | 4731, 4732, 4734, 4735 |  | 7 day week with NGT | 170065 |
| 4737 | 37400.37600.39900.42900.43800.80300.759500 | Toilet Flooring Works | 10d | 2026-07-05 | 2026-07-15 | 4733, 4736 |  | 7 day week with NGT | 170075 |
| 4738 | 37400.37600.39900.42900.43800.80300.759600 | Living Dining Flooring | 10d | 2026-07-15 | 2026-07-25 | 4737 |  | 7 day week with NGT | 170085 |
| 4739 | 37400.37600.39900.42900.43800.80300.759700 | Temporary Door Fixing | 9d | 2026-06-13 | 2026-06-22 | 4730 |  | 7 day week with NGT | 170095 |
| 4740 | 37400.37600.39900.42900.43800.80300.759800 | Aluminium Door Widnow Fixing | 31d | 2026-07-25 | 2026-08-25 | 4738, 4739 |  | 7 day week with NGT | 170105 |
| 4741 | 37400.37600.39900.42900.43800.80300.759900 | Rehung Door Fixing | 8d | 2026-08-25 | 2026-09-02 | 4740 |  | 7 day week with NGT | 170115 |
| 4742 | 37400.37600.39900.42900.43800.80300.760000 | Putty Primer coat | 6d | 2026-09-02 | 2026-09-08 | 4741 |  | 7 day week with NGT | 170125 |
| 4743 | 37400.37600.39900.42900.43800.80300.760100 | Painting First Coat | 12d | 2026-09-08 | 2026-09-20 | 4732, 4734, 4741, 4742 |  | 7 day week with NGT | 170135 |
| 4744 | 37400.37600.39900.42900.43800.80300.760200 | False ceiling works | 10d | 2026-09-23 | 2026-10-03 | 4728, 4743 |  | 7 day week with NGT | 170145 |
| 4745 | 37400.37600.39900.42900.43800.80400 | **Tenth Floor** | 117d | 2026-06-18 | 2026-10-13 |  | start no earlier than 2026-06-18 | 7 day week with NGT | 165045 |
| 4746 | 37400.37600.39900.42900.43800.80400.760300 | Blockwork | 7d | 2026-06-18 | 2026-06-25 | 4584FS+0.25d, 4730FS+0.25d |  | 7 day week with NGT | 170155 |
| 4747 | 37400.37600.39900.42900.43800.80400.760400 | Internal Plumbing Works | 6d | 2026-06-25 | 2026-07-01 | 4746 |  | 7 day week with NGT | 170165 |
| 4748 | 37400.37600.39900.42900.43800.80400.760500 | Waterproofing Works | 7d | 2026-06-27 | 2026-07-04 | 4747SS+2d |  | 7 day week with NGT | 170175 |
| 4749 | 37400.37600.39900.42900.43800.80400.760600 | PCC | 8d | 2026-07-04 | 2026-07-12 | 4748, 4751SS |  | 7 day week with NGT | 170185 |
| 4750 | 37400.37600.39900.42900.43800.80400.760700 | Electrical Wiring works | 5d | 2026-06-27 | 2026-07-02 | 4748SS |  | 7 day week with NGT | 170195 |
| 4751 | 37400.37600.39900.42900.43800.80400.760800 | Internal Plaster Works | 3d | 2026-07-04 | 2026-07-07 | 4747, 4748, 4750 |  | 7 day week with NGT | 170205 |
| 4752 | 37400.37600.39900.42900.43800.80400.760900 | Toilet Dado Works | 10d | 2026-07-07 | 2026-07-17 | 4747, 4748, 4750, 4751 |  | 7 day week with NGT | 170215 |
| 4753 | 37400.37600.39900.42900.43800.80400.761000 | Toilet Flooring Works | 10d | 2026-07-17 | 2026-07-27 | 4749, 4752 |  | 7 day week with NGT | 170225 |
| 4754 | 37400.37600.39900.42900.43800.80400.761100 | Living Dining Flooring | 10d | 2026-07-27 | 2026-08-06 | 4753 |  | 7 day week with NGT | 170235 |
| 4755 | 37400.37600.39900.42900.43800.80400.761200 | Temporary Door Fixing | 9d | 2026-06-25 | 2026-07-04 | 4746 |  | 7 day week with NGT | 170245 |
| 4756 | 37400.37600.39900.42900.43800.80400.761300 | Aluminium Door Widnow Fixing | 31d | 2026-08-06 | 2026-09-06 | 4754, 4755 |  | 7 day week with NGT | 170255 |
| 4757 | 37400.37600.39900.42900.43800.80400.761400 | Rehung Door Fixing | 8d | 2026-09-06 | 2026-09-14 | 4756 |  | 7 day week with NGT | 170265 |
| 4758 | 37400.37600.39900.42900.43800.80400.761500 | Putty Primer coat | 6d | 2026-09-14 | 2026-09-20 | 4757 |  | 7 day week with NGT | 170275 |
| 4759 | 37400.37600.39900.42900.43800.80400.761600 | Painting First Coat | 12d | 2026-09-20 | 2026-10-02 | 4748, 4750, 4757, 4758 |  | 7 day week with NGT | 170285 |
| 4760 | 37400.37600.39900.42900.43800.80400.761700 | False ceiling works | 10d | 2026-10-03 | 2026-10-13 | 4744, 4759 |  | 7 day week with NGT | 170295 |

| ID | WBS | Task | Duration | Start | Finish | Predecessors | Constraint | Calendar | Unique_Task_ID |
| --- | --- | --- | --- | --- | --- | --- | --- | --- | --- |
| 4761 | 37400.37600.39900.42900.43800.80500 | **Eleventh Floor** | 120d | 2026-06-25 | 2026-10-23 |  | start no earlier than 2026-06-25 | 7 day week with NGT | 165055 |
| 4762 | 37400.37600.39900.42900.43800.80500.761800 | Blockwork | 7d | 2026-06-25 | 2026-07-02 | 4584, 4746 |  | 7 day week with NGT | 170305 |
| 4763 | 37400.37600.39900.42900.43800.80500.761900 | Internal Plumbing Works | 6d | 2026-07-02 | 2026-07-08 | 4762 |  | 7 day week with NGT | 170315 |
| 4764 | 37400.37600.39900.42900.43800.80500.762000 | Waterproofing Works | 7d | 2026-07-04 | 2026-07-11 | 4763SS+2d |  | 7 day week with NGT | 170325 |
| 4765 | 37400.37600.39900.42900.43800.80500.762100 | PCC | 8d | 2026-07-11 | 2026-07-19 | 4764, 4767SS |  | 7 day week with NGT | 170335 |
| 4766 | 37400.37600.39900.42900.43800.80500.762200 | Electrical Wiring works | 5d | 2026-07-04 | 2026-07-09 | 4764SS |  | 7 day week with NGT | 170345 |
| 4767 | 37400.37600.39900.42900.43800.80500.762300 | Internal Plaster Works | 3d | 2026-07-11 | 2026-07-14 | 4763, 4764, 4766 |  | 7 day week with NGT | 170355 |
| 4768 | 37400.37600.39900.42900.43800.80500.762400 | Toilet Dado Works | 10d | 2026-07-14 | 2026-07-24 | 4763, 4764, 4766, 4767 |  | 7 day week with NGT | 170365 |
| 4769 | 37400.37600.39900.42900.43800.80500.762500 | Toilet Flooring Works | 10d | 2026-07-24 | 2026-08-03 | 4765, 4768 |  | 7 day week with NGT | 170375 |
| 4770 | 37400.37600.39900.42900.43800.80500.762600 | Living Dining Flooring | 10d | 2026-08-03 | 2026-08-13 | 4769 |  | 7 day week with NGT | 170385 |
| 4771 | 37400.37600.39900.42900.43800.80500.762700 | Temporary Door Fixing | 9d | 2026-07-02 | 2026-07-11 | 4762 |  | 7 day week with NGT | 170395 |
| 4772 | 37400.37600.39900.42900.43800.80500.762800 | Aluminium Door Widnow Fixing | 31d | 2026-08-13 | 2026-09-13 | 4770, 4771 |  | 7 day week with NGT | 170405 |
| 4773 | 37400.37600.39900.42900.43800.80500.762900 | Rehung Door Fixing | 8d | 2026-09-13 | 2026-09-21 | 4772 |  | 7 day week with NGT | 170415 |
| 4774 | 37400.37600.39900.42900.43800.80500.763000 | Putty Primer coat | 6d | 2026-09-21 | 2026-09-27 | 4773 |  | 7 day week with NGT | 170425 |
| 4775 | 37400.37600.39900.42900.43800.80500.763100 | Painting First Coat | 12d | 2026-09-27 | 2026-10-09 | 4764, 4766, 4773, 4774 |  | 7 day week with NGT | 170435 |
| 4776 | 37400.37600.39900.42900.43800.80500.763200 | False ceiling works | 10d | 2026-10-13 | 2026-10-23 | 4760, 4775 |  | 7 day week with NGT | 170445 |
| 4777 | 37400.37600.39900.42900.43800.80600 | **Twelth Floor** | 116d | 2026-07-12 | 2026-12-20 |  | start no earlier than 2026-07-12 | 7 day week with NGT | 165065 |
| 4778 | 37400.37600.39900.42900.43800.80600.763300 | Blockwork | 7d | 2026-07-12 | 2026-07-19 | 4586FS+0.25d |  | 7 day week with NGT | 170455 |
| 4779 | 37400.37600.39900.42900.43800.80600.763400 | Internal Plumbing Works | 6d | 2026-07-19 | 2026-07-25 | 4778 |  | 7 day week with NGT | 170465 |
| 4780 | 37400.37600.39900.42900.43800.80600.763500 | Waterproofing Works | 7d | 2026-07-21 | 2026-07-28 | 4779SS+2d |  | 7 day week with NGT | 170475 |
| 4781 | 37400.37600.39900.42900.43800.80600.763600 | PCC | 8d | 2026-07-28 | 2026-08-05 | 4780, 4783SS |  | 7 day week with NGT | 170485 |
| 4782 | 37400.37600.39900.42900.43800.80600.763700 | Electrical Wiring works | 5d | 2026-07-21 | 2026-07-26 | 4780SS |  | 7 day week with NGT | 170495 |
| 4783 | 37400.37600.39900.42900.43800.80600.763800 | Internal Plaster Works | 3d | 2026-07-28 | 2026-07-31 | 4779, 4780, 4782 |  | 7 day week with NGT | 170505 |
| 4784 | 37400.37600.39900.42900.43800.80600.763900 | Toilet Dado Works | 10d | 2026-07-31 | 2026-08-10 | 4779, 4780, 4782, 4783 |  | 7 day week with NGT | 170515 |
| 4785 | 37400.37600.39900.42900.43800.80600.764000 | Toilet Flooring Works | 10d | 2026-08-10 | 2026-08-20 | 4781, 4784 |  | 7 day week with NGT | 170525 |
| 4786 | 37400.37600.39900.42900.43800.80600.764100 | Living Dining Flooring | 10d | 2026-08-20 | 2026-08-30 | 4785 |  | 7 day week with NGT | 170535 |
| 4787 | 37400.37600.39900.42900.43800.80600.764200 | Temporary Door Fixing | 9d | 2026-07-19 | 2026-07-28 | 4778 |  | 7 day week with NGT | 170545 |
| 4788 | 37400.37600.39900.42900.43800.80600.764300 | Aluminium Door Widnow Fixing | 31d | 2026-08-30 | 2026-09-30 | 4786, 4787 |  | 7 day week with NGT | 170555 |
| 4789 | 37400.37600.39900.42900.43800.80600.764400 | Rehung Door Fixing | 8d | 2026-09-30 | 2026-10-08 | 4788 |  | 7 day week with NGT | 170565 |
| 4790 | 37400.37600.39900.42900.43800.80600.764500 | Putty Primer coat | 6d | 2026-10-08 | 2026-10-14 | 4789 |  | 7 day week with NGT | 170575 |
| 4791 | 37400.37600.39900.42900.43800.80600.764600 | Painting First Coat | 12d | 2026-10-14 | 2026-10-26 | 4780, 4782, 4789, 4790 |  | 7 day week with NGT | 170585 |
| 4792 | 37400.37600.39900.42900.43800.80600.764700 | False ceiling works | 10d | 2026-10-26 | 2026-12-20 | 4776, 4791 |  | 7 day week with NGT | 170595 |

| ID | WBS | Task | Duration | Start | Finish | Predecessors | Constraint | Calendar | Unique_Task_ID |
| --- | --- | --- | --- | --- | --- | --- | --- | --- | --- |
| 4793 | 37400.37600.39900.42900.43800.80700 | **Thirteen Floor** | 116d | 2026-07-29 | 2027-01-06 |  | start no earlier than 2026-07-29 | 7 day week with NGT | 165075 |
| 4794 | 37400.37600.39900.42900.43800.80700.764800 | Blockwork | 7d | 2026-07-29 | 2026-08-05 | 4587FS+0.25d, 4778FS+0.25d |  | 7 day week with NGT | 170605 |
| 4795 | 37400.37600.39900.42900.43800.80700.764900 | Internal Plumbing Works | 6d | 2026-08-05 | 2026-08-11 | 4794 |  | 7 day week with NGT | 170615 |
| 4796 | 37400.37600.39900.42900.43800.80700.765000 | Waterproofing Works | 7d | 2026-08-07 | 2026-08-14 | 4795SS+2d |  | 7 day week with NGT | 170625 |
| 4797 | 37400.37600.39900.42900.43800.80700.765100 | PCC | 8d | 2026-08-14 | 2026-08-22 | 4796, 4799SS |  | 7 day week with NGT | 170635 |
| 4798 | 37400.37600.39900.42900.43800.80700.765200 | Electrical Wiring works | 5d | 2026-08-07 | 2026-08-12 | 4796SS |  | 7 day week with NGT | 170645 |
| 4799 | 37400.37600.39900.42900.43800.80700.765300 | Internal Plaster Works | 3d | 2026-08-14 | 2026-08-17 | 4795, 4796, 4798 |  | 7 day week with NGT | 170655 |
| 4800 | 37400.37600.39900.42900.43800.80700.765400 | Toilet Dado Works | 10d | 2026-08-17 | 2026-08-27 | 4795, 4796, 4798, 4799 |  | 7 day week with NGT | 170665 |
| 4801 | 37400.37600.39900.42900.43800.80700.765500 | Toilet Flooring Works | 10d | 2026-08-27 | 2026-09-06 | 4797, 4800 |  | 7 day week with NGT | 170675 |
| 4802 | 37400.37600.39900.42900.43800.80700.765600 | Living Dining Flooring | 10d | 2026-09-06 | 2026-09-16 | 4801 |  | 7 day week with NGT | 170685 |
| 4803 | 37400.37600.39900.42900.43800.80700.765700 | Temporary Door Fixing | 9d | 2026-08-05 | 2026-08-14 | 4794 |  | 7 day week with NGT | 170695 |
| 4804 | 37400.37600.39900.42900.43800.80700.765800 | Aluminium Door Widnow Fixing | 31d | 2026-09-16 | 2026-10-17 | 4802, 4803 |  | 7 day week with NGT | 170705 |
| 4805 | 37400.37600.39900.42900.43800.80700.765900 | Rehung Door Fixing | 8d | 2026-10-17 | 2026-10-25 | 4804 |  | 7 day week with NGT | 170715 |
| 4806 | 37400.37600.39900.42900.43800.80700.766000 | Putty Primer coat | 6d | 2026-10-25 | 2026-10-31 | 4805 |  | 7 day week with NGT | 170725 |
| 4807 | 37400.37600.39900.42900.43800.80700.766100 | Painting First Coat | 12d | 2026-10-31 | 2026-12-27 | 4796, 4798, 4805, 4806 |  | 7 day week with NGT | 170735 |
| 4808 | 37400.37600.39900.42900.43800.80700.766200 | False ceiling works | 10d | 2026-12-27 | 2027-01-06 | 4792, 4807 |  | 7 day week with NGT | 170745 |
| 4809 | 37400.37600.39900.42900.43800.80800 | **Fourteen Floor** | 116d | 2026-08-10 | 2027-01-18 |  | start no earlier than 2026-08-10 | 7 day week with NGT | 165085 |
| 4810 | 37400.37600.39900.42900.43800.80800.766300 | Blockwork | 7d | 2026-08-10 | 2026-08-17 | 4588FS+0.25d, 4794FS+0.25d |  | 7 day week with NGT | 170755 |
| 4811 | 37400.37600.39900.42900.43800.80800.766400 | Internal Plumbing Works | 6d | 2026-08-17 | 2026-08-23 | 4810 |  | 7 day week with NGT | 170765 |
| 4812 | 37400.37600.39900.42900.43800.80800.766500 | Waterproofing Works | 7d | 2026-08-19 | 2026-08-26 | 4811SS+2d |  | 7 day week with NGT | 170775 |
| 4813 | 37400.37600.39900.42900.43800.80800.766600 | PCC | 8d | 2026-08-26 | 2026-09-03 | 4812, 4815SS |  | 7 day week with NGT | 170785 |
| 4814 | 37400.37600.39900.42900.43800.80800.766700 | Electrical Wiring works | 5d | 2026-08-19 | 2026-08-24 | 4812SS |  | 7 day week with NGT | 170795 |
| 4815 | 37400.37600.39900.42900.43800.80800.766800 | Internal Plaster Works | 3d | 2026-08-26 | 2026-08-29 | 4811, 4812, 4814 |  | 7 day week with NGT | 170805 |
| 4816 | 37400.37600.39900.42900.43800.80800.766900 | Toilet Dado Works | 10d | 2026-08-29 | 2026-09-08 | 4811, 4812, 4814, 4815 |  | 7 day week with NGT | 170815 |
| 4817 | 37400.37600.39900.42900.43800.80800.767000 | Toilet Flooring Works | 10d | 2026-09-08 | 2026-09-18 | 4813, 4816 |  | 7 day week with NGT | 170825 |
| 4818 | 37400.37600.39900.42900.43800.80800.767100 | Living Dining Flooring | 10d | 2026-09-18 | 2026-09-28 | 4817 |  | 7 day week with NGT | 170835 |
| 4819 | 37400.37600.39900.42900.43800.80800.767200 | Temporary Door Fixing | 9d | 2026-08-17 | 2026-08-26 | 4810 |  | 7 day week with NGT | 170845 |
| 4820 | 37400.37600.39900.42900.43800.80800.767300 | Aluminium Door Widnow Fixing | 31d | 2026-09-28 | 2026-10-29 | 4818, 4819 |  | 7 day week with NGT | 170855 |
| 4821 | 37400.37600.39900.42900.43800.80800.767400 | Rehung Door Fixing | 8d | 2026-10-29 | 2026-12-21 | 4820 |  | 7 day week with NGT | 170865 |
| 4822 | 37400.37600.39900.42900.43800.80800.767500 | Putty Primer coat | 6d | 2026-12-21 | 2026-12-27 | 4821 |  | 7 day week with NGT | 170875 |
| 4823 | 37400.37600.39900.42900.43800.80800.767600 | Painting First Coat | 12d | 2026-12-27 | 2027-01-08 | 4812, 4814, 4821, 4822 |  | 7 day week with NGT | 170885 |
| 4824 | 37400.37600.39900.42900.43800.80800.767700 | False ceiling works | 10d | 2027-01-08 | 2027-01-18 | 4808, 4823 |  | 7 day week with NGT | 170895 |

| ID | WBS | Task | Duration | Start | Finish | Predecessors | Constraint | Calendar | Unique_Task_ID |
| --- | --- | --- | --- | --- | --- | --- | --- | --- | --- |
| 4825 | 37400.37600.39900.42900.43800.80900 | **Fifteen Floor** | 116d | 2026-08-22 | 2027-01-30 |  | start no earlier than 2026-08-22 | 7 day week with NGT | 165095 |
| 4826 | 37400.37600.39900.42900.43800.80900.767800 | Blockwork | 7d | 2026-08-22 | 2026-08-29 | 4589FS+0.25d, 4810FS+0.25d |  | 7 day week with NGT | 170905 |
| 4827 | 37400.37600.39900.42900.43800.80900.767900 | Internal Plumbing Works | 6d | 2026-08-29 | 2026-09-04 | 4826 |  | 7 day week with NGT | 170915 |
| 4828 | 37400.37600.39900.42900.43800.80900.768000 | Waterproofing Works | 7d | 2026-08-31 | 2026-09-07 | 4827SS+2d |  | 7 day week with NGT | 170925 |
| 4829 | 37400.37600.39900.42900.43800.80900.768100 | PCC | 8d | 2026-09-07 | 2026-09-15 | 4828, 4831SS |  | 7 day week with NGT | 170935 |
| 4830 | 37400.37600.39900.42900.43800.80900.768200 | Electrical Wiring works | 5d | 2026-08-31 | 2026-09-05 | 4828SS |  | 7 day week with NGT | 170945 |
| 4831 | 37400.37600.39900.42900.43800.80900.768300 | Internal Plaster Works | 3d | 2026-09-07 | 2026-09-10 | 4827, 4828, 4830 |  | 7 day week with NGT | 170955 |
| 4832 | 37400.37600.39900.42900.43800.80900.768400 | Toilet Dado Works | 10d | 2026-09-10 | 2026-09-20 | 4827, 4828, 4830, 4831 |  | 7 day week with NGT | 170965 |
| 4833 | 37400.37600.39900.42900.43800.80900.768500 | Toilet Flooring Works | 10d | 2026-09-20 | 2026-09-30 | 4829, 4832 |  | 7 day week with NGT | 170975 |
| 4834 | 37400.37600.39900.42900.43800.80900.768600 | Living Dining Flooring | 10d | 2026-09-30 | 2026-10-10 | 4833 |  | 7 day week with NGT | 170985 |
| 4835 | 37400.37600.39900.42900.43800.80900.768700 | Temporary Door Fixing | 9d | 2026-08-29 | 2026-09-07 | 4826 |  | 7 day week with NGT | 170995 |
| 4836 | 37400.37600.39900.42900.43800.80900.768800 | Aluminium Door Widnow Fixing | 31d | 2026-10-10 | 2026-12-25 | 4834, 4835 |  | 7 day week with NGT | 171005 |
| 4837 | 37400.37600.39900.42900.43800.80900.768900 | Rehung Door Fixing | 8d | 2026-12-25 | 2027-01-02 | 4836 |  | 7 day week with NGT | 171015 |
| 4838 | 37400.37600.39900.42900.43800.80900.769000 | Putty Primer coat | 6d | 2027-01-02 | 2027-01-08 | 4837 |  | 7 day week with NGT | 171025 |
| 4839 | 37400.37600.39900.42900.43800.80900.769100 | Painting First Coat | 12d | 2027-01-08 | 2027-01-20 | 4828, 4830, 4837, 4838 |  | 7 day week with NGT | 171035 |
| 4840 | 37400.37600.39900.42900.43800.80900.769200 | False ceiling works | 10d | 2027-01-20 | 2027-01-30 | 4824, 4839 |  | 7 day week with NGT | 171045 |
| 4841 | 37400.37600.39900.42900.43800.81000 | **Sixteen Floor** | 118.75d | 2026-08-29 | 2027-02-09 |  | start no earlier than 2026-08-29 | 7 day week with NGT | 165105 |
| 4842 | 37400.37600.39900.42900.43800.81000.769300 | Blockwork | 7d | 2026-08-29 | 2026-09-05 | 4590FF+0.25d, 4826FS+0.25d |  | 7 day week with NGT | 171055 |
| 4843 | 37400.37600.39900.42900.43800.81000.769400 | Internal Plumbing Works | 6d | 2026-09-05 | 2026-09-11 | 4842 |  | 7 day week with NGT | 171065 |
| 4844 | 37400.37600.39900.42900.43800.81000.769500 | Waterproofing Works | 7d | 2026-09-07 | 2026-09-14 | 4843SS+2d |  | 7 day week with NGT | 171075 |
| 4845 | 37400.37600.39900.42900.43800.81000.769600 | PCC | 8d | 2026-09-14 | 2026-09-22 | 4844, 4847SS |  | 7 day week with NGT | 171085 |
| 4846 | 37400.37600.39900.42900.43800.81000.769700 | Electrical Wiring works | 5d | 2026-09-07 | 2026-09-12 | 4844SS |  | 7 day week with NGT | 171095 |
| 4847 | 37400.37600.39900.42900.43800.81000.769800 | Internal Plaster Works | 3d | 2026-09-14 | 2026-09-17 | 4843, 4844, 4846 |  | 7 day week with NGT | 171105 |
| 4848 | 37400.37600.39900.42900.43800.81000.769900 | Toilet Dado Works | 10d | 2026-09-17 | 2026-09-27 | 4843, 4844, 4846, 4847 |  | 7 day week with NGT | 171115 |
| 4849 | 37400.37600.39900.42900.43800.81000.770000 | Toilet Flooring Works | 10d | 2026-09-27 | 2026-10-07 | 4845, 4848 |  | 7 day week with NGT | 171125 |
| 4850 | 37400.37600.39900.42900.43800.81000.770100 | Living Dining Flooring | 10d | 2026-10-07 | 2026-10-17 | 4849 |  | 7 day week with NGT | 171135 |
| 4851 | 37400.37600.39900.42900.43800.81000.770200 | Temporary Door Fixing | 9d | 2026-09-05 | 2026-09-14 | 4842 |  | 7 day week with NGT | 171145 |
| 4852 | 37400.37600.39900.42900.43800.81000.770300 | Aluminium Door Widnow Fixing | 31d | 2026-10-17 | 2027-01-01 | 4850, 4851 |  | 7 day week with NGT | 171155 |
| 4853 | 37400.37600.39900.42900.43800.81000.770400 | Rehung Door Fixing | 8d | 2027-01-01 | 2027-01-09 | 4852 |  | 7 day week with NGT | 171165 |
| 4854 | 37400.37600.39900.42900.43800.81000.770500 | Putty Primer coat | 6d | 2027-01-09 | 2027-01-15 | 4853 |  | 7 day week with NGT | 171175 |
| 4855 | 37400.37600.39900.42900.43800.81000.770600 | Painting First Coat | 12d | 2027-01-15 | 2027-01-27 | 4844, 4846, 4853, 4854 |  | 7 day week with NGT | 171185 |
| 4856 | 37400.37600.39900.42900.43800.81000.770700 | False ceiling works | 10d | 2027-01-30 | 2027-02-09 | 4840, 4855 |  | 7 day week with NGT | 171195 |

| ID | WBS | Task | Duration | Start | Finish | Predecessors | Constraint | Calendar | Unique_Task_ID |
| --- | --- | --- | --- | --- | --- | --- | --- | --- | --- |
| 4857 | 37400.37600.39900.42900.43800.81100 | **Seventeen Floor** | 114d | 2026-09-13 | 2027-02-19 |  | start no earlier than 2026-09-13 | 7 day week with NGT | 165115 |
| 4858 | 37400.37600.39900.42900.43800.81100.770800 | Blockwork | 7d | 2026-09-13 | 2026-09-20 | 4591FS+0.25d, 4842FS+0.25d |  | 7 day week with NGT | 171205 |
| 4859 | 37400.37600.39900.42900.43800.81100.770900 | Internal Plumbing Works | 6d | 2026-09-20 | 2026-09-26 | 4858 |  | 7 day week with NGT | 171215 |
| 4860 | 37400.37600.39900.42900.43800.81100.771000 | Waterproofing Works | 7d | 2026-09-22 | 2026-09-29 | 4859SS+2d |  | 7 day week with NGT | 171225 |
| 4861 | 37400.37600.39900.42900.43800.81100.771100 | PCC | 8d | 2026-09-29 | 2026-10-07 | 4860, 4863SS |  | 7 day week with NGT | 171235 |
| 4862 | 37400.37600.39900.42900.43800.81100.771200 | Electrical Wiring works | 5d | 2026-09-22 | 2026-09-27 | 4860SS |  | 7 day week with NGT | 171245 |
| 4863 | 37400.37600.39900.42900.43800.81100.771300 | Internal Plaster Works | 3d | 2026-09-29 | 2026-10-02 | 4859, 4860, 4862 |  | 7 day week with NGT | 171255 |
| 4864 | 37400.37600.39900.42900.43800.81100.771400 | Toilet Dado Works | 10d | 2026-10-02 | 2026-10-12 | 4859, 4860, 4862, 4863 |  | 7 day week with NGT | 171265 |
| 4865 | 37400.37600.39900.42900.43800.81100.771500 | Toilet Flooring Works | 10d | 2026-10-12 | 2026-10-22 | 4861, 4864 |  | 7 day week with NGT | 171275 |
| 4866 | 37400.37600.39900.42900.43800.81100.771600 | Living Dining Flooring | 10d | 2026-10-22 | 2026-12-16 | 4865 |  | 7 day week with NGT | 171285 |
| 4867 | 37400.37600.39900.42900.43800.81100.771700 | Temporary Door Fixing | 9d | 2026-09-20 | 2026-09-29 | 4858 |  | 7 day week with NGT | 171295 |
| 4868 | 37400.37600.39900.42900.43800.81100.771800 | Aluminium Door Widnow Fixing | 28d | 2026-12-16 | 2027-01-13 | 4866, 4867 |  | 7 day week with NGT | 171305 |
| 4869 | 37400.37600.39900.42900.43800.81100.771900 | Rehung Door Fixing | 8d | 2027-01-13 | 2027-01-21 | 4868 |  | 7 day week with NGT | 171315 |
| 4870 | 37400.37600.39900.42900.43800.81100.772000 | Putty Primer coat | 6d | 2027-01-21 | 2027-01-27 | 4869 |  | 7 day week with NGT | 171325 |
| 4871 | 37400.37600.39900.42900.43800.81100.772100 | Painting First Coat | 12d | 2027-01-27 | 2027-02-08 | 4860, 4862, 4869, 4870 |  | 7 day week with NGT | 171335 |
| 4872 | 37400.37600.39900.42900.43800.81100.772200 | False ceiling works | 10d | 2027-02-09 | 2027-02-19 | 4856, 4871 |  | 7 day week with NGT | 171345 |
| 4873 | 37400.37600.39900.42900.43800.81200 | **Eighteenth Floor** | 113d | 2026-09-24 | 2027-03-01 |  | start no earlier than 2026-09-24 | 7 day week with NGT | 165125 |
| 4874 | 37400.37600.39900.42900.43800.81200.772300 | Blockwork | 4d | 2026-09-24 | 2026-09-28 | 4592FS+0.25d, 4858FF+0.25d |  | 7 day week with NGT | 171355 |
| 4875 | 37400.37600.39900.42900.43800.81200.772400 | Internal Plumbing Works | 6d | 2026-09-28 | 2026-10-04 | 4874 |  | 7 day week with NGT | 171365 |
| 4876 | 37400.37600.39900.42900.43800.81200.772500 | Waterproofing Works | 7d | 2026-09-30 | 2026-10-07 | 4875SS+2d |  | 7 day week with NGT | 171375 |
| 4877 | 37400.37600.39900.42900.43800.81200.772600 | PCC | 8d | 2026-10-07 | 2026-10-15 | 4876, 4879SS |  | 7 day week with NGT | 171385 |
| 4878 | 37400.37600.39900.42900.43800.81200.772700 | Electrical Wiring works | 5d | 2026-09-30 | 2026-10-05 | 4876SS |  | 7 day week with NGT | 171395 |
| 4879 | 37400.37600.39900.42900.43800.81200.772800 | Internal Plaster Works | 3d | 2026-10-05 | 2026-10-08 | 4875FS+0.25d, 4878FS+0.25d |  | 7 day week with NGT | 171405 |
| 4880 | 37400.37600.39900.42900.43800.81200.772900 | Toilet Dado Works | 10d | 2026-10-08 | 2026-10-18 | 4875, 4876, 4878, 4879 |  | 7 day week with NGT | 171415 |
| 4881 | 37400.37600.39900.42900.43800.81200.773000 | Toilet Flooring Works | 10d | 2026-10-18 | 2026-10-28 | 4877, 4880 |  | 7 day week with NGT | 171425 |
| 4882 | 37400.37600.39900.42900.43800.81200.773100 | Living Dining Flooring | 10d | 2026-10-28 | 2026-12-22 | 4881 |  | 7 day week with NGT | 171435 |
| 4883 | 37400.37600.39900.42900.43800.81200.773200 | Temporary Door Fixing | 9d | 2026-09-28 | 2026-10-07 | 4874 |  | 7 day week with NGT | 171445 |
| 4884 | 37400.37600.39900.42900.43800.81200.773300 | Aluminium Door Widnow Fixing | 27d | 2026-12-22 | 2027-01-18 | 4882, 4883 |  | 7 day week with NGT | 171455 |
| 4885 | 37400.37600.39900.42900.43800.81200.773400 | Rehung Door Fixing | 8d | 2027-01-18 | 2027-01-26 | 4884 |  | 7 day week with NGT | 171465 |
| 4886 | 37400.37600.39900.42900.43800.81200.773500 | Putty Primer coat | 6d | 2027-01-26 | 2027-02-01 | 4885 |  | 7 day week with NGT | 171475 |
| 4887 | 37400.37600.39900.42900.43800.81200.773600 | Painting First Coat | 12d | 2027-02-01 | 2027-02-13 | 4876, 4878, 4885, 4886 |  | 7 day week with NGT | 171485 |
| 4888 | 37400.37600.39900.42900.43800.81200.773700 | False ceiling works | 10d | 2027-02-19 | 2027-03-01 | 4872, 4887 |  | 7 day week with NGT | 171495 |

| ID | WBS | Task | Duration | Start | Finish | Predecessors | Constraint | Calendar | Unique_Task_ID |
| --- | --- | --- | --- | --- | --- | --- | --- | --- | --- |
| 4889 | 37400.37600.39900.42900.43800.81300 | **Ninteenth Floor** | 116d | 2026-10-01 | 2027-03-11 |  | start no earlier than 2026-10-01 | 7 day week with NGT | 165135 |
| 4890 | 37400.37600.39900.42900.43800.81300.773800 | Blockwork | 4d | 2026-10-01 | 2026-10-05 | 4593FF+0.25d, 4874FS+0.25d |  | 7 day week with NGT | 171505 |
| 4891 | 37400.37600.39900.42900.43800.81300.773900 | Internal Plumbing Works | 6d | 2026-10-05 | 2026-10-11 | 4890 |  | 7 day week with NGT | 171515 |
| 4892 | 37400.37600.39900.42900.43800.81300.774000 | Waterproofing Works | 7d | 2026-10-07 | 2026-10-14 | 4891SS+2d |  | 7 day week with NGT | 171525 |
| 4893 | 37400.37600.39900.42900.43800.81300.774100 | PCC | 8d | 2026-10-14 | 2026-10-22 | 4892, 4895SS |  | 7 day week with NGT | 171535 |
| 4894 | 37400.37600.39900.42900.43800.81300.774200 | Electrical Wiring works | 5d | 2026-10-07 | 2026-10-12 | 4892SS |  | 7 day week with NGT | 171545 |
| 4895 | 37400.37600.39900.42900.43800.81300.774300 | Internal Plaster Works | 3d | 2026-10-12 | 2026-10-15 | 4891FS+0.25d, 4894FS+0.25d |  | 7 day week with NGT | 171555 |
| 4896 | 37400.37600.39900.42900.43800.81300.774400 | Toilet Dado Works | 10d | 2026-10-15 | 2026-10-25 | 4891, 4892, 4894, 4895 |  | 7 day week with NGT | 171565 |
| 4897 | 37400.37600.39900.42900.43800.81300.774500 | Toilet Flooring Works | 10d | 2026-10-25 | 2026-12-19 | 4893, 4896 |  | 7 day week with NGT | 171575 |
| 4898 | 37400.37600.39900.42900.43800.81300.774600 | Living Dining Flooring | 10d | 2026-12-19 | 2026-12-29 | 4897 |  | 7 day week with NGT | 171585 |
| 4899 | 37400.37600.39900.42900.43800.81300.774700 | Temporary Door Fixing | 9d | 2026-10-05 | 2026-10-14 | 4890 |  | 7 day week with NGT | 171595 |
| 4900 | 37400.37600.39900.42900.43800.81300.774800 | Aluminium Door Widnow Fixing | 35d | 2026-12-29 | 2027-02-02 | 4898, 4899 |  | 7 day week with NGT | 171605 |
| 4901 | 37400.37600.39900.42900.43800.81300.774900 | Rehung Door Fixing | 8d | 2027-02-02 | 2027-02-10 | 4900 |  | 7 day week with NGT | 171615 |
| 4902 | 37400.37600.39900.42900.43800.81300.775000 | Putty Primer coat | 6d | 2027-02-10 | 2027-02-16 | 4901 |  | 7 day week with NGT | 171625 |
| 4903 | 37400.37600.39900.42900.43800.81300.775100 | Painting First Coat | 12d | 2027-02-16 | 2027-02-28 | 4892, 4894, 4901, 4902 |  | 7 day week with NGT | 171635 |
| 4904 | 37400.37600.39900.42900.43800.81300.775200 | False ceiling works | 10d | 2027-03-01 | 2027-03-11 | 4888, 4903 |  | 7 day week with NGT | 171645 |
| 4905 | 37400.37600.39900.42900.43800.81400 | **Twenty Floor** | 117d | 2026-10-16 | 2027-03-27 |  | start no earlier than 2026-10-16 | 7 day week with NGT | 165145 |
| 4906 | 37400.37600.39900.42900.43800.81400.775300 | Blockwork | 4d | 2026-10-16 | 2026-10-20 | 4594FS+0.25d, 4890FS+0.25d |  | 7 day week with NGT | 171655 |
| 4907 | 37400.37600.39900.42900.43800.81400.775400 | Internal Plumbing Works | 6d | 2026-10-20 | 2026-10-26 | 4906 |  | 7 day week with NGT | 171665 |
| 4908 | 37400.37600.39900.42900.43800.81400.775500 | Waterproofing Works | 7d | 2026-10-22 | 2026-10-29 | 4907SS+2d |  | 7 day week with NGT | 171675 |
| 4909 | 37400.37600.39900.42900.43800.81400.775600 | PCC | 8d | 2026-10-29 | 2026-12-21 | 4908, 4911SS |  | 7 day week with NGT | 171685 |
| 4910 | 37400.37600.39900.42900.43800.81400.775700 | Electrical Wiring works | 5d | 2026-10-22 | 2026-10-27 | 4908SS |  | 7 day week with NGT | 171695 |
| 4911 | 37400.37600.39900.42900.43800.81400.775800 | Internal Plaster Works | 3d | 2026-10-29 | 2026-12-16 | 4907, 4908, 4910 |  | 7 day week with NGT | 171705 |
| 4912 | 37400.37600.39900.42900.43800.81400.775900 | Toilet Dado Works | 10d | 2026-12-16 | 2026-12-26 | 4907, 4908, 4910, 4911 |  | 7 day week with NGT | 171715 |
| 4913 | 37400.37600.39900.42900.43800.81400.776000 | Toilet Flooring Works | 10d | 2026-12-26 | 2027-01-05 | 4909, 4912 |  | 7 day week with NGT | 171725 |
| 4914 | 37400.37600.39900.42900.43800.81400.776100 | Living Dining Flooring | 10d | 2027-01-05 | 2027-01-15 | 4913 |  | 7 day week with NGT | 171735 |
| 4915 | 37400.37600.39900.42900.43800.81400.776200 | Temporary Door Fixing | 9d | 2026-10-20 | 2026-10-29 | 4906 |  | 7 day week with NGT | 171745 |
| 4916 | 37400.37600.39900.42900.43800.81400.776300 | Aluminium Door Widnow Fixing | 35d | 2027-01-15 | 2027-02-19 | 4914, 4915 |  | 7 day week with NGT | 171755 |
| 4917 | 37400.37600.39900.42900.43800.81400.776400 | Rehung Door Fixing | 8d | 2027-02-19 | 2027-02-27 | 4916 |  | 7 day week with NGT | 171765 |
| 4918 | 37400.37600.39900.42900.43800.81400.776500 | Putty Primer coat | 6d | 2027-02-27 | 2027-03-05 | 4917 |  | 7 day week with NGT | 171775 |
| 4919 | 37400.37600.39900.42900.43800.81400.776600 | Painting First Coat | 12d | 2027-03-05 | 2027-03-17 | 4908, 4910, 4917, 4918 |  | 7 day week with NGT | 171785 |
| 4920 | 37400.37600.39900.42900.43800.81400.776700 | False ceiling works | 10d | 2027-03-17 | 2027-03-27 | 4904, 4919 |  | 7 day week with NGT | 171795 |

| ID | WBS | Task | Duration | Start | Finish | Predecessors | Constraint | Calendar | Unique_Task_ID |
| --- | --- | --- | --- | --- | --- | --- | --- | --- | --- |
| 4921 | 37400.37600.39900.42900.43800.81500 | **Twentyone Floor** | 116d | 2026-10-27 | 2027-04-06 |  | start no earlier than 2026-10-27 | 7 day week with NGT | 165155 |
| 4922 | 37400.37600.39900.42900.43800.81500.776800 | Blockwork | 4d | 2026-10-27 | 2026-10-31 | 4595FS+0.25d |  | 7 day week with NGT | 171805 |
| 4923 | 37400.37600.39900.42900.43800.81500.776900 | Internal Plumbing Works | 6d | 2026-10-31 | 2026-12-21 | 4922 |  | 7 day week with NGT | 171815 |
| 4924 | 37400.37600.39900.42900.43800.81500.777000 | Waterproofing Works | 7d | 2026-12-17 | 2026-12-24 | 4923SS+2d |  | 7 day week with NGT | 171825 |
| 4925 | 37400.37600.39900.42900.43800.81500.777100 | PCC | 8d | 2026-12-24 | 2027-01-01 | 4924, 4927SS |  | 7 day week with NGT | 171835 |
| 4926 | 37400.37600.39900.42900.43800.81500.777200 | Electrical Wiring works | 5d | 2026-12-17 | 2026-12-22 | 4924SS |  | 7 day week with NGT | 171845 |
| 4927 | 37400.37600.39900.42900.43800.81500.777300 | Internal Plaster Works | 3d | 2026-12-22 | 2026-12-25 | 4923FS+0.25d, 4926FS+0.25d |  | 7 day week with NGT | 171855 |
| 4928 | 37400.37600.39900.42900.43800.81500.777400 | Toilet Dado Works | 10d | 2026-12-25 | 2027-01-04 | 4923, 4924, 4926, 4927 |  | 7 day week with NGT | 171865 |
| 4929 | 37400.37600.39900.42900.43800.81500.777500 | Toilet Flooring Works | 10d | 2027-01-04 | 2027-01-14 | 4925, 4928 |  | 7 day week with NGT | 171875 |
| 4930 | 37400.37600.39900.42900.43800.81500.777600 | Living Dining Flooring | 7d | 2027-01-14 | 2027-01-21 | 4929 |  | 7 day week with NGT | 171885 |
| 4931 | 37400.37600.39900.42900.43800.81500.777700 | Temporary Door Fixing | 9d | 2026-10-31 | 2026-12-24 | 4922 |  | 7 day week with NGT | 171895 |
| 4932 | 37400.37600.39900.42900.43800.81500.777800 | Aluminium Door Widnow Fixing | 35d | 2027-01-21 | 2027-02-25 | 4930, 4931 |  | 7 day week with NGT | 171905 |
| 4933 | 37400.37600.39900.42900.43800.81500.777900 | Rehung Door Fixing | 8d | 2027-02-25 | 2027-03-05 | 4932 |  | 7 day week with NGT | 171915 |
| 4934 | 37400.37600.39900.42900.43800.81500.778000 | Putty Primer coat | 6d | 2027-03-05 | 2027-03-11 | 4933 |  | 7 day week with NGT | 171925 |
| 4935 | 37400.37600.39900.42900.43800.81500.778100 | Painting First Coat | 12d | 2027-03-11 | 2027-03-23 | 4924, 4926, 4933, 4934 |  | 7 day week with NGT | 171935 |
| 4936 | 37400.37600.39900.42900.43800.81500.778200 | False ceiling works | 10d | 2027-03-27 | 2027-04-06 | 4920, 4935 |  | 7 day week with NGT | 8022572 |
| 4937 | 37400.37600.39900.42900.43800.81600 | **Twenty two Floor** | 109d | 2027-01-04 | 2027-04-23 |  | start no earlier than 2027-01-04 | 7 day week with NGT | 165165 |
| 4938 | 37400.37600.39900.42900.43800.81600.778300 | Blockwork | 4d | 2027-01-04 | 2027-01-08 | 4597FF+0.25d |  | 7 day week with NGT | 171955 |
| 4939 | 37400.37600.39900.42900.43800.81600.778400 | Internal Plumbing Works | 6d | 2027-01-08 | 2027-01-14 | 4938 |  | 7 day week with NGT | 171965 |
| 4940 | 37400.37600.39900.42900.43800.81600.778500 | Waterproofing Works | 7d | 2027-01-10 | 2027-01-17 | 4939SS+2d |  | 7 day week with NGT | 171975 |
| 4941 | 37400.37600.39900.42900.43800.81600.778600 | PCC | 4d | 2027-01-17 | 2027-01-21 | 4940, 4943SS |  | 7 day week with NGT | 171985 |
| 4942 | 37400.37600.39900.42900.43800.81600.778700 | Electrical Wiring works | 4d | 2027-01-10 | 2027-01-14 | 4940SS |  | 7 day week with NGT | 171995 |
| 4943 | 37400.37600.39900.42900.43800.81600.778800 | Internal Plaster Works | 5d | 2027-01-15 | 2027-01-20 | 4939FS+0.25d, 4940FF+3d, 4942FF+3d |  | 7 day week with NGT | 172005 |
| 4944 | 37400.37600.39900.42900.43800.81600.778900 | Toilet Dado Works | 7d | 2027-01-20 | 2027-01-27 | 4939, 4940, 4942, 4943 |  | 7 day week with NGT | 172015 |
| 4945 | 37400.37600.39900.42900.43800.81600.779000 | Toilet Flooring Works | 5d | 2027-01-27 | 2027-02-01 | 4941, 4944 |  | 7 day week with NGT | 172025 |
| 4946 | 37400.37600.39900.42900.43800.81600.779100 | Living Dining Flooring | 10d | 2027-02-01 | 2027-02-11 | 4945 |  | 7 day week with NGT | 172035 |
| 4947 | 37400.37600.39900.42900.43800.81600.779200 | Temporary Door Fixing | 9d | 2027-01-08 | 2027-01-17 | 4938 |  | 7 day week with NGT | 172045 |
| 4948 | 37400.37600.39900.42900.43800.81600.779300 | Aluminium Door Widnow Fixing | 35d | 2027-02-11 | 2027-03-18 | 4946, 4947 |  | 7 day week with NGT | 172055 |
| 4949 | 37400.37600.39900.42900.43800.81600.779400 | Rehung Door Fixing | 8d | 2027-03-18 | 2027-03-26 | 4948 |  | 7 day week with NGT | 172065 |
| 4950 | 37400.37600.39900.42900.43800.81600.779500 | Putty Primer coat | 6d | 2027-03-26 | 2027-04-01 | 4949 |  | 7 day week with NGT | 172075 |
| 4951 | 37400.37600.39900.42900.43800.81600.779600 | Painting First Coat | 12d | 2027-04-01 | 2027-04-13 | 4940, 4942, 4949, 4950 |  | 7 day week with NGT | 172085 |
| 4952 | 37400.37600.39900.42900.43800.81600.779700 | False ceiling works | 10d | 2027-04-13 | 2027-04-23 | 4936, 4951 |  | 7 day week with NGT | 172095 |

| ID | WBS | Task | Duration | Start | Finish | Predecessors | Constraint | Calendar | Unique_Task_ID |
| --- | --- | --- | --- | --- | --- | --- | --- | --- | --- |
| 4953 | 37400.37600.39900.42900.43800.81700 | **Twenty Three Floor** | 112d | 2027-01-12 | 2027-05-04 |  | start no earlier than 2027-01-12 | 7 day week with NGT | 165175 |
| 4954 | 37400.37600.39900.42900.43800.81700.779800 | Blockwork | 7d | 2027-01-12 | 2027-01-19 | 4598FF+0.25d |  | 7 day week with NGT | 172105 |
| 4955 | 37400.37600.39900.42900.43800.81700.779900 | Internal Plumbing Works | 6d | 2027-01-19 | 2027-01-25 | 4954 |  | 7 day week with NGT | 172115 |
| 4956 | 37400.37600.39900.42900.43800.81700.780000 | Waterproofing Works | 10d | 2027-01-21 | 2027-01-31 | 4955SS+2d |  | 7 day week with NGT | 172125 |
| 4957 | 37400.37600.39900.42900.43800.81700.780100 | PCC | 8d | 2027-02-02 | 2027-02-10 | 4956, 4959SS |  | 7 day week with NGT | 172135 |
| 4958 | 37400.37600.39900.42900.43800.81700.780200 | Electrical Wiring works | 12d | 2027-01-21 | 2027-02-02 | 4956SS |  | 7 day week with NGT | 172145 |
| 4959 | 37400.37600.39900.42900.43800.81700.780300 | Internal Plaster Works | 9d | 2027-02-02 | 2027-02-11 | 4955, 4956, 4958 |  | 7 day week with NGT | 172155 |
| 4960 | 37400.37600.39900.42900.43800.81700.780400 | Toilet Dado Works | 9d | 2027-02-11 | 2027-02-20 | 4955, 4956, 4958, 4959 |  | 7 day week with NGT | 172165 |
| 4961 | 37400.37600.39900.42900.43800.81700.780500 | Toilet Flooring Works | 7d | 2027-02-20 | 2027-02-27 | 4957, 4960 |  | 7 day week with NGT | 172175 |
| 4962 | 37400.37600.39900.42900.43800.81700.780600 | Living Dining Flooring | 15d | 2027-02-27 | 2027-03-14 | 4961 |  | 7 day week with NGT | 172185 |
| 4963 | 37400.37600.39900.42900.43800.81700.780700 | Temporary Door Fixing | 9d | 2027-01-19 | 2027-01-28 | 4954 |  | 7 day week with NGT | 172195 |
| 4964 | 37400.37600.39900.42900.43800.81700.780800 | Aluminium Door Widnow Fixing | 15d | 2027-03-14 | 2027-03-29 | 4962, 4963 |  | 7 day week with NGT | 172205 |
| 4965 | 37400.37600.39900.42900.43800.81700.780900 | Rehung Door Fixing | 8d | 2027-03-29 | 2027-04-06 | 4964 |  | 7 day week with NGT | 172215 |
| 4966 | 37400.37600.39900.42900.43800.81700.781000 | Putty Primer coat | 6d | 2027-04-06 | 2027-04-12 | 4965 |  | 7 day week with NGT | 172225 |
| 4967 | 37400.37600.39900.42900.43800.81700.781100 | Painting First Coat | 12d | 2027-04-12 | 2027-04-24 | 4956, 4958, 4965, 4966 |  | 7 day week with NGT | 172235 |
| 4968 | 37400.37600.39900.42900.43800.81700.781200 | False ceiling works | 10d | 2027-04-24 | 2027-05-04 | 4952, 4967 |  | 7 day week with NGT | 172245 |
| 4969 | 37400.37600.39900.42900.43800.81800 | **Twenty Four Floor** | 111d | 2027-01-23 | 2027-05-14 |  | start no earlier than 2027-01-23 | 7 day week with NGT | 165185 |
| 4970 | 37400.37600.39900.42900.43800.81800.781300 | Blockwork | 7d | 2027-01-23 | 2027-01-30 | 4599FF+0.25d |  | 7 day week with NGT | 8022582 |
| 4971 | 37400.37600.39900.42900.43800.81800.781400 | Internal Plumbing Works | 3d | 2027-01-27 | 2027-01-30 | 4970FF+0.25d |  | 7 day week with NGT | 8022592 |
| 4972 | 37400.37600.39900.42900.43800.81800.781500 | Waterproofing Works | 5d | 2027-01-29 | 2027-02-03 | 4971SS+2d |  | 7 day week with NGT | 8022602 |
| 4973 | 37400.37600.39900.42900.43800.81800.781600 | PCC | 4d | 2027-02-03 | 2027-02-07 | 4972, 4975SS |  | 7 day week with NGT | 172285 |
| 4974 | 37400.37600.39900.42900.43800.81800.781700 | Electrical Wiring works | 5d | 2027-01-29 | 2027-02-03 | 4972SS |  | 7 day week with NGT | 172295 |
| 4975 | 37400.37600.39900.42900.43800.81800.781800 | Internal Plaster Works | 5d | 2027-02-01 | 2027-02-06 | 4971FS+0.25d, 4972FF+3d, 4974FF+3d |  | 7 day week with NGT | 172305 |
| 4976 | 37400.37600.39900.42900.43800.81800.781900 | Toilet Dado Works | 9d | 2027-02-06 | 2027-02-15 | 4971, 4972, 4974, 4975 |  | 7 day week with NGT | 172315 |
| 4977 | 37400.37600.39900.42900.43800.81800.782000 | Toilet Flooring Works | 7d | 2027-02-15 | 2027-02-22 | 4973, 4976 |  | 7 day week with NGT | 172325 |
| 4978 | 37400.37600.39900.42900.43800.81800.782100 | Living Dining Flooring | 15d | 2027-02-22 | 2027-03-09 | 4977 |  | 7 day week with NGT | 172335 |
| 4979 | 37400.37600.39900.42900.43800.81800.782200 | Temporary Door Fixing | 9d | 2027-01-30 | 2027-02-08 | 4970 |  | 7 day week with NGT | 172345 |
| 4980 | 37400.37600.39900.42900.43800.81800.782300 | Aluminium Door Widnow Fixing | 15d | 2027-03-09 | 2027-03-24 | 4978, 4979 |  | 7 day week with NGT | 172355 |
| 4981 | 37400.37600.39900.42900.43800.81800.782400 | Rehung Door Fixing | 8d | 2027-03-24 | 2027-04-01 | 4980 |  | 7 day week with NGT | 172365 |
| 4982 | 37400.37600.39900.42900.43800.81800.782500 | Putty Primer coat | 6d | 2027-04-01 | 2027-04-07 | 4981 |  | 7 day week with NGT | 172375 |
| 4983 | 37400.37600.39900.42900.43800.81800.782600 | Painting First Coat | 12d | 2027-04-07 | 2027-04-19 | 4972, 4974, 4981, 4982 |  | 7 day week with NGT | 172385 |
| 4984 | 37400.37600.39900.42900.43800.81800.782700 | False ceiling works | 10d | 2027-05-04 | 2027-05-14 | 4968, 4983 |  | 7 day week with NGT | 172395 |

| ID | WBS | Task | Duration | Start | Finish | Predecessors | Constraint | Calendar | Unique_Task_ID |
| --- | --- | --- | --- | --- | --- | --- | --- | --- | --- |
| 4985 | 37400.37600.39900.42900.43800.81900 | **Twenty Five Floors** | 111d | 2027-02-04 | 2027-05-26 |  | start no earlier than 2027-02-04 | 7 day week with NGT | 165195 |
| 4986 | 37400.37600.39900.42900.43800.81900.782800 | Blockwork | 6d | 2027-02-04 | 2027-02-10 | 4600FF+0.25d |  | 7 day week with NGT | 172405 |
| 4987 | 37400.37600.39900.42900.43800.81900.782900 | Internal Plumbing Works | 6d | 2027-02-10 | 2027-02-16 | 4986 |  | 7 day week with NGT | 172415 |
| 4988 | 37400.37600.39900.42900.43800.81900.783000 | Waterproofing Works | 10d | 2027-02-12 | 2027-02-22 | 4987SS+2d |  | 7 day week with NGT | 172425 |
| 4989 | 37400.37600.39900.42900.43800.81900.783100 | PCC | 8d | 2027-02-24 | 2027-03-04 | 4988, 4991SS |  | 7 day week with NGT | 172435 |
| 4990 | 37400.37600.39900.42900.43800.81900.783200 | Electrical Wiring works | 12d | 2027-02-12 | 2027-02-24 | 4988SS |  | 7 day week with NGT | 172445 |
| 4991 | 37400.37600.39900.42900.43800.81900.783300 | Internal Plaster Works | 9d | 2027-02-24 | 2027-03-05 | 4987, 4988, 4990 |  | 7 day week with NGT | 172455 |
| 4992 | 37400.37600.39900.42900.43800.81900.783400 | Toilet Dado Works | 9d | 2027-03-05 | 2027-03-14 | 4987, 4988, 4990, 4991 |  | 7 day week with NGT | 172465 |
| 4993 | 37400.37600.39900.42900.43800.81900.783500 | Toilet Flooring Works | 7d | 2027-03-14 | 2027-03-21 | 4989, 4992 |  | 7 day week with NGT | 172475 |
| 4994 | 37400.37600.39900.42900.43800.81900.783600 | Living Dining Flooring | 15d | 2027-03-21 | 2027-04-05 | 4993 |  | 7 day week with NGT | 172485 |
| 4995 | 37400.37600.39900.42900.43800.81900.783700 | Temporary Door Fixing | 9d | 2027-02-10 | 2027-02-19 | 4986 |  | 7 day week with NGT | 172495 |
| 4996 | 37400.37600.39900.42900.43800.81900.783800 | Aluminium Door Widnow Fixing | 15d | 2027-04-05 | 2027-04-20 | 4994, 4995 |  | 7 day week with NGT | 172505 |
| 4997 | 37400.37600.39900.42900.43800.81900.783900 | Rehung Door Fixing | 8d | 2027-04-20 | 2027-04-28 | 4996 |  | 7 day week with NGT | 172515 |
| 4998 | 37400.37600.39900.42900.43800.81900.784000 | Putty Primer coat | 6d | 2027-04-28 | 2027-05-04 | 4997 |  | 7 day week with NGT | 172525 |
| 4999 | 37400.37600.39900.42900.43800.81900.784100 | Painting First Coat | 12d | 2027-05-04 | 2027-05-16 | 4988, 4990, 4997, 4998 |  | 7 day week with NGT | 172535 |
| 5000 | 37400.37600.39900.42900.43800.81900.784200 | False ceiling works | 10d | 2027-05-16 | 2027-05-26 | 4984, 4999 |  | 7 day week with NGT | 172545 |
| 5001 | 37400.37600.39900.42900.43800.82000 | **Twenty Six Floor** | 111d | 2027-02-21 | 2027-06-12 |  | start no earlier than 2027-02-21 | 7 day week with NGT | 165205 |
| 5002 | 37400.37600.39900.42900.43800.82000.784300 | Blockwork | 6d | 2027-02-21 | 2027-02-27 | 4601 |  | 7 day week with NGT | 172555 |
| 5003 | 37400.37600.39900.42900.43800.82000.784400 | Internal Plumbing Works | 6d | 2027-02-27 | 2027-03-05 | 5002 |  | 7 day week with NGT | 172565 |
| 5004 | 37400.37600.39900.42900.43800.82000.784500 | Waterproofing Works | 10d | 2027-03-01 | 2027-03-11 | 5003SS+2d |  | 7 day week with NGT | 172575 |
| 5005 | 37400.37600.39900.42900.43800.82000.784600 | PCC | 8d | 2027-03-13 | 2027-03-21 | 5004, 5007SS |  | 7 day week with NGT | 172585 |
| 5006 | 37400.37600.39900.42900.43800.82000.784700 | Electrical Wiring works | 12d | 2027-03-01 | 2027-03-13 | 5004SS |  | 7 day week with NGT | 172595 |
| 5007 | 37400.37600.39900.42900.43800.82000.784800 | Internal Plaster Works | 9d | 2027-03-13 | 2027-03-22 | 5003, 5004, 5006 |  | 7 day week with NGT | 172605 |
| 5008 | 37400.37600.39900.42900.43800.82000.784900 | Toilet Dado Works | 9d | 2027-03-22 | 2027-03-31 | 5003, 5004, 5006, 5007 |  | 7 day week with NGT | 172615 |
| 5009 | 37400.37600.39900.42900.43800.82000.785000 | Toilet Flooring Works | 7d | 2027-03-31 | 2027-04-07 | 5005, 5008 |  | 7 day week with NGT | 172625 |
| 5010 | 37400.37600.39900.42900.43800.82000.785100 | Living Dining Flooring | 15d | 2027-04-07 | 2027-04-22 | 5009 |  | 7 day week with NGT | 172635 |
| 5011 | 37400.37600.39900.42900.43800.82000.785200 | Temporary Door Fixing | 9d | 2027-02-27 | 2027-03-08 | 5002 |  | 7 day week with NGT | 172645 |
| 5012 | 37400.37600.39900.42900.43800.82000.785300 | Aluminium Door Widnow Fixing | 15d | 2027-04-22 | 2027-05-07 | 5010, 5011 |  | 7 day week with NGT | 172655 |
| 5013 | 37400.37600.39900.42900.43800.82000.785400 | Rehung Door Fixing | 8d | 2027-05-07 | 2027-05-15 | 5012 |  | 7 day week with NGT | 172665 |
| 5014 | 37400.37600.39900.42900.43800.82000.785500 | Putty Primer coat | 6d | 2027-05-15 | 2027-05-21 | 5013 |  | 7 day week with NGT | 172675 |
| 5015 | 37400.37600.39900.42900.43800.82000.785600 | Painting First Coat | 12d | 2027-05-21 | 2027-06-02 | 5004, 5006, 5013, 5014 |  | 7 day week with NGT | 172685 |
| 5016 | 37400.37600.39900.42900.43800.82000.785700 | False ceiling works | 10d | 2027-06-02 | 2027-06-12 | 5000, 5015 |  | 7 day week with NGT | 172695 |

| ID | WBS | Task | Duration | Start | Finish | Predecessors | Constraint | Calendar | Unique_Task_ID |
| --- | --- | --- | --- | --- | --- | --- | --- | --- | --- |
| 5017 | 37400.37600.39900.42900.43800.82100 | **Twenty Seven Floors** | 111d | 2027-03-10 | 2027-06-29 |  | start no earlier than 2027-03-10 | 7 day week with NGT | 165215 |
| 5018 | 37400.37600.39900.42900.43800.82100.785800 | Blockwork | 6d | 2027-03-10 | 2027-03-16 | 4602 |  | 7 day week with NGT | 172705 |
| 5019 | 37400.37600.39900.42900.43800.82100.785900 | Internal Plumbing Works | 6d | 2027-03-16 | 2027-03-22 | 5018 |  | 7 day week with NGT | 172715 |
| 5020 | 37400.37600.39900.42900.43800.82100.786000 | Waterproofing Works | 10d | 2027-03-18 | 2027-03-28 | 5019SS+2d |  | 7 day week with NGT | 172725 |
| 5021 | 37400.37600.39900.42900.43800.82100.786100 | PCC | 8d | 2027-03-30 | 2027-04-07 | 5020, 5023SS |  | 7 day week with NGT | 172735 |
| 5022 | 37400.37600.39900.42900.43800.82100.786200 | Electrical Wiring works | 12d | 2027-03-18 | 2027-03-30 | 5020SS |  | 7 day week with NGT | 172745 |
| 5023 | 37400.37600.39900.42900.43800.82100.786300 | Internal Plaster Works | 9d | 2027-03-30 | 2027-04-08 | 5019, 5020, 5022 |  | 7 day week with NGT | 172755 |
| 5024 | 37400.37600.39900.42900.43800.82100.786400 | Toilet Dado Works | 9d | 2027-04-08 | 2027-04-17 | 5019, 5020, 5022, 5023 |  | 7 day week with NGT | 172765 |
| 5025 | 37400.37600.39900.42900.43800.82100.786500 | Toilet Flooring Works | 7d | 2027-04-17 | 2027-04-24 | 5021, 5024 |  | 7 day week with NGT | 172775 |
| 5026 | 37400.37600.39900.42900.43800.82100.786600 | Living Dining Flooring | 15d | 2027-04-24 | 2027-05-09 | 5025 |  | 7 day week with NGT | 172785 |
| 5027 | 37400.37600.39900.42900.43800.82100.786700 | Temporary Door Fixing | 9d | 2027-03-16 | 2027-03-25 | 5018 |  | 7 day week with NGT | 172795 |
| 5028 | 37400.37600.39900.42900.43800.82100.786800 | Aluminium Door Widnow Fixing | 15d | 2027-05-09 | 2027-05-24 | 5026, 5027 |  | 7 day week with NGT | 172805 |
| 5029 | 37400.37600.39900.42900.43800.82100.786900 | Rehung Door Fixing | 8d | 2027-05-24 | 2027-06-01 | 5028 |  | 7 day week with NGT | 172815 |
| 5030 | 37400.37600.39900.42900.43800.82100.787000 | Putty Primer coat | 6d | 2027-06-01 | 2027-06-07 | 5029 |  | 7 day week with NGT | 172825 |
| 5031 | 37400.37600.39900.42900.43800.82100.787100 | Painting First Coat | 12d | 2027-06-07 | 2027-06-19 | 5020, 5022, 5029, 5030 |  | 7 day week with NGT | 172835 |
| 5032 | 37400.37600.39900.42900.43800.82100.787200 | False ceiling works | 10d | 2027-06-19 | 2027-06-29 | 5016, 5031 |  | 7 day week with NGT | 172845 |
| 5033 | 37400.37600.39900.42900.43800.82200 | **Twenty Eight Floor** | 132d | 2027-03-13 | 2027-07-23 |  | start no earlier than 2027-03-13 | 7 day week with NGT | 165225 |
| 5034 | 37400.37600.39900.42900.43800.82200.787300 | Blockwork | 6d | 2027-03-13 | 2027-03-19 | 4603 |  | 7 day week with NGT | 172855 |
| 5035 | 37400.37600.39900.42900.43800.82200.787400 | Internal Plumbing Works | 6d | 2027-03-19 | 2027-03-25 | 5034 |  | 7 day week with NGT | 172865 |
| 5036 | 37400.37600.39900.42900.43800.82200.787500 | Waterproofing Works | 10d | 2027-03-21 | 2027-03-31 | 5035SS+2d |  | 7 day week with NGT | 172875 |
| 5037 | 37400.37600.39900.42900.43800.82200.787600 | PCC | 8d | 2027-04-02 | 2027-04-10 | 5036, 5039SS |  | 7 day week with NGT | 172885 |
| 5038 | 37400.37600.39900.42900.43800.82200.787700 | Electrical Wiring works | 12d | 2027-03-21 | 2027-04-02 | 5036SS |  | 7 day week with NGT | 172895 |
| 5039 | 37400.37600.39900.42900.43800.82200.787800 | Internal Plaster Works | 16d | 2027-04-02 | 2027-04-18 | 5035, 5036, 5038 |  | 7 day week with NGT | 172905 |
| 5040 | 37400.37600.39900.42900.43800.82200.787900 | Toilet Dado Works | 15d | 2027-04-18 | 2027-05-03 | 5035, 5036, 5038, 5039 |  | 7 day week with NGT | 172915 |
| 5041 | 37400.37600.39900.42900.43800.82200.788000 | Toilet Flooring Works | 15d | 2027-05-03 | 2027-05-18 | 5037, 5040 |  | 7 day week with NGT | 172925 |
| 5042 | 37400.37600.39900.42900.43800.82200.788100 | Living Dining Flooring | 15d | 2027-05-18 | 2027-06-02 | 5041 |  | 7 day week with NGT | 172935 |
| 5043 | 37400.37600.39900.42900.43800.82200.788200 | Temporary Door Fixing | 15d | 2027-03-19 | 2027-04-03 | 5034 |  | 7 day week with NGT | 172945 |
| 5044 | 37400.37600.39900.42900.43800.82200.788300 | Aluminium Door Widnow Fixing | 15d | 2027-06-02 | 2027-06-17 | 5042, 5043 |  | 7 day week with NGT | 172955 |
| 5045 | 37400.37600.39900.42900.43800.82200.788400 | Rehung Door Fixing | 8d | 2027-06-17 | 2027-06-25 | 5044 |  | 7 day week with NGT | 172965 |
| 5046 | 37400.37600.39900.42900.43800.82200.788500 | Putty Primer coat | 6d | 2027-06-25 | 2027-07-01 | 5045 |  | 7 day week with NGT | 172975 |
| 5047 | 37400.37600.39900.42900.43800.82200.788600 | Painting First Coat | 12d | 2027-07-01 | 2027-07-13 | 5036, 5038, 5045, 5046 |  | 7 day week with NGT | 172985 |
| 5048 | 37400.37600.39900.42900.43800.82200.788700 | False ceiling works | 10d | 2027-07-13 | 2027-07-23 | 5032, 5047 |  | 7 day week with NGT | 172995 |

| ID | WBS | Task | Duration | Start | Finish | Predecessors | Constraint | Calendar | Unique_Task_ID |
| --- | --- | --- | --- | --- | --- | --- | --- | --- | --- |
| 5049 | 37400.37600.39900.42900.43800.82300 | **Twenty Nine Floors** | 139d | 2027-03-16 | 2027-08-02 |  | start no earlier than 2027-03-16 | 7 day week with NGT | 165235 |
| 5050 | 37400.37600.39900.42900.43800.82300.788800 | Blockwork | 6d | 2027-03-16 | 2027-03-22 | 4604 |  | 7 day week with NGT | 173005 |
| 5051 | 37400.37600.39900.42900.43800.82300.788900 | Internal Plumbing Works | 6d | 2027-03-22 | 2027-03-28 | 5050 |  | 7 day week with NGT | 173015 |
| 5052 | 37400.37600.39900.42900.43800.82300.789000 | Waterproofing Works | 10d | 2027-03-24 | 2027-04-03 | 5051SS+2d |  | 7 day week with NGT | 173025 |
| 5053 | 37400.37600.39900.42900.43800.82300.789100 | PCC | 8d | 2027-04-05 | 2027-04-13 | 5052, 5055SS |  | 7 day week with NGT | 173035 |
| 5054 | 37400.37600.39900.42900.43800.82300.789200 | Electrical Wiring works | 12d | 2027-03-24 | 2027-04-05 | 5052SS |  | 7 day week with NGT | 173045 |
| 5055 | 37400.37600.39900.42900.43800.82300.789300 | Internal Plaster Works | 15d | 2027-04-05 | 2027-04-20 | 5051, 5052, 5054 |  | 7 day week with NGT | 173055 |
| 5056 | 37400.37600.39900.42900.43800.82300.789400 | Toilet Dado Works | 15d | 2027-04-20 | 2027-05-05 | 5051, 5052, 5054, 5055 |  | 7 day week with NGT | 173065 |
| 5057 | 37400.37600.39900.42900.43800.82300.789500 | Toilet Flooring Works | 15d | 2027-05-05 | 2027-05-20 | 5053, 5056 |  | 7 day week with NGT | 173075 |
| 5058 | 37400.37600.39900.42900.43800.82300.789600 | Living Dining Flooring | 15d | 2027-05-20 | 2027-06-04 | 5057 |  | 7 day week with NGT | 173085 |
| 5059 | 37400.37600.39900.42900.43800.82300.789700 | Temporary Door Fixing | 9d | 2027-03-22 | 2027-03-31 | 5050 |  | 7 day week with NGT | 173095 |
| 5060 | 37400.37600.39900.42900.43800.82300.789800 | Aluminium Door Widnow Fixing | 15d | 2027-06-04 | 2027-06-19 | 5058, 5059 |  | 7 day week with NGT | 173105 |
| 5061 | 37400.37600.39900.42900.43800.82300.789900 | Rehung Door Fixing | 8d | 2027-06-19 | 2027-06-27 | 5060 |  | 7 day week with NGT | 173115 |
| 5062 | 37400.37600.39900.42900.43800.82300.790000 | Putty Primer coat | 6d | 2027-06-27 | 2027-07-03 | 5061 |  | 7 day week with NGT | 173125 |
| 5063 | 37400.37600.39900.42900.43800.82300.790100 | Painting First Coat | 12d | 2027-07-03 | 2027-07-15 | 5052, 5054, 5061, 5062 |  | 7 day week with NGT | 173135 |
| 5064 | 37400.37600.39900.42900.43800.82300.790200 | False ceiling works | 10d | 2027-07-23 | 2027-08-02 | 5048, 5063 |  | 7 day week with NGT | 173145 |
| 5065 | 37400.37600.39900.42900.43800.82400 | **Thirty Floors** | 143d | 2027-03-22 | 2027-08-12 |  | start no earlier than 2027-03-22 | 7 day week with NGT | 165245 |
| 5066 | 37400.37600.39900.42900.43800.82400.790300 | Blockwork | 4d | 2027-03-22 | 2027-03-26 | 5050 |  | 7 day week with NGT | 173155 |
| 5067 | 37400.37600.39900.42900.43800.82400.790400 | Internal Plumbing Works | 6d | 2027-03-26 | 2027-04-01 | 5066 |  | 7 day week with NGT | 173165 |
| 5068 | 37400.37600.39900.42900.43800.82400.790500 | Waterproofing Works | 10d | 2027-03-28 | 2027-04-07 | 5067SS+2d |  | 7 day week with NGT | 173175 |
| 5069 | 37400.37600.39900.42900.43800.82400.790600 | PCC | 8d | 2027-04-09 | 2027-04-17 | 5068, 5071SS |  | 7 day week with NGT | 173185 |
| 5070 | 37400.37600.39900.42900.43800.82400.790700 | Electrical Wiring works | 12d | 2027-03-28 | 2027-04-09 | 5068SS |  | 7 day week with NGT | 173195 |
| 5071 | 37400.37600.39900.42900.43800.82400.790800 | Internal Plaster Works | 15d | 2027-04-09 | 2027-04-24 | 5067, 5068, 5070 |  | 7 day week with NGT | 173205 |
| 5072 | 37400.37600.39900.42900.43800.82400.790900 | Toilet Dado Works | 15d | 2027-04-24 | 2027-05-09 | 5067, 5068, 5070, 5071 |  | 7 day week with NGT | 173215 |
| 5073 | 37400.37600.39900.42900.43800.82400.791000 | Toilet Flooring Works | 15d | 2027-05-09 | 2027-05-24 | 5069, 5072 |  | 7 day week with NGT | 173225 |
| 5074 | 37400.37600.39900.42900.43800.82400.791100 | Living Dining Flooring | 15d | 2027-05-24 | 2027-06-08 | 5073 |  | 7 day week with NGT | 173235 |
| 5075 | 37400.37600.39900.42900.43800.82400.791200 | Temporary Door Fixing | 9d | 2027-03-26 | 2027-04-04 | 5066 |  | 7 day week with NGT | 173245 |
| 5076 | 37400.37600.39900.42900.43800.82400.791300 | Aluminium Door Widnow Fixing | 15d | 2027-06-08 | 2027-06-23 | 5074, 5075 |  | 7 day week with NGT | 173255 |
| 5077 | 37400.37600.39900.42900.43800.82400.791400 | Rehung Door Fixing | 8d | 2027-06-23 | 2027-07-01 | 5076 |  | 7 day week with NGT | 173265 |
| 5078 | 37400.37600.39900.42900.43800.82400.791500 | Putty Primer coat | 6d | 2027-07-01 | 2027-07-07 | 5077 |  | 7 day week with NGT | 173275 |
| 5079 | 37400.37600.39900.42900.43800.82400.791600 | Painting First Coat | 12d | 2027-07-07 | 2027-07-19 | 5068, 5070, 5077, 5078 |  | 7 day week with NGT | 173285 |
| 5080 | 37400.37600.39900.42900.43800.82400.791700 | False ceiling works | 10d | 2027-08-02 | 2027-08-12 | 5064, 5079 |  | 7 day week with NGT | 173295 |

| ID | WBS | Task | Duration | Start | Finish | Predecessors | Constraint | Calendar | Unique_Task_ID |
| --- | --- | --- | --- | --- | --- | --- | --- | --- | --- |
| 5081 | 37400.37600.39900.42900.43800.82500 | **Thirty one Floor** | 151d | 2027-03-26 | 2027-08-24 |  | start no earlier than 2027-03-26 | 7 day week with NGT | 165255 |
| 5082 | 37400.37600.39900.42900.43800.82500.791800 | Blockwork | 5d | 2027-03-26 | 2027-03-31 | 5066 |  | 7 day week with NGT | 173305 |
| 5083 | 37400.37600.39900.42900.43800.82500.791900 | Internal Plumbing Works | 6d | 2027-03-31 | 2027-04-06 | 5082 |  | 7 day week with NGT | 173315 |
| 5084 | 37400.37600.39900.42900.43800.82500.792000 | Waterproofing Works | 10d | 2027-04-02 | 2027-04-12 | 5083SS+2d |  | 7 day week with NGT | 173325 |
| 5085 | 37400.37600.39900.42900.43800.82500.792100 | PCC | 8d | 2027-04-14 | 2027-04-22 | 5084, 5087SS |  | 7 day week with NGT | 173335 |
| 5086 | 37400.37600.39900.42900.43800.82500.792200 | Electrical Wiring works | 12d | 2027-04-02 | 2027-04-14 | 5084SS |  | 7 day week with NGT | 173345 |
| 5087 | 37400.37600.39900.42900.43800.82500.792300 | Internal Plaster Works | 16d | 2027-04-14 | 2027-04-30 | 5083, 5084, 5086 |  | 7 day week with NGT | 173355 |
| 5088 | 37400.37600.39900.42900.43800.82500.792400 | Toilet Dado Works | 30d | 2027-04-30 | 2027-05-30 | 5083, 5084, 5086, 5087 |  | 7 day week with NGT | 173365 |
| 5089 | 37400.37600.39900.42900.43800.82500.792500 | Toilet Flooring Works | 24d | 2027-05-30 | 2027-06-23 | 5085, 5088 |  | 7 day week with NGT | 173375 |
| 5090 | 37400.37600.39900.42900.43800.82500.792600 | Living Dining Flooring | 11d | 2027-06-23 | 2027-07-04 | 5089 |  | 7 day week with NGT | 173385 |
| 5091 | 37400.37600.39900.42900.43800.82500.792700 | Temporary Door Fixing | 9d | 2027-03-31 | 2027-04-09 | 5082 |  | 7 day week with NGT | 173395 |
| 5092 | 37400.37600.39900.42900.43800.82500.792800 | Aluminium Door Widnow Fixing | 15d | 2027-07-04 | 2027-07-19 | 5090, 5091 |  | 7 day week with NGT | 173405 |
| 5093 | 37400.37600.39900.42900.43800.82500.792900 | Rehung Door Fixing | 8d | 2027-07-19 | 2027-07-27 | 5092 |  | 7 day week with NGT | 173415 |
| 5094 | 37400.37600.39900.42900.43800.82500.793000 | Putty Primer coat | 6d | 2027-07-27 | 2027-08-02 | 5093 |  | 7 day week with NGT | 173425 |
| 5095 | 37400.37600.39900.42900.43800.82500.793100 | Painting First Coat | 12d | 2027-08-02 | 2027-08-14 | 5084, 5086, 5093, 5094 |  | 7 day week with NGT | 173435 |
| 5096 | 37400.37600.39900.42900.43800.82500.793200 | False ceiling works | 10d | 2027-08-14 | 2027-08-24 | 5080, 5095 |  | 7 day week with NGT | 173445 |
| 5097 | 37400.37600.39900.42900.223100 | **Terrace Finishing** | 80d | 2027-03-10 | 2027-05-28 |  | start no earlier than 2027-03-10 | 7 day week with NGT | 165775 |
| 5098 | 37400.37600.39900.42900.223100.369500 | Terrace Waterproofing | 40d | 2027-03-10 | 2027-04-18 | 4572 |  | 7 day week with NGT | 166255 |
| 5099 | 37400.37600.39900.42900.223100.369600 | Terrace Finishing | 40d | 2027-04-19 | 2027-05-28 | 5098 |  | 7 day week with NGT | 166265 |
| 5100 | 37400.37600.39900.42900.121700 | **Common Area Finishing** | 284d | 2027-03-10 | 2028-02-01 |  | start no earlier than 2027-03-10 | 7 day week with NGT | 165305 |
| 5101 | 37400.37600.39900.42900.121700.369700 | Blockwork | 40d | 2027-03-10 | 2027-04-18 | 4572 |  | 7 day week with NGT | 166275 |
| 5102 | 37400.37600.39900.42900.121700.369800 | Internal Plaster | 120d | 2027-03-30 | 2027-07-27 | 5101SS+20d |  | 7 day week with NGT | 166285 |
| 5103 | 37400.37600.39900.42900.121700.369900 | Staircase railing fixing | 150d | 2027-04-19 | 2027-09-15 | 5102SS+20d |  | 7 day week with NGT | 166295 |
| 5104 | 37400.37600.39900.42900.121700.370000 | Main Staircase flooring | 150d | 2027-06-28 | 2028-01-08 | 5103SS+70d |  | 7 day week with NGT | 166305 |
| 5105 | 37400.37600.39900.42900.121700.370100 | Fire Staircase railing | 94d | 2027-09-16 | 2028-02-01 | 5104FS-70d |  | 7 day week with NGT | 166315 |
| 5106 | 37400.37600.39900.42900.121700.370200 | Fire Door Work | 60d | 2027-07-28 | 2027-09-25 | 5104SS+30d |  | 7 day week with NGT | 166325 |
| 5107 | 37400.37600.39900.42900.121700.370300 | Electrical wiring work | 120d | 2027-03-30 | 2027-07-27 | 5101SS+20d |  | 7 day week with NGT | 166335 |
| 5108 | 37400.37600.39900.42900.121700.370400 | Lobby Flooring | 137d | 2027-04-29 | 2027-09-12 | 5107SS+30d |  | 7 day week with NGT | 166345 |
| 5109 | 37400.37600.39900.42900.121700.370500 | Ceiling & wall putty-primer | 110d | 2027-04-29 | 2027-08-16 | 5102SS+30d |  | 7 day week with NGT | 166355 |
| 5110 | 37400.37600.39900.42900.121700.370600 | Ceiling and wall painting | 100d | 2027-05-09 | 2027-08-16 | 5102SS+40d |  | 7 day week with NGT | 166365 |
| 5111 | 37400.37600.39900.42900.121700.370700 | Light fixture supply & installation | 45d | 2027-07-08 | 2027-08-21 | 5110SS+60d |  | 7 day week with NGT | 166375 |

| ID | WBS | Task | Duration | Start | Finish | Predecessors | Constraint | Calendar | Unique_Task_ID |
| --- | --- | --- | --- | --- | --- | --- | --- | --- | --- |
| 5112 | 37400.37600.39900.42900.50500 | **Glass Railing Fixing** | 60d | 2027-08-09 | 2027-10-08 |  | start no earlier than 2027-08-09 | 7 day week with NGT | 164955 |
| 5113 | 37400.37600.39900.42900.50500.370800 | 2nd Floor | 2d | 2027-08-09 | 2027-08-11 | 5176 |  | 7 day week with NGT | 166385 |
| 5114 | 37400.37600.39900.42900.50500.370900 | 3rd Floor | 2d | 2027-08-11 | 2027-08-13 | 5113 |  | 7 day week with NGT | 166395 |
| 5115 | 37400.37600.39900.42900.50500.371000 | 4th Floor | 2d | 2027-08-13 | 2027-08-15 | 5114 |  | 7 day week with NGT | 166405 |
| 5116 | 37400.37600.39900.42900.50500.371100 | 5th Floor | 2d | 2027-08-15 | 2027-08-17 | 5115 |  | 7 day week with NGT | 166415 |
| 5117 | 37400.37600.39900.42900.50500.371200 | 6th Floor | 2d | 2027-08-17 | 2027-08-19 | 5116 |  | 7 day week with NGT | 166425 |
| 5118 | 37400.37600.39900.42900.50500.371300 | 7th Floor | 2d | 2027-08-19 | 2027-08-21 | 5117 |  | 7 day week with NGT | 166435 |
| 5119 | 37400.37600.39900.42900.50500.371400 | 8th Floor | 2d | 2027-08-21 | 2027-08-23 | 5118 |  | 7 day week with NGT | 166445 |
| 5120 | 37400.37600.39900.42900.50500.371500 | 9th Floor | 2d | 2027-08-23 | 2027-08-25 | 5119 |  | 7 day week with NGT | 166455 |
| 5121 | 37400.37600.39900.42900.50500.371600 | 10th Floor | 2d | 2027-08-25 | 2027-08-27 | 5120 |  | 7 day week with NGT | 166465 |
| 5122 | 37400.37600.39900.42900.50500.371700 | 11th Floor | 2d | 2027-08-27 | 2027-08-29 | 5121 |  | 7 day week with NGT | 166475 |
| 5123 | 37400.37600.39900.42900.50500.371800 | 12th Floor | 2d | 2027-08-29 | 2027-08-31 | 5122 |  | 7 day week with NGT | 166485 |
| 5124 | 37400.37600.39900.42900.50500.371900 | 13th Floor | 2d | 2027-08-31 | 2027-09-02 | 5123 |  | 7 day week with NGT | 166495 |
| 5125 | 37400.37600.39900.42900.50500.372000 | 14th Floor | 2d | 2027-09-02 | 2027-09-04 | 5124 |  | 7 day week with NGT | 166505 |
| 5126 | 37400.37600.39900.42900.50500.372100 | 15th Floor | 2d | 2027-09-04 | 2027-09-06 | 5125 |  | 7 day week with NGT | 166515 |
| 5127 | 37400.37600.39900.42900.50500.372200 | 16th Floor | 2d | 2027-09-06 | 2027-09-08 | 5126 |  | 7 day week with NGT | 166525 |
| 5128 | 37400.37600.39900.42900.50500.372300 | 17th Floor | 2d | 2027-09-08 | 2027-09-10 | 5127 |  | 7 day week with NGT | 166535 |
| 5129 | 37400.37600.39900.42900.50500.372400 | 18th Floor | 2d | 2027-09-10 | 2027-09-12 | 5128 |  | 7 day week with NGT | 166545 |
| 5130 | 37400.37600.39900.42900.50500.372500 | 19th Floor | 2d | 2027-09-12 | 2027-09-14 | 5129 |  | 7 day week with NGT | 166555 |
| 5131 | 37400.37600.39900.42900.50500.372600 | 20th Floor | 2d | 2027-09-14 | 2027-09-16 | 5130 |  | 7 day week with NGT | 166565 |
| 5132 | 37400.37600.39900.42900.50500.372700 | 21st Floor | 2d | 2027-09-16 | 2027-09-18 | 5131 |  | 7 day week with NGT | 166575 |
| 5133 | 37400.37600.39900.42900.50500.372800 | 22nd Floor | 2d | 2027-09-18 | 2027-09-20 | 5132 |  | 7 day week with NGT | 166585 |
| 5134 | 37400.37600.39900.42900.50500.372900 | 23rd Floor | 2d | 2027-09-20 | 2027-09-22 | 5133 |  | 7 day week with NGT | 166595 |
| 5135 | 37400.37600.39900.42900.50500.373000 | 24th Floor | 2d | 2027-09-22 | 2027-09-24 | 5134 |  | 7 day week with NGT | 166605 |
| 5136 | 37400.37600.39900.42900.50500.373100 | 25th Floor | 2d | 2027-09-24 | 2027-09-26 | 5135 |  | 7 day week with NGT | 166615 |
| 5137 | 37400.37600.39900.42900.50500.373200 | 26th Floor | 2d | 2027-09-26 | 2027-09-28 | 5136 |  | 7 day week with NGT | 166625 |
| 5138 | 37400.37600.39900.42900.50500.373300 | 27th Floor | 2d | 2027-09-28 | 2027-09-30 | 5137 |  | 7 day week with NGT | 166635 |
| 5139 | 37400.37600.39900.42900.50500.373400 | 28th Floor | 2d | 2027-09-30 | 2027-10-02 | 5138 |  | 7 day week with NGT | 166645 |
| 5140 | 37400.37600.39900.42900.50500.373500 | 29th Floor | 2d | 2027-10-02 | 2027-10-04 | 5139 |  | 7 day week with NGT | 166655 |
| 5141 | 37400.37600.39900.42900.50500.373600 | 30th Floor | 2d | 2027-10-04 | 2027-10-06 | 5140 |  | 7 day week with NGT | 166665 |
| 5142 | 37400.37600.39900.42900.50500.373700 | 31st Floor | 2d | 2027-10-06 | 2027-10-08 | 5141 |  | 7 day week with NGT | 166675 |

| ID | WBS | Task | Duration | Start | Finish | Predecessors | Constraint | Calendar | Unique_Task_ID |
| --- | --- | --- | --- | --- | --- | --- | --- | --- | --- |
| 5143 | 37400.37600.39900.116100 | **MEP** | 416d | 2027-03-10 | 2028-06-12 |  | start no earlier than 2027-03-10 | 7 day week with NGT | 165265 |
| 5144 | 37400.37600.39900.116100.119000 | **Electrical Works** | 265d | 2027-03-10 | 2028-01-13 |  | start no earlier than 2027-03-10 | 7 day week with NGT | 165285 |
| 5145 | 37400.37600.39900.116100.119000.373800 | Cable Tray | 90d | 2027-03-10 | 2027-06-07 | 4572 |  | 7 day week with NGT | 166685 |
| 5146 | 37400.37600.39900.116100.119000.373900 | Cable, main & sub main | 80d | 2027-04-24 | 2027-07-12 | 5145SS+45d |  | 7 day week with NGT | 166695 |
| 5147 | 37400.37600.39900.116100.119000.374000 | LT panel & DB | 120d | 2027-06-08 | 2027-10-05 | 5145 |  | 7 day week with NGT | 166705 |
| 5148 | 37400.37600.39900.116100.119000.374100 | Rising main | 90d | 2027-05-09 | 2027-08-06 | 5145SS+60d |  | 7 day week with NGT | 166715 |
| 5149 | 37400.37600.39900.116100.119000.374200 | EARTHING Works | 60d | 2027-03-25 | 2027-05-23 | 5145SS+15d |  | 7 day week with NGT | 166725 |
| 5150 | 37400.37600.39900.116100.119000.374300 | Advance lightening protection | 60d | 2027-05-29 | 2027-07-27 | 5099 |  | 7 day week with NGT | 166735 |
| 5151 | 37400.37600.39900.116100.119000.374400 | Inverter | 35d | 2027-09-11 | 2027-10-15 | 5148, 5149, 5152 |  | 7 day week with NGT | 166745 |
| 5152 | 37400.37600.39900.116100.119000.374500 | Energy meter | 60d | 2027-07-13 | 2027-09-10 | 5146 |  | 7 day week with NGT | 166755 |
| 5153 | 37400.37600.39900.116100.119000.374600 | Exhast fan | 60d | 2027-05-25 | 2027-07-24 | 5092FF+5d |  | 7 day week with NGT | 166765 |
| 5154 | 37400.37600.39900.116100.119000.374700 | FTTH | 60d | 2027-05-14 | 2027-07-12 | 5149FS-10d |  | 7 day week with NGT | 166775 |
| 5155 | 37400.37600.39900.116100.119000.374800 | Security System - FA & PA | 55d | 2027-10-06 | 2028-01-13 | 5147, 5154 |  | 7 day week with NGT | 166785 |
| 5156 | 37400.37600.39900.116100.119000.374900 | Solar water heater | 60d | 2027-05-29 | 2027-07-27 | 5099 |  | 7 day week with NGT | 166795 |
| 5157 | 37400.37600.39900.116100.154600 | **Plumbing Works** | 210d | 2027-04-19 | 2027-12-29 |  | start no earlier than 2027-04-19 | 7 day week with NGT | 165395 |
| 5158 | 37400.37600.39900.116100.154600.375000 | Terrace looping | 45d | 2027-04-19 | 2027-06-02 | 5098 |  | 7 day week with NGT | 166805 |
| 5159 | 37400.37600.39900.116100.154600.375100 | Shaft Plumbing | 120d | 2027-06-03 | 2027-09-30 | 5158 |  | 7 day week with NGT | 166815 |
| 5160 | 37400.37600.39900.116100.154600.375200 | CP sanitary fixture supply | 75d | 2027-04-30 | 2027-07-14 | 5087 |  | 7 day week with NGT | 166825 |
| 5161 | 37400.37600.39900.116100.154600.375300 | Cold & flushing water supply | 90d | 2027-07-28 | 2027-10-25 | 5102 |  | 7 day week with NGT | 166835 |
| 5162 | 37400.37600.39900.116100.154600.375400 | Misc work | 30d | 2027-10-16 | 2027-12-29 | 5161FS-10d |  | 7 day week with NGT | 166845 |
| 5163 | 37400.37600.39900.116100.214600 | **Fire Fighting Works** | 210d | 2027-05-19 | 2028-01-28 |  | start no earlier than 2027-05-19 | 7 day week with NGT | 165715 |
| 5164 | 37400.37600.39900.116100.214600.375500 | Fire hydrant work | 90d | 2027-05-29 | 2027-08-26 | 5102SS+60d |  | 7 day week with NGT | 166855 |
| 5165 | 37400.37600.39900.116100.214600.375600 | Sprinkler & piping work | 80d | 2027-09-26 | 2028-01-28 | 5164FS+30d |  | 7 day week with NGT | 166865 |
| 5166 | 37400.37600.39900.116100.214600.375700 | Shaft Downtake works | 90d | 2027-05-19 | 2027-08-16 | 5098FS+30d |  | 7 day week with NGT | 166875 |
| 5167 | 37400.37600.39900.116100.214600.375800 | Connection to pump room | 30d | 2027-08-17 | 2027-09-15 | 5166 |  | 7 day week with NGT | 166885 |

| ID | WBS | Task | Duration | Start | Finish | Predecessors | Complete | Constraint | Calendar | Unique_Task_ID |
| --- | --- | --- | --- | --- | --- | --- | --- | --- | --- | --- |
| 5168 | 37400.37600.39900.116100.220300 | **Lift Works** | 137d | 2027-03-10 | 2027-07-24 |  |  | start no earlier than 2027-03-10 | 7 day week with NGT | 165765 |
| 5169 | 37400.37600.39900.116100.220300.375900 | Lift Shaft Handover | 40d | 2027-03-10 | 2027-04-18 | 4572 |  |  | 7 day week with NGT | 166895 |
| 5170 | 37400.37600.39900.116100.220300.376000 | Lift installation work | 45d | 2027-04-19 | 2027-06-02 | 5169 |  |  | 7 day week with NGT | 166905 |
| 5171 | 37400.37600.39900.116100.220300.376100 | Lift testing and commissioning | 52d | 2027-06-03 | 2027-07-24 | 5170 |  |  | 7 day week with NGT | 166915 |
| 5172 | 37400.37600.39900.116100.225500 | **AC Works** | 100d | 2028-03-05 | 2028-06-12 |  |  | start no earlier than 2028-03-05 | 7 day week with NGT | 165785 |
| 5173 | 37400.37600.39900.116100.225500.376200 | Split AC | 100d | 2028-03-05 | 2028-06-12 | 5189FS-30d |  |  | 7 day week with NGT | 166925 |
| 5174 | 37400.37600.39900.165700 | **Tower Completion** | 275d | 2027-02-10 | 2027-12-27 |  |  | start no earlier than 2027-02-10 | 7 day week with NGT | 165705 |
| 5175 | 37400.37600.39900.165700.300000 | SURFACE PREPARATION | 80d | 2027-02-10 | 2027-05-01 | 4600 |  |  | 7 day week with NGT | 166115 |
| 5176 | 37400.37600.39900.165700.300100 | External Painting | 100d | 2027-05-01 | 2027-08-09 | 5175 |  |  | 7 day week with NGT | 166125 |
| 5177 | 37400.37600.39900.165700.300200 | Final coat of painting | 75d | 2027-08-09 | 2027-10-23 | 5176 |  |  | 7 day week with NGT | 166135 |
| 5178 | 37400.37600.39900.165700.300300 | Misc. work | 20d | 2027-10-23 | 2027-12-27 | 5177 |  |  | 7 day week with NGT | 166145 |
| 5179 | 37400.37600.39900.227200 | **Basement Lobby** | 60d | 2027-09-13 | 2027-12-26 |  |  | start no earlier than 2027-09-13 | 7 day week with NGT | 165795 |
| 5180 | 37400.37600.39900.227200.300400 | Basement Lobby | 60d | 2027-09-13 | 2027-12-26 | 5108 |  |  | 7 day week with NGT | 166155 |
| 5181 | 37400.37600.39900.127300 | **Post OC Activities** | 493.75d | 2027-07-14 | 2029-01-02 |  |  | start no earlier than 2027-07-14 | 7 day week with NGT | 165315 |
| 5182 | 37400.37600.39900.127300.300500 | Wardrobe installation | 180d | 2028-03-05 | 2028-08-31 | 5189FS-30d |  |  | 7 day week with NGT | 166165 |
| 5183 | 37400.37600.39900.127300.300600 | CP & SANITARYWARE | 120d | 2027-07-14 | 2027-12-26 | 5160 |  |  | 7 day week with NGT | 166175 |
| 5184 | 37400.37600.39900.127300.300700 | Wooden Flooring | 180d | 2028-03-05 | 2028-08-31 | 5189FS-30d |  |  | 7 day week with NGT | 166185 |
| 5185 | 37400.37600.39900.127300.300800 | Electrical Fixtures And Fittings | 120d | 2027-07-28 | 2028-01-08 | 5107 |  |  | 7 day week with NGT | 166195 |
| 5186 | 37400.37600.39900.127300.300900 | Modular Kitchen | 180d | 2028-03-05 | 2028-08-31 | 5182SS |  |  | 7 day week with NGT | 166205 |
| 5187 | 37400.37600.39900.127300.301000 | Final Coat Paint | 90d | 2027-08-22 | 2028-01-03 | 5111 |  |  | 7 day week with NGT | 166215 |
| 5188 | 37400.37600.39900.127300.301100 | OC Application/Readiness | 1d | 2028-02-02 | 2028-02-02 | 5178FS-2d, 4572, 5103, 5171, 5153, 5155, 5156, 5151, 5150, 5106, 5159, 5162, 5165, 5167, 5096, 4616, 5105, 5109, 5142 |  |  | 7 day week with NGT | 166225 |
| 5189 | 37400.37600.39900.127300.301200 | OC Receipt | 1d | 2028-04-03 | 2028-04-03 | 5177, 5180, 5188FS+60d |  |  | 7 day week with NGT | 166235 |
| 5190 | 37400.37600.39900.127300.301300 | Offer To Possession | 30d | 2028-12-04 | 2029-01-02 | 5182, 5183, 5184, 5185, 5186, 5187, 5189FF+274d, 5173 |  |  | 7 day week with NGT | 166245 |
| 5191 | 37400.37600.233100 | Budget correction for Towers Substructure | 69d | 2025-07-12 | 2025-09-30 | 35FS-67d | 100% | start no earlier than 2025-07-12 | Indian Calendar | 164896 |

| ID | WBS | Task | Duration | Start | Finish | Predecessors | Complete | Constraint | Calendar | Unique_Task_ID |
| --- | --- | --- | --- | --- | --- | --- | --- | --- | --- | --- |
| 5192 | 37400.37600.52400 | **NTA** | 1364d | 2024-12-16 | 2029-01-22 |  | 4% | start no earlier than 2024-12-16 | 7 day week with NGT | 7997912 |
| 5193 | 37400.37600.52400.117400 | **NTA RCC** | 904d | 2024-12-16 | 2027-09-05 |  | 10% | start no earlier than 2024-12-16 | 7 day week with NGT | 7998862 |
| 5194 | 37400.37600.52400.117400.138400 | **NTA Footing** | 637d | 2024-12-16 | 2026-10-28 |  | 26% | start no earlier than 2024-12-16 | 7 day week with NGT | 54511 |
| 5195 | 37400.37600.52400.117400.138400.244900 | Anti Termite | 1d | 2024-12-16 | 2024-12-16 | 4341FS+155d | 100% | start no earlier than 2024-12-16 | 7 day week with NGT | 8003532 |
| 5196 | 37400.37600.52400.117400.138400.244800 | PCC | 10.65d | 2024-12-16 | 2025-12-18 | 5195 | 71% | start no earlier than 2024-12-16 | 7 day week with NGT | 8003542 |
| 5197 | 37400.37600.52400.117400.138400.244700 | Reinforcement | 350d | 2024-12-22 | 2026-08-12 | 5196SS+6d | 32% |  | 7 day week with NGT | 8003552 |
| 5198 | 37400.37600.52400.117400.138400.244600 | Shuttering | 350d | 2025-01-06 | 2026-07-31 | 5197FF-9.35d | 34% | start no earlier than 2025-01-06 | 7 day week with NGT | 8003562 |
| 5199 | 37400.37600.52400.117400.138400.244500 | Concreting | 350d | 2025-01-26 | 2026-10-28 | 5198FF+5d | 9% |  | 7 day week with NGT | 8003572 |
| 5200 | 37400.37600.52400.117400.214700 | **NTA RW FD to B2 Roof** | 555d | 2025-06-26 | 2027-04-01 |  | 6% | start no earlier than 2025-06-26 | 7 day week with NGT | 132215 |
| 5201 | 37400.37600.52400.117400.214700.244400 | Reinforcement | 180d | 2025-06-26 | 2027-02-10 | 5199FF+60d | 12% |  | 7 day week with NGT | 8003582 |
| 5202 | 37400.37600.52400.117400.214700.244300 | Shuttering | 180d | 2025-07-01 | 2027-02-25 | 5201FF+15d | 6% |  | 7 day week with NGT | 8003592 |
| 5203 | 37400.37600.52400.117400.214700.244200 | Concreting | 180d | 2025-07-01 | 2027-03-02 | 5201FF+20d | 6% |  | 7 day week with NGT | 8003602 |
| 5204 | 37400.37600.52400.117400.214700.376300 | Retaining wall waterproofing | 180d | 2026-08-20 | 2027-04-01 | 5203FF+30d |  |  | 7 day week with NGT | 54111 |
| 5205 | 37400.37600.52400.117400.220400 | **NTA B2 SLAB** | 180d | 2026-10-19 | 2027-05-31 |  |  | start no earlier than 2026-10-19 | 7 day week with NGT | 8000302 |
| 5206 | 37400.37600.52400.117400.220400.376400 | Shuttering | 120d | 2026-10-19 | 2027-04-01 | 5203FF+30d |  |  | 7 day week with NGT | 132225 |
| 5207 | 37400.37600.52400.117400.220400.376500 | Reinforcement | 120d | 2027-01-02 | 2027-05-01 | 5206SS+30d |  |  | 7 day week with NGT | 132235 |
| 5208 | 37400.37600.52400.117400.220400.376600 | Concreting | 120d | 2027-02-01 | 2027-05-31 | 5203FF, 5207SS+30d |  |  | 7 day week with NGT | 132245 |
| 5209 | 37400.37600.52400.117400.214800 | **NTA RW B2 Roof to B1 Roof** | 85d | 2027-04-10 | 2027-07-17 |  |  | start no earlier than 2027-04-10 | Indian Calendar | 10460678 |
| 5210 | 37400.37600.52400.117400.214800.376700 | Reinforcement | 70d | 2027-04-10 | 2027-06-30 | 5208FF+26d |  |  | Indian Calendar | 132246 |
| 5211 | 37400.37600.52400.117400.214800.376800 | Shuttering | 70d | 2027-04-16 | 2027-07-06 | 5210FF+5d |  |  | Indian Calendar | 132247 |
| 5212 | 37400.37600.52400.117400.214800.376900 | Concreting | 70d | 2027-04-22 | 2027-07-12 | 5211FF+5d |  |  | Indian Calendar | 132248 |
| 5213 | 37400.37600.52400.117400.214800.377000 | Retaining wall waterproofing | 15d | 2027-07-01 | 2027-07-17 | 5212FF+5d |  |  | Indian Calendar | 132249 |
| 5214 | 37400.37600.52400.117400.138300 | **NTA B1 Slab** | 110d | 2027-05-09 | 2027-08-26 |  |  | start no earlier than 2027-05-09 | 7 day week with NGT | 132255 |
| 5215 | 37400.37600.52400.117400.138300.377100 | Column and Shear Wall Reinforcement | 70d | 2027-05-09 | 2027-07-17 | 5212SS+17d |  |  | 7 day week with NGT | 132265 |
| 5216 | 37400.37600.52400.117400.138300.377200 | Column and Shear Wall Formwork | 70d | 2027-05-14 | 2027-07-22 | 5215FF+5d |  |  | 7 day week with NGT | 132275 |
| 5217 | 37400.37600.52400.117400.138300.377300 | Column and Shear Wall Casting | 70d | 2027-05-19 | 2027-07-27 | 5216FF+5d |  |  | 7 day week with NGT | 132285 |
| 5218 | 37400.37600.52400.117400.138300.377400 | Slab Formwork | 70d | 2027-06-08 | 2027-08-16 | 5217FF+20d |  |  | 7 day week with NGT | 132295 |
| 5219 | 37400.37600.52400.117400.138300.377500 | Slab Reinforcement | 70d | 2027-06-13 | 2027-08-21 | 5218FF+5d |  |  | 7 day week with NGT | 132305 |
| 5220 | 37400.37600.52400.117400.138300.377600 | Slab Casting | 70d | 2027-06-18 | 2027-08-26 | 5219FF+5d |  |  | 7 day week with NGT | 132315 |

| ID | WBS | Task | Duration | Start | Finish | Predecessors | Constraint | Calendar | Unique_Task_ID |
| --- | --- | --- | --- | --- | --- | --- | --- | --- | --- |
| 5221 | 37400.37600.52400.117400.138200 | **Podium Slab** | 70d | 2027-06-28 | 2027-09-05 |  | start no earlier than 2027-06-28 | 7 day week with NGT | 132355 |
| 5222 | 37400.37600.52400.117400.138200.377700 | Column and Shear Wall Reinforcement | 40d | 2027-06-28 | 2027-08-06 | 5220SS+10d |  | 7 day week with NGT | 132365 |
| 5223 | 37400.37600.52400.117400.138200.377800 | Column and Shear Wall Formwork | 40d | 2027-07-03 | 2027-08-11 | 5222FF+5d |  | 7 day week with NGT | 132375 |
| 5224 | 37400.37600.52400.117400.138200.377900 | Column and Shear Wall Casting | 40d | 2027-07-08 | 2027-08-16 | 5223FF+5d |  | 7 day week with NGT | 132385 |
| 5225 | 37400.37600.52400.117400.138200.378000 | Slab Formwork | 60d | 2027-06-28 | 2027-08-26 | 5224FF+10d |  | 7 day week with NGT | 132395 |
| 5226 | 37400.37600.52400.117400.138200.378100 | Slab Reinforcement | 60d | 2027-07-03 | 2027-08-31 | 5225FF+5d |  | 7 day week with NGT | 132405 |
| 5227 | 37400.37600.52400.117400.138200.378200 | Slab Casting | 60d | 2027-07-08 | 2027-09-05 | 5226FF+5d |  | 7 day week with NGT | 132415 |
| 5228 | 37400.37600.52400.129900 | **NTA Finishing** | 467d | 2027-07-01 | 2028-11-23 |  | start no earlier than 2027-07-01 | 7 day week with NGT | 132625 |
| 5229 | 37400.37600.52400.129900.154500 | **NTA B2** | 255d | 2027-07-01 | 2028-04-25 |  | start no earlier than 2027-07-01 | 7 day week with NGT | 132515 |
| 5230 | 37400.37600.52400.129900.154500.378300 | Brick work | 120d | 2027-07-01 | 2027-10-28 | 5208FS+30d |  | 7 day week with NGT | 8003612 |
| 5231 | 37400.37600.52400.129900.154500.378400 | Plaster | 100d | 2027-08-30 | 2028-01-21 | 5230FF+40d |  | 7 day week with NGT | 54074 |
| 5232 | 37400.37600.52400.129900.154500.378500 | Vacuum Dewatered Flooring | 100d | 2027-09-29 | 2028-02-20 | 5231FF+30d |  | 7 day week with NGT | 54076 |
| 5233 | 37400.37600.52400.129900.154500.378600 | Structural Steel | 100d | 2027-11-26 | 2028-03-21 | 5232FF+26d |  | Indian Calendar | 54086 |
| 5234 | 37400.37600.52400.129900.154500.378700 | Painting | 100d | 2028-01-17 | 2028-04-25 | 5233FF+35d |  | 7 day week with NGT | 54075 |
| 5235 | 37400.37600.52400.129900.214900 | **NTA B1** | 230d | 2027-09-26 | 2028-06-26 |  | start no earlier than 2027-09-26 | 7 day week with NGT | 132525 |
| 5236 | 37400.37600.52400.129900.214900.378800 | Brick work | 120d | 2027-09-26 | 2028-03-08 | 5220FS+30d, 5230FF |  | 7 day week with NGT | 132535 |
| 5237 | 37400.37600.52400.129900.214900.378900 | Plaster | 100d | 2028-01-09 | 2028-04-17 | 5231FF, 5236FF+40d |  | 7 day week with NGT | 132545 |
| 5238 | 37400.37600.52400.129900.214900.379000 | Vacuum Dewatered Flooring | 100d | 2028-02-08 | 2028-05-17 | 5232FF, 5237FF+30d |  | 7 day week with NGT | 132565 |
| 5239 | 37400.37600.52400.129900.214900.379100 | Painting | 90d | 2028-03-29 | 2028-06-26 | 5234FF, 5238FF+40d |  | 7 day week with NGT | 132555 |
| 5240 | 37400.37600.52400.129900.215000 | **NTA Podium** | 230d | 2028-04-08 | 2028-11-23 |  | start no earlier than 2028-04-08 | 7 day week with NGT | 132575 |
| 5241 | 37400.37600.52400.129900.215000.379200 | Brick work | 120d | 2028-04-08 | 2028-08-05 | 5236FS+30d |  | 7 day week with NGT | 132585 |
| 5242 | 37400.37600.52400.129900.215000.379300 | Plaster | 100d | 2028-06-07 | 2028-09-14 | 5237FF, 5241FF+40d |  | 7 day week with NGT | 138385 |
| 5243 | 37400.37600.52400.129900.215000.379400 | Vacuum Dewatered Flooring | 100d | 2028-07-07 | 2028-10-14 | 5238FF, 5242FF+30d |  | 7 day week with NGT | 138395 |
| 5244 | 37400.37600.52400.129900.215000.379500 | Painting | 90d | 2028-08-26 | 2028-11-23 | 5239FF, 5243FF+40d |  | 7 day week with NGT | 138405 |

| ID | WBS | Task | Duration | Start | Finish | Predecessors | Constraint | Calendar | Unique_Task_ID |
| --- | --- | --- | --- | --- | --- | --- | --- | --- | --- |
| 5245 | 37400.37600.52400.117500 | **NTA Services** | 723d | 2026-12-17 | 2029-01-22 |  | start no earlier than 2026-12-17 | 7 day week with NGT | 132626 |
| 5246 | 37400.37600.52400.117500.138100 | **NTA B2** | 170d | 2027-10-29 | 2028-05-30 |  | start no earlier than 2027-10-29 | 7 day week with NGT | 132627 |
| 5247 | 37400.37600.52400.117500.138100.379600 | Waterproofing | 50d | 2027-10-29 | 2028-01-31 | 5230 |  | 7 day week with NGT | 132645 |
| 5248 | 37400.37600.52400.117500.138100.379700 | Plumbing | 60d | 2028-01-02 | 2028-03-01 | 5247SS+20d |  | 7 day week with NGT | 132655 |
| 5249 | 37400.37600.52400.117500.138100.379800 | Fire fighting | 100d | 2028-02-01 | 2028-05-10 | 5248FS-30d |  | 7 day week with NGT | 132665 |
| 5250 | 37400.37600.52400.117500.138100.379900 | Ventilation | 100d | 2028-02-21 | 2028-05-30 | 5249FS-80d |  | 7 day week with NGT | 132675 |
| 5251 | 37400.37600.52400.117500.138100.380000 | Electrification | 120d | 2028-02-01 | 2028-05-30 | 5247 |  | 7 day week with NGT | 132685 |
| 5252 | 37400.37600.52400.117500.138100.380100 | Security installations | 90d | 2028-02-01 | 2028-04-30 | 5251SS |  | 7 day week with NGT | 132695 |
| 5253 | 37400.37600.52400.117500.138000 | **NTA B1** | 170d | 2028-03-09 | 2028-08-25 |  | start no earlier than 2028-03-09 | 7 day week with NGT | 132705 |
| 5254 | 37400.37600.52400.117500.138000.380200 | Waterproofing | 50d | 2028-03-09 | 2028-04-27 | 5236 |  | 7 day week with NGT | 132715 |
| 5255 | 37400.37600.52400.117500.138000.380300 | Plumbing | 60d | 2028-03-29 | 2028-05-27 | 5248, 5254SS+20d |  | 7 day week with NGT | 132725 |
| 5256 | 37400.37600.52400.117500.138000.380400 | Fire fighting | 100d | 2028-04-28 | 2028-08-05 | 5249FF, 5255FS-30d |  | 7 day week with NGT | 132735 |
| 5257 | 37400.37600.52400.117500.138000.380500 | Ventilation | 100d | 2028-05-18 | 2028-08-25 | 5250FF, 5256FS-80d |  | 7 day week with NGT | 132745 |
| 5258 | 37400.37600.52400.117500.138000.380600 | Electrification | 120d | 2028-04-28 | 2028-08-25 | 5251FF, 5254 |  | 7 day week with NGT | 132755 |
| 5259 | 37400.37600.52400.117500.138000.380700 | Security installations | 90d | 2028-04-28 | 2028-07-26 | 5252FF, 5258SS |  | 7 day week with NGT | 132765 |
| 5260 | 37400.37600.52400.117500.137900 | **NTA Podium** | 170d | 2028-08-06 | 2029-01-22 |  | start no earlier than 2028-08-06 | 7 day week with NGT | 132775 |
| 5261 | 37400.37600.52400.117500.137900.380800 | Waterproofing | 50d | 2028-08-06 | 2028-09-24 | 5241 |  | 7 day week with NGT | 132785 |
| 5262 | 37400.37600.52400.117500.137900.380900 | Plumbing | 60d | 2028-08-26 | 2028-10-24 | 5255, 5261SS+20d |  | 7 day week with NGT | 132795 |
| 5263 | 37400.37600.52400.117500.137900.381000 | Fire fighting | 100d | 2028-09-25 | 2029-01-02 | 5256FF, 5262FS-30d |  | 7 day week with NGT | 132805 |
| 5264 | 37400.37600.52400.117500.137900.381100 | Ventilation | 100d | 2028-10-15 | 2029-01-22 | 5257FF, 5263FS-80d |  | 7 day week with NGT | 132815 |
| 5265 | 37400.37600.52400.117500.137900.381200 | Electrification | 120d | 2028-09-25 | 2029-01-22 | 5258FF, 5261 |  | 7 day week with NGT | 132825 |
| 5266 | 37400.37600.52400.117500.137900.381300 | Security installations | 90d | 2028-09-25 | 2028-12-23 | 5259FF, 5265SS |  | 7 day week with NGT | 132835 |
| 5267 | 37400.37600.52400.117500.128800 | **DG, Transformer and LT Room** | 360d | 2026-12-17 | 2028-01-25 |  | start no earlier than 2026-12-17 | 7 day week with NGT | 132836 |
| 5268 | 37400.37600.52400.117500.128800.213200 | **DG Room** | 360d | 2026-12-17 | 2028-01-25 |  | start no earlier than 2026-12-17 | 7 day week with NGT | 138236 |
| 5269 | 37400.37600.52400.117500.128800.213200.793300 | Procurement of DG | 180d | 2026-12-17 | 2027-06-14 | 882FS-435d |  | 7 day week with NGT | 138245 |
| 5270 | 37400.37600.52400.117500.128800.213200.793400 | DG Foundations | 45d | 2027-06-15 | 2027-07-29 | 5269 |  | 7 day week with NGT | 138255 |
| 5271 | 37400.37600.52400.117500.128800.213200.793500 | DG Installation | 90d | 2027-07-30 | 2027-10-27 | 5270 |  | 7 day week with NGT | 138265 |
| 5272 | 37400.37600.52400.117500.128800.213200.793600 | DG Testing & Commsioning / Sync | 45d | 2027-10-28 | 2028-01-25 | 5271 |  | 7 day week with NGT | 138275 |

| ID | WBS | Task | Duration | Start | Finish | Predecessors | Constraint | Calendar | Unique_Task_ID |
| --- | --- | --- | --- | --- | --- | --- | --- | --- | --- |
| 5273 | 37400.37600.52400.117500.128800.213100 | **Transformer Room** | 360d | 2026-12-17 | 2028-01-25 |  | start no earlier than 2026-12-17 | 7 day week with NGT | 138285 |
| 5274 | 37400.37600.52400.117500.128800.213100.793700 | Procurement of Transformer | 180d | 2026-12-17 | 2027-06-14 | 882FS-435d |  | 7 day week with NGT | 138295 |
| 5275 | 37400.37600.52400.117500.128800.213100.793800 | Transformer Foundations | 45d | 2027-06-15 | 2027-07-29 | 5274 |  | 7 day week with NGT | 138305 |
| 5276 | 37400.37600.52400.117500.128800.213100.793900 | Transformer Installation | 90d | 2027-07-30 | 2027-10-27 | 5275 |  | 7 day week with NGT | 138315 |
| 5277 | 37400.37600.52400.117500.128800.213100.794000 | Transformer Testing & Commsioning / Sync | 45d | 2027-10-28 | 2028-01-25 | 5276 |  | 7 day week with NGT | 138325 |
| 5278 | 37400.37600.52400.117500.128800.213000 | **LT Room** | 360d | 2026-12-17 | 2028-01-25 |  | start no earlier than 2026-12-17 | 7 day week with NGT | 138335 |
| 5279 | 37400.37600.52400.117500.128800.213000.794100 | Procurement of LT Panels | 180d | 2026-12-17 | 2027-06-14 | 882FS-435d |  | 7 day week with NGT | 138345 |
| 5280 | 37400.37600.52400.117500.128800.213000.794200 | LT Panels Foundations | 45d | 2027-06-15 | 2027-07-29 | 5279 |  | 7 day week with NGT | 138355 |
| 5281 | 37400.37600.52400.117500.128800.213000.794300 | LT Panels Installation | 90d | 2027-07-30 | 2027-10-27 | 5280 |  | 7 day week with NGT | 138365 |
| 5282 | 37400.37600.52400.117500.128800.213000.794400 | LT Panels Testing & Commsioning / Sync | 45d | 2027-10-28 | 2028-01-25 | 5281 |  | 7 day week with NGT | 138375 |
| 5283 | 37400.37600.51600 | **EWS** | 411d | 2027-04-22 | 2028-07-20 |  | start no earlier than 2027-04-22 | 7 day week with NGT | 132975 |
| 5284 | 37400.37600.51600.56700 | **EWS RCC** | 178d | 2027-04-22 | 2027-10-16 |  | start no earlier than 2027-04-22 | 7 day week with NGT | 132965 |
| 5285 | 37400.37600.51600.56700.154400 | **First Floor Lvl** | 19d | 2027-04-22 | 2027-05-10 |  | start no earlier than 2027-04-22 | 7 day week with NGT | 132636 |
| 5286 | 37400.37600.51600.56700.154400.381400 | Column and Shear Wall Reinforcement | 9d | 2027-04-22 | 2027-04-30 | 5212SS |  | 7 day week with NGT | 132646 |
| 5287 | 37400.37600.51600.56700.154400.381500 | Column and Shear Wall Formwork | 8d | 2027-04-25 | 2027-05-02 | 5286FF+2d |  | 7 day week with NGT | 134445 |
| 5288 | 37400.37600.51600.56700.154400.381600 | Slab Formwork | 8d | 2027-04-29 | 2027-05-06 | 5287FF+4d |  | 7 day week with NGT | 134455 |
| 5289 | 37400.37600.51600.56700.154400.381700 | Slab Reinforcement | 6d | 2027-05-03 | 2027-05-08 | 5288FF+2d |  | 7 day week with NGT | 134465 |
| 5290 | 37400.37600.51600.56700.154400.381800 | Monolithic Casting | 4d | 2027-05-07 | 2027-05-10 | 5289FF+2d |  | 7 day week with NGT | 134475 |
| 5291 | 37400.37600.51600.56700.154300 | **Second Floor Lvl** | 19d | 2027-05-11 | 2027-05-29 |  | start no earlier than 2027-05-11 | 7 day week with NGT | 133055 |
| 5292 | 37400.37600.51600.56700.154300.381900 | Column and Shear Wall Reinforcement | 9d | 2027-05-11 | 2027-05-19 | 5290 |  | 7 day week with NGT | 133065 |
| 5293 | 37400.37600.51600.56700.154300.382000 | Column and Shear Wall Formwork | 8d | 2027-05-14 | 2027-05-21 | 5292FF+2d |  | 7 day week with NGT | 138415 |
| 5294 | 37400.37600.51600.56700.154300.382100 | Slab Formwork | 8d | 2027-05-18 | 2027-05-25 | 5293FF+4d |  | 7 day week with NGT | 138425 |
| 5295 | 37400.37600.51600.56700.154300.382200 | Slab Reinforcement | 6d | 2027-05-22 | 2027-05-27 | 5294FF+2d |  | 7 day week with NGT | 138435 |
| 5296 | 37400.37600.51600.56700.154300.382300 | Monolithic Casting | 4d | 2027-05-26 | 2027-05-29 | 5295FF+2d |  | 7 day week with NGT | 138445 |

| ID | WBS | Task | Duration | Start | Finish | Predecessors | Constraint | Calendar | Unique_Task_ID |
| --- | --- | --- | --- | --- | --- | --- | --- | --- | --- |
| 5297 | 37400.37600.51600.56700.154200 | **Third Floor Lvl** | 19d | 2027-05-30 | 2027-06-17 |  | start no earlier than 2027-05-30 | 7 day week with NGT | 133125 |
| 5298 | 37400.37600.51600.56700.154200.382400 | Column and Shear Wall Reinforcement | 9d | 2027-05-30 | 2027-06-07 | 5296 |  | 7 day week with NGT | 133135 |
| 5299 | 37400.37600.51600.56700.154200.382500 | Column and Shear Wall Formwork | 8d | 2027-06-02 | 2027-06-09 | 5298FF+2d |  | 7 day week with NGT | 138495 |
| 5300 | 37400.37600.51600.56700.154200.382600 | Slab Formwork | 8d | 2027-06-06 | 2027-06-13 | 5299FF+4d |  | 7 day week with NGT | 138505 |
| 5301 | 37400.37600.51600.56700.154200.382700 | Slab Reinforcement | 6d | 2027-06-10 | 2027-06-15 | 5300FF+2d |  | 7 day week with NGT | 138515 |
| 5302 | 37400.37600.51600.56700.154200.382800 | Monolithic Casting | 4d | 2027-06-14 | 2027-06-17 | 5301FF+2d |  | 7 day week with NGT | 138525 |
| 5303 | 37400.37600.51600.56700.154100 | **Fourth Floor Lvl** | 19d | 2027-06-18 | 2027-07-06 |  | start no earlier than 2027-06-18 | 7 day week with NGT | 133195 |
| 5304 | 37400.37600.51600.56700.154100.382900 | Column and Shear Wall Reinforcement | 9d | 2027-06-18 | 2027-06-26 | 5302 |  | 7 day week with NGT | 133205 |
| 5305 | 37400.37600.51600.56700.154100.383000 | Column and Shear Wall Formwork | 8d | 2027-06-21 | 2027-06-28 | 5304FF+2d |  | 7 day week with NGT | 138535 |
| 5306 | 37400.37600.51600.56700.154100.383100 | Slab Formwork | 8d | 2027-06-25 | 2027-07-02 | 5305FF+4d |  | 7 day week with NGT | 138545 |
| 5307 | 37400.37600.51600.56700.154100.383200 | Slab Reinforcement | 6d | 2027-06-29 | 2027-07-04 | 5306FF+2d |  | 7 day week with NGT | 138555 |
| 5308 | 37400.37600.51600.56700.154100.383300 | Monolithic Casting | 4d | 2027-07-03 | 2027-07-06 | 5307FF+2d |  | 7 day week with NGT | 138565 |
| 5309 | 37400.37600.51600.56700.154000 | **Fifth Floor Lvl** | 19d | 2027-07-07 | 2027-07-25 |  | start no earlier than 2027-07-07 | 7 day week with NGT | 133265 |
| 5310 | 37400.37600.51600.56700.154000.383400 | Column and Shear Wall Reinforcement | 9d | 2027-07-07 | 2027-07-15 | 5308 |  | 7 day week with NGT | 133275 |
| 5311 | 37400.37600.51600.56700.154000.383500 | Column and Shear Wall Formwork | 8d | 2027-07-10 | 2027-07-17 | 5310FF+2d |  | 7 day week with NGT | 138575 |
| 5312 | 37400.37600.51600.56700.154000.383600 | Slab Formwork | 8d | 2027-07-14 | 2027-07-21 | 5311FF+4d |  | 7 day week with NGT | 138585 |
| 5313 | 37400.37600.51600.56700.154000.383700 | Slab Reinforcement | 6d | 2027-07-18 | 2027-07-23 | 5312FF+2d |  | 7 day week with NGT | 138595 |
| 5314 | 37400.37600.51600.56700.154000.383800 | Monolithic Casting | 4d | 2027-07-22 | 2027-07-25 | 5313FF+2d |  | 7 day week with NGT | 138605 |
| 5315 | 37400.37600.51600.56700.153900 | **Sixth Floor Lvl** | 19d | 2027-07-26 | 2027-08-13 |  | start no earlier than 2027-07-26 | 7 day week with NGT | 133335 |
| 5316 | 37400.37600.51600.56700.153900.383900 | Column and Shear Wall Reinforcement | 9d | 2027-07-26 | 2027-08-03 | 5314 |  | 7 day week with NGT | 133345 |
| 5317 | 37400.37600.51600.56700.153900.384000 | Column and Shear Wall Formwork | 8d | 2027-07-29 | 2027-08-05 | 5316FF+2d |  | 7 day week with NGT | 138665 |
| 5318 | 37400.37600.51600.56700.153900.384100 | Slab Formwork | 8d | 2027-08-02 | 2027-08-09 | 5317FF+4d |  | 7 day week with NGT | 138675 |
| 5319 | 37400.37600.51600.56700.153900.384200 | Slab Reinforcement | 6d | 2027-08-06 | 2027-08-11 | 5318FF+2d |  | 7 day week with NGT | 138685 |
| 5320 | 37400.37600.51600.56700.153900.384300 | Monolithic Casting | 4d | 2027-08-10 | 2027-08-13 | 5319FF+2d |  | 7 day week with NGT | 138695 |

| ID | WBS | Task | Duration | Start | Finish | Predecessors | Constraint | Calendar | Unique_Task_ID |
| --- | --- | --- | --- | --- | --- | --- | --- | --- | --- |
| 5321 | 37400.37600.51600.56700.153800 | **Seventh Floor Lvl** | 19d | 2027-08-14 | 2027-09-01 |  | start no earlier than 2027-08-14 | 7 day week with NGT | 133405 |
| 5322 | 37400.37600.51600.56700.153800.384400 | Column and Shear Wall Reinforcement | 9d | 2027-08-14 | 2027-08-22 | 5320 |  | 7 day week with NGT | 133415 |
| 5323 | 37400.37600.51600.56700.153800.384500 | Column and Shear Wall Formwork | 8d | 2027-08-17 | 2027-08-24 | 5322FF+2d |  | 7 day week with NGT | 138705 |
| 5324 | 37400.37600.51600.56700.153800.384600 | Slab Formwork | 8d | 2027-08-21 | 2027-08-28 | 5323FF+4d |  | 7 day week with NGT | 138715 |
| 5325 | 37400.37600.51600.56700.153800.384700 | Slab Reinforcement | 6d | 2027-08-25 | 2027-08-30 | 5324FF+2d |  | 7 day week with NGT | 138725 |
| 5326 | 37400.37600.51600.56700.153800.384800 | Monolithic Casting | 4d | 2027-08-29 | 2027-09-01 | 5325FF+2d |  | 7 day week with NGT | 138735 |
| 5327 | 37400.37600.51600.56700.153700 | **Eighth Floor Lvl** | 19d | 2027-09-02 | 2027-09-20 |  | start no earlier than 2027-09-02 | 7 day week with NGT | 133475 |
| 5328 | 37400.37600.51600.56700.153700.384900 | Column and Shear Wall Reinforcement | 9d | 2027-09-02 | 2027-09-10 | 5326 |  | 7 day week with NGT | 133485 |
| 5329 | 37400.37600.51600.56700.153700.385000 | Column and Shear Wall Formwork | 8d | 2027-09-05 | 2027-09-12 | 5328FF+2d |  | 7 day week with NGT | 138745 |
| 5330 | 37400.37600.51600.56700.153700.385100 | Slab Formwork | 8d | 2027-09-09 | 2027-09-16 | 5329FF+4d |  | 7 day week with NGT | 138755 |
| 5331 | 37400.37600.51600.56700.153700.385200 | Slab Reinforcement | 6d | 2027-09-13 | 2027-09-18 | 5330FF+2d |  | 7 day week with NGT | 138765 |
| 5332 | 37400.37600.51600.56700.153700.385300 | Monolithic Casting | 4d | 2027-09-17 | 2027-09-20 | 5331FF+2d |  | 7 day week with NGT | 138775 |
| 5333 | 37400.37600.51600.56700.153600 | **Terrace Floor Lvl** | 19d | 2027-09-21 | 2027-10-09 |  | start no earlier than 2027-09-21 | 7 day week with NGT | 133545 |
| 5334 | 37400.37600.51600.56700.153600.385400 | Column and Shear Wall Reinforcement | 9d | 2027-09-21 | 2027-09-29 | 5332 |  | 7 day week with NGT | 133555 |
| 5335 | 37400.37600.51600.56700.153600.385500 | Column and Shear Wall Formwork | 8d | 2027-09-24 | 2027-10-01 | 5334FF+2d |  | 7 day week with NGT | 138785 |
| 5336 | 37400.37600.51600.56700.153600.385600 | Slab Formwork | 8d | 2027-09-28 | 2027-10-05 | 5335FF+4d |  | 7 day week with NGT | 138795 |
| 5337 | 37400.37600.51600.56700.153600.385700 | Slab Reinforcement | 6d | 2027-10-02 | 2027-10-07 | 5336FF+2d |  | 7 day week with NGT | 138805 |
| 5338 | 37400.37600.51600.56700.153600.385800 | Monolithic Casting | 4d | 2027-10-06 | 2027-10-09 | 5337FF+2d |  | 7 day week with NGT | 138815 |
| 5339 | 37400.37600.51600.56700.153500 | **Mumty Floor Lvl** | 7d | 2027-10-10 | 2027-10-16 |  | start no earlier than 2027-10-10 | 7 day week with NGT | 133615 |
| 5340 | 37400.37600.51600.56700.153500.385900 | Column and Shear Wall Reinforcement | 1d | 2027-10-10 | 2027-10-10 | 5338 |  | 7 day week with NGT | 134885 |
| 5341 | 37400.37600.51600.56700.153500.386000 | Column and Shear Wall Formwork | 2d | 2027-10-10 | 2027-10-11 | 5340FF+1d |  | 7 day week with NGT | 134895 |
| 5342 | 37400.37600.51600.56700.153500.386100 | Slab Formwork | 4d | 2027-10-10 | 2027-10-13 | 5341FS-2d |  | 7 day week with NGT | 134905 |
| 5343 | 37400.37600.51600.56700.153500.386200 | Slab Reinforcement | 4d | 2027-10-12 | 2027-10-15 | 5342FF+2d |  | 7 day week with NGT | 134915 |
| 5344 | 37400.37600.51600.56700.153500.386300 | Monolithic Casting | 1d | 2027-10-16 | 2027-10-16 | 5343FF+1d |  | 7 day week with NGT | 134925 |

| ID | WBS | Task | Duration | Start | Finish | Predecessors | Constraint | Calendar | Unique_Task_ID |
| --- | --- | --- | --- | --- | --- | --- | --- | --- | --- |
| 5345 | 37400.37600.51600.52200 | **EWS Finishing** | 342d | 2027-06-30 | 2028-07-20 |  | start no earlier than 2027-06-30 | 7 day week with NGT | 136005 |
| 5346 | 37400.37600.51600.52200.128900 | **Ground Floor** | 102d | 2027-06-30 | 2027-10-09 |  | start no earlier than 2027-06-30 | 7 day week with NGT | 133616 |
| 5347 | 37400.37600.51600.52200.128900.386400 | Blockwork | 30d | 2027-06-30 | 2027-07-29 | 5290FS+50d |  | 7 day week with NGT | 133625 |
| 5348 | 37400.37600.51600.52200.128900.386500 | Waterproofing | 3d | 2027-07-30 | 2027-08-01 | 5347 |  | 7 day week with NGT | 133635 |
| 5349 | 37400.37600.51600.52200.128900.386600 | Plumbing Works | 15d | 2027-08-02 | 2027-08-16 | 5348 |  | 7 day week with NGT | 133645 |
| 5350 | 37400.37600.51600.52200.128900.386700 | Electrical Works | 25d | 2027-08-02 | 2027-08-26 | 5348 |  | 7 day week with NGT | 133655 |
| 5351 | 37400.37600.51600.52200.128900.386800 | Plaster | 20d | 2027-08-27 | 2027-09-15 | 5349, 5350 |  | 7 day week with NGT | 133665 |
| 5352 | 37400.37600.51600.52200.128900.386900 | Flooring | 25d | 2027-08-27 | 2027-09-20 | 5351FF+5d |  | 7 day week with NGT | 133675 |
| 5353 | 37400.37600.51600.52200.128900.387000 | Door Fixing | 12d | 2027-09-13 | 2027-09-24 | 5352FS-8d |  | 7 day week with NGT | 133685 |
| 5354 | 37400.37600.51600.52200.128900.387100 | Paint Work | 25d | 2027-09-15 | 2027-10-09 | 5353FF+15d |  | 7 day week with NGT | 133695 |
| 5355 | 37400.37600.51600.52200.129000 | **First Floor** | 102d | 2027-07-30 | 2027-12-23 |  | start no earlier than 2027-07-30 | 7 day week with NGT | 7998992 |
| 5356 | 37400.37600.51600.52200.129000.387200 | Blockwork | 30d | 2027-07-30 | 2027-08-28 | 5347 |  | 7 day week with NGT | 136015 |
| 5357 | 37400.37600.51600.52200.129000.387300 | Waterproofing | 3d | 2027-08-29 | 2027-08-31 | 5356 |  | 7 day week with NGT | 136025 |
| 5358 | 37400.37600.51600.52200.129000.387400 | Plumbing Works | 15d | 2027-09-01 | 2027-09-15 | 5357 |  | 7 day week with NGT | 136035 |
| 5359 | 37400.37600.51600.52200.129000.387500 | Electrical Works | 25d | 2027-09-01 | 2027-09-25 | 5357 |  | 7 day week with NGT | 136045 |
| 5360 | 37400.37600.51600.52200.129000.387600 | Plaster | 20d | 2027-09-26 | 2027-10-15 | 5358, 5359 |  | 7 day week with NGT | 136055 |
| 5361 | 37400.37600.51600.52200.129000.387700 | Flooring | 25d | 2027-09-26 | 2027-10-20 | 5360FF+5d |  | 7 day week with NGT | 136065 |
| 5362 | 37400.37600.51600.52200.129000.387800 | Door Fixing | 12d | 2027-10-13 | 2027-10-24 | 5361FS-8d |  | 7 day week with NGT | 136075 |
| 5363 | 37400.37600.51600.52200.129000.387900 | Paint Work | 25d | 2027-10-15 | 2027-12-23 | 5354, 5362FF+15d |  | 7 day week with NGT | 136085 |
| 5364 | 37400.37600.51600.52200.129100 | **Second Floor** | 102d | 2027-08-29 | 2028-01-22 |  | start no earlier than 2027-08-29 | 7 day week with NGT | 136095 |
| 5365 | 37400.37600.51600.52200.129100.388000 | Blockwork | 30d | 2027-08-29 | 2027-09-27 | 5356 |  | 7 day week with NGT | 136105 |
| 5366 | 37400.37600.51600.52200.129100.388100 | Waterproofing | 3d | 2027-09-28 | 2027-09-30 | 5365 |  | 7 day week with NGT | 136115 |
| 5367 | 37400.37600.51600.52200.129100.388200 | Plumbing Works | 15d | 2027-10-01 | 2027-10-15 | 5366 |  | 7 day week with NGT | 136125 |
| 5368 | 37400.37600.51600.52200.129100.388300 | Electrical Works | 25d | 2027-10-01 | 2027-10-25 | 5366 |  | 7 day week with NGT | 136135 |
| 5369 | 37400.37600.51600.52200.129100.388400 | Plaster | 20d | 2027-10-26 | 2027-12-29 | 5367, 5368 |  | 7 day week with NGT | 136145 |
| 5370 | 37400.37600.51600.52200.129100.388500 | Flooring | 25d | 2027-10-26 | 2028-01-03 | 5369FF+5d |  | 7 day week with NGT | 136155 |
| 5371 | 37400.37600.51600.52200.129100.388600 | Door Fixing | 12d | 2027-12-27 | 2028-01-07 | 5370FS-8d |  | 7 day week with NGT | 136165 |
| 5372 | 37400.37600.51600.52200.129100.388700 | Paint Work | 25d | 2027-12-29 | 2028-01-22 | 5363, 5371FF+15d |  | 7 day week with NGT | 136175 |

| ID | WBS | Task | Duration | Start | Finish | Predecessors | Constraint | Calendar | Unique_Task_ID |
| --- | --- | --- | --- | --- | --- | --- | --- | --- | --- |
| 5373 | 37400.37600.51600.52200.129200 | **Third Floor** | 102d | 2027-09-28 | 2028-02-21 |  | start no earlier than 2027-09-28 | 7 day week with NGT | 136185 |
| 5374 | 37400.37600.51600.52200.129200.388800 | Blockwork | 30d | 2027-09-28 | 2027-10-27 | 5365 |  | 7 day week with NGT | 136195 |
| 5375 | 37400.37600.51600.52200.129200.388900 | Waterproofing | 3d | 2027-10-28 | 2027-10-30 | 5374 |  | 7 day week with NGT | 136205 |
| 5376 | 37400.37600.51600.52200.129200.389000 | Plumbing Works | 15d | 2027-10-31 | 2027-12-29 | 5375 |  | 7 day week with NGT | 136215 |
| 5377 | 37400.37600.51600.52200.129200.389100 | Electrical Works | 25d | 2027-10-31 | 2028-01-08 | 5375 |  | 7 day week with NGT | 136225 |
| 5378 | 37400.37600.51600.52200.129200.389200 | Plaster | 20d | 2028-01-09 | 2028-01-28 | 5376, 5377 |  | 7 day week with NGT | 136235 |
| 5379 | 37400.37600.51600.52200.129200.389300 | Flooring | 25d | 2028-01-09 | 2028-02-02 | 5378FF+5d |  | 7 day week with NGT | 136245 |
| 5380 | 37400.37600.51600.52200.129200.389400 | Door Fixing | 12d | 2028-01-26 | 2028-02-06 | 5379FS-8d |  | 7 day week with NGT | 136255 |
| 5381 | 37400.37600.51600.52200.129200.389500 | Paint Work | 25d | 2028-01-28 | 2028-02-21 | 5372, 5380FF+15d |  | 7 day week with NGT | 136265 |
| 5382 | 37400.37600.51600.52200.129300 | **4th Floor** | 102d | 2027-10-28 | 2028-03-22 |  | start no earlier than 2027-10-28 | 7 day week with NGT | 136275 |
| 5383 | 37400.37600.51600.52200.129300.389600 | Blockwork | 30d | 2027-10-28 | 2028-01-10 | 5374 |  | 7 day week with NGT | 136285 |
| 5384 | 37400.37600.51600.52200.129300.389700 | Waterproofing | 3d | 2028-01-11 | 2028-01-13 | 5383 |  | 7 day week with NGT | 136295 |
| 5385 | 37400.37600.51600.52200.129300.389800 | Plumbing Works | 15d | 2028-01-14 | 2028-01-28 | 5384 |  | 7 day week with NGT | 136305 |
| 5386 | 37400.37600.51600.52200.129300.389900 | Electrical Works | 25d | 2028-01-14 | 2028-02-07 | 5384 |  | 7 day week with NGT | 136315 |
| 5387 | 37400.37600.51600.52200.129300.390000 | Plaster | 20d | 2028-02-08 | 2028-02-27 | 5385, 5386 |  | 7 day week with NGT | 136325 |
| 5388 | 37400.37600.51600.52200.129300.390100 | Flooring | 25d | 2028-02-08 | 2028-03-03 | 5387FF+5d |  | 7 day week with NGT | 136335 |
| 5389 | 37400.37600.51600.52200.129300.390200 | Door Fixing | 12d | 2028-02-25 | 2028-03-07 | 5388FS-8d |  | 7 day week with NGT | 136345 |
| 5390 | 37400.37600.51600.52200.129300.390300 | Paint Work | 25d | 2028-02-27 | 2028-03-22 | 5381, 5389FF+15d |  | 7 day week with NGT | 136355 |
| 5391 | 37400.37600.51600.52200.129400 | **5th Floor** | 102d | 2028-01-11 | 2028-04-21 |  | start no earlier than 2028-01-11 | 7 day week with NGT | 136365 |
| 5392 | 37400.37600.51600.52200.129400.390400 | Blockwork | 30d | 2028-01-11 | 2028-02-09 | 5383 |  | 7 day week with NGT | 136375 |
| 5393 | 37400.37600.51600.52200.129400.390500 | Waterproofing | 3d | 2028-02-10 | 2028-02-12 | 5392 |  | 7 day week with NGT | 136385 |
| 5394 | 37400.37600.51600.52200.129400.390600 | Plumbing Works | 15d | 2028-02-13 | 2028-02-27 | 5393 |  | 7 day week with NGT | 136395 |
| 5395 | 37400.37600.51600.52200.129400.390700 | Electrical Works | 25d | 2028-02-13 | 2028-03-08 | 5393 |  | 7 day week with NGT | 136405 |
| 5396 | 37400.37600.51600.52200.129400.390800 | Plaster | 20d | 2028-03-09 | 2028-03-28 | 5394, 5395 |  | 7 day week with NGT | 136415 |
| 5397 | 37400.37600.51600.52200.129400.390900 | Flooring | 25d | 2028-03-09 | 2028-04-02 | 5396FF+5d |  | 7 day week with NGT | 136425 |
| 5398 | 37400.37600.51600.52200.129400.391000 | Door Fixing | 12d | 2028-03-26 | 2028-04-06 | 5397FS-8d |  | 7 day week with NGT | 136435 |
| 5399 | 37400.37600.51600.52200.129400.391100 | Paint Work | 25d | 2028-03-28 | 2028-04-21 | 5390, 5398FF+15d |  | 7 day week with NGT | 136445 |

| ID | WBS | Task | Duration | Start | Finish | Predecessors | Constraint | Calendar | Unique_Task_ID |
| --- | --- | --- | --- | --- | --- | --- | --- | --- | --- |
| 5400 | 37400.37600.51600.52200.129500 | **6th Floor** | 102d | 2028-02-10 | 2028-05-21 |  | start no earlier than 2028-02-10 | 7 day week with NGT | 136455 |
| 5401 | 37400.37600.51600.52200.129500.391200 | Blockwork | 30d | 2028-02-10 | 2028-03-10 | 5392 |  | 7 day week with NGT | 136465 |
| 5402 | 37400.37600.51600.52200.129500.391300 | Waterproofing | 3d | 2028-03-11 | 2028-03-13 | 5401 |  | 7 day week with NGT | 136475 |
| 5403 | 37400.37600.51600.52200.129500.391400 | Plumbing Works | 15d | 2028-03-14 | 2028-03-28 | 5402 |  | 7 day week with NGT | 136485 |
| 5404 | 37400.37600.51600.52200.129500.391500 | Electrical Works | 25d | 2028-03-14 | 2028-04-07 | 5402 |  | 7 day week with NGT | 136495 |
| 5405 | 37400.37600.51600.52200.129500.391600 | Plaster | 20d | 2028-04-08 | 2028-04-27 | 5403, 5404 |  | 7 day week with NGT | 136505 |
| 5406 | 37400.37600.51600.52200.129500.391700 | Flooring | 25d | 2028-04-08 | 2028-05-02 | 5405FF+5d |  | 7 day week with NGT | 136515 |
| 5407 | 37400.37600.51600.52200.129500.391800 | Door Fixing | 12d | 2028-04-25 | 2028-05-06 | 5406FS-8d |  | 7 day week with NGT | 136525 |
| 5408 | 37400.37600.51600.52200.129500.391900 | Paint Work | 25d | 2028-04-27 | 2028-05-21 | 5399, 5407FF+15d |  | 7 day week with NGT | 136535 |
| 5409 | 37400.37600.51600.52200.129600 | **7th Floor** | 102d | 2028-03-11 | 2028-06-20 |  | start no earlier than 2028-03-11 | 7 day week with NGT | 136545 |
| 5410 | 37400.37600.51600.52200.129600.392000 | Blockwork | 30d | 2028-03-11 | 2028-04-09 | 5401 |  | 7 day week with NGT | 136555 |
| 5411 | 37400.37600.51600.52200.129600.392100 | Waterproofing | 3d | 2028-04-10 | 2028-04-12 | 5410 |  | 7 day week with NGT | 136565 |
| 5412 | 37400.37600.51600.52200.129600.392200 | Plumbing Works | 15d | 2028-04-13 | 2028-04-27 | 5411 |  | 7 day week with NGT | 136575 |
| 5413 | 37400.37600.51600.52200.129600.392300 | Electrical Works | 25d | 2028-04-13 | 2028-05-07 | 5411 |  | 7 day week with NGT | 136585 |
| 5414 | 37400.37600.51600.52200.129600.392400 | Plaster | 20d | 2028-05-08 | 2028-05-27 | 5412, 5413 |  | 7 day week with NGT | 136595 |
| 5415 | 37400.37600.51600.52200.129600.392500 | Flooring | 25d | 2028-05-08 | 2028-06-01 | 5414FF+5d |  | 7 day week with NGT | 136605 |
| 5416 | 37400.37600.51600.52200.129600.392600 | Door Fixing | 12d | 2028-05-25 | 2028-06-05 | 5415FS-8d |  | 7 day week with NGT | 136615 |
| 5417 | 37400.37600.51600.52200.129600.392700 | Paint Work | 25d | 2028-05-27 | 2028-06-20 | 5408, 5416FF+15d |  | 7 day week with NGT | 136625 |
| 5418 | 37400.37600.51600.52200.129700 | **8th Floor** | 102d | 2028-04-10 | 2028-07-20 |  | start no earlier than 2028-04-10 | 7 day week with NGT | 136635 |
| 5419 | 37400.37600.51600.52200.129700.392800 | Blockwork | 30d | 2028-04-10 | 2028-05-09 | 5410 |  | 7 day week with NGT | 136645 |
| 5420 | 37400.37600.51600.52200.129700.392900 | Waterproofing | 3d | 2028-05-10 | 2028-05-12 | 5419 |  | 7 day week with NGT | 136655 |
| 5421 | 37400.37600.51600.52200.129700.393000 | Plumbing Works | 15d | 2028-05-13 | 2028-05-27 | 5420 |  | 7 day week with NGT | 136665 |
| 5422 | 37400.37600.51600.52200.129700.393100 | Electrical Works | 25d | 2028-05-13 | 2028-06-06 | 5420 |  | 7 day week with NGT | 136675 |
| 5423 | 37400.37600.51600.52200.129700.393200 | Plaster | 20d | 2028-06-07 | 2028-06-26 | 5421, 5422 |  | 7 day week with NGT | 136685 |
| 5424 | 37400.37600.51600.52200.129700.393300 | Flooring | 25d | 2028-06-07 | 2028-07-01 | 5423FF+5d |  | 7 day week with NGT | 136695 |
| 5425 | 37400.37600.51600.52200.129700.393400 | Door Fixing | 12d | 2028-06-24 | 2028-07-05 | 5424FS-8d |  | 7 day week with NGT | 136705 |
| 5426 | 37400.37600.51600.52200.129700.393500 | Paint Work | 25d | 2028-06-26 | 2028-07-20 | 5417, 5425FF+15d |  | 7 day week with NGT | 136715 |

| ID | WBS | Task | Duration | Start | Finish | Predecessors | Constraint | Calendar | Unique_Task_ID |
| --- | --- | --- | --- | --- | --- | --- | --- | --- | --- |
| 5427 | 37400.37600.51600.52200.223000 | **Terrace Works** | 60d | 2027-10-17 | 2028-01-29 |  | start no earlier than 2027-10-17 | 7 day week with NGT | 136716 |
| 5428 | 37400.37600.51600.52200.223000.393600 | Terrace Waterproofing | 30d | 2027-10-17 | 2027-12-30 | 5344 |  | 7 day week with NGT | 136725 |
| 5429 | 37400.37600.51600.52200.223000.393700 | Terrace Finishing | 30d | 2027-12-31 | 2028-01-29 | 5428 |  | 7 day week with NGT | 136735 |
| 5430 | 37400.37600.52100 | **External Work** | 368d | 2027-09-06 | 2028-10-22 |  | start no earlier than 2027-09-06 | 7 day week with NGT | 7997902 |
| 5431 | 37400.37600.52100.227100 | **External Fire Fighting Works** | 210d | 2027-09-26 | 2028-06-06 |  | start no earlier than 2027-09-26 | 7 day week with NGT | 135875 |
| 5432 | 37400.37600.52100.227100.301400 | Excavation, Pipe Laying, Hyderent errection , Fitting , Testing & Commissioning | 210d | 2027-09-26 | 2028-06-06 | 5439FF |  | 7 day week with NGT | 135865 |
| 5433 | 37400.37600.52100.142800 | **External Plumbing** | 240d | 2027-09-06 | 2028-06-16 |  | start no earlier than 2027-09-06 | 7 day week with NGT | 135925 |
| 5434 | 37400.37600.52100.142800.225400 | **External Plumbing - Sewer** | 210d | 2027-09-06 | 2028-05-17 |  | start no earlier than 2027-09-06 | 7 day week with NGT | 135866 |
| 5435 | 37400.37600.52100.142800.225400.393800 | Excavation, Pipe Laying, Filling , Testing & Commissioning | 210d | 2027-09-06 | 2028-05-17 | 5204, 5227, 3716 |  | 7 day week with NGT | 135885 |
| 5436 | 37400.37600.52100.142800.225300 | **External Plumbing Water Supply** | 210d | 2027-10-06 | 2028-06-16 |  | start no earlier than 2027-10-06 | 7 day week with NGT | 135886 |
| 5437 | 37400.37600.52100.142800.225300.393900 | Excavation, Pipe Laying, Filling , Testing & Commissioning | 210d | 2027-10-06 | 2028-06-16 | 5432FF+10d |  | 7 day week with NGT | 135895 |
| 5438 | 37400.37600.52100.142800.225200 | **External Plumbing - Storm Water** | 210d | 2027-09-26 | 2028-06-06 |  | start no earlier than 2027-09-26 | 7 day week with NGT | 135896 |
| 5439 | 37400.37600.52100.142800.225200.394000 | Excavation, Pipe Laying, Filling , Testing & Commissioning | 210d | 2027-09-26 | 2028-06-06 | 5435SS+20d |  | 7 day week with NGT | 135905 |
| 5440 | 37400.37600.52100.142800.225100 | **Rain water Harvesting work** | 210d | 2027-09-26 | 2028-06-06 |  | start no earlier than 2027-09-26 | 7 day week with NGT | 135906 |
| 5441 | 37400.37600.52100.142800.225100.394100 | Rain water Harvesting work | 210d | 2027-09-26 | 2028-06-06 | 5439FF |  | 7 day week with NGT | 135915 |
| 5442 | 37400.37600.52100.165600 | **External Electrification** | 228d | 2027-09-09 | 2028-06-07 |  | start no earlier than 2027-09-09 | 7 day week with NGT | 135916 |
| 5443 | 37400.37600.52100.165600.301500 | HV INSTALLATION | 90d | 2027-09-09 | 2028-01-21 | 839FS+30d |  | 7 day week with NGT | 135935 |
| 5444 | 37400.37600.52100.165600.301600 | HT CABLES & LT CONTROL CABLES | 90d | 2028-01-22 | 2028-04-20 | 5443 |  | 7 day week with NGT | 135945 |
| 5445 | 37400.37600.52100.165600.301700 | Street Light Fixing | 75d | 2028-02-11 | 2028-04-25 | 5444SS+20d |  | 7 day week with NGT | 135955 |
| 5446 | 37400.37600.52100.165600.301800 | Completion of External Infrastructure | 1d | 2028-06-07 | 2028-06-07 | 5445, 5441 |  | 7 day week with NGT | 135975 |
| 5447 | 37400.37600.52100.117600 | **Hard scape & Soft Scape** | 270d | 2028-01-27 | 2028-10-22 |  | start no earlier than 2028-01-27 | 7 day week with NGT | 135976 |
| 5448 | 37400.37600.52100.117600.301900 | Soft Scape & Area Grading | 120d | 2028-01-27 | 2028-05-25 | 5445FF+30d |  | 7 day week with NGT | 135985 |
| 5449 | 37400.37600.52100.117600.124700 | **Hardscape** | 240d | 2028-02-26 | 2028-10-22 |  | start no earlier than 2028-02-26 | 7 day week with NGT | 138105 |
| 5450 | 37400.37600.52100.117600.124700.394200 | Road | 170d | 2028-02-26 | 2028-08-13 | 5448FS-90d |  | 7 day week with NGT | 135996 |
| 5451 | 37400.37600.52100.117600.124700.394300 | Jogging Track | 180d | 2028-03-27 | 2028-09-22 | 5450SS+30d |  | 7 day week with NGT | 136024 |
| 5452 | 37400.37600.52100.117600.124700.394400 | Tower Drop Off | 150d | 2028-03-27 | 2028-08-23 | 5450SS+30d |  | 7 day week with NGT | 135997 |
| 5453 | 37400.37600.52100.117600.124700.394500 | Outdoor Jacuzzi | 60d | 2028-04-26 | 2028-06-24 | 5452SS+30d |  | 7 day week with NGT | 135998 |
| 5454 | 37400.37600.52100.117600.124700.394600 | Water Cascade | 60d | 2028-04-26 | 2028-06-24 | 5453SS |  | 7 day week with NGT | 135999 |
| 5455 | 37400.37600.52100.117600.124700.394700 | Seating Acloves | 45d | 2028-05-26 | 2028-07-09 | 5454SS+30d |  | 7 day week with NGT | 136000 |
| 5456 | 37400.37600.52100.117600.124700.394800 | Pet Park | 20d | 2028-06-05 | 2028-06-24 | 5455SS+10d |  | 7 day week with NGT | 136003 |
| 5457 | 37400.37600.52100.117600.124700.394900 | Kids Play Area | 30d | 2028-06-25 | 2028-07-24 | 5456 |  | 7 day week with NGT | 136004 |
| 5458 | 37400.37600.52100.117600.124700.395000 | Banquet Lawn | 30d | 2028-07-25 | 2028-08-23 | 5457 |  | 7 day week with NGT | 136014 |
| 5459 | 37400.37600.52100.117600.124700.395100 | Half Basket Ball Court | 30d | 2028-09-23 | 2028-10-22 | 5451, 5458 |  | 7 day week with NGT | 136034 |

| ID | WBS | Task | Duration | Start | Finish | Predecessors | Complete | Constraint | Calendar | Unique_Task_ID |
| --- | --- | --- | --- | --- | --- | --- | --- | --- | --- | --- |
| 5460 | 37400.37600.51200 | **Club House** | 1144d | 2025-04-26 | 2028-10-25 |  | 4% | start no earlier than 2025-04-26 | 7 day week with NGT | 136745 |
| 5461 | 37400.37600.51200.285700 | Excavation + Soldier Pilling | 400d | 2025-04-26 | 2026-09-14 | 9FS+150d | 31% | start no earlier than 2025-04-26 | 7 day week with NGT | 136755 |
| 5462 | 37400.37600.51200.63400 | **RCC** | 361d | 2026-09-15 | 2027-10-25 |  |  | start no earlier than 2026-09-15 | 7 day week with NGT | 136765 |
| 5463 | 37400.37600.51200.63400.137700 | **Foundation / Raft** | 131d | 2026-09-15 | 2027-03-09 |  |  | start no earlier than 2026-09-15 | 7 day week with NGT | 136756 |
| 5464 | 37400.37600.51200.63400.137700.395200 | Surface Dressing | 2d | 2026-09-15 | 2026-09-16 | 5461 |  |  | 7 day week with NGT | 136766 |
| 5465 | 37400.37600.51200.63400.137700.395300 | Anti Termite Treatment | 5d | 2026-09-17 | 2026-09-21 | 5464 |  |  | 7 day week with NGT | 136825 |
| 5466 | 37400.37600.51200.63400.137700.395400 | PCC | 4d | 2026-09-22 | 2026-09-25 | 5465 |  |  | 7 day week with NGT | 136835 |
| 5467 | 37400.37600.51200.63400.137700.395500 | Reinforcement Laying | 90d | 2026-09-26 | 2027-02-07 | 5466 |  |  | 7 day week with NGT | 136845 |
| 5468 | 37400.37600.51200.63400.137700.395600 | Outer Shuttering of Raft Area | 6d | 2027-02-02 | 2027-02-07 | 5467FF |  |  | 7 day week with NGT | 136855 |
| 5469 | 37400.37600.51200.63400.137700.395700 | Raft Concreting | 30d | 2027-02-08 | 2027-03-09 | 5468 |  |  | 7 day week with NGT | 136865 |
| 5470 | 37400.37600.51200.63400.137600 | **Dummy Basement** | 47d | 2027-03-10 | 2027-04-25 |  |  | start no earlier than 2027-03-10 | 7 day week with NGT | 136866 |
| 5471 | 37400.37600.51200.63400.137600.395800 | Column and Shear Wall Reinforcement | 20d | 2027-03-10 | 2027-03-29 | 5469 |  |  | 7 day week with NGT | 136875 |
| 5472 | 37400.37600.51200.63400.137600.395900 | Column and Shear Wall Formwork | 20d | 2027-03-11 | 2027-03-30 | 5471FF+1d |  |  | 7 day week with NGT | 136885 |
| 5473 | 37400.37600.51200.63400.137600.396000 | Column and Shear Wall Casting | 20d | 2027-03-12 | 2027-03-31 | 5472FF+1d |  |  | 7 day week with NGT | 136895 |
| 5474 | 37400.37600.51200.63400.137600.396100 | Slab Formwork | 25d | 2027-03-17 | 2027-04-10 | 5473SS+5d |  |  | 7 day week with NGT | 136905 |
| 5475 | 37400.37600.51200.63400.137600.396200 | Slab Reinforcement | 25d | 2027-03-30 | 2027-04-23 | 5474FS-12d |  |  | 7 day week with NGT | 136915 |
| 5476 | 37400.37600.51200.63400.137600.396300 | Slab Casting | 25d | 2027-04-01 | 2027-04-25 | 5475FF+2d |  |  | 7 day week with NGT | 136925 |
| 5477 | 37400.37600.51200.63400.137500 | **B2 Roof** | 57d | 2027-04-26 | 2027-06-21 |  |  | start no earlier than 2027-04-26 | 7 day week with NGT | 136935 |
| 5478 | 37400.37600.51200.63400.137500.396400 | Column and Shear Wall Reinforcement | 35d | 2027-04-26 | 2027-05-30 | 5476 |  |  | 7 day week with NGT | 136955 |
| 5479 | 37400.37600.51200.63400.137500.396500 | Column and Shear Wall Formwork | 35d | 2027-04-27 | 2027-05-31 | 5478FF+1d |  |  | 7 day week with NGT | 136965 |
| 5480 | 37400.37600.51200.63400.137500.396600 | Column and Shear Wall Casting | 35d | 2027-04-28 | 2027-06-01 | 5479FF+1d |  |  | 7 day week with NGT | 136975 |
| 5481 | 37400.37600.51200.63400.137500.396700 | Slab Formwork | 30d | 2027-05-03 | 2027-06-01 | 5480SS+5d |  |  | 7 day week with NGT | 136985 |
| 5482 | 37400.37600.51200.63400.137500.396800 | Slab Reinforcement | 30d | 2027-05-21 | 2027-06-19 | 5481FS-12d |  |  | 7 day week with NGT | 136995 |
| 5483 | 37400.37600.51200.63400.137500.396900 | Slab Casting | 30d | 2027-05-23 | 2027-06-21 | 5482FF+2d |  |  | 7 day week with NGT | 137005 |

| ID | WBS | Task | Duration | Start | Finish | Predecessors | Constraint | Calendar | Unique_Task_ID |
| --- | --- | --- | --- | --- | --- | --- | --- | --- | --- |
| 5484 | 37400.37600.51200.63400.137400 | **B1 Roof** | 30d | 2027-06-22 | 2027-07-21 |  | start no earlier than 2027-06-22 | 7 day week with NGT | 136945 |
| 5485 | 37400.37600.51200.63400.137400.397000 | Column and Shear Wall Reinforcement | 6d | 2027-06-22 | 2027-06-27 | 5483 |  | 7 day week with NGT | 137015 |
| 5486 | 37400.37600.51200.63400.137400.397100 | Column and Shear Wall Formwork | 6d | 2027-06-23 | 2027-06-28 | 5485FF+1d |  | 7 day week with NGT | 137025 |
| 5487 | 37400.37600.51200.63400.137400.397200 | Column and Shear Wall Casting | 6d | 2027-06-24 | 2027-06-29 | 5486FF+1d |  | 7 day week with NGT | 137035 |
| 5488 | 37400.37600.51200.63400.137400.397300 | Slab Formwork | 17d | 2027-06-29 | 2027-07-15 | 5487SS+5d |  | 7 day week with NGT | 137045 |
| 5489 | 37400.37600.51200.63400.137400.397400 | Slab Reinforcement | 16d | 2027-07-04 | 2027-07-19 | 5488FS-12d |  | 7 day week with NGT | 137055 |
| 5490 | 37400.37600.51200.63400.137400.397500 | Slab Casting | 17d | 2027-07-05 | 2027-07-21 | 5489FF+2d |  | 7 day week with NGT | 137065 |
| 5491 | 37400.37600.51200.63400.137300 | **Ground Floor Roof** | 26d | 2027-07-22 | 2027-08-16 |  | start no earlier than 2027-07-22 | 7 day week with NGT | 137075 |
| 5492 | 37400.37600.51200.63400.137300.397600 | Column and Shear Wall Reinforcement | 6d | 2027-07-22 | 2027-07-27 | 5490 |  | 7 day week with NGT | 137085 |
| 5493 | 37400.37600.51200.63400.137300.397700 | Column and Shear Wall Formwork | 6d | 2027-07-23 | 2027-07-28 | 5492FF+1d |  | 7 day week with NGT | 137095 |
| 5494 | 37400.37600.51200.63400.137300.397800 | Column and Shear Wall Casting | 6d | 2027-07-24 | 2027-07-29 | 5493FF+1d |  | 7 day week with NGT | 137105 |
| 5495 | 37400.37600.51200.63400.137300.397900 | Slab Formwork | 13d | 2027-07-29 | 2027-08-10 | 5494SS+5d |  | 7 day week with NGT | 137115 |
| 5496 | 37400.37600.51200.63400.137300.398000 | Slab Reinforcement | 16d | 2027-07-30 | 2027-08-14 | 5495FS-12d |  | 7 day week with NGT | 137125 |
| 5497 | 37400.37600.51200.63400.137300.398100 | Slab Casting | 17d | 2027-07-31 | 2027-08-16 | 5496FF+2d |  | 7 day week with NGT | 137135 |
| 5498 | 37400.37600.51200.63400.137200 | **First Floor Roof** | 26d | 2027-08-17 | 2027-09-11 |  | start no earlier than 2027-08-17 | 7 day week with NGT | 137145 |
| 5499 | 37400.37600.51200.63400.137200.398200 | Column and Shear Wall Reinforcement | 6d | 2027-08-17 | 2027-08-22 | 5497 |  | 7 day week with NGT | 137155 |
| 5500 | 37400.37600.51200.63400.137200.398300 | Column and Shear Wall Formwork | 6d | 2027-08-18 | 2027-08-23 | 5499FF+1d |  | 7 day week with NGT | 137165 |
| 5501 | 37400.37600.51200.63400.137200.398400 | Column and Shear Wall Casting | 6d | 2027-08-19 | 2027-08-24 | 5500FF+1d |  | 7 day week with NGT | 137175 |
| 5502 | 37400.37600.51200.63400.137200.398500 | Slab Formwork | 13d | 2027-08-24 | 2027-09-05 | 5501SS+5d |  | 7 day week with NGT | 137185 |
| 5503 | 37400.37600.51200.63400.137200.398600 | Slab Reinforcement | 16d | 2027-08-25 | 2027-09-09 | 5502FS-12d |  | 7 day week with NGT | 137195 |
| 5504 | 37400.37600.51200.63400.137200.398700 | Slab Casting | 17d | 2027-08-26 | 2027-09-11 | 5503FF+2d |  | 7 day week with NGT | 137205 |
| 5505 | 37400.37600.51200.63400.137100 | **Second Floor Roof** | 26d | 2027-09-12 | 2027-10-07 |  | start no earlier than 2027-09-12 | 7 day week with NGT | 137215 |
| 5506 | 37400.37600.51200.63400.137100.398800 | Column and Shear Wall Reinforcement | 6d | 2027-09-12 | 2027-09-17 | 5504 |  | 7 day week with NGT | 137225 |
| 5507 | 37400.37600.51200.63400.137100.398900 | Column and Shear Wall Formwork | 6d | 2027-09-13 | 2027-09-18 | 5506FF+1d |  | 7 day week with NGT | 137235 |
| 5508 | 37400.37600.51200.63400.137100.399000 | Column and Shear Wall Casting | 6d | 2027-09-14 | 2027-09-19 | 5507FF+1d |  | 7 day week with NGT | 137245 |
| 5509 | 37400.37600.51200.63400.137100.399100 | Slab Formwork | 13d | 2027-09-19 | 2027-10-01 | 5508SS+5d |  | 7 day week with NGT | 137255 |
| 5510 | 37400.37600.51200.63400.137100.399200 | Slab Reinforcement | 16d | 2027-09-20 | 2027-10-05 | 5509FS-12d |  | 7 day week with NGT | 137265 |
| 5511 | 37400.37600.51200.63400.137100.399300 | Slab Casting | 17d | 2027-09-21 | 2027-10-07 | 5510FF+2d |  | 7 day week with NGT | 137275 |

| ID | WBS | Task | Duration | Start | Finish | Predecessors | Constraint | Calendar | Unique_Task_ID |
| --- | --- | --- | --- | --- | --- | --- | --- | --- | --- |
| 5512 | 37400.37600.51200.63400.137000 | **Mumty Floor Roof** | 18d | 2027-10-08 | 2027-10-25 |  | start no earlier than 2027-10-08 | 7 day week with NGT | 137285 |
| 5513 | 37400.37600.51200.63400.137000.399400 | Column and Shear Wall Reinforcement | 3d | 2027-10-08 | 2027-10-10 | 5511 |  | 7 day week with NGT | 137295 |
| 5514 | 37400.37600.51200.63400.137000.399500 | Column and Shear Wall Formwork | 3d | 2027-10-09 | 2027-10-11 | 5513FF+1d |  | 7 day week with NGT | 137305 |
| 5515 | 37400.37600.51200.63400.137000.399600 | Column and Shear Wall Casting | 3d | 2027-10-10 | 2027-10-12 | 5514FF+1d |  | 7 day week with NGT | 137315 |
| 5516 | 37400.37600.51200.63400.137000.399700 | Slab Formwork | 9d | 2027-10-15 | 2027-10-23 | 5515SS+5d |  | 7 day week with NGT | 137325 |
| 5517 | 37400.37600.51200.63400.137000.399800 | Slab Reinforcement | 9d | 2027-10-16 | 2027-10-24 | 5516FF+1d |  | 7 day week with NGT | 137335 |
| 5518 | 37400.37600.51200.63400.137000.399900 | Slab Casting | 9d | 2027-10-17 | 2027-10-25 | 5517FF+1d |  | 7 day week with NGT | 137345 |
| 5519 | 37400.37600.51200.51500 | **Finishing Works** | 265d | 2027-08-17 | 2028-06-21 |  | start no earlier than 2027-08-17 | 7 day week with NGT | 137286 |
| 5520 | 37400.37600.51200.51500.130900 | **Basement Finsihing** | 103d | 2027-08-17 | 2028-01-11 |  | start no earlier than 2027-08-17 | 7 day week with NGT | 137346 |
| 5521 | 37400.37600.51200.51500.130900.212500 | **Basement - 2** | 73d | 2027-08-17 | 2027-10-28 |  | start no earlier than 2027-08-17 | 7 day week with NGT | 137355 |
| 5522 | 37400.37600.51200.51500.130900.212500.794500 | Masonary Works | 30d | 2027-08-17 | 2027-09-15 | 5497 |  | 7 day week with NGT | 137375 |
| 5523 | 37400.37600.51200.51500.130900.212500.794600 | Plaster Works | 20d | 2027-09-01 | 2027-09-20 | 5522SS+15d |  | 7 day week with NGT | 137385 |
| 5524 | 37400.37600.51200.51500.130900.212500.794700 | White Wash | 18d | 2027-09-16 | 2027-10-03 | 5523SS+15d |  | 7 day week with NGT | 137395 |
| 5525 | 37400.37600.51200.51500.130900.212500.794800 | VDF | 25d | 2027-10-04 | 2027-10-28 | 5524 |  | 7 day week with NGT | 137405 |
| 5526 | 37400.37600.51200.51500.130900.212400 | **Basement - 1** | 73d | 2027-09-16 | 2028-01-11 |  | start no earlier than 2027-09-16 | 7 day week with NGT | 137365 |
| 5527 | 37400.37600.51200.51500.130900.212400.794900 | Masonary Works | 30d | 2027-09-16 | 2027-10-15 | 5522 |  | 7 day week with NGT | 137415 |
| 5528 | 37400.37600.51200.51500.130900.212400.795000 | Plaster Works | 20d | 2027-10-01 | 2027-10-20 | 5527SS+15d |  | 7 day week with NGT | 137425 |
| 5529 | 37400.37600.51200.51500.130900.212400.795100 | White Wash | 18d | 2027-10-16 | 2027-12-17 | 5528SS+15d |  | 7 day week with NGT | 137435 |
| 5530 | 37400.37600.51200.51500.130900.212400.795200 | VDF | 25d | 2027-12-18 | 2028-01-11 | 5525, 5529 |  | 7 day week with NGT | 137445 |
| 5531 | 37400.37600.51200.51500.51800 | **Superstructure Finishing** | 215d | 2027-10-06 | 2028-06-21 |  | start no earlier than 2027-10-06 | 7 day week with NGT | 137605 |
| 5532 | 37400.37600.51200.51500.51800.114800 | **Ground Floor Finishing** | 115d | 2027-10-16 | 2028-03-23 |  | start no earlier than 2027-10-16 | 7 day week with NGT | 137366 |
| 5533 | 37400.37600.51200.51500.51800.114800.795300 | Blockwork | 10d | 2027-10-16 | 2027-10-25 | 5527 |  | 7 day week with NGT | 137455 |
| 5534 | 37400.37600.51200.51500.51800.114800.795400 | Internal Plumbing Works | 6d | 2027-10-26 | 2027-10-31 | 5533 |  | 7 day week with NGT | 137465 |
| 5535 | 37400.37600.51200.51500.51800.114800.795500 | Waterproofing Works | 10d | 2027-10-28 | 2027-12-21 | 5534SS+2d |  | 7 day week with NGT | 137475 |
| 5536 | 37400.37600.51200.51500.51800.114800.795600 | Electrical Wiring works | 12d | 2027-10-28 | 2027-12-23 | 5535SS |  | 7 day week with NGT | 137485 |
| 5537 | 37400.37600.51200.51500.51800.114800.795700 | Internal Plaster Works | 9d | 2027-12-24 | 2028-01-01 | 5534, 5535, 5536 |  | 7 day week with NGT | 137495 |
| 5538 | 37400.37600.51200.51500.51800.114800.795800 | Toilet Dado Works | 9d | 2028-01-02 | 2028-01-10 | 5534, 5535, 5536, 5537 |  | 7 day week with NGT | 137505 |
| 5539 | 37400.37600.51200.51500.51800.114800.795900 | PCC | 8d | 2027-12-24 | 2027-12-31 | 5535, 5537SS |  | 7 day week with NGT | 137515 |
| 5540 | 37400.37600.51200.51500.51800.114800.796000 | Toilet Flooring Works | 7d | 2028-01-11 | 2028-01-17 | 5538, 5539 |  | 7 day week with NGT | 137525 |
| 5541 | 37400.37600.51200.51500.51800.114800.796100 | Flooring | 15d | 2028-01-18 | 2028-02-01 | 5540 |  | 7 day week with NGT | 137535 |
| 5542 | 37400.37600.51200.51500.51800.114800.796200 | Aluminium Door Widnow Fixing | 15d | 2028-02-02 | 2028-02-16 | 5541 |  | 7 day week with NGT | 137555 |
| 5543 | 37400.37600.51200.51500.51800.114800.796300 | Rehung Door Fixing | 8d | 2028-02-17 | 2028-02-24 | 5542 |  | 7 day week with NGT | 137565 |
| 5544 | 37400.37600.51200.51500.51800.114800.796400 | Putty Primer coat | 6d | 2028-02-25 | 2028-03-01 | 5543 |  | 7 day week with NGT | 137575 |
| 5545 | 37400.37600.51200.51500.51800.114800.796500 | Painting First Coat | 12d | 2028-03-02 | 2028-03-13 | 5535, 5536, 5543, 5544 |  | 7 day week with NGT | 137585 |
| 5546 | 37400.37600.51200.51500.51800.114800.796600 | False ceiling works | 10d | 2028-03-14 | 2028-03-23 | 5545 |  | 7 day week with NGT | 137595 |

| ID | WBS | Task | Duration | Start | Finish | Predecessors | Constraint | Calendar | Unique_Task_ID |
| --- | --- | --- | --- | --- | --- | --- | --- | --- | --- |
| 5547 | 37400.37600.51200.51500.51800.114700 | **First Floor Finishing** | 115d | 2027-10-26 | 2028-04-02 |  | start no earlier than 2027-10-26 | 7 day week with NGT | 137615 |
| 5548 | 37400.37600.51200.51500.51800.114700.796700 | Blockwork | 10d | 2027-10-26 | 2027-12-19 | 5533 |  | 7 day week with NGT | 137625 |
| 5549 | 37400.37600.51200.51500.51800.114700.796800 | Internal Plumbing Works | 6d | 2027-12-20 | 2027-12-25 | 5548 |  | 7 day week with NGT | 137635 |
| 5550 | 37400.37600.51200.51500.51800.114700.796900 | Waterproofing Works | 10d | 2027-12-22 | 2027-12-31 | 5549SS+2d |  | 7 day week with NGT | 137645 |
| 5551 | 37400.37600.51200.51500.51800.114700.797000 | Electrical Wiring works | 12d | 2027-12-22 | 2028-01-02 | 5550SS |  | 7 day week with NGT | 137655 |
| 5552 | 37400.37600.51200.51500.51800.114700.797100 | Internal Plaster Works | 9d | 2028-01-03 | 2028-01-11 | 5549, 5550, 5551 |  | 7 day week with NGT | 137665 |
| 5553 | 37400.37600.51200.51500.51800.114700.797200 | Toilet Dado Works | 9d | 2028-01-12 | 2028-01-20 | 5549, 5550, 5551, 5552 |  | 7 day week with NGT | 137675 |
| 5554 | 37400.37600.51200.51500.51800.114700.797300 | PCC | 8d | 2028-01-03 | 2028-01-10 | 5550, 5552SS |  | 7 day week with NGT | 137685 |
| 5555 | 37400.37600.51200.51500.51800.114700.797400 | Toilet Flooring Works | 7d | 2028-01-21 | 2028-01-27 | 5553, 5554 |  | 7 day week with NGT | 137695 |
| 5556 | 37400.37600.51200.51500.51800.114700.797500 | Flooring | 15d | 2028-01-28 | 2028-02-11 | 5555 |  | 7 day week with NGT | 137705 |
| 5557 | 37400.37600.51200.51500.51800.114700.797600 | Aluminium Door Widnow Fixing | 15d | 2028-02-12 | 2028-02-26 | 5556 |  | 7 day week with NGT | 137715 |
| 5558 | 37400.37600.51200.51500.51800.114700.797700 | Rehung Door Fixing | 8d | 2028-02-27 | 2028-03-05 | 5557 |  | 7 day week with NGT | 137725 |
| 5559 | 37400.37600.51200.51500.51800.114700.797800 | Putty Primer coat | 6d | 2028-03-06 | 2028-03-11 | 5558 |  | 7 day week with NGT | 137735 |
| 5560 | 37400.37600.51200.51500.51800.114700.797900 | Painting First Coat | 12d | 2028-03-12 | 2028-03-23 | 5550, 5551, 5558, 5559 |  | 7 day week with NGT | 137745 |
| 5561 | 37400.37600.51200.51500.51800.114700.798000 | False ceiling works | 10d | 2028-03-24 | 2028-04-02 | 5546, 5560 |  | 7 day week with NGT | 137755 |
| 5562 | 37400.37600.51200.51500.51800.114600 | **Second Floor Finishing** | 115d | 2027-12-20 | 2028-04-12 |  | start no earlier than 2027-12-20 | 7 day week with NGT | 137765 |
| 5563 | 37400.37600.51200.51500.51800.114600.798100 | Blockwork | 10d | 2027-12-20 | 2027-12-29 | 5548 |  | 7 day week with NGT | 137775 |
| 5564 | 37400.37600.51200.51500.51800.114600.798200 | Internal Plumbing Works | 6d | 2027-12-30 | 2028-01-04 | 5563 |  | 7 day week with NGT | 137785 |
| 5565 | 37400.37600.51200.51500.51800.114600.798300 | Waterproofing Works | 10d | 2028-01-01 | 2028-01-10 | 5564SS+2d |  | 7 day week with NGT | 137795 |
| 5566 | 37400.37600.51200.51500.51800.114600.798400 | Electrical Wiring works | 12d | 2028-01-01 | 2028-01-12 | 5565SS |  | 7 day week with NGT | 137805 |
| 5567 | 37400.37600.51200.51500.51800.114600.798500 | Internal Plaster Works | 9d | 2028-01-13 | 2028-01-21 | 5564, 5565, 5566 |  | 7 day week with NGT | 137815 |
| 5568 | 37400.37600.51200.51500.51800.114600.798600 | Toilet Dado Works | 9d | 2028-01-22 | 2028-01-30 | 5564, 5565, 5566, 5567 |  | 7 day week with NGT | 137825 |
| 5569 | 37400.37600.51200.51500.51800.114600.798700 | PCC | 8d | 2028-01-13 | 2028-01-20 | 5565, 5567SS |  | 7 day week with NGT | 137835 |
| 5570 | 37400.37600.51200.51500.51800.114600.798800 | Toilet Flooring Works | 7d | 2028-01-31 | 2028-02-06 | 5568, 5569 |  | 7 day week with NGT | 137845 |
| 5571 | 37400.37600.51200.51500.51800.114600.798900 | Flooring | 15d | 2028-02-07 | 2028-02-21 | 5570 |  | 7 day week with NGT | 137855 |
| 5572 | 37400.37600.51200.51500.51800.114600.799000 | Aluminium Door Widnow Fixing | 15d | 2028-02-22 | 2028-03-07 | 5571 |  | 7 day week with NGT | 137865 |
| 5573 | 37400.37600.51200.51500.51800.114600.799100 | Rehung Door Fixing | 8d | 2028-03-08 | 2028-03-15 | 5572 |  | 7 day week with NGT | 137875 |
| 5574 | 37400.37600.51200.51500.51800.114600.799200 | Putty Primer coat | 6d | 2028-03-16 | 2028-03-21 | 5573 |  | 7 day week with NGT | 137885 |
| 5575 | 37400.37600.51200.51500.51800.114600.799300 | Painting First Coat | 12d | 2028-03-22 | 2028-04-02 | 5565, 5566, 5573, 5574 |  | 7 day week with NGT | 137895 |
| 5576 | 37400.37600.51200.51500.51800.114600.799400 | False ceiling works | 10d | 2028-04-03 | 2028-04-12 | 5561, 5575 |  | 7 day week with NGT | 137905 |

| ID | WBS | Task | Duration | Start | Finish | Predecessors | Constraint | Calendar | Unique_Task_ID |
| --- | --- | --- | --- | --- | --- | --- | --- | --- | --- |
| 5577 | 37400.37600.51200.51500.51800.114500 | **Third Floor Finishing** | 115d | 2027-12-30 | 2028-04-22 |  | start no earlier than 2027-12-30 | 7 day week with NGT | 137915 |
| 5578 | 37400.37600.51200.51500.51800.114500.799500 | Blockwork | 10d | 2027-12-30 | 2028-01-08 | 5563 |  | 7 day week with NGT | 137925 |
| 5579 | 37400.37600.51200.51500.51800.114500.799600 | Internal Plumbing Works | 6d | 2028-01-09 | 2028-01-14 | 5578 |  | 7 day week with NGT | 137935 |
| 5580 | 37400.37600.51200.51500.51800.114500.799700 | Waterproofing Works | 10d | 2028-01-11 | 2028-01-20 | 5579SS+2d |  | 7 day week with NGT | 137945 |
| 5581 | 37400.37600.51200.51500.51800.114500.799800 | Electrical Wiring works | 12d | 2028-01-11 | 2028-01-22 | 5580SS |  | 7 day week with NGT | 137955 |
| 5582 | 37400.37600.51200.51500.51800.114500.799900 | Internal Plaster Works | 9d | 2028-01-23 | 2028-01-31 | 5579, 5580, 5581 |  | 7 day week with NGT | 137965 |
| 5583 | 37400.37600.51200.51500.51800.114500.800000 | Toilet Dado Works | 9d | 2028-02-01 | 2028-02-09 | 5579, 5580, 5581, 5582 |  | 7 day week with NGT | 137975 |
| 5584 | 37400.37600.51200.51500.51800.114500.800100 | PCC | 8d | 2028-01-23 | 2028-01-30 | 5580, 5582SS |  | 7 day week with NGT | 137985 |
| 5585 | 37400.37600.51200.51500.51800.114500.800200 | Toilet Flooring Works | 7d | 2028-02-10 | 2028-02-16 | 5583, 5584 |  | 7 day week with NGT | 137995 |
| 5586 | 37400.37600.51200.51500.51800.114500.800300 | Flooring | 15d | 2028-02-17 | 2028-03-02 | 5585 |  | 7 day week with NGT | 138005 |
| 5587 | 37400.37600.51200.51500.51800.114500.800400 | Aluminium Door Widnow Fixing | 15d | 2028-03-03 | 2028-03-17 | 5586 |  | 7 day week with NGT | 138015 |
| 5588 | 37400.37600.51200.51500.51800.114500.800500 | Rehung Door Fixing | 8d | 2028-03-18 | 2028-03-25 | 5587 |  | 7 day week with NGT | 138025 |
| 5589 | 37400.37600.51200.51500.51800.114500.800600 | Putty Primer coat | 6d | 2028-03-26 | 2028-03-31 | 5588 |  | 7 day week with NGT | 138035 |
| 5590 | 37400.37600.51200.51500.51800.114500.800700 | Painting First Coat | 12d | 2028-04-01 | 2028-04-12 | 5580, 5581, 5588, 5589 |  | 7 day week with NGT | 138045 |
| 5591 | 37400.37600.51200.51500.51800.114500.800800 | False ceiling works | 10d | 2028-04-13 | 2028-04-22 | 5576, 5590 |  | 7 day week with NGT | 138055 |
| 5592 | 37400.37600.51200.51500.51800.212300 | **Club Outer Envelope** | 215d | 2027-10-06 | 2028-06-21 |  | start no earlier than 2027-10-06 | 7 day week with NGT | 138056 |
| 5593 | 37400.37600.51200.51500.51800.212300.800900 | SURFACE PREPARATION | 50d | 2027-10-06 | 2028-01-08 | 5518FF+30d |  | 7 day week with NGT | 138065 |
| 5594 | 37400.37600.51200.51500.51800.212300.801000 | External Painting | 60d | 2028-01-09 | 2028-03-08 | 5593 |  | 7 day week with NGT | 138075 |
| 5595 | 37400.37600.51200.51500.51800.212300.801100 | Outer Glazing Work | 60d | 2028-03-09 | 2028-05-07 | 5594 |  | 7 day week with NGT | 138085 |
| 5596 | 37400.37600.51200.51500.51800.212300.801200 | Misc. work | 45d | 2028-05-08 | 2028-06-21 | 5595 |  | 7 day week with NGT | 138095 |
| 5597 | 37400.37600.51200.130100 | **Fire, STP and WTP Room** | 396d | 2027-08-12 | 2028-10-25 |  | start no earlier than 2027-08-12 | 7 day week with NGT | 137287 |
| 5598 | 37400.37600.51200.130100.220500 | **Fire Pump Room** | 270d | 2027-08-12 | 2028-06-21 |  | start no earlier than 2027-08-12 | 7 day week with NGT | 138165 |
| 5599 | 37400.37600.51200.130100.220500.400000 | Procurement of Pumps and Fire Fighting Panel | 90d | 2027-08-12 | 2027-12-24 | 5612FS-486d |  | 7 day week with NGT | 138106 |
| 5600 | 37400.37600.51200.130100.220500.400100 | Installation of Panels | 90d | 2027-12-25 | 2028-03-23 | 5599 |  | 7 day week with NGT | 138116 |
| 5601 | 37400.37600.51200.130100.220500.400200 | Synchronization (Testing Commisioning) of system with HVAC and Electrical system | 90d | 2028-03-24 | 2028-06-21 | 5600 |  | 7 day week with NGT | 138126 |

| ID | WBS | Task | Duration | Start | Finish | Predecessors | Constraint | Calendar | Unique_Task_ID |
| --- | --- | --- | --- | --- | --- | --- | --- | --- | --- |
| 5602 | 37400.37600.51200.130100.220600 | **STP Plant Room** | 180d | 2028-04-29 | 2028-10-25 |  | start no earlier than 2028-04-29 | 7 day week with NGT | 138127 |
| 5603 | 37400.37600.51200.130100.220600.400300 | Procurement of Pumps and Fire Fighting Panel | 90d | 2028-04-29 | 2028-07-27 | 5612FS-270d |  | 7 day week with NGT | 138175 |
| 5604 | 37400.37600.51200.130100.220600.400400 | Installation of Panels / Equipment and Completion of Civil Works | 75d | 2028-07-28 | 2028-10-10 | 5603 |  | 7 day week with NGT | 138185 |
| 5605 | 37400.37600.51200.130100.220600.400500 | Testing and Commisioning | 15d | 2028-10-11 | 2028-10-25 | 5604 |  | 7 day week with NGT | 138195 |
| 5606 | 37400.37600.51200.130100.220700 | **WTP Plant Room** | 180d | 2028-04-29 | 2028-10-25 |  | start no earlier than 2028-04-29 | 7 day week with NGT | 138205 |
| 5607 | 37400.37600.51200.130100.220700.400600 | Procurement of Pumps and Fire Fighting Panel | 90d | 2028-04-29 | 2028-07-27 | 5612FS-270d |  | 7 day week with NGT | 138215 |
| 5608 | 37400.37600.51200.130100.220700.400700 | Installation of Panels / Equipment and Completion of Civil Works | 75d | 2028-07-28 | 2028-10-10 | 5607 |  | 7 day week with NGT | 138225 |
| 5609 | 37400.37600.51200.130100.220700.400800 | Testing and Commisioning | 15d | 2028-10-11 | 2028-10-25 | 5608 |  | 7 day week with NGT | 138235 |
| 5610 | 37400.37600.285800 | Advance Finishing | 200d | 2027-10-26 | 2028-06-26 | 5533 |  | 7 day week with NGT | 136746 |
| 5611 | 37400.37600.217300 | **OC For All Towers** | 336d | 2029-01-23 | 2029-12-24 |  | start no earlier than 2029-01-23 | 7 day week with NGT | 138096 |
| 5612 | 37400.37600.217300.285900 | OC of Plot A all 6 Towers | 1d | 2029-01-23 | 2029-01-23 | 5266, 5429, 5459, 5596, 5264, 5426, 5437, 5446, 5530, 5591, 1762, 3476, 5188, 882, 2620, 4332, 5272, 5277, 5282 |  | 7 day week with NGT | 138145 |
| 5613 | 37400.37600.217300.286000 | OC Reciept | 1d | 2029-03-25 | 2029-03-25 | 5612FS+60d, 883, 1763, 2621, 3477, 4333, 5189, 5601, 5605, 5609 |  | 7 day week with NGT | 138155 |
| 5614 | 37400.37600.217300.286100 | Offer to Possession | 60d | 2029-10-26 | 2029-12-24 | 5613FF+274d, 884, 1764, 2622, 3478, 4334, 5190 |  | 7 day week with NGT | 173455 |
