Schedule from MS Project XML, 2024-06-24 to 2028-08-31, A marks actual dates.

## Calendars

- Standard: Mon-Fri 08:00-12:00, 13:00-17:00; Sat-Sun off. Exceptions (off unless hours are given): 2024-08-26, 2024-12-23 to 2025-01-05, 2025-04-18 to 2025-04-21, 2025-05-05, 2025-05-26, 2025-08-25, 2025-12-22 to 2026-01-04, 2026-03-27 to 2026-03-30, 2026-05-04, 2026-05-23 to 2026-05-25, 2026-08-29 to 2026-08-31, 2026-12-21 to 2027-01-03, 2027-04-16 to 2027-04-19, 2027-05-01 to 2027-05-03, 2027-05-29 to 2027-05-31, 2027-08-30, 2027-12-25 to 2028-01-09, 2028-03-31 to 2028-04-03, 2028-04-29 to 2028-05-01, 2028-05-27 to 2028-05-29, 2028-08-26 to 2028-08-28.
- 7 Days Work: Mon-Sun 08:00-12:00, 13:00-17:00.
- Yashwantpur Finshing: Mon-Fri 08:00-12:00, 13:00-17:00; Sat-Sun off.

## Resources

| Resource | Group | Unit |
| --- | --- | --- |
| Architects | Design Resources |  |
| Structural Engineers | Design Resources |  |
| Design Resources |  |  |
| Site Resources |  |  |
| Bricks |  | No |
| BL Saha |  |  |
| Roofers | Site Resources |  |
| Steel Fitters | Site Resources |  |
| Bricklayers | Site Resources |  |
| Carpenters | Site Resources |  |
| Ductworkers | Services Engineers |  |
| Fitters | Services Engineers |  |
| Plumbers | Services Engineers |  |
| Electricians | Services Engineers |  |
| Services Engineers |  |  |
| Crane |  |  |
| Wai Lim | Structural Engineers |  |
| Hamed Ahmed (e-on-alloc) | Structural Engineers |  |
| Sarah Williams (e-on-act) | Structural Engineers |  |
| Jim Smith (e-on-act) | Structural Engineers |  |
| Landscape Architects | Design Resources |  |
| Services Engineers | Design Resources |  |

## Schedule

| ID | WBS | Task | Duration | Start | Finish | Predecessors | Complete | Constraint | Calendar | Unique_Task_ID |
| --- | --- | --- | --- | --- | --- | --- | --- | --- | --- | --- |
| 1 | 36900 | **BL Saha** | 1093.05d | 2024-06-24 | 2028-08-31 |  | 3% | start no earlier than 2024-06-24 | Yashwantpur Finshing | 9042554 |
| 2 | 36900.37000 | **BL Saha** | 1529.05d | 2024-06-24 | 2028-08-31 |  | 3% | start no earlier than 2024-06-24 | 7 Days Work | 9042564 |
| 3 | 36900.37000.66600 | **Pre Construction** | 419d | 2025-02-04 | 2026-03-29 |  | 34% | start no earlier than 2025-02-04 | 7 Days Work | 9042674 |
| 4 | 36900.37000.66600.91900 | Statutory Approval | 167.5d | 2025-02-04 | 2025-07-21 | 5FF | 100% | start no earlier than 2025-02-04 | 7 Days Work | 9042754 |
| 5 | 36900.37000.66600.91800 | Tree Noc | 131d | 2025-02-04 | 2025-07-21 |  | 100% | start no earlier than 2025-02-04 | 7 Days Work | 10343828 |
| 6 | 36900.37000.66600.82000 | **Drawing** | 30d | 2025-11-30 | 2025-12-29 |  |  | start no earlier than 2025-11-30 | 7 Days Work | 9042714 |
| 7 | 36900.37000.66600.82000.93100 | Pilling | 15d | 2025-11-30 | 2025-12-14 | 14SF |  |  | 7 Days Work | 9042764 |
| 8 | 36900.37000.66600.82000.93200 | Aluform | 30d | 2025-11-30 | 2025-12-29 | 15SF |  |  | 7 Days Work | 9042774 |
| 9 | 36900.37000.66600.82000.93300 | Core & Shell | 10d | 2025-11-30 | 2025-12-09 | 16SF |  |  | 7 Days Work | 9042784 |
| 10 | 36900.37000.66600.82000.93400 | Boundary Wall | 10d | 2025-11-30 | 2025-12-09 |  |  | start no earlier than 2025-11-30 | 7 Days Work | 9042794 |
| 11 | 36900.37000.66600.82000.93500 | External Services | 10d | 2025-11-30 | 2025-12-09 |  |  | start no earlier than 2025-11-30 | 7 Days Work | 9042804 |
| 12 | 36900.37000.66600.82000.93600 | Area Development | 10d | 2025-11-30 | 2025-12-09 |  |  | start no earlier than 2025-11-30 | 7 Days Work | 9042814 |
| 13 | 36900.37000.66600.82100 | **BOQ** | 20d | 2025-11-30 | 2025-12-19 |  |  | start no earlier than 2025-11-30 | 7 Days Work | 9042704 |
| 14 | 36900.37000.66600.82100.93700 | Pilling | 20d | 2025-11-30 | 2025-12-19 | 21SF |  |  | 7 Days Work | 9042824 |
| 15 | 36900.37000.66600.82100.93800 | Aluform | 20d | 2025-11-30 | 2025-12-19 | 22SF |  |  | 7 Days Work | 9042834 |
| 16 | 36900.37000.66600.82100.93900 | Core & Shell | 20d | 2025-11-30 | 2025-12-19 | 23SF |  |  | 7 Days Work | 9042844 |
| 17 | 36900.37000.66600.82100.94000 | Boundary Wall | 10d | 2025-12-10 | 2025-12-19 | 10 |  |  | 7 Days Work | 9042854 |
| 18 | 36900.37000.66600.82100.94100 | External Services | 10d | 2025-12-10 | 2025-12-19 | 11 |  |  | 7 Days Work | 9042864 |
| 19 | 36900.37000.66600.82100.94200 | Area Development | 10d | 2025-12-10 | 2025-12-19 | 12 |  |  | 7 Days Work | 9042874 |
| 20 | 36900.37000.66600.82200 | **Contract** | 120d | 2025-11-30 | 2026-03-29 |  |  | start no earlier than 2025-11-30 | 7 Days Work | 9042694 |
| 21 | 36900.37000.66600.82200.94300 | Pilling | 120d | 2025-11-30 | 2026-03-29 | 29SF-30d |  |  | 7 Days Work | 9042884 |
| 22 | 36900.37000.66600.82200.94400 | Aluform | 120d | 2025-11-30 | 2026-03-29 | 44SF-210d |  |  | 7 Days Work | 9042894 |
| 23 | 36900.37000.66600.82200.94500 | Core & Shell | 120d | 2025-11-30 | 2026-03-29 | 38SF-30d |  |  | 7 Days Work | 9042904 |
| 24 | 36900.37000.66600.82200.94600 | Boundary Wall | 10d | 2025-12-20 | 2025-12-29 | 17 |  |  | 7 Days Work | 9042914 |
| 25 | 36900.37000.66600.82200.94700 | External Services | 10d | 2025-12-20 | 2025-12-29 | 18 |  |  | 7 Days Work | 9042924 |
| 26 | 36900.37000.66600.82200.94800 | Area Development | 10d | 2025-12-20 | 2025-12-29 | 19 |  |  | 7 Days Work | 5404 |

| ID | WBS | Task | Duration | Start | Finish | Predecessors | Complete | Constraint | Calendar | Unique_Task_ID |
| --- | --- | --- | --- | --- | --- | --- | --- | --- | --- | --- |
| 27 | 36900.37000.37100 | **Construction** | 1251.8d | 2024-06-24 | 2027-11-28 |  | 3% | start no earlier than 2024-06-24 | 7 Days Work | 9042574 |
| 28 | 36900.37000.37100.37600 | **Tower-1** | 980d | 2025-03-07 | 2027-11-11 |  | 2% | start no earlier than 2025-03-07 | 7 Days Work | 9042604 |
| 29 | 36900.37000.37100.37600.91700 | Pilling- Non Effected of Tree Noc Zone | 136d | 2025-03-07 | 2025-07-30 | 8465SS+5d | 100% | start no earlier than 2025-03-07 | 7 Days Work | 9043044 |
| 30 | 36900.37000.37100.37600.91600 | Pilling-Effected of Tree Noc Zone | 10d | 2025-08-04 | 2025-08-21 | 5FS+3d | 100% | start no earlier than 2025-08-04 | 7 Days Work | 10343838 |
| 31 | 36900.37000.37100.37600.91500 | SPT Test | 30d | 2025-06-06 | 2025-08-22 | 30FF+15d | 100% | start no earlier than 2025-06-06 | 7 Days Work | 10343558 |
| 32 | 36900.37000.37100.37600.91400 | Dynamic | 7d | 2025-09-14 | 2025-09-20 | 30FF+28d | 100% | start no earlier than 2025-09-14 | 7 Days Work | 10343568 |
| 33 | 36900.37000.37100.37600.91300 | Static Load Test | 15d | 2025-09-11 | 2025-10-31 | 30FF+28d | 100% | start no earlier than 2025-09-11 | 7 Days Work | 10343578 |
| 34 | 36900.37000.37100.37600.91200 | Excavation | 15d | 2025-11-23 | 2025-12-08 | 33FS+15d | 46% | start no earlier than 2025-11-23 | 7 Days Work | 9043045 |
| 35 | 36900.37000.37100.37600.91100 | PCC | 16d | 2025-11-21 | 2025-12-10 | 34SS+5d | 56% | start no earlier than 2025-11-21 | 7 Days Work | 10723918 |
| 36 | 36900.37000.37100.37600.91000 | Pile Head Breaing | 20d | 2025-11-18 | 2025-12-15 | 35 | 60% | start no earlier than 2025-11-18 | 7 Days Work | 10723928 |
| 37 | 36900.37000.37100.37600.90900 | PIT | 18d | 2025-11-17 | 2025-12-15 | 36 | 72% | start no earlier than 2025-11-17 | 7 Days Work | 9043055 |
| 38 | 36900.37000.37100.37600.90800 | Raft-reinforcement | 20d | 2025-11-24 | 2025-12-13 | 37 | 30% | start no earlier than 2025-11-24 | 7 Days Work | 9043054 |
| 39 | 36900.37000.37100.37600.94900 | Raft-Shuttering | 18d | 2025-11-30 | 2025-12-17 | 38SS+5d |  |  | 7 Days Work | 10723948 |
| 40 | 36900.37000.37100.37600.95000 | Raft-concreting | 18d | 2025-12-07 | 2025-12-24 | 39SS+7d |  |  | 7 Days Work | 10723958 |
| 41 | 36900.37000.37100.37600.95100 | up to PL | 22d | 2025-12-14 | 2026-01-04 | 38 |  |  | 7 Days Work | 9043064 |
| 42 | 36900.37000.37100.37600.95200 | 1st Floor Slab RCC | 25d | 2026-01-05 | 2026-01-29 | 41 |  |  | 7 Days Work | 9043074 |
| 43 | 36900.37000.37100.37600.95300 | 2nd Floor Slab RCC | 25d | 2026-01-30 | 2026-02-23 | 42 |  |  | 7 Days Work | 9043084 |
| 44 | 36900.37000.37100.37600.95400 | 3rd Floor Slab RCC | 25d | 2026-02-24 | 2026-03-20 | 43 |  |  | 7 Days Work | 9043094 |
| 45 | 36900.37000.37100.37600.95500 | 4th Floor Slab RCC | 21d | 2026-03-21 | 2026-04-10 | 44 |  |  | 7 Days Work | 9043104 |
| 46 | 36900.37000.37100.37600.95600 | 5th Floor Slab RCC | 15d | 2026-04-11 | 2026-04-25 | 45 |  |  | 7 Days Work | 9043114 |
| 47 | 36900.37000.37100.37600.95700 | 6th Floor Slab RCC | 9d | 2026-04-26 | 2026-05-04 | 46 |  |  | 7 Days Work | 9043124 |
| 48 | 36900.37000.37100.37600.95800 | 7th Floor Slab RCC | 12d | 2026-05-05 | 2026-05-16 | 47 |  |  | 7 Days Work | 9043134 |
| 49 | 36900.37000.37100.37600.95900 | 8th Floor Slab RCC | 9d | 2026-05-17 | 2026-05-25 | 48 |  |  | 7 Days Work | 9043144 |
| 50 | 36900.37000.37100.37600.96000 | 9th Floor Slab RCC | 9d | 2026-05-26 | 2026-06-03 | 49 |  |  | 7 Days Work | 9043154 |
| 51 | 36900.37000.37100.37600.96100 | 10th Floor Slab RCC | 9d | 2026-06-04 | 2026-06-12 | 50 |  |  | 7 Days Work | 9043164 |
| 52 | 36900.37000.37100.37600.96200 | 11th Floor Slab RCC | 12d | 2026-06-13 | 2026-06-24 | 51 |  |  | 7 Days Work | 9043174 |
| 53 | 36900.37000.37100.37600.96300 | 12th Floor Slab RCC | 9d | 2026-06-25 | 2026-07-03 | 52 |  |  | 7 Days Work | 9043184 |
| 54 | 36900.37000.37100.37600.96400 | 13th Floor Slab RCC | 9d | 2026-07-04 | 2026-07-12 | 53 |  |  | 7 Days Work | 9043194 |
| 55 | 36900.37000.37100.37600.96500 | 14th Floor Slab RCC | 9d | 2026-07-13 | 2026-07-21 | 54 |  |  | 7 Days Work | 9043204 |
| 56 | 36900.37000.37100.37600.96600 | 15th Floor Slab RCC | 12d | 2026-07-22 | 2026-08-02 | 55 |  |  | 7 Days Work | 9043214 |
| 57 | 36900.37000.37100.37600.96700 | 16th Floor Slab RCC | 9d | 2026-08-03 | 2026-08-11 | 56 |  |  | 7 Days Work | 9043224 |
| 58 | 36900.37000.37100.37600.96800 | 17th Floor Slab RCC | 9d | 2026-08-12 | 2026-08-20 | 57 |  |  | 7 Days Work | 9043234 |
| 59 | 36900.37000.37100.37600.96900 | 18th Floor Slab RCC | 9d | 2026-08-21 | 2026-08-29 | 58 |  |  | 7 Days Work | 9043244 |
| 60 | 36900.37000.37100.37600.97000 | 19th Floor Slab RCC | 12d | 2026-08-30 | 2026-09-10 | 59 |  |  | 7 Days Work | 9043254 |
| 61 | 36900.37000.37100.37600.97100 | 20th Floor Slab RCC | 9d | 2026-09-11 | 2026-09-19 | 60 |  |  | 7 Days Work | 9043264 |
| 62 | 36900.37000.37100.37600.97200 | 21st Floor Slab RCC | 9d | 2026-09-20 | 2026-09-28 | 61 |  |  | 7 Days Work | 9043274 |
| 63 | 36900.37000.37100.37600.97300 | Terrace | 12d | 2026-09-29 | 2026-10-10 | 62 |  |  | 7 Days Work | 9043284 |
| 64 | 36900.37000.37100.37600.97400 | Above Terrace | 35d | 2026-10-11 | 2026-11-14 | 63 |  |  | 7 Days Work | 9043285 |

| ID | WBS | Task | Duration | Start | Finish | Predecessors | Constraint | Calendar | Unique_Task_ID |
| --- | --- | --- | --- | --- | --- | --- | --- | --- | --- |
| 65 | 36900.37000.37100.37600.38300 | **Flat Finishing** | 428d | 2026-04-26 | 2027-06-27 |  | start no earlier than 2026-04-26 | 7 Days Work | 9043296 |
| 66 | 36900.37000.37100.37600.38300.38600 | **1st Habitable/3rd Floor** | 245d | 2026-04-26 | 2026-12-26 |  | start no earlier than 2026-04-26 | 7 Days Work | 9043315 |
| 67 | 36900.37000.37100.37600.38300.38600.122900 | Post Pour | 7d | 2026-04-26 | 2026-05-02 | 45FS+15d |  | 7 Days Work | 9043286 |
| 68 | 36900.37000.37100.37600.38300.38600.123000 | MEP Clearance -1 | 5d | 2026-05-03 | 2026-05-07 | 67 |  | 7 Days Work | 9043287 |
| 69 | 36900.37000.37100.37600.38300.38600.123100 | Benchmark | 1d | 2026-05-08 | 2026-05-08 | 68 |  | 7 Days Work | 9043288 |
| 70 | 36900.37000.37100.37600.38300.38600.123200 | Temporary Railing | 3d | 2026-05-09 | 2026-05-11 | 69 |  | 7 Days Work | 9043289 |
| 71 | 36900.37000.37100.37600.38300.38600.123300 | Blockwork | 10d | 2026-05-12 | 2026-05-21 | 70 |  | 7 Days Work | 9043290 |
| 72 | 36900.37000.37100.37600.38300.38600.123400 | MEP Clearance -2 | 10d | 2026-05-22 | 2026-05-31 | 71 |  | 7 Days Work | 9043291 |
| 73 | 36900.37000.37100.37600.38300.38600.123500 | Gypsum Plaster | 14d | 2026-06-01 | 2026-06-14 | 72 |  | 7 Days Work | 9043292 |
| 74 | 36900.37000.37100.37600.38300.38600.123600 | Kitchen Platform | 3d | 2026-06-15 | 2026-06-17 | 73 |  | 7 Days Work | 9043293 |
| 75 | 36900.37000.37100.37600.38300.38600.123700 | Kitchen dado | 7d | 2026-06-18 | 2026-06-24 | 74 |  | 7 Days Work | 9043303 |
| 76 | 36900.37000.37100.37600.38300.38600.123800 | Fire Fighting | 5d | 2026-06-25 | 2026-06-29 | 75 |  | 7 Days Work | 9043313 |
| 77 | 36900.37000.37100.37600.38300.38600.123900 | Anticapilary | 5d | 2026-06-30 | 2026-07-04 | 76 |  | 7 Days Work | 9043323 |
| 78 | 36900.37000.37100.37600.38300.38600.124000 | Stone Laying | 10d | 2026-08-07 | 2026-08-16 | 118 |  | 7 Days Work | 9043333 |
| 79 | 36900.37000.37100.37600.38300.38600.124100 | Tiles Laying | 7d | 2026-08-07 | 2026-08-13 | 118 |  | 7 Days Work | 9043343 |
| 80 | 36900.37000.37100.37600.38300.38600.124200 | 1st cutting/polishing of stone flooring | 7d | 2026-08-14 | 2026-08-20 | 79 |  | 7 Days Work | 9043353 |
| 81 | 36900.37000.37100.37600.38300.38600.124300 | Tiles/Stone skirting | 5d | 2026-08-21 | 2026-08-25 | 80 |  | 7 Days Work | 9043363 |
| 82 | 36900.37000.37100.37600.38300.38600.124400 | Protechtion sheet | 1d | 2026-08-26 | 2026-08-26 | 81 |  | 7 Days Work | 9043373 |
| 83 | 36900.37000.37100.37600.38300.38600.124500 | Installation of Temporary Door | 1d | 2026-08-27 | 2026-08-27 | 82 |  | 7 Days Work | 9043383 |
| 84 | 36900.37000.37100.37600.38300.38600.124600 | Fixing of window tracks | 5d | 2026-08-28 | 2026-09-01 | 83 |  | 7 Days Work | 9043393 |
| 85 | 36900.37000.37100.37600.38300.38600.124700 | Wire Pulling | 7d | 2026-09-02 | 2026-09-08 | 84 |  | 7 Days Work | 9043403 |
| 86 | 36900.37000.37100.37600.38300.38600.124800 | Gypsum Remaining | 5d | 2026-09-09 | 2026-09-13 | 85 |  | 7 Days Work | 9043413 |
| 87 | 36900.37000.37100.37600.38300.38600.124900 | Fixing of windoow shutter | 5d | 2026-09-14 | 2026-09-18 | 86 |  | 7 Days Work | 9043423 |
| 88 | 36900.37000.37100.37600.38300.38600.125000 | Putty Works - walls & ceiling | 15d | 2026-09-19 | 2026-10-03 | 87 |  | 7 Days Work | 9043433 |
| 89 | 36900.37000.37100.37600.38300.38600.125100 | False Ceiling- Framing | 10d | 2026-10-04 | 2026-10-13 | 88 |  | 7 Days Work | 9043443 |
| 90 | 36900.37000.37100.37600.38300.38600.125200 | Pre Hung Door | 3d | 2026-10-14 | 2026-10-16 | 89 |  | 7 Days Work | 9043453 |
| 91 | 36900.37000.37100.37600.38300.38600.125300 | Protechtion sheet | 2d | 2026-10-17 | 2026-10-18 | 90 |  | 7 Days Work | 9043463 |
| 92 | 36900.37000.37100.37600.38300.38600.125400 | Skirting near door | 2d | 2026-10-19 | 2026-10-20 | 91 |  | 7 Days Work | 9043473 |
| 93 | 36900.37000.37100.37600.38300.38600.125500 | Electrical Switch box fixing | 14d | 2026-10-21 | 2026-11-03 | 92 |  | 7 Days Work | 9043483 |
| 94 | 36900.37000.37100.37600.38300.38600.125600 | Fire Fighting painting | 5d | 2026-11-04 | 2026-11-08 | 93 |  | 7 Days Work | 9043493 |
| 95 | 36900.37000.37100.37600.38300.38600.125700 | Protection of all flooring, door & window hardware | 5d | 2026-11-09 | 2026-11-13 | 94 |  | 7 Days Work | 9043503 |
| 96 | 36900.37000.37100.37600.38300.38600.125800 | 1st coat primer- ceiling 1st & walls | 14d | 2026-11-14 | 2026-11-27 | 95 |  | 7 Days Work | 9043513 |
| 97 | 36900.37000.37100.37600.38300.38600.125900 | Wooden Flooring | 5d | 2026-11-28 | 2026-12-02 | 96 |  | 7 Days Work | 9043523 |
| 98 | 36900.37000.37100.37600.38300.38600.126000 | Removing of Temporary Railing & installation of Glass Railing | 5d | 2026-11-28 | 2026-12-02 | 96 |  | 7 Days Work | 9152924 |
| 99 | 36900.37000.37100.37600.38300.38600.126100 | Tile Grouting | 7d | 2026-11-28 | 2026-12-04 | 96 |  | 7 Days Work | 9043533 |
| 100 | 36900.37000.37100.37600.38300.38600.126200 | False Ceiling | 5d | 2026-12-05 | 2026-12-09 | 99 |  | 7 Days Work | 9043543 |
| 101 | 36900.37000.37100.37600.38300.38600.126300 | 2nd coat of primer | 10d | 2026-12-10 | 2026-12-19 | 100 |  | 7 Days Work | 9043553 |
| 102 | 36900.37000.37100.37600.38300.38600.126400 | Final cutting/polishing of stone flooring | 7d | 2026-12-20 | 2026-12-26 | 101 |  | 7 Days Work | 9043563 |

| ID | WBS | Task | Duration | Start | Finish | Predecessors | Constraint | Calendar | Unique_Task_ID |
| --- | --- | --- | --- | --- | --- | --- | --- | --- | --- |
| 103 | 36900.37000.37100.37600.38300.38600.52900 | **Toilet** | 237d | 2026-05-03 | 2026-12-25 |  | start no earlier than 2026-05-03 | 7 Days Work | 9043573 |
| 104 | 36900.37000.37100.37600.38300.38600.52900.735100 | Toilet_MEP Clearance -1 | 7d | 2026-05-03 | 2026-05-09 | 67 |  | 7 Days Work | 9043583 |
| 105 | 36900.37000.37100.37600.38300.38600.52900.735200 | Toilet_Level Marking | 1d | 2026-05-10 | 2026-05-10 | 104 |  | 7 Days Work | 9043593 |
| 106 | 36900.37000.37100.37600.38300.38600.52900.735300 | Toilet_Chasing work for Electrical conduit & concealed plumbing | 5d | 2026-05-11 | 2026-05-15 | 105 |  | 7 Days Work | 9043603 |
| 107 | 36900.37000.37100.37600.38300.38600.52900.735400 | Toilet_Plumbing work 1st fix | 5d | 2026-05-16 | 2026-05-20 | 106 |  | 7 Days Work | 9043613 |
| 108 | 36900.37000.37100.37600.38300.38600.52900.735500 | Toilet_Sleeve/Bore Packing | 5d | 2026-05-21 | 2026-05-25 | 107 |  | 7 Days Work | 9043623 |
| 109 | 36900.37000.37100.37600.38300.38600.52900.735600 | Toilet_Waterproofing | 10d | 2026-05-26 | 2026-06-04 | 108 |  | 7 Days Work | 9043633 |
| 110 | 36900.37000.37100.37600.38300.38600.52900.735700 | Toilet_Screed | 1d | 2026-06-05 | 2026-06-05 | 109 |  | 7 Days Work | 9043643 |
| 111 | 36900.37000.37100.37600.38300.38600.52900.735800 | Toilet_Plumbing 2nd fix | 5d | 2026-06-06 | 2026-06-10 | 110 |  | 7 Days Work | 9043653 |
| 112 | 36900.37000.37100.37600.38300.38600.52900.735900 | Toilet_Ledge wall | 5d | 2026-06-11 | 2026-06-15 | 111 |  | 7 Days Work | 9043663 |
| 113 | 36900.37000.37100.37600.38300.38600.52900.736000 | Toilet_Cement Plaster | 5d | 2026-06-16 | 2026-06-20 | 112 |  | 7 Days Work | 9043673 |
| 114 | 36900.37000.37100.37600.38300.38600.52900.736100 | Toilet_Door Frame | 1d | 2026-06-21 | 2026-06-21 | 113 |  | 7 Days Work | 9043683 |
| 115 | 36900.37000.37100.37600.38300.38600.52900.736200 | Toilet_Wash basin & Couter | 3d | 2026-06-22 | 2026-06-24 | 114 |  | 7 Days Work | 9043693 |
| 116 | 36900.37000.37100.37600.38300.38600.52900.736300 | Toilet_Wall dado | 20d | 2026-06-25 | 2026-07-14 | 115 |  | 7 Days Work | 9043703 |
| 117 | 36900.37000.37100.37600.38300.38600.52900.736400 | Toilet_Granite Work-Ledge wall top | 3d | 2026-07-15 | 2026-07-17 | 116 |  | 7 Days Work | 9043713 |
| 118 | 36900.37000.37100.37600.38300.38600.52900.736500 | Toilet_Floor Tilling work | 20d | 2026-07-18 | 2026-08-06 | 117 |  | 7 Days Work | 9043723 |
| 119 | 36900.37000.37100.37600.38300.38600.52900.736600 | Toilet_1st row of dado | 5d | 2026-08-07 | 2026-08-11 | 118 |  | 7 Days Work | 9043733 |
| 120 | 36900.37000.37100.37600.38300.38600.52900.736700 | Toilet_Window Fixing | 14d | 2026-08-12 | 2026-08-25 | 119 |  | 7 Days Work | 9043743 |
| 121 | 36900.37000.37100.37600.38300.38600.52900.736800 | Toilet_Services above False ceiling | 21d | 2026-08-26 | 2026-09-15 | 120 |  | 7 Days Work | 9043753 |
| 122 | 36900.37000.37100.37600.38300.38600.52900.736900 | Toilet_False Ceiling framing | 12d | 2026-09-16 | 2026-09-27 | 121 |  | 7 Days Work | 9043763 |
| 123 | 36900.37000.37100.37600.38300.38600.52900.737000 | Toilet_Door Frame | 5d | 2026-09-28 | 2026-10-02 | 122 |  | 7 Days Work | 9043773 |
| 124 | 36900.37000.37100.37600.38300.38600.52900.737100 | Toilet_Epoxy Tile Grouting | 7d | 2026-11-28 | 2026-12-04 | 99SS |  | 7 Days Work | 9043783 |
| 125 | 36900.37000.37100.37600.38300.38600.52900.737200 | Toilet_False ceiling board fixing, CP Sanitary Fixture, Electric Fixture | 21d | 2026-12-05 | 2026-12-25 | 124 |  | 7 Days Work | 9043793 |
| 126 | 36900.37000.37100.37600.38300.38700 | **2nd Habitable/4th Floor** | 245d | 2026-05-11 | 2027-01-10 |  | start no earlier than 2026-05-11 | 7 Days Work | 9153104 |
| 127 | 36900.37000.37100.37600.38300.38700.126500 | Post Pour | 7d | 2026-05-11 | 2026-05-17 | 46FS+15d |  | 7 Days Work | 9153124 |
| 128 | 36900.37000.37100.37600.38300.38700.126600 | MEP Clearance -1 | 5d | 2026-05-18 | 2026-05-22 | 127 |  | 7 Days Work | 9153134 |
| 129 | 36900.37000.37100.37600.38300.38700.126700 | Benchmark | 1d | 2026-05-23 | 2026-05-23 | 128 |  | 7 Days Work | 9153144 |
| 130 | 36900.37000.37100.37600.38300.38700.126800 | Temporary Railing | 3d | 2026-05-24 | 2026-05-26 | 129 |  | 7 Days Work | 9153154 |
| 131 | 36900.37000.37100.37600.38300.38700.126900 | Blockwork | 10d | 2026-05-27 | 2026-06-05 | 130 |  | 7 Days Work | 9153164 |
| 132 | 36900.37000.37100.37600.38300.38700.127000 | MEP Clearance -2 | 10d | 2026-06-06 | 2026-06-15 | 131 |  | 7 Days Work | 9153174 |
| 133 | 36900.37000.37100.37600.38300.38700.127100 | Gypsum Plaster | 14d | 2026-06-16 | 2026-06-29 | 132 |  | 7 Days Work | 9153184 |
| 134 | 36900.37000.37100.37600.38300.38700.127200 | Kitchen Platform | 3d | 2026-06-30 | 2026-07-02 | 133 |  | 7 Days Work | 9153194 |
| 135 | 36900.37000.37100.37600.38300.38700.127300 | Kitchen dado | 7d | 2026-07-03 | 2026-07-09 | 134 |  | 7 Days Work | 9153204 |
| 136 | 36900.37000.37100.37600.38300.38700.127400 | Fire Fighting | 5d | 2026-07-10 | 2026-07-14 | 135 |  | 7 Days Work | 9153214 |
| 137 | 36900.37000.37100.37600.38300.38700.127500 | Anticapilary | 5d | 2026-07-15 | 2026-07-19 | 136 |  | 7 Days Work | 9153224 |
| 138 | 36900.37000.37100.37600.38300.38700.127600 | Stone Laying | 10d | 2026-08-22 | 2026-08-31 | 178 |  | 7 Days Work | 9153234 |
| 139 | 36900.37000.37100.37600.38300.38700.127700 | Tiles Laying | 7d | 2026-08-22 | 2026-08-28 | 178 |  | 7 Days Work | 9153244 |
| 140 | 36900.37000.37100.37600.38300.38700.127800 | 1st cutting/polishing of stone flooring | 7d | 2026-08-29 | 2026-09-04 | 139 |  | 7 Days Work | 9153254 |
| 141 | 36900.37000.37100.37600.38300.38700.127900 | Tiles/Stone skirting | 5d | 2026-09-05 | 2026-09-09 | 140 |  | 7 Days Work | 9153264 |
| 142 | 36900.37000.37100.37600.38300.38700.128000 | Protechtion sheet | 1d | 2026-09-10 | 2026-09-10 | 141 |  | 7 Days Work | 9153274 |
| 143 | 36900.37000.37100.37600.38300.38700.128100 | Installation of Temporary Door | 1d | 2026-09-11 | 2026-09-11 | 142 |  | 7 Days Work | 9153284 |
| 144 | 36900.37000.37100.37600.38300.38700.128200 | Fixing of window tracks | 5d | 2026-09-12 | 2026-09-16 | 143 |  | 7 Days Work | 9153294 |
| 145 | 36900.37000.37100.37600.38300.38700.128300 | Wire Pulling | 7d | 2026-09-17 | 2026-09-23 | 144 |  | 7 Days Work | 9153304 |
| 146 | 36900.37000.37100.37600.38300.38700.128400 | Gypsum Remaining | 5d | 2026-09-24 | 2026-09-28 | 145 |  | 7 Days Work | 9153314 |
| 147 | 36900.37000.37100.37600.38300.38700.128500 | Fixing of windoow shutter | 5d | 2026-09-29 | 2026-10-03 | 146 |  | 7 Days Work | 9153324 |
| 148 | 36900.37000.37100.37600.38300.38700.128600 | Putty Works - walls & ceiling | 15d | 2026-10-04 | 2026-10-18 | 147 |  | 7 Days Work | 9153334 |
| 149 | 36900.37000.37100.37600.38300.38700.128700 | False Ceiling- Framing | 10d | 2026-10-19 | 2026-10-28 | 148 |  | 7 Days Work | 9153344 |
| 150 | 36900.37000.37100.37600.38300.38700.128800 | Pre Hung Door | 3d | 2026-10-29 | 2026-10-31 | 149 |  | 7 Days Work | 9153354 |
| 151 | 36900.37000.37100.37600.38300.38700.128900 | Protechtion sheet | 2d | 2026-11-01 | 2026-11-02 | 150 |  | 7 Days Work | 9153364 |
| 152 | 36900.37000.37100.37600.38300.38700.129000 | Skirting near door | 2d | 2026-11-03 | 2026-11-04 | 151 |  | 7 Days Work | 9153374 |
| 153 | 36900.37000.37100.37600.38300.38700.129100 | Electrical Switch box fixing | 14d | 2026-11-05 | 2026-11-18 | 152 |  | 7 Days Work | 9153384 |
| 154 | 36900.37000.37100.37600.38300.38700.129200 | Fire Fighting painting | 5d | 2026-11-19 | 2026-11-23 | 153 |  | 7 Days Work | 9153394 |
| 155 | 36900.37000.37100.37600.38300.38700.129300 | Protection of all flooring, door & window hardware | 5d | 2026-11-24 | 2026-11-28 | 154 |  | 7 Days Work | 9153404 |
| 156 | 36900.37000.37100.37600.38300.38700.129400 | 1st coat primer- ceiling 1st & walls | 14d | 2026-11-29 | 2026-12-12 | 155 |  | 7 Days Work | 9153414 |
| 157 | 36900.37000.37100.37600.38300.38700.129500 | Wooden Flooring | 5d | 2026-12-13 | 2026-12-17 | 156 |  | 7 Days Work | 9153424 |
| 158 | 36900.37000.37100.37600.38300.38700.129600 | Removing of Temporary Railing & installation of Glass Railing | 5d | 2026-12-13 | 2026-12-17 | 156 |  | 7 Days Work | 9153434 |
| 159 | 36900.37000.37100.37600.38300.38700.129700 | Tile Grouting | 7d | 2026-12-13 | 2026-12-19 | 156 |  | 7 Days Work | 9153444 |
| 160 | 36900.37000.37100.37600.38300.38700.129800 | False Ceiling | 5d | 2026-12-20 | 2026-12-24 | 159 |  | 7 Days Work | 9153454 |
| 161 | 36900.37000.37100.37600.38300.38700.129900 | 2nd coat of primer | 10d | 2026-12-25 | 2027-01-03 | 160 |  | 7 Days Work | 9153464 |
| 162 | 36900.37000.37100.37600.38300.38700.130000 | Final cutting/polishing of stone flooring | 7d | 2027-01-04 | 2027-01-10 | 161 |  | 7 Days Work | 9153474 |

| ID | WBS | Task | Duration | Start | Finish | Predecessors | Constraint | Calendar | Unique_Task_ID |
| --- | --- | --- | --- | --- | --- | --- | --- | --- | --- |
| 163 | 36900.37000.37100.37600.38300.38700.53000 | **Toilet** | 237d | 2026-05-18 | 2027-01-09 |  | start no earlier than 2026-05-18 | 7 Days Work | 9153114 |
| 164 | 36900.37000.37100.37600.38300.38700.53000.737300 | Toilet_MEP Clearance -1 | 7d | 2026-05-18 | 2026-05-24 | 127 |  | 7 Days Work | 9153484 |
| 165 | 36900.37000.37100.37600.38300.38700.53000.737400 | Toilet_Level Marking | 1d | 2026-05-25 | 2026-05-25 | 164 |  | 7 Days Work | 9153494 |
| 166 | 36900.37000.37100.37600.38300.38700.53000.737500 | Toilet_Chasing work for Electrical conduit & concealed plumbing | 5d | 2026-05-26 | 2026-05-30 | 165 |  | 7 Days Work | 9153504 |
| 167 | 36900.37000.37100.37600.38300.38700.53000.737600 | Toilet_Plumbing work 1st fix | 5d | 2026-05-31 | 2026-06-04 | 166 |  | 7 Days Work | 9153514 |
| 168 | 36900.37000.37100.37600.38300.38700.53000.737700 | Toilet_Sleeve/Bore Packing | 5d | 2026-06-05 | 2026-06-09 | 167 |  | 7 Days Work | 9153524 |
| 169 | 36900.37000.37100.37600.38300.38700.53000.737800 | Toilet_Waterproofing | 10d | 2026-06-10 | 2026-06-19 | 168 |  | 7 Days Work | 9153534 |
| 170 | 36900.37000.37100.37600.38300.38700.53000.737900 | Toilet_Screed | 1d | 2026-06-20 | 2026-06-20 | 169 |  | 7 Days Work | 9153544 |
| 171 | 36900.37000.37100.37600.38300.38700.53000.738000 | Toilet_Plumbing 2nd fix | 5d | 2026-06-21 | 2026-06-25 | 170 |  | 7 Days Work | 9153554 |
| 172 | 36900.37000.37100.37600.38300.38700.53000.738100 | Toilet_Ledge wall | 5d | 2026-06-26 | 2026-06-30 | 171 |  | 7 Days Work | 9153564 |
| 173 | 36900.37000.37100.37600.38300.38700.53000.738200 | Toilet_Cement Plaster | 5d | 2026-07-01 | 2026-07-05 | 172 |  | 7 Days Work | 9153574 |
| 174 | 36900.37000.37100.37600.38300.38700.53000.738300 | Toilet_Door Frame | 1d | 2026-07-06 | 2026-07-06 | 173 |  | 7 Days Work | 9153584 |
| 175 | 36900.37000.37100.37600.38300.38700.53000.738400 | Toilet_Wash basin & Couter | 3d | 2026-07-07 | 2026-07-09 | 174 |  | 7 Days Work | 9153594 |
| 176 | 36900.37000.37100.37600.38300.38700.53000.738500 | Toilet_Wall dado | 20d | 2026-07-10 | 2026-07-29 | 175 |  | 7 Days Work | 9153604 |
| 177 | 36900.37000.37100.37600.38300.38700.53000.738600 | Toilet_Granite Work-Ledge wall top | 3d | 2026-07-30 | 2026-08-01 | 176 |  | 7 Days Work | 9153614 |
| 178 | 36900.37000.37100.37600.38300.38700.53000.738700 | Toilet_Floor Tilling work | 20d | 2026-08-02 | 2026-08-21 | 177 |  | 7 Days Work | 9153624 |
| 179 | 36900.37000.37100.37600.38300.38700.53000.738800 | Toilet_1st row of dado | 5d | 2026-08-22 | 2026-08-26 | 178 |  | 7 Days Work | 9153634 |
| 180 | 36900.37000.37100.37600.38300.38700.53000.738900 | Toilet_Window Fixing | 14d | 2026-08-27 | 2026-09-09 | 179 |  | 7 Days Work | 9153644 |
| 181 | 36900.37000.37100.37600.38300.38700.53000.739000 | Toilet_Services above False ceiling | 21d | 2026-09-10 | 2026-09-30 | 180 |  | 7 Days Work | 9153654 |
| 182 | 36900.37000.37100.37600.38300.38700.53000.739100 | Toilet_False Ceiling framing | 12d | 2026-10-01 | 2026-10-12 | 181 |  | 7 Days Work | 9153664 |
| 183 | 36900.37000.37100.37600.38300.38700.53000.739200 | Toilet_Door Frame | 5d | 2026-10-13 | 2026-10-17 | 182 |  | 7 Days Work | 9153674 |
| 184 | 36900.37000.37100.37600.38300.38700.53000.739300 | Toilet_Epoxy Tile Grouting | 7d | 2026-12-13 | 2026-12-19 | 159SS |  | 7 Days Work | 9153684 |
| 185 | 36900.37000.37100.37600.38300.38700.53000.739400 | Toilet_False ceiling board fixing, CP Sanitary Fixture, Electric Fixture | 21d | 2026-12-20 | 2027-01-09 | 184 |  | 7 Days Work | 9153694 |
| 186 | 36900.37000.37100.37600.38300.38800 | **3rd Habitable/5th Floor** | 245d | 2026-05-20 | 2027-01-19 |  | start no earlier than 2026-05-20 | 7 Days Work | 9153704 |
| 187 | 36900.37000.37100.37600.38300.38800.130100 | Post Pour | 7d | 2026-05-20 | 2026-05-26 | 47FS+15d |  | 7 Days Work | 9153744 |
| 188 | 36900.37000.37100.37600.38300.38800.130200 | MEP Clearance -1 | 5d | 2026-05-27 | 2026-05-31 | 187 |  | 7 Days Work | 9153754 |
| 189 | 36900.37000.37100.37600.38300.38800.130300 | Benchmark | 1d | 2026-06-01 | 2026-06-01 | 188 |  | 7 Days Work | 9153764 |
| 190 | 36900.37000.37100.37600.38300.38800.130400 | Temporary Railing | 3d | 2026-06-02 | 2026-06-04 | 189 |  | 7 Days Work | 9153774 |
| 191 | 36900.37000.37100.37600.38300.38800.130500 | Blockwork | 10d | 2026-06-05 | 2026-06-14 | 190 |  | 7 Days Work | 9153784 |
| 192 | 36900.37000.37100.37600.38300.38800.130600 | MEP Clearance -2 | 10d | 2026-06-15 | 2026-06-24 | 191 |  | 7 Days Work | 9153794 |
| 193 | 36900.37000.37100.37600.38300.38800.130700 | Gypsum Plaster | 14d | 2026-06-25 | 2026-07-08 | 192 |  | 7 Days Work | 9153804 |
| 194 | 36900.37000.37100.37600.38300.38800.130800 | Kitchen Platform | 3d | 2026-07-09 | 2026-07-11 | 193 |  | 7 Days Work | 9153814 |
| 195 | 36900.37000.37100.37600.38300.38800.130900 | Kitchen dado | 7d | 2026-07-12 | 2026-07-18 | 194 |  | 7 Days Work | 9153824 |
| 196 | 36900.37000.37100.37600.38300.38800.131000 | Fire Fighting | 5d | 2026-07-19 | 2026-07-23 | 195 |  | 7 Days Work | 9153834 |
| 197 | 36900.37000.37100.37600.38300.38800.131100 | Anticapilary | 5d | 2026-07-24 | 2026-07-28 | 196 |  | 7 Days Work | 9153844 |
| 198 | 36900.37000.37100.37600.38300.38800.131200 | Stone Laying | 10d | 2026-08-31 | 2026-09-09 | 238 |  | 7 Days Work | 9153854 |
| 199 | 36900.37000.37100.37600.38300.38800.131300 | Tiles Laying | 7d | 2026-08-31 | 2026-09-06 | 238 |  | 7 Days Work | 9153864 |
| 200 | 36900.37000.37100.37600.38300.38800.131400 | 1st cutting/polishing of stone flooring | 7d | 2026-09-07 | 2026-09-13 | 199 |  | 7 Days Work | 9153874 |
| 201 | 36900.37000.37100.37600.38300.38800.131500 | Tiles/Stone skirting | 5d | 2026-09-14 | 2026-09-18 | 200 |  | 7 Days Work | 9153884 |
| 202 | 36900.37000.37100.37600.38300.38800.131600 | Protechtion sheet | 1d | 2026-09-19 | 2026-09-19 | 201 |  | 7 Days Work | 9153894 |
| 203 | 36900.37000.37100.37600.38300.38800.131700 | Installation of Temporary Door | 1d | 2026-09-20 | 2026-09-20 | 202 |  | 7 Days Work | 9153904 |
| 204 | 36900.37000.37100.37600.38300.38800.131800 | Fixing of window tracks | 5d | 2026-09-21 | 2026-09-25 | 203 |  | 7 Days Work | 9153914 |
| 205 | 36900.37000.37100.37600.38300.38800.131900 | Wire Pulling | 7d | 2026-09-26 | 2026-10-02 | 204 |  | 7 Days Work | 9153924 |
| 206 | 36900.37000.37100.37600.38300.38800.132000 | Gypsum Remaining | 5d | 2026-10-03 | 2026-10-07 | 205 |  | 7 Days Work | 9153934 |
| 207 | 36900.37000.37100.37600.38300.38800.132100 | Fixing of windoow shutter | 5d | 2026-10-08 | 2026-10-12 | 206 |  | 7 Days Work | 9153944 |
| 208 | 36900.37000.37100.37600.38300.38800.132200 | Putty Works - walls & ceiling | 15d | 2026-10-13 | 2026-10-27 | 207 |  | 7 Days Work | 9153954 |
| 209 | 36900.37000.37100.37600.38300.38800.132300 | False Ceiling- Framing | 10d | 2026-10-28 | 2026-11-06 | 208 |  | 7 Days Work | 9153964 |
| 210 | 36900.37000.37100.37600.38300.38800.132400 | Pre Hung Door | 3d | 2026-11-07 | 2026-11-09 | 209 |  | 7 Days Work | 9153974 |
| 211 | 36900.37000.37100.37600.38300.38800.132500 | Protechtion sheet | 2d | 2026-11-10 | 2026-11-11 | 210 |  | 7 Days Work | 9153984 |
| 212 | 36900.37000.37100.37600.38300.38800.132600 | Skirting near door | 2d | 2026-11-12 | 2026-11-13 | 211 |  | 7 Days Work | 9153994 |
| 213 | 36900.37000.37100.37600.38300.38800.132700 | Electrical Switch box fixing | 14d | 2026-11-14 | 2026-11-27 | 212 |  | 7 Days Work | 9154004 |
| 214 | 36900.37000.37100.37600.38300.38800.132800 | Fire Fighting painting | 5d | 2026-11-28 | 2026-12-02 | 213 |  | 7 Days Work | 9154014 |
| 215 | 36900.37000.37100.37600.38300.38800.132900 | Protection of all flooring, door & window hardware | 5d | 2026-12-03 | 2026-12-07 | 214 |  | 7 Days Work | 9154024 |
| 216 | 36900.37000.37100.37600.38300.38800.133000 | 1st coat primer- ceiling 1st & walls | 14d | 2026-12-08 | 2026-12-21 | 215 |  | 7 Days Work | 9154034 |
| 217 | 36900.37000.37100.37600.38300.38800.133100 | Wooden Flooring | 5d | 2026-12-22 | 2026-12-26 | 216 |  | 7 Days Work | 9154044 |
| 218 | 36900.37000.37100.37600.38300.38800.133200 | Removing of Temporary Railing & installation of Glass Railing | 5d | 2026-12-22 | 2026-12-26 | 216 |  | 7 Days Work | 9154054 |
| 219 | 36900.37000.37100.37600.38300.38800.133300 | Tile Grouting | 7d | 2026-12-22 | 2026-12-28 | 216 |  | 7 Days Work | 9154064 |
| 220 | 36900.37000.37100.37600.38300.38800.133400 | False Ceiling | 5d | 2026-12-29 | 2027-01-02 | 219 |  | 7 Days Work | 9154074 |
| 221 | 36900.37000.37100.37600.38300.38800.133500 | 2nd coat of primer | 10d | 2027-01-03 | 2027-01-12 | 220 |  | 7 Days Work | 9154084 |
| 222 | 36900.37000.37100.37600.38300.38800.133600 | Final cutting/polishing of stone flooring | 7d | 2027-01-13 | 2027-01-19 | 221 |  | 7 Days Work | 9154094 |

| ID | WBS | Task | Duration | Start | Finish | Predecessors | Constraint | Calendar | Unique_Task_ID |
| --- | --- | --- | --- | --- | --- | --- | --- | --- | --- |
| 223 | 36900.37000.37100.37600.38300.38800.53100 | **Toilet** | 237d | 2026-05-27 | 2027-01-18 |  | start no earlier than 2026-05-27 | 7 Days Work | 9153724 |
| 224 | 36900.37000.37100.37600.38300.38800.53100.739500 | Toilet_MEP Clearance -1 | 7d | 2026-05-27 | 2026-06-02 | 187 |  | 7 Days Work | 9154464 |
| 225 | 36900.37000.37100.37600.38300.38800.53100.739600 | Toilet_Level Marking | 1d | 2026-06-03 | 2026-06-03 | 224 |  | 7 Days Work | 9154474 |
| 226 | 36900.37000.37100.37600.38300.38800.53100.739700 | Toilet_Chasing work for Electrical conduit & concealed plumbing | 5d | 2026-06-04 | 2026-06-08 | 225 |  | 7 Days Work | 9154484 |
| 227 | 36900.37000.37100.37600.38300.38800.53100.739800 | Toilet_Plumbing work 1st fix | 5d | 2026-06-09 | 2026-06-13 | 226 |  | 7 Days Work | 9154494 |
| 228 | 36900.37000.37100.37600.38300.38800.53100.739900 | Toilet_Sleeve/Bore Packing | 5d | 2026-06-14 | 2026-06-18 | 227 |  | 7 Days Work | 9154504 |
| 229 | 36900.37000.37100.37600.38300.38800.53100.740000 | Toilet_Waterproofing | 10d | 2026-06-19 | 2026-06-28 | 228 |  | 7 Days Work | 9154514 |
| 230 | 36900.37000.37100.37600.38300.38800.53100.740100 | Toilet_Screed | 1d | 2026-06-29 | 2026-06-29 | 229 |  | 7 Days Work | 9154524 |
| 231 | 36900.37000.37100.37600.38300.38800.53100.740200 | Toilet_Plumbing 2nd fix | 5d | 2026-06-30 | 2026-07-04 | 230 |  | 7 Days Work | 9154534 |
| 232 | 36900.37000.37100.37600.38300.38800.53100.740300 | Toilet_Ledge wall | 5d | 2026-07-05 | 2026-07-09 | 231 |  | 7 Days Work | 9154544 |
| 233 | 36900.37000.37100.37600.38300.38800.53100.740400 | Toilet_Cement Plaster | 5d | 2026-07-10 | 2026-07-14 | 232 |  | 7 Days Work | 9154554 |
| 234 | 36900.37000.37100.37600.38300.38800.53100.740500 | Toilet_Door Frame | 1d | 2026-07-15 | 2026-07-15 | 233 |  | 7 Days Work | 9154564 |
| 235 | 36900.37000.37100.37600.38300.38800.53100.740600 | Toilet_Wash basin & Couter | 3d | 2026-07-16 | 2026-07-18 | 234 |  | 7 Days Work | 9154574 |
| 236 | 36900.37000.37100.37600.38300.38800.53100.740700 | Toilet_Wall dado | 20d | 2026-07-19 | 2026-08-07 | 235 |  | 7 Days Work | 9154584 |
| 237 | 36900.37000.37100.37600.38300.38800.53100.740800 | Toilet_Granite Work-Ledge wall top | 3d | 2026-08-08 | 2026-08-10 | 236 |  | 7 Days Work | 9154594 |
| 238 | 36900.37000.37100.37600.38300.38800.53100.740900 | Toilet_Floor Tilling work | 20d | 2026-08-11 | 2026-08-30 | 237 |  | 7 Days Work | 9154604 |
| 239 | 36900.37000.37100.37600.38300.38800.53100.741000 | Toilet_1st row of dado | 5d | 2026-08-31 | 2026-09-04 | 238 |  | 7 Days Work | 9154614 |
| 240 | 36900.37000.37100.37600.38300.38800.53100.741100 | Toilet_Window Fixing | 14d | 2026-09-05 | 2026-09-18 | 239 |  | 7 Days Work | 9154624 |
| 241 | 36900.37000.37100.37600.38300.38800.53100.741200 | Toilet_Services above False ceiling | 21d | 2026-09-19 | 2026-10-09 | 240 |  | 7 Days Work | 9154634 |
| 242 | 36900.37000.37100.37600.38300.38800.53100.741300 | Toilet_False Ceiling framing | 12d | 2026-10-10 | 2026-10-21 | 241 |  | 7 Days Work | 9154644 |
| 243 | 36900.37000.37100.37600.38300.38800.53100.741400 | Toilet_Door Frame | 5d | 2026-10-22 | 2026-10-26 | 242 |  | 7 Days Work | 9154654 |
| 244 | 36900.37000.37100.37600.38300.38800.53100.741500 | Toilet_Epoxy Tile Grouting | 7d | 2026-12-22 | 2026-12-28 | 219SS |  | 7 Days Work | 9154664 |
| 245 | 36900.37000.37100.37600.38300.38800.53100.741600 | Toilet_False ceiling board fixing, CP Sanitary Fixture, Electric Fixture | 21d | 2026-12-29 | 2027-01-18 | 244 |  | 7 Days Work | 9154674 |
| 246 | 36900.37000.37100.37600.38300.38900 | **4th Habitable/6th Floor** | 245d | 2026-06-01 | 2027-01-31 |  | start no earlier than 2026-06-01 | 7 Days Work | 9153714 |
| 247 | 36900.37000.37100.37600.38300.38900.133700 | Post Pour | 7d | 2026-06-01 | 2026-06-07 | 48FS+15d |  | 7 Days Work | 9154104 |
| 248 | 36900.37000.37100.37600.38300.38900.133800 | MEP Clearance -1 | 5d | 2026-06-08 | 2026-06-12 | 247 |  | 7 Days Work | 9154114 |
| 249 | 36900.37000.37100.37600.38300.38900.133900 | Benchmark | 1d | 2026-06-13 | 2026-06-13 | 248 |  | 7 Days Work | 9154124 |
| 250 | 36900.37000.37100.37600.38300.38900.134000 | Temporary Railing | 3d | 2026-06-14 | 2026-06-16 | 249 |  | 7 Days Work | 9154134 |
| 251 | 36900.37000.37100.37600.38300.38900.134100 | Blockwork | 10d | 2026-06-17 | 2026-06-26 | 250 |  | 7 Days Work | 9154144 |
| 252 | 36900.37000.37100.37600.38300.38900.134200 | MEP Clearance -2 | 10d | 2026-06-27 | 2026-07-06 | 251 |  | 7 Days Work | 9154154 |
| 253 | 36900.37000.37100.37600.38300.38900.134300 | Gypsum Plaster | 14d | 2026-07-07 | 2026-07-20 | 252 |  | 7 Days Work | 9154164 |
| 254 | 36900.37000.37100.37600.38300.38900.134400 | Kitchen Platform | 3d | 2026-07-21 | 2026-07-23 | 253 |  | 7 Days Work | 9154174 |
| 255 | 36900.37000.37100.37600.38300.38900.134500 | Kitchen dado | 7d | 2026-07-24 | 2026-07-30 | 254 |  | 7 Days Work | 9154184 |
| 256 | 36900.37000.37100.37600.38300.38900.134600 | Fire Fighting | 5d | 2026-07-31 | 2026-08-04 | 255 |  | 7 Days Work | 9154194 |
| 257 | 36900.37000.37100.37600.38300.38900.134700 | Anticapilary | 5d | 2026-08-05 | 2026-08-09 | 256 |  | 7 Days Work | 9154204 |
| 258 | 36900.37000.37100.37600.38300.38900.134800 | Stone Laying | 10d | 2026-09-12 | 2026-09-21 | 298 |  | 7 Days Work | 9154214 |
| 259 | 36900.37000.37100.37600.38300.38900.134900 | Tiles Laying | 7d | 2026-09-12 | 2026-09-18 | 298 |  | 7 Days Work | 9154224 |
| 260 | 36900.37000.37100.37600.38300.38900.135000 | 1st cutting/polishing of stone flooring | 7d | 2026-09-19 | 2026-09-25 | 259 |  | 7 Days Work | 9154234 |
| 261 | 36900.37000.37100.37600.38300.38900.135100 | Tiles/Stone skirting | 5d | 2026-09-26 | 2026-09-30 | 260 |  | 7 Days Work | 9154244 |
| 262 | 36900.37000.37100.37600.38300.38900.135200 | Protechtion sheet | 1d | 2026-10-01 | 2026-10-01 | 261 |  | 7 Days Work | 9154254 |
| 263 | 36900.37000.37100.37600.38300.38900.135300 | Installation of Temporary Door | 1d | 2026-10-02 | 2026-10-02 | 262 |  | 7 Days Work | 9154264 |
| 264 | 36900.37000.37100.37600.38300.38900.135400 | Fixing of window tracks | 5d | 2026-10-03 | 2026-10-07 | 263 |  | 7 Days Work | 9154274 |
| 265 | 36900.37000.37100.37600.38300.38900.135500 | Wire Pulling | 7d | 2026-10-08 | 2026-10-14 | 264 |  | 7 Days Work | 9154284 |
| 266 | 36900.37000.37100.37600.38300.38900.135600 | Gypsum Remaining | 5d | 2026-10-15 | 2026-10-19 | 265 |  | 7 Days Work | 9154294 |
| 267 | 36900.37000.37100.37600.38300.38900.135700 | Fixing of windoow shutter | 5d | 2026-10-20 | 2026-10-24 | 266 |  | 7 Days Work | 9154304 |
| 268 | 36900.37000.37100.37600.38300.38900.135800 | Putty Works - walls & ceiling | 15d | 2026-10-25 | 2026-11-08 | 267 |  | 7 Days Work | 9154314 |
| 269 | 36900.37000.37100.37600.38300.38900.135900 | False Ceiling- Framing | 10d | 2026-11-09 | 2026-11-18 | 268 |  | 7 Days Work | 9154324 |
| 270 | 36900.37000.37100.37600.38300.38900.136000 | Pre Hung Door | 3d | 2026-11-19 | 2026-11-21 | 269 |  | 7 Days Work | 9154334 |
| 271 | 36900.37000.37100.37600.38300.38900.136100 | Protechtion sheet | 2d | 2026-11-22 | 2026-11-23 | 270 |  | 7 Days Work | 9154344 |
| 272 | 36900.37000.37100.37600.38300.38900.136200 | Skirting near door | 2d | 2026-11-24 | 2026-11-25 | 271 |  | 7 Days Work | 9154354 |
| 273 | 36900.37000.37100.37600.38300.38900.136300 | Electrical Switch box fixing | 14d | 2026-11-26 | 2026-12-09 | 272 |  | 7 Days Work | 9154364 |
| 274 | 36900.37000.37100.37600.38300.38900.136400 | Fire Fighting painting | 5d | 2026-12-10 | 2026-12-14 | 273 |  | 7 Days Work | 9154374 |
| 275 | 36900.37000.37100.37600.38300.38900.136500 | Protection of all flooring, door & window hardware | 5d | 2026-12-15 | 2026-12-19 | 274 |  | 7 Days Work | 9154384 |
| 276 | 36900.37000.37100.37600.38300.38900.136600 | 1st coat primer- ceiling 1st & walls | 14d | 2026-12-20 | 2027-01-02 | 275 |  | 7 Days Work | 9154394 |
| 277 | 36900.37000.37100.37600.38300.38900.136700 | Wooden Flooring | 5d | 2027-01-03 | 2027-01-07 | 276 |  | 7 Days Work | 9154404 |
| 278 | 36900.37000.37100.37600.38300.38900.136800 | Removing of Temporary Railing & installation of Glass Railing | 5d | 2027-01-03 | 2027-01-07 | 276 |  | 7 Days Work | 9154414 |
| 279 | 36900.37000.37100.37600.38300.38900.136900 | Tile Grouting | 7d | 2027-01-03 | 2027-01-09 | 276 |  | 7 Days Work | 9154424 |
| 280 | 36900.37000.37100.37600.38300.38900.137000 | False Ceiling | 5d | 2027-01-10 | 2027-01-14 | 279 |  | 7 Days Work | 9154434 |
| 281 | 36900.37000.37100.37600.38300.38900.137100 | 2nd coat of primer | 10d | 2027-01-15 | 2027-01-24 | 280 |  | 7 Days Work | 9154444 |
| 282 | 36900.37000.37100.37600.38300.38900.137200 | Final cutting/polishing of stone flooring | 7d | 2027-01-25 | 2027-01-31 | 281 |  | 7 Days Work | 9154454 |

| ID | WBS | Task | Duration | Start | Finish | Predecessors | Constraint | Calendar | Unique_Task_ID |
| --- | --- | --- | --- | --- | --- | --- | --- | --- | --- |
| 283 | 36900.37000.37100.37600.38300.38900.53200 | **Toilet** | 237d | 2026-06-08 | 2027-01-30 |  | start no earlier than 2026-06-08 | 7 Days Work | 9153734 |
| 284 | 36900.37000.37100.37600.38300.38900.53200.741700 | Toilet_MEP Clearance -1 | 7d | 2026-06-08 | 2026-06-14 | 247 |  | 7 Days Work | 9154684 |
| 285 | 36900.37000.37100.37600.38300.38900.53200.741800 | Toilet_Level Marking | 1d | 2026-06-15 | 2026-06-15 | 284 |  | 7 Days Work | 9154694 |
| 286 | 36900.37000.37100.37600.38300.38900.53200.741900 | Toilet_Chasing work for Electrical conduit & concealed plumbing | 5d | 2026-06-16 | 2026-06-20 | 285 |  | 7 Days Work | 9154704 |
| 287 | 36900.37000.37100.37600.38300.38900.53200.742000 | Toilet_Plumbing work 1st fix | 5d | 2026-06-21 | 2026-06-25 | 286 |  | 7 Days Work | 9154714 |
| 288 | 36900.37000.37100.37600.38300.38900.53200.742100 | Toilet_Sleeve/Bore Packing | 5d | 2026-06-26 | 2026-06-30 | 287 |  | 7 Days Work | 9154724 |
| 289 | 36900.37000.37100.37600.38300.38900.53200.742200 | Toilet_Waterproofing | 10d | 2026-07-01 | 2026-07-10 | 288 |  | 7 Days Work | 9154734 |
| 290 | 36900.37000.37100.37600.38300.38900.53200.742300 | Toilet_Screed | 1d | 2026-07-11 | 2026-07-11 | 289 |  | 7 Days Work | 9154744 |
| 291 | 36900.37000.37100.37600.38300.38900.53200.742400 | Toilet_Plumbing 2nd fix | 5d | 2026-07-12 | 2026-07-16 | 290 |  | 7 Days Work | 9154754 |
| 292 | 36900.37000.37100.37600.38300.38900.53200.742500 | Toilet_Ledge wall | 5d | 2026-07-17 | 2026-07-21 | 291 |  | 7 Days Work | 9154764 |
| 293 | 36900.37000.37100.37600.38300.38900.53200.742600 | Toilet_Cement Plaster | 5d | 2026-07-22 | 2026-07-26 | 292 |  | 7 Days Work | 9154774 |
| 294 | 36900.37000.37100.37600.38300.38900.53200.742700 | Toilet_Door Frame | 1d | 2026-07-27 | 2026-07-27 | 293 |  | 7 Days Work | 9154784 |
| 295 | 36900.37000.37100.37600.38300.38900.53200.742800 | Toilet_Wash basin & Couter | 3d | 2026-07-28 | 2026-07-30 | 294 |  | 7 Days Work | 9154794 |
| 296 | 36900.37000.37100.37600.38300.38900.53200.742900 | Toilet_Wall dado | 20d | 2026-07-31 | 2026-08-19 | 295 |  | 7 Days Work | 9154804 |
| 297 | 36900.37000.37100.37600.38300.38900.53200.743000 | Toilet_Granite Work-Ledge wall top | 3d | 2026-08-20 | 2026-08-22 | 296 |  | 7 Days Work | 9154814 |
| 298 | 36900.37000.37100.37600.38300.38900.53200.743100 | Toilet_Floor Tilling work | 20d | 2026-08-23 | 2026-09-11 | 297 |  | 7 Days Work | 9154824 |
| 299 | 36900.37000.37100.37600.38300.38900.53200.743200 | Toilet_1st row of dado | 5d | 2026-09-12 | 2026-09-16 | 298 |  | 7 Days Work | 9154834 |
| 300 | 36900.37000.37100.37600.38300.38900.53200.743300 | Toilet_Window Fixing | 14d | 2026-09-17 | 2026-09-30 | 299 |  | 7 Days Work | 9154844 |
| 301 | 36900.37000.37100.37600.38300.38900.53200.743400 | Toilet_Services above False ceiling | 21d | 2026-10-01 | 2026-10-21 | 300 |  | 7 Days Work | 9154854 |
| 302 | 36900.37000.37100.37600.38300.38900.53200.743500 | Toilet_False Ceiling framing | 12d | 2026-10-22 | 2026-11-02 | 301 |  | 7 Days Work | 9154864 |
| 303 | 36900.37000.37100.37600.38300.38900.53200.743600 | Toilet_Door Frame | 5d | 2026-11-03 | 2026-11-07 | 302 |  | 7 Days Work | 9154874 |
| 304 | 36900.37000.37100.37600.38300.38900.53200.743700 | Toilet_Epoxy Tile Grouting | 7d | 2027-01-03 | 2027-01-09 | 279SS |  | 7 Days Work | 9154884 |
| 305 | 36900.37000.37100.37600.38300.38900.53200.743800 | Toilet_False ceiling board fixing, CP Sanitary Fixture, Electric Fixture | 21d | 2027-01-10 | 2027-01-30 | 304 |  | 7 Days Work | 9154894 |
| 306 | 36900.37000.37100.37600.38300.39000 | **5th Habitable/7th Floor** | 245d | 2026-06-10 | 2027-02-09 |  | start no earlier than 2026-06-10 | 7 Days Work | 9154904 |
| 307 | 36900.37000.37100.37600.38300.39000.137300 | Post Pour | 7d | 2026-06-10 | 2026-06-16 | 49FS+15d |  | 7 Days Work | 9154984 |
| 308 | 36900.37000.37100.37600.38300.39000.137400 | MEP Clearance -1 | 5d | 2026-06-17 | 2026-06-21 | 307 |  | 7 Days Work | 9154994 |
| 309 | 36900.37000.37100.37600.38300.39000.137500 | Benchmark | 1d | 2026-06-22 | 2026-06-22 | 308 |  | 7 Days Work | 9155004 |
| 310 | 36900.37000.37100.37600.38300.39000.137600 | Temporary Railing | 3d | 2026-06-23 | 2026-06-25 | 309 |  | 7 Days Work | 9155014 |
| 311 | 36900.37000.37100.37600.38300.39000.137700 | Blockwork | 10d | 2026-06-26 | 2026-07-05 | 310 |  | 7 Days Work | 9155024 |
| 312 | 36900.37000.37100.37600.38300.39000.137800 | MEP Clearance -2 | 10d | 2026-07-06 | 2026-07-15 | 311 |  | 7 Days Work | 9155034 |
| 313 | 36900.37000.37100.37600.38300.39000.137900 | Gypsum Plaster | 14d | 2026-07-16 | 2026-07-29 | 312 |  | 7 Days Work | 9155044 |
| 314 | 36900.37000.37100.37600.38300.39000.138000 | Kitchen Platform | 3d | 2026-07-30 | 2026-08-01 | 313 |  | 7 Days Work | 9155054 |
| 315 | 36900.37000.37100.37600.38300.39000.138100 | Kitchen dado | 7d | 2026-08-02 | 2026-08-08 | 314 |  | 7 Days Work | 9155064 |
| 316 | 36900.37000.37100.37600.38300.39000.138200 | Fire Fighting | 5d | 2026-08-09 | 2026-08-13 | 315 |  | 7 Days Work | 9155074 |
| 317 | 36900.37000.37100.37600.38300.39000.138300 | Anticapilary | 5d | 2026-08-14 | 2026-08-18 | 316 |  | 7 Days Work | 9155084 |
| 318 | 36900.37000.37100.37600.38300.39000.138400 | Stone Laying | 10d | 2026-09-21 | 2026-09-30 | 358 |  | 7 Days Work | 9155094 |
| 319 | 36900.37000.37100.37600.38300.39000.138500 | Tiles Laying | 7d | 2026-09-21 | 2026-09-27 | 358 |  | 7 Days Work | 9155104 |
| 320 | 36900.37000.37100.37600.38300.39000.138600 | 1st cutting/polishing of stone flooring | 7d | 2026-09-28 | 2026-10-04 | 319 |  | 7 Days Work | 9155114 |
| 321 | 36900.37000.37100.37600.38300.39000.138700 | Tiles/Stone skirting | 5d | 2026-10-05 | 2026-10-09 | 320 |  | 7 Days Work | 9155124 |
| 322 | 36900.37000.37100.37600.38300.39000.138800 | Protechtion sheet | 1d | 2026-10-10 | 2026-10-10 | 321 |  | 7 Days Work | 9155134 |
| 323 | 36900.37000.37100.37600.38300.39000.138900 | Installation of Temporary Door | 1d | 2026-10-11 | 2026-10-11 | 322 |  | 7 Days Work | 9155144 |
| 324 | 36900.37000.37100.37600.38300.39000.139000 | Fixing of window tracks | 5d | 2026-10-12 | 2026-10-16 | 323 |  | 7 Days Work | 9155154 |
| 325 | 36900.37000.37100.37600.38300.39000.139100 | Wire Pulling | 7d | 2026-10-17 | 2026-10-23 | 324 |  | 7 Days Work | 9155164 |
| 326 | 36900.37000.37100.37600.38300.39000.139200 | Gypsum Remaining | 5d | 2026-10-24 | 2026-10-28 | 325 |  | 7 Days Work | 9155174 |
| 327 | 36900.37000.37100.37600.38300.39000.139300 | Fixing of windoow shutter | 5d | 2026-10-29 | 2026-11-02 | 326 |  | 7 Days Work | 9155184 |
| 328 | 36900.37000.37100.37600.38300.39000.139400 | Putty Works - walls & ceiling | 15d | 2026-11-03 | 2026-11-17 | 327 |  | 7 Days Work | 9155194 |
| 329 | 36900.37000.37100.37600.38300.39000.139500 | False Ceiling- Framing | 10d | 2026-11-18 | 2026-11-27 | 328 |  | 7 Days Work | 9155204 |
| 330 | 36900.37000.37100.37600.38300.39000.139600 | Pre Hung Door | 3d | 2026-11-28 | 2026-11-30 | 329 |  | 7 Days Work | 9155214 |
| 331 | 36900.37000.37100.37600.38300.39000.139700 | Protechtion sheet | 2d | 2026-12-01 | 2026-12-02 | 330 |  | 7 Days Work | 9155224 |
| 332 | 36900.37000.37100.37600.38300.39000.139800 | Skirting near door | 2d | 2026-12-03 | 2026-12-04 | 331 |  | 7 Days Work | 9155234 |
| 333 | 36900.37000.37100.37600.38300.39000.139900 | Electrical Switch box fixing | 14d | 2026-12-05 | 2026-12-18 | 332 |  | 7 Days Work | 9155244 |
| 334 | 36900.37000.37100.37600.38300.39000.140000 | Fire Fighting painting | 5d | 2026-12-19 | 2026-12-23 | 333 |  | 7 Days Work | 9155254 |
| 335 | 36900.37000.37100.37600.38300.39000.140100 | Protection of all flooring, door & window hardware | 5d | 2026-12-24 | 2026-12-28 | 334 |  | 7 Days Work | 9155264 |
| 336 | 36900.37000.37100.37600.38300.39000.140200 | 1st coat primer- ceiling 1st & walls | 14d | 2026-12-29 | 2027-01-11 | 335 |  | 7 Days Work | 9155274 |
| 337 | 36900.37000.37100.37600.38300.39000.140300 | Wooden Flooring | 5d | 2027-01-12 | 2027-01-16 | 336 |  | 7 Days Work | 9155284 |
| 338 | 36900.37000.37100.37600.38300.39000.140400 | Removing of Temporary Railing & installation of Glass Railing | 5d | 2027-01-12 | 2027-01-16 | 336 |  | 7 Days Work | 9155294 |
| 339 | 36900.37000.37100.37600.38300.39000.140500 | Tile Grouting | 7d | 2027-01-12 | 2027-01-18 | 336 |  | 7 Days Work | 9155304 |
| 340 | 36900.37000.37100.37600.38300.39000.140600 | False Ceiling | 5d | 2027-01-19 | 2027-01-23 | 339 |  | 7 Days Work | 9155314 |
| 341 | 36900.37000.37100.37600.38300.39000.140700 | 2nd coat of primer | 10d | 2027-01-24 | 2027-02-02 | 340 |  | 7 Days Work | 9155324 |
| 342 | 36900.37000.37100.37600.38300.39000.140800 | Final cutting/polishing of stone flooring | 7d | 2027-02-03 | 2027-02-09 | 341 |  | 7 Days Work | 9155334 |

| ID | WBS | Task | Duration | Start | Finish | Predecessors | Constraint | Calendar | Unique_Task_ID |
| --- | --- | --- | --- | --- | --- | --- | --- | --- | --- |
| 343 | 36900.37000.37100.37600.38300.39000.53300 | **Toilet** | 237d | 2026-06-17 | 2027-02-08 |  | start no earlier than 2026-06-17 | 7 Days Work | 9154944 |
| 344 | 36900.37000.37100.37600.38300.39000.53300.743900 | Toilet_MEP Clearance -1 | 7d | 2026-06-17 | 2026-06-23 | 307 |  | 7 Days Work | 9156424 |
| 345 | 36900.37000.37100.37600.38300.39000.53300.744000 | Toilet_Level Marking | 1d | 2026-06-24 | 2026-06-24 | 344 |  | 7 Days Work | 9156434 |
| 346 | 36900.37000.37100.37600.38300.39000.53300.744100 | Toilet_Chasing work for Electrical conduit & concealed plumbing | 5d | 2026-06-25 | 2026-06-29 | 345 |  | 7 Days Work | 9156444 |
| 347 | 36900.37000.37100.37600.38300.39000.53300.744200 | Toilet_Plumbing work 1st fix | 5d | 2026-06-30 | 2026-07-04 | 346 |  | 7 Days Work | 9156454 |
| 348 | 36900.37000.37100.37600.38300.39000.53300.744300 | Toilet_Sleeve/Bore Packing | 5d | 2026-07-05 | 2026-07-09 | 347 |  | 7 Days Work | 9156464 |
| 349 | 36900.37000.37100.37600.38300.39000.53300.744400 | Toilet_Waterproofing | 10d | 2026-07-10 | 2026-07-19 | 348 |  | 7 Days Work | 9156474 |
| 350 | 36900.37000.37100.37600.38300.39000.53300.744500 | Toilet_Screed | 1d | 2026-07-20 | 2026-07-20 | 349 |  | 7 Days Work | 9156484 |
| 351 | 36900.37000.37100.37600.38300.39000.53300.744600 | Toilet_Plumbing 2nd fix | 5d | 2026-07-21 | 2026-07-25 | 350 |  | 7 Days Work | 9156494 |
| 352 | 36900.37000.37100.37600.38300.39000.53300.744700 | Toilet_Ledge wall | 5d | 2026-07-26 | 2026-07-30 | 351 |  | 7 Days Work | 9156504 |
| 353 | 36900.37000.37100.37600.38300.39000.53300.744800 | Toilet_Cement Plaster | 5d | 2026-07-31 | 2026-08-04 | 352 |  | 7 Days Work | 9156514 |
| 354 | 36900.37000.37100.37600.38300.39000.53300.744900 | Toilet_Door Frame | 1d | 2026-08-05 | 2026-08-05 | 353 |  | 7 Days Work | 9156524 |
| 355 | 36900.37000.37100.37600.38300.39000.53300.745000 | Toilet_Wash basin & Couter | 3d | 2026-08-06 | 2026-08-08 | 354 |  | 7 Days Work | 9156534 |
| 356 | 36900.37000.37100.37600.38300.39000.53300.745100 | Toilet_Wall dado | 20d | 2026-08-09 | 2026-08-28 | 355 |  | 7 Days Work | 9156544 |
| 357 | 36900.37000.37100.37600.38300.39000.53300.745200 | Toilet_Granite Work-Ledge wall top | 3d | 2026-08-29 | 2026-08-31 | 356 |  | 7 Days Work | 9156554 |
| 358 | 36900.37000.37100.37600.38300.39000.53300.745300 | Toilet_Floor Tilling work | 20d | 2026-09-01 | 2026-09-20 | 357 |  | 7 Days Work | 9156564 |
| 359 | 36900.37000.37100.37600.38300.39000.53300.745400 | Toilet_1st row of dado | 5d | 2026-09-21 | 2026-09-25 | 358 |  | 7 Days Work | 9156574 |
| 360 | 36900.37000.37100.37600.38300.39000.53300.745500 | Toilet_Window Fixing | 14d | 2026-09-26 | 2026-10-09 | 359 |  | 7 Days Work | 9156584 |
| 361 | 36900.37000.37100.37600.38300.39000.53300.745600 | Toilet_Services above False ceiling | 21d | 2026-10-10 | 2026-10-30 | 360 |  | 7 Days Work | 9156594 |
| 362 | 36900.37000.37100.37600.38300.39000.53300.745700 | Toilet_False Ceiling framing | 12d | 2026-10-31 | 2026-11-11 | 361 |  | 7 Days Work | 9156604 |
| 363 | 36900.37000.37100.37600.38300.39000.53300.745800 | Toilet_Door Frame | 5d | 2026-11-12 | 2026-11-16 | 362 |  | 7 Days Work | 9156614 |
| 364 | 36900.37000.37100.37600.38300.39000.53300.745900 | Toilet_Epoxy Tile Grouting | 7d | 2027-01-12 | 2027-01-18 | 339SS |  | 7 Days Work | 9156624 |
| 365 | 36900.37000.37100.37600.38300.39000.53300.746000 | Toilet_False ceiling board fixing, CP Sanitary Fixture, Electric Fixture | 21d | 2027-01-19 | 2027-02-08 | 364 |  | 7 Days Work | 9156634 |
| 366 | 36900.37000.37100.37600.38300.39100 | **6th Habitable/8th Floor** | 245d | 2026-06-19 | 2027-02-18 |  | start no earlier than 2026-06-19 | 7 Days Work | 9154914 |
| 367 | 36900.37000.37100.37600.38300.39100.140900 | Post Pour | 7d | 2026-06-19 | 2026-06-25 | 50FS+15d |  | 7 Days Work | 9155344 |
| 368 | 36900.37000.37100.37600.38300.39100.141000 | MEP Clearance -1 | 5d | 2026-06-26 | 2026-06-30 | 367 |  | 7 Days Work | 9155354 |
| 369 | 36900.37000.37100.37600.38300.39100.141100 | Benchmark | 1d | 2026-07-01 | 2026-07-01 | 368 |  | 7 Days Work | 9155364 |
| 370 | 36900.37000.37100.37600.38300.39100.141200 | Temporary Railing | 3d | 2026-07-02 | 2026-07-04 | 369 |  | 7 Days Work | 9155374 |
| 371 | 36900.37000.37100.37600.38300.39100.141300 | Blockwork | 10d | 2026-07-05 | 2026-07-14 | 370 |  | 7 Days Work | 9155384 |
| 372 | 36900.37000.37100.37600.38300.39100.141400 | MEP Clearance -2 | 10d | 2026-07-15 | 2026-07-24 | 371 |  | 7 Days Work | 9155394 |
| 373 | 36900.37000.37100.37600.38300.39100.141500 | Gypsum Plaster | 14d | 2026-07-25 | 2026-08-07 | 372 |  | 7 Days Work | 9155404 |
| 374 | 36900.37000.37100.37600.38300.39100.141600 | Kitchen Platform | 3d | 2026-08-08 | 2026-08-10 | 373 |  | 7 Days Work | 9155414 |
| 375 | 36900.37000.37100.37600.38300.39100.141700 | Kitchen dado | 7d | 2026-08-11 | 2026-08-17 | 374 |  | 7 Days Work | 9155424 |
| 376 | 36900.37000.37100.37600.38300.39100.141800 | Fire Fighting | 5d | 2026-08-18 | 2026-08-22 | 375 |  | 7 Days Work | 9155434 |
| 377 | 36900.37000.37100.37600.38300.39100.141900 | Anticapilary | 5d | 2026-08-23 | 2026-08-27 | 376 |  | 7 Days Work | 9155444 |
| 378 | 36900.37000.37100.37600.38300.39100.142000 | Stone Laying | 10d | 2026-09-30 | 2026-10-09 | 418 |  | 7 Days Work | 9155454 |
| 379 | 36900.37000.37100.37600.38300.39100.142100 | Tiles Laying | 7d | 2026-09-30 | 2026-10-06 | 418 |  | 7 Days Work | 9155464 |
| 380 | 36900.37000.37100.37600.38300.39100.142200 | 1st cutting/polishing of stone flooring | 7d | 2026-10-07 | 2026-10-13 | 379 |  | 7 Days Work | 9155474 |
| 381 | 36900.37000.37100.37600.38300.39100.142300 | Tiles/Stone skirting | 5d | 2026-10-14 | 2026-10-18 | 380 |  | 7 Days Work | 9155484 |
| 382 | 36900.37000.37100.37600.38300.39100.142400 | Protechtion sheet | 1d | 2026-10-19 | 2026-10-19 | 381 |  | 7 Days Work | 9155494 |
| 383 | 36900.37000.37100.37600.38300.39100.142500 | Installation of Temporary Door | 1d | 2026-10-20 | 2026-10-20 | 382 |  | 7 Days Work | 9155504 |
| 384 | 36900.37000.37100.37600.38300.39100.142600 | Fixing of window tracks | 5d | 2026-10-21 | 2026-10-25 | 383 |  | 7 Days Work | 9155514 |
| 385 | 36900.37000.37100.37600.38300.39100.142700 | Wire Pulling | 7d | 2026-10-26 | 2026-11-01 | 384 |  | 7 Days Work | 9155524 |
| 386 | 36900.37000.37100.37600.38300.39100.142800 | Gypsum Remaining | 5d | 2026-11-02 | 2026-11-06 | 385 |  | 7 Days Work | 9155534 |
| 387 | 36900.37000.37100.37600.38300.39100.142900 | Fixing of windoow shutter | 5d | 2026-11-07 | 2026-11-11 | 386 |  | 7 Days Work | 9155544 |
| 388 | 36900.37000.37100.37600.38300.39100.143000 | Putty Works - walls & ceiling | 15d | 2026-11-12 | 2026-11-26 | 387 |  | 7 Days Work | 9155554 |
| 389 | 36900.37000.37100.37600.38300.39100.143100 | False Ceiling- Framing | 10d | 2026-11-27 | 2026-12-06 | 388 |  | 7 Days Work | 9155564 |
| 390 | 36900.37000.37100.37600.38300.39100.143200 | Pre Hung Door | 3d | 2026-12-07 | 2026-12-09 | 389 |  | 7 Days Work | 9155574 |
| 391 | 36900.37000.37100.37600.38300.39100.143300 | Protechtion sheet | 2d | 2026-12-10 | 2026-12-11 | 390 |  | 7 Days Work | 9155584 |
| 392 | 36900.37000.37100.37600.38300.39100.143400 | Skirting near door | 2d | 2026-12-12 | 2026-12-13 | 391 |  | 7 Days Work | 9155594 |
| 393 | 36900.37000.37100.37600.38300.39100.143500 | Electrical Switch box fixing | 14d | 2026-12-14 | 2026-12-27 | 392 |  | 7 Days Work | 9155604 |
| 394 | 36900.37000.37100.37600.38300.39100.143600 | Fire Fighting painting | 5d | 2026-12-28 | 2027-01-01 | 393 |  | 7 Days Work | 9155614 |
| 395 | 36900.37000.37100.37600.38300.39100.143700 | Protection of all flooring, door & window hardware | 5d | 2027-01-02 | 2027-01-06 | 394 |  | 7 Days Work | 9155624 |
| 396 | 36900.37000.37100.37600.38300.39100.143800 | 1st coat primer- ceiling 1st & walls | 14d | 2027-01-07 | 2027-01-20 | 395 |  | 7 Days Work | 9155634 |
| 397 | 36900.37000.37100.37600.38300.39100.143900 | Wooden Flooring | 5d | 2027-01-21 | 2027-01-25 | 396 |  | 7 Days Work | 9155644 |
| 398 | 36900.37000.37100.37600.38300.39100.144000 | Removing of Temporary Railing & installation of Glass Railing | 5d | 2027-01-21 | 2027-01-25 | 396 |  | 7 Days Work | 9155654 |
| 399 | 36900.37000.37100.37600.38300.39100.144100 | Tile Grouting | 7d | 2027-01-21 | 2027-01-27 | 396 |  | 7 Days Work | 9155664 |
| 400 | 36900.37000.37100.37600.38300.39100.144200 | False Ceiling | 5d | 2027-01-28 | 2027-02-01 | 399 |  | 7 Days Work | 9155674 |
| 401 | 36900.37000.37100.37600.38300.39100.144300 | 2nd coat of primer | 10d | 2027-02-02 | 2027-02-11 | 400 |  | 7 Days Work | 9155684 |
| 402 | 36900.37000.37100.37600.38300.39100.144400 | Final cutting/polishing of stone flooring | 7d | 2027-02-12 | 2027-02-18 | 401 |  | 7 Days Work | 9155694 |

| ID | WBS | Task | Duration | Start | Finish | Predecessors | Constraint | Calendar | Unique_Task_ID |
| --- | --- | --- | --- | --- | --- | --- | --- | --- | --- |
| 403 | 36900.37000.37100.37600.38300.39100.53400 | **Toilet** | 237d | 2026-06-26 | 2027-02-17 |  | start no earlier than 2026-06-26 | 7 Days Work | 9154954 |
| 404 | 36900.37000.37100.37600.38300.39100.53400.746100 | Toilet_MEP Clearance -1 | 7d | 2026-06-26 | 2026-07-02 | 367 |  | 7 Days Work | 9156644 |
| 405 | 36900.37000.37100.37600.38300.39100.53400.746200 | Toilet_Level Marking | 1d | 2026-07-03 | 2026-07-03 | 404 |  | 7 Days Work | 9156654 |
| 406 | 36900.37000.37100.37600.38300.39100.53400.746300 | Toilet_Chasing work for Electrical conduit & concealed plumbing | 5d | 2026-07-04 | 2026-07-08 | 405 |  | 7 Days Work | 9156664 |
| 407 | 36900.37000.37100.37600.38300.39100.53400.746400 | Toilet_Plumbing work 1st fix | 5d | 2026-07-09 | 2026-07-13 | 406 |  | 7 Days Work | 9156674 |
| 408 | 36900.37000.37100.37600.38300.39100.53400.746500 | Toilet_Sleeve/Bore Packing | 5d | 2026-07-14 | 2026-07-18 | 407 |  | 7 Days Work | 9156684 |
| 409 | 36900.37000.37100.37600.38300.39100.53400.746600 | Toilet_Waterproofing | 10d | 2026-07-19 | 2026-07-28 | 408 |  | 7 Days Work | 9156694 |
| 410 | 36900.37000.37100.37600.38300.39100.53400.746700 | Toilet_Screed | 1d | 2026-07-29 | 2026-07-29 | 409 |  | 7 Days Work | 9156704 |
| 411 | 36900.37000.37100.37600.38300.39100.53400.746800 | Toilet_Plumbing 2nd fix | 5d | 2026-07-30 | 2026-08-03 | 410 |  | 7 Days Work | 9156714 |
| 412 | 36900.37000.37100.37600.38300.39100.53400.746900 | Toilet_Ledge wall | 5d | 2026-08-04 | 2026-08-08 | 411 |  | 7 Days Work | 9156724 |
| 413 | 36900.37000.37100.37600.38300.39100.53400.747000 | Toilet_Cement Plaster | 5d | 2026-08-09 | 2026-08-13 | 412 |  | 7 Days Work | 9156734 |
| 414 | 36900.37000.37100.37600.38300.39100.53400.747100 | Toilet_Door Frame | 1d | 2026-08-14 | 2026-08-14 | 413 |  | 7 Days Work | 9156744 |
| 415 | 36900.37000.37100.37600.38300.39100.53400.747200 | Toilet_Wash basin & Couter | 3d | 2026-08-15 | 2026-08-17 | 414 |  | 7 Days Work | 9156754 |
| 416 | 36900.37000.37100.37600.38300.39100.53400.747300 | Toilet_Wall dado | 20d | 2026-08-18 | 2026-09-06 | 415 |  | 7 Days Work | 9156764 |
| 417 | 36900.37000.37100.37600.38300.39100.53400.747400 | Toilet_Granite Work-Ledge wall top | 3d | 2026-09-07 | 2026-09-09 | 416 |  | 7 Days Work | 9156774 |
| 418 | 36900.37000.37100.37600.38300.39100.53400.747500 | Toilet_Floor Tilling work | 20d | 2026-09-10 | 2026-09-29 | 417 |  | 7 Days Work | 9156784 |
| 419 | 36900.37000.37100.37600.38300.39100.53400.747600 | Toilet_1st row of dado | 5d | 2026-09-30 | 2026-10-04 | 418 |  | 7 Days Work | 9156794 |
| 420 | 36900.37000.37100.37600.38300.39100.53400.747700 | Toilet_Window Fixing | 14d | 2026-10-05 | 2026-10-18 | 419 |  | 7 Days Work | 9156804 |
| 421 | 36900.37000.37100.37600.38300.39100.53400.747800 | Toilet_Services above False ceiling | 21d | 2026-10-19 | 2026-11-08 | 420 |  | 7 Days Work | 9156814 |
| 422 | 36900.37000.37100.37600.38300.39100.53400.747900 | Toilet_False Ceiling framing | 12d | 2026-11-09 | 2026-11-20 | 421 |  | 7 Days Work | 9156824 |
| 423 | 36900.37000.37100.37600.38300.39100.53400.748000 | Toilet_Door Frame | 5d | 2026-11-21 | 2026-11-25 | 422 |  | 7 Days Work | 9156834 |
| 424 | 36900.37000.37100.37600.38300.39100.53400.748100 | Toilet_Epoxy Tile Grouting | 7d | 2027-01-21 | 2027-01-27 | 399SS |  | 7 Days Work | 9156844 |
| 425 | 36900.37000.37100.37600.38300.39100.53400.748200 | Toilet_False ceiling board fixing, CP Sanitary Fixture, Electric Fixture | 21d | 2027-01-28 | 2027-02-17 | 424 |  | 7 Days Work | 9156854 |
| 426 | 36900.37000.37100.37600.38300.39200 | **7th Habitable/9th Floor** | 245d | 2026-06-28 | 2027-02-27 |  | start no earlier than 2026-06-28 | 7 Days Work | 9154924 |
| 427 | 36900.37000.37100.37600.38300.39200.144500 | Post Pour | 7d | 2026-06-28 | 2026-07-04 | 51FS+15d |  | 7 Days Work | 9155704 |
| 428 | 36900.37000.37100.37600.38300.39200.144600 | MEP Clearance -1 | 5d | 2026-07-05 | 2026-07-09 | 427 |  | 7 Days Work | 9155714 |
| 429 | 36900.37000.37100.37600.38300.39200.144700 | Benchmark | 1d | 2026-07-10 | 2026-07-10 | 428 |  | 7 Days Work | 9155724 |
| 430 | 36900.37000.37100.37600.38300.39200.144800 | Temporary Railing | 3d | 2026-07-11 | 2026-07-13 | 429 |  | 7 Days Work | 9155734 |
| 431 | 36900.37000.37100.37600.38300.39200.144900 | Blockwork | 10d | 2026-07-14 | 2026-07-23 | 430 |  | 7 Days Work | 9155744 |
| 432 | 36900.37000.37100.37600.38300.39200.145000 | MEP Clearance -2 | 10d | 2026-07-24 | 2026-08-02 | 431 |  | 7 Days Work | 9155754 |
| 433 | 36900.37000.37100.37600.38300.39200.145100 | Gypsum Plaster | 14d | 2026-08-03 | 2026-08-16 | 432 |  | 7 Days Work | 9155764 |
| 434 | 36900.37000.37100.37600.38300.39200.145200 | Kitchen Platform | 3d | 2026-08-17 | 2026-08-19 | 433 |  | 7 Days Work | 9155774 |
| 435 | 36900.37000.37100.37600.38300.39200.145300 | Kitchen dado | 7d | 2026-08-20 | 2026-08-26 | 434 |  | 7 Days Work | 9155784 |
| 436 | 36900.37000.37100.37600.38300.39200.145400 | Fire Fighting | 5d | 2026-08-27 | 2026-08-31 | 435 |  | 7 Days Work | 9155794 |
| 437 | 36900.37000.37100.37600.38300.39200.145500 | Anticapilary | 5d | 2026-09-01 | 2026-09-05 | 436 |  | 7 Days Work | 9155804 |
| 438 | 36900.37000.37100.37600.38300.39200.145600 | Stone Laying | 10d | 2026-10-09 | 2026-10-18 | 478 |  | 7 Days Work | 9155814 |
| 439 | 36900.37000.37100.37600.38300.39200.145700 | Tiles Laying | 7d | 2026-10-09 | 2026-10-15 | 478 |  | 7 Days Work | 9155824 |
| 440 | 36900.37000.37100.37600.38300.39200.145800 | 1st cutting/polishing of stone flooring | 7d | 2026-10-16 | 2026-10-22 | 439 |  | 7 Days Work | 9155834 |
| 441 | 36900.37000.37100.37600.38300.39200.145900 | Tiles/Stone skirting | 5d | 2026-10-23 | 2026-10-27 | 440 |  | 7 Days Work | 9155844 |
| 442 | 36900.37000.37100.37600.38300.39200.146000 | Protechtion sheet | 1d | 2026-10-28 | 2026-10-28 | 441 |  | 7 Days Work | 9155854 |
| 443 | 36900.37000.37100.37600.38300.39200.146100 | Installation of Temporary Door | 1d | 2026-10-29 | 2026-10-29 | 442 |  | 7 Days Work | 9155864 |
| 444 | 36900.37000.37100.37600.38300.39200.146200 | Fixing of window tracks | 5d | 2026-10-30 | 2026-11-03 | 443 |  | 7 Days Work | 9155874 |
| 445 | 36900.37000.37100.37600.38300.39200.146300 | Wire Pulling | 7d | 2026-11-04 | 2026-11-10 | 444 |  | 7 Days Work | 9155884 |
| 446 | 36900.37000.37100.37600.38300.39200.146400 | Gypsum Remaining | 5d | 2026-11-11 | 2026-11-15 | 445 |  | 7 Days Work | 9155894 |
| 447 | 36900.37000.37100.37600.38300.39200.146500 | Fixing of windoow shutter | 5d | 2026-11-16 | 2026-11-20 | 446 |  | 7 Days Work | 9155904 |
| 448 | 36900.37000.37100.37600.38300.39200.146600 | Putty Works - walls & ceiling | 15d | 2026-11-21 | 2026-12-05 | 447 |  | 7 Days Work | 9155914 |
| 449 | 36900.37000.37100.37600.38300.39200.146700 | False Ceiling- Framing | 10d | 2026-12-06 | 2026-12-15 | 448 |  | 7 Days Work | 9155924 |
| 450 | 36900.37000.37100.37600.38300.39200.146800 | Pre Hung Door | 3d | 2026-12-16 | 2026-12-18 | 449 |  | 7 Days Work | 9155934 |
| 451 | 36900.37000.37100.37600.38300.39200.146900 | Protechtion sheet | 2d | 2026-12-19 | 2026-12-20 | 450 |  | 7 Days Work | 9155944 |
| 452 | 36900.37000.37100.37600.38300.39200.147000 | Skirting near door | 2d | 2026-12-21 | 2026-12-22 | 451 |  | 7 Days Work | 9155954 |
| 453 | 36900.37000.37100.37600.38300.39200.147100 | Electrical Switch box fixing | 14d | 2026-12-23 | 2027-01-05 | 452 |  | 7 Days Work | 9155964 |
| 454 | 36900.37000.37100.37600.38300.39200.147200 | Fire Fighting painting | 5d | 2027-01-06 | 2027-01-10 | 453 |  | 7 Days Work | 9155974 |
| 455 | 36900.37000.37100.37600.38300.39200.147300 | Protection of all flooring, door & window hardware | 5d | 2027-01-11 | 2027-01-15 | 454 |  | 7 Days Work | 9155984 |
| 456 | 36900.37000.37100.37600.38300.39200.147400 | 1st coat primer- ceiling 1st & walls | 14d | 2027-01-16 | 2027-01-29 | 455 |  | 7 Days Work | 9155994 |
| 457 | 36900.37000.37100.37600.38300.39200.147500 | Wooden Flooring | 5d | 2027-01-30 | 2027-02-03 | 456 |  | 7 Days Work | 9156004 |
| 458 | 36900.37000.37100.37600.38300.39200.147600 | Removing of Temporary Railing & installation of Glass Railing | 5d | 2027-01-30 | 2027-02-03 | 456 |  | 7 Days Work | 9156014 |
| 459 | 36900.37000.37100.37600.38300.39200.147700 | Tile Grouting | 7d | 2027-01-30 | 2027-02-05 | 456 |  | 7 Days Work | 9156024 |
| 460 | 36900.37000.37100.37600.38300.39200.147800 | False Ceiling | 5d | 2027-02-06 | 2027-02-10 | 459 |  | 7 Days Work | 9156034 |
| 461 | 36900.37000.37100.37600.38300.39200.147900 | 2nd coat of primer | 10d | 2027-02-11 | 2027-02-20 | 460 |  | 7 Days Work | 9156044 |
| 462 | 36900.37000.37100.37600.38300.39200.148000 | Final cutting/polishing of stone flooring | 7d | 2027-02-21 | 2027-02-27 | 461 |  | 7 Days Work | 9156054 |

| ID | WBS | Task | Duration | Start | Finish | Predecessors | Constraint | Calendar | Unique_Task_ID |
| --- | --- | --- | --- | --- | --- | --- | --- | --- | --- |
| 463 | 36900.37000.37100.37600.38300.39200.53500 | **Toilet** | 237d | 2026-07-05 | 2027-02-26 |  | start no earlier than 2026-07-05 | 7 Days Work | 9154964 |
| 464 | 36900.37000.37100.37600.38300.39200.53500.748300 | Toilet_MEP Clearance -1 | 7d | 2026-07-05 | 2026-07-11 | 427 |  | 7 Days Work | 9156864 |
| 465 | 36900.37000.37100.37600.38300.39200.53500.748400 | Toilet_Level Marking | 1d | 2026-07-12 | 2026-07-12 | 464 |  | 7 Days Work | 9156874 |
| 466 | 36900.37000.37100.37600.38300.39200.53500.748500 | Toilet_Chasing work for Electrical conduit & concealed plumbing | 5d | 2026-07-13 | 2026-07-17 | 465 |  | 7 Days Work | 9156884 |
| 467 | 36900.37000.37100.37600.38300.39200.53500.748600 | Toilet_Plumbing work 1st fix | 5d | 2026-07-18 | 2026-07-22 | 466 |  | 7 Days Work | 9156894 |
| 468 | 36900.37000.37100.37600.38300.39200.53500.748700 | Toilet_Sleeve/Bore Packing | 5d | 2026-07-23 | 2026-07-27 | 467 |  | 7 Days Work | 9156904 |
| 469 | 36900.37000.37100.37600.38300.39200.53500.748800 | Toilet_Waterproofing | 10d | 2026-07-28 | 2026-08-06 | 468 |  | 7 Days Work | 9156914 |
| 470 | 36900.37000.37100.37600.38300.39200.53500.748900 | Toilet_Screed | 1d | 2026-08-07 | 2026-08-07 | 469 |  | 7 Days Work | 9156924 |
| 471 | 36900.37000.37100.37600.38300.39200.53500.749000 | Toilet_Plumbing 2nd fix | 5d | 2026-08-08 | 2026-08-12 | 470 |  | 7 Days Work | 9156934 |
| 472 | 36900.37000.37100.37600.38300.39200.53500.749100 | Toilet_Ledge wall | 5d | 2026-08-13 | 2026-08-17 | 471 |  | 7 Days Work | 9156944 |
| 473 | 36900.37000.37100.37600.38300.39200.53500.749200 | Toilet_Cement Plaster | 5d | 2026-08-18 | 2026-08-22 | 472 |  | 7 Days Work | 9156954 |
| 474 | 36900.37000.37100.37600.38300.39200.53500.749300 | Toilet_Door Frame | 1d | 2026-08-23 | 2026-08-23 | 473 |  | 7 Days Work | 9156964 |
| 475 | 36900.37000.37100.37600.38300.39200.53500.749400 | Toilet_Wash basin & Couter | 3d | 2026-08-24 | 2026-08-26 | 474 |  | 7 Days Work | 9156974 |
| 476 | 36900.37000.37100.37600.38300.39200.53500.749500 | Toilet_Wall dado | 20d | 2026-08-27 | 2026-09-15 | 475 |  | 7 Days Work | 9156984 |
| 477 | 36900.37000.37100.37600.38300.39200.53500.749600 | Toilet_Granite Work-Ledge wall top | 3d | 2026-09-16 | 2026-09-18 | 476 |  | 7 Days Work | 9156994 |
| 478 | 36900.37000.37100.37600.38300.39200.53500.749700 | Toilet_Floor Tilling work | 20d | 2026-09-19 | 2026-10-08 | 477 |  | 7 Days Work | 9157004 |
| 479 | 36900.37000.37100.37600.38300.39200.53500.749800 | Toilet_1st row of dado | 5d | 2026-10-09 | 2026-10-13 | 478 |  | 7 Days Work | 9157014 |
| 480 | 36900.37000.37100.37600.38300.39200.53500.749900 | Toilet_Window Fixing | 14d | 2026-10-14 | 2026-10-27 | 479 |  | 7 Days Work | 9157024 |
| 481 | 36900.37000.37100.37600.38300.39200.53500.750000 | Toilet_Services above False ceiling | 21d | 2026-10-28 | 2026-11-17 | 480 |  | 7 Days Work | 9157034 |
| 482 | 36900.37000.37100.37600.38300.39200.53500.750100 | Toilet_False Ceiling framing | 12d | 2026-11-18 | 2026-11-29 | 481 |  | 7 Days Work | 9157044 |
| 483 | 36900.37000.37100.37600.38300.39200.53500.750200 | Toilet_Door Frame | 5d | 2026-11-30 | 2026-12-04 | 482 |  | 7 Days Work | 9157054 |
| 484 | 36900.37000.37100.37600.38300.39200.53500.750300 | Toilet_Epoxy Tile Grouting | 7d | 2027-01-30 | 2027-02-05 | 459SS |  | 7 Days Work | 9157064 |
| 485 | 36900.37000.37100.37600.38300.39200.53500.750400 | Toilet_False ceiling board fixing, CP Sanitary Fixture, Electric Fixture | 21d | 2027-02-06 | 2027-02-26 | 484 |  | 7 Days Work | 9157074 |
| 486 | 36900.37000.37100.37600.38300.39300 | **8th Habitable/10th Floor** | 245d | 2026-07-10 | 2027-03-11 |  | start no earlier than 2026-07-10 | 7 Days Work | 9154934 |
| 487 | 36900.37000.37100.37600.38300.39300.148100 | Post Pour | 7d | 2026-07-10 | 2026-07-16 | 52FS+15d |  | 7 Days Work | 9156064 |
| 488 | 36900.37000.37100.37600.38300.39300.148200 | MEP Clearance -1 | 5d | 2026-07-17 | 2026-07-21 | 487 |  | 7 Days Work | 9156074 |
| 489 | 36900.37000.37100.37600.38300.39300.148300 | Benchmark | 1d | 2026-07-22 | 2026-07-22 | 488 |  | 7 Days Work | 9156084 |
| 490 | 36900.37000.37100.37600.38300.39300.148400 | Temporary Railing | 3d | 2026-07-23 | 2026-07-25 | 489 |  | 7 Days Work | 9156094 |
| 491 | 36900.37000.37100.37600.38300.39300.148500 | Blockwork | 10d | 2026-07-26 | 2026-08-04 | 490 |  | 7 Days Work | 9156104 |
| 492 | 36900.37000.37100.37600.38300.39300.148600 | MEP Clearance -2 | 10d | 2026-08-05 | 2026-08-14 | 491 |  | 7 Days Work | 9156114 |
| 493 | 36900.37000.37100.37600.38300.39300.148700 | Gypsum Plaster | 14d | 2026-08-15 | 2026-08-28 | 492 |  | 7 Days Work | 9156124 |
| 494 | 36900.37000.37100.37600.38300.39300.148800 | Kitchen Platform | 3d | 2026-08-29 | 2026-08-31 | 493 |  | 7 Days Work | 9156134 |
| 495 | 36900.37000.37100.37600.38300.39300.148900 | Kitchen dado | 7d | 2026-09-01 | 2026-09-07 | 494 |  | 7 Days Work | 9156144 |
| 496 | 36900.37000.37100.37600.38300.39300.149000 | Fire Fighting | 5d | 2026-09-08 | 2026-09-12 | 495 |  | 7 Days Work | 9156154 |
| 497 | 36900.37000.37100.37600.38300.39300.149100 | Anticapilary | 5d | 2026-09-13 | 2026-09-17 | 496 |  | 7 Days Work | 9156164 |
| 498 | 36900.37000.37100.37600.38300.39300.149200 | Stone Laying | 10d | 2026-10-21 | 2026-10-30 | 538 |  | 7 Days Work | 9156174 |
| 499 | 36900.37000.37100.37600.38300.39300.149300 | Tiles Laying | 7d | 2026-10-21 | 2026-10-27 | 538 |  | 7 Days Work | 9156184 |
| 500 | 36900.37000.37100.37600.38300.39300.149400 | 1st cutting/polishing of stone flooring | 7d | 2026-10-28 | 2026-11-03 | 499 |  | 7 Days Work | 9156194 |
| 501 | 36900.37000.37100.37600.38300.39300.149500 | Tiles/Stone skirting | 5d | 2026-11-04 | 2026-11-08 | 500 |  | 7 Days Work | 9156204 |
| 502 | 36900.37000.37100.37600.38300.39300.149600 | Protechtion sheet | 1d | 2026-11-09 | 2026-11-09 | 501 |  | 7 Days Work | 9156214 |
| 503 | 36900.37000.37100.37600.38300.39300.149700 | Installation of Temporary Door | 1d | 2026-11-10 | 2026-11-10 | 502 |  | 7 Days Work | 9156224 |
| 504 | 36900.37000.37100.37600.38300.39300.149800 | Fixing of window tracks | 5d | 2026-11-11 | 2026-11-15 | 503 |  | 7 Days Work | 9156234 |
| 505 | 36900.37000.37100.37600.38300.39300.149900 | Wire Pulling | 7d | 2026-11-16 | 2026-11-22 | 504 |  | 7 Days Work | 9156244 |
| 506 | 36900.37000.37100.37600.38300.39300.150000 | Gypsum Remaining | 5d | 2026-11-23 | 2026-11-27 | 505 |  | 7 Days Work | 9156254 |
| 507 | 36900.37000.37100.37600.38300.39300.150100 | Fixing of windoow shutter | 5d | 2026-11-28 | 2026-12-02 | 506 |  | 7 Days Work | 9156264 |
| 508 | 36900.37000.37100.37600.38300.39300.150200 | Putty Works - walls & ceiling | 15d | 2026-12-03 | 2026-12-17 | 507 |  | 7 Days Work | 9156274 |
| 509 | 36900.37000.37100.37600.38300.39300.150300 | False Ceiling- Framing | 10d | 2026-12-18 | 2026-12-27 | 508 |  | 7 Days Work | 9156284 |
| 510 | 36900.37000.37100.37600.38300.39300.150400 | Pre Hung Door | 3d | 2026-12-28 | 2026-12-30 | 509 |  | 7 Days Work | 9156294 |
| 511 | 36900.37000.37100.37600.38300.39300.150500 | Protechtion sheet | 2d | 2026-12-31 | 2027-01-01 | 510 |  | 7 Days Work | 9156304 |
| 512 | 36900.37000.37100.37600.38300.39300.150600 | Skirting near door | 2d | 2027-01-02 | 2027-01-03 | 511 |  | 7 Days Work | 9156314 |
| 513 | 36900.37000.37100.37600.38300.39300.150700 | Electrical Switch box fixing | 14d | 2027-01-04 | 2027-01-17 | 512 |  | 7 Days Work | 9156324 |
| 514 | 36900.37000.37100.37600.38300.39300.150800 | Fire Fighting painting | 5d | 2027-01-18 | 2027-01-22 | 513 |  | 7 Days Work | 9156334 |
| 515 | 36900.37000.37100.37600.38300.39300.150900 | Protection of all flooring, door & window hardware | 5d | 2027-01-23 | 2027-01-27 | 514 |  | 7 Days Work | 9156344 |
| 516 | 36900.37000.37100.37600.38300.39300.151000 | 1st coat primer- ceiling 1st & walls | 14d | 2027-01-28 | 2027-02-10 | 515 |  | 7 Days Work | 9156354 |
| 517 | 36900.37000.37100.37600.38300.39300.151100 | Wooden Flooring | 5d | 2027-02-11 | 2027-02-15 | 516 |  | 7 Days Work | 9156364 |
| 518 | 36900.37000.37100.37600.38300.39300.151200 | Removing of Temporary Railing & installation of Glass Railing | 5d | 2027-02-11 | 2027-02-15 | 516 |  | 7 Days Work | 9156374 |
| 519 | 36900.37000.37100.37600.38300.39300.151300 | Tile Grouting | 7d | 2027-02-11 | 2027-02-17 | 516 |  | 7 Days Work | 9156384 |
| 520 | 36900.37000.37100.37600.38300.39300.151400 | False Ceiling | 5d | 2027-02-18 | 2027-02-22 | 519 |  | 7 Days Work | 9156394 |
| 521 | 36900.37000.37100.37600.38300.39300.151500 | 2nd coat of primer | 10d | 2027-02-23 | 2027-03-04 | 520 |  | 7 Days Work | 9156404 |
| 522 | 36900.37000.37100.37600.38300.39300.151600 | Final cutting/polishing of stone flooring | 7d | 2027-03-05 | 2027-03-11 | 521 |  | 7 Days Work | 9156414 |

| ID | WBS | Task | Duration | Start | Finish | Predecessors | Constraint | Calendar | Unique_Task_ID |
| --- | --- | --- | --- | --- | --- | --- | --- | --- | --- |
| 523 | 36900.37000.37100.37600.38300.39300.53600 | **Toilet** | 237d | 2026-07-17 | 2027-03-10 |  | start no earlier than 2026-07-17 | 7 Days Work | 9154974 |
| 524 | 36900.37000.37100.37600.38300.39300.53600.750500 | Toilet_MEP Clearance -1 | 7d | 2026-07-17 | 2026-07-23 | 487 |  | 7 Days Work | 9157084 |
| 525 | 36900.37000.37100.37600.38300.39300.53600.750600 | Toilet_Level Marking | 1d | 2026-07-24 | 2026-07-24 | 524 |  | 7 Days Work | 9157094 |
| 526 | 36900.37000.37100.37600.38300.39300.53600.750700 | Toilet_Chasing work for Electrical conduit & concealed plumbing | 5d | 2026-07-25 | 2026-07-29 | 525 |  | 7 Days Work | 9157104 |
| 527 | 36900.37000.37100.37600.38300.39300.53600.750800 | Toilet_Plumbing work 1st fix | 5d | 2026-07-30 | 2026-08-03 | 526 |  | 7 Days Work | 9157114 |
| 528 | 36900.37000.37100.37600.38300.39300.53600.750900 | Toilet_Sleeve/Bore Packing | 5d | 2026-08-04 | 2026-08-08 | 527 |  | 7 Days Work | 9157124 |
| 529 | 36900.37000.37100.37600.38300.39300.53600.751000 | Toilet_Waterproofing | 10d | 2026-08-09 | 2026-08-18 | 528 |  | 7 Days Work | 9157134 |
| 530 | 36900.37000.37100.37600.38300.39300.53600.751100 | Toilet_Screed | 1d | 2026-08-19 | 2026-08-19 | 529 |  | 7 Days Work | 9157144 |
| 531 | 36900.37000.37100.37600.38300.39300.53600.751200 | Toilet_Plumbing 2nd fix | 5d | 2026-08-20 | 2026-08-24 | 530 |  | 7 Days Work | 9157154 |
| 532 | 36900.37000.37100.37600.38300.39300.53600.751300 | Toilet_Ledge wall | 5d | 2026-08-25 | 2026-08-29 | 531 |  | 7 Days Work | 9157164 |
| 533 | 36900.37000.37100.37600.38300.39300.53600.751400 | Toilet_Cement Plaster | 5d | 2026-08-30 | 2026-09-03 | 532 |  | 7 Days Work | 9157174 |
| 534 | 36900.37000.37100.37600.38300.39300.53600.751500 | Toilet_Door Frame | 1d | 2026-09-04 | 2026-09-04 | 533 |  | 7 Days Work | 9157184 |
| 535 | 36900.37000.37100.37600.38300.39300.53600.751600 | Toilet_Wash basin & Couter | 3d | 2026-09-05 | 2026-09-07 | 534 |  | 7 Days Work | 9157194 |
| 536 | 36900.37000.37100.37600.38300.39300.53600.751700 | Toilet_Wall dado | 20d | 2026-09-08 | 2026-09-27 | 535 |  | 7 Days Work | 9157204 |
| 537 | 36900.37000.37100.37600.38300.39300.53600.751800 | Toilet_Granite Work-Ledge wall top | 3d | 2026-09-28 | 2026-09-30 | 536 |  | 7 Days Work | 9157214 |
| 538 | 36900.37000.37100.37600.38300.39300.53600.751900 | Toilet_Floor Tilling work | 20d | 2026-10-01 | 2026-10-20 | 537 |  | 7 Days Work | 9157224 |
| 539 | 36900.37000.37100.37600.38300.39300.53600.752000 | Toilet_1st row of dado | 5d | 2026-10-21 | 2026-10-25 | 538 |  | 7 Days Work | 9157234 |
| 540 | 36900.37000.37100.37600.38300.39300.53600.752100 | Toilet_Window Fixing | 14d | 2026-10-26 | 2026-11-08 | 539 |  | 7 Days Work | 9157244 |
| 541 | 36900.37000.37100.37600.38300.39300.53600.752200 | Toilet_Services above False ceiling | 21d | 2026-11-09 | 2026-11-29 | 540 |  | 7 Days Work | 9157254 |
| 542 | 36900.37000.37100.37600.38300.39300.53600.752300 | Toilet_False Ceiling framing | 12d | 2026-11-30 | 2026-12-11 | 541 |  | 7 Days Work | 9157264 |
| 543 | 36900.37000.37100.37600.38300.39300.53600.752400 | Toilet_Door Frame | 5d | 2026-12-12 | 2026-12-16 | 542 |  | 7 Days Work | 9157274 |
| 544 | 36900.37000.37100.37600.38300.39300.53600.752500 | Toilet_Epoxy Tile Grouting | 7d | 2027-02-11 | 2027-02-17 | 519SS |  | 7 Days Work | 9157284 |
| 545 | 36900.37000.37100.37600.38300.39300.53600.752600 | Toilet_False ceiling board fixing, CP Sanitary Fixture, Electric Fixture | 21d | 2027-02-18 | 2027-03-10 | 544 |  | 7 Days Work | 9157294 |
| 546 | 36900.37000.37100.37600.38300.39400 | **9th Habitable/11th Floor** | 245d | 2026-07-19 | 2027-03-20 |  | start no earlier than 2026-07-19 | 7 Days Work | 9157304 |
| 547 | 36900.37000.37100.37600.38300.39400.151700 | Post Pour | 7d | 2026-07-19 | 2026-07-25 | 53FS+15d |  | 7 Days Work | 9157464 |
| 548 | 36900.37000.37100.37600.38300.39400.151800 | MEP Clearance -1 | 5d | 2026-07-26 | 2026-07-30 | 547 |  | 7 Days Work | 9157474 |
| 549 | 36900.37000.37100.37600.38300.39400.151900 | Benchmark | 1d | 2026-07-31 | 2026-07-31 | 548 |  | 7 Days Work | 9157484 |
| 550 | 36900.37000.37100.37600.38300.39400.152000 | Temporary Railing | 3d | 2026-08-01 | 2026-08-03 | 549 |  | 7 Days Work | 9157494 |
| 551 | 36900.37000.37100.37600.38300.39400.152100 | Blockwork | 10d | 2026-08-04 | 2026-08-13 | 550 |  | 7 Days Work | 9157504 |
| 552 | 36900.37000.37100.37600.38300.39400.152200 | MEP Clearance -2 | 10d | 2026-08-14 | 2026-08-23 | 551 |  | 7 Days Work | 9157514 |
| 553 | 36900.37000.37100.37600.38300.39400.152300 | Gypsum Plaster | 14d | 2026-08-24 | 2026-09-06 | 552 |  | 7 Days Work | 9157524 |
| 554 | 36900.37000.37100.37600.38300.39400.152400 | Kitchen Platform | 3d | 2026-09-07 | 2026-09-09 | 553 |  | 7 Days Work | 9157534 |
| 555 | 36900.37000.37100.37600.38300.39400.152500 | Kitchen dado | 7d | 2026-09-10 | 2026-09-16 | 554 |  | 7 Days Work | 9157544 |
| 556 | 36900.37000.37100.37600.38300.39400.152600 | Fire Fighting | 5d | 2026-09-17 | 2026-09-21 | 555 |  | 7 Days Work | 9157554 |
| 557 | 36900.37000.37100.37600.38300.39400.152700 | Anticapilary | 5d | 2026-09-22 | 2026-09-26 | 556 |  | 7 Days Work | 9157564 |
| 558 | 36900.37000.37100.37600.38300.39400.152800 | Stone Laying | 10d | 2026-10-30 | 2026-11-08 | 598 |  | 7 Days Work | 9157574 |
| 559 | 36900.37000.37100.37600.38300.39400.152900 | Tiles Laying | 7d | 2026-10-30 | 2026-11-05 | 598 |  | 7 Days Work | 9157584 |
| 560 | 36900.37000.37100.37600.38300.39400.153000 | 1st cutting/polishing of stone flooring | 7d | 2026-11-06 | 2026-11-12 | 559 |  | 7 Days Work | 9157594 |
| 561 | 36900.37000.37100.37600.38300.39400.153100 | Tiles/Stone skirting | 5d | 2026-11-13 | 2026-11-17 | 560 |  | 7 Days Work | 9157604 |
| 562 | 36900.37000.37100.37600.38300.39400.153200 | Protechtion sheet | 1d | 2026-11-18 | 2026-11-18 | 561 |  | 7 Days Work | 9157614 |
| 563 | 36900.37000.37100.37600.38300.39400.153300 | Installation of Temporary Door | 1d | 2026-11-19 | 2026-11-19 | 562 |  | 7 Days Work | 9157624 |
| 564 | 36900.37000.37100.37600.38300.39400.153400 | Fixing of window tracks | 5d | 2026-11-20 | 2026-11-24 | 563 |  | 7 Days Work | 9157634 |
| 565 | 36900.37000.37100.37600.38300.39400.153500 | Wire Pulling | 7d | 2026-11-25 | 2026-12-01 | 564 |  | 7 Days Work | 9157644 |
| 566 | 36900.37000.37100.37600.38300.39400.153600 | Gypsum Remaining | 5d | 2026-12-02 | 2026-12-06 | 565 |  | 7 Days Work | 9157654 |
| 567 | 36900.37000.37100.37600.38300.39400.153700 | Fixing of windoow shutter | 5d | 2026-12-07 | 2026-12-11 | 566 |  | 7 Days Work | 9157664 |
| 568 | 36900.37000.37100.37600.38300.39400.153800 | Putty Works - walls & ceiling | 15d | 2026-12-12 | 2026-12-26 | 567 |  | 7 Days Work | 9157674 |
| 569 | 36900.37000.37100.37600.38300.39400.153900 | False Ceiling- Framing | 10d | 2026-12-27 | 2027-01-05 | 568 |  | 7 Days Work | 9157684 |
| 570 | 36900.37000.37100.37600.38300.39400.154000 | Pre Hung Door | 3d | 2027-01-06 | 2027-01-08 | 569 |  | 7 Days Work | 9157694 |
| 571 | 36900.37000.37100.37600.38300.39400.154100 | Protechtion sheet | 2d | 2027-01-09 | 2027-01-10 | 570 |  | 7 Days Work | 9157704 |
| 572 | 36900.37000.37100.37600.38300.39400.154200 | Skirting near door | 2d | 2027-01-11 | 2027-01-12 | 571 |  | 7 Days Work | 9157714 |
| 573 | 36900.37000.37100.37600.38300.39400.154300 | Electrical Switch box fixing | 14d | 2027-01-13 | 2027-01-26 | 572 |  | 7 Days Work | 9157724 |
| 574 | 36900.37000.37100.37600.38300.39400.154400 | Fire Fighting painting | 5d | 2027-01-27 | 2027-01-31 | 573 |  | 7 Days Work | 9157734 |
| 575 | 36900.37000.37100.37600.38300.39400.154500 | Protection of all flooring, door & window hardware | 5d | 2027-02-01 | 2027-02-05 | 574 |  | 7 Days Work | 9157744 |
| 576 | 36900.37000.37100.37600.38300.39400.154600 | 1st coat primer- ceiling 1st & walls | 14d | 2027-02-06 | 2027-02-19 | 575 |  | 7 Days Work | 9157754 |
| 577 | 36900.37000.37100.37600.38300.39400.154700 | Wooden Flooring | 5d | 2027-02-20 | 2027-02-24 | 576 |  | 7 Days Work | 9157764 |
| 578 | 36900.37000.37100.37600.38300.39400.154800 | Removing of Temporary Railing & installation of Glass Railing | 5d | 2027-02-20 | 2027-02-24 | 576 |  | 7 Days Work | 9157774 |
| 579 | 36900.37000.37100.37600.38300.39400.154900 | Tile Grouting | 7d | 2027-02-20 | 2027-02-26 | 576 |  | 7 Days Work | 9157784 |
| 580 | 36900.37000.37100.37600.38300.39400.155000 | False Ceiling | 5d | 2027-02-27 | 2027-03-03 | 579 |  | 7 Days Work | 9157794 |
| 581 | 36900.37000.37100.37600.38300.39400.155100 | 2nd coat of primer | 10d | 2027-03-04 | 2027-03-13 | 580 |  | 7 Days Work | 9157804 |
| 582 | 36900.37000.37100.37600.38300.39400.155200 | Final cutting/polishing of stone flooring | 7d | 2027-03-14 | 2027-03-20 | 581 |  | 7 Days Work | 9157814 |

| ID | WBS | Task | Duration | Start | Finish | Predecessors | Constraint | Calendar | Unique_Task_ID |
| --- | --- | --- | --- | --- | --- | --- | --- | --- | --- |
| 583 | 36900.37000.37100.37600.38300.39400.53700 | **Toilet** | 237d | 2026-07-26 | 2027-03-19 |  | start no earlier than 2026-07-26 | 7 Days Work | 9157384 |
| 584 | 36900.37000.37100.37600.38300.39400.53700.752700 | Toilet_MEP Clearance -1 | 7d | 2026-07-26 | 2026-08-01 | 547 |  | 7 Days Work | 9160344 |
| 585 | 36900.37000.37100.37600.38300.39400.53700.752800 | Toilet_Level Marking | 1d | 2026-08-02 | 2026-08-02 | 584 |  | 7 Days Work | 9160354 |
| 586 | 36900.37000.37100.37600.38300.39400.53700.752900 | Toilet_Chasing work for Electrical conduit & concealed plumbing | 5d | 2026-08-03 | 2026-08-07 | 585 |  | 7 Days Work | 9160364 |
| 587 | 36900.37000.37100.37600.38300.39400.53700.753000 | Toilet_Plumbing work 1st fix | 5d | 2026-08-08 | 2026-08-12 | 586 |  | 7 Days Work | 9160374 |
| 588 | 36900.37000.37100.37600.38300.39400.53700.753100 | Toilet_Sleeve/Bore Packing | 5d | 2026-08-13 | 2026-08-17 | 587 |  | 7 Days Work | 9160384 |
| 589 | 36900.37000.37100.37600.38300.39400.53700.753200 | Toilet_Waterproofing | 10d | 2026-08-18 | 2026-08-27 | 588 |  | 7 Days Work | 9160394 |
| 590 | 36900.37000.37100.37600.38300.39400.53700.753300 | Toilet_Screed | 1d | 2026-08-28 | 2026-08-28 | 589 |  | 7 Days Work | 9160404 |
| 591 | 36900.37000.37100.37600.38300.39400.53700.753400 | Toilet_Plumbing 2nd fix | 5d | 2026-08-29 | 2026-09-02 | 590 |  | 7 Days Work | 9160414 |
| 592 | 36900.37000.37100.37600.38300.39400.53700.753500 | Toilet_Ledge wall | 5d | 2026-09-03 | 2026-09-07 | 591 |  | 7 Days Work | 9160424 |
| 593 | 36900.37000.37100.37600.38300.39400.53700.753600 | Toilet_Cement Plaster | 5d | 2026-09-08 | 2026-09-12 | 592 |  | 7 Days Work | 9160434 |
| 594 | 36900.37000.37100.37600.38300.39400.53700.753700 | Toilet_Door Frame | 1d | 2026-09-13 | 2026-09-13 | 593 |  | 7 Days Work | 9160444 |
| 595 | 36900.37000.37100.37600.38300.39400.53700.753800 | Toilet_Wash basin & Couter | 3d | 2026-09-14 | 2026-09-16 | 594 |  | 7 Days Work | 9160454 |
| 596 | 36900.37000.37100.37600.38300.39400.53700.753900 | Toilet_Wall dado | 20d | 2026-09-17 | 2026-10-06 | 595 |  | 7 Days Work | 9160464 |
| 597 | 36900.37000.37100.37600.38300.39400.53700.754000 | Toilet_Granite Work-Ledge wall top | 3d | 2026-10-07 | 2026-10-09 | 596 |  | 7 Days Work | 9160474 |
| 598 | 36900.37000.37100.37600.38300.39400.53700.754100 | Toilet_Floor Tilling work | 20d | 2026-10-10 | 2026-10-29 | 597 |  | 7 Days Work | 9160484 |
| 599 | 36900.37000.37100.37600.38300.39400.53700.754200 | Toilet_1st row of dado | 5d | 2026-10-30 | 2026-11-03 | 598 |  | 7 Days Work | 9160494 |
| 600 | 36900.37000.37100.37600.38300.39400.53700.754300 | Toilet_Window Fixing | 14d | 2026-11-04 | 2026-11-17 | 599 |  | 7 Days Work | 9160504 |
| 601 | 36900.37000.37100.37600.38300.39400.53700.754400 | Toilet_Services above False ceiling | 21d | 2026-11-18 | 2026-12-08 | 600 |  | 7 Days Work | 9160514 |
| 602 | 36900.37000.37100.37600.38300.39400.53700.754500 | Toilet_False Ceiling framing | 12d | 2026-12-09 | 2026-12-20 | 601 |  | 7 Days Work | 9160524 |
| 603 | 36900.37000.37100.37600.38300.39400.53700.754600 | Toilet_Door Frame | 5d | 2026-12-21 | 2026-12-25 | 602 |  | 7 Days Work | 9160534 |
| 604 | 36900.37000.37100.37600.38300.39400.53700.754700 | Toilet_Epoxy Tile Grouting | 7d | 2027-02-20 | 2027-02-26 | 579SS |  | 7 Days Work | 9160544 |
| 605 | 36900.37000.37100.37600.38300.39400.53700.754800 | Toilet_False ceiling board fixing, CP Sanitary Fixture, Electric Fixture | 21d | 2027-02-27 | 2027-03-19 | 604 |  | 7 Days Work | 9160554 |
| 606 | 36900.37000.37100.37600.38300.39500 | **10th Habitable/12th Floor** | 245d | 2026-07-28 | 2027-03-29 |  | start no earlier than 2026-07-28 | 7 Days Work | 9162104 |
| 607 | 36900.37000.37100.37600.38300.39500.155300 | Post Pour | 7d | 2026-07-28 | 2026-08-03 | 54FS+15d |  | 7 Days Work | 9162284 |
| 608 | 36900.37000.37100.37600.38300.39500.155400 | MEP Clearance -1 | 5d | 2026-08-04 | 2026-08-08 | 607 |  | 7 Days Work | 9162294 |
| 609 | 36900.37000.37100.37600.38300.39500.155500 | Benchmark | 1d | 2026-08-09 | 2026-08-09 | 608 |  | 7 Days Work | 9162304 |
| 610 | 36900.37000.37100.37600.38300.39500.155600 | Temporary Railing | 3d | 2026-08-10 | 2026-08-12 | 609 |  | 7 Days Work | 9162314 |
| 611 | 36900.37000.37100.37600.38300.39500.155700 | Blockwork | 10d | 2026-08-13 | 2026-08-22 | 610 |  | 7 Days Work | 9162324 |
| 612 | 36900.37000.37100.37600.38300.39500.155800 | MEP Clearance -2 | 10d | 2026-08-23 | 2026-09-01 | 611 |  | 7 Days Work | 9162334 |
| 613 | 36900.37000.37100.37600.38300.39500.155900 | Gypsum Plaster | 14d | 2026-09-02 | 2026-09-15 | 612 |  | 7 Days Work | 9162344 |
| 614 | 36900.37000.37100.37600.38300.39500.156000 | Kitchen Platform | 3d | 2026-09-16 | 2026-09-18 | 613 |  | 7 Days Work | 9162354 |
| 615 | 36900.37000.37100.37600.38300.39500.156100 | Kitchen dado | 7d | 2026-09-19 | 2026-09-25 | 614 |  | 7 Days Work | 9162364 |
| 616 | 36900.37000.37100.37600.38300.39500.156200 | Fire Fighting | 5d | 2026-09-26 | 2026-09-30 | 615 |  | 7 Days Work | 9162374 |
| 617 | 36900.37000.37100.37600.38300.39500.156300 | Anticapilary | 5d | 2026-10-01 | 2026-10-05 | 616 |  | 7 Days Work | 9162384 |
| 618 | 36900.37000.37100.37600.38300.39500.156400 | Stone Laying | 10d | 2026-11-08 | 2026-11-17 | 658 |  | 7 Days Work | 9162394 |
| 619 | 36900.37000.37100.37600.38300.39500.156500 | Tiles Laying | 7d | 2026-11-08 | 2026-11-14 | 658 |  | 7 Days Work | 9162404 |
| 620 | 36900.37000.37100.37600.38300.39500.156600 | 1st cutting/polishing of stone flooring | 7d | 2026-11-15 | 2026-11-21 | 619 |  | 7 Days Work | 9162414 |
| 621 | 36900.37000.37100.37600.38300.39500.156700 | Tiles/Stone skirting | 5d | 2026-11-22 | 2026-11-26 | 620 |  | 7 Days Work | 9162424 |
| 622 | 36900.37000.37100.37600.38300.39500.156800 | Protechtion sheet | 1d | 2026-11-27 | 2026-11-27 | 621 |  | 7 Days Work | 9162434 |
| 623 | 36900.37000.37100.37600.38300.39500.156900 | Installation of Temporary Door | 1d | 2026-11-28 | 2026-11-28 | 622 |  | 7 Days Work | 9162444 |
| 624 | 36900.37000.37100.37600.38300.39500.157000 | Fixing of window tracks | 5d | 2026-11-29 | 2026-12-03 | 623 |  | 7 Days Work | 9162454 |
| 625 | 36900.37000.37100.37600.38300.39500.157100 | Wire Pulling | 7d | 2026-12-04 | 2026-12-10 | 624 |  | 7 Days Work | 9162464 |
| 626 | 36900.37000.37100.37600.38300.39500.157200 | Gypsum Remaining | 5d | 2026-12-11 | 2026-12-15 | 625 |  | 7 Days Work | 9162474 |
| 627 | 36900.37000.37100.37600.38300.39500.157300 | Fixing of windoow shutter | 5d | 2026-12-16 | 2026-12-20 | 626 |  | 7 Days Work | 9162484 |
| 628 | 36900.37000.37100.37600.38300.39500.157400 | Putty Works - walls & ceiling | 15d | 2026-12-21 | 2027-01-04 | 627 |  | 7 Days Work | 9162494 |
| 629 | 36900.37000.37100.37600.38300.39500.157500 | False Ceiling- Framing | 10d | 2027-01-05 | 2027-01-14 | 628 |  | 7 Days Work | 9162504 |
| 630 | 36900.37000.37100.37600.38300.39500.157600 | Pre Hung Door | 3d | 2027-01-15 | 2027-01-17 | 629 |  | 7 Days Work | 9162514 |
| 631 | 36900.37000.37100.37600.38300.39500.157700 | Protechtion sheet | 2d | 2027-01-18 | 2027-01-19 | 630 |  | 7 Days Work | 9162524 |
| 632 | 36900.37000.37100.37600.38300.39500.157800 | Skirting near door | 2d | 2027-01-20 | 2027-01-21 | 631 |  | 7 Days Work | 9162534 |
| 633 | 36900.37000.37100.37600.38300.39500.157900 | Electrical Switch box fixing | 14d | 2027-01-22 | 2027-02-04 | 632 |  | 7 Days Work | 9162544 |
| 634 | 36900.37000.37100.37600.38300.39500.158000 | Fire Fighting painting | 5d | 2027-02-05 | 2027-02-09 | 633 |  | 7 Days Work | 9162554 |
| 635 | 36900.37000.37100.37600.38300.39500.158100 | Protection of all flooring, door & window hardware | 5d | 2027-02-10 | 2027-02-14 | 634 |  | 7 Days Work | 9162564 |
| 636 | 36900.37000.37100.37600.38300.39500.158200 | 1st coat primer- ceiling 1st & walls | 14d | 2027-02-15 | 2027-02-28 | 635 |  | 7 Days Work | 9162574 |
| 637 | 36900.37000.37100.37600.38300.39500.158300 | Wooden Flooring | 5d | 2027-03-01 | 2027-03-05 | 636 |  | 7 Days Work | 9162584 |
| 638 | 36900.37000.37100.37600.38300.39500.158400 | Removing of Temporary Railing & installation of Glass Railing | 5d | 2027-03-01 | 2027-03-05 | 636 |  | 7 Days Work | 9162594 |
| 639 | 36900.37000.37100.37600.38300.39500.158500 | Tile Grouting | 7d | 2027-03-01 | 2027-03-07 | 636 |  | 7 Days Work | 9162604 |
| 640 | 36900.37000.37100.37600.38300.39500.158600 | False Ceiling | 5d | 2027-03-08 | 2027-03-12 | 639 |  | 7 Days Work | 9162614 |
| 641 | 36900.37000.37100.37600.38300.39500.158700 | 2nd coat of primer | 10d | 2027-03-13 | 2027-03-22 | 640 |  | 7 Days Work | 9162624 |
| 642 | 36900.37000.37100.37600.38300.39500.158800 | Final cutting/polishing of stone flooring | 7d | 2027-03-23 | 2027-03-29 | 641 |  | 7 Days Work | 9162634 |

| ID | WBS | Task | Duration | Start | Finish | Predecessors | Constraint | Calendar | Unique_Task_ID |
| --- | --- | --- | --- | --- | --- | --- | --- | --- | --- |
| 643 | 36900.37000.37100.37600.38300.39500.53800 | **Toilet** | 237d | 2026-08-04 | 2027-03-28 |  | start no earlier than 2026-08-04 | 7 Days Work | 9162194 |
| 644 | 36900.37000.37100.37600.38300.39500.53800.754900 | Toilet_MEP Clearance -1 | 7d | 2026-08-04 | 2026-08-10 | 607 |  | 7 Days Work | 9165524 |
| 645 | 36900.37000.37100.37600.38300.39500.53800.755000 | Toilet_Level Marking | 1d | 2026-08-11 | 2026-08-11 | 644 |  | 7 Days Work | 9165534 |
| 646 | 36900.37000.37100.37600.38300.39500.53800.755100 | Toilet_Chasing work for Electrical conduit & concealed plumbing | 5d | 2026-08-12 | 2026-08-16 | 645 |  | 7 Days Work | 9165544 |
| 647 | 36900.37000.37100.37600.38300.39500.53800.755200 | Toilet_Plumbing work 1st fix | 5d | 2026-08-17 | 2026-08-21 | 646 |  | 7 Days Work | 9165554 |
| 648 | 36900.37000.37100.37600.38300.39500.53800.755300 | Toilet_Sleeve/Bore Packing | 5d | 2026-08-22 | 2026-08-26 | 647 |  | 7 Days Work | 9165564 |
| 649 | 36900.37000.37100.37600.38300.39500.53800.755400 | Toilet_Waterproofing | 10d | 2026-08-27 | 2026-09-05 | 648 |  | 7 Days Work | 9165574 |
| 650 | 36900.37000.37100.37600.38300.39500.53800.755500 | Toilet_Screed | 1d | 2026-09-06 | 2026-09-06 | 649 |  | 7 Days Work | 9165584 |
| 651 | 36900.37000.37100.37600.38300.39500.53800.755600 | Toilet_Plumbing 2nd fix | 5d | 2026-09-07 | 2026-09-11 | 650 |  | 7 Days Work | 9165594 |
| 652 | 36900.37000.37100.37600.38300.39500.53800.755700 | Toilet_Ledge wall | 5d | 2026-09-12 | 2026-09-16 | 651 |  | 7 Days Work | 9165604 |
| 653 | 36900.37000.37100.37600.38300.39500.53800.755800 | Toilet_Cement Plaster | 5d | 2026-09-17 | 2026-09-21 | 652 |  | 7 Days Work | 9165614 |
| 654 | 36900.37000.37100.37600.38300.39500.53800.755900 | Toilet_Door Frame | 1d | 2026-09-22 | 2026-09-22 | 653 |  | 7 Days Work | 9165624 |
| 655 | 36900.37000.37100.37600.38300.39500.53800.756000 | Toilet_Wash basin & Couter | 3d | 2026-09-23 | 2026-09-25 | 654 |  | 7 Days Work | 9165634 |
| 656 | 36900.37000.37100.37600.38300.39500.53800.756100 | Toilet_Wall dado | 20d | 2026-09-26 | 2026-10-15 | 655 |  | 7 Days Work | 9165644 |
| 657 | 36900.37000.37100.37600.38300.39500.53800.756200 | Toilet_Granite Work-Ledge wall top | 3d | 2026-10-16 | 2026-10-18 | 656 |  | 7 Days Work | 9165654 |
| 658 | 36900.37000.37100.37600.38300.39500.53800.756300 | Toilet_Floor Tilling work | 20d | 2026-10-19 | 2026-11-07 | 657 |  | 7 Days Work | 9165664 |
| 659 | 36900.37000.37100.37600.38300.39500.53800.756400 | Toilet_1st row of dado | 5d | 2026-11-08 | 2026-11-12 | 658 |  | 7 Days Work | 9165674 |
| 660 | 36900.37000.37100.37600.38300.39500.53800.756500 | Toilet_Window Fixing | 14d | 2026-11-13 | 2026-11-26 | 659 |  | 7 Days Work | 9165684 |
| 661 | 36900.37000.37100.37600.38300.39500.53800.756600 | Toilet_Services above False ceiling | 21d | 2026-11-27 | 2026-12-17 | 660 |  | 7 Days Work | 9165694 |
| 662 | 36900.37000.37100.37600.38300.39500.53800.756700 | Toilet_False Ceiling framing | 12d | 2026-12-18 | 2026-12-29 | 661 |  | 7 Days Work | 9165704 |
| 663 | 36900.37000.37100.37600.38300.39500.53800.756800 | Toilet_Door Frame | 5d | 2026-12-30 | 2027-01-03 | 662 |  | 7 Days Work | 9165714 |
| 664 | 36900.37000.37100.37600.38300.39500.53800.756900 | Toilet_Epoxy Tile Grouting | 7d | 2027-03-01 | 2027-03-07 | 639SS |  | 7 Days Work | 9165724 |
| 665 | 36900.37000.37100.37600.38300.39500.53800.757000 | Toilet_False ceiling board fixing, CP Sanitary Fixture, Electric Fixture | 21d | 2027-03-08 | 2027-03-28 | 664 |  | 7 Days Work | 9165734 |
| 666 | 36900.37000.37100.37600.38300.39600 | **11th Habitable/13th Floor** | 245d | 2026-08-06 | 2027-04-07 |  | start no earlier than 2026-08-06 | 7 Days Work | 9162114 |
| 667 | 36900.37000.37100.37600.38300.39600.158900 | Post Pour | 7d | 2026-08-06 | 2026-08-12 | 55FS+15d |  | 7 Days Work | 9162644 |
| 668 | 36900.37000.37100.37600.38300.39600.159000 | MEP Clearance -1 | 5d | 2026-08-13 | 2026-08-17 | 667 |  | 7 Days Work | 9162654 |
| 669 | 36900.37000.37100.37600.38300.39600.159100 | Benchmark | 1d | 2026-08-18 | 2026-08-18 | 668 |  | 7 Days Work | 9162664 |
| 670 | 36900.37000.37100.37600.38300.39600.159200 | Temporary Railing | 3d | 2026-08-19 | 2026-08-21 | 669 |  | 7 Days Work | 9162674 |
| 671 | 36900.37000.37100.37600.38300.39600.159300 | Blockwork | 10d | 2026-08-22 | 2026-08-31 | 670 |  | 7 Days Work | 9162684 |
| 672 | 36900.37000.37100.37600.38300.39600.159400 | MEP Clearance -2 | 10d | 2026-09-01 | 2026-09-10 | 671 |  | 7 Days Work | 9162694 |
| 673 | 36900.37000.37100.37600.38300.39600.159500 | Gypsum Plaster | 14d | 2026-09-11 | 2026-09-24 | 672 |  | 7 Days Work | 9162704 |
| 674 | 36900.37000.37100.37600.38300.39600.159600 | Kitchen Platform | 3d | 2026-09-25 | 2026-09-27 | 673 |  | 7 Days Work | 9162714 |
| 675 | 36900.37000.37100.37600.38300.39600.159700 | Kitchen dado | 7d | 2026-09-28 | 2026-10-04 | 674 |  | 7 Days Work | 9162724 |
| 676 | 36900.37000.37100.37600.38300.39600.159800 | Fire Fighting | 5d | 2026-10-05 | 2026-10-09 | 675 |  | 7 Days Work | 9162734 |
| 677 | 36900.37000.37100.37600.38300.39600.159900 | Anticapilary | 5d | 2026-10-10 | 2026-10-14 | 676 |  | 7 Days Work | 9162744 |
| 678 | 36900.37000.37100.37600.38300.39600.160000 | Stone Laying | 10d | 2026-11-17 | 2026-11-26 | 718 |  | 7 Days Work | 9162754 |
| 679 | 36900.37000.37100.37600.38300.39600.160100 | Tiles Laying | 7d | 2026-11-17 | 2026-11-23 | 718 |  | 7 Days Work | 9162764 |
| 680 | 36900.37000.37100.37600.38300.39600.160200 | 1st cutting/polishing of stone flooring | 7d | 2026-11-24 | 2026-11-30 | 679 |  | 7 Days Work | 9162774 |
| 681 | 36900.37000.37100.37600.38300.39600.160300 | Tiles/Stone skirting | 5d | 2026-12-01 | 2026-12-05 | 680 |  | 7 Days Work | 9162784 |
| 682 | 36900.37000.37100.37600.38300.39600.160400 | Protechtion sheet | 1d | 2026-12-06 | 2026-12-06 | 681 |  | 7 Days Work | 9162794 |
| 683 | 36900.37000.37100.37600.38300.39600.160500 | Installation of Temporary Door | 1d | 2026-12-07 | 2026-12-07 | 682 |  | 7 Days Work | 9162804 |
| 684 | 36900.37000.37100.37600.38300.39600.160600 | Fixing of window tracks | 5d | 2026-12-08 | 2026-12-12 | 683 |  | 7 Days Work | 9162814 |
| 685 | 36900.37000.37100.37600.38300.39600.160700 | Wire Pulling | 7d | 2026-12-13 | 2026-12-19 | 684 |  | 7 Days Work | 9162824 |
| 686 | 36900.37000.37100.37600.38300.39600.160800 | Gypsum Remaining | 5d | 2026-12-20 | 2026-12-24 | 685 |  | 7 Days Work | 9162834 |
| 687 | 36900.37000.37100.37600.38300.39600.160900 | Fixing of windoow shutter | 5d | 2026-12-25 | 2026-12-29 | 686 |  | 7 Days Work | 9162844 |
| 688 | 36900.37000.37100.37600.38300.39600.161000 | Putty Works - walls & ceiling | 15d | 2026-12-30 | 2027-01-13 | 687 |  | 7 Days Work | 9162854 |
| 689 | 36900.37000.37100.37600.38300.39600.161100 | False Ceiling- Framing | 10d | 2027-01-14 | 2027-01-23 | 688 |  | 7 Days Work | 9162864 |
| 690 | 36900.37000.37100.37600.38300.39600.161200 | Pre Hung Door | 3d | 2027-01-24 | 2027-01-26 | 689 |  | 7 Days Work | 9162874 |
| 691 | 36900.37000.37100.37600.38300.39600.161300 | Protechtion sheet | 2d | 2027-01-27 | 2027-01-28 | 690 |  | 7 Days Work | 9162884 |
| 692 | 36900.37000.37100.37600.38300.39600.161400 | Skirting near door | 2d | 2027-01-29 | 2027-01-30 | 691 |  | 7 Days Work | 9162894 |
| 693 | 36900.37000.37100.37600.38300.39600.161500 | Electrical Switch box fixing | 14d | 2027-01-31 | 2027-02-13 | 692 |  | 7 Days Work | 9162904 |
| 694 | 36900.37000.37100.37600.38300.39600.161600 | Fire Fighting painting | 5d | 2027-02-14 | 2027-02-18 | 693 |  | 7 Days Work | 9162914 |
| 695 | 36900.37000.37100.37600.38300.39600.161700 | Protection of all flooring, door & window hardware | 5d | 2027-02-19 | 2027-02-23 | 694 |  | 7 Days Work | 9162924 |
| 696 | 36900.37000.37100.37600.38300.39600.161800 | 1st coat primer- ceiling 1st & walls | 14d | 2027-02-24 | 2027-03-09 | 695 |  | 7 Days Work | 9162934 |
| 697 | 36900.37000.37100.37600.38300.39600.161900 | Wooden Flooring | 5d | 2027-03-10 | 2027-03-14 | 696 |  | 7 Days Work | 9162944 |
| 698 | 36900.37000.37100.37600.38300.39600.162000 | Removing of Temporary Railing & installation of Glass Railing | 5d | 2027-03-10 | 2027-03-14 | 696 |  | 7 Days Work | 9162954 |
| 699 | 36900.37000.37100.37600.38300.39600.162100 | Tile Grouting | 7d | 2027-03-10 | 2027-03-16 | 696 |  | 7 Days Work | 9162964 |
| 700 | 36900.37000.37100.37600.38300.39600.162200 | False Ceiling | 5d | 2027-03-17 | 2027-03-21 | 699 |  | 7 Days Work | 9162974 |
| 701 | 36900.37000.37100.37600.38300.39600.162300 | 2nd coat of primer | 10d | 2027-03-22 | 2027-03-31 | 700 |  | 7 Days Work | 9162984 |
| 702 | 36900.37000.37100.37600.38300.39600.162400 | Final cutting/polishing of stone flooring | 7d | 2027-04-01 | 2027-04-07 | 701 |  | 7 Days Work | 9162994 |

| ID | WBS | Task | Duration | Start | Finish | Predecessors | Constraint | Calendar | Unique_Task_ID |
| --- | --- | --- | --- | --- | --- | --- | --- | --- | --- |
| 703 | 36900.37000.37100.37600.38300.39600.53900 | **Toilet** | 237d | 2026-08-13 | 2027-04-06 |  | start no earlier than 2026-08-13 | 7 Days Work | 9162204 |
| 704 | 36900.37000.37100.37600.38300.39600.53900.757100 | Toilet_MEP Clearance -1 | 7d | 2026-08-13 | 2026-08-19 | 667 |  | 7 Days Work | 9165744 |
| 705 | 36900.37000.37100.37600.38300.39600.53900.757200 | Toilet_Level Marking | 1d | 2026-08-20 | 2026-08-20 | 704 |  | 7 Days Work | 9165754 |
| 706 | 36900.37000.37100.37600.38300.39600.53900.757300 | Toilet_Chasing work for Electrical conduit & concealed plumbing | 5d | 2026-08-21 | 2026-08-25 | 705 |  | 7 Days Work | 9165764 |
| 707 | 36900.37000.37100.37600.38300.39600.53900.757400 | Toilet_Plumbing work 1st fix | 5d | 2026-08-26 | 2026-08-30 | 706 |  | 7 Days Work | 9165774 |
| 708 | 36900.37000.37100.37600.38300.39600.53900.757500 | Toilet_Sleeve/Bore Packing | 5d | 2026-08-31 | 2026-09-04 | 707 |  | 7 Days Work | 9165784 |
| 709 | 36900.37000.37100.37600.38300.39600.53900.757600 | Toilet_Waterproofing | 10d | 2026-09-05 | 2026-09-14 | 708 |  | 7 Days Work | 9165794 |
| 710 | 36900.37000.37100.37600.38300.39600.53900.757700 | Toilet_Screed | 1d | 2026-09-15 | 2026-09-15 | 709 |  | 7 Days Work | 9165804 |
| 711 | 36900.37000.37100.37600.38300.39600.53900.757800 | Toilet_Plumbing 2nd fix | 5d | 2026-09-16 | 2026-09-20 | 710 |  | 7 Days Work | 9165814 |
| 712 | 36900.37000.37100.37600.38300.39600.53900.757900 | Toilet_Ledge wall | 5d | 2026-09-21 | 2026-09-25 | 711 |  | 7 Days Work | 9165824 |
| 713 | 36900.37000.37100.37600.38300.39600.53900.758000 | Toilet_Cement Plaster | 5d | 2026-09-26 | 2026-09-30 | 712 |  | 7 Days Work | 9165834 |
| 714 | 36900.37000.37100.37600.38300.39600.53900.758100 | Toilet_Door Frame | 1d | 2026-10-01 | 2026-10-01 | 713 |  | 7 Days Work | 9165844 |
| 715 | 36900.37000.37100.37600.38300.39600.53900.758200 | Toilet_Wash basin & Couter | 3d | 2026-10-02 | 2026-10-04 | 714 |  | 7 Days Work | 9165854 |
| 716 | 36900.37000.37100.37600.38300.39600.53900.758300 | Toilet_Wall dado | 20d | 2026-10-05 | 2026-10-24 | 715 |  | 7 Days Work | 9165864 |
| 717 | 36900.37000.37100.37600.38300.39600.53900.758400 | Toilet_Granite Work-Ledge wall top | 3d | 2026-10-25 | 2026-10-27 | 716 |  | 7 Days Work | 9165874 |
| 718 | 36900.37000.37100.37600.38300.39600.53900.758500 | Toilet_Floor Tilling work | 20d | 2026-10-28 | 2026-11-16 | 717 |  | 7 Days Work | 9165884 |
| 719 | 36900.37000.37100.37600.38300.39600.53900.758600 | Toilet_1st row of dado | 5d | 2026-11-17 | 2026-11-21 | 718 |  | 7 Days Work | 9165894 |
| 720 | 36900.37000.37100.37600.38300.39600.53900.758700 | Toilet_Window Fixing | 14d | 2026-11-22 | 2026-12-05 | 719 |  | 7 Days Work | 9165904 |
| 721 | 36900.37000.37100.37600.38300.39600.53900.758800 | Toilet_Services above False ceiling | 21d | 2026-12-06 | 2026-12-26 | 720 |  | 7 Days Work | 9165914 |
| 722 | 36900.37000.37100.37600.38300.39600.53900.758900 | Toilet_False Ceiling framing | 12d | 2026-12-27 | 2027-01-07 | 721 |  | 7 Days Work | 9165924 |
| 723 | 36900.37000.37100.37600.38300.39600.53900.759000 | Toilet_Door Frame | 5d | 2027-01-08 | 2027-01-12 | 722 |  | 7 Days Work | 9165934 |
| 724 | 36900.37000.37100.37600.38300.39600.53900.759100 | Toilet_Epoxy Tile Grouting | 7d | 2027-03-10 | 2027-03-16 | 699SS |  | 7 Days Work | 9165944 |
| 725 | 36900.37000.37100.37600.38300.39600.53900.759200 | Toilet_False ceiling board fixing, CP Sanitary Fixture, Electric Fixture | 21d | 2027-03-17 | 2027-04-06 | 724 |  | 7 Days Work | 9165954 |
| 726 | 36900.37000.37100.37600.38300.39700 | **12th Habitable/14th Floor** | 245d | 2026-08-18 | 2027-04-19 |  | start no earlier than 2026-08-18 | 7 Days Work | 9162124 |
| 727 | 36900.37000.37100.37600.38300.39700.162500 | Post Pour | 7d | 2026-08-18 | 2026-08-24 | 56FS+15d |  | 7 Days Work | 9163004 |
| 728 | 36900.37000.37100.37600.38300.39700.162600 | MEP Clearance -1 | 5d | 2026-08-25 | 2026-08-29 | 727 |  | 7 Days Work | 9163014 |
| 729 | 36900.37000.37100.37600.38300.39700.162700 | Benchmark | 1d | 2026-08-30 | 2026-08-30 | 728 |  | 7 Days Work | 9163024 |
| 730 | 36900.37000.37100.37600.38300.39700.162800 | Temporary Railing | 3d | 2026-08-31 | 2026-09-02 | 729 |  | 7 Days Work | 9163034 |
| 731 | 36900.37000.37100.37600.38300.39700.162900 | Blockwork | 10d | 2026-09-03 | 2026-09-12 | 730 |  | 7 Days Work | 9163044 |
| 732 | 36900.37000.37100.37600.38300.39700.163000 | MEP Clearance -2 | 10d | 2026-09-13 | 2026-09-22 | 731 |  | 7 Days Work | 9163054 |
| 733 | 36900.37000.37100.37600.38300.39700.163100 | Gypsum Plaster | 14d | 2026-09-23 | 2026-10-06 | 732 |  | 7 Days Work | 9163064 |
| 734 | 36900.37000.37100.37600.38300.39700.163200 | Kitchen Platform | 3d | 2026-10-07 | 2026-10-09 | 733 |  | 7 Days Work | 9163074 |
| 735 | 36900.37000.37100.37600.38300.39700.163300 | Kitchen dado | 7d | 2026-10-10 | 2026-10-16 | 734 |  | 7 Days Work | 9163084 |
| 736 | 36900.37000.37100.37600.38300.39700.163400 | Fire Fighting | 5d | 2026-10-17 | 2026-10-21 | 735 |  | 7 Days Work | 9163094 |
| 737 | 36900.37000.37100.37600.38300.39700.163500 | Anticapilary | 5d | 2026-10-22 | 2026-10-26 | 736 |  | 7 Days Work | 9163104 |
| 738 | 36900.37000.37100.37600.38300.39700.163600 | Stone Laying | 10d | 2026-11-29 | 2026-12-08 | 778 |  | 7 Days Work | 9163114 |
| 739 | 36900.37000.37100.37600.38300.39700.163700 | Tiles Laying | 7d | 2026-11-29 | 2026-12-05 | 778 |  | 7 Days Work | 9163124 |
| 740 | 36900.37000.37100.37600.38300.39700.163800 | 1st cutting/polishing of stone flooring | 7d | 2026-12-06 | 2026-12-12 | 739 |  | 7 Days Work | 9163134 |
| 741 | 36900.37000.37100.37600.38300.39700.163900 | Tiles/Stone skirting | 5d | 2026-12-13 | 2026-12-17 | 740 |  | 7 Days Work | 9163144 |
| 742 | 36900.37000.37100.37600.38300.39700.164000 | Protechtion sheet | 1d | 2026-12-18 | 2026-12-18 | 741 |  | 7 Days Work | 9163154 |
| 743 | 36900.37000.37100.37600.38300.39700.164100 | Installation of Temporary Door | 1d | 2026-12-19 | 2026-12-19 | 742 |  | 7 Days Work | 9163164 |
| 744 | 36900.37000.37100.37600.38300.39700.164200 | Fixing of window tracks | 5d | 2026-12-20 | 2026-12-24 | 743 |  | 7 Days Work | 9163174 |
| 745 | 36900.37000.37100.37600.38300.39700.164300 | Wire Pulling | 7d | 2026-12-25 | 2026-12-31 | 744 |  | 7 Days Work | 9163184 |
| 746 | 36900.37000.37100.37600.38300.39700.164400 | Gypsum Remaining | 5d | 2027-01-01 | 2027-01-05 | 745 |  | 7 Days Work | 9163194 |
| 747 | 36900.37000.37100.37600.38300.39700.164500 | Fixing of windoow shutter | 5d | 2027-01-06 | 2027-01-10 | 746 |  | 7 Days Work | 9163204 |
| 748 | 36900.37000.37100.37600.38300.39700.164600 | Putty Works - walls & ceiling | 15d | 2027-01-11 | 2027-01-25 | 747 |  | 7 Days Work | 9163214 |
| 749 | 36900.37000.37100.37600.38300.39700.164700 | False Ceiling- Framing | 10d | 2027-01-26 | 2027-02-04 | 748 |  | 7 Days Work | 9163224 |
| 750 | 36900.37000.37100.37600.38300.39700.164800 | Pre Hung Door | 3d | 2027-02-05 | 2027-02-07 | 749 |  | 7 Days Work | 9163234 |
| 751 | 36900.37000.37100.37600.38300.39700.164900 | Protechtion sheet | 2d | 2027-02-08 | 2027-02-09 | 750 |  | 7 Days Work | 9163244 |
| 752 | 36900.37000.37100.37600.38300.39700.165000 | Skirting near door | 2d | 2027-02-10 | 2027-02-11 | 751 |  | 7 Days Work | 9163254 |
| 753 | 36900.37000.37100.37600.38300.39700.165100 | Electrical Switch box fixing | 14d | 2027-02-12 | 2027-02-25 | 752 |  | 7 Days Work | 9163264 |
| 754 | 36900.37000.37100.37600.38300.39700.165200 | Fire Fighting painting | 5d | 2027-02-26 | 2027-03-02 | 753 |  | 7 Days Work | 9163274 |
| 755 | 36900.37000.37100.37600.38300.39700.165300 | Protection of all flooring, door & window hardware | 5d | 2027-03-03 | 2027-03-07 | 754 |  | 7 Days Work | 9163284 |
| 756 | 36900.37000.37100.37600.38300.39700.165400 | 1st coat primer- ceiling 1st & walls | 14d | 2027-03-08 | 2027-03-21 | 755 |  | 7 Days Work | 9163294 |
| 757 | 36900.37000.37100.37600.38300.39700.165500 | Wooden Flooring | 5d | 2027-03-22 | 2027-03-26 | 756 |  | 7 Days Work | 9163304 |
| 758 | 36900.37000.37100.37600.38300.39700.165600 | Removing of Temporary Railing & installation of Glass Railing | 5d | 2027-03-22 | 2027-03-26 | 756 |  | 7 Days Work | 9163314 |
| 759 | 36900.37000.37100.37600.38300.39700.165700 | Tile Grouting | 7d | 2027-03-22 | 2027-03-28 | 756 |  | 7 Days Work | 9163324 |
| 760 | 36900.37000.37100.37600.38300.39700.165800 | False Ceiling | 5d | 2027-03-29 | 2027-04-02 | 759 |  | 7 Days Work | 9163334 |
| 761 | 36900.37000.37100.37600.38300.39700.165900 | 2nd coat of primer | 10d | 2027-04-03 | 2027-04-12 | 760 |  | 7 Days Work | 9163344 |
| 762 | 36900.37000.37100.37600.38300.39700.166000 | Final cutting/polishing of stone flooring | 7d | 2027-04-13 | 2027-04-19 | 761 |  | 7 Days Work | 9163354 |

| ID | WBS | Task | Duration | Start | Finish | Predecessors | Constraint | Calendar | Unique_Task_ID |
| --- | --- | --- | --- | --- | --- | --- | --- | --- | --- |
| 763 | 36900.37000.37100.37600.38300.39700.54000 | **Toilet** | 237d | 2026-08-25 | 2027-04-18 |  | start no earlier than 2026-08-25 | 7 Days Work | 9162214 |
| 764 | 36900.37000.37100.37600.38300.39700.54000.759300 | Toilet_MEP Clearance -1 | 7d | 2026-08-25 | 2026-08-31 | 727 |  | 7 Days Work | 9165964 |
| 765 | 36900.37000.37100.37600.38300.39700.54000.759400 | Toilet_Level Marking | 1d | 2026-09-01 | 2026-09-01 | 764 |  | 7 Days Work | 9165974 |
| 766 | 36900.37000.37100.37600.38300.39700.54000.759500 | Toilet_Chasing work for Electrical conduit & concealed plumbing | 5d | 2026-09-02 | 2026-09-06 | 765 |  | 7 Days Work | 9165984 |
| 767 | 36900.37000.37100.37600.38300.39700.54000.759600 | Toilet_Plumbing work 1st fix | 5d | 2026-09-07 | 2026-09-11 | 766 |  | 7 Days Work | 9165994 |
| 768 | 36900.37000.37100.37600.38300.39700.54000.759700 | Toilet_Sleeve/Bore Packing | 5d | 2026-09-12 | 2026-09-16 | 767 |  | 7 Days Work | 9166004 |
| 769 | 36900.37000.37100.37600.38300.39700.54000.759800 | Toilet_Waterproofing | 10d | 2026-09-17 | 2026-09-26 | 768 |  | 7 Days Work | 9166014 |
| 770 | 36900.37000.37100.37600.38300.39700.54000.759900 | Toilet_Screed | 1d | 2026-09-27 | 2026-09-27 | 769 |  | 7 Days Work | 9166024 |
| 771 | 36900.37000.37100.37600.38300.39700.54000.760000 | Toilet_Plumbing 2nd fix | 5d | 2026-09-28 | 2026-10-02 | 770 |  | 7 Days Work | 9166034 |
| 772 | 36900.37000.37100.37600.38300.39700.54000.760100 | Toilet_Ledge wall | 5d | 2026-10-03 | 2026-10-07 | 771 |  | 7 Days Work | 9166044 |
| 773 | 36900.37000.37100.37600.38300.39700.54000.760200 | Toilet_Cement Plaster | 5d | 2026-10-08 | 2026-10-12 | 772 |  | 7 Days Work | 9166054 |
| 774 | 36900.37000.37100.37600.38300.39700.54000.760300 | Toilet_Door Frame | 1d | 2026-10-13 | 2026-10-13 | 773 |  | 7 Days Work | 9166064 |
| 775 | 36900.37000.37100.37600.38300.39700.54000.760400 | Toilet_Wash basin & Couter | 3d | 2026-10-14 | 2026-10-16 | 774 |  | 7 Days Work | 9166074 |
| 776 | 36900.37000.37100.37600.38300.39700.54000.760500 | Toilet_Wall dado | 20d | 2026-10-17 | 2026-11-05 | 775 |  | 7 Days Work | 9166084 |
| 777 | 36900.37000.37100.37600.38300.39700.54000.760600 | Toilet_Granite Work-Ledge wall top | 3d | 2026-11-06 | 2026-11-08 | 776 |  | 7 Days Work | 9166094 |
| 778 | 36900.37000.37100.37600.38300.39700.54000.760700 | Toilet_Floor Tilling work | 20d | 2026-11-09 | 2026-11-28 | 777 |  | 7 Days Work | 9166104 |
| 779 | 36900.37000.37100.37600.38300.39700.54000.760800 | Toilet_1st row of dado | 5d | 2026-11-29 | 2026-12-03 | 778 |  | 7 Days Work | 9166114 |
| 780 | 36900.37000.37100.37600.38300.39700.54000.760900 | Toilet_Window Fixing | 14d | 2026-12-04 | 2026-12-17 | 779 |  | 7 Days Work | 9166124 |
| 781 | 36900.37000.37100.37600.38300.39700.54000.761000 | Toilet_Services above False ceiling | 21d | 2026-12-18 | 2027-01-07 | 780 |  | 7 Days Work | 9166134 |
| 782 | 36900.37000.37100.37600.38300.39700.54000.761100 | Toilet_False Ceiling framing | 12d | 2027-01-08 | 2027-01-19 | 781 |  | 7 Days Work | 9166144 |
| 783 | 36900.37000.37100.37600.38300.39700.54000.761200 | Toilet_Door Frame | 5d | 2027-01-20 | 2027-01-24 | 782 |  | 7 Days Work | 9166154 |
| 784 | 36900.37000.37100.37600.38300.39700.54000.761300 | Toilet_Epoxy Tile Grouting | 7d | 2027-03-22 | 2027-03-28 | 759SS |  | 7 Days Work | 9166164 |
| 785 | 36900.37000.37100.37600.38300.39700.54000.761400 | Toilet_False ceiling board fixing, CP Sanitary Fixture, Electric Fixture | 21d | 2027-03-29 | 2027-04-18 | 784 |  | 7 Days Work | 9166174 |
| 786 | 36900.37000.37100.37600.38300.39800 | **13th Habitable/15th Floor** | 245d | 2026-08-27 | 2027-04-28 |  | start no earlier than 2026-08-27 | 7 Days Work | 9162134 |
| 787 | 36900.37000.37100.37600.38300.39800.166100 | Post Pour | 7d | 2026-08-27 | 2026-09-02 | 57FS+15d |  | 7 Days Work | 9163364 |
| 788 | 36900.37000.37100.37600.38300.39800.166200 | MEP Clearance -1 | 5d | 2026-09-03 | 2026-09-07 | 787 |  | 7 Days Work | 9163374 |
| 789 | 36900.37000.37100.37600.38300.39800.166300 | Benchmark | 1d | 2026-09-08 | 2026-09-08 | 788 |  | 7 Days Work | 9163384 |
| 790 | 36900.37000.37100.37600.38300.39800.166400 | Temporary Railing | 3d | 2026-09-09 | 2026-09-11 | 789 |  | 7 Days Work | 9163394 |
| 791 | 36900.37000.37100.37600.38300.39800.166500 | Blockwork | 10d | 2026-09-12 | 2026-09-21 | 790 |  | 7 Days Work | 9163404 |
| 792 | 36900.37000.37100.37600.38300.39800.166600 | MEP Clearance -2 | 10d | 2026-09-22 | 2026-10-01 | 791 |  | 7 Days Work | 9163414 |
| 793 | 36900.37000.37100.37600.38300.39800.166700 | Gypsum Plaster | 14d | 2026-10-02 | 2026-10-15 | 792 |  | 7 Days Work | 9163424 |
| 794 | 36900.37000.37100.37600.38300.39800.166800 | Kitchen Platform | 3d | 2026-10-16 | 2026-10-18 | 793 |  | 7 Days Work | 9163434 |
| 795 | 36900.37000.37100.37600.38300.39800.166900 | Kitchen dado | 7d | 2026-10-19 | 2026-10-25 | 794 |  | 7 Days Work | 9163444 |
| 796 | 36900.37000.37100.37600.38300.39800.167000 | Fire Fighting | 5d | 2026-10-26 | 2026-10-30 | 795 |  | 7 Days Work | 9163454 |
| 797 | 36900.37000.37100.37600.38300.39800.167100 | Anticapilary | 5d | 2026-10-31 | 2026-11-04 | 796 |  | 7 Days Work | 9163464 |
| 798 | 36900.37000.37100.37600.38300.39800.167200 | Stone Laying | 10d | 2026-12-08 | 2026-12-17 | 838 |  | 7 Days Work | 9163474 |
| 799 | 36900.37000.37100.37600.38300.39800.167300 | Tiles Laying | 7d | 2026-12-08 | 2026-12-14 | 838 |  | 7 Days Work | 9163484 |
| 800 | 36900.37000.37100.37600.38300.39800.167400 | 1st cutting/polishing of stone flooring | 7d | 2026-12-15 | 2026-12-21 | 799 |  | 7 Days Work | 9163494 |
| 801 | 36900.37000.37100.37600.38300.39800.167500 | Tiles/Stone skirting | 5d | 2026-12-22 | 2026-12-26 | 800 |  | 7 Days Work | 9163504 |
| 802 | 36900.37000.37100.37600.38300.39800.167600 | Protechtion sheet | 1d | 2026-12-27 | 2026-12-27 | 801 |  | 7 Days Work | 9163514 |
| 803 | 36900.37000.37100.37600.38300.39800.167700 | Installation of Temporary Door | 1d | 2026-12-28 | 2026-12-28 | 802 |  | 7 Days Work | 9163524 |
| 804 | 36900.37000.37100.37600.38300.39800.167800 | Fixing of window tracks | 5d | 2026-12-29 | 2027-01-02 | 803 |  | 7 Days Work | 9163534 |
| 805 | 36900.37000.37100.37600.38300.39800.167900 | Wire Pulling | 7d | 2027-01-03 | 2027-01-09 | 804 |  | 7 Days Work | 9163544 |
| 806 | 36900.37000.37100.37600.38300.39800.168000 | Gypsum Remaining | 5d | 2027-01-10 | 2027-01-14 | 805 |  | 7 Days Work | 9163554 |
| 807 | 36900.37000.37100.37600.38300.39800.168100 | Fixing of windoow shutter | 5d | 2027-01-15 | 2027-01-19 | 806 |  | 7 Days Work | 9163564 |
| 808 | 36900.37000.37100.37600.38300.39800.168200 | Putty Works - walls & ceiling | 15d | 2027-01-20 | 2027-02-03 | 807 |  | 7 Days Work | 9163574 |
| 809 | 36900.37000.37100.37600.38300.39800.168300 | False Ceiling- Framing | 10d | 2027-02-04 | 2027-02-13 | 808 |  | 7 Days Work | 9163584 |
| 810 | 36900.37000.37100.37600.38300.39800.168400 | Pre Hung Door | 3d | 2027-02-14 | 2027-02-16 | 809 |  | 7 Days Work | 9163594 |
| 811 | 36900.37000.37100.37600.38300.39800.168500 | Protechtion sheet | 2d | 2027-02-17 | 2027-02-18 | 810 |  | 7 Days Work | 9163604 |
| 812 | 36900.37000.37100.37600.38300.39800.168600 | Skirting near door | 2d | 2027-02-19 | 2027-02-20 | 811 |  | 7 Days Work | 9163614 |
| 813 | 36900.37000.37100.37600.38300.39800.168700 | Electrical Switch box fixing | 14d | 2027-02-21 | 2027-03-06 | 812 |  | 7 Days Work | 9163624 |
| 814 | 36900.37000.37100.37600.38300.39800.168800 | Fire Fighting painting | 5d | 2027-03-07 | 2027-03-11 | 813 |  | 7 Days Work | 9163634 |
| 815 | 36900.37000.37100.37600.38300.39800.168900 | Protection of all flooring, door & window hardware | 5d | 2027-03-12 | 2027-03-16 | 814 |  | 7 Days Work | 9163644 |
| 816 | 36900.37000.37100.37600.38300.39800.169000 | 1st coat primer- ceiling 1st & walls | 14d | 2027-03-17 | 2027-03-30 | 815 |  | 7 Days Work | 9163654 |
| 817 | 36900.37000.37100.37600.38300.39800.169100 | Wooden Flooring | 5d | 2027-03-31 | 2027-04-04 | 816 |  | 7 Days Work | 9163664 |
| 818 | 36900.37000.37100.37600.38300.39800.169200 | Removing of Temporary Railing & installation of Glass Railing | 5d | 2027-03-31 | 2027-04-04 | 816 |  | 7 Days Work | 9163674 |
| 819 | 36900.37000.37100.37600.38300.39800.169300 | Tile Grouting | 7d | 2027-03-31 | 2027-04-06 | 816 |  | 7 Days Work | 9163684 |
| 820 | 36900.37000.37100.37600.38300.39800.169400 | False Ceiling | 5d | 2027-04-07 | 2027-04-11 | 819 |  | 7 Days Work | 9163694 |
| 821 | 36900.37000.37100.37600.38300.39800.169500 | 2nd coat of primer | 10d | 2027-04-12 | 2027-04-21 | 820 |  | 7 Days Work | 9163704 |
| 822 | 36900.37000.37100.37600.38300.39800.169600 | Final cutting/polishing of stone flooring | 7d | 2027-04-22 | 2027-04-28 | 821 |  | 7 Days Work | 9163714 |

| ID | WBS | Task | Duration | Start | Finish | Predecessors | Constraint | Calendar | Unique_Task_ID |
| --- | --- | --- | --- | --- | --- | --- | --- | --- | --- |
| 823 | 36900.37000.37100.37600.38300.39800.54100 | **Toilet** | 237d | 2026-09-03 | 2027-04-27 |  | start no earlier than 2026-09-03 | 7 Days Work | 9162224 |
| 824 | 36900.37000.37100.37600.38300.39800.54100.761500 | Toilet_MEP Clearance -1 | 7d | 2026-09-03 | 2026-09-09 | 787 |  | 7 Days Work | 9166184 |
| 825 | 36900.37000.37100.37600.38300.39800.54100.761600 | Toilet_Level Marking | 1d | 2026-09-10 | 2026-09-10 | 824 |  | 7 Days Work | 9166194 |
| 826 | 36900.37000.37100.37600.38300.39800.54100.761700 | Toilet_Chasing work for Electrical conduit & concealed plumbing | 5d | 2026-09-11 | 2026-09-15 | 825 |  | 7 Days Work | 9166204 |
| 827 | 36900.37000.37100.37600.38300.39800.54100.761800 | Toilet_Plumbing work 1st fix | 5d | 2026-09-16 | 2026-09-20 | 826 |  | 7 Days Work | 9166214 |
| 828 | 36900.37000.37100.37600.38300.39800.54100.761900 | Toilet_Sleeve/Bore Packing | 5d | 2026-09-21 | 2026-09-25 | 827 |  | 7 Days Work | 9166224 |
| 829 | 36900.37000.37100.37600.38300.39800.54100.762000 | Toilet_Waterproofing | 10d | 2026-09-26 | 2026-10-05 | 828 |  | 7 Days Work | 9166234 |
| 830 | 36900.37000.37100.37600.38300.39800.54100.762100 | Toilet_Screed | 1d | 2026-10-06 | 2026-10-06 | 829 |  | 7 Days Work | 9166244 |
| 831 | 36900.37000.37100.37600.38300.39800.54100.762200 | Toilet_Plumbing 2nd fix | 5d | 2026-10-07 | 2026-10-11 | 830 |  | 7 Days Work | 9166254 |
| 832 | 36900.37000.37100.37600.38300.39800.54100.762300 | Toilet_Ledge wall | 5d | 2026-10-12 | 2026-10-16 | 831 |  | 7 Days Work | 9166264 |
| 833 | 36900.37000.37100.37600.38300.39800.54100.762400 | Toilet_Cement Plaster | 5d | 2026-10-17 | 2026-10-21 | 832 |  | 7 Days Work | 9166274 |
| 834 | 36900.37000.37100.37600.38300.39800.54100.762500 | Toilet_Door Frame | 1d | 2026-10-22 | 2026-10-22 | 833 |  | 7 Days Work | 9166284 |
| 835 | 36900.37000.37100.37600.38300.39800.54100.762600 | Toilet_Wash basin & Couter | 3d | 2026-10-23 | 2026-10-25 | 834 |  | 7 Days Work | 9166294 |
| 836 | 36900.37000.37100.37600.38300.39800.54100.762700 | Toilet_Wall dado | 20d | 2026-10-26 | 2026-11-14 | 835 |  | 7 Days Work | 9166304 |
| 837 | 36900.37000.37100.37600.38300.39800.54100.762800 | Toilet_Granite Work-Ledge wall top | 3d | 2026-11-15 | 2026-11-17 | 836 |  | 7 Days Work | 9166314 |
| 838 | 36900.37000.37100.37600.38300.39800.54100.762900 | Toilet_Floor Tilling work | 20d | 2026-11-18 | 2026-12-07 | 837 |  | 7 Days Work | 9166324 |
| 839 | 36900.37000.37100.37600.38300.39800.54100.763000 | Toilet_1st row of dado | 5d | 2026-12-08 | 2026-12-12 | 838 |  | 7 Days Work | 9166334 |
| 840 | 36900.37000.37100.37600.38300.39800.54100.763100 | Toilet_Window Fixing | 14d | 2026-12-13 | 2026-12-26 | 839 |  | 7 Days Work | 9166344 |
| 841 | 36900.37000.37100.37600.38300.39800.54100.763200 | Toilet_Services above False ceiling | 21d | 2026-12-27 | 2027-01-16 | 840 |  | 7 Days Work | 9166354 |
| 842 | 36900.37000.37100.37600.38300.39800.54100.763300 | Toilet_False Ceiling framing | 12d | 2027-01-17 | 2027-01-28 | 841 |  | 7 Days Work | 9166364 |
| 843 | 36900.37000.37100.37600.38300.39800.54100.763400 | Toilet_Door Frame | 5d | 2027-01-29 | 2027-02-02 | 842 |  | 7 Days Work | 9166374 |
| 844 | 36900.37000.37100.37600.38300.39800.54100.763500 | Toilet_Epoxy Tile Grouting | 7d | 2027-03-31 | 2027-04-06 | 819SS |  | 7 Days Work | 9166384 |
| 845 | 36900.37000.37100.37600.38300.39800.54100.763600 | Toilet_False ceiling board fixing, CP Sanitary Fixture, Electric Fixture | 21d | 2027-04-07 | 2027-04-27 | 844 |  | 7 Days Work | 9166394 |
| 846 | 36900.37000.37100.37600.38300.39900 | **14th Habitable/16th Floor** | 245d | 2026-09-05 | 2027-05-07 |  | start no earlier than 2026-09-05 | 7 Days Work | 9162144 |
| 847 | 36900.37000.37100.37600.38300.39900.169700 | Post Pour | 7d | 2026-09-05 | 2026-09-11 | 58FS+15d |  | 7 Days Work | 9163724 |
| 848 | 36900.37000.37100.37600.38300.39900.169800 | MEP Clearance -1 | 5d | 2026-09-12 | 2026-09-16 | 847 |  | 7 Days Work | 9163734 |
| 849 | 36900.37000.37100.37600.38300.39900.169900 | Benchmark | 1d | 2026-09-17 | 2026-09-17 | 848 |  | 7 Days Work | 9163744 |
| 850 | 36900.37000.37100.37600.38300.39900.170000 | Temporary Railing | 3d | 2026-09-18 | 2026-09-20 | 849 |  | 7 Days Work | 9163754 |
| 851 | 36900.37000.37100.37600.38300.39900.170100 | Blockwork | 10d | 2026-09-21 | 2026-09-30 | 850 |  | 7 Days Work | 9163764 |
| 852 | 36900.37000.37100.37600.38300.39900.170200 | MEP Clearance -2 | 10d | 2026-10-01 | 2026-10-10 | 851 |  | 7 Days Work | 9163774 |
| 853 | 36900.37000.37100.37600.38300.39900.170300 | Gypsum Plaster | 14d | 2026-10-11 | 2026-10-24 | 852 |  | 7 Days Work | 9163784 |
| 854 | 36900.37000.37100.37600.38300.39900.170400 | Kitchen Platform | 3d | 2026-10-25 | 2026-10-27 | 853 |  | 7 Days Work | 9163794 |
| 855 | 36900.37000.37100.37600.38300.39900.170500 | Kitchen dado | 7d | 2026-10-28 | 2026-11-03 | 854 |  | 7 Days Work | 9163804 |
| 856 | 36900.37000.37100.37600.38300.39900.170600 | Fire Fighting | 5d | 2026-11-04 | 2026-11-08 | 855 |  | 7 Days Work | 9163814 |
| 857 | 36900.37000.37100.37600.38300.39900.170700 | Anticapilary | 5d | 2026-11-09 | 2026-11-13 | 856 |  | 7 Days Work | 9163824 |
| 858 | 36900.37000.37100.37600.38300.39900.170800 | Stone Laying | 10d | 2026-12-17 | 2026-12-26 | 898 |  | 7 Days Work | 9163834 |
| 859 | 36900.37000.37100.37600.38300.39900.170900 | Tiles Laying | 7d | 2026-12-17 | 2026-12-23 | 898 |  | 7 Days Work | 9163844 |
| 860 | 36900.37000.37100.37600.38300.39900.171000 | 1st cutting/polishing of stone flooring | 7d | 2026-12-24 | 2026-12-30 | 859 |  | 7 Days Work | 9163854 |
| 861 | 36900.37000.37100.37600.38300.39900.171100 | Tiles/Stone skirting | 5d | 2026-12-31 | 2027-01-04 | 860 |  | 7 Days Work | 9163864 |
| 862 | 36900.37000.37100.37600.38300.39900.171200 | Protechtion sheet | 1d | 2027-01-05 | 2027-01-05 | 861 |  | 7 Days Work | 9163874 |
| 863 | 36900.37000.37100.37600.38300.39900.171300 | Installation of Temporary Door | 1d | 2027-01-06 | 2027-01-06 | 862 |  | 7 Days Work | 9163884 |
| 864 | 36900.37000.37100.37600.38300.39900.171400 | Fixing of window tracks | 5d | 2027-01-07 | 2027-01-11 | 863 |  | 7 Days Work | 9163894 |
| 865 | 36900.37000.37100.37600.38300.39900.171500 | Wire Pulling | 7d | 2027-01-12 | 2027-01-18 | 864 |  | 7 Days Work | 9163904 |
| 866 | 36900.37000.37100.37600.38300.39900.171600 | Gypsum Remaining | 5d | 2027-01-19 | 2027-01-23 | 865 |  | 7 Days Work | 9163914 |
| 867 | 36900.37000.37100.37600.38300.39900.171700 | Fixing of windoow shutter | 5d | 2027-01-24 | 2027-01-28 | 866 |  | 7 Days Work | 9163924 |
| 868 | 36900.37000.37100.37600.38300.39900.171800 | Putty Works - walls & ceiling | 15d | 2027-01-29 | 2027-02-12 | 867 |  | 7 Days Work | 9163934 |
| 869 | 36900.37000.37100.37600.38300.39900.171900 | False Ceiling- Framing | 10d | 2027-02-13 | 2027-02-22 | 868 |  | 7 Days Work | 9163944 |
| 870 | 36900.37000.37100.37600.38300.39900.172000 | Pre Hung Door | 3d | 2027-02-23 | 2027-02-25 | 869 |  | 7 Days Work | 9163954 |
| 871 | 36900.37000.37100.37600.38300.39900.172100 | Protechtion sheet | 2d | 2027-02-26 | 2027-02-27 | 870 |  | 7 Days Work | 9163964 |
| 872 | 36900.37000.37100.37600.38300.39900.172200 | Skirting near door | 2d | 2027-02-28 | 2027-03-01 | 871 |  | 7 Days Work | 9163974 |
| 873 | 36900.37000.37100.37600.38300.39900.172300 | Electrical Switch box fixing | 14d | 2027-03-02 | 2027-03-15 | 872 |  | 7 Days Work | 9163984 |
| 874 | 36900.37000.37100.37600.38300.39900.172400 | Fire Fighting painting | 5d | 2027-03-16 | 2027-03-20 | 873 |  | 7 Days Work | 9163994 |
| 875 | 36900.37000.37100.37600.38300.39900.172500 | Protection of all flooring, door & window hardware | 5d | 2027-03-21 | 2027-03-25 | 874 |  | 7 Days Work | 9164004 |
| 876 | 36900.37000.37100.37600.38300.39900.172600 | 1st coat primer- ceiling 1st & walls | 14d | 2027-03-26 | 2027-04-08 | 875 |  | 7 Days Work | 9164014 |
| 877 | 36900.37000.37100.37600.38300.39900.172700 | Wooden Flooring | 5d | 2027-04-09 | 2027-04-13 | 876 |  | 7 Days Work | 9164024 |
| 878 | 36900.37000.37100.37600.38300.39900.172800 | Removing of Temporary Railing & installation of Glass Railing | 5d | 2027-04-09 | 2027-04-13 | 876 |  | 7 Days Work | 9164034 |
| 879 | 36900.37000.37100.37600.38300.39900.172900 | Tile Grouting | 7d | 2027-04-09 | 2027-04-15 | 876 |  | 7 Days Work | 9164044 |
| 880 | 36900.37000.37100.37600.38300.39900.173000 | False Ceiling | 5d | 2027-04-16 | 2027-04-20 | 879 |  | 7 Days Work | 9164054 |
| 881 | 36900.37000.37100.37600.38300.39900.173100 | 2nd coat of primer | 10d | 2027-04-21 | 2027-04-30 | 880 |  | 7 Days Work | 9164064 |
| 882 | 36900.37000.37100.37600.38300.39900.173200 | Final cutting/polishing of stone flooring | 7d | 2027-05-01 | 2027-05-07 | 881 |  | 7 Days Work | 9164074 |

| ID | WBS | Task | Duration | Start | Finish | Predecessors | Constraint | Calendar | Unique_Task_ID |
| --- | --- | --- | --- | --- | --- | --- | --- | --- | --- |
| 883 | 36900.37000.37100.37600.38300.39900.54200 | **Toilet** | 237d | 2026-09-12 | 2027-05-06 |  | start no earlier than 2026-09-12 | 7 Days Work | 9162234 |
| 884 | 36900.37000.37100.37600.38300.39900.54200.763700 | Toilet_MEP Clearance -1 | 7d | 2026-09-12 | 2026-09-18 | 847 |  | 7 Days Work | 9166404 |
| 885 | 36900.37000.37100.37600.38300.39900.54200.763800 | Toilet_Level Marking | 1d | 2026-09-19 | 2026-09-19 | 884 |  | 7 Days Work | 9166414 |
| 886 | 36900.37000.37100.37600.38300.39900.54200.763900 | Toilet_Chasing work for Electrical conduit & concealed plumbing | 5d | 2026-09-20 | 2026-09-24 | 885 |  | 7 Days Work | 9166424 |
| 887 | 36900.37000.37100.37600.38300.39900.54200.764000 | Toilet_Plumbing work 1st fix | 5d | 2026-09-25 | 2026-09-29 | 886 |  | 7 Days Work | 9166434 |
| 888 | 36900.37000.37100.37600.38300.39900.54200.764100 | Toilet_Sleeve/Bore Packing | 5d | 2026-09-30 | 2026-10-04 | 887 |  | 7 Days Work | 9166444 |
| 889 | 36900.37000.37100.37600.38300.39900.54200.764200 | Toilet_Waterproofing | 10d | 2026-10-05 | 2026-10-14 | 888 |  | 7 Days Work | 9166454 |
| 890 | 36900.37000.37100.37600.38300.39900.54200.764300 | Toilet_Screed | 1d | 2026-10-15 | 2026-10-15 | 889 |  | 7 Days Work | 9166464 |
| 891 | 36900.37000.37100.37600.38300.39900.54200.764400 | Toilet_Plumbing 2nd fix | 5d | 2026-10-16 | 2026-10-20 | 890 |  | 7 Days Work | 9166474 |
| 892 | 36900.37000.37100.37600.38300.39900.54200.764500 | Toilet_Ledge wall | 5d | 2026-10-21 | 2026-10-25 | 891 |  | 7 Days Work | 9166484 |
| 893 | 36900.37000.37100.37600.38300.39900.54200.764600 | Toilet_Cement Plaster | 5d | 2026-10-26 | 2026-10-30 | 892 |  | 7 Days Work | 9166494 |
| 894 | 36900.37000.37100.37600.38300.39900.54200.764700 | Toilet_Door Frame | 1d | 2026-10-31 | 2026-10-31 | 893 |  | 7 Days Work | 9166504 |
| 895 | 36900.37000.37100.37600.38300.39900.54200.764800 | Toilet_Wash basin & Couter | 3d | 2026-11-01 | 2026-11-03 | 894 |  | 7 Days Work | 9166514 |
| 896 | 36900.37000.37100.37600.38300.39900.54200.764900 | Toilet_Wall dado | 20d | 2026-11-04 | 2026-11-23 | 895 |  | 7 Days Work | 9166524 |
| 897 | 36900.37000.37100.37600.38300.39900.54200.765000 | Toilet_Granite Work-Ledge wall top | 3d | 2026-11-24 | 2026-11-26 | 896 |  | 7 Days Work | 9166534 |
| 898 | 36900.37000.37100.37600.38300.39900.54200.765100 | Toilet_Floor Tilling work | 20d | 2026-11-27 | 2026-12-16 | 897 |  | 7 Days Work | 9166544 |
| 899 | 36900.37000.37100.37600.38300.39900.54200.765200 | Toilet_1st row of dado | 5d | 2026-12-17 | 2026-12-21 | 898 |  | 7 Days Work | 9166554 |
| 900 | 36900.37000.37100.37600.38300.39900.54200.765300 | Toilet_Window Fixing | 14d | 2026-12-22 | 2027-01-04 | 899 |  | 7 Days Work | 9166564 |
| 901 | 36900.37000.37100.37600.38300.39900.54200.765400 | Toilet_Services above False ceiling | 21d | 2027-01-05 | 2027-01-25 | 900 |  | 7 Days Work | 9166574 |
| 902 | 36900.37000.37100.37600.38300.39900.54200.765500 | Toilet_False Ceiling framing | 12d | 2027-01-26 | 2027-02-06 | 901 |  | 7 Days Work | 9166584 |
| 903 | 36900.37000.37100.37600.38300.39900.54200.765600 | Toilet_Door Frame | 5d | 2027-02-07 | 2027-02-11 | 902 |  | 7 Days Work | 9166594 |
| 904 | 36900.37000.37100.37600.38300.39900.54200.765700 | Toilet_Epoxy Tile Grouting | 7d | 2027-04-09 | 2027-04-15 | 879SS |  | 7 Days Work | 9166604 |
| 905 | 36900.37000.37100.37600.38300.39900.54200.765800 | Toilet_False ceiling board fixing, CP Sanitary Fixture, Electric Fixture | 21d | 2027-04-16 | 2027-05-06 | 904 |  | 7 Days Work | 9166614 |
| 906 | 36900.37000.37100.37600.38300.40000 | **15th Habitable/17th Floor** | 245d | 2026-09-14 | 2027-05-16 |  | start no earlier than 2026-09-14 | 7 Days Work | 9162154 |
| 907 | 36900.37000.37100.37600.38300.40000.173300 | Post Pour | 7d | 2026-09-14 | 2026-09-20 | 59FS+15d |  | 7 Days Work | 9164084 |
| 908 | 36900.37000.37100.37600.38300.40000.173400 | MEP Clearance -1 | 5d | 2026-09-21 | 2026-09-25 | 907 |  | 7 Days Work | 9164094 |
| 909 | 36900.37000.37100.37600.38300.40000.173500 | Benchmark | 1d | 2026-09-26 | 2026-09-26 | 908 |  | 7 Days Work | 9164104 |
| 910 | 36900.37000.37100.37600.38300.40000.173600 | Temporary Railing | 3d | 2026-09-27 | 2026-09-29 | 909 |  | 7 Days Work | 9164114 |
| 911 | 36900.37000.37100.37600.38300.40000.173700 | Blockwork | 10d | 2026-09-30 | 2026-10-09 | 910 |  | 7 Days Work | 9164124 |
| 912 | 36900.37000.37100.37600.38300.40000.173800 | MEP Clearance -2 | 10d | 2026-10-10 | 2026-10-19 | 911 |  | 7 Days Work | 9164134 |
| 913 | 36900.37000.37100.37600.38300.40000.173900 | Gypsum Plaster | 14d | 2026-10-20 | 2026-11-02 | 912 |  | 7 Days Work | 9164144 |
| 914 | 36900.37000.37100.37600.38300.40000.174000 | Kitchen Platform | 3d | 2026-11-03 | 2026-11-05 | 913 |  | 7 Days Work | 9164154 |
| 915 | 36900.37000.37100.37600.38300.40000.174100 | Kitchen dado | 7d | 2026-11-06 | 2026-11-12 | 914 |  | 7 Days Work | 9164164 |
| 916 | 36900.37000.37100.37600.38300.40000.174200 | Fire Fighting | 5d | 2026-11-13 | 2026-11-17 | 915 |  | 7 Days Work | 9164174 |
| 917 | 36900.37000.37100.37600.38300.40000.174300 | Anticapilary | 5d | 2026-11-18 | 2026-11-22 | 916 |  | 7 Days Work | 9164184 |
| 918 | 36900.37000.37100.37600.38300.40000.174400 | Stone Laying | 10d | 2026-12-26 | 2027-01-04 | 958 |  | 7 Days Work | 9164194 |
| 919 | 36900.37000.37100.37600.38300.40000.174500 | Tiles Laying | 7d | 2026-12-26 | 2027-01-01 | 958 |  | 7 Days Work | 9164204 |
| 920 | 36900.37000.37100.37600.38300.40000.174600 | 1st cutting/polishing of stone flooring | 7d | 2027-01-02 | 2027-01-08 | 919 |  | 7 Days Work | 9164214 |
| 921 | 36900.37000.37100.37600.38300.40000.174700 | Tiles/Stone skirting | 5d | 2027-01-09 | 2027-01-13 | 920 |  | 7 Days Work | 9164224 |
| 922 | 36900.37000.37100.37600.38300.40000.174800 | Protechtion sheet | 1d | 2027-01-14 | 2027-01-14 | 921 |  | 7 Days Work | 9164234 |
| 923 | 36900.37000.37100.37600.38300.40000.174900 | Installation of Temporary Door | 1d | 2027-01-15 | 2027-01-15 | 922 |  | 7 Days Work | 9164244 |
| 924 | 36900.37000.37100.37600.38300.40000.175000 | Fixing of window tracks | 5d | 2027-01-16 | 2027-01-20 | 923 |  | 7 Days Work | 9164254 |
| 925 | 36900.37000.37100.37600.38300.40000.175100 | Wire Pulling | 7d | 2027-01-21 | 2027-01-27 | 924 |  | 7 Days Work | 9164264 |
| 926 | 36900.37000.37100.37600.38300.40000.175200 | Gypsum Remaining | 5d | 2027-01-28 | 2027-02-01 | 925 |  | 7 Days Work | 9164274 |
| 927 | 36900.37000.37100.37600.38300.40000.175300 | Fixing of windoow shutter | 5d | 2027-02-02 | 2027-02-06 | 926 |  | 7 Days Work | 9164284 |
| 928 | 36900.37000.37100.37600.38300.40000.175400 | Putty Works - walls & ceiling | 15d | 2027-02-07 | 2027-02-21 | 927 |  | 7 Days Work | 9164294 |
| 929 | 36900.37000.37100.37600.38300.40000.175500 | False Ceiling- Framing | 10d | 2027-02-22 | 2027-03-03 | 928 |  | 7 Days Work | 9164304 |
| 930 | 36900.37000.37100.37600.38300.40000.175600 | Pre Hung Door | 3d | 2027-03-04 | 2027-03-06 | 929 |  | 7 Days Work | 9164314 |
| 931 | 36900.37000.37100.37600.38300.40000.175700 | Protechtion sheet | 2d | 2027-03-07 | 2027-03-08 | 930 |  | 7 Days Work | 9164324 |
| 932 | 36900.37000.37100.37600.38300.40000.175800 | Skirting near door | 2d | 2027-03-09 | 2027-03-10 | 931 |  | 7 Days Work | 9164334 |
| 933 | 36900.37000.37100.37600.38300.40000.175900 | Electrical Switch box fixing | 14d | 2027-03-11 | 2027-03-24 | 932 |  | 7 Days Work | 9164344 |
| 934 | 36900.37000.37100.37600.38300.40000.176000 | Fire Fighting painting | 5d | 2027-03-25 | 2027-03-29 | 933 |  | 7 Days Work | 9164354 |
| 935 | 36900.37000.37100.37600.38300.40000.176100 | Protection of all flooring, door & window hardware | 5d | 2027-03-30 | 2027-04-03 | 934 |  | 7 Days Work | 9164364 |
| 936 | 36900.37000.37100.37600.38300.40000.176200 | 1st coat primer- ceiling 1st & walls | 14d | 2027-04-04 | 2027-04-17 | 935 |  | 7 Days Work | 9164374 |
| 937 | 36900.37000.37100.37600.38300.40000.176300 | Wooden Flooring | 5d | 2027-04-18 | 2027-04-22 | 936 |  | 7 Days Work | 9164384 |
| 938 | 36900.37000.37100.37600.38300.40000.176400 | Removing of Temporary Railing & installation of Glass Railing | 5d | 2027-04-18 | 2027-04-22 | 936 |  | 7 Days Work | 9164394 |
| 939 | 36900.37000.37100.37600.38300.40000.176500 | Tile Grouting | 7d | 2027-04-18 | 2027-04-24 | 936 |  | 7 Days Work | 9164404 |
| 940 | 36900.37000.37100.37600.38300.40000.176600 | False Ceiling | 5d | 2027-04-25 | 2027-04-29 | 939 |  | 7 Days Work | 9164414 |
| 941 | 36900.37000.37100.37600.38300.40000.176700 | 2nd coat of primer | 10d | 2027-04-30 | 2027-05-09 | 940 |  | 7 Days Work | 9164424 |
| 942 | 36900.37000.37100.37600.38300.40000.176800 | Final cutting/polishing of stone flooring | 7d | 2027-05-10 | 2027-05-16 | 941 |  | 7 Days Work | 9164434 |

| ID | WBS | Task | Duration | Start | Finish | Predecessors | Constraint | Calendar | Unique_Task_ID |
| --- | --- | --- | --- | --- | --- | --- | --- | --- | --- |
| 943 | 36900.37000.37100.37600.38300.40000.54300 | **Toilet** | 237d | 2026-09-21 | 2027-05-15 |  | start no earlier than 2026-09-21 | 7 Days Work | 9162244 |
| 944 | 36900.37000.37100.37600.38300.40000.54300.765900 | Toilet_MEP Clearance -1 | 7d | 2026-09-21 | 2026-09-27 | 907 |  | 7 Days Work | 9166624 |
| 945 | 36900.37000.37100.37600.38300.40000.54300.766000 | Toilet_Level Marking | 1d | 2026-09-28 | 2026-09-28 | 944 |  | 7 Days Work | 9166634 |
| 946 | 36900.37000.37100.37600.38300.40000.54300.766100 | Toilet_Chasing work for Electrical conduit & concealed plumbing | 5d | 2026-09-29 | 2026-10-03 | 945 |  | 7 Days Work | 9166644 |
| 947 | 36900.37000.37100.37600.38300.40000.54300.766200 | Toilet_Plumbing work 1st fix | 5d | 2026-10-04 | 2026-10-08 | 946 |  | 7 Days Work | 9166654 |
| 948 | 36900.37000.37100.37600.38300.40000.54300.766300 | Toilet_Sleeve/Bore Packing | 5d | 2026-10-09 | 2026-10-13 | 947 |  | 7 Days Work | 9166664 |
| 949 | 36900.37000.37100.37600.38300.40000.54300.766400 | Toilet_Waterproofing | 10d | 2026-10-14 | 2026-10-23 | 948 |  | 7 Days Work | 9166674 |
| 950 | 36900.37000.37100.37600.38300.40000.54300.766500 | Toilet_Screed | 1d | 2026-10-24 | 2026-10-24 | 949 |  | 7 Days Work | 9166684 |
| 951 | 36900.37000.37100.37600.38300.40000.54300.766600 | Toilet_Plumbing 2nd fix | 5d | 2026-10-25 | 2026-10-29 | 950 |  | 7 Days Work | 9166694 |
| 952 | 36900.37000.37100.37600.38300.40000.54300.766700 | Toilet_Ledge wall | 5d | 2026-10-30 | 2026-11-03 | 951 |  | 7 Days Work | 9166704 |
| 953 | 36900.37000.37100.37600.38300.40000.54300.766800 | Toilet_Cement Plaster | 5d | 2026-11-04 | 2026-11-08 | 952 |  | 7 Days Work | 9166714 |
| 954 | 36900.37000.37100.37600.38300.40000.54300.766900 | Toilet_Door Frame | 1d | 2026-11-09 | 2026-11-09 | 953 |  | 7 Days Work | 9166724 |
| 955 | 36900.37000.37100.37600.38300.40000.54300.767000 | Toilet_Wash basin & Couter | 3d | 2026-11-10 | 2026-11-12 | 954 |  | 7 Days Work | 9166734 |
| 956 | 36900.37000.37100.37600.38300.40000.54300.767100 | Toilet_Wall dado | 20d | 2026-11-13 | 2026-12-02 | 955 |  | 7 Days Work | 9166744 |
| 957 | 36900.37000.37100.37600.38300.40000.54300.767200 | Toilet_Granite Work-Ledge wall top | 3d | 2026-12-03 | 2026-12-05 | 956 |  | 7 Days Work | 9166754 |
| 958 | 36900.37000.37100.37600.38300.40000.54300.767300 | Toilet_Floor Tilling work | 20d | 2026-12-06 | 2026-12-25 | 957 |  | 7 Days Work | 9166764 |
| 959 | 36900.37000.37100.37600.38300.40000.54300.767400 | Toilet_1st row of dado | 5d | 2026-12-26 | 2026-12-30 | 958 |  | 7 Days Work | 9166774 |
| 960 | 36900.37000.37100.37600.38300.40000.54300.767500 | Toilet_Window Fixing | 14d | 2026-12-31 | 2027-01-13 | 959 |  | 7 Days Work | 9166784 |
| 961 | 36900.37000.37100.37600.38300.40000.54300.767600 | Toilet_Services above False ceiling | 21d | 2027-01-14 | 2027-02-03 | 960 |  | 7 Days Work | 9166794 |
| 962 | 36900.37000.37100.37600.38300.40000.54300.767700 | Toilet_False Ceiling framing | 12d | 2027-02-04 | 2027-02-15 | 961 |  | 7 Days Work | 9166804 |
| 963 | 36900.37000.37100.37600.38300.40000.54300.767800 | Toilet_Door Frame | 5d | 2027-02-16 | 2027-02-20 | 962 |  | 7 Days Work | 9166814 |
| 964 | 36900.37000.37100.37600.38300.40000.54300.767900 | Toilet_Epoxy Tile Grouting | 7d | 2027-04-18 | 2027-04-24 | 939SS |  | 7 Days Work | 9166824 |
| 965 | 36900.37000.37100.37600.38300.40000.54300.768000 | Toilet_False ceiling board fixing, CP Sanitary Fixture, Electric Fixture | 21d | 2027-04-25 | 2027-05-15 | 964 |  | 7 Days Work | 9166834 |
| 966 | 36900.37000.37100.37600.38300.40100 | **16th Habitable/18th Floor** | 245d | 2026-09-26 | 2027-05-28 |  | start no earlier than 2026-09-26 | 7 Days Work | 9162164 |
| 967 | 36900.37000.37100.37600.38300.40100.176900 | Post Pour | 7d | 2026-09-26 | 2026-10-02 | 60FS+15d |  | 7 Days Work | 9164444 |
| 968 | 36900.37000.37100.37600.38300.40100.177000 | MEP Clearance -1 | 5d | 2026-10-03 | 2026-10-07 | 967 |  | 7 Days Work | 9164454 |
| 969 | 36900.37000.37100.37600.38300.40100.177100 | Benchmark | 1d | 2026-10-08 | 2026-10-08 | 968 |  | 7 Days Work | 9164464 |
| 970 | 36900.37000.37100.37600.38300.40100.177200 | Temporary Railing | 3d | 2026-10-09 | 2026-10-11 | 969 |  | 7 Days Work | 9164474 |
| 971 | 36900.37000.37100.37600.38300.40100.177300 | Blockwork | 10d | 2026-10-12 | 2026-10-21 | 970 |  | 7 Days Work | 9164484 |
| 972 | 36900.37000.37100.37600.38300.40100.177400 | MEP Clearance -2 | 10d | 2026-10-22 | 2026-10-31 | 971 |  | 7 Days Work | 9164494 |
| 973 | 36900.37000.37100.37600.38300.40100.177500 | Gypsum Plaster | 14d | 2026-11-01 | 2026-11-14 | 972 |  | 7 Days Work | 9164504 |
| 974 | 36900.37000.37100.37600.38300.40100.177600 | Kitchen Platform | 3d | 2026-11-15 | 2026-11-17 | 973 |  | 7 Days Work | 9164514 |
| 975 | 36900.37000.37100.37600.38300.40100.177700 | Kitchen dado | 7d | 2026-11-18 | 2026-11-24 | 974 |  | 7 Days Work | 9164524 |
| 976 | 36900.37000.37100.37600.38300.40100.177800 | Fire Fighting | 5d | 2026-11-25 | 2026-11-29 | 975 |  | 7 Days Work | 9164534 |
| 977 | 36900.37000.37100.37600.38300.40100.177900 | Anticapilary | 5d | 2026-11-30 | 2026-12-04 | 976 |  | 7 Days Work | 9164544 |
| 978 | 36900.37000.37100.37600.38300.40100.178000 | Stone Laying | 10d | 2027-01-07 | 2027-01-16 | 1018 |  | 7 Days Work | 9164554 |
| 979 | 36900.37000.37100.37600.38300.40100.178100 | Tiles Laying | 7d | 2027-01-07 | 2027-01-13 | 1018 |  | 7 Days Work | 9164564 |
| 980 | 36900.37000.37100.37600.38300.40100.178200 | 1st cutting/polishing of stone flooring | 7d | 2027-01-14 | 2027-01-20 | 979 |  | 7 Days Work | 9164574 |
| 981 | 36900.37000.37100.37600.38300.40100.178300 | Tiles/Stone skirting | 5d | 2027-01-21 | 2027-01-25 | 980 |  | 7 Days Work | 9164584 |
| 982 | 36900.37000.37100.37600.38300.40100.178400 | Protechtion sheet | 1d | 2027-01-26 | 2027-01-26 | 981 |  | 7 Days Work | 9164594 |
| 983 | 36900.37000.37100.37600.38300.40100.178500 | Installation of Temporary Door | 1d | 2027-01-27 | 2027-01-27 | 982 |  | 7 Days Work | 9164604 |
| 984 | 36900.37000.37100.37600.38300.40100.178600 | Fixing of window tracks | 5d | 2027-01-28 | 2027-02-01 | 983 |  | 7 Days Work | 9164614 |
| 985 | 36900.37000.37100.37600.38300.40100.178700 | Wire Pulling | 7d | 2027-02-02 | 2027-02-08 | 984 |  | 7 Days Work | 9164624 |
| 986 | 36900.37000.37100.37600.38300.40100.178800 | Gypsum Remaining | 5d | 2027-02-09 | 2027-02-13 | 985 |  | 7 Days Work | 9164634 |
| 987 | 36900.37000.37100.37600.38300.40100.178900 | Fixing of windoow shutter | 5d | 2027-02-14 | 2027-02-18 | 986 |  | 7 Days Work | 9164644 |
| 988 | 36900.37000.37100.37600.38300.40100.179000 | Putty Works - walls & ceiling | 15d | 2027-02-19 | 2027-03-05 | 987 |  | 7 Days Work | 9164654 |
| 989 | 36900.37000.37100.37600.38300.40100.179100 | False Ceiling- Framing | 10d | 2027-03-06 | 2027-03-15 | 988 |  | 7 Days Work | 9164664 |
| 990 | 36900.37000.37100.37600.38300.40100.179200 | Pre Hung Door | 3d | 2027-03-16 | 2027-03-18 | 989 |  | 7 Days Work | 9164674 |
| 991 | 36900.37000.37100.37600.38300.40100.179300 | Protechtion sheet | 2d | 2027-03-19 | 2027-03-20 | 990 |  | 7 Days Work | 9164684 |
| 992 | 36900.37000.37100.37600.38300.40100.179400 | Skirting near door | 2d | 2027-03-21 | 2027-03-22 | 991 |  | 7 Days Work | 9164694 |
| 993 | 36900.37000.37100.37600.38300.40100.179500 | Electrical Switch box fixing | 14d | 2027-03-23 | 2027-04-05 | 992 |  | 7 Days Work | 9164704 |
| 994 | 36900.37000.37100.37600.38300.40100.179600 | Fire Fighting painting | 5d | 2027-04-06 | 2027-04-10 | 993 |  | 7 Days Work | 9164714 |
| 995 | 36900.37000.37100.37600.38300.40100.179700 | Protection of all flooring, door & window hardware | 5d | 2027-04-11 | 2027-04-15 | 994 |  | 7 Days Work | 9164724 |
| 996 | 36900.37000.37100.37600.38300.40100.179800 | 1st coat primer- ceiling 1st & walls | 14d | 2027-04-16 | 2027-04-29 | 995 |  | 7 Days Work | 9164734 |
| 997 | 36900.37000.37100.37600.38300.40100.179900 | Wooden Flooring | 5d | 2027-04-30 | 2027-05-04 | 996 |  | 7 Days Work | 9164744 |
| 998 | 36900.37000.37100.37600.38300.40100.180000 | Removing of Temporary Railing & installation of Glass Railing | 5d | 2027-04-30 | 2027-05-04 | 996 |  | 7 Days Work | 9164754 |
| 999 | 36900.37000.37100.37600.38300.40100.180100 | Tile Grouting | 7d | 2027-04-30 | 2027-05-06 | 996 |  | 7 Days Work | 9164764 |
| 1000 | 36900.37000.37100.37600.38300.40100.180200 | False Ceiling | 5d | 2027-05-07 | 2027-05-11 | 999 |  | 7 Days Work | 9164774 |
| 1001 | 36900.37000.37100.37600.38300.40100.180300 | 2nd coat of primer | 10d | 2027-05-12 | 2027-05-21 | 1000 |  | 7 Days Work | 9164784 |
| 1002 | 36900.37000.37100.37600.38300.40100.180400 | Final cutting/polishing of stone flooring | 7d | 2027-05-22 | 2027-05-28 | 1001 |  | 7 Days Work | 9164794 |

| ID | WBS | Task | Duration | Start | Finish | Predecessors | Constraint | Calendar | Unique_Task_ID |
| --- | --- | --- | --- | --- | --- | --- | --- | --- | --- |
| 1003 | 36900.37000.37100.37600.38300.40100.54400 | **Toilet** | 237d | 2026-10-03 | 2027-05-27 |  | start no earlier than 2026-10-03 | 7 Days Work | 9162254 |
| 1004 | 36900.37000.37100.37600.38300.40100.54400.768100 | Toilet_MEP Clearance -1 | 7d | 2026-10-03 | 2026-10-09 | 967 |  | 7 Days Work | 9166844 |
| 1005 | 36900.37000.37100.37600.38300.40100.54400.768200 | Toilet_Level Marking | 1d | 2026-10-10 | 2026-10-10 | 1004 |  | 7 Days Work | 9166854 |
| 1006 | 36900.37000.37100.37600.38300.40100.54400.768300 | Toilet_Chasing work for Electrical conduit & concealed plumbing | 5d | 2026-10-11 | 2026-10-15 | 1005 |  | 7 Days Work | 9166864 |
| 1007 | 36900.37000.37100.37600.38300.40100.54400.768400 | Toilet_Plumbing work 1st fix | 5d | 2026-10-16 | 2026-10-20 | 1006 |  | 7 Days Work | 9166874 |
| 1008 | 36900.37000.37100.37600.38300.40100.54400.768500 | Toilet_Sleeve/Bore Packing | 5d | 2026-10-21 | 2026-10-25 | 1007 |  | 7 Days Work | 9166884 |
| 1009 | 36900.37000.37100.37600.38300.40100.54400.768600 | Toilet_Waterproofing | 10d | 2026-10-26 | 2026-11-04 | 1008 |  | 7 Days Work | 9166894 |
| 1010 | 36900.37000.37100.37600.38300.40100.54400.768700 | Toilet_Screed | 1d | 2026-11-05 | 2026-11-05 | 1009 |  | 7 Days Work | 9166904 |
| 1011 | 36900.37000.37100.37600.38300.40100.54400.768800 | Toilet_Plumbing 2nd fix | 5d | 2026-11-06 | 2026-11-10 | 1010 |  | 7 Days Work | 9166914 |
| 1012 | 36900.37000.37100.37600.38300.40100.54400.768900 | Toilet_Ledge wall | 5d | 2026-11-11 | 2026-11-15 | 1011 |  | 7 Days Work | 9166924 |
| 1013 | 36900.37000.37100.37600.38300.40100.54400.769000 | Toilet_Cement Plaster | 5d | 2026-11-16 | 2026-11-20 | 1012 |  | 7 Days Work | 9166934 |
| 1014 | 36900.37000.37100.37600.38300.40100.54400.769100 | Toilet_Door Frame | 1d | 2026-11-21 | 2026-11-21 | 1013 |  | 7 Days Work | 9166944 |
| 1015 | 36900.37000.37100.37600.38300.40100.54400.769200 | Toilet_Wash basin & Couter | 3d | 2026-11-22 | 2026-11-24 | 1014 |  | 7 Days Work | 9166954 |
| 1016 | 36900.37000.37100.37600.38300.40100.54400.769300 | Toilet_Wall dado | 20d | 2026-11-25 | 2026-12-14 | 1015 |  | 7 Days Work | 9166964 |
| 1017 | 36900.37000.37100.37600.38300.40100.54400.769400 | Toilet_Granite Work-Ledge wall top | 3d | 2026-12-15 | 2026-12-17 | 1016 |  | 7 Days Work | 9166974 |
| 1018 | 36900.37000.37100.37600.38300.40100.54400.769500 | Toilet_Floor Tilling work | 20d | 2026-12-18 | 2027-01-06 | 1017 |  | 7 Days Work | 9166984 |
| 1019 | 36900.37000.37100.37600.38300.40100.54400.769600 | Toilet_1st row of dado | 5d | 2027-01-07 | 2027-01-11 | 1018 |  | 7 Days Work | 9166994 |
| 1020 | 36900.37000.37100.37600.38300.40100.54400.769700 | Toilet_Window Fixing | 14d | 2027-01-12 | 2027-01-25 | 1019 |  | 7 Days Work | 9167004 |
| 1021 | 36900.37000.37100.37600.38300.40100.54400.769800 | Toilet_Services above False ceiling | 21d | 2027-01-26 | 2027-02-15 | 1020 |  | 7 Days Work | 9167014 |
| 1022 | 36900.37000.37100.37600.38300.40100.54400.769900 | Toilet_False Ceiling framing | 12d | 2027-02-16 | 2027-02-27 | 1021 |  | 7 Days Work | 9167024 |
| 1023 | 36900.37000.37100.37600.38300.40100.54400.770000 | Toilet_Door Frame | 5d | 2027-02-28 | 2027-03-04 | 1022 |  | 7 Days Work | 9167034 |
| 1024 | 36900.37000.37100.37600.38300.40100.54400.770100 | Toilet_Epoxy Tile Grouting | 7d | 2027-04-30 | 2027-05-06 | 999SS |  | 7 Days Work | 9167044 |
| 1025 | 36900.37000.37100.37600.38300.40100.54400.770200 | Toilet_False ceiling board fixing, CP Sanitary Fixture, Electric Fixture | 21d | 2027-05-07 | 2027-05-27 | 1024 |  | 7 Days Work | 9167054 |
| 1026 | 36900.37000.37100.37600.38300.40200 | **17th Habitable/19th Floor** | 245d | 2026-10-05 | 2027-06-06 |  | start no earlier than 2026-10-05 | 7 Days Work | 9162174 |
| 1027 | 36900.37000.37100.37600.38300.40200.180500 | Post Pour | 7d | 2026-10-05 | 2026-10-11 | 61FS+15d |  | 7 Days Work | 9164804 |
| 1028 | 36900.37000.37100.37600.38300.40200.180600 | MEP Clearance -1 | 5d | 2026-10-12 | 2026-10-16 | 1027 |  | 7 Days Work | 9164814 |
| 1029 | 36900.37000.37100.37600.38300.40200.180700 | Benchmark | 1d | 2026-10-17 | 2026-10-17 | 1028 |  | 7 Days Work | 9164824 |
| 1030 | 36900.37000.37100.37600.38300.40200.180800 | Temporary Railing | 3d | 2026-10-18 | 2026-10-20 | 1029 |  | 7 Days Work | 9164834 |
| 1031 | 36900.37000.37100.37600.38300.40200.180900 | Blockwork | 10d | 2026-10-21 | 2026-10-30 | 1030 |  | 7 Days Work | 9164844 |
| 1032 | 36900.37000.37100.37600.38300.40200.181000 | MEP Clearance -2 | 10d | 2026-10-31 | 2026-11-09 | 1031 |  | 7 Days Work | 9164854 |
| 1033 | 36900.37000.37100.37600.38300.40200.181100 | Gypsum Plaster | 14d | 2026-11-10 | 2026-11-23 | 1032 |  | 7 Days Work | 9164864 |
| 1034 | 36900.37000.37100.37600.38300.40200.181200 | Kitchen Platform | 3d | 2026-11-24 | 2026-11-26 | 1033 |  | 7 Days Work | 9164874 |
| 1035 | 36900.37000.37100.37600.38300.40200.181300 | Kitchen dado | 7d | 2026-11-27 | 2026-12-03 | 1034 |  | 7 Days Work | 9164884 |
| 1036 | 36900.37000.37100.37600.38300.40200.181400 | Fire Fighting | 5d | 2026-12-04 | 2026-12-08 | 1035 |  | 7 Days Work | 9164894 |
| 1037 | 36900.37000.37100.37600.38300.40200.181500 | Anticapilary | 5d | 2026-12-09 | 2026-12-13 | 1036 |  | 7 Days Work | 9164904 |
| 1038 | 36900.37000.37100.37600.38300.40200.181600 | Stone Laying | 10d | 2027-01-16 | 2027-01-25 | 1078 |  | 7 Days Work | 9164914 |
| 1039 | 36900.37000.37100.37600.38300.40200.181700 | Tiles Laying | 7d | 2027-01-16 | 2027-01-22 | 1078 |  | 7 Days Work | 9164924 |
| 1040 | 36900.37000.37100.37600.38300.40200.181800 | 1st cutting/polishing of stone flooring | 7d | 2027-01-23 | 2027-01-29 | 1039 |  | 7 Days Work | 9164934 |
| 1041 | 36900.37000.37100.37600.38300.40200.181900 | Tiles/Stone skirting | 5d | 2027-01-30 | 2027-02-03 | 1040 |  | 7 Days Work | 9164944 |
| 1042 | 36900.37000.37100.37600.38300.40200.182000 | Protechtion sheet | 1d | 2027-02-04 | 2027-02-04 | 1041 |  | 7 Days Work | 9164954 |
| 1043 | 36900.37000.37100.37600.38300.40200.182100 | Installation of Temporary Door | 1d | 2027-02-05 | 2027-02-05 | 1042 |  | 7 Days Work | 9164964 |
| 1044 | 36900.37000.37100.37600.38300.40200.182200 | Fixing of window tracks | 5d | 2027-02-06 | 2027-02-10 | 1043 |  | 7 Days Work | 9164974 |
| 1045 | 36900.37000.37100.37600.38300.40200.182300 | Wire Pulling | 7d | 2027-02-11 | 2027-02-17 | 1044 |  | 7 Days Work | 9164984 |
| 1046 | 36900.37000.37100.37600.38300.40200.182400 | Gypsum Remaining | 5d | 2027-02-18 | 2027-02-22 | 1045 |  | 7 Days Work | 9164994 |
| 1047 | 36900.37000.37100.37600.38300.40200.182500 | Fixing of windoow shutter | 5d | 2027-02-23 | 2027-02-27 | 1046 |  | 7 Days Work | 9165004 |
| 1048 | 36900.37000.37100.37600.38300.40200.182600 | Putty Works - walls & ceiling | 15d | 2027-02-28 | 2027-03-14 | 1047 |  | 7 Days Work | 9165014 |
| 1049 | 36900.37000.37100.37600.38300.40200.182700 | False Ceiling- Framing | 10d | 2027-03-15 | 2027-03-24 | 1048 |  | 7 Days Work | 9165024 |
| 1050 | 36900.37000.37100.37600.38300.40200.182800 | Pre Hung Door | 3d | 2027-03-25 | 2027-03-27 | 1049 |  | 7 Days Work | 9165034 |
| 1051 | 36900.37000.37100.37600.38300.40200.182900 | Protechtion sheet | 2d | 2027-03-28 | 2027-03-29 | 1050 |  | 7 Days Work | 9165044 |
| 1052 | 36900.37000.37100.37600.38300.40200.183000 | Skirting near door | 2d | 2027-03-30 | 2027-03-31 | 1051 |  | 7 Days Work | 9165054 |
| 1053 | 36900.37000.37100.37600.38300.40200.183100 | Electrical Switch box fixing | 14d | 2027-04-01 | 2027-04-14 | 1052 |  | 7 Days Work | 9165064 |
| 1054 | 36900.37000.37100.37600.38300.40200.183200 | Fire Fighting painting | 5d | 2027-04-15 | 2027-04-19 | 1053 |  | 7 Days Work | 9165074 |
| 1055 | 36900.37000.37100.37600.38300.40200.183300 | Protection of all flooring, door & window hardware | 5d | 2027-04-20 | 2027-04-24 | 1054 |  | 7 Days Work | 9165084 |
| 1056 | 36900.37000.37100.37600.38300.40200.183400 | 1st coat primer- ceiling 1st & walls | 14d | 2027-04-25 | 2027-05-08 | 1055 |  | 7 Days Work | 9165094 |
| 1057 | 36900.37000.37100.37600.38300.40200.183500 | Wooden Flooring | 5d | 2027-05-09 | 2027-05-13 | 1056 |  | 7 Days Work | 9165104 |
| 1058 | 36900.37000.37100.37600.38300.40200.183600 | Removing of Temporary Railing & installation of Glass Railing | 5d | 2027-05-09 | 2027-05-13 | 1056 |  | 7 Days Work | 9165114 |
| 1059 | 36900.37000.37100.37600.38300.40200.183700 | Tile Grouting | 7d | 2027-05-09 | 2027-05-15 | 1056 |  | 7 Days Work | 9165124 |
| 1060 | 36900.37000.37100.37600.38300.40200.183800 | False Ceiling | 5d | 2027-05-16 | 2027-05-20 | 1059 |  | 7 Days Work | 9165134 |
| 1061 | 36900.37000.37100.37600.38300.40200.183900 | 2nd coat of primer | 10d | 2027-05-21 | 2027-05-30 | 1060 |  | 7 Days Work | 9165144 |
| 1062 | 36900.37000.37100.37600.38300.40200.184000 | Final cutting/polishing of stone flooring | 7d | 2027-05-31 | 2027-06-06 | 1061 |  | 7 Days Work | 9165154 |

| ID | WBS | Task | Duration | Start | Finish | Predecessors | Constraint | Calendar | Unique_Task_ID |
| --- | --- | --- | --- | --- | --- | --- | --- | --- | --- |
| 1063 | 36900.37000.37100.37600.38300.40200.54500 | **Toilet** | 237d | 2026-10-12 | 2027-06-05 |  | start no earlier than 2026-10-12 | 7 Days Work | 9162264 |
| 1064 | 36900.37000.37100.37600.38300.40200.54500.770300 | Toilet_MEP Clearance -1 | 7d | 2026-10-12 | 2026-10-18 | 1027 |  | 7 Days Work | 9167064 |
| 1065 | 36900.37000.37100.37600.38300.40200.54500.770400 | Toilet_Level Marking | 1d | 2026-10-19 | 2026-10-19 | 1064 |  | 7 Days Work | 9167074 |
| 1066 | 36900.37000.37100.37600.38300.40200.54500.770500 | Toilet_Chasing work for Electrical conduit & concealed plumbing | 5d | 2026-10-20 | 2026-10-24 | 1065 |  | 7 Days Work | 9167084 |
| 1067 | 36900.37000.37100.37600.38300.40200.54500.770600 | Toilet_Plumbing work 1st fix | 5d | 2026-10-25 | 2026-10-29 | 1066 |  | 7 Days Work | 9167094 |
| 1068 | 36900.37000.37100.37600.38300.40200.54500.770700 | Toilet_Sleeve/Bore Packing | 5d | 2026-10-30 | 2026-11-03 | 1067 |  | 7 Days Work | 9167104 |
| 1069 | 36900.37000.37100.37600.38300.40200.54500.770800 | Toilet_Waterproofing | 10d | 2026-11-04 | 2026-11-13 | 1068 |  | 7 Days Work | 9167114 |
| 1070 | 36900.37000.37100.37600.38300.40200.54500.770900 | Toilet_Screed | 1d | 2026-11-14 | 2026-11-14 | 1069 |  | 7 Days Work | 9167124 |
| 1071 | 36900.37000.37100.37600.38300.40200.54500.771000 | Toilet_Plumbing 2nd fix | 5d | 2026-11-15 | 2026-11-19 | 1070 |  | 7 Days Work | 9167134 |
| 1072 | 36900.37000.37100.37600.38300.40200.54500.771100 | Toilet_Ledge wall | 5d | 2026-11-20 | 2026-11-24 | 1071 |  | 7 Days Work | 9167144 |
| 1073 | 36900.37000.37100.37600.38300.40200.54500.771200 | Toilet_Cement Plaster | 5d | 2026-11-25 | 2026-11-29 | 1072 |  | 7 Days Work | 9167154 |
| 1074 | 36900.37000.37100.37600.38300.40200.54500.771300 | Toilet_Door Frame | 1d | 2026-11-30 | 2026-11-30 | 1073 |  | 7 Days Work | 9167164 |
| 1075 | 36900.37000.37100.37600.38300.40200.54500.771400 | Toilet_Wash basin & Couter | 3d | 2026-12-01 | 2026-12-03 | 1074 |  | 7 Days Work | 9167174 |
| 1076 | 36900.37000.37100.37600.38300.40200.54500.771500 | Toilet_Wall dado | 20d | 2026-12-04 | 2026-12-23 | 1075 |  | 7 Days Work | 9167184 |
| 1077 | 36900.37000.37100.37600.38300.40200.54500.771600 | Toilet_Granite Work-Ledge wall top | 3d | 2026-12-24 | 2026-12-26 | 1076 |  | 7 Days Work | 9167194 |
| 1078 | 36900.37000.37100.37600.38300.40200.54500.771700 | Toilet_Floor Tilling work | 20d | 2026-12-27 | 2027-01-15 | 1077 |  | 7 Days Work | 9167204 |
| 1079 | 36900.37000.37100.37600.38300.40200.54500.771800 | Toilet_1st row of dado | 5d | 2027-01-16 | 2027-01-20 | 1078 |  | 7 Days Work | 9167214 |
| 1080 | 36900.37000.37100.37600.38300.40200.54500.771900 | Toilet_Window Fixing | 14d | 2027-01-21 | 2027-02-03 | 1079 |  | 7 Days Work | 9167224 |
| 1081 | 36900.37000.37100.37600.38300.40200.54500.772000 | Toilet_Services above False ceiling | 21d | 2027-02-04 | 2027-02-24 | 1080 |  | 7 Days Work | 9167234 |
| 1082 | 36900.37000.37100.37600.38300.40200.54500.772100 | Toilet_False Ceiling framing | 12d | 2027-02-25 | 2027-03-08 | 1081 |  | 7 Days Work | 9167244 |
| 1083 | 36900.37000.37100.37600.38300.40200.54500.772200 | Toilet_Door Frame | 5d | 2027-03-09 | 2027-03-13 | 1082 |  | 7 Days Work | 9167254 |
| 1084 | 36900.37000.37100.37600.38300.40200.54500.772300 | Toilet_Epoxy Tile Grouting | 7d | 2027-05-09 | 2027-05-15 | 1059SS |  | 7 Days Work | 9167264 |
| 1085 | 36900.37000.37100.37600.38300.40200.54500.772400 | Toilet_False ceiling board fixing, CP Sanitary Fixture, Electric Fixture | 21d | 2027-05-16 | 2027-06-05 | 1084 |  | 7 Days Work | 9167274 |
| 1086 | 36900.37000.37100.37600.38300.40300 | **18th Habitable/20th Floor** | 245d | 2026-10-14 | 2027-06-15 |  | start no earlier than 2026-10-14 | 7 Days Work | 9162184 |
| 1087 | 36900.37000.37100.37600.38300.40300.184100 | Post Pour | 7d | 2026-10-14 | 2026-10-20 | 62FS+15d |  | 7 Days Work | 9165164 |
| 1088 | 36900.37000.37100.37600.38300.40300.184200 | MEP Clearance -1 | 5d | 2026-10-21 | 2026-10-25 | 1087 |  | 7 Days Work | 9165174 |
| 1089 | 36900.37000.37100.37600.38300.40300.184300 | Benchmark | 1d | 2026-10-26 | 2026-10-26 | 1088 |  | 7 Days Work | 9165184 |
| 1090 | 36900.37000.37100.37600.38300.40300.184400 | Temporary Railing | 3d | 2026-10-27 | 2026-10-29 | 1089 |  | 7 Days Work | 9165194 |
| 1091 | 36900.37000.37100.37600.38300.40300.184500 | Blockwork | 10d | 2026-10-30 | 2026-11-08 | 1090 |  | 7 Days Work | 9165204 |
| 1092 | 36900.37000.37100.37600.38300.40300.184600 | MEP Clearance -2 | 10d | 2026-11-09 | 2026-11-18 | 1091 |  | 7 Days Work | 9165214 |
| 1093 | 36900.37000.37100.37600.38300.40300.184700 | Gypsum Plaster | 14d | 2026-11-19 | 2026-12-02 | 1092 |  | 7 Days Work | 9165224 |
| 1094 | 36900.37000.37100.37600.38300.40300.184800 | Kitchen Platform | 3d | 2026-12-03 | 2026-12-05 | 1093 |  | 7 Days Work | 9165234 |
| 1095 | 36900.37000.37100.37600.38300.40300.184900 | Kitchen dado | 7d | 2026-12-06 | 2026-12-12 | 1094 |  | 7 Days Work | 9165244 |
| 1096 | 36900.37000.37100.37600.38300.40300.185000 | Fire Fighting | 5d | 2026-12-13 | 2026-12-17 | 1095 |  | 7 Days Work | 9165254 |
| 1097 | 36900.37000.37100.37600.38300.40300.185100 | Anticapilary | 5d | 2026-12-18 | 2026-12-22 | 1096 |  | 7 Days Work | 9165264 |
| 1098 | 36900.37000.37100.37600.38300.40300.185200 | Stone Laying | 10d | 2027-01-25 | 2027-02-03 | 1138 |  | 7 Days Work | 9165274 |
| 1099 | 36900.37000.37100.37600.38300.40300.185300 | Tiles Laying | 7d | 2027-01-25 | 2027-01-31 | 1138 |  | 7 Days Work | 9165284 |
| 1100 | 36900.37000.37100.37600.38300.40300.185400 | 1st cutting/polishing of stone flooring | 7d | 2027-02-01 | 2027-02-07 | 1099 |  | 7 Days Work | 9165294 |
| 1101 | 36900.37000.37100.37600.38300.40300.185500 | Tiles/Stone skirting | 5d | 2027-02-08 | 2027-02-12 | 1100 |  | 7 Days Work | 9165304 |
| 1102 | 36900.37000.37100.37600.38300.40300.185600 | Protechtion sheet | 1d | 2027-02-13 | 2027-02-13 | 1101 |  | 7 Days Work | 9165314 |
| 1103 | 36900.37000.37100.37600.38300.40300.185700 | Installation of Temporary Door | 1d | 2027-02-14 | 2027-02-14 | 1102 |  | 7 Days Work | 9165324 |
| 1104 | 36900.37000.37100.37600.38300.40300.185800 | Fixing of window tracks | 5d | 2027-02-15 | 2027-02-19 | 1103 |  | 7 Days Work | 9165334 |
| 1105 | 36900.37000.37100.37600.38300.40300.185900 | Wire Pulling | 7d | 2027-02-20 | 2027-02-26 | 1104 |  | 7 Days Work | 9165344 |
| 1106 | 36900.37000.37100.37600.38300.40300.186000 | Gypsum Remaining | 5d | 2027-02-27 | 2027-03-03 | 1105 |  | 7 Days Work | 9165354 |
| 1107 | 36900.37000.37100.37600.38300.40300.186100 | Fixing of windoow shutter | 5d | 2027-03-04 | 2027-03-08 | 1106 |  | 7 Days Work | 9165364 |
| 1108 | 36900.37000.37100.37600.38300.40300.186200 | Putty Works - walls & ceiling | 15d | 2027-03-09 | 2027-03-23 | 1107 |  | 7 Days Work | 9165374 |
| 1109 | 36900.37000.37100.37600.38300.40300.186300 | False Ceiling- Framing | 10d | 2027-03-24 | 2027-04-02 | 1108 |  | 7 Days Work | 9165384 |
| 1110 | 36900.37000.37100.37600.38300.40300.186400 | Pre Hung Door | 3d | 2027-04-03 | 2027-04-05 | 1109 |  | 7 Days Work | 9165394 |
| 1111 | 36900.37000.37100.37600.38300.40300.186500 | Protechtion sheet | 2d | 2027-04-06 | 2027-04-07 | 1110 |  | 7 Days Work | 9165404 |
| 1112 | 36900.37000.37100.37600.38300.40300.186600 | Skirting near door | 2d | 2027-04-08 | 2027-04-09 | 1111 |  | 7 Days Work | 9165414 |
| 1113 | 36900.37000.37100.37600.38300.40300.186700 | Electrical Switch box fixing | 14d | 2027-04-10 | 2027-04-23 | 1112 |  | 7 Days Work | 9165424 |
| 1114 | 36900.37000.37100.37600.38300.40300.186800 | Fire Fighting painting | 5d | 2027-04-24 | 2027-04-28 | 1113 |  | 7 Days Work | 9165434 |
| 1115 | 36900.37000.37100.37600.38300.40300.186900 | Protection of all flooring, door & window hardware | 5d | 2027-04-29 | 2027-05-03 | 1114 |  | 7 Days Work | 9165444 |
| 1116 | 36900.37000.37100.37600.38300.40300.187000 | 1st coat primer- ceiling 1st & walls | 14d | 2027-05-04 | 2027-05-17 | 1115 |  | 7 Days Work | 9165454 |
| 1117 | 36900.37000.37100.37600.38300.40300.187100 | Wooden Flooring | 5d | 2027-05-18 | 2027-05-22 | 1116 |  | 7 Days Work | 9165464 |
| 1118 | 36900.37000.37100.37600.38300.40300.187200 | Removing of Temporary Railing & installation of Glass Railing | 5d | 2027-05-18 | 2027-05-22 | 1116 |  | 7 Days Work | 9165474 |
| 1119 | 36900.37000.37100.37600.38300.40300.187300 | Tile Grouting | 7d | 2027-05-18 | 2027-05-24 | 1116 |  | 7 Days Work | 9165484 |
| 1120 | 36900.37000.37100.37600.38300.40300.187400 | False Ceiling | 5d | 2027-05-25 | 2027-05-29 | 1119 |  | 7 Days Work | 9165494 |
| 1121 | 36900.37000.37100.37600.38300.40300.187500 | 2nd coat of primer | 10d | 2027-05-30 | 2027-06-08 | 1120 |  | 7 Days Work | 9165504 |
| 1122 | 36900.37000.37100.37600.38300.40300.187600 | Final cutting/polishing of stone flooring | 7d | 2027-06-09 | 2027-06-15 | 1121 |  | 7 Days Work | 9165514 |

| ID | WBS | Task | Duration | Start | Finish | Predecessors | Constraint | Calendar | Unique_Task_ID |
| --- | --- | --- | --- | --- | --- | --- | --- | --- | --- |
| 1123 | 36900.37000.37100.37600.38300.40300.54600 | **Toilet** | 237d | 2026-10-21 | 2027-06-14 |  | start no earlier than 2026-10-21 | 7 Days Work | 9162274 |
| 1124 | 36900.37000.37100.37600.38300.40300.54600.772500 | Toilet_MEP Clearance -1 | 7d | 2026-10-21 | 2026-10-27 | 1087 |  | 7 Days Work | 9167284 |
| 1125 | 36900.37000.37100.37600.38300.40300.54600.772600 | Toilet_Level Marking | 1d | 2026-10-28 | 2026-10-28 | 1124 |  | 7 Days Work | 9167294 |
| 1126 | 36900.37000.37100.37600.38300.40300.54600.772700 | Toilet_Chasing work for Electrical conduit & concealed plumbing | 5d | 2026-10-29 | 2026-11-02 | 1125 |  | 7 Days Work | 9167304 |
| 1127 | 36900.37000.37100.37600.38300.40300.54600.772800 | Toilet_Plumbing work 1st fix | 5d | 2026-11-03 | 2026-11-07 | 1126 |  | 7 Days Work | 9167314 |
| 1128 | 36900.37000.37100.37600.38300.40300.54600.772900 | Toilet_Sleeve/Bore Packing | 5d | 2026-11-08 | 2026-11-12 | 1127 |  | 7 Days Work | 9167324 |
| 1129 | 36900.37000.37100.37600.38300.40300.54600.773000 | Toilet_Waterproofing | 10d | 2026-11-13 | 2026-11-22 | 1128 |  | 7 Days Work | 9167334 |
| 1130 | 36900.37000.37100.37600.38300.40300.54600.773100 | Toilet_Screed | 1d | 2026-11-23 | 2026-11-23 | 1129 |  | 7 Days Work | 9167344 |
| 1131 | 36900.37000.37100.37600.38300.40300.54600.773200 | Toilet_Plumbing 2nd fix | 5d | 2026-11-24 | 2026-11-28 | 1130 |  | 7 Days Work | 9167354 |
| 1132 | 36900.37000.37100.37600.38300.40300.54600.773300 | Toilet_Ledge wall | 5d | 2026-11-29 | 2026-12-03 | 1131 |  | 7 Days Work | 9167364 |
| 1133 | 36900.37000.37100.37600.38300.40300.54600.773400 | Toilet_Cement Plaster | 5d | 2026-12-04 | 2026-12-08 | 1132 |  | 7 Days Work | 9167374 |
| 1134 | 36900.37000.37100.37600.38300.40300.54600.773500 | Toilet_Door Frame | 1d | 2026-12-09 | 2026-12-09 | 1133 |  | 7 Days Work | 9167384 |
| 1135 | 36900.37000.37100.37600.38300.40300.54600.773600 | Toilet_Wash basin & Couter | 3d | 2026-12-10 | 2026-12-12 | 1134 |  | 7 Days Work | 9167394 |
| 1136 | 36900.37000.37100.37600.38300.40300.54600.773700 | Toilet_Wall dado | 20d | 2026-12-13 | 2027-01-01 | 1135 |  | 7 Days Work | 9167404 |
| 1137 | 36900.37000.37100.37600.38300.40300.54600.773800 | Toilet_Granite Work-Ledge wall top | 3d | 2027-01-02 | 2027-01-04 | 1136 |  | 7 Days Work | 9167414 |
| 1138 | 36900.37000.37100.37600.38300.40300.54600.773900 | Toilet_Floor Tilling work | 20d | 2027-01-05 | 2027-01-24 | 1137 |  | 7 Days Work | 9167424 |
| 1139 | 36900.37000.37100.37600.38300.40300.54600.774000 | Toilet_1st row of dado | 5d | 2027-01-25 | 2027-01-29 | 1138 |  | 7 Days Work | 9167434 |
| 1140 | 36900.37000.37100.37600.38300.40300.54600.774100 | Toilet_Window Fixing | 14d | 2027-01-30 | 2027-02-12 | 1139 |  | 7 Days Work | 9167444 |
| 1141 | 36900.37000.37100.37600.38300.40300.54600.774200 | Toilet_Services above False ceiling | 21d | 2027-02-13 | 2027-03-05 | 1140 |  | 7 Days Work | 9167454 |
| 1142 | 36900.37000.37100.37600.38300.40300.54600.774300 | Toilet_False Ceiling framing | 12d | 2027-03-06 | 2027-03-17 | 1141 |  | 7 Days Work | 9167464 |
| 1143 | 36900.37000.37100.37600.38300.40300.54600.774400 | Toilet_Door Frame | 5d | 2027-03-18 | 2027-03-22 | 1142 |  | 7 Days Work | 9167474 |
| 1144 | 36900.37000.37100.37600.38300.40300.54600.774500 | Toilet_Epoxy Tile Grouting | 7d | 2027-05-18 | 2027-05-24 | 1119SS |  | 7 Days Work | 9167484 |
| 1145 | 36900.37000.37100.37600.38300.40300.54600.774600 | Toilet_False ceiling board fixing, CP Sanitary Fixture, Electric Fixture | 21d | 2027-05-25 | 2027-06-14 | 1144 |  | 7 Days Work | 9167494 |
| 1146 | 36900.37000.37100.37600.38300.40400 | **19th Habitable/21th Floor** | 245d | 2026-10-26 | 2027-06-27 |  | start no earlier than 2026-10-26 | 7 Days Work | 9167504 |
| 1147 | 36900.37000.37100.37600.38300.40400.187700 | Post Pour | 7d | 2026-10-26 | 2026-11-01 | 63FS+15d |  | 7 Days Work | 9167524 |
| 1148 | 36900.37000.37100.37600.38300.40400.187800 | MEP Clearance -1 | 5d | 2026-11-02 | 2026-11-06 | 1147 |  | 7 Days Work | 9167534 |
| 1149 | 36900.37000.37100.37600.38300.40400.187900 | Benchmark | 1d | 2026-11-07 | 2026-11-07 | 1148 |  | 7 Days Work | 9167544 |
| 1150 | 36900.37000.37100.37600.38300.40400.188000 | Temporary Railing | 3d | 2026-11-08 | 2026-11-10 | 1149 |  | 7 Days Work | 9167554 |
| 1151 | 36900.37000.37100.37600.38300.40400.188100 | Blockwork | 10d | 2026-11-11 | 2026-11-20 | 1150 |  | 7 Days Work | 9167564 |
| 1152 | 36900.37000.37100.37600.38300.40400.188200 | MEP Clearance -2 | 10d | 2026-11-21 | 2026-11-30 | 1151 |  | 7 Days Work | 9167574 |
| 1153 | 36900.37000.37100.37600.38300.40400.188300 | Gypsum Plaster | 14d | 2026-12-01 | 2026-12-14 | 1152 |  | 7 Days Work | 9043294 |
| 1154 | 36900.37000.37100.37600.38300.40400.188400 | Kitchen Platform | 3d | 2026-12-15 | 2026-12-17 | 1153 |  | 7 Days Work | 9167594 |
| 1155 | 36900.37000.37100.37600.38300.40400.188500 | Kitchen dado | 7d | 2026-12-18 | 2026-12-24 | 1154 |  | 7 Days Work | 9167604 |
| 1156 | 36900.37000.37100.37600.38300.40400.188600 | Fire Fighting | 5d | 2026-12-25 | 2026-12-29 | 1155 |  | 7 Days Work | 9167614 |
| 1157 | 36900.37000.37100.37600.38300.40400.188700 | Anticapilary | 5d | 2026-12-30 | 2027-01-03 | 1156 |  | 7 Days Work | 9167624 |
| 1158 | 36900.37000.37100.37600.38300.40400.188800 | Stone Laying | 10d | 2027-02-06 | 2027-02-15 | 1198 |  | 7 Days Work | 9167634 |
| 1159 | 36900.37000.37100.37600.38300.40400.188900 | Tiles Laying | 7d | 2027-02-06 | 2027-02-12 | 1198 |  | 7 Days Work | 9043304 |
| 1160 | 36900.37000.37100.37600.38300.40400.189000 | 1st cutting/polishing of stone flooring | 7d | 2027-02-13 | 2027-02-19 | 1159 |  | 7 Days Work | 9167654 |
| 1161 | 36900.37000.37100.37600.38300.40400.189100 | Tiles/Stone skirting | 5d | 2027-02-20 | 2027-02-24 | 1160 |  | 7 Days Work | 9167664 |
| 1162 | 36900.37000.37100.37600.38300.40400.189200 | Protechtion sheet | 1d | 2027-02-25 | 2027-02-25 | 1161 |  | 7 Days Work | 9167674 |
| 1163 | 36900.37000.37100.37600.38300.40400.189300 | Installation of Temporary Door | 1d | 2027-02-26 | 2027-02-26 | 1162 |  | 7 Days Work | 9167684 |
| 1164 | 36900.37000.37100.37600.38300.40400.189400 | Fixing of window tracks | 5d | 2027-02-27 | 2027-03-03 | 1163 |  | 7 Days Work | 9167694 |
| 1165 | 36900.37000.37100.37600.38300.40400.189500 | Wire Pulling | 7d | 2027-03-04 | 2027-03-10 | 1164 |  | 7 Days Work | 9167704 |
| 1166 | 36900.37000.37100.37600.38300.40400.189600 | Gypsum Remaining | 5d | 2027-03-11 | 2027-03-15 | 1165 |  | 7 Days Work | 9167714 |
| 1167 | 36900.37000.37100.37600.38300.40400.189700 | Fixing of windoow shutter | 5d | 2027-03-16 | 2027-03-20 | 1166 |  | 7 Days Work | 9167724 |
| 1168 | 36900.37000.37100.37600.38300.40400.189800 | Putty Works - walls & ceiling | 15d | 2027-03-21 | 2027-04-04 | 1167 |  | 7 Days Work | 9167734 |
| 1169 | 36900.37000.37100.37600.38300.40400.189900 | False Ceiling- Framing | 10d | 2027-04-05 | 2027-04-14 | 1168 |  | 7 Days Work | 9167744 |
| 1170 | 36900.37000.37100.37600.38300.40400.190000 | Pre Hung Door | 3d | 2027-04-15 | 2027-04-17 | 1169 |  | 7 Days Work | 9167754 |
| 1171 | 36900.37000.37100.37600.38300.40400.190100 | Protechtion sheet | 2d | 2027-04-18 | 2027-04-19 | 1170 |  | 7 Days Work | 9167764 |
| 1172 | 36900.37000.37100.37600.38300.40400.190200 | Skirting near door | 2d | 2027-04-20 | 2027-04-21 | 1171 |  | 7 Days Work | 9167774 |
| 1173 | 36900.37000.37100.37600.38300.40400.190300 | Electrical Switch box fixing | 14d | 2027-04-22 | 2027-05-05 | 1172 |  | 7 Days Work | 9167784 |
| 1174 | 36900.37000.37100.37600.38300.40400.190400 | Fire Fighting painting | 5d | 2027-05-06 | 2027-05-10 | 1173 |  | 7 Days Work | 9167794 |
| 1175 | 36900.37000.37100.37600.38300.40400.190500 | Protection of all flooring, door & window hardware | 5d | 2027-05-11 | 2027-05-15 | 1174 |  | 7 Days Work | 9167804 |
| 1176 | 36900.37000.37100.37600.38300.40400.190600 | 1st coat primer- ceiling 1st & walls | 14d | 2027-05-16 | 2027-05-29 | 1175 |  | 7 Days Work | 9167814 |
| 1177 | 36900.37000.37100.37600.38300.40400.190700 | Wooden Flooring | 5d | 2027-05-30 | 2027-06-03 | 1176 |  | 7 Days Work | 9167824 |
| 1178 | 36900.37000.37100.37600.38300.40400.190800 | Removing of Temporary Railing & installation of Glass Railing | 5d | 2027-05-30 | 2027-06-03 | 1176 |  | 7 Days Work | 9167834 |
| 1179 | 36900.37000.37100.37600.38300.40400.190900 | Tile Grouting | 7d | 2027-05-30 | 2027-06-05 | 1176 |  | 7 Days Work | 9167844 |
| 1180 | 36900.37000.37100.37600.38300.40400.191000 | False Ceiling | 5d | 2027-06-06 | 2027-06-10 | 1179 |  | 7 Days Work | 9167854 |
| 1181 | 36900.37000.37100.37600.38300.40400.191100 | 2nd coat of primer | 10d | 2027-06-11 | 2027-06-20 | 1180 |  | 7 Days Work | 9167864 |
| 1182 | 36900.37000.37100.37600.38300.40400.191200 | Final cutting/polishing of stone flooring | 7d | 2027-06-21 | 2027-06-27 | 1181 |  | 7 Days Work | 9167874 |

| ID | WBS | Task | Duration | Start | Finish | Predecessors | Constraint | Calendar | Unique_Task_ID |
| --- | --- | --- | --- | --- | --- | --- | --- | --- | --- |
| 1183 | 36900.37000.37100.37600.38300.40400.54700 | **Toilet** | 237d | 2026-11-02 | 2027-06-26 |  | start no earlier than 2026-11-02 | 7 Days Work | 9167514 |
| 1184 | 36900.37000.37100.37600.38300.40400.54700.774700 | Toilet_MEP Clearance -1 | 7d | 2026-11-02 | 2026-11-08 | 1147 |  | 7 Days Work | 9167884 |
| 1185 | 36900.37000.37100.37600.38300.40400.54700.774800 | Toilet_Level Marking | 1d | 2026-11-09 | 2026-11-09 | 1184 |  | 7 Days Work | 9167894 |
| 1186 | 36900.37000.37100.37600.38300.40400.54700.774900 | Toilet_Chasing work for Electrical conduit & concealed plumbing | 5d | 2026-11-10 | 2026-11-14 | 1185 |  | 7 Days Work | 9167904 |
| 1187 | 36900.37000.37100.37600.38300.40400.54700.775000 | Toilet_Plumbing work 1st fix | 5d | 2026-11-15 | 2026-11-19 | 1186 |  | 7 Days Work | 9167914 |
| 1188 | 36900.37000.37100.37600.38300.40400.54700.775100 | Toilet_Sleeve/Bore Packing | 5d | 2026-11-20 | 2026-11-24 | 1187 |  | 7 Days Work | 9167924 |
| 1189 | 36900.37000.37100.37600.38300.40400.54700.775200 | Toilet_Waterproofing | 10d | 2026-11-25 | 2026-12-04 | 1188 |  | 7 Days Work | 9167934 |
| 1190 | 36900.37000.37100.37600.38300.40400.54700.775300 | Toilet_Screed | 1d | 2026-12-05 | 2026-12-05 | 1189 |  | 7 Days Work | 9167944 |
| 1191 | 36900.37000.37100.37600.38300.40400.54700.775400 | Toilet_Plumbing 2nd fix | 5d | 2026-12-06 | 2026-12-10 | 1190 |  | 7 Days Work | 9167954 |
| 1192 | 36900.37000.37100.37600.38300.40400.54700.775500 | Toilet_Ledge wall | 5d | 2026-12-11 | 2026-12-15 | 1191 |  | 7 Days Work | 9167964 |
| 1193 | 36900.37000.37100.37600.38300.40400.54700.775600 | Toilet_Cement Plaster | 5d | 2026-12-16 | 2026-12-20 | 1192 |  | 7 Days Work | 9167974 |
| 1194 | 36900.37000.37100.37600.38300.40400.54700.775700 | Toilet_Door Frame | 1d | 2026-12-21 | 2026-12-21 | 1193 |  | 7 Days Work | 9167984 |
| 1195 | 36900.37000.37100.37600.38300.40400.54700.775800 | Toilet_Wash basin & Couter | 3d | 2026-12-22 | 2026-12-24 | 1194 |  | 7 Days Work | 9167994 |
| 1196 | 36900.37000.37100.37600.38300.40400.54700.775900 | Toilet_Wall dado | 20d | 2026-12-25 | 2027-01-13 | 1195 |  | 7 Days Work | 9168004 |
| 1197 | 36900.37000.37100.37600.38300.40400.54700.776000 | Toilet_Granite Work-Ledge wall top | 3d | 2027-01-14 | 2027-01-16 | 1196 |  | 7 Days Work | 9168014 |
| 1198 | 36900.37000.37100.37600.38300.40400.54700.776100 | Toilet_Floor Tilling work | 20d | 2027-01-17 | 2027-02-05 | 1197 |  | 7 Days Work | 9168024 |
| 1199 | 36900.37000.37100.37600.38300.40400.54700.776200 | Toilet_1st row of dado | 5d | 2027-02-06 | 2027-02-10 | 1198 |  | 7 Days Work | 9168034 |
| 1200 | 36900.37000.37100.37600.38300.40400.54700.776300 | Toilet_Window Fixing | 14d | 2027-02-11 | 2027-02-24 | 1199 |  | 7 Days Work | 9168044 |
| 1201 | 36900.37000.37100.37600.38300.40400.54700.776400 | Toilet_Services above False ceiling | 21d | 2027-02-25 | 2027-03-17 | 1200 |  | 7 Days Work | 9168054 |
| 1202 | 36900.37000.37100.37600.38300.40400.54700.776500 | Toilet_False Ceiling framing | 12d | 2027-03-18 | 2027-03-29 | 1201 |  | 7 Days Work | 9168064 |
| 1203 | 36900.37000.37100.37600.38300.40400.54700.776600 | Toilet_Door Frame | 5d | 2027-03-30 | 2027-04-03 | 1202 |  | 7 Days Work | 9168074 |
| 1204 | 36900.37000.37100.37600.38300.40400.54700.776700 | Toilet_Epoxy Tile Grouting | 7d | 2027-05-30 | 2027-06-05 | 1179SS |  | 7 Days Work | 9168084 |
| 1205 | 36900.37000.37100.37600.38300.40400.54700.776800 | Toilet_False ceiling board fixing, CP Sanitary Fixture, Electric Fixture | 21d | 2027-06-06 | 2027-06-26 | 1204 |  | 7 Days Work | 9168094 |
| 1206 | 36900.37000.37100.37600.52600 | **Common area Finishing** | 320d | 2026-12-27 | 2027-11-11 |  | start no earlier than 2026-12-27 | 7 Days Work | 9043297 |
| 1207 | 36900.37000.37100.37600.52600.68200 | **1st Habitable/3rd Floor** | 158d | 2026-12-27 | 2027-06-02 |  | start no earlier than 2026-12-27 | 7 Days Work | 9043306 |
| 1208 | 36900.37000.37100.37600.52600.68200.191300 | Side blockwork for lift shafts | 9d | 2026-12-27 | 2027-01-04 | 1403 |  | 7 Days Work | 9043346 |
| 1209 | 36900.37000.37100.37600.52600.68200.191400 | Door Threshold for lifts | 6d | 2027-01-05 | 2027-01-10 | 1208 |  | 7 Days Work | 9043356 |
| 1210 | 36900.37000.37100.37600.52600.68200.191500 | Granite Cladding | 10d | 2027-01-11 | 2027-01-20 | 1209 |  | 7 Days Work | 9043366 |
| 1211 | 36900.37000.37100.37600.52600.68200.191600 | MEP Services | 60d | 2027-01-21 | 2027-03-21 | 1210 |  | 7 Days Work | 9043376 |
| 1212 | 36900.37000.37100.37600.52600.68200.191700 | Flooring+Skirting | 20d | 2027-03-22 | 2027-04-10 | 1211 |  | 7 Days Work | 9043386 |
| 1213 | 36900.37000.37100.37600.52600.68200.191800 | Wall finishes | 21d | 2027-04-11 | 2027-05-01 | 1212 |  | 7 Days Work | 9043396 |
| 1214 | 36900.37000.37100.37600.52600.68200.191900 | False Ceiling | 10d | 2027-05-02 | 2027-05-11 | 1213 |  | 7 Days Work | 9043406 |
| 1215 | 36900.37000.37100.37600.52600.68200.192000 | Staircase | 15d | 2027-05-12 | 2027-05-26 | 1214 |  | 7 Days Work | 9043416 |
| 1216 | 36900.37000.37100.37600.52600.68200.192100 | Deep Cleaning | 7d | 2027-05-27 | 2027-06-02 | 1215 |  | 7 Days Work | 9043426 |

| ID | WBS | Task | Duration | Start | Finish | Predecessors | Constraint | Calendar | Unique_Task_ID |
| --- | --- | --- | --- | --- | --- | --- | --- | --- | --- |
| 1217 | 36900.37000.37100.37600.52600.68300 | **2nd Habitable/4th Floor** | 158d | 2027-01-05 | 2027-06-11 |  | start no earlier than 2027-01-05 | 7 Days Work | 9168104 |
| 1218 | 36900.37000.37100.37600.52600.68300.192200 | Side blockwork for lift shafts | 9d | 2027-01-05 | 2027-01-13 | 1208 |  | 7 Days Work | 9168114 |
| 1219 | 36900.37000.37100.37600.52600.68300.192300 | Door Threshold for lifts | 6d | 2027-01-14 | 2027-01-19 | 1218 |  | 7 Days Work | 9168124 |
| 1220 | 36900.37000.37100.37600.52600.68300.192400 | Granite Cladding | 10d | 2027-01-20 | 2027-01-29 | 1219 |  | 7 Days Work | 9168134 |
| 1221 | 36900.37000.37100.37600.52600.68300.192500 | MEP Services | 60d | 2027-01-30 | 2027-03-30 | 1220 |  | 7 Days Work | 9168144 |
| 1222 | 36900.37000.37100.37600.52600.68300.192600 | Flooring+Skirting | 20d | 2027-03-31 | 2027-04-19 | 1221 |  | 7 Days Work | 9168154 |
| 1223 | 36900.37000.37100.37600.52600.68300.192700 | Wall finishes | 21d | 2027-04-20 | 2027-05-10 | 1222 |  | 7 Days Work | 9168164 |
| 1224 | 36900.37000.37100.37600.52600.68300.192800 | False Ceiling | 10d | 2027-05-11 | 2027-05-20 | 1223 |  | 7 Days Work | 9168174 |
| 1225 | 36900.37000.37100.37600.52600.68300.192900 | Staircase | 15d | 2027-05-21 | 2027-06-04 | 1224 |  | 7 Days Work | 9168184 |
| 1226 | 36900.37000.37100.37600.52600.68300.193000 | Deep Cleaning | 7d | 2027-06-05 | 2027-06-11 | 1225 |  | 7 Days Work | 9168194 |
| 1227 | 36900.37000.37100.37600.52600.68400 | **3rd Habitable/5th Floor** | 158d | 2027-01-14 | 2027-06-20 |  | start no earlier than 2027-01-14 | 7 Days Work | 9168204 |
| 1228 | 36900.37000.37100.37600.52600.68400.193100 | Side blockwork for lift shafts | 9d | 2027-01-14 | 2027-01-22 | 1218 |  | 7 Days Work | 9168214 |
| 1229 | 36900.37000.37100.37600.52600.68400.193200 | Door Threshold for lifts | 6d | 2027-01-23 | 2027-01-28 | 1228 |  | 7 Days Work | 9168224 |
| 1230 | 36900.37000.37100.37600.52600.68400.193300 | Granite Cladding | 10d | 2027-01-29 | 2027-02-07 | 1229 |  | 7 Days Work | 9168234 |
| 1231 | 36900.37000.37100.37600.52600.68400.193400 | MEP Services | 60d | 2027-02-08 | 2027-04-08 | 1230 |  | 7 Days Work | 9168244 |
| 1232 | 36900.37000.37100.37600.52600.68400.193500 | Flooring+Skirting | 20d | 2027-04-09 | 2027-04-28 | 1231 |  | 7 Days Work | 9168254 |
| 1233 | 36900.37000.37100.37600.52600.68400.193600 | Wall finishes | 21d | 2027-04-29 | 2027-05-19 | 1232 |  | 7 Days Work | 9168264 |
| 1234 | 36900.37000.37100.37600.52600.68400.193700 | False Ceiling | 10d | 2027-05-20 | 2027-05-29 | 1233 |  | 7 Days Work | 9168274 |
| 1235 | 36900.37000.37100.37600.52600.68400.193800 | Staircase | 15d | 2027-05-30 | 2027-06-13 | 1234 |  | 7 Days Work | 9168284 |
| 1236 | 36900.37000.37100.37600.52600.68400.193900 | Deep Cleaning | 7d | 2027-06-14 | 2027-06-20 | 1235 |  | 7 Days Work | 9168294 |
| 1237 | 36900.37000.37100.37600.52600.68500 | **4th Habitable/6th Floor** | 158d | 2027-01-23 | 2027-06-29 |  | start no earlier than 2027-01-23 | 7 Days Work | 9168304 |
| 1238 | 36900.37000.37100.37600.52600.68500.194000 | Side blockwork for lift shafts | 9d | 2027-01-23 | 2027-01-31 | 1228 |  | 7 Days Work | 9168334 |
| 1239 | 36900.37000.37100.37600.52600.68500.194100 | Door Threshold for lifts | 6d | 2027-02-01 | 2027-02-06 | 1238 |  | 7 Days Work | 9168344 |
| 1240 | 36900.37000.37100.37600.52600.68500.194200 | Granite Cladding | 10d | 2027-02-07 | 2027-02-16 | 1239 |  | 7 Days Work | 9168354 |
| 1241 | 36900.37000.37100.37600.52600.68500.194300 | MEP Services | 60d | 2027-02-17 | 2027-04-17 | 1240 |  | 7 Days Work | 9168364 |
| 1242 | 36900.37000.37100.37600.52600.68500.194400 | Flooring+Skirting | 20d | 2027-04-18 | 2027-05-07 | 1241 |  | 7 Days Work | 9168374 |
| 1243 | 36900.37000.37100.37600.52600.68500.194500 | Wall finishes | 21d | 2027-05-08 | 2027-05-28 | 1242 |  | 7 Days Work | 9168384 |
| 1244 | 36900.37000.37100.37600.52600.68500.194600 | False Ceiling | 10d | 2027-05-29 | 2027-06-07 | 1243 |  | 7 Days Work | 9168394 |
| 1245 | 36900.37000.37100.37600.52600.68500.194700 | Staircase | 15d | 2027-06-08 | 2027-06-22 | 1244 |  | 7 Days Work | 9168404 |
| 1246 | 36900.37000.37100.37600.52600.68500.194800 | Deep Cleaning | 7d | 2027-06-23 | 2027-06-29 | 1245 |  | 7 Days Work | 9168414 |

| ID | WBS | Task | Duration | Start | Finish | Predecessors | Constraint | Calendar | Unique_Task_ID |
| --- | --- | --- | --- | --- | --- | --- | --- | --- | --- |
| 1247 | 36900.37000.37100.37600.52600.68600 | **5th Habitable/7th Floor** | 158d | 2027-02-01 | 2027-07-08 |  | start no earlier than 2027-02-01 | 7 Days Work | 9168314 |
| 1248 | 36900.37000.37100.37600.52600.68600.194900 | Side blockwork for lift shafts | 9d | 2027-02-01 | 2027-02-09 | 1238 |  | 7 Days Work | 9168424 |
| 1249 | 36900.37000.37100.37600.52600.68600.195000 | Door Threshold for lifts | 6d | 2027-02-10 | 2027-02-15 | 1248 |  | 7 Days Work | 9168434 |
| 1250 | 36900.37000.37100.37600.52600.68600.195100 | Granite Cladding | 10d | 2027-02-16 | 2027-02-25 | 1249 |  | 7 Days Work | 9168444 |
| 1251 | 36900.37000.37100.37600.52600.68600.195200 | MEP Services | 60d | 2027-02-26 | 2027-04-26 | 1250 |  | 7 Days Work | 9168454 |
| 1252 | 36900.37000.37100.37600.52600.68600.195300 | Flooring+Skirting | 20d | 2027-04-27 | 2027-05-16 | 1251 |  | 7 Days Work | 9168464 |
| 1253 | 36900.37000.37100.37600.52600.68600.195400 | Wall finishes | 21d | 2027-05-17 | 2027-06-06 | 1252 |  | 7 Days Work | 9168474 |
| 1254 | 36900.37000.37100.37600.52600.68600.195500 | False Ceiling | 10d | 2027-06-07 | 2027-06-16 | 1253 |  | 7 Days Work | 9168484 |
| 1255 | 36900.37000.37100.37600.52600.68600.195600 | Staircase | 15d | 2027-06-17 | 2027-07-01 | 1254 |  | 7 Days Work | 9168494 |
| 1256 | 36900.37000.37100.37600.52600.68600.195700 | Deep Cleaning | 7d | 2027-07-02 | 2027-07-08 | 1255 |  | 7 Days Work | 9168504 |
| 1257 | 36900.37000.37100.37600.52600.68700 | **6th Habitable/8th Floor** | 158d | 2027-02-10 | 2027-07-17 |  | start no earlier than 2027-02-10 | 7 Days Work | 9168324 |
| 1258 | 36900.37000.37100.37600.52600.68700.195800 | Side blockwork for lift shafts | 9d | 2027-02-10 | 2027-02-18 | 1248 |  | 7 Days Work | 9168514 |
| 1259 | 36900.37000.37100.37600.52600.68700.195900 | Door Threshold for lifts | 6d | 2027-02-19 | 2027-02-24 | 1258 |  | 7 Days Work | 9168524 |
| 1260 | 36900.37000.37100.37600.52600.68700.196000 | Granite Cladding | 10d | 2027-02-25 | 2027-03-06 | 1259 |  | 7 Days Work | 9168534 |
| 1261 | 36900.37000.37100.37600.52600.68700.196100 | MEP Services | 60d | 2027-03-07 | 2027-05-05 | 1260 |  | 7 Days Work | 9168544 |
| 1262 | 36900.37000.37100.37600.52600.68700.196200 | Flooring+Skirting | 20d | 2027-05-06 | 2027-05-25 | 1261 |  | 7 Days Work | 9168554 |
| 1263 | 36900.37000.37100.37600.52600.68700.196300 | Wall finishes | 21d | 2027-05-26 | 2027-06-15 | 1262 |  | 7 Days Work | 9168564 |
| 1264 | 36900.37000.37100.37600.52600.68700.196400 | False Ceiling | 10d | 2027-06-16 | 2027-06-25 | 1263 |  | 7 Days Work | 9168574 |
| 1265 | 36900.37000.37100.37600.52600.68700.196500 | Staircase | 15d | 2027-06-26 | 2027-07-10 | 1264 |  | 7 Days Work | 9168584 |
| 1266 | 36900.37000.37100.37600.52600.68700.196600 | Deep Cleaning | 7d | 2027-07-11 | 2027-07-17 | 1265 |  | 7 Days Work | 9168594 |
| 1267 | 36900.37000.37100.37600.52600.68800 | **7th Habitable/9th Floor** | 158d | 2027-02-19 | 2027-07-26 |  | start no earlier than 2027-02-19 | 7 Days Work | 9168604 |
| 1268 | 36900.37000.37100.37600.52600.68800.196700 | Side blockwork for lift shafts | 9d | 2027-02-19 | 2027-02-27 | 1258 |  | 7 Days Work | 9168664 |
| 1269 | 36900.37000.37100.37600.52600.68800.196800 | Door Threshold for lifts | 6d | 2027-02-28 | 2027-03-05 | 1268 |  | 7 Days Work | 9168674 |
| 1270 | 36900.37000.37100.37600.52600.68800.196900 | Granite Cladding | 10d | 2027-03-06 | 2027-03-15 | 1269 |  | 7 Days Work | 9168684 |
| 1271 | 36900.37000.37100.37600.52600.68800.197000 | MEP Services | 60d | 2027-03-16 | 2027-05-14 | 1270 |  | 7 Days Work | 9168694 |
| 1272 | 36900.37000.37100.37600.52600.68800.197100 | Flooring+Skirting | 20d | 2027-05-15 | 2027-06-03 | 1271 |  | 7 Days Work | 9168704 |
| 1273 | 36900.37000.37100.37600.52600.68800.197200 | Wall finishes | 21d | 2027-06-04 | 2027-06-24 | 1272 |  | 7 Days Work | 9168714 |
| 1274 | 36900.37000.37100.37600.52600.68800.197300 | False Ceiling | 10d | 2027-06-25 | 2027-07-04 | 1273 |  | 7 Days Work | 9168724 |
| 1275 | 36900.37000.37100.37600.52600.68800.197400 | Staircase | 15d | 2027-07-05 | 2027-07-19 | 1274 |  | 7 Days Work | 9168734 |
| 1276 | 36900.37000.37100.37600.52600.68800.197500 | Deep Cleaning | 7d | 2027-07-20 | 2027-07-26 | 1275 |  | 7 Days Work | 9168744 |

| ID | WBS | Task | Duration | Start | Finish | Predecessors | Constraint | Calendar | Unique_Task_ID |
| --- | --- | --- | --- | --- | --- | --- | --- | --- | --- |
| 1277 | 36900.37000.37100.37600.52600.68900 | **8th Habitable/10th Floor** | 158d | 2027-02-28 | 2027-08-04 |  | start no earlier than 2027-02-28 | 7 Days Work | 9168614 |
| 1278 | 36900.37000.37100.37600.52600.68900.197600 | Side blockwork for lift shafts | 9d | 2027-02-28 | 2027-03-08 | 1268 |  | 7 Days Work | 9168754 |
| 1279 | 36900.37000.37100.37600.52600.68900.197700 | Door Threshold for lifts | 6d | 2027-03-09 | 2027-03-14 | 1278 |  | 7 Days Work | 9168764 |
| 1280 | 36900.37000.37100.37600.52600.68900.197800 | Granite Cladding | 10d | 2027-03-15 | 2027-03-24 | 1279 |  | 7 Days Work | 9168774 |
| 1281 | 36900.37000.37100.37600.52600.68900.197900 | MEP Services | 60d | 2027-03-25 | 2027-05-23 | 1280 |  | 7 Days Work | 9168784 |
| 1282 | 36900.37000.37100.37600.52600.68900.198000 | Flooring+Skirting | 20d | 2027-05-24 | 2027-06-12 | 1281 |  | 7 Days Work | 9168794 |
| 1283 | 36900.37000.37100.37600.52600.68900.198100 | Wall finishes | 21d | 2027-06-13 | 2027-07-03 | 1282 |  | 7 Days Work | 9168804 |
| 1284 | 36900.37000.37100.37600.52600.68900.198200 | False Ceiling | 10d | 2027-07-04 | 2027-07-13 | 1283 |  | 7 Days Work | 9168814 |
| 1285 | 36900.37000.37100.37600.52600.68900.198300 | Staircase | 15d | 2027-07-14 | 2027-07-28 | 1284 |  | 7 Days Work | 9168824 |
| 1286 | 36900.37000.37100.37600.52600.68900.198400 | Deep Cleaning | 7d | 2027-07-29 | 2027-08-04 | 1285 |  | 7 Days Work | 9168834 |
| 1287 | 36900.37000.37100.37600.52600.69000 | **9th Habitable/11th Floor** | 158d | 2027-03-09 | 2027-08-13 |  | start no earlier than 2027-03-09 | 7 Days Work | 9168624 |
| 1288 | 36900.37000.37100.37600.52600.69000.198500 | Side blockwork for lift shafts | 9d | 2027-03-09 | 2027-03-17 | 1278 |  | 7 Days Work | 9168844 |
| 1289 | 36900.37000.37100.37600.52600.69000.198600 | Door Threshold for lifts | 6d | 2027-03-18 | 2027-03-23 | 1288 |  | 7 Days Work | 9168854 |
| 1290 | 36900.37000.37100.37600.52600.69000.198700 | Granite Cladding | 10d | 2027-03-24 | 2027-04-02 | 1289 |  | 7 Days Work | 9168864 |
| 1291 | 36900.37000.37100.37600.52600.69000.198800 | MEP Services | 60d | 2027-04-03 | 2027-06-01 | 1290 |  | 7 Days Work | 9168874 |
| 1292 | 36900.37000.37100.37600.52600.69000.198900 | Flooring+Skirting | 20d | 2027-06-02 | 2027-06-21 | 1291 |  | 7 Days Work | 9168884 |
| 1293 | 36900.37000.37100.37600.52600.69000.199000 | Wall finishes | 21d | 2027-06-22 | 2027-07-12 | 1292 |  | 7 Days Work | 9168894 |
| 1294 | 36900.37000.37100.37600.52600.69000.199100 | False Ceiling | 10d | 2027-07-13 | 2027-07-22 | 1293 |  | 7 Days Work | 9168904 |
| 1295 | 36900.37000.37100.37600.52600.69000.199200 | Staircase | 15d | 2027-07-23 | 2027-08-06 | 1294 |  | 7 Days Work | 9168914 |
| 1296 | 36900.37000.37100.37600.52600.69000.199300 | Deep Cleaning | 7d | 2027-08-07 | 2027-08-13 | 1295 |  | 7 Days Work | 9168924 |
| 1297 | 36900.37000.37100.37600.52600.69100 | **10th Habitable/12th Floor** | 158d | 2027-03-18 | 2027-08-22 |  | start no earlier than 2027-03-18 | 7 Days Work | 9168634 |
| 1298 | 36900.37000.37100.37600.52600.69100.199400 | Side blockwork for lift shafts | 9d | 2027-03-18 | 2027-03-26 | 1288 |  | 7 Days Work | 9168934 |
| 1299 | 36900.37000.37100.37600.52600.69100.199500 | Door Threshold for lifts | 6d | 2027-03-27 | 2027-04-01 | 1298 |  | 7 Days Work | 9168944 |
| 1300 | 36900.37000.37100.37600.52600.69100.199600 | Granite Cladding | 10d | 2027-04-02 | 2027-04-11 | 1299 |  | 7 Days Work | 9168954 |
| 1301 | 36900.37000.37100.37600.52600.69100.199700 | MEP Services | 60d | 2027-04-12 | 2027-06-10 | 1300 |  | 7 Days Work | 9168964 |
| 1302 | 36900.37000.37100.37600.52600.69100.199800 | Flooring+Skirting | 20d | 2027-06-11 | 2027-06-30 | 1301 |  | 7 Days Work | 9168974 |
| 1303 | 36900.37000.37100.37600.52600.69100.199900 | Wall finishes | 21d | 2027-07-01 | 2027-07-21 | 1302 |  | 7 Days Work | 9168984 |
| 1304 | 36900.37000.37100.37600.52600.69100.200000 | False Ceiling | 10d | 2027-07-22 | 2027-07-31 | 1303 |  | 7 Days Work | 9168994 |
| 1305 | 36900.37000.37100.37600.52600.69100.200100 | Staircase | 15d | 2027-08-01 | 2027-08-15 | 1304 |  | 7 Days Work | 9169004 |
| 1306 | 36900.37000.37100.37600.52600.69100.200200 | Deep Cleaning | 7d | 2027-08-16 | 2027-08-22 | 1305 |  | 7 Days Work | 9169014 |

| ID | WBS | Task | Duration | Start | Finish | Predecessors | Constraint | Calendar | Unique_Task_ID |
| --- | --- | --- | --- | --- | --- | --- | --- | --- | --- |
| 1307 | 36900.37000.37100.37600.52600.69200 | **11th Habitable/13th Floor** | 158d | 2027-03-27 | 2027-08-31 |  | start no earlier than 2027-03-27 | 7 Days Work | 9168644 |
| 1308 | 36900.37000.37100.37600.52600.69200.200300 | Side blockwork for lift shafts | 9d | 2027-03-27 | 2027-04-04 | 1298 |  | 7 Days Work | 9169024 |
| 1309 | 36900.37000.37100.37600.52600.69200.200400 | Door Threshold for lifts | 6d | 2027-04-05 | 2027-04-10 | 1308 |  | 7 Days Work | 9169034 |
| 1310 | 36900.37000.37100.37600.52600.69200.200500 | Granite Cladding | 10d | 2027-04-11 | 2027-04-20 | 1309 |  | 7 Days Work | 9169044 |
| 1311 | 36900.37000.37100.37600.52600.69200.200600 | MEP Services | 60d | 2027-04-21 | 2027-06-19 | 1310 |  | 7 Days Work | 9169054 |
| 1312 | 36900.37000.37100.37600.52600.69200.200700 | Flooring+Skirting | 20d | 2027-06-20 | 2027-07-09 | 1311 |  | 7 Days Work | 9169064 |
| 1313 | 36900.37000.37100.37600.52600.69200.200800 | Wall finishes | 21d | 2027-07-10 | 2027-07-30 | 1312 |  | 7 Days Work | 9169074 |
| 1314 | 36900.37000.37100.37600.52600.69200.200900 | False Ceiling | 10d | 2027-07-31 | 2027-08-09 | 1313 |  | 7 Days Work | 9169084 |
| 1315 | 36900.37000.37100.37600.52600.69200.201000 | Staircase | 15d | 2027-08-10 | 2027-08-24 | 1314 |  | 7 Days Work | 9169094 |
| 1316 | 36900.37000.37100.37600.52600.69200.201100 | Deep Cleaning | 7d | 2027-08-25 | 2027-08-31 | 1315 |  | 7 Days Work | 9169104 |
| 1317 | 36900.37000.37100.37600.52600.69300 | **12th Habitable/14th Floor** | 158d | 2027-04-05 | 2027-09-09 |  | start no earlier than 2027-04-05 | 7 Days Work | 9168654 |
| 1318 | 36900.37000.37100.37600.52600.69300.201200 | Side blockwork for lift shafts | 9d | 2027-04-05 | 2027-04-13 | 1308 |  | 7 Days Work | 9169114 |
| 1319 | 36900.37000.37100.37600.52600.69300.201300 | Door Threshold for lifts | 6d | 2027-04-14 | 2027-04-19 | 1318 |  | 7 Days Work | 9169124 |
| 1320 | 36900.37000.37100.37600.52600.69300.201400 | Granite Cladding | 10d | 2027-04-20 | 2027-04-29 | 1319 |  | 7 Days Work | 9169134 |
| 1321 | 36900.37000.37100.37600.52600.69300.201500 | MEP Services | 60d | 2027-04-30 | 2027-06-28 | 1320 |  | 7 Days Work | 9169144 |
| 1322 | 36900.37000.37100.37600.52600.69300.201600 | Flooring+Skirting | 20d | 2027-06-29 | 2027-07-18 | 1321 |  | 7 Days Work | 9169154 |
| 1323 | 36900.37000.37100.37600.52600.69300.201700 | Wall finishes | 21d | 2027-07-19 | 2027-08-08 | 1322 |  | 7 Days Work | 9169164 |
| 1324 | 36900.37000.37100.37600.52600.69300.201800 | False Ceiling | 10d | 2027-08-09 | 2027-08-18 | 1323 |  | 7 Days Work | 9169174 |
| 1325 | 36900.37000.37100.37600.52600.69300.201900 | Staircase | 15d | 2027-08-19 | 2027-09-02 | 1324 |  | 7 Days Work | 9169184 |
| 1326 | 36900.37000.37100.37600.52600.69300.202000 | Deep Cleaning | 7d | 2027-09-03 | 2027-09-09 | 1325 |  | 7 Days Work | 9169194 |
| 1327 | 36900.37000.37100.37600.52600.69400 | **13th Habitable/15th Floor** | 158d | 2027-04-14 | 2027-09-18 |  | start no earlier than 2027-04-14 | 7 Days Work | 9169204 |
| 1328 | 36900.37000.37100.37600.52600.69400.202100 | Side blockwork for lift shafts | 9d | 2027-04-14 | 2027-04-22 | 1318 |  | 7 Days Work | 9169274 |
| 1329 | 36900.37000.37100.37600.52600.69400.202200 | Door Threshold for lifts | 6d | 2027-04-23 | 2027-04-28 | 1328 |  | 7 Days Work | 9169284 |
| 1330 | 36900.37000.37100.37600.52600.69400.202300 | Granite Cladding | 10d | 2027-04-29 | 2027-05-08 | 1329 |  | 7 Days Work | 9169294 |
| 1331 | 36900.37000.37100.37600.52600.69400.202400 | MEP Services | 60d | 2027-05-09 | 2027-07-07 | 1330 |  | 7 Days Work | 9169304 |
| 1332 | 36900.37000.37100.37600.52600.69400.202500 | Flooring+Skirting | 20d | 2027-07-08 | 2027-07-27 | 1331 |  | 7 Days Work | 9169314 |
| 1333 | 36900.37000.37100.37600.52600.69400.202600 | Wall finishes | 21d | 2027-07-28 | 2027-08-17 | 1332 |  | 7 Days Work | 9169324 |
| 1334 | 36900.37000.37100.37600.52600.69400.202700 | False Ceiling | 10d | 2027-08-18 | 2027-08-27 | 1333 |  | 7 Days Work | 9169334 |
| 1335 | 36900.37000.37100.37600.52600.69400.202800 | Staircase | 15d | 2027-08-28 | 2027-09-11 | 1334 |  | 7 Days Work | 9169344 |
| 1336 | 36900.37000.37100.37600.52600.69400.202900 | Deep Cleaning | 7d | 2027-09-12 | 2027-09-18 | 1335 |  | 7 Days Work | 9169354 |

| ID | WBS | Task | Duration | Start | Finish | Predecessors | Constraint | Calendar | Unique_Task_ID |
| --- | --- | --- | --- | --- | --- | --- | --- | --- | --- |
| 1337 | 36900.37000.37100.37600.52600.69500 | **14th Habitable/16th Floor** | 158d | 2027-04-23 | 2027-09-27 |  | start no earlier than 2027-04-23 | 7 Days Work | 9169214 |
| 1338 | 36900.37000.37100.37600.52600.69500.203000 | Side blockwork for lift shafts | 9d | 2027-04-23 | 2027-05-01 | 1328 |  | 7 Days Work | 9169364 |
| 1339 | 36900.37000.37100.37600.52600.69500.203100 | Door Threshold for lifts | 6d | 2027-05-02 | 2027-05-07 | 1338 |  | 7 Days Work | 9169374 |
| 1340 | 36900.37000.37100.37600.52600.69500.203200 | Granite Cladding | 10d | 2027-05-08 | 2027-05-17 | 1339 |  | 7 Days Work | 9169384 |
| 1341 | 36900.37000.37100.37600.52600.69500.203300 | MEP Services | 60d | 2027-05-18 | 2027-07-16 | 1340 |  | 7 Days Work | 9169394 |
| 1342 | 36900.37000.37100.37600.52600.69500.203400 | Flooring+Skirting | 20d | 2027-07-17 | 2027-08-05 | 1341 |  | 7 Days Work | 9169404 |
| 1343 | 36900.37000.37100.37600.52600.69500.203500 | Wall finishes | 21d | 2027-08-06 | 2027-08-26 | 1342 |  | 7 Days Work | 9169414 |
| 1344 | 36900.37000.37100.37600.52600.69500.203600 | False Ceiling | 10d | 2027-08-27 | 2027-09-05 | 1343 |  | 7 Days Work | 9169424 |
| 1345 | 36900.37000.37100.37600.52600.69500.203700 | Staircase | 15d | 2027-09-06 | 2027-09-20 | 1344 |  | 7 Days Work | 9169434 |
| 1346 | 36900.37000.37100.37600.52600.69500.203800 | Deep Cleaning | 7d | 2027-09-21 | 2027-09-27 | 1345 |  | 7 Days Work | 9169444 |
| 1347 | 36900.37000.37100.37600.52600.69600 | **15th Habitable/17th Floor** | 158d | 2027-05-02 | 2027-10-06 |  | start no earlier than 2027-05-02 | 7 Days Work | 9169224 |
| 1348 | 36900.37000.37100.37600.52600.69600.203900 | Side blockwork for lift shafts | 9d | 2027-05-02 | 2027-05-10 | 1338 |  | 7 Days Work | 9169454 |
| 1349 | 36900.37000.37100.37600.52600.69600.204000 | Door Threshold for lifts | 6d | 2027-05-11 | 2027-05-16 | 1348 |  | 7 Days Work | 9169464 |
| 1350 | 36900.37000.37100.37600.52600.69600.204100 | Granite Cladding | 10d | 2027-05-17 | 2027-05-26 | 1349 |  | 7 Days Work | 9169474 |
| 1351 | 36900.37000.37100.37600.52600.69600.204200 | MEP Services | 60d | 2027-05-27 | 2027-07-25 | 1350 |  | 7 Days Work | 9169484 |
| 1352 | 36900.37000.37100.37600.52600.69600.204300 | Flooring+Skirting | 20d | 2027-07-26 | 2027-08-14 | 1351 |  | 7 Days Work | 9169494 |
| 1353 | 36900.37000.37100.37600.52600.69600.204400 | Wall finishes | 21d | 2027-08-15 | 2027-09-04 | 1352 |  | 7 Days Work | 9169504 |
| 1354 | 36900.37000.37100.37600.52600.69600.204500 | False Ceiling | 10d | 2027-09-05 | 2027-09-14 | 1353 |  | 7 Days Work | 9169514 |
| 1355 | 36900.37000.37100.37600.52600.69600.204600 | Staircase | 15d | 2027-09-15 | 2027-09-29 | 1354 |  | 7 Days Work | 9169524 |
| 1356 | 36900.37000.37100.37600.52600.69600.204700 | Deep Cleaning | 7d | 2027-09-30 | 2027-10-06 | 1355 |  | 7 Days Work | 9169534 |
| 1357 | 36900.37000.37100.37600.52600.69700 | **16th Habitable/18th Floor** | 158d | 2027-05-11 | 2027-10-15 |  | start no earlier than 2027-05-11 | 7 Days Work | 9169234 |
| 1358 | 36900.37000.37100.37600.52600.69700.204800 | Side blockwork for lift shafts | 9d | 2027-05-11 | 2027-05-19 | 1348 |  | 7 Days Work | 9169544 |
| 1359 | 36900.37000.37100.37600.52600.69700.204900 | Door Threshold for lifts | 6d | 2027-05-20 | 2027-05-25 | 1358 |  | 7 Days Work | 9169554 |
| 1360 | 36900.37000.37100.37600.52600.69700.205000 | Granite Cladding | 10d | 2027-05-26 | 2027-06-04 | 1359 |  | 7 Days Work | 9169564 |
| 1361 | 36900.37000.37100.37600.52600.69700.205100 | MEP Services | 60d | 2027-06-05 | 2027-08-03 | 1360 |  | 7 Days Work | 9169574 |
| 1362 | 36900.37000.37100.37600.52600.69700.205200 | Flooring+Skirting | 20d | 2027-08-04 | 2027-08-23 | 1361 |  | 7 Days Work | 9169584 |
| 1363 | 36900.37000.37100.37600.52600.69700.205300 | Wall finishes | 21d | 2027-08-24 | 2027-09-13 | 1362 |  | 7 Days Work | 9169594 |
| 1364 | 36900.37000.37100.37600.52600.69700.205400 | False Ceiling | 10d | 2027-09-14 | 2027-09-23 | 1363 |  | 7 Days Work | 9169604 |
| 1365 | 36900.37000.37100.37600.52600.69700.205500 | Staircase | 15d | 2027-09-24 | 2027-10-08 | 1364 |  | 7 Days Work | 9169614 |
| 1366 | 36900.37000.37100.37600.52600.69700.205600 | Deep Cleaning | 7d | 2027-10-09 | 2027-10-15 | 1365 |  | 7 Days Work | 9169624 |

| ID | WBS | Task | Duration | Start | Finish | Predecessors | Constraint | Calendar | Unique_Task_ID |
| --- | --- | --- | --- | --- | --- | --- | --- | --- | --- |
| 1367 | 36900.37000.37100.37600.52600.69800 | **17th Habitable/19th Floor** | 158d | 2027-05-20 | 2027-10-24 |  | start no earlier than 2027-05-20 | 7 Days Work | 9169244 |
| 1368 | 36900.37000.37100.37600.52600.69800.205700 | Side blockwork for lift shafts | 9d | 2027-05-20 | 2027-05-28 | 1358 |  | 7 Days Work | 9169634 |
| 1369 | 36900.37000.37100.37600.52600.69800.205800 | Door Threshold for lifts | 6d | 2027-05-29 | 2027-06-03 | 1368 |  | 7 Days Work | 9169644 |
| 1370 | 36900.37000.37100.37600.52600.69800.205900 | Granite Cladding | 10d | 2027-06-04 | 2027-06-13 | 1369 |  | 7 Days Work | 9169654 |
| 1371 | 36900.37000.37100.37600.52600.69800.206000 | MEP Services | 60d | 2027-06-14 | 2027-08-12 | 1370 |  | 7 Days Work | 9169664 |
| 1372 | 36900.37000.37100.37600.52600.69800.206100 | Flooring+Skirting | 20d | 2027-08-13 | 2027-09-01 | 1371 |  | 7 Days Work | 9169674 |
| 1373 | 36900.37000.37100.37600.52600.69800.206200 | Wall finishes | 21d | 2027-09-02 | 2027-09-22 | 1372 |  | 7 Days Work | 9169684 |
| 1374 | 36900.37000.37100.37600.52600.69800.206300 | False Ceiling | 10d | 2027-09-23 | 2027-10-02 | 1373 |  | 7 Days Work | 9169694 |
| 1375 | 36900.37000.37100.37600.52600.69800.206400 | Staircase | 15d | 2027-10-03 | 2027-10-17 | 1374 |  | 7 Days Work | 9169704 |
| 1376 | 36900.37000.37100.37600.52600.69800.206500 | Deep Cleaning | 7d | 2027-10-18 | 2027-10-24 | 1375 |  | 7 Days Work | 9169714 |
| 1377 | 36900.37000.37100.37600.52600.69900 | **18th Habitable/20th Floor** | 158d | 2027-05-29 | 2027-11-02 |  | start no earlier than 2027-05-29 | 7 Days Work | 9169254 |
| 1378 | 36900.37000.37100.37600.52600.69900.206600 | Side blockwork for lift shafts | 9d | 2027-05-29 | 2027-06-06 | 1368 |  | 7 Days Work | 9169724 |
| 1379 | 36900.37000.37100.37600.52600.69900.206700 | Door Threshold for lifts | 6d | 2027-06-07 | 2027-06-12 | 1378 |  | 7 Days Work | 9169734 |
| 1380 | 36900.37000.37100.37600.52600.69900.206800 | Granite Cladding | 10d | 2027-06-13 | 2027-06-22 | 1379 |  | 7 Days Work | 9169744 |
| 1381 | 36900.37000.37100.37600.52600.69900.206900 | MEP Services | 60d | 2027-06-23 | 2027-08-21 | 1380 |  | 7 Days Work | 9169754 |
| 1382 | 36900.37000.37100.37600.52600.69900.207000 | Flooring+Skirting | 20d | 2027-08-22 | 2027-09-10 | 1381 |  | 7 Days Work | 9169764 |
| 1383 | 36900.37000.37100.37600.52600.69900.207100 | Wall finishes | 21d | 2027-09-11 | 2027-10-01 | 1382 |  | 7 Days Work | 9169774 |
| 1384 | 36900.37000.37100.37600.52600.69900.207200 | False Ceiling | 10d | 2027-10-02 | 2027-10-11 | 1383 |  | 7 Days Work | 9169784 |
| 1385 | 36900.37000.37100.37600.52600.69900.207300 | Staircase | 15d | 2027-10-12 | 2027-10-26 | 1384 |  | 7 Days Work | 9169794 |
| 1386 | 36900.37000.37100.37600.52600.69900.207400 | Deep Cleaning | 7d | 2027-10-27 | 2027-11-02 | 1385 |  | 7 Days Work | 9169804 |
| 1387 | 36900.37000.37100.37600.52600.70000 | **19th Habitable/21st Floor** | 158d | 2027-06-07 | 2027-11-11 |  | start no earlier than 2027-06-07 | 7 Days Work | 9169264 |
| 1388 | 36900.37000.37100.37600.52600.70000.207500 | Side blockwork for lift shafts | 9d | 2027-06-07 | 2027-06-15 | 1378 |  | 7 Days Work | 9169814 |
| 1389 | 36900.37000.37100.37600.52600.70000.207600 | Door Threshold for lifts | 6d | 2027-06-16 | 2027-06-21 | 1388 |  | 7 Days Work | 9169824 |
| 1390 | 36900.37000.37100.37600.52600.70000.207700 | Granite Cladding | 10d | 2027-06-22 | 2027-07-01 | 1389 |  | 7 Days Work | 9169834 |
| 1391 | 36900.37000.37100.37600.52600.70000.207800 | MEP Services | 60d | 2027-07-02 | 2027-08-30 | 1390 |  | 7 Days Work | 9169844 |
| 1392 | 36900.37000.37100.37600.52600.70000.207900 | Flooring+Skirting | 20d | 2027-08-31 | 2027-09-19 | 1391 |  | 7 Days Work | 9169854 |
| 1393 | 36900.37000.37100.37600.52600.70000.208000 | Wall finishes | 21d | 2027-09-20 | 2027-10-10 | 1392 |  | 7 Days Work | 9169864 |
| 1394 | 36900.37000.37100.37600.52600.70000.208100 | False Ceiling | 10d | 2027-10-11 | 2027-10-20 | 1393 |  | 7 Days Work | 9169874 |
| 1395 | 36900.37000.37100.37600.52600.70000.208200 | Staircase | 15d | 2027-10-21 | 2027-11-04 | 1394 |  | 7 Days Work | 9169884 |
| 1396 | 36900.37000.37100.37600.52600.70000.208300 | Deep Cleaning | 7d | 2027-11-05 | 2027-11-11 | 1395 |  | 7 Days Work | 049 |

| ID | WBS | Task | Duration | Start | Finish | Predecessors | Complete | Constraint | Calendar | Unique_Task_ID |
| --- | --- | --- | --- | --- | --- | --- | --- | --- | --- | --- |
| 1397 | 36900.37000.37100.37600.67500 | **Lift** | 332d | 2026-03-15 | 2027-02-09 |  |  | start no earlier than 2026-03-15 | 7 Days Work | 9043436 |
| 1398 | 36900.37000.37100.37600.67500.114500 | Order Issue | 104d | 2026-03-15 | 2026-06-26 | 54FS-120d |  |  | 7 Days Work | 9043437 |
| 1399 | 36900.37000.37100.37600.67500.114600 | Shop drawing approval | 30d | 2026-06-27 | 2026-07-26 | 1398 |  |  | 7 Days Work | 9043438 |
| 1400 | 36900.37000.37100.37600.67500.114700 | Material recipt | 90d | 2026-07-27 | 2026-10-24 | 1399 |  |  | 7 Days Work | 9043439 |
| 1401 | 36900.37000.37100.37600.67500.114800 | Lift Shaft Handover | 30d | 2026-11-15 | 2026-12-14 | 64 |  |  | 7 Days Work | 9043446 |
| 1402 | 36900.37000.37100.37600.67500.114900 | Template fixing by lift contractor | 7d | 2026-12-15 | 2026-12-21 | 1401 |  |  | 7 Days Work | 9043456 |
| 1403 | 36900.37000.37100.37600.67500.115000 | Centre line marking for lift shafts | 5d | 2026-12-22 | 2026-12-26 | 1402 |  |  | 7 Days Work | 9043466 |
| 1404 | 36900.37000.37100.37600.67500.115100 | Rail & Bracket Fixing | 5d | 2026-12-27 | 2026-12-31 | 1403 |  |  | 7 Days Work | 9043476 |
| 1405 | 36900.37000.37100.37600.67500.115200 | Cage Installation | 5d | 2027-01-01 | 2027-01-05 | 1404 |  |  | 7 Days Work | 9043486 |
| 1406 | 36900.37000.37100.37600.67500.115300 | Slow Speed | 20d | 2027-01-06 | 2027-01-25 | 1405 |  |  | 7 Days Work | 9043496 |
| 1407 | 36900.37000.37100.37600.67500.115400 | High Spped | 5d | 2027-01-26 | 2027-01-30 | 1406 |  |  | 7 Days Work | 9043506 |
| 1408 | 36900.37000.37100.37600.67500.115500 | Commisioning | 7d | 2027-01-31 | 2027-02-06 | 1407 |  |  | 7 Days Work | 9043516 |
| 1409 | 36900.37000.37100.37600.67500.115600 | Handover | 3d | 2027-02-07 | 2027-02-09 | 1408 |  |  | 7 Days Work | 9043314 |
| 1410 | 36900.37000.37100.37600.97500 | External Paint | 90d | 2027-02-23 | 2027-05-23 | 63FS+135d |  |  | 7 Days Work | 0050 |
| 1411 | 36900.37000.37100.37800 | **Tower-2** | 933.5d | 2025-05-09 | 2027-11-28 |  | 1% | start no earlier than 2025-05-09 | 7 Days Work | 9042614 |
| 1412 | 36900.37000.37100.37800.90700 | Pilling- Non Effected of Tree Noc Zone | 84d | 2025-05-09 | 2025-08-25 | 29SS+81d | 100% | start no earlier than 2025-05-09 | 7 Days Work | 9043324 |
| 1413 | 36900.37000.37100.37800.90600 | Pilling-Effected of Tree Noc Zone | 34d | 2025-08-23 | 2025-09-25 | 5FS+3d | 100% | start no earlier than 2025-08-23 | 7 Days Work | 10343848 |
| 1414 | 36900.37000.37100.37800.90500 | SPT Test | 4d | 2025-10-20 | 2025-10-23 | 1413FF+15d | 100% | start no earlier than 2025-10-20 | 7 Days Work | 10343588 |
| 1415 | 36900.37000.37100.37800.90400 | Dynamic | 7d | 2025-10-17 | 2025-10-23 | 1413FS+28d | 100% | start no earlier than 2025-10-17 | 7 Days Work | 10343598 |
| 1416 | 36900.37000.37100.37800.90300 | Static Load Test | 8d | 2025-10-19 | 2025-10-26 | 1413FS+28d | 100% | start no earlier than 2025-10-19 | 7 Days Work | 10343608 |
| 1417 | 36900.37000.37100.37800.97600 | Excavation & Pile Breaking | 15d | 2025-11-30 | 2025-12-14 | 1416FS+25d |  |  | 7 Days Work | 9043325 |
| 1418 | 36900.37000.37100.37800.97700 | PIT | 7d | 2025-12-15 | 2025-12-21 | 1417 |  |  | 7 Days Work | 10343618 |
| 1419 | 36900.37000.37100.37800.97800 | Pilecap | 26d | 2025-12-22 | 2026-01-17 | 1418FS+0.25d |  |  | 7 Days Work | 9043334 |
| 1420 | 36900.37000.37100.37800.97900 | up to PL | 22d | 2026-01-17 | 2026-02-08 | 1419 |  |  | 7 Days Work | 9043344 |
| 1421 | 36900.37000.37100.37800.98000 | 1st Floor Slab RCC | 25d | 2026-02-08 | 2026-03-05 | 1420 |  |  | 7 Days Work | 9043354 |
| 1422 | 36900.37000.37100.37800.98100 | 2nd Floor Slab RCC | 25d | 2026-03-05 | 2026-03-30 | 1421 |  |  | 7 Days Work | 9043364 |
| 1423 | 36900.37000.37100.37800.98200 | 3rd Floor Slab RCC | 25d | 2026-03-30 | 2026-04-24 | 1422 |  |  | 7 Days Work | 9043374 |
| 1424 | 36900.37000.37100.37800.98300 | 4th Floor Slab RCC | 21d | 2026-04-24 | 2026-05-15 | 1423 |  |  | 7 Days Work | 9043384 |
| 1425 | 36900.37000.37100.37800.98400 | 5th Floor Slab RCC | 15d | 2026-05-15 | 2026-05-30 | 1424 |  |  | 7 Days Work | 9043394 |
| 1426 | 36900.37000.37100.37800.98500 | 6th Floor Slab RCC | 9d | 2026-05-30 | 2026-06-08 | 1425 |  |  | 7 Days Work | 9043404 |
| 1427 | 36900.37000.37100.37800.98600 | 7th Floor Slab RCC | 12d | 2026-06-08 | 2026-06-20 | 1426 |  |  | 7 Days Work | 9043414 |
| 1428 | 36900.37000.37100.37800.98700 | 8th Floor Slab RCC | 9d | 2026-06-20 | 2026-06-29 | 1427 |  |  | 7 Days Work | 9043424 |
| 1429 | 36900.37000.37100.37800.98800 | 9th Floor Slab RCC | 9d | 2026-06-29 | 2026-07-08 | 1428 |  |  | 7 Days Work | 9043434 |
| 1430 | 36900.37000.37100.37800.98900 | 10th Floor Slab RCC | 9d | 2026-07-08 | 2026-07-17 | 1429 |  |  | 7 Days Work | 9043444 |
| 1431 | 36900.37000.37100.37800.99000 | 11th Floor Slab RCC | 12d | 2026-07-17 | 2026-07-29 | 1430 |  |  | 7 Days Work | 9043454 |
| 1432 | 36900.37000.37100.37800.99100 | 12th Floor Slab RCC | 9d | 2026-07-29 | 2026-08-07 | 1431 |  |  | 7 Days Work | 9043464 |
| 1433 | 36900.37000.37100.37800.99200 | 13th Floor Slab RCC | 9d | 2026-08-07 | 2026-08-16 | 1432 |  |  | 7 Days Work | 9043474 |
| 1434 | 36900.37000.37100.37800.99300 | 14th Floor Slab RCC | 9d | 2026-08-16 | 2026-08-25 | 1433 |  |  | 7 Days Work | 9043484 |
| 1435 | 36900.37000.37100.37800.99400 | 15th Floor Slab RCC | 12d | 2026-08-25 | 2026-09-06 | 1434 |  |  | 7 Days Work | 9043494 |
| 1436 | 36900.37000.37100.37800.99500 | 16th Floor Slab RCC | 9d | 2026-09-06 | 2026-09-15 | 1435 |  |  | 7 Days Work | 9043504 |
| 1437 | 36900.37000.37100.37800.99600 | 17th Floor Slab RCC | 9d | 2026-09-15 | 2026-09-24 | 1436 |  |  | 7 Days Work | 9043514 |
| 1438 | 36900.37000.37100.37800.99700 | 18th Floor Slab RCC | 9d | 2026-09-24 | 2026-10-03 | 1437 |  |  | 7 Days Work | 9043524 |
| 1439 | 36900.37000.37100.37800.99800 | 19th Floor Slab RCC | 12d | 2026-10-03 | 2026-10-15 | 1438 |  |  | 7 Days Work | 9043534 |
| 1440 | 36900.37000.37100.37800.99900 | 20th Floor Slab RCC | 9d | 2026-10-15 | 2026-10-24 | 1439 |  |  | 7 Days Work | 9043544 |
| 1441 | 36900.37000.37100.37800.100000 | Terrace | 12d | 2026-10-24 | 2026-11-05 | 1440 |  |  | 7 Days Work | 9043554 |
| 1442 | 36900.37000.37100.37800.100100 | Above Terrace | 35d | 2026-11-05 | 2026-12-10 | 1441FS+0.25d |  |  | 7 Days Work | 9043564 |

| ID | WBS | Task | Duration | Start | Finish | Predecessors | Constraint | Calendar | Unique_Task_ID |
| --- | --- | --- | --- | --- | --- | --- | --- | --- | --- |
| 1443 | 36900.37000.37100.37800.38500 | **Flat Finishing** | 419d | 2026-05-30 | 2027-07-23 |  | start no earlier than 2026-05-30 | 7 Days Work | 9169914 |
| 1444 | 36900.37000.37100.37800.38500.40500 | **1st Habitable/3rd Floor** | 245d | 2026-05-30 | 2027-01-30 |  | start no earlier than 2026-05-30 | 7 Days Work | 9169924 |
| 1445 | 36900.37000.37100.37800.38500.40500.208400 | Post Pour | 7d | 2026-05-30 | 2026-06-06 | 1424FS+15d |  | 7 Days Work | 9170634 |
| 1446 | 36900.37000.37100.37800.38500.40500.208500 | MEP Clearance -1 | 5d | 2026-06-06 | 2026-06-11 | 1445 |  | 7 Days Work | 9170644 |
| 1447 | 36900.37000.37100.37800.38500.40500.208600 | Benchmark | 1d | 2026-06-11 | 2026-06-12 | 1446 |  | 7 Days Work | 9170654 |
| 1448 | 36900.37000.37100.37800.38500.40500.208700 | Temporary Railing | 3d | 2026-06-12 | 2026-06-15 | 1447 |  | 7 Days Work | 9170664 |
| 1449 | 36900.37000.37100.37800.38500.40500.208800 | Blockwork | 10d | 2026-06-15 | 2026-06-25 | 1448 |  | 7 Days Work | 9170674 |
| 1450 | 36900.37000.37100.37800.38500.40500.208900 | MEP Clearance -2 | 10d | 2026-06-25 | 2026-07-05 | 1449 |  | 7 Days Work | 9170684 |
| 1451 | 36900.37000.37100.37800.38500.40500.209000 | Gypsum Plaster | 14d | 2026-07-05 | 2026-07-19 | 1450 |  | 7 Days Work | 9170694 |
| 1452 | 36900.37000.37100.37800.38500.40500.209100 | Kitchen Platform | 3d | 2026-07-19 | 2026-07-22 | 1451 |  | 7 Days Work | 9170704 |
| 1453 | 36900.37000.37100.37800.38500.40500.209200 | Kitchen dado | 7d | 2026-07-22 | 2026-07-29 | 1452 |  | 7 Days Work | 9170714 |
| 1454 | 36900.37000.37100.37800.38500.40500.209300 | Fire Fighting | 5d | 2026-07-29 | 2026-08-03 | 1453 |  | 7 Days Work | 9170724 |
| 1455 | 36900.37000.37100.37800.38500.40500.209400 | Anticapilary | 5d | 2026-08-03 | 2026-08-08 | 1454 |  | 7 Days Work | 9170734 |
| 1456 | 36900.37000.37100.37800.38500.40500.209500 | Stone Laying | 10d | 2026-09-10 | 2026-09-20 | 1496 |  | 7 Days Work | 9170744 |
| 1457 | 36900.37000.37100.37800.38500.40500.209600 | Tiles Laying | 7d | 2026-09-10 | 2026-09-17 | 1496 |  | 7 Days Work | 9170754 |
| 1458 | 36900.37000.37100.37800.38500.40500.209700 | 1st cutting/polishing of stone flooring | 7d | 2026-09-17 | 2026-09-24 | 1457 |  | 7 Days Work | 9170764 |
| 1459 | 36900.37000.37100.37800.38500.40500.209800 | Tiles/Stone skirting | 5d | 2026-09-24 | 2026-09-29 | 1458 |  | 7 Days Work | 9170774 |
| 1460 | 36900.37000.37100.37800.38500.40500.209900 | Protechtion sheet | 1d | 2026-09-29 | 2026-09-30 | 1459 |  | 7 Days Work | 9170784 |
| 1461 | 36900.37000.37100.37800.38500.40500.210000 | Installation of Temporary Door | 1d | 2026-09-30 | 2026-10-01 | 1460 |  | 7 Days Work | 9170794 |
| 1462 | 36900.37000.37100.37800.38500.40500.210100 | Fixing of window tracks | 5d | 2026-10-01 | 2026-10-06 | 1461 |  | 7 Days Work | 9170804 |
| 1463 | 36900.37000.37100.37800.38500.40500.210200 | Wire Pulling | 7d | 2026-10-06 | 2026-10-13 | 1462 |  | 7 Days Work | 9170814 |
| 1464 | 36900.37000.37100.37800.38500.40500.210300 | Gypsum Remaining | 5d | 2026-10-13 | 2026-10-18 | 1463 |  | 7 Days Work | 9170824 |
| 1465 | 36900.37000.37100.37800.38500.40500.210400 | Fixing of windoow shutter | 5d | 2026-10-18 | 2026-10-23 | 1464 |  | 7 Days Work | 9170834 |
| 1466 | 36900.37000.37100.37800.38500.40500.210500 | Putty Works - walls & ceiling | 15d | 2026-10-23 | 2026-11-07 | 1465 |  | 7 Days Work | 9170844 |
| 1467 | 36900.37000.37100.37800.38500.40500.210600 | False Ceiling- Framing | 10d | 2026-11-07 | 2026-11-17 | 1466 |  | 7 Days Work | 9170854 |
| 1468 | 36900.37000.37100.37800.38500.40500.210700 | Pre Hung Door | 3d | 2026-11-17 | 2026-11-20 | 1467 |  | 7 Days Work | 9170864 |
| 1469 | 36900.37000.37100.37800.38500.40500.210800 | Protechtion sheet | 2d | 2026-11-20 | 2026-11-22 | 1468 |  | 7 Days Work | 9170874 |
| 1470 | 36900.37000.37100.37800.38500.40500.210900 | Skirting near door | 2d | 2026-11-22 | 2026-11-24 | 1469 |  | 7 Days Work | 9170884 |
| 1471 | 36900.37000.37100.37800.38500.40500.211000 | Electrical Switch box fixing | 14d | 2026-11-24 | 2026-12-08 | 1470 |  | 7 Days Work | 9170894 |
| 1472 | 36900.37000.37100.37800.38500.40500.211100 | Fire Fighting painting | 5d | 2026-12-08 | 2026-12-13 | 1471 |  | 7 Days Work | 9170904 |
| 1473 | 36900.37000.37100.37800.38500.40500.211200 | Protection of all flooring, door & window hardware | 5d | 2026-12-13 | 2026-12-18 | 1472 |  | 7 Days Work | 9170914 |
| 1474 | 36900.37000.37100.37800.38500.40500.211300 | 1st coat primer- ceiling 1st & walls | 14d | 2026-12-18 | 2027-01-01 | 1473 |  | 7 Days Work | 9170924 |
| 1475 | 36900.37000.37100.37800.38500.40500.211400 | Wooden Flooring | 5d | 2027-01-01 | 2027-01-06 | 1474 |  | 7 Days Work | 9170934 |
| 1476 | 36900.37000.37100.37800.38500.40500.211500 | Removing of Temporary Railing & installation of Glass Railing | 5d | 2027-01-01 | 2027-01-06 | 1474 |  | 7 Days Work | 9170944 |
| 1477 | 36900.37000.37100.37800.38500.40500.211600 | Tile Grouting | 7d | 2027-01-01 | 2027-01-08 | 1474 |  | 7 Days Work | 9170954 |
| 1478 | 36900.37000.37100.37800.38500.40500.211700 | False Ceiling | 5d | 2027-01-08 | 2027-01-13 | 1477 |  | 7 Days Work | 9170964 |
| 1479 | 36900.37000.37100.37800.38500.40500.211800 | 2nd coat of primer | 10d | 2027-01-13 | 2027-01-23 | 1478 |  | 7 Days Work | 9170974 |
| 1480 | 36900.37000.37100.37800.38500.40500.211900 | Final cutting/polishing of stone flooring | 7d | 2027-01-23 | 2027-01-30 | 1479 |  | 7 Days Work | 9170984 |

| ID | WBS | Task | Duration | Start | Finish | Predecessors | Constraint | Calendar | Unique_Task_ID |
| --- | --- | --- | --- | --- | --- | --- | --- | --- | --- |
| 1481 | 36900.37000.37100.37800.38500.40500.54800 | **Toilet** | 237d | 2026-06-06 | 2027-01-29 |  | start no earlier than 2026-06-06 | 7 Days Work | 9170124 |
| 1482 | 36900.37000.37100.37800.38500.40500.54800.776900 | Toilet_MEP Clearance -1 | 7d | 2026-06-06 | 2026-06-13 | 1445 |  | 7 Days Work | 9179184 |
| 1483 | 36900.37000.37100.37800.38500.40500.54800.777000 | Toilet_Level Marking | 1d | 2026-06-13 | 2026-06-14 | 1482 |  | 7 Days Work | 9179194 |
| 1484 | 36900.37000.37100.37800.38500.40500.54800.777100 | Toilet_Chasing work for Electrical conduit & concealed plumbing | 5d | 2026-06-14 | 2026-06-19 | 1483 |  | 7 Days Work | 9179204 |
| 1485 | 36900.37000.37100.37800.38500.40500.54800.777200 | Toilet_Plumbing work 1st fix | 5d | 2026-06-19 | 2026-06-24 | 1484 |  | 7 Days Work | 9179214 |
| 1486 | 36900.37000.37100.37800.38500.40500.54800.777300 | Toilet_Sleeve/Bore Packing | 5d | 2026-06-24 | 2026-06-29 | 1485 |  | 7 Days Work | 9179224 |
| 1487 | 36900.37000.37100.37800.38500.40500.54800.777400 | Toilet_Waterproofing | 10d | 2026-06-29 | 2026-07-09 | 1486 |  | 7 Days Work | 9179234 |
| 1488 | 36900.37000.37100.37800.38500.40500.54800.777500 | Toilet_Screed | 1d | 2026-07-09 | 2026-07-10 | 1487 |  | 7 Days Work | 9179244 |
| 1489 | 36900.37000.37100.37800.38500.40500.54800.777600 | Toilet_Plumbing 2nd fix | 5d | 2026-07-10 | 2026-07-15 | 1488 |  | 7 Days Work | 9179254 |
| 1490 | 36900.37000.37100.37800.38500.40500.54800.777700 | Toilet_Ledge wall | 5d | 2026-07-15 | 2026-07-20 | 1489 |  | 7 Days Work | 9179264 |
| 1491 | 36900.37000.37100.37800.38500.40500.54800.777800 | Toilet_Cement Plaster | 5d | 2026-07-20 | 2026-07-25 | 1490 |  | 7 Days Work | 9179274 |
| 1492 | 36900.37000.37100.37800.38500.40500.54800.777900 | Toilet_Door Frame | 1d | 2026-07-25 | 2026-07-26 | 1491 |  | 7 Days Work | 9179284 |
| 1493 | 36900.37000.37100.37800.38500.40500.54800.778000 | Toilet_Wash basin & Couter | 3d | 2026-07-26 | 2026-07-29 | 1492 |  | 7 Days Work | 9179294 |
| 1494 | 36900.37000.37100.37800.38500.40500.54800.778100 | Toilet_Wall dado | 20d | 2026-07-29 | 2026-08-18 | 1493 |  | 7 Days Work | 9179304 |
| 1495 | 36900.37000.37100.37800.38500.40500.54800.778200 | Toilet_Granite Work-Ledge wall top | 3d | 2026-08-18 | 2026-08-21 | 1494 |  | 7 Days Work | 9179314 |
| 1496 | 36900.37000.37100.37800.38500.40500.54800.778300 | Toilet_Floor Tilling work | 20d | 2026-08-21 | 2026-09-10 | 1495 |  | 7 Days Work | 9179324 |
| 1497 | 36900.37000.37100.37800.38500.40500.54800.778400 | Toilet_1st row of dado | 5d | 2026-09-10 | 2026-09-15 | 1496 |  | 7 Days Work | 9179334 |
| 1498 | 36900.37000.37100.37800.38500.40500.54800.778500 | Toilet_Window Fixing | 14d | 2026-09-15 | 2026-09-29 | 1497 |  | 7 Days Work | 9179344 |
| 1499 | 36900.37000.37100.37800.38500.40500.54800.778600 | Toilet_Services above False ceiling | 21d | 2026-09-29 | 2026-10-20 | 1498 |  | 7 Days Work | 9179354 |
| 1500 | 36900.37000.37100.37800.38500.40500.54800.778700 | Toilet_False Ceiling framing | 12d | 2026-10-20 | 2026-11-01 | 1499 |  | 7 Days Work | 9179364 |
| 1501 | 36900.37000.37100.37800.38500.40500.54800.778800 | Toilet_Door Frame | 5d | 2026-11-01 | 2026-11-06 | 1500 |  | 7 Days Work | 9179374 |
| 1502 | 36900.37000.37100.37800.38500.40500.54800.778900 | Toilet_Epoxy Tile Grouting | 7d | 2027-01-01 | 2027-01-08 | 1477SS |  | 7 Days Work | 9179384 |
| 1503 | 36900.37000.37100.37800.38500.40500.54800.779000 | Toilet_False ceiling board fixing, CP Sanitary Fixture, Electric Fixture | 21d | 2027-01-08 | 2027-01-29 | 1502 |  | 7 Days Work | 9179394 |
| 1504 | 36900.37000.37100.37800.38500.40600 | **2nd Habitable/4th Floor** | 245d | 2026-06-14 | 2027-02-14 |  | start no earlier than 2026-06-14 | 7 Days Work | 9169934 |
| 1505 | 36900.37000.37100.37800.38500.40600.212000 | Post Pour | 7d | 2026-06-14 | 2026-06-21 | 1425FS+15d |  | 7 Days Work | 9170994 |
| 1506 | 36900.37000.37100.37800.38500.40600.212100 | MEP Clearance -1 | 5d | 2026-06-21 | 2026-06-26 | 1505 |  | 7 Days Work | 9171004 |
| 1507 | 36900.37000.37100.37800.38500.40600.212200 | Benchmark | 1d | 2026-06-26 | 2026-06-27 | 1506 |  | 7 Days Work | 9171014 |
| 1508 | 36900.37000.37100.37800.38500.40600.212300 | Temporary Railing | 3d | 2026-06-27 | 2026-06-30 | 1507 |  | 7 Days Work | 9171024 |
| 1509 | 36900.37000.37100.37800.38500.40600.212400 | Blockwork | 10d | 2026-06-30 | 2026-07-10 | 1508 |  | 7 Days Work | 9171034 |
| 1510 | 36900.37000.37100.37800.38500.40600.212500 | MEP Clearance -2 | 10d | 2026-07-10 | 2026-07-20 | 1509 |  | 7 Days Work | 9171044 |
| 1511 | 36900.37000.37100.37800.38500.40600.212600 | Gypsum Plaster | 14d | 2026-07-20 | 2026-08-03 | 1510 |  | 7 Days Work | 9171054 |
| 1512 | 36900.37000.37100.37800.38500.40600.212700 | Kitchen Platform | 3d | 2026-08-03 | 2026-08-06 | 1511 |  | 7 Days Work | 9171064 |
| 1513 | 36900.37000.37100.37800.38500.40600.212800 | Kitchen dado | 7d | 2026-08-06 | 2026-08-13 | 1512 |  | 7 Days Work | 9171074 |
| 1514 | 36900.37000.37100.37800.38500.40600.212900 | Fire Fighting | 5d | 2026-08-13 | 2026-08-18 | 1513 |  | 7 Days Work | 9171084 |
| 1515 | 36900.37000.37100.37800.38500.40600.213000 | Anticapilary | 5d | 2026-08-18 | 2026-08-23 | 1514 |  | 7 Days Work | 9171094 |
| 1516 | 36900.37000.37100.37800.38500.40600.213100 | Stone Laying | 10d | 2026-09-25 | 2026-10-05 | 1556 |  | 7 Days Work | 9171104 |
| 1517 | 36900.37000.37100.37800.38500.40600.213200 | Tiles Laying | 7d | 2026-09-25 | 2026-10-02 | 1556 |  | 7 Days Work | 9171114 |
| 1518 | 36900.37000.37100.37800.38500.40600.213300 | 1st cutting/polishing of stone flooring | 7d | 2026-10-02 | 2026-10-09 | 1517 |  | 7 Days Work | 9171124 |
| 1519 | 36900.37000.37100.37800.38500.40600.213400 | Tiles/Stone skirting | 5d | 2026-10-09 | 2026-10-14 | 1518 |  | 7 Days Work | 9171134 |
| 1520 | 36900.37000.37100.37800.38500.40600.213500 | Protechtion sheet | 1d | 2026-10-14 | 2026-10-15 | 1519 |  | 7 Days Work | 9171144 |
| 1521 | 36900.37000.37100.37800.38500.40600.213600 | Installation of Temporary Door | 1d | 2026-10-15 | 2026-10-16 | 1520 |  | 7 Days Work | 9171154 |
| 1522 | 36900.37000.37100.37800.38500.40600.213700 | Fixing of window tracks | 5d | 2026-10-16 | 2026-10-21 | 1521 |  | 7 Days Work | 9171164 |
| 1523 | 36900.37000.37100.37800.38500.40600.213800 | Wire Pulling | 7d | 2026-10-21 | 2026-10-28 | 1522 |  | 7 Days Work | 9171174 |
| 1524 | 36900.37000.37100.37800.38500.40600.213900 | Gypsum Remaining | 5d | 2026-10-28 | 2026-11-02 | 1523 |  | 7 Days Work | 9171184 |
| 1525 | 36900.37000.37100.37800.38500.40600.214000 | Fixing of windoow shutter | 5d | 2026-11-02 | 2026-11-07 | 1524 |  | 7 Days Work | 9171194 |
| 1526 | 36900.37000.37100.37800.38500.40600.214100 | Putty Works - walls & ceiling | 15d | 2026-11-07 | 2026-11-22 | 1525 |  | 7 Days Work | 9171204 |
| 1527 | 36900.37000.37100.37800.38500.40600.214200 | False Ceiling- Framing | 10d | 2026-11-22 | 2026-12-02 | 1526 |  | 7 Days Work | 9171214 |
| 1528 | 36900.37000.37100.37800.38500.40600.214300 | Pre Hung Door | 3d | 2026-12-02 | 2026-12-05 | 1527 |  | 7 Days Work | 9171224 |
| 1529 | 36900.37000.37100.37800.38500.40600.214400 | Protechtion sheet | 2d | 2026-12-05 | 2026-12-07 | 1528 |  | 7 Days Work | 9171234 |
| 1530 | 36900.37000.37100.37800.38500.40600.214500 | Skirting near door | 2d | 2026-12-07 | 2026-12-09 | 1529 |  | 7 Days Work | 9171244 |
| 1531 | 36900.37000.37100.37800.38500.40600.214600 | Electrical Switch box fixing | 14d | 2026-12-09 | 2026-12-23 | 1530 |  | 7 Days Work | 9171254 |
| 1532 | 36900.37000.37100.37800.38500.40600.214700 | Fire Fighting painting | 5d | 2026-12-23 | 2026-12-28 | 1531 |  | 7 Days Work | 9171264 |
| 1533 | 36900.37000.37100.37800.38500.40600.214800 | Protection of all flooring, door & window hardware | 5d | 2026-12-28 | 2027-01-02 | 1532 |  | 7 Days Work | 9171274 |
| 1534 | 36900.37000.37100.37800.38500.40600.214900 | 1st coat primer- ceiling 1st & walls | 14d | 2027-01-02 | 2027-01-16 | 1533 |  | 7 Days Work | 9171284 |
| 1535 | 36900.37000.37100.37800.38500.40600.215000 | Wooden Flooring | 5d | 2027-01-16 | 2027-01-21 | 1534 |  | 7 Days Work | 9171294 |
| 1536 | 36900.37000.37100.37800.38500.40600.215100 | Removing of Temporary Railing & installation of Glass Railing | 5d | 2027-01-16 | 2027-01-21 | 1534 |  | 7 Days Work | 9171304 |
| 1537 | 36900.37000.37100.37800.38500.40600.215200 | Tile Grouting | 7d | 2027-01-16 | 2027-01-23 | 1534 |  | 7 Days Work | 9171314 |
| 1538 | 36900.37000.37100.37800.38500.40600.215300 | False Ceiling | 5d | 2027-01-23 | 2027-01-28 | 1537 |  | 7 Days Work | 9171324 |
| 1539 | 36900.37000.37100.37800.38500.40600.215400 | 2nd coat of primer | 10d | 2027-01-28 | 2027-02-07 | 1538 |  | 7 Days Work | 9171334 |
| 1540 | 36900.37000.37100.37800.38500.40600.215500 | Final cutting/polishing of stone flooring | 7d | 2027-02-07 | 2027-02-14 | 1539 |  | 7 Days Work | 9171344 |

| ID | WBS | Task | Duration | Start | Finish | Predecessors | Constraint | Calendar | Unique_Task_ID |
| --- | --- | --- | --- | --- | --- | --- | --- | --- | --- |
| 1541 | 36900.37000.37100.37800.38500.40600.54900 | **Toilet** | 237d | 2026-06-21 | 2027-02-13 |  | start no earlier than 2026-06-21 | 7 Days Work | 9170134 |
| 1542 | 36900.37000.37100.37800.38500.40600.54900.779100 | Toilet_MEP Clearance -1 | 7d | 2026-06-21 | 2026-06-28 | 1505 |  | 7 Days Work | 9179404 |
| 1543 | 36900.37000.37100.37800.38500.40600.54900.779200 | Toilet_Level Marking | 1d | 2026-06-28 | 2026-06-29 | 1542 |  | 7 Days Work | 9179414 |
| 1544 | 36900.37000.37100.37800.38500.40600.54900.779300 | Toilet_Chasing work for Electrical conduit & concealed plumbing | 5d | 2026-06-29 | 2026-07-04 | 1543 |  | 7 Days Work | 9179424 |
| 1545 | 36900.37000.37100.37800.38500.40600.54900.779400 | Toilet_Plumbing work 1st fix | 5d | 2026-07-04 | 2026-07-09 | 1544 |  | 7 Days Work | 9179434 |
| 1546 | 36900.37000.37100.37800.38500.40600.54900.779500 | Toilet_Sleeve/Bore Packing | 5d | 2026-07-09 | 2026-07-14 | 1545 |  | 7 Days Work | 9179444 |
| 1547 | 36900.37000.37100.37800.38500.40600.54900.779600 | Toilet_Waterproofing | 10d | 2026-07-14 | 2026-07-24 | 1546 |  | 7 Days Work | 9179454 |
| 1548 | 36900.37000.37100.37800.38500.40600.54900.779700 | Toilet_Screed | 1d | 2026-07-24 | 2026-07-25 | 1547 |  | 7 Days Work | 9179464 |
| 1549 | 36900.37000.37100.37800.38500.40600.54900.779800 | Toilet_Plumbing 2nd fix | 5d | 2026-07-25 | 2026-07-30 | 1548 |  | 7 Days Work | 9179474 |
| 1550 | 36900.37000.37100.37800.38500.40600.54900.779900 | Toilet_Ledge wall | 5d | 2026-07-30 | 2026-08-04 | 1549 |  | 7 Days Work | 9179484 |
| 1551 | 36900.37000.37100.37800.38500.40600.54900.780000 | Toilet_Cement Plaster | 5d | 2026-08-04 | 2026-08-09 | 1550 |  | 7 Days Work | 9179494 |
| 1552 | 36900.37000.37100.37800.38500.40600.54900.780100 | Toilet_Door Frame | 1d | 2026-08-09 | 2026-08-10 | 1551 |  | 7 Days Work | 9179504 |
| 1553 | 36900.37000.37100.37800.38500.40600.54900.780200 | Toilet_Wash basin & Couter | 3d | 2026-08-10 | 2026-08-13 | 1552 |  | 7 Days Work | 9179514 |
| 1554 | 36900.37000.37100.37800.38500.40600.54900.780300 | Toilet_Wall dado | 20d | 2026-08-13 | 2026-09-02 | 1553 |  | 7 Days Work | 9179524 |
| 1555 | 36900.37000.37100.37800.38500.40600.54900.780400 | Toilet_Granite Work-Ledge wall top | 3d | 2026-09-02 | 2026-09-05 | 1554 |  | 7 Days Work | 9179534 |
| 1556 | 36900.37000.37100.37800.38500.40600.54900.780500 | Toilet_Floor Tilling work | 20d | 2026-09-05 | 2026-09-25 | 1555 |  | 7 Days Work | 9179544 |
| 1557 | 36900.37000.37100.37800.38500.40600.54900.780600 | Toilet_1st row of dado | 5d | 2026-09-25 | 2026-09-30 | 1556 |  | 7 Days Work | 9179554 |
| 1558 | 36900.37000.37100.37800.38500.40600.54900.780700 | Toilet_Window Fixing | 14d | 2026-09-30 | 2026-10-14 | 1557 |  | 7 Days Work | 9179564 |
| 1559 | 36900.37000.37100.37800.38500.40600.54900.780800 | Toilet_Services above False ceiling | 21d | 2026-10-14 | 2026-11-04 | 1558 |  | 7 Days Work | 9179574 |
| 1560 | 36900.37000.37100.37800.38500.40600.54900.780900 | Toilet_False Ceiling framing | 12d | 2026-11-04 | 2026-11-16 | 1559 |  | 7 Days Work | 9179584 |
| 1561 | 36900.37000.37100.37800.38500.40600.54900.781000 | Toilet_Door Frame | 5d | 2026-11-16 | 2026-11-21 | 1560 |  | 7 Days Work | 9179594 |
| 1562 | 36900.37000.37100.37800.38500.40600.54900.781100 | Toilet_Epoxy Tile Grouting | 7d | 2027-01-16 | 2027-01-23 | 1537SS |  | 7 Days Work | 9179604 |
| 1563 | 36900.37000.37100.37800.38500.40600.54900.781200 | Toilet_False ceiling board fixing, CP Sanitary Fixture, Electric Fixture | 21d | 2027-01-23 | 2027-02-13 | 1562 |  | 7 Days Work | 9179614 |
| 1564 | 36900.37000.37100.37800.38500.40700 | **3rd Habitable/5th Floor** | 245d | 2026-06-23 | 2027-02-23 |  | start no earlier than 2026-06-23 | 7 Days Work | 9169944 |
| 1565 | 36900.37000.37100.37800.38500.40700.215600 | Post Pour | 7d | 2026-06-23 | 2026-06-30 | 1426FS+15d |  | 7 Days Work | 9171354 |
| 1566 | 36900.37000.37100.37800.38500.40700.215700 | MEP Clearance -1 | 5d | 2026-06-30 | 2026-07-05 | 1565 |  | 7 Days Work | 9171364 |
| 1567 | 36900.37000.37100.37800.38500.40700.215800 | Benchmark | 1d | 2026-07-05 | 2026-07-06 | 1566 |  | 7 Days Work | 9171374 |
| 1568 | 36900.37000.37100.37800.38500.40700.215900 | Temporary Railing | 3d | 2026-07-06 | 2026-07-09 | 1567 |  | 7 Days Work | 9171384 |
| 1569 | 36900.37000.37100.37800.38500.40700.216000 | Blockwork | 10d | 2026-07-09 | 2026-07-19 | 1568 |  | 7 Days Work | 9171394 |
| 1570 | 36900.37000.37100.37800.38500.40700.216100 | MEP Clearance -2 | 10d | 2026-07-19 | 2026-07-29 | 1569 |  | 7 Days Work | 9171404 |
| 1571 | 36900.37000.37100.37800.38500.40700.216200 | Gypsum Plaster | 14d | 2026-07-29 | 2026-08-12 | 1570 |  | 7 Days Work | 9171414 |
| 1572 | 36900.37000.37100.37800.38500.40700.216300 | Kitchen Platform | 3d | 2026-08-12 | 2026-08-15 | 1571 |  | 7 Days Work | 9171424 |
| 1573 | 36900.37000.37100.37800.38500.40700.216400 | Kitchen dado | 7d | 2026-08-15 | 2026-08-22 | 1572 |  | 7 Days Work | 9171434 |
| 1574 | 36900.37000.37100.37800.38500.40700.216500 | Fire Fighting | 5d | 2026-08-22 | 2026-08-27 | 1573 |  | 7 Days Work | 9171444 |
| 1575 | 36900.37000.37100.37800.38500.40700.216600 | Anticapilary | 5d | 2026-08-27 | 2026-09-01 | 1574 |  | 7 Days Work | 9171454 |
| 1576 | 36900.37000.37100.37800.38500.40700.216700 | Stone Laying | 10d | 2026-10-04 | 2026-10-14 | 1616 |  | 7 Days Work | 9171464 |
| 1577 | 36900.37000.37100.37800.38500.40700.216800 | Tiles Laying | 7d | 2026-10-04 | 2026-10-11 | 1616 |  | 7 Days Work | 9171474 |
| 1578 | 36900.37000.37100.37800.38500.40700.216900 | 1st cutting/polishing of stone flooring | 7d | 2026-10-11 | 2026-10-18 | 1577 |  | 7 Days Work | 9171484 |
| 1579 | 36900.37000.37100.37800.38500.40700.217000 | Tiles/Stone skirting | 5d | 2026-10-18 | 2026-10-23 | 1578 |  | 7 Days Work | 9171494 |
| 1580 | 36900.37000.37100.37800.38500.40700.217100 | Protechtion sheet | 1d | 2026-10-23 | 2026-10-24 | 1579 |  | 7 Days Work | 9171504 |
| 1581 | 36900.37000.37100.37800.38500.40700.217200 | Installation of Temporary Door | 1d | 2026-10-24 | 2026-10-25 | 1580 |  | 7 Days Work | 9171514 |
| 1582 | 36900.37000.37100.37800.38500.40700.217300 | Fixing of window tracks | 5d | 2026-10-25 | 2026-10-30 | 1581 |  | 7 Days Work | 9171524 |
| 1583 | 36900.37000.37100.37800.38500.40700.217400 | Wire Pulling | 7d | 2026-10-30 | 2026-11-06 | 1582 |  | 7 Days Work | 9171534 |
| 1584 | 36900.37000.37100.37800.38500.40700.217500 | Gypsum Remaining | 5d | 2026-11-06 | 2026-11-11 | 1583 |  | 7 Days Work | 9171544 |
| 1585 | 36900.37000.37100.37800.38500.40700.217600 | Fixing of windoow shutter | 5d | 2026-11-11 | 2026-11-16 | 1584 |  | 7 Days Work | 9171554 |
| 1586 | 36900.37000.37100.37800.38500.40700.217700 | Putty Works - walls & ceiling | 15d | 2026-11-16 | 2026-12-01 | 1585 |  | 7 Days Work | 9171564 |
| 1587 | 36900.37000.37100.37800.38500.40700.217800 | False Ceiling- Framing | 10d | 2026-12-01 | 2026-12-11 | 1586 |  | 7 Days Work | 9171574 |
| 1588 | 36900.37000.37100.37800.38500.40700.217900 | Pre Hung Door | 3d | 2026-12-11 | 2026-12-14 | 1587 |  | 7 Days Work | 9171584 |
| 1589 | 36900.37000.37100.37800.38500.40700.218000 | Protechtion sheet | 2d | 2026-12-14 | 2026-12-16 | 1588 |  | 7 Days Work | 9171594 |
| 1590 | 36900.37000.37100.37800.38500.40700.218100 | Skirting near door | 2d | 2026-12-16 | 2026-12-18 | 1589 |  | 7 Days Work | 9171604 |
| 1591 | 36900.37000.37100.37800.38500.40700.218200 | Electrical Switch box fixing | 14d | 2026-12-18 | 2027-01-01 | 1590 |  | 7 Days Work | 9171614 |
| 1592 | 36900.37000.37100.37800.38500.40700.218300 | Fire Fighting painting | 5d | 2027-01-01 | 2027-01-06 | 1591 |  | 7 Days Work | 9171624 |
| 1593 | 36900.37000.37100.37800.38500.40700.218400 | Protection of all flooring, door & window hardware | 5d | 2027-01-06 | 2027-01-11 | 1592 |  | 7 Days Work | 9171634 |
| 1594 | 36900.37000.37100.37800.38500.40700.218500 | 1st coat primer- ceiling 1st & walls | 14d | 2027-01-11 | 2027-01-25 | 1593 |  | 7 Days Work | 9171644 |
| 1595 | 36900.37000.37100.37800.38500.40700.218600 | Wooden Flooring | 5d | 2027-01-25 | 2027-01-30 | 1594 |  | 7 Days Work | 9171654 |
| 1596 | 36900.37000.37100.37800.38500.40700.218700 | Removing of Temporary Railing & installation of Glass Railing | 5d | 2027-01-25 | 2027-01-30 | 1594 |  | 7 Days Work | 9171664 |
| 1597 | 36900.37000.37100.37800.38500.40700.218800 | Tile Grouting | 7d | 2027-01-25 | 2027-02-01 | 1594 |  | 7 Days Work | 9171674 |
| 1598 | 36900.37000.37100.37800.38500.40700.218900 | False Ceiling | 5d | 2027-02-01 | 2027-02-06 | 1597 |  | 7 Days Work | 9171684 |
| 1599 | 36900.37000.37100.37800.38500.40700.219000 | 2nd coat of primer | 10d | 2027-02-06 | 2027-02-16 | 1598 |  | 7 Days Work | 9171694 |
| 1600 | 36900.37000.37100.37800.38500.40700.219100 | Final cutting/polishing of stone flooring | 7d | 2027-02-16 | 2027-02-23 | 1599 |  | 7 Days Work | 9171704 |

| ID | WBS | Task | Duration | Start | Finish | Predecessors | Constraint | Calendar | Unique_Task_ID |
| --- | --- | --- | --- | --- | --- | --- | --- | --- | --- |
| 1601 | 36900.37000.37100.37800.38500.40700.55000 | **Toilet** | 237d | 2026-06-30 | 2027-02-22 |  | start no earlier than 2026-06-30 | 7 Days Work | 9170144 |
| 1602 | 36900.37000.37100.37800.38500.40700.55000.781300 | Toilet_MEP Clearance -1 | 7d | 2026-06-30 | 2026-07-07 | 1565 |  | 7 Days Work | 9179624 |
| 1603 | 36900.37000.37100.37800.38500.40700.55000.781400 | Toilet_Level Marking | 1d | 2026-07-07 | 2026-07-08 | 1602 |  | 7 Days Work | 9179634 |
| 1604 | 36900.37000.37100.37800.38500.40700.55000.781500 | Toilet_Chasing work for Electrical conduit & concealed plumbing | 5d | 2026-07-08 | 2026-07-13 | 1603 |  | 7 Days Work | 9179644 |
| 1605 | 36900.37000.37100.37800.38500.40700.55000.781600 | Toilet_Plumbing work 1st fix | 5d | 2026-07-13 | 2026-07-18 | 1604 |  | 7 Days Work | 9179654 |
| 1606 | 36900.37000.37100.37800.38500.40700.55000.781700 | Toilet_Sleeve/Bore Packing | 5d | 2026-07-18 | 2026-07-23 | 1605 |  | 7 Days Work | 9179664 |
| 1607 | 36900.37000.37100.37800.38500.40700.55000.781800 | Toilet_Waterproofing | 10d | 2026-07-23 | 2026-08-02 | 1606 |  | 7 Days Work | 9179674 |
| 1608 | 36900.37000.37100.37800.38500.40700.55000.781900 | Toilet_Screed | 1d | 2026-08-02 | 2026-08-03 | 1607 |  | 7 Days Work | 9179684 |
| 1609 | 36900.37000.37100.37800.38500.40700.55000.782000 | Toilet_Plumbing 2nd fix | 5d | 2026-08-03 | 2026-08-08 | 1608 |  | 7 Days Work | 9179694 |
| 1610 | 36900.37000.37100.37800.38500.40700.55000.782100 | Toilet_Ledge wall | 5d | 2026-08-08 | 2026-08-13 | 1609 |  | 7 Days Work | 9179704 |
| 1611 | 36900.37000.37100.37800.38500.40700.55000.782200 | Toilet_Cement Plaster | 5d | 2026-08-13 | 2026-08-18 | 1610 |  | 7 Days Work | 9179714 |
| 1612 | 36900.37000.37100.37800.38500.40700.55000.782300 | Toilet_Door Frame | 1d | 2026-08-18 | 2026-08-19 | 1611 |  | 7 Days Work | 9179724 |
| 1613 | 36900.37000.37100.37800.38500.40700.55000.782400 | Toilet_Wash basin & Couter | 3d | 2026-08-19 | 2026-08-22 | 1612 |  | 7 Days Work | 9179734 |
| 1614 | 36900.37000.37100.37800.38500.40700.55000.782500 | Toilet_Wall dado | 20d | 2026-08-22 | 2026-09-11 | 1613 |  | 7 Days Work | 9179744 |
| 1615 | 36900.37000.37100.37800.38500.40700.55000.782600 | Toilet_Granite Work-Ledge wall top | 3d | 2026-09-11 | 2026-09-14 | 1614 |  | 7 Days Work | 9179754 |
| 1616 | 36900.37000.37100.37800.38500.40700.55000.782700 | Toilet_Floor Tilling work | 20d | 2026-09-14 | 2026-10-04 | 1615 |  | 7 Days Work | 9179764 |
| 1617 | 36900.37000.37100.37800.38500.40700.55000.782800 | Toilet_1st row of dado | 5d | 2026-10-04 | 2026-10-09 | 1616 |  | 7 Days Work | 9179774 |
| 1618 | 36900.37000.37100.37800.38500.40700.55000.782900 | Toilet_Window Fixing | 14d | 2026-10-09 | 2026-10-23 | 1617 |  | 7 Days Work | 9179784 |
| 1619 | 36900.37000.37100.37800.38500.40700.55000.783000 | Toilet_Services above False ceiling | 21d | 2026-10-23 | 2026-11-13 | 1618 |  | 7 Days Work | 9179794 |
| 1620 | 36900.37000.37100.37800.38500.40700.55000.783100 | Toilet_False Ceiling framing | 12d | 2026-11-13 | 2026-11-25 | 1619 |  | 7 Days Work | 9179804 |
| 1621 | 36900.37000.37100.37800.38500.40700.55000.783200 | Toilet_Door Frame | 5d | 2026-11-25 | 2026-11-30 | 1620 |  | 7 Days Work | 9179814 |
| 1622 | 36900.37000.37100.37800.38500.40700.55000.783300 | Toilet_Epoxy Tile Grouting | 7d | 2027-01-25 | 2027-02-01 | 1597SS |  | 7 Days Work | 9179824 |
| 1623 | 36900.37000.37100.37800.38500.40700.55000.783400 | Toilet_False ceiling board fixing, CP Sanitary Fixture, Electric Fixture | 21d | 2027-02-01 | 2027-02-22 | 1622 |  | 7 Days Work | 9179834 |
| 1624 | 36900.37000.37100.37800.38500.40800 | **4th Habitable/6th Floor** | 245d | 2026-07-05 | 2027-03-07 |  | start no earlier than 2026-07-05 | 7 Days Work | 9169954 |
| 1625 | 36900.37000.37100.37800.38500.40800.219200 | Post Pour | 7d | 2026-07-05 | 2026-07-12 | 1427FS+15d |  | 7 Days Work | 9171714 |
| 1626 | 36900.37000.37100.37800.38500.40800.219300 | MEP Clearance -1 | 5d | 2026-07-12 | 2026-07-17 | 1625 |  | 7 Days Work | 9171724 |
| 1627 | 36900.37000.37100.37800.38500.40800.219400 | Benchmark | 1d | 2026-07-17 | 2026-07-18 | 1626 |  | 7 Days Work | 9171734 |
| 1628 | 36900.37000.37100.37800.38500.40800.219500 | Temporary Railing | 3d | 2026-07-18 | 2026-07-21 | 1627 |  | 7 Days Work | 9171744 |
| 1629 | 36900.37000.37100.37800.38500.40800.219600 | Blockwork | 10d | 2026-07-21 | 2026-07-31 | 1628 |  | 7 Days Work | 9171754 |
| 1630 | 36900.37000.37100.37800.38500.40800.219700 | MEP Clearance -2 | 10d | 2026-07-31 | 2026-08-10 | 1629 |  | 7 Days Work | 9171764 |
| 1631 | 36900.37000.37100.37800.38500.40800.219800 | Gypsum Plaster | 14d | 2026-08-10 | 2026-08-24 | 1630 |  | 7 Days Work | 9171774 |
| 1632 | 36900.37000.37100.37800.38500.40800.219900 | Kitchen Platform | 3d | 2026-08-24 | 2026-08-27 | 1631 |  | 7 Days Work | 9171784 |
| 1633 | 36900.37000.37100.37800.38500.40800.220000 | Kitchen dado | 7d | 2026-08-27 | 2026-09-03 | 1632 |  | 7 Days Work | 9171794 |
| 1634 | 36900.37000.37100.37800.38500.40800.220100 | Fire Fighting | 5d | 2026-09-03 | 2026-09-08 | 1633 |  | 7 Days Work | 9171804 |
| 1635 | 36900.37000.37100.37800.38500.40800.220200 | Anticapilary | 5d | 2026-09-08 | 2026-09-13 | 1634 |  | 7 Days Work | 9171814 |
| 1636 | 36900.37000.37100.37800.38500.40800.220300 | Stone Laying | 10d | 2026-10-16 | 2026-10-26 | 1676 |  | 7 Days Work | 9171824 |
| 1637 | 36900.37000.37100.37800.38500.40800.220400 | Tiles Laying | 7d | 2026-10-16 | 2026-10-23 | 1676 |  | 7 Days Work | 9171834 |
| 1638 | 36900.37000.37100.37800.38500.40800.220500 | 1st cutting/polishing of stone flooring | 7d | 2026-10-23 | 2026-10-30 | 1637 |  | 7 Days Work | 9171844 |
| 1639 | 36900.37000.37100.37800.38500.40800.220600 | Tiles/Stone skirting | 5d | 2026-10-30 | 2026-11-04 | 1638 |  | 7 Days Work | 9171854 |
| 1640 | 36900.37000.37100.37800.38500.40800.220700 | Protechtion sheet | 1d | 2026-11-04 | 2026-11-05 | 1639 |  | 7 Days Work | 9171864 |
| 1641 | 36900.37000.37100.37800.38500.40800.220800 | Installation of Temporary Door | 1d | 2026-11-05 | 2026-11-06 | 1640 |  | 7 Days Work | 9171874 |
| 1642 | 36900.37000.37100.37800.38500.40800.220900 | Fixing of window tracks | 5d | 2026-11-06 | 2026-11-11 | 1641 |  | 7 Days Work | 9171884 |
| 1643 | 36900.37000.37100.37800.38500.40800.221000 | Wire Pulling | 7d | 2026-11-11 | 2026-11-18 | 1642 |  | 7 Days Work | 9171894 |
| 1644 | 36900.37000.37100.37800.38500.40800.221100 | Gypsum Remaining | 5d | 2026-11-18 | 2026-11-23 | 1643 |  | 7 Days Work | 9171904 |
| 1645 | 36900.37000.37100.37800.38500.40800.221200 | Fixing of windoow shutter | 5d | 2026-11-23 | 2026-11-28 | 1644 |  | 7 Days Work | 9171914 |
| 1646 | 36900.37000.37100.37800.38500.40800.221300 | Putty Works - walls & ceiling | 15d | 2026-11-28 | 2026-12-13 | 1645 |  | 7 Days Work | 9171924 |
| 1647 | 36900.37000.37100.37800.38500.40800.221400 | False Ceiling- Framing | 10d | 2026-12-13 | 2026-12-23 | 1646 |  | 7 Days Work | 9171934 |
| 1648 | 36900.37000.37100.37800.38500.40800.221500 | Pre Hung Door | 3d | 2026-12-23 | 2026-12-26 | 1647 |  | 7 Days Work | 9171944 |
| 1649 | 36900.37000.37100.37800.38500.40800.221600 | Protechtion sheet | 2d | 2026-12-26 | 2026-12-28 | 1648 |  | 7 Days Work | 9171954 |
| 1650 | 36900.37000.37100.37800.38500.40800.221700 | Skirting near door | 2d | 2026-12-28 | 2026-12-30 | 1649 |  | 7 Days Work | 9171964 |
| 1651 | 36900.37000.37100.37800.38500.40800.221800 | Electrical Switch box fixing | 14d | 2026-12-30 | 2027-01-13 | 1650 |  | 7 Days Work | 9171974 |
| 1652 | 36900.37000.37100.37800.38500.40800.221900 | Fire Fighting painting | 5d | 2027-01-13 | 2027-01-18 | 1651 |  | 7 Days Work | 9171984 |
| 1653 | 36900.37000.37100.37800.38500.40800.222000 | Protection of all flooring, door & window hardware | 5d | 2027-01-18 | 2027-01-23 | 1652 |  | 7 Days Work | 9171994 |
| 1654 | 36900.37000.37100.37800.38500.40800.222100 | 1st coat primer- ceiling 1st & walls | 14d | 2027-01-23 | 2027-02-06 | 1653 |  | 7 Days Work | 9172004 |
| 1655 | 36900.37000.37100.37800.38500.40800.222200 | Wooden Flooring | 5d | 2027-02-06 | 2027-02-11 | 1654 |  | 7 Days Work | 9172014 |
| 1656 | 36900.37000.37100.37800.38500.40800.222300 | Removing of Temporary Railing & installation of Glass Railing | 5d | 2027-02-06 | 2027-02-11 | 1654 |  | 7 Days Work | 9172024 |
| 1657 | 36900.37000.37100.37800.38500.40800.222400 | Tile Grouting | 7d | 2027-02-06 | 2027-02-13 | 1654 |  | 7 Days Work | 9172034 |
| 1658 | 36900.37000.37100.37800.38500.40800.222500 | False Ceiling | 5d | 2027-02-13 | 2027-02-18 | 1657 |  | 7 Days Work | 9172044 |
| 1659 | 36900.37000.37100.37800.38500.40800.222600 | 2nd coat of primer | 10d | 2027-02-18 | 2027-02-28 | 1658 |  | 7 Days Work | 9172054 |
| 1660 | 36900.37000.37100.37800.38500.40800.222700 | Final cutting/polishing of stone flooring | 7d | 2027-02-28 | 2027-03-07 | 1659 |  | 7 Days Work | 9172064 |

| ID | WBS | Task | Duration | Start | Finish | Predecessors | Constraint | Calendar | Unique_Task_ID |
| --- | --- | --- | --- | --- | --- | --- | --- | --- | --- |
| 1661 | 36900.37000.37100.37800.38500.40800.55100 | **Toilet** | 237d | 2026-07-12 | 2027-03-06 |  | start no earlier than 2026-07-12 | 7 Days Work | 9170154 |
| 1662 | 36900.37000.37100.37800.38500.40800.55100.783500 | Toilet_MEP Clearance -1 | 7d | 2026-07-12 | 2026-07-19 | 1625 |  | 7 Days Work | 9179844 |
| 1663 | 36900.37000.37100.37800.38500.40800.55100.783600 | Toilet_Level Marking | 1d | 2026-07-19 | 2026-07-20 | 1662 |  | 7 Days Work | 9179854 |
| 1664 | 36900.37000.37100.37800.38500.40800.55100.783700 | Toilet_Chasing work for Electrical conduit & concealed plumbing | 5d | 2026-07-20 | 2026-07-25 | 1663 |  | 7 Days Work | 9179864 |
| 1665 | 36900.37000.37100.37800.38500.40800.55100.783800 | Toilet_Plumbing work 1st fix | 5d | 2026-07-25 | 2026-07-30 | 1664 |  | 7 Days Work | 9179874 |
| 1666 | 36900.37000.37100.37800.38500.40800.55100.783900 | Toilet_Sleeve/Bore Packing | 5d | 2026-07-30 | 2026-08-04 | 1665 |  | 7 Days Work | 9179884 |
| 1667 | 36900.37000.37100.37800.38500.40800.55100.784000 | Toilet_Waterproofing | 10d | 2026-08-04 | 2026-08-14 | 1666 |  | 7 Days Work | 9179894 |
| 1668 | 36900.37000.37100.37800.38500.40800.55100.784100 | Toilet_Screed | 1d | 2026-08-14 | 2026-08-15 | 1667 |  | 7 Days Work | 9179904 |
| 1669 | 36900.37000.37100.37800.38500.40800.55100.784200 | Toilet_Plumbing 2nd fix | 5d | 2026-08-15 | 2026-08-20 | 1668 |  | 7 Days Work | 9179914 |
| 1670 | 36900.37000.37100.37800.38500.40800.55100.784300 | Toilet_Ledge wall | 5d | 2026-08-20 | 2026-08-25 | 1669 |  | 7 Days Work | 9179924 |
| 1671 | 36900.37000.37100.37800.38500.40800.55100.784400 | Toilet_Cement Plaster | 5d | 2026-08-25 | 2026-08-30 | 1670 |  | 7 Days Work | 9179934 |
| 1672 | 36900.37000.37100.37800.38500.40800.55100.784500 | Toilet_Door Frame | 1d | 2026-08-30 | 2026-08-31 | 1671 |  | 7 Days Work | 9179944 |
| 1673 | 36900.37000.37100.37800.38500.40800.55100.784600 | Toilet_Wash basin & Couter | 3d | 2026-08-31 | 2026-09-03 | 1672 |  | 7 Days Work | 9179954 |
| 1674 | 36900.37000.37100.37800.38500.40800.55100.784700 | Toilet_Wall dado | 20d | 2026-09-03 | 2026-09-23 | 1673 |  | 7 Days Work | 9179964 |
| 1675 | 36900.37000.37100.37800.38500.40800.55100.784800 | Toilet_Granite Work-Ledge wall top | 3d | 2026-09-23 | 2026-09-26 | 1674 |  | 7 Days Work | 9179974 |
| 1676 | 36900.37000.37100.37800.38500.40800.55100.784900 | Toilet_Floor Tilling work | 20d | 2026-09-26 | 2026-10-16 | 1675 |  | 7 Days Work | 9179984 |
| 1677 | 36900.37000.37100.37800.38500.40800.55100.785000 | Toilet_1st row of dado | 5d | 2026-10-16 | 2026-10-21 | 1676 |  | 7 Days Work | 9179994 |
| 1678 | 36900.37000.37100.37800.38500.40800.55100.785100 | Toilet_Window Fixing | 14d | 2026-10-21 | 2026-11-04 | 1677 |  | 7 Days Work | 9180004 |
| 1679 | 36900.37000.37100.37800.38500.40800.55100.785200 | Toilet_Services above False ceiling | 21d | 2026-11-04 | 2026-11-25 | 1678 |  | 7 Days Work | 9180014 |
| 1680 | 36900.37000.37100.37800.38500.40800.55100.785300 | Toilet_False Ceiling framing | 12d | 2026-11-25 | 2026-12-07 | 1679 |  | 7 Days Work | 9180024 |
| 1681 | 36900.37000.37100.37800.38500.40800.55100.785400 | Toilet_Door Frame | 5d | 2026-12-07 | 2026-12-12 | 1680 |  | 7 Days Work | 9180034 |
| 1682 | 36900.37000.37100.37800.38500.40800.55100.785500 | Toilet_Epoxy Tile Grouting | 7d | 2027-02-06 | 2027-02-13 | 1657SS |  | 7 Days Work | 9180044 |
| 1683 | 36900.37000.37100.37800.38500.40800.55100.785600 | Toilet_False ceiling board fixing, CP Sanitary Fixture, Electric Fixture | 21d | 2027-02-13 | 2027-03-06 | 1682 |  | 7 Days Work | 9180054 |
| 1684 | 36900.37000.37100.37800.38500.40900 | **5th Habitable/7th Floor** | 245d | 2026-07-14 | 2027-03-16 |  | start no earlier than 2026-07-14 | 7 Days Work | 9169964 |
| 1685 | 36900.37000.37100.37800.38500.40900.222800 | Post Pour | 7d | 2026-07-14 | 2026-07-21 | 1428FS+15d |  | 7 Days Work | 9172074 |
| 1686 | 36900.37000.37100.37800.38500.40900.222900 | MEP Clearance -1 | 5d | 2026-07-21 | 2026-07-26 | 1685 |  | 7 Days Work | 9172084 |
| 1687 | 36900.37000.37100.37800.38500.40900.223000 | Benchmark | 1d | 2026-07-26 | 2026-07-27 | 1686 |  | 7 Days Work | 9172094 |
| 1688 | 36900.37000.37100.37800.38500.40900.223100 | Temporary Railing | 3d | 2026-07-27 | 2026-07-30 | 1687 |  | 7 Days Work | 9172104 |
| 1689 | 36900.37000.37100.37800.38500.40900.223200 | Blockwork | 10d | 2026-07-30 | 2026-08-09 | 1688 |  | 7 Days Work | 9172114 |
| 1690 | 36900.37000.37100.37800.38500.40900.223300 | MEP Clearance -2 | 10d | 2026-08-09 | 2026-08-19 | 1689 |  | 7 Days Work | 9172124 |
| 1691 | 36900.37000.37100.37800.38500.40900.223400 | Gypsum Plaster | 14d | 2026-08-19 | 2026-09-02 | 1690 |  | 7 Days Work | 9172134 |
| 1692 | 36900.37000.37100.37800.38500.40900.223500 | Kitchen Platform | 3d | 2026-09-02 | 2026-09-05 | 1691 |  | 7 Days Work | 9172144 |
| 1693 | 36900.37000.37100.37800.38500.40900.223600 | Kitchen dado | 7d | 2026-09-05 | 2026-09-12 | 1692 |  | 7 Days Work | 9172154 |
| 1694 | 36900.37000.37100.37800.38500.40900.223700 | Fire Fighting | 5d | 2026-09-12 | 2026-09-17 | 1693 |  | 7 Days Work | 9172164 |
| 1695 | 36900.37000.37100.37800.38500.40900.223800 | Anticapilary | 5d | 2026-09-17 | 2026-09-22 | 1694 |  | 7 Days Work | 9172174 |
| 1696 | 36900.37000.37100.37800.38500.40900.223900 | Stone Laying | 10d | 2026-10-25 | 2026-11-04 | 1736 |  | 7 Days Work | 9172184 |
| 1697 | 36900.37000.37100.37800.38500.40900.224000 | Tiles Laying | 7d | 2026-10-25 | 2026-11-01 | 1736 |  | 7 Days Work | 9172194 |
| 1698 | 36900.37000.37100.37800.38500.40900.224100 | 1st cutting/polishing of stone flooring | 7d | 2026-11-01 | 2026-11-08 | 1697 |  | 7 Days Work | 9172204 |
| 1699 | 36900.37000.37100.37800.38500.40900.224200 | Tiles/Stone skirting | 5d | 2026-11-08 | 2026-11-13 | 1698 |  | 7 Days Work | 9172214 |
| 1700 | 36900.37000.37100.37800.38500.40900.224300 | Protechtion sheet | 1d | 2026-11-13 | 2026-11-14 | 1699 |  | 7 Days Work | 9172224 |
| 1701 | 36900.37000.37100.37800.38500.40900.224400 | Installation of Temporary Door | 1d | 2026-11-14 | 2026-11-15 | 1700 |  | 7 Days Work | 9172234 |
| 1702 | 36900.37000.37100.37800.38500.40900.224500 | Fixing of window tracks | 5d | 2026-11-15 | 2026-11-20 | 1701 |  | 7 Days Work | 9172244 |
| 1703 | 36900.37000.37100.37800.38500.40900.224600 | Wire Pulling | 7d | 2026-11-20 | 2026-11-27 | 1702 |  | 7 Days Work | 9172254 |
| 1704 | 36900.37000.37100.37800.38500.40900.224700 | Gypsum Remaining | 5d | 2026-11-27 | 2026-12-02 | 1703 |  | 7 Days Work | 9172264 |
| 1705 | 36900.37000.37100.37800.38500.40900.224800 | Fixing of windoow shutter | 5d | 2026-12-02 | 2026-12-07 | 1704 |  | 7 Days Work | 9172274 |
| 1706 | 36900.37000.37100.37800.38500.40900.224900 | Putty Works - walls & ceiling | 15d | 2026-12-07 | 2026-12-22 | 1705 |  | 7 Days Work | 9172284 |
| 1707 | 36900.37000.37100.37800.38500.40900.225000 | False Ceiling- Framing | 10d | 2026-12-22 | 2027-01-01 | 1706 |  | 7 Days Work | 9172294 |
| 1708 | 36900.37000.37100.37800.38500.40900.225100 | Pre Hung Door | 3d | 2027-01-01 | 2027-01-04 | 1707 |  | 7 Days Work | 9172304 |
| 1709 | 36900.37000.37100.37800.38500.40900.225200 | Protechtion sheet | 2d | 2027-01-04 | 2027-01-06 | 1708 |  | 7 Days Work | 9172314 |
| 1710 | 36900.37000.37100.37800.38500.40900.225300 | Skirting near door | 2d | 2027-01-06 | 2027-01-08 | 1709 |  | 7 Days Work | 9172324 |
| 1711 | 36900.37000.37100.37800.38500.40900.225400 | Electrical Switch box fixing | 14d | 2027-01-08 | 2027-01-22 | 1710 |  | 7 Days Work | 9172334 |
| 1712 | 36900.37000.37100.37800.38500.40900.225500 | Fire Fighting painting | 5d | 2027-01-22 | 2027-01-27 | 1711 |  | 7 Days Work | 9172344 |
| 1713 | 36900.37000.37100.37800.38500.40900.225600 | Protection of all flooring, door & window hardware | 5d | 2027-01-27 | 2027-02-01 | 1712 |  | 7 Days Work | 9172354 |
| 1714 | 36900.37000.37100.37800.38500.40900.225700 | 1st coat primer- ceiling 1st & walls | 14d | 2027-02-01 | 2027-02-15 | 1713 |  | 7 Days Work | 9172364 |
| 1715 | 36900.37000.37100.37800.38500.40900.225800 | Wooden Flooring | 5d | 2027-02-15 | 2027-02-20 | 1714 |  | 7 Days Work | 9172374 |
| 1716 | 36900.37000.37100.37800.38500.40900.225900 | Removing of Temporary Railing & installation of Glass Railing | 5d | 2027-02-15 | 2027-02-20 | 1714 |  | 7 Days Work | 9172384 |
| 1717 | 36900.37000.37100.37800.38500.40900.226000 | Tile Grouting | 7d | 2027-02-15 | 2027-02-22 | 1714 |  | 7 Days Work | 9172394 |
| 1718 | 36900.37000.37100.37800.38500.40900.226100 | False Ceiling | 5d | 2027-02-22 | 2027-02-27 | 1717 |  | 7 Days Work | 9172404 |
| 1719 | 36900.37000.37100.37800.38500.40900.226200 | 2nd coat of primer | 10d | 2027-02-27 | 2027-03-09 | 1718 |  | 7 Days Work | 9172414 |
| 1720 | 36900.37000.37100.37800.38500.40900.226300 | Final cutting/polishing of stone flooring | 7d | 2027-03-09 | 2027-03-16 | 1719 |  | 7 Days Work | 9172424 |

| ID | WBS | Task | Duration | Start | Finish | Predecessors | Constraint | Calendar | Unique_Task_ID |
| --- | --- | --- | --- | --- | --- | --- | --- | --- | --- |
| 1721 | 36900.37000.37100.37800.38500.40900.55200 | **Toilet** | 237d | 2026-07-21 | 2027-03-15 |  | start no earlier than 2026-07-21 | 7 Days Work | 9170164 |
| 1722 | 36900.37000.37100.37800.38500.40900.55200.785700 | Toilet_MEP Clearance -1 | 7d | 2026-07-21 | 2026-07-28 | 1685 |  | 7 Days Work | 9180064 |
| 1723 | 36900.37000.37100.37800.38500.40900.55200.785800 | Toilet_Level Marking | 1d | 2026-07-28 | 2026-07-29 | 1722 |  | 7 Days Work | 9180074 |
| 1724 | 36900.37000.37100.37800.38500.40900.55200.785900 | Toilet_Chasing work for Electrical conduit & concealed plumbing | 5d | 2026-07-29 | 2026-08-03 | 1723 |  | 7 Days Work | 9180084 |
| 1725 | 36900.37000.37100.37800.38500.40900.55200.786000 | Toilet_Plumbing work 1st fix | 5d | 2026-08-03 | 2026-08-08 | 1724 |  | 7 Days Work | 9180094 |
| 1726 | 36900.37000.37100.37800.38500.40900.55200.786100 | Toilet_Sleeve/Bore Packing | 5d | 2026-08-08 | 2026-08-13 | 1725 |  | 7 Days Work | 9180104 |
| 1727 | 36900.37000.37100.37800.38500.40900.55200.786200 | Toilet_Waterproofing | 10d | 2026-08-13 | 2026-08-23 | 1726 |  | 7 Days Work | 9180114 |
| 1728 | 36900.37000.37100.37800.38500.40900.55200.786300 | Toilet_Screed | 1d | 2026-08-23 | 2026-08-24 | 1727 |  | 7 Days Work | 9180124 |
| 1729 | 36900.37000.37100.37800.38500.40900.55200.786400 | Toilet_Plumbing 2nd fix | 5d | 2026-08-24 | 2026-08-29 | 1728 |  | 7 Days Work | 9180134 |
| 1730 | 36900.37000.37100.37800.38500.40900.55200.786500 | Toilet_Ledge wall | 5d | 2026-08-29 | 2026-09-03 | 1729 |  | 7 Days Work | 9180144 |
| 1731 | 36900.37000.37100.37800.38500.40900.55200.786600 | Toilet_Cement Plaster | 5d | 2026-09-03 | 2026-09-08 | 1730 |  | 7 Days Work | 9180154 |
| 1732 | 36900.37000.37100.37800.38500.40900.55200.786700 | Toilet_Door Frame | 1d | 2026-09-08 | 2026-09-09 | 1731 |  | 7 Days Work | 9180164 |
| 1733 | 36900.37000.37100.37800.38500.40900.55200.786800 | Toilet_Wash basin & Couter | 3d | 2026-09-09 | 2026-09-12 | 1732 |  | 7 Days Work | 9180174 |
| 1734 | 36900.37000.37100.37800.38500.40900.55200.786900 | Toilet_Wall dado | 20d | 2026-09-12 | 2026-10-02 | 1733 |  | 7 Days Work | 9180184 |
| 1735 | 36900.37000.37100.37800.38500.40900.55200.787000 | Toilet_Granite Work-Ledge wall top | 3d | 2026-10-02 | 2026-10-05 | 1734 |  | 7 Days Work | 9180194 |
| 1736 | 36900.37000.37100.37800.38500.40900.55200.787100 | Toilet_Floor Tilling work | 20d | 2026-10-05 | 2026-10-25 | 1735 |  | 7 Days Work | 9180204 |
| 1737 | 36900.37000.37100.37800.38500.40900.55200.787200 | Toilet_1st row of dado | 5d | 2026-10-25 | 2026-10-30 | 1736 |  | 7 Days Work | 9180214 |
| 1738 | 36900.37000.37100.37800.38500.40900.55200.787300 | Toilet_Window Fixing | 14d | 2026-10-30 | 2026-11-13 | 1737 |  | 7 Days Work | 9180224 |
| 1739 | 36900.37000.37100.37800.38500.40900.55200.787400 | Toilet_Services above False ceiling | 21d | 2026-11-13 | 2026-12-04 | 1738 |  | 7 Days Work | 9180234 |
| 1740 | 36900.37000.37100.37800.38500.40900.55200.787500 | Toilet_False Ceiling framing | 12d | 2026-12-04 | 2026-12-16 | 1739 |  | 7 Days Work | 9180244 |
| 1741 | 36900.37000.37100.37800.38500.40900.55200.787600 | Toilet_Door Frame | 5d | 2026-12-16 | 2026-12-21 | 1740 |  | 7 Days Work | 9180254 |
| 1742 | 36900.37000.37100.37800.38500.40900.55200.787700 | Toilet_Epoxy Tile Grouting | 7d | 2027-02-15 | 2027-02-22 | 1717SS |  | 7 Days Work | 9180264 |
| 1743 | 36900.37000.37100.37800.38500.40900.55200.787800 | Toilet_False ceiling board fixing, CP Sanitary Fixture, Electric Fixture | 21d | 2027-02-22 | 2027-03-15 | 1742 |  | 7 Days Work | 9180274 |
| 1744 | 36900.37000.37100.37800.38500.41000 | **6th Habitable/8th Floor** | 245d | 2026-07-23 | 2027-03-25 |  | start no earlier than 2026-07-23 | 7 Days Work | 9169974 |
| 1745 | 36900.37000.37100.37800.38500.41000.226400 | Post Pour | 7d | 2026-07-23 | 2026-07-30 | 1429FS+15d |  | 7 Days Work | 9172434 |
| 1746 | 36900.37000.37100.37800.38500.41000.226500 | MEP Clearance -1 | 5d | 2026-07-30 | 2026-08-04 | 1745 |  | 7 Days Work | 9172444 |
| 1747 | 36900.37000.37100.37800.38500.41000.226600 | Benchmark | 1d | 2026-08-04 | 2026-08-05 | 1746 |  | 7 Days Work | 9172454 |
| 1748 | 36900.37000.37100.37800.38500.41000.226700 | Temporary Railing | 3d | 2026-08-05 | 2026-08-08 | 1747 |  | 7 Days Work | 9172464 |
| 1749 | 36900.37000.37100.37800.38500.41000.226800 | Blockwork | 10d | 2026-08-08 | 2026-08-18 | 1748 |  | 7 Days Work | 9172474 |
| 1750 | 36900.37000.37100.37800.38500.41000.226900 | MEP Clearance -2 | 10d | 2026-08-18 | 2026-08-28 | 1749 |  | 7 Days Work | 9172484 |
| 1751 | 36900.37000.37100.37800.38500.41000.227000 | Gypsum Plaster | 14d | 2026-08-28 | 2026-09-11 | 1750 |  | 7 Days Work | 9172494 |
| 1752 | 36900.37000.37100.37800.38500.41000.227100 | Kitchen Platform | 3d | 2026-09-11 | 2026-09-14 | 1751 |  | 7 Days Work | 9172504 |
| 1753 | 36900.37000.37100.37800.38500.41000.227200 | Kitchen dado | 7d | 2026-09-14 | 2026-09-21 | 1752 |  | 7 Days Work | 9172514 |
| 1754 | 36900.37000.37100.37800.38500.41000.227300 | Fire Fighting | 5d | 2026-09-21 | 2026-09-26 | 1753 |  | 7 Days Work | 9172524 |
| 1755 | 36900.37000.37100.37800.38500.41000.227400 | Anticapilary | 5d | 2026-09-26 | 2026-10-01 | 1754 |  | 7 Days Work | 9172534 |
| 1756 | 36900.37000.37100.37800.38500.41000.227500 | Stone Laying | 10d | 2026-11-03 | 2026-11-13 | 1796 |  | 7 Days Work | 9172544 |
| 1757 | 36900.37000.37100.37800.38500.41000.227600 | Tiles Laying | 7d | 2026-11-03 | 2026-11-10 | 1796 |  | 7 Days Work | 9172554 |
| 1758 | 36900.37000.37100.37800.38500.41000.227700 | 1st cutting/polishing of stone flooring | 7d | 2026-11-10 | 2026-11-17 | 1757 |  | 7 Days Work | 9172564 |
| 1759 | 36900.37000.37100.37800.38500.41000.227800 | Tiles/Stone skirting | 5d | 2026-11-17 | 2026-11-22 | 1758 |  | 7 Days Work | 9172574 |
| 1760 | 36900.37000.37100.37800.38500.41000.227900 | Protechtion sheet | 1d | 2026-11-22 | 2026-11-23 | 1759 |  | 7 Days Work | 9172584 |
| 1761 | 36900.37000.37100.37800.38500.41000.228000 | Installation of Temporary Door | 1d | 2026-11-23 | 2026-11-24 | 1760 |  | 7 Days Work | 9172594 |
| 1762 | 36900.37000.37100.37800.38500.41000.228100 | Fixing of window tracks | 5d | 2026-11-24 | 2026-11-29 | 1761 |  | 7 Days Work | 9172604 |
| 1763 | 36900.37000.37100.37800.38500.41000.228200 | Wire Pulling | 7d | 2026-11-29 | 2026-12-06 | 1762 |  | 7 Days Work | 9172614 |
| 1764 | 36900.37000.37100.37800.38500.41000.228300 | Gypsum Remaining | 5d | 2026-12-06 | 2026-12-11 | 1763 |  | 7 Days Work | 9172624 |
| 1765 | 36900.37000.37100.37800.38500.41000.228400 | Fixing of windoow shutter | 5d | 2026-12-11 | 2026-12-16 | 1764 |  | 7 Days Work | 9172634 |
| 1766 | 36900.37000.37100.37800.38500.41000.228500 | Putty Works - walls & ceiling | 15d | 2026-12-16 | 2026-12-31 | 1765 |  | 7 Days Work | 9172644 |
| 1767 | 36900.37000.37100.37800.38500.41000.228600 | False Ceiling- Framing | 10d | 2026-12-31 | 2027-01-10 | 1766 |  | 7 Days Work | 9172654 |
| 1768 | 36900.37000.37100.37800.38500.41000.228700 | Pre Hung Door | 3d | 2027-01-10 | 2027-01-13 | 1767 |  | 7 Days Work | 9172664 |
| 1769 | 36900.37000.37100.37800.38500.41000.228800 | Protechtion sheet | 2d | 2027-01-13 | 2027-01-15 | 1768 |  | 7 Days Work | 9172674 |
| 1770 | 36900.37000.37100.37800.38500.41000.228900 | Skirting near door | 2d | 2027-01-15 | 2027-01-17 | 1769 |  | 7 Days Work | 9172684 |
| 1771 | 36900.37000.37100.37800.38500.41000.229000 | Electrical Switch box fixing | 14d | 2027-01-17 | 2027-01-31 | 1770 |  | 7 Days Work | 9172694 |
| 1772 | 36900.37000.37100.37800.38500.41000.229100 | Fire Fighting painting | 5d | 2027-01-31 | 2027-02-05 | 1771 |  | 7 Days Work | 9172704 |
| 1773 | 36900.37000.37100.37800.38500.41000.229200 | Protection of all flooring, door & window hardware | 5d | 2027-02-05 | 2027-02-10 | 1772 |  | 7 Days Work | 9172714 |
| 1774 | 36900.37000.37100.37800.38500.41000.229300 | 1st coat primer- ceiling 1st & walls | 14d | 2027-02-10 | 2027-02-24 | 1773 |  | 7 Days Work | 9172724 |
| 1775 | 36900.37000.37100.37800.38500.41000.229400 | Wooden Flooring | 5d | 2027-02-24 | 2027-03-01 | 1774 |  | 7 Days Work | 9172734 |
| 1776 | 36900.37000.37100.37800.38500.41000.229500 | Removing of Temporary Railing & installation of Glass Railing | 5d | 2027-02-24 | 2027-03-01 | 1774 |  | 7 Days Work | 9172744 |
| 1777 | 36900.37000.37100.37800.38500.41000.229600 | Tile Grouting | 7d | 2027-02-24 | 2027-03-03 | 1774 |  | 7 Days Work | 9172754 |
| 1778 | 36900.37000.37100.37800.38500.41000.229700 | False Ceiling | 5d | 2027-03-03 | 2027-03-08 | 1777 |  | 7 Days Work | 9172764 |
| 1779 | 36900.37000.37100.37800.38500.41000.229800 | 2nd coat of primer | 10d | 2027-03-08 | 2027-03-18 | 1778 |  | 7 Days Work | 9172774 |
| 1780 | 36900.37000.37100.37800.38500.41000.229900 | Final cutting/polishing of stone flooring | 7d | 2027-03-18 | 2027-03-25 | 1779 |  | 7 Days Work | 9172784 |

| ID | WBS | Task | Duration | Start | Finish | Predecessors | Constraint | Calendar | Unique_Task_ID |
| --- | --- | --- | --- | --- | --- | --- | --- | --- | --- |
| 1781 | 36900.37000.37100.37800.38500.41000.55300 | **Toilet** | 237d | 2026-07-30 | 2027-03-24 |  | start no earlier than 2026-07-30 | 7 Days Work | 9170174 |
| 1782 | 36900.37000.37100.37800.38500.41000.55300.787900 | Toilet_MEP Clearance -1 | 7d | 2026-07-30 | 2026-08-06 | 1745 |  | 7 Days Work | 9180284 |
| 1783 | 36900.37000.37100.37800.38500.41000.55300.788000 | Toilet_Level Marking | 1d | 2026-08-06 | 2026-08-07 | 1782 |  | 7 Days Work | 9180294 |
| 1784 | 36900.37000.37100.37800.38500.41000.55300.788100 | Toilet_Chasing work for Electrical conduit & concealed plumbing | 5d | 2026-08-07 | 2026-08-12 | 1783 |  | 7 Days Work | 9180304 |
| 1785 | 36900.37000.37100.37800.38500.41000.55300.788200 | Toilet_Plumbing work 1st fix | 5d | 2026-08-12 | 2026-08-17 | 1784 |  | 7 Days Work | 9180314 |
| 1786 | 36900.37000.37100.37800.38500.41000.55300.788300 | Toilet_Sleeve/Bore Packing | 5d | 2026-08-17 | 2026-08-22 | 1785 |  | 7 Days Work | 9180324 |
| 1787 | 36900.37000.37100.37800.38500.41000.55300.788400 | Toilet_Waterproofing | 10d | 2026-08-22 | 2026-09-01 | 1786 |  | 7 Days Work | 9180334 |
| 1788 | 36900.37000.37100.37800.38500.41000.55300.788500 | Toilet_Screed | 1d | 2026-09-01 | 2026-09-02 | 1787 |  | 7 Days Work | 9180344 |
| 1789 | 36900.37000.37100.37800.38500.41000.55300.788600 | Toilet_Plumbing 2nd fix | 5d | 2026-09-02 | 2026-09-07 | 1788 |  | 7 Days Work | 9180354 |
| 1790 | 36900.37000.37100.37800.38500.41000.55300.788700 | Toilet_Ledge wall | 5d | 2026-09-07 | 2026-09-12 | 1789 |  | 7 Days Work | 9180364 |
| 1791 | 36900.37000.37100.37800.38500.41000.55300.788800 | Toilet_Cement Plaster | 5d | 2026-09-12 | 2026-09-17 | 1790 |  | 7 Days Work | 9180374 |
| 1792 | 36900.37000.37100.37800.38500.41000.55300.788900 | Toilet_Door Frame | 1d | 2026-09-17 | 2026-09-18 | 1791 |  | 7 Days Work | 9180384 |
| 1793 | 36900.37000.37100.37800.38500.41000.55300.789000 | Toilet_Wash basin & Couter | 3d | 2026-09-18 | 2026-09-21 | 1792 |  | 7 Days Work | 9180394 |
| 1794 | 36900.37000.37100.37800.38500.41000.55300.789100 | Toilet_Wall dado | 20d | 2026-09-21 | 2026-10-11 | 1793 |  | 7 Days Work | 9180404 |
| 1795 | 36900.37000.37100.37800.38500.41000.55300.789200 | Toilet_Granite Work-Ledge wall top | 3d | 2026-10-11 | 2026-10-14 | 1794 |  | 7 Days Work | 9180414 |
| 1796 | 36900.37000.37100.37800.38500.41000.55300.789300 | Toilet_Floor Tilling work | 20d | 2026-10-14 | 2026-11-03 | 1795 |  | 7 Days Work | 9180424 |
| 1797 | 36900.37000.37100.37800.38500.41000.55300.789400 | Toilet_1st row of dado | 5d | 2026-11-03 | 2026-11-08 | 1796 |  | 7 Days Work | 9180434 |
| 1798 | 36900.37000.37100.37800.38500.41000.55300.789500 | Toilet_Window Fixing | 14d | 2026-11-08 | 2026-11-22 | 1797 |  | 7 Days Work | 9180444 |
| 1799 | 36900.37000.37100.37800.38500.41000.55300.789600 | Toilet_Services above False ceiling | 21d | 2026-11-22 | 2026-12-13 | 1798 |  | 7 Days Work | 9180454 |
| 1800 | 36900.37000.37100.37800.38500.41000.55300.789700 | Toilet_False Ceiling framing | 12d | 2026-12-13 | 2026-12-25 | 1799 |  | 7 Days Work | 9180464 |
| 1801 | 36900.37000.37100.37800.38500.41000.55300.789800 | Toilet_Door Frame | 5d | 2026-12-25 | 2026-12-30 | 1800 |  | 7 Days Work | 9180474 |
| 1802 | 36900.37000.37100.37800.38500.41000.55300.789900 | Toilet_Epoxy Tile Grouting | 7d | 2027-02-24 | 2027-03-03 | 1777SS |  | 7 Days Work | 9180484 |
| 1803 | 36900.37000.37100.37800.38500.41000.55300.790000 | Toilet_False ceiling board fixing, CP Sanitary Fixture, Electric Fixture | 21d | 2027-03-03 | 2027-03-24 | 1802 |  | 7 Days Work | 9180494 |
| 1804 | 36900.37000.37100.37800.38500.41100 | **7th Habitable/9th Floor** | 245d | 2026-08-01 | 2027-04-03 |  | start no earlier than 2026-08-01 | 7 Days Work | 9169984 |
| 1805 | 36900.37000.37100.37800.38500.41100.230000 | Post Pour | 7d | 2026-08-01 | 2026-08-08 | 1430FS+15d |  | 7 Days Work | 9172794 |
| 1806 | 36900.37000.37100.37800.38500.41100.230100 | MEP Clearance -1 | 5d | 2026-08-08 | 2026-08-13 | 1805 |  | 7 Days Work | 9172804 |
| 1807 | 36900.37000.37100.37800.38500.41100.230200 | Benchmark | 1d | 2026-08-13 | 2026-08-14 | 1806 |  | 7 Days Work | 9172814 |
| 1808 | 36900.37000.37100.37800.38500.41100.230300 | Temporary Railing | 3d | 2026-08-14 | 2026-08-17 | 1807 |  | 7 Days Work | 9172824 |
| 1809 | 36900.37000.37100.37800.38500.41100.230400 | Blockwork | 10d | 2026-08-17 | 2026-08-27 | 1808 |  | 7 Days Work | 9172834 |
| 1810 | 36900.37000.37100.37800.38500.41100.230500 | MEP Clearance -2 | 10d | 2026-08-27 | 2026-09-06 | 1809 |  | 7 Days Work | 9172844 |
| 1811 | 36900.37000.37100.37800.38500.41100.230600 | Gypsum Plaster | 14d | 2026-09-06 | 2026-09-20 | 1810 |  | 7 Days Work | 9172854 |
| 1812 | 36900.37000.37100.37800.38500.41100.230700 | Kitchen Platform | 3d | 2026-09-20 | 2026-09-23 | 1811 |  | 7 Days Work | 9172864 |
| 1813 | 36900.37000.37100.37800.38500.41100.230800 | Kitchen dado | 7d | 2026-09-23 | 2026-09-30 | 1812 |  | 7 Days Work | 9172874 |
| 1814 | 36900.37000.37100.37800.38500.41100.230900 | Fire Fighting | 5d | 2026-09-30 | 2026-10-05 | 1813 |  | 7 Days Work | 9172884 |
| 1815 | 36900.37000.37100.37800.38500.41100.231000 | Anticapilary | 5d | 2026-10-05 | 2026-10-10 | 1814 |  | 7 Days Work | 9172894 |
| 1816 | 36900.37000.37100.37800.38500.41100.231100 | Stone Laying | 10d | 2026-11-12 | 2026-11-22 | 1856 |  | 7 Days Work | 9172904 |
| 1817 | 36900.37000.37100.37800.38500.41100.231200 | Tiles Laying | 7d | 2026-11-12 | 2026-11-19 | 1856 |  | 7 Days Work | 9172914 |
| 1818 | 36900.37000.37100.37800.38500.41100.231300 | 1st cutting/polishing of stone flooring | 7d | 2026-11-19 | 2026-11-26 | 1817 |  | 7 Days Work | 9172924 |
| 1819 | 36900.37000.37100.37800.38500.41100.231400 | Tiles/Stone skirting | 5d | 2026-11-26 | 2026-12-01 | 1818 |  | 7 Days Work | 9172934 |
| 1820 | 36900.37000.37100.37800.38500.41100.231500 | Protechtion sheet | 1d | 2026-12-01 | 2026-12-02 | 1819 |  | 7 Days Work | 9172944 |
| 1821 | 36900.37000.37100.37800.38500.41100.231600 | Installation of Temporary Door | 1d | 2026-12-02 | 2026-12-03 | 1820 |  | 7 Days Work | 9172954 |
| 1822 | 36900.37000.37100.37800.38500.41100.231700 | Fixing of window tracks | 5d | 2026-12-03 | 2026-12-08 | 1821 |  | 7 Days Work | 9172964 |
| 1823 | 36900.37000.37100.37800.38500.41100.231800 | Wire Pulling | 7d | 2026-12-08 | 2026-12-15 | 1822 |  | 7 Days Work | 9172974 |
| 1824 | 36900.37000.37100.37800.38500.41100.231900 | Gypsum Remaining | 5d | 2026-12-15 | 2026-12-20 | 1823 |  | 7 Days Work | 9172984 |
| 1825 | 36900.37000.37100.37800.38500.41100.232000 | Fixing of windoow shutter | 5d | 2026-12-20 | 2026-12-25 | 1824 |  | 7 Days Work | 9172994 |
| 1826 | 36900.37000.37100.37800.38500.41100.232100 | Putty Works - walls & ceiling | 15d | 2026-12-25 | 2027-01-09 | 1825 |  | 7 Days Work | 9173004 |
| 1827 | 36900.37000.37100.37800.38500.41100.232200 | False Ceiling- Framing | 10d | 2027-01-09 | 2027-01-19 | 1826 |  | 7 Days Work | 9173014 |
| 1828 | 36900.37000.37100.37800.38500.41100.232300 | Pre Hung Door | 3d | 2027-01-19 | 2027-01-22 | 1827 |  | 7 Days Work | 9173024 |
| 1829 | 36900.37000.37100.37800.38500.41100.232400 | Protechtion sheet | 2d | 2027-01-22 | 2027-01-24 | 1828 |  | 7 Days Work | 9173034 |
| 1830 | 36900.37000.37100.37800.38500.41100.232500 | Skirting near door | 2d | 2027-01-24 | 2027-01-26 | 1829 |  | 7 Days Work | 9173044 |
| 1831 | 36900.37000.37100.37800.38500.41100.232600 | Electrical Switch box fixing | 14d | 2027-01-26 | 2027-02-09 | 1830 |  | 7 Days Work | 9173054 |
| 1832 | 36900.37000.37100.37800.38500.41100.232700 | Fire Fighting painting | 5d | 2027-02-09 | 2027-02-14 | 1831 |  | 7 Days Work | 9173064 |
| 1833 | 36900.37000.37100.37800.38500.41100.232800 | Protection of all flooring, door & window hardware | 5d | 2027-02-14 | 2027-02-19 | 1832 |  | 7 Days Work | 9173074 |
| 1834 | 36900.37000.37100.37800.38500.41100.232900 | 1st coat primer- ceiling 1st & walls | 14d | 2027-02-19 | 2027-03-05 | 1833 |  | 7 Days Work | 9173084 |
| 1835 | 36900.37000.37100.37800.38500.41100.233000 | Wooden Flooring | 5d | 2027-03-05 | 2027-03-10 | 1834 |  | 7 Days Work | 9173094 |
| 1836 | 36900.37000.37100.37800.38500.41100.233100 | Removing of Temporary Railing & installation of Glass Railing | 5d | 2027-03-05 | 2027-03-10 | 1834 |  | 7 Days Work | 9173104 |
| 1837 | 36900.37000.37100.37800.38500.41100.233200 | Tile Grouting | 7d | 2027-03-05 | 2027-03-12 | 1834 |  | 7 Days Work | 9173114 |
| 1838 | 36900.37000.37100.37800.38500.41100.233300 | False Ceiling | 5d | 2027-03-12 | 2027-03-17 | 1837 |  | 7 Days Work | 9173124 |
| 1839 | 36900.37000.37100.37800.38500.41100.233400 | 2nd coat of primer | 10d | 2027-03-17 | 2027-03-27 | 1838 |  | 7 Days Work | 9173134 |
| 1840 | 36900.37000.37100.37800.38500.41100.233500 | Final cutting/polishing of stone flooring | 7d | 2027-03-27 | 2027-04-03 | 1839 |  | 7 Days Work | 9173144 |

| ID | WBS | Task | Duration | Start | Finish | Predecessors | Constraint | Calendar | Unique_Task_ID |
| --- | --- | --- | --- | --- | --- | --- | --- | --- | --- |
| 1841 | 36900.37000.37100.37800.38500.41100.55400 | **Toilet** | 237d | 2026-08-08 | 2027-04-02 |  | start no earlier than 2026-08-08 | 7 Days Work | 9170184 |
| 1842 | 36900.37000.37100.37800.38500.41100.55400.790100 | Toilet_MEP Clearance -1 | 7d | 2026-08-08 | 2026-08-15 | 1805 |  | 7 Days Work | 9180504 |
| 1843 | 36900.37000.37100.37800.38500.41100.55400.790200 | Toilet_Level Marking | 1d | 2026-08-15 | 2026-08-16 | 1842 |  | 7 Days Work | 9180514 |
| 1844 | 36900.37000.37100.37800.38500.41100.55400.790300 | Toilet_Chasing work for Electrical conduit & concealed plumbing | 5d | 2026-08-16 | 2026-08-21 | 1843 |  | 7 Days Work | 9180524 |
| 1845 | 36900.37000.37100.37800.38500.41100.55400.790400 | Toilet_Plumbing work 1st fix | 5d | 2026-08-21 | 2026-08-26 | 1844 |  | 7 Days Work | 9180534 |
| 1846 | 36900.37000.37100.37800.38500.41100.55400.790500 | Toilet_Sleeve/Bore Packing | 5d | 2026-08-26 | 2026-08-31 | 1845 |  | 7 Days Work | 9180544 |
| 1847 | 36900.37000.37100.37800.38500.41100.55400.790600 | Toilet_Waterproofing | 10d | 2026-08-31 | 2026-09-10 | 1846 |  | 7 Days Work | 9180554 |
| 1848 | 36900.37000.37100.37800.38500.41100.55400.790700 | Toilet_Screed | 1d | 2026-09-10 | 2026-09-11 | 1847 |  | 7 Days Work | 9180564 |
| 1849 | 36900.37000.37100.37800.38500.41100.55400.790800 | Toilet_Plumbing 2nd fix | 5d | 2026-09-11 | 2026-09-16 | 1848 |  | 7 Days Work | 9180574 |
| 1850 | 36900.37000.37100.37800.38500.41100.55400.790900 | Toilet_Ledge wall | 5d | 2026-09-16 | 2026-09-21 | 1849 |  | 7 Days Work | 9180584 |
| 1851 | 36900.37000.37100.37800.38500.41100.55400.791000 | Toilet_Cement Plaster | 5d | 2026-09-21 | 2026-09-26 | 1850 |  | 7 Days Work | 9180594 |
| 1852 | 36900.37000.37100.37800.38500.41100.55400.791100 | Toilet_Door Frame | 1d | 2026-09-26 | 2026-09-27 | 1851 |  | 7 Days Work | 9180604 |
| 1853 | 36900.37000.37100.37800.38500.41100.55400.791200 | Toilet_Wash basin & Couter | 3d | 2026-09-27 | 2026-09-30 | 1852 |  | 7 Days Work | 9180614 |
| 1854 | 36900.37000.37100.37800.38500.41100.55400.791300 | Toilet_Wall dado | 20d | 2026-09-30 | 2026-10-20 | 1853 |  | 7 Days Work | 9180624 |
| 1855 | 36900.37000.37100.37800.38500.41100.55400.791400 | Toilet_Granite Work-Ledge wall top | 3d | 2026-10-20 | 2026-10-23 | 1854 |  | 7 Days Work | 9180634 |
| 1856 | 36900.37000.37100.37800.38500.41100.55400.791500 | Toilet_Floor Tilling work | 20d | 2026-10-23 | 2026-11-12 | 1855 |  | 7 Days Work | 9180644 |
| 1857 | 36900.37000.37100.37800.38500.41100.55400.791600 | Toilet_1st row of dado | 5d | 2026-11-12 | 2026-11-17 | 1856 |  | 7 Days Work | 9180654 |
| 1858 | 36900.37000.37100.37800.38500.41100.55400.791700 | Toilet_Window Fixing | 14d | 2026-11-17 | 2026-12-01 | 1857 |  | 7 Days Work | 9180664 |
| 1859 | 36900.37000.37100.37800.38500.41100.55400.791800 | Toilet_Services above False ceiling | 21d | 2026-12-01 | 2026-12-22 | 1858 |  | 7 Days Work | 9180674 |
| 1860 | 36900.37000.37100.37800.38500.41100.55400.791900 | Toilet_False Ceiling framing | 12d | 2026-12-22 | 2027-01-03 | 1859 |  | 7 Days Work | 9180684 |
| 1861 | 36900.37000.37100.37800.38500.41100.55400.792000 | Toilet_Door Frame | 5d | 2027-01-03 | 2027-01-08 | 1860 |  | 7 Days Work | 9180694 |
| 1862 | 36900.37000.37100.37800.38500.41100.55400.792100 | Toilet_Epoxy Tile Grouting | 7d | 2027-03-05 | 2027-03-12 | 1837SS |  | 7 Days Work | 9180704 |
| 1863 | 36900.37000.37100.37800.38500.41100.55400.792200 | Toilet_False ceiling board fixing, CP Sanitary Fixture, Electric Fixture | 21d | 2027-03-12 | 2027-04-02 | 1862 |  | 7 Days Work | 9180714 |
| 1864 | 36900.37000.37100.37800.38500.41200 | **8th Habitable/10th Floor** | 245d | 2026-08-13 | 2027-04-15 |  | start no earlier than 2026-08-13 | 7 Days Work | 9169994 |
| 1865 | 36900.37000.37100.37800.38500.41200.233600 | Post Pour | 7d | 2026-08-13 | 2026-08-20 | 1431FS+15d |  | 7 Days Work | 9173154 |
| 1866 | 36900.37000.37100.37800.38500.41200.233700 | MEP Clearance -1 | 5d | 2026-08-20 | 2026-08-25 | 1865 |  | 7 Days Work | 9173164 |
| 1867 | 36900.37000.37100.37800.38500.41200.233800 | Benchmark | 1d | 2026-08-25 | 2026-08-26 | 1866 |  | 7 Days Work | 9173174 |
| 1868 | 36900.37000.37100.37800.38500.41200.233900 | Temporary Railing | 3d | 2026-08-26 | 2026-08-29 | 1867 |  | 7 Days Work | 9173184 |
| 1869 | 36900.37000.37100.37800.38500.41200.234000 | Blockwork | 10d | 2026-08-29 | 2026-09-08 | 1868 |  | 7 Days Work | 9173194 |
| 1870 | 36900.37000.37100.37800.38500.41200.234100 | MEP Clearance -2 | 10d | 2026-09-08 | 2026-09-18 | 1869 |  | 7 Days Work | 9173204 |
| 1871 | 36900.37000.37100.37800.38500.41200.234200 | Gypsum Plaster | 14d | 2026-09-18 | 2026-10-02 | 1870 |  | 7 Days Work | 9173214 |
| 1872 | 36900.37000.37100.37800.38500.41200.234300 | Kitchen Platform | 3d | 2026-10-02 | 2026-10-05 | 1871 |  | 7 Days Work | 9173224 |
| 1873 | 36900.37000.37100.37800.38500.41200.234400 | Kitchen dado | 7d | 2026-10-05 | 2026-10-12 | 1872 |  | 7 Days Work | 9173234 |
| 1874 | 36900.37000.37100.37800.38500.41200.234500 | Fire Fighting | 5d | 2026-10-12 | 2026-10-17 | 1873 |  | 7 Days Work | 9173244 |
| 1875 | 36900.37000.37100.37800.38500.41200.234600 | Anticapilary | 5d | 2026-10-17 | 2026-10-22 | 1874 |  | 7 Days Work | 9173254 |
| 1876 | 36900.37000.37100.37800.38500.41200.234700 | Stone Laying | 10d | 2026-11-24 | 2026-12-04 | 1916 |  | 7 Days Work | 9173264 |
| 1877 | 36900.37000.37100.37800.38500.41200.234800 | Tiles Laying | 7d | 2026-11-24 | 2026-12-01 | 1916 |  | 7 Days Work | 9173274 |
| 1878 | 36900.37000.37100.37800.38500.41200.234900 | 1st cutting/polishing of stone flooring | 7d | 2026-12-01 | 2026-12-08 | 1877 |  | 7 Days Work | 9173284 |
| 1879 | 36900.37000.37100.37800.38500.41200.235000 | Tiles/Stone skirting | 5d | 2026-12-08 | 2026-12-13 | 1878 |  | 7 Days Work | 9173294 |
| 1880 | 36900.37000.37100.37800.38500.41200.235100 | Protechtion sheet | 1d | 2026-12-13 | 2026-12-14 | 1879 |  | 7 Days Work | 9173304 |
| 1881 | 36900.37000.37100.37800.38500.41200.235200 | Installation of Temporary Door | 1d | 2026-12-14 | 2026-12-15 | 1880 |  | 7 Days Work | 9173314 |
| 1882 | 36900.37000.37100.37800.38500.41200.235300 | Fixing of window tracks | 5d | 2026-12-15 | 2026-12-20 | 1881 |  | 7 Days Work | 9173324 |
| 1883 | 36900.37000.37100.37800.38500.41200.235400 | Wire Pulling | 7d | 2026-12-20 | 2026-12-27 | 1882 |  | 7 Days Work | 9173334 |
| 1884 | 36900.37000.37100.37800.38500.41200.235500 | Gypsum Remaining | 5d | 2026-12-27 | 2027-01-01 | 1883 |  | 7 Days Work | 9173344 |
| 1885 | 36900.37000.37100.37800.38500.41200.235600 | Fixing of windoow shutter | 5d | 2027-01-01 | 2027-01-06 | 1884 |  | 7 Days Work | 9173354 |
| 1886 | 36900.37000.37100.37800.38500.41200.235700 | Putty Works - walls & ceiling | 15d | 2027-01-06 | 2027-01-21 | 1885 |  | 7 Days Work | 9173364 |
| 1887 | 36900.37000.37100.37800.38500.41200.235800 | False Ceiling- Framing | 10d | 2027-01-21 | 2027-01-31 | 1886 |  | 7 Days Work | 9173374 |
| 1888 | 36900.37000.37100.37800.38500.41200.235900 | Pre Hung Door | 3d | 2027-01-31 | 2027-02-03 | 1887 |  | 7 Days Work | 9173384 |
| 1889 | 36900.37000.37100.37800.38500.41200.236000 | Protechtion sheet | 2d | 2027-02-03 | 2027-02-05 | 1888 |  | 7 Days Work | 9173394 |
| 1890 | 36900.37000.37100.37800.38500.41200.236100 | Skirting near door | 2d | 2027-02-05 | 2027-02-07 | 1889 |  | 7 Days Work | 9173404 |
| 1891 | 36900.37000.37100.37800.38500.41200.236200 | Electrical Switch box fixing | 14d | 2027-02-07 | 2027-02-21 | 1890 |  | 7 Days Work | 9173414 |
| 1892 | 36900.37000.37100.37800.38500.41200.236300 | Fire Fighting painting | 5d | 2027-02-21 | 2027-02-26 | 1891 |  | 7 Days Work | 9173424 |
| 1893 | 36900.37000.37100.37800.38500.41200.236400 | Protection of all flooring, door & window hardware | 5d | 2027-02-26 | 2027-03-03 | 1892 |  | 7 Days Work | 9173434 |
| 1894 | 36900.37000.37100.37800.38500.41200.236500 | 1st coat primer- ceiling 1st & walls | 14d | 2027-03-03 | 2027-03-17 | 1893 |  | 7 Days Work | 9173444 |
| 1895 | 36900.37000.37100.37800.38500.41200.236600 | Wooden Flooring | 5d | 2027-03-17 | 2027-03-22 | 1894 |  | 7 Days Work | 9173454 |
| 1896 | 36900.37000.37100.37800.38500.41200.236700 | Removing of Temporary Railing & installation of Glass Railing | 5d | 2027-03-17 | 2027-03-22 | 1894 |  | 7 Days Work | 9173464 |
| 1897 | 36900.37000.37100.37800.38500.41200.236800 | Tile Grouting | 7d | 2027-03-17 | 2027-03-24 | 1894 |  | 7 Days Work | 9173474 |
| 1898 | 36900.37000.37100.37800.38500.41200.236900 | False Ceiling | 5d | 2027-03-24 | 2027-03-29 | 1897 |  | 7 Days Work | 9173484 |
| 1899 | 36900.37000.37100.37800.38500.41200.237000 | 2nd coat of primer | 10d | 2027-03-29 | 2027-04-08 | 1898 |  | 7 Days Work | 9173494 |
| 1900 | 36900.37000.37100.37800.38500.41200.237100 | Final cutting/polishing of stone flooring | 7d | 2027-04-08 | 2027-04-15 | 1899 |  | 7 Days Work | 9173504 |

| ID | WBS | Task | Duration | Start | Finish | Predecessors | Constraint | Calendar | Unique_Task_ID |
| --- | --- | --- | --- | --- | --- | --- | --- | --- | --- |
| 1901 | 36900.37000.37100.37800.38500.41200.55500 | **Toilet** | 237d | 2026-08-20 | 2027-04-14 |  | start no earlier than 2026-08-20 | 7 Days Work | 9170194 |
| 1902 | 36900.37000.37100.37800.38500.41200.55500.792300 | Toilet_MEP Clearance -1 | 7d | 2026-08-20 | 2026-08-27 | 1865 |  | 7 Days Work | 9180724 |
| 1903 | 36900.37000.37100.37800.38500.41200.55500.792400 | Toilet_Level Marking | 1d | 2026-08-27 | 2026-08-28 | 1902 |  | 7 Days Work | 9180734 |
| 1904 | 36900.37000.37100.37800.38500.41200.55500.792500 | Toilet_Chasing work for Electrical conduit & concealed plumbing | 5d | 2026-08-28 | 2026-09-02 | 1903 |  | 7 Days Work | 9180744 |
| 1905 | 36900.37000.37100.37800.38500.41200.55500.792600 | Toilet_Plumbing work 1st fix | 5d | 2026-09-02 | 2026-09-07 | 1904 |  | 7 Days Work | 9180754 |
| 1906 | 36900.37000.37100.37800.38500.41200.55500.792700 | Toilet_Sleeve/Bore Packing | 5d | 2026-09-07 | 2026-09-12 | 1905 |  | 7 Days Work | 9180764 |
| 1907 | 36900.37000.37100.37800.38500.41200.55500.792800 | Toilet_Waterproofing | 10d | 2026-09-12 | 2026-09-22 | 1906 |  | 7 Days Work | 9180774 |
| 1908 | 36900.37000.37100.37800.38500.41200.55500.792900 | Toilet_Screed | 1d | 2026-09-22 | 2026-09-23 | 1907 |  | 7 Days Work | 9180784 |
| 1909 | 36900.37000.37100.37800.38500.41200.55500.793000 | Toilet_Plumbing 2nd fix | 5d | 2026-09-23 | 2026-09-28 | 1908 |  | 7 Days Work | 9180794 |
| 1910 | 36900.37000.37100.37800.38500.41200.55500.793100 | Toilet_Ledge wall | 5d | 2026-09-28 | 2026-10-03 | 1909 |  | 7 Days Work | 9180804 |
| 1911 | 36900.37000.37100.37800.38500.41200.55500.793200 | Toilet_Cement Plaster | 5d | 2026-10-03 | 2026-10-08 | 1910 |  | 7 Days Work | 9180814 |
| 1912 | 36900.37000.37100.37800.38500.41200.55500.793300 | Toilet_Door Frame | 1d | 2026-10-08 | 2026-10-09 | 1911 |  | 7 Days Work | 9180824 |
| 1913 | 36900.37000.37100.37800.38500.41200.55500.793400 | Toilet_Wash basin & Couter | 3d | 2026-10-09 | 2026-10-12 | 1912 |  | 7 Days Work | 9180834 |
| 1914 | 36900.37000.37100.37800.38500.41200.55500.793500 | Toilet_Wall dado | 20d | 2026-10-12 | 2026-11-01 | 1913 |  | 7 Days Work | 9180844 |
| 1915 | 36900.37000.37100.37800.38500.41200.55500.793600 | Toilet_Granite Work-Ledge wall top | 3d | 2026-11-01 | 2026-11-04 | 1914 |  | 7 Days Work | 9180854 |
| 1916 | 36900.37000.37100.37800.38500.41200.55500.793700 | Toilet_Floor Tilling work | 20d | 2026-11-04 | 2026-11-24 | 1915 |  | 7 Days Work | 9180864 |
| 1917 | 36900.37000.37100.37800.38500.41200.55500.793800 | Toilet_1st row of dado | 5d | 2026-11-24 | 2026-11-29 | 1916 |  | 7 Days Work | 9180874 |
| 1918 | 36900.37000.37100.37800.38500.41200.55500.793900 | Toilet_Window Fixing | 14d | 2026-11-29 | 2026-12-13 | 1917 |  | 7 Days Work | 9180884 |
| 1919 | 36900.37000.37100.37800.38500.41200.55500.794000 | Toilet_Services above False ceiling | 21d | 2026-12-13 | 2027-01-03 | 1918 |  | 7 Days Work | 9180894 |
| 1920 | 36900.37000.37100.37800.38500.41200.55500.794100 | Toilet_False Ceiling framing | 12d | 2027-01-03 | 2027-01-15 | 1919 |  | 7 Days Work | 9180904 |
| 1921 | 36900.37000.37100.37800.38500.41200.55500.794200 | Toilet_Door Frame | 5d | 2027-01-15 | 2027-01-20 | 1920 |  | 7 Days Work | 9180914 |
| 1922 | 36900.37000.37100.37800.38500.41200.55500.794300 | Toilet_Epoxy Tile Grouting | 7d | 2027-03-17 | 2027-03-24 | 1897SS |  | 7 Days Work | 9180924 |
| 1923 | 36900.37000.37100.37800.38500.41200.55500.794400 | Toilet_False ceiling board fixing, CP Sanitary Fixture, Electric Fixture | 21d | 2027-03-24 | 2027-04-14 | 1922 |  | 7 Days Work | 9180934 |
| 1924 | 36900.37000.37100.37800.38500.41300 | **9th Habitable/11th Floor** | 245d | 2026-08-22 | 2027-04-24 |  | start no earlier than 2026-08-22 | 7 Days Work | 9170004 |
| 1925 | 36900.37000.37100.37800.38500.41300.237200 | Post Pour | 7d | 2026-08-22 | 2026-08-29 | 1432FS+15d |  | 7 Days Work | 9173514 |
| 1926 | 36900.37000.37100.37800.38500.41300.237300 | MEP Clearance -1 | 5d | 2026-08-29 | 2026-09-03 | 1925 |  | 7 Days Work | 9173524 |
| 1927 | 36900.37000.37100.37800.38500.41300.237400 | Benchmark | 1d | 2026-09-03 | 2026-09-04 | 1926 |  | 7 Days Work | 9173534 |
| 1928 | 36900.37000.37100.37800.38500.41300.237500 | Temporary Railing | 3d | 2026-09-04 | 2026-09-07 | 1927 |  | 7 Days Work | 9173544 |
| 1929 | 36900.37000.37100.37800.38500.41300.237600 | Blockwork | 10d | 2026-09-07 | 2026-09-17 | 1928 |  | 7 Days Work | 9173554 |
| 1930 | 36900.37000.37100.37800.38500.41300.237700 | MEP Clearance -2 | 10d | 2026-09-17 | 2026-09-27 | 1929 |  | 7 Days Work | 9173564 |
| 1931 | 36900.37000.37100.37800.38500.41300.237800 | Gypsum Plaster | 14d | 2026-09-27 | 2026-10-11 | 1930 |  | 7 Days Work | 9173574 |
| 1932 | 36900.37000.37100.37800.38500.41300.237900 | Kitchen Platform | 3d | 2026-10-11 | 2026-10-14 | 1931 |  | 7 Days Work | 9173584 |
| 1933 | 36900.37000.37100.37800.38500.41300.238000 | Kitchen dado | 7d | 2026-10-14 | 2026-10-21 | 1932 |  | 7 Days Work | 9173594 |
| 1934 | 36900.37000.37100.37800.38500.41300.238100 | Fire Fighting | 5d | 2026-10-21 | 2026-10-26 | 1933 |  | 7 Days Work | 9173604 |
| 1935 | 36900.37000.37100.37800.38500.41300.238200 | Anticapilary | 5d | 2026-10-26 | 2026-10-31 | 1934 |  | 7 Days Work | 9173614 |
| 1936 | 36900.37000.37100.37800.38500.41300.238300 | Stone Laying | 10d | 2026-12-03 | 2026-12-13 | 1976 |  | 7 Days Work | 9173624 |
| 1937 | 36900.37000.37100.37800.38500.41300.238400 | Tiles Laying | 7d | 2026-12-03 | 2026-12-10 | 1976 |  | 7 Days Work | 9173634 |
| 1938 | 36900.37000.37100.37800.38500.41300.238500 | 1st cutting/polishing of stone flooring | 7d | 2026-12-10 | 2026-12-17 | 1937 |  | 7 Days Work | 9173644 |
| 1939 | 36900.37000.37100.37800.38500.41300.238600 | Tiles/Stone skirting | 5d | 2026-12-17 | 2026-12-22 | 1938 |  | 7 Days Work | 9173654 |
| 1940 | 36900.37000.37100.37800.38500.41300.238700 | Protechtion sheet | 1d | 2026-12-22 | 2026-12-23 | 1939 |  | 7 Days Work | 9173664 |
| 1941 | 36900.37000.37100.37800.38500.41300.238800 | Installation of Temporary Door | 1d | 2026-12-23 | 2026-12-24 | 1940 |  | 7 Days Work | 9173674 |
| 1942 | 36900.37000.37100.37800.38500.41300.238900 | Fixing of window tracks | 5d | 2026-12-24 | 2026-12-29 | 1941 |  | 7 Days Work | 9173684 |
| 1943 | 36900.37000.37100.37800.38500.41300.239000 | Wire Pulling | 7d | 2026-12-29 | 2027-01-05 | 1942 |  | 7 Days Work | 9173694 |
| 1944 | 36900.37000.37100.37800.38500.41300.239100 | Gypsum Remaining | 5d | 2027-01-05 | 2027-01-10 | 1943 |  | 7 Days Work | 9173704 |
| 1945 | 36900.37000.37100.37800.38500.41300.239200 | Fixing of windoow shutter | 5d | 2027-01-10 | 2027-01-15 | 1944 |  | 7 Days Work | 9173714 |
| 1946 | 36900.37000.37100.37800.38500.41300.239300 | Putty Works - walls & ceiling | 15d | 2027-01-15 | 2027-01-30 | 1945 |  | 7 Days Work | 9173724 |
| 1947 | 36900.37000.37100.37800.38500.41300.239400 | False Ceiling- Framing | 10d | 2027-01-30 | 2027-02-09 | 1946 |  | 7 Days Work | 9173734 |
| 1948 | 36900.37000.37100.37800.38500.41300.239500 | Pre Hung Door | 3d | 2027-02-09 | 2027-02-12 | 1947 |  | 7 Days Work | 9173744 |
| 1949 | 36900.37000.37100.37800.38500.41300.239600 | Protechtion sheet | 2d | 2027-02-12 | 2027-02-14 | 1948 |  | 7 Days Work | 9173754 |
| 1950 | 36900.37000.37100.37800.38500.41300.239700 | Skirting near door | 2d | 2027-02-14 | 2027-02-16 | 1949 |  | 7 Days Work | 9173764 |
| 1951 | 36900.37000.37100.37800.38500.41300.239800 | Electrical Switch box fixing | 14d | 2027-02-16 | 2027-03-02 | 1950 |  | 7 Days Work | 9173774 |
| 1952 | 36900.37000.37100.37800.38500.41300.239900 | Fire Fighting painting | 5d | 2027-03-02 | 2027-03-07 | 1951 |  | 7 Days Work | 9173784 |
| 1953 | 36900.37000.37100.37800.38500.41300.240000 | Protection of all flooring, door & window hardware | 5d | 2027-03-07 | 2027-03-12 | 1952 |  | 7 Days Work | 9173794 |
| 1954 | 36900.37000.37100.37800.38500.41300.240100 | 1st coat primer- ceiling 1st & walls | 14d | 2027-03-12 | 2027-03-26 | 1953 |  | 7 Days Work | 9173804 |
| 1955 | 36900.37000.37100.37800.38500.41300.240200 | Wooden Flooring | 5d | 2027-03-26 | 2027-03-31 | 1954 |  | 7 Days Work | 9173814 |
| 1956 | 36900.37000.37100.37800.38500.41300.240300 | Removing of Temporary Railing & installation of Glass Railing | 5d | 2027-03-26 | 2027-03-31 | 1954 |  | 7 Days Work | 9173824 |
| 1957 | 36900.37000.37100.37800.38500.41300.240400 | Tile Grouting | 7d | 2027-03-26 | 2027-04-02 | 1954 |  | 7 Days Work | 9173834 |
| 1958 | 36900.37000.37100.37800.38500.41300.240500 | False Ceiling | 5d | 2027-04-02 | 2027-04-07 | 1957 |  | 7 Days Work | 9173844 |
| 1959 | 36900.37000.37100.37800.38500.41300.240600 | 2nd coat of primer | 10d | 2027-04-07 | 2027-04-17 | 1958 |  | 7 Days Work | 9173854 |
| 1960 | 36900.37000.37100.37800.38500.41300.240700 | Final cutting/polishing of stone flooring | 7d | 2027-04-17 | 2027-04-24 | 1959 |  | 7 Days Work | 9173864 |

| ID | WBS | Task | Duration | Start | Finish | Predecessors | Constraint | Calendar | Unique_Task_ID |
| --- | --- | --- | --- | --- | --- | --- | --- | --- | --- |
| 1961 | 36900.37000.37100.37800.38500.41300.55600 | **Toilet** | 237d | 2026-08-29 | 2027-04-23 |  | start no earlier than 2026-08-29 | 7 Days Work | 9170204 |
| 1962 | 36900.37000.37100.37800.38500.41300.55600.794500 | Toilet_MEP Clearance -1 | 7d | 2026-08-29 | 2026-09-05 | 1925 |  | 7 Days Work | 9180944 |
| 1963 | 36900.37000.37100.37800.38500.41300.55600.794600 | Toilet_Level Marking | 1d | 2026-09-05 | 2026-09-06 | 1962 |  | 7 Days Work | 9180954 |
| 1964 | 36900.37000.37100.37800.38500.41300.55600.794700 | Toilet_Chasing work for Electrical conduit & concealed plumbing | 5d | 2026-09-06 | 2026-09-11 | 1963 |  | 7 Days Work | 9180964 |
| 1965 | 36900.37000.37100.37800.38500.41300.55600.794800 | Toilet_Plumbing work 1st fix | 5d | 2026-09-11 | 2026-09-16 | 1964 |  | 7 Days Work | 9180974 |
| 1966 | 36900.37000.37100.37800.38500.41300.55600.794900 | Toilet_Sleeve/Bore Packing | 5d | 2026-09-16 | 2026-09-21 | 1965 |  | 7 Days Work | 9180984 |
| 1967 | 36900.37000.37100.37800.38500.41300.55600.795000 | Toilet_Waterproofing | 10d | 2026-09-21 | 2026-10-01 | 1966 |  | 7 Days Work | 9180994 |
| 1968 | 36900.37000.37100.37800.38500.41300.55600.795100 | Toilet_Screed | 1d | 2026-10-01 | 2026-10-02 | 1967 |  | 7 Days Work | 9181004 |
| 1969 | 36900.37000.37100.37800.38500.41300.55600.795200 | Toilet_Plumbing 2nd fix | 5d | 2026-10-02 | 2026-10-07 | 1968 |  | 7 Days Work | 9181014 |
| 1970 | 36900.37000.37100.37800.38500.41300.55600.795300 | Toilet_Ledge wall | 5d | 2026-10-07 | 2026-10-12 | 1969 |  | 7 Days Work | 9181024 |
| 1971 | 36900.37000.37100.37800.38500.41300.55600.795400 | Toilet_Cement Plaster | 5d | 2026-10-12 | 2026-10-17 | 1970 |  | 7 Days Work | 9181034 |
| 1972 | 36900.37000.37100.37800.38500.41300.55600.795500 | Toilet_Door Frame | 1d | 2026-10-17 | 2026-10-18 | 1971 |  | 7 Days Work | 9181044 |
| 1973 | 36900.37000.37100.37800.38500.41300.55600.795600 | Toilet_Wash basin & Couter | 3d | 2026-10-18 | 2026-10-21 | 1972 |  | 7 Days Work | 9181054 |
| 1974 | 36900.37000.37100.37800.38500.41300.55600.795700 | Toilet_Wall dado | 20d | 2026-10-21 | 2026-11-10 | 1973 |  | 7 Days Work | 9181064 |
| 1975 | 36900.37000.37100.37800.38500.41300.55600.795800 | Toilet_Granite Work-Ledge wall top | 3d | 2026-11-10 | 2026-11-13 | 1974 |  | 7 Days Work | 9181074 |
| 1976 | 36900.37000.37100.37800.38500.41300.55600.795900 | Toilet_Floor Tilling work | 20d | 2026-11-13 | 2026-12-03 | 1975 |  | 7 Days Work | 9181084 |
| 1977 | 36900.37000.37100.37800.38500.41300.55600.796000 | Toilet_1st row of dado | 5d | 2026-12-03 | 2026-12-08 | 1976 |  | 7 Days Work | 9181094 |
| 1978 | 36900.37000.37100.37800.38500.41300.55600.796100 | Toilet_Window Fixing | 14d | 2026-12-08 | 2026-12-22 | 1977 |  | 7 Days Work | 9181104 |
| 1979 | 36900.37000.37100.37800.38500.41300.55600.796200 | Toilet_Services above False ceiling | 21d | 2026-12-22 | 2027-01-12 | 1978 |  | 7 Days Work | 9181114 |
| 1980 | 36900.37000.37100.37800.38500.41300.55600.796300 | Toilet_False Ceiling framing | 12d | 2027-01-12 | 2027-01-24 | 1979 |  | 7 Days Work | 9181124 |
| 1981 | 36900.37000.37100.37800.38500.41300.55600.796400 | Toilet_Door Frame | 5d | 2027-01-24 | 2027-01-29 | 1980 |  | 7 Days Work | 9181134 |
| 1982 | 36900.37000.37100.37800.38500.41300.55600.796500 | Toilet_Epoxy Tile Grouting | 7d | 2027-03-26 | 2027-04-02 | 1957SS |  | 7 Days Work | 9181144 |
| 1983 | 36900.37000.37100.37800.38500.41300.55600.796600 | Toilet_False ceiling board fixing, CP Sanitary Fixture, Electric Fixture | 21d | 2027-04-02 | 2027-04-23 | 1982 |  | 7 Days Work | 9181154 |
| 1984 | 36900.37000.37100.37800.38500.41400 | **10th Habitable/12th Floor** | 245d | 2026-08-31 | 2027-05-03 |  | start no earlier than 2026-08-31 | 7 Days Work | 9170014 |
| 1985 | 36900.37000.37100.37800.38500.41400.240800 | Post Pour | 7d | 2026-08-31 | 2026-09-07 | 1433FS+15d |  | 7 Days Work | 9173874 |
| 1986 | 36900.37000.37100.37800.38500.41400.240900 | MEP Clearance -1 | 5d | 2026-09-07 | 2026-09-12 | 1985 |  | 7 Days Work | 9173884 |
| 1987 | 36900.37000.37100.37800.38500.41400.241000 | Benchmark | 1d | 2026-09-12 | 2026-09-13 | 1986 |  | 7 Days Work | 9173894 |
| 1988 | 36900.37000.37100.37800.38500.41400.241100 | Temporary Railing | 3d | 2026-09-13 | 2026-09-16 | 1987 |  | 7 Days Work | 9173904 |
| 1989 | 36900.37000.37100.37800.38500.41400.241200 | Blockwork | 10d | 2026-09-16 | 2026-09-26 | 1988 |  | 7 Days Work | 9173914 |
| 1990 | 36900.37000.37100.37800.38500.41400.241300 | MEP Clearance -2 | 10d | 2026-09-26 | 2026-10-06 | 1989 |  | 7 Days Work | 9173924 |
| 1991 | 36900.37000.37100.37800.38500.41400.241400 | Gypsum Plaster | 14d | 2026-10-06 | 2026-10-20 | 1990 |  | 7 Days Work | 9173934 |
| 1992 | 36900.37000.37100.37800.38500.41400.241500 | Kitchen Platform | 3d | 2026-10-20 | 2026-10-23 | 1991 |  | 7 Days Work | 9173944 |
| 1993 | 36900.37000.37100.37800.38500.41400.241600 | Kitchen dado | 7d | 2026-10-23 | 2026-10-30 | 1992 |  | 7 Days Work | 9173954 |
| 1994 | 36900.37000.37100.37800.38500.41400.241700 | Fire Fighting | 5d | 2026-10-30 | 2026-11-04 | 1993 |  | 7 Days Work | 9173964 |
| 1995 | 36900.37000.37100.37800.38500.41400.241800 | Anticapilary | 5d | 2026-11-04 | 2026-11-09 | 1994 |  | 7 Days Work | 9173974 |
| 1996 | 36900.37000.37100.37800.38500.41400.241900 | Stone Laying | 10d | 2026-12-12 | 2026-12-22 | 2036 |  | 7 Days Work | 9173984 |
| 1997 | 36900.37000.37100.37800.38500.41400.242000 | Tiles Laying | 7d | 2026-12-12 | 2026-12-19 | 2036 |  | 7 Days Work | 9173994 |
| 1998 | 36900.37000.37100.37800.38500.41400.242100 | 1st cutting/polishing of stone flooring | 7d | 2026-12-19 | 2026-12-26 | 1997 |  | 7 Days Work | 9174004 |
| 1999 | 36900.37000.37100.37800.38500.41400.242200 | Tiles/Stone skirting | 5d | 2026-12-26 | 2026-12-31 | 1998 |  | 7 Days Work | 9174014 |
| 2000 | 36900.37000.37100.37800.38500.41400.242300 | Protechtion sheet | 1d | 2026-12-31 | 2027-01-01 | 1999 |  | 7 Days Work | 9174024 |
| 2001 | 36900.37000.37100.37800.38500.41400.242400 | Installation of Temporary Door | 1d | 2027-01-01 | 2027-01-02 | 2000 |  | 7 Days Work | 9174034 |
| 2002 | 36900.37000.37100.37800.38500.41400.242500 | Fixing of window tracks | 5d | 2027-01-02 | 2027-01-07 | 2001 |  | 7 Days Work | 9174044 |
| 2003 | 36900.37000.37100.37800.38500.41400.242600 | Wire Pulling | 7d | 2027-01-07 | 2027-01-14 | 2002 |  | 7 Days Work | 9174054 |
| 2004 | 36900.37000.37100.37800.38500.41400.242700 | Gypsum Remaining | 5d | 2027-01-14 | 2027-01-19 | 2003 |  | 7 Days Work | 9174064 |
| 2005 | 36900.37000.37100.37800.38500.41400.242800 | Fixing of windoow shutter | 5d | 2027-01-19 | 2027-01-24 | 2004 |  | 7 Days Work | 9174074 |
| 2006 | 36900.37000.37100.37800.38500.41400.242900 | Putty Works - walls & ceiling | 15d | 2027-01-24 | 2027-02-08 | 2005 |  | 7 Days Work | 9174084 |
| 2007 | 36900.37000.37100.37800.38500.41400.243000 | False Ceiling- Framing | 10d | 2027-02-08 | 2027-02-18 | 2006 |  | 7 Days Work | 9174094 |
| 2008 | 36900.37000.37100.37800.38500.41400.243100 | Pre Hung Door | 3d | 2027-02-18 | 2027-02-21 | 2007 |  | 7 Days Work | 9174104 |
| 2009 | 36900.37000.37100.37800.38500.41400.243200 | Protechtion sheet | 2d | 2027-02-21 | 2027-02-23 | 2008 |  | 7 Days Work | 9174114 |
| 2010 | 36900.37000.37100.37800.38500.41400.243300 | Skirting near door | 2d | 2027-02-23 | 2027-02-25 | 2009 |  | 7 Days Work | 9174124 |
| 2011 | 36900.37000.37100.37800.38500.41400.243400 | Electrical Switch box fixing | 14d | 2027-02-25 | 2027-03-11 | 2010 |  | 7 Days Work | 9174134 |
| 2012 | 36900.37000.37100.37800.38500.41400.243500 | Fire Fighting painting | 5d | 2027-03-11 | 2027-03-16 | 2011 |  | 7 Days Work | 9174144 |
| 2013 | 36900.37000.37100.37800.38500.41400.243600 | Protection of all flooring, door & window hardware | 5d | 2027-03-16 | 2027-03-21 | 2012 |  | 7 Days Work | 9174154 |
| 2014 | 36900.37000.37100.37800.38500.41400.243700 | 1st coat primer- ceiling 1st & walls | 14d | 2027-03-21 | 2027-04-04 | 2013 |  | 7 Days Work | 9174164 |
| 2015 | 36900.37000.37100.37800.38500.41400.243800 | Wooden Flooring | 5d | 2027-04-04 | 2027-04-09 | 2014 |  | 7 Days Work | 9174174 |
| 2016 | 36900.37000.37100.37800.38500.41400.243900 | Removing of Temporary Railing & installation of Glass Railing | 5d | 2027-04-04 | 2027-04-09 | 2014 |  | 7 Days Work | 9174184 |
| 2017 | 36900.37000.37100.37800.38500.41400.244000 | Tile Grouting | 7d | 2027-04-04 | 2027-04-11 | 2014 |  | 7 Days Work | 9174194 |
| 2018 | 36900.37000.37100.37800.38500.41400.244100 | False Ceiling | 5d | 2027-04-11 | 2027-04-16 | 2017 |  | 7 Days Work | 9174204 |
| 2019 | 36900.37000.37100.37800.38500.41400.244200 | 2nd coat of primer | 10d | 2027-04-16 | 2027-04-26 | 2018 |  | 7 Days Work | 9174214 |
| 2020 | 36900.37000.37100.37800.38500.41400.244300 | Final cutting/polishing of stone flooring | 7d | 2027-04-26 | 2027-05-03 | 2019 |  | 7 Days Work | 9174224 |

| ID | WBS | Task | Duration | Start | Finish | Predecessors | Constraint | Calendar | Unique_Task_ID |
| --- | --- | --- | --- | --- | --- | --- | --- | --- | --- |
| 2021 | 36900.37000.37100.37800.38500.41400.55700 | **Toilet** | 237d | 2026-09-07 | 2027-05-02 |  | start no earlier than 2026-09-07 | 7 Days Work | 9170214 |
| 2022 | 36900.37000.37100.37800.38500.41400.55700.796700 | Toilet_MEP Clearance -1 | 7d | 2026-09-07 | 2026-09-14 | 1985 |  | 7 Days Work | 9181164 |
| 2023 | 36900.37000.37100.37800.38500.41400.55700.796800 | Toilet_Level Marking | 1d | 2026-09-14 | 2026-09-15 | 2022 |  | 7 Days Work | 9181174 |
| 2024 | 36900.37000.37100.37800.38500.41400.55700.796900 | Toilet_Chasing work for Electrical conduit & concealed plumbing | 5d | 2026-09-15 | 2026-09-20 | 2023 |  | 7 Days Work | 9181184 |
| 2025 | 36900.37000.37100.37800.38500.41400.55700.797000 | Toilet_Plumbing work 1st fix | 5d | 2026-09-20 | 2026-09-25 | 2024 |  | 7 Days Work | 9181194 |
| 2026 | 36900.37000.37100.37800.38500.41400.55700.797100 | Toilet_Sleeve/Bore Packing | 5d | 2026-09-25 | 2026-09-30 | 2025 |  | 7 Days Work | 9181204 |
| 2027 | 36900.37000.37100.37800.38500.41400.55700.797200 | Toilet_Waterproofing | 10d | 2026-09-30 | 2026-10-10 | 2026 |  | 7 Days Work | 9181214 |
| 2028 | 36900.37000.37100.37800.38500.41400.55700.797300 | Toilet_Screed | 1d | 2026-10-10 | 2026-10-11 | 2027 |  | 7 Days Work | 9181224 |
| 2029 | 36900.37000.37100.37800.38500.41400.55700.797400 | Toilet_Plumbing 2nd fix | 5d | 2026-10-11 | 2026-10-16 | 2028 |  | 7 Days Work | 9181234 |
| 2030 | 36900.37000.37100.37800.38500.41400.55700.797500 | Toilet_Ledge wall | 5d | 2026-10-16 | 2026-10-21 | 2029 |  | 7 Days Work | 9181244 |
| 2031 | 36900.37000.37100.37800.38500.41400.55700.797600 | Toilet_Cement Plaster | 5d | 2026-10-21 | 2026-10-26 | 2030 |  | 7 Days Work | 9181254 |
| 2032 | 36900.37000.37100.37800.38500.41400.55700.797700 | Toilet_Door Frame | 1d | 2026-10-26 | 2026-10-27 | 2031 |  | 7 Days Work | 9181264 |
| 2033 | 36900.37000.37100.37800.38500.41400.55700.797800 | Toilet_Wash basin & Couter | 3d | 2026-10-27 | 2026-10-30 | 2032 |  | 7 Days Work | 9181274 |
| 2034 | 36900.37000.37100.37800.38500.41400.55700.797900 | Toilet_Wall dado | 20d | 2026-10-30 | 2026-11-19 | 2033 |  | 7 Days Work | 9181284 |
| 2035 | 36900.37000.37100.37800.38500.41400.55700.798000 | Toilet_Granite Work-Ledge wall top | 3d | 2026-11-19 | 2026-11-22 | 2034 |  | 7 Days Work | 9181294 |
| 2036 | 36900.37000.37100.37800.38500.41400.55700.798100 | Toilet_Floor Tilling work | 20d | 2026-11-22 | 2026-12-12 | 2035 |  | 7 Days Work | 9181304 |
| 2037 | 36900.37000.37100.37800.38500.41400.55700.798200 | Toilet_1st row of dado | 5d | 2026-12-12 | 2026-12-17 | 2036 |  | 7 Days Work | 9181314 |
| 2038 | 36900.37000.37100.37800.38500.41400.55700.798300 | Toilet_Window Fixing | 14d | 2026-12-17 | 2026-12-31 | 2037 |  | 7 Days Work | 9181324 |
| 2039 | 36900.37000.37100.37800.38500.41400.55700.798400 | Toilet_Services above False ceiling | 21d | 2026-12-31 | 2027-01-21 | 2038 |  | 7 Days Work | 9181334 |
| 2040 | 36900.37000.37100.37800.38500.41400.55700.798500 | Toilet_False Ceiling framing | 12d | 2027-01-21 | 2027-02-02 | 2039 |  | 7 Days Work | 9181344 |
| 2041 | 36900.37000.37100.37800.38500.41400.55700.798600 | Toilet_Door Frame | 5d | 2027-02-02 | 2027-02-07 | 2040 |  | 7 Days Work | 9181354 |
| 2042 | 36900.37000.37100.37800.38500.41400.55700.798700 | Toilet_Epoxy Tile Grouting | 7d | 2027-04-04 | 2027-04-11 | 2017SS |  | 7 Days Work | 9181364 |
| 2043 | 36900.37000.37100.37800.38500.41400.55700.798800 | Toilet_False ceiling board fixing, CP Sanitary Fixture, Electric Fixture | 21d | 2027-04-11 | 2027-05-02 | 2042 |  | 7 Days Work | 9181374 |
| 2044 | 36900.37000.37100.37800.38500.41500 | **11th Habitable/13th Floor** | 245d | 2026-09-09 | 2027-05-12 |  | start no earlier than 2026-09-09 | 7 Days Work | 9170024 |
| 2045 | 36900.37000.37100.37800.38500.41500.244400 | Post Pour | 7d | 2026-09-09 | 2026-09-16 | 1434FS+15d |  | 7 Days Work | 9174234 |
| 2046 | 36900.37000.37100.37800.38500.41500.244500 | MEP Clearance -1 | 5d | 2026-09-16 | 2026-09-21 | 2045 |  | 7 Days Work | 9174244 |
| 2047 | 36900.37000.37100.37800.38500.41500.244600 | Benchmark | 1d | 2026-09-21 | 2026-09-22 | 2046 |  | 7 Days Work | 9174254 |
| 2048 | 36900.37000.37100.37800.38500.41500.244700 | Temporary Railing | 3d | 2026-09-22 | 2026-09-25 | 2047 |  | 7 Days Work | 9174264 |
| 2049 | 36900.37000.37100.37800.38500.41500.244800 | Blockwork | 10d | 2026-09-25 | 2026-10-05 | 2048 |  | 7 Days Work | 9174274 |
| 2050 | 36900.37000.37100.37800.38500.41500.244900 | MEP Clearance -2 | 10d | 2026-10-05 | 2026-10-15 | 2049 |  | 7 Days Work | 9174284 |
| 2051 | 36900.37000.37100.37800.38500.41500.245000 | Gypsum Plaster | 14d | 2026-10-15 | 2026-10-29 | 2050 |  | 7 Days Work | 9174294 |
| 2052 | 36900.37000.37100.37800.38500.41500.245100 | Kitchen Platform | 3d | 2026-10-29 | 2026-11-01 | 2051 |  | 7 Days Work | 9174304 |
| 2053 | 36900.37000.37100.37800.38500.41500.245200 | Kitchen dado | 7d | 2026-11-01 | 2026-11-08 | 2052 |  | 7 Days Work | 9174314 |
| 2054 | 36900.37000.37100.37800.38500.41500.245300 | Fire Fighting | 5d | 2026-11-08 | 2026-11-13 | 2053 |  | 7 Days Work | 9174324 |
| 2055 | 36900.37000.37100.37800.38500.41500.245400 | Anticapilary | 5d | 2026-11-13 | 2026-11-18 | 2054 |  | 7 Days Work | 9174334 |
| 2056 | 36900.37000.37100.37800.38500.41500.245500 | Stone Laying | 10d | 2026-12-21 | 2026-12-31 | 2096 |  | 7 Days Work | 9174344 |
| 2057 | 36900.37000.37100.37800.38500.41500.245600 | Tiles Laying | 7d | 2026-12-21 | 2026-12-28 | 2096 |  | 7 Days Work | 9174354 |
| 2058 | 36900.37000.37100.37800.38500.41500.245700 | 1st cutting/polishing of stone flooring | 7d | 2026-12-28 | 2027-01-04 | 2057 |  | 7 Days Work | 9174364 |
| 2059 | 36900.37000.37100.37800.38500.41500.245800 | Tiles/Stone skirting | 5d | 2027-01-04 | 2027-01-09 | 2058 |  | 7 Days Work | 9174374 |
| 2060 | 36900.37000.37100.37800.38500.41500.245900 | Protechtion sheet | 1d | 2027-01-09 | 2027-01-10 | 2059 |  | 7 Days Work | 9174384 |
| 2061 | 36900.37000.37100.37800.38500.41500.246000 | Installation of Temporary Door | 1d | 2027-01-10 | 2027-01-11 | 2060 |  | 7 Days Work | 9174394 |
| 2062 | 36900.37000.37100.37800.38500.41500.246100 | Fixing of window tracks | 5d | 2027-01-11 | 2027-01-16 | 2061 |  | 7 Days Work | 9174404 |
| 2063 | 36900.37000.37100.37800.38500.41500.246200 | Wire Pulling | 7d | 2027-01-16 | 2027-01-23 | 2062 |  | 7 Days Work | 9174414 |
| 2064 | 36900.37000.37100.37800.38500.41500.246300 | Gypsum Remaining | 5d | 2027-01-23 | 2027-01-28 | 2063 |  | 7 Days Work | 9174424 |
| 2065 | 36900.37000.37100.37800.38500.41500.246400 | Fixing of windoow shutter | 5d | 2027-01-28 | 2027-02-02 | 2064 |  | 7 Days Work | 9174434 |
| 2066 | 36900.37000.37100.37800.38500.41500.246500 | Putty Works - walls & ceiling | 15d | 2027-02-02 | 2027-02-17 | 2065 |  | 7 Days Work | 9174444 |
| 2067 | 36900.37000.37100.37800.38500.41500.246600 | False Ceiling- Framing | 10d | 2027-02-17 | 2027-02-27 | 2066 |  | 7 Days Work | 9174454 |
| 2068 | 36900.37000.37100.37800.38500.41500.246700 | Pre Hung Door | 3d | 2027-02-27 | 2027-03-02 | 2067 |  | 7 Days Work | 9174464 |
| 2069 | 36900.37000.37100.37800.38500.41500.246800 | Protechtion sheet | 2d | 2027-03-02 | 2027-03-04 | 2068 |  | 7 Days Work | 9174474 |
| 2070 | 36900.37000.37100.37800.38500.41500.246900 | Skirting near door | 2d | 2027-03-04 | 2027-03-06 | 2069 |  | 7 Days Work | 9174484 |
| 2071 | 36900.37000.37100.37800.38500.41500.247000 | Electrical Switch box fixing | 14d | 2027-03-06 | 2027-03-20 | 2070 |  | 7 Days Work | 9174494 |
| 2072 | 36900.37000.37100.37800.38500.41500.247100 | Fire Fighting painting | 5d | 2027-03-20 | 2027-03-25 | 2071 |  | 7 Days Work | 9174504 |
| 2073 | 36900.37000.37100.37800.38500.41500.247200 | Protection of all flooring, door & window hardware | 5d | 2027-03-25 | 2027-03-30 | 2072 |  | 7 Days Work | 9174514 |
| 2074 | 36900.37000.37100.37800.38500.41500.247300 | 1st coat primer- ceiling 1st & walls | 14d | 2027-03-30 | 2027-04-13 | 2073 |  | 7 Days Work | 9174524 |
| 2075 | 36900.37000.37100.37800.38500.41500.247400 | Wooden Flooring | 5d | 2027-04-13 | 2027-04-18 | 2074 |  | 7 Days Work | 9174534 |
| 2076 | 36900.37000.37100.37800.38500.41500.247500 | Removing of Temporary Railing & installation of Glass Railing | 5d | 2027-04-13 | 2027-04-18 | 2074 |  | 7 Days Work | 9174544 |
| 2077 | 36900.37000.37100.37800.38500.41500.247600 | Tile Grouting | 7d | 2027-04-13 | 2027-04-20 | 2074 |  | 7 Days Work | 9174554 |
| 2078 | 36900.37000.37100.37800.38500.41500.247700 | False Ceiling | 5d | 2027-04-20 | 2027-04-25 | 2077 |  | 7 Days Work | 9174564 |
| 2079 | 36900.37000.37100.37800.38500.41500.247800 | 2nd coat of primer | 10d | 2027-04-25 | 2027-05-05 | 2078 |  | 7 Days Work | 9174574 |
| 2080 | 36900.37000.37100.37800.38500.41500.247900 | Final cutting/polishing of stone flooring | 7d | 2027-05-05 | 2027-05-12 | 2079 |  | 7 Days Work | 9174584 |

| ID | WBS | Task | Duration | Start | Finish | Predecessors | Constraint | Calendar | Unique_Task_ID |
| --- | --- | --- | --- | --- | --- | --- | --- | --- | --- |
| 2081 | 36900.37000.37100.37800.38500.41500.55800 | **Toilet** | 237d | 2026-09-16 | 2027-05-11 |  | start no earlier than 2026-09-16 | 7 Days Work | 9170224 |
| 2082 | 36900.37000.37100.37800.38500.41500.55800.798900 | Toilet_MEP Clearance -1 | 7d | 2026-09-16 | 2026-09-23 | 2045 |  | 7 Days Work | 9181384 |
| 2083 | 36900.37000.37100.37800.38500.41500.55800.799000 | Toilet_Level Marking | 1d | 2026-09-23 | 2026-09-24 | 2082 |  | 7 Days Work | 9181394 |
| 2084 | 36900.37000.37100.37800.38500.41500.55800.799100 | Toilet_Chasing work for Electrical conduit & concealed plumbing | 5d | 2026-09-24 | 2026-09-29 | 2083 |  | 7 Days Work | 9181404 |
| 2085 | 36900.37000.37100.37800.38500.41500.55800.799200 | Toilet_Plumbing work 1st fix | 5d | 2026-09-29 | 2026-10-04 | 2084 |  | 7 Days Work | 9181414 |
| 2086 | 36900.37000.37100.37800.38500.41500.55800.799300 | Toilet_Sleeve/Bore Packing | 5d | 2026-10-04 | 2026-10-09 | 2085 |  | 7 Days Work | 9181424 |
| 2087 | 36900.37000.37100.37800.38500.41500.55800.799400 | Toilet_Waterproofing | 10d | 2026-10-09 | 2026-10-19 | 2086 |  | 7 Days Work | 9181434 |
| 2088 | 36900.37000.37100.37800.38500.41500.55800.799500 | Toilet_Screed | 1d | 2026-10-19 | 2026-10-20 | 2087 |  | 7 Days Work | 9181444 |
| 2089 | 36900.37000.37100.37800.38500.41500.55800.799600 | Toilet_Plumbing 2nd fix | 5d | 2026-10-20 | 2026-10-25 | 2088 |  | 7 Days Work | 9181454 |
| 2090 | 36900.37000.37100.37800.38500.41500.55800.799700 | Toilet_Ledge wall | 5d | 2026-10-25 | 2026-10-30 | 2089 |  | 7 Days Work | 9181464 |
| 2091 | 36900.37000.37100.37800.38500.41500.55800.799800 | Toilet_Cement Plaster | 5d | 2026-10-30 | 2026-11-04 | 2090 |  | 7 Days Work | 9181474 |
| 2092 | 36900.37000.37100.37800.38500.41500.55800.799900 | Toilet_Door Frame | 1d | 2026-11-04 | 2026-11-05 | 2091 |  | 7 Days Work | 9181484 |
| 2093 | 36900.37000.37100.37800.38500.41500.55800.800000 | Toilet_Wash basin & Couter | 3d | 2026-11-05 | 2026-11-08 | 2092 |  | 7 Days Work | 9181494 |
| 2094 | 36900.37000.37100.37800.38500.41500.55800.800100 | Toilet_Wall dado | 20d | 2026-11-08 | 2026-11-28 | 2093 |  | 7 Days Work | 9181504 |
| 2095 | 36900.37000.37100.37800.38500.41500.55800.800200 | Toilet_Granite Work-Ledge wall top | 3d | 2026-11-28 | 2026-12-01 | 2094 |  | 7 Days Work | 9181514 |
| 2096 | 36900.37000.37100.37800.38500.41500.55800.800300 | Toilet_Floor Tilling work | 20d | 2026-12-01 | 2026-12-21 | 2095 |  | 7 Days Work | 9181524 |
| 2097 | 36900.37000.37100.37800.38500.41500.55800.800400 | Toilet_1st row of dado | 5d | 2026-12-21 | 2026-12-26 | 2096 |  | 7 Days Work | 9181534 |
| 2098 | 36900.37000.37100.37800.38500.41500.55800.800500 | Toilet_Window Fixing | 14d | 2026-12-26 | 2027-01-09 | 2097 |  | 7 Days Work | 9181544 |
| 2099 | 36900.37000.37100.37800.38500.41500.55800.800600 | Toilet_Services above False ceiling | 21d | 2027-01-09 | 2027-01-30 | 2098 |  | 7 Days Work | 9181554 |
| 2100 | 36900.37000.37100.37800.38500.41500.55800.800700 | Toilet_False Ceiling framing | 12d | 2027-01-30 | 2027-02-11 | 2099 |  | 7 Days Work | 9181564 |
| 2101 | 36900.37000.37100.37800.38500.41500.55800.800800 | Toilet_Door Frame | 5d | 2027-02-11 | 2027-02-16 | 2100 |  | 7 Days Work | 9181574 |
| 2102 | 36900.37000.37100.37800.38500.41500.55800.800900 | Toilet_Epoxy Tile Grouting | 7d | 2027-04-13 | 2027-04-20 | 2077SS |  | 7 Days Work | 9181584 |
| 2103 | 36900.37000.37100.37800.38500.41500.55800.801000 | Toilet_False ceiling board fixing, CP Sanitary Fixture, Electric Fixture | 21d | 2027-04-20 | 2027-05-11 | 2102 |  | 7 Days Work | 9181594 |
| 2104 | 36900.37000.37100.37800.38500.41600 | **12th Habitable/14th Floor** | 245d | 2026-09-21 | 2027-05-24 |  | start no earlier than 2026-09-21 | 7 Days Work | 9170034 |
| 2105 | 36900.37000.37100.37800.38500.41600.248000 | Post Pour | 7d | 2026-09-21 | 2026-09-28 | 1435FS+15d |  | 7 Days Work | 9174594 |
| 2106 | 36900.37000.37100.37800.38500.41600.248100 | MEP Clearance -1 | 5d | 2026-09-28 | 2026-10-03 | 2105 |  | 7 Days Work | 9174604 |
| 2107 | 36900.37000.37100.37800.38500.41600.248200 | Benchmark | 1d | 2026-10-03 | 2026-10-04 | 2106 |  | 7 Days Work | 9174614 |
| 2108 | 36900.37000.37100.37800.38500.41600.248300 | Temporary Railing | 3d | 2026-10-04 | 2026-10-07 | 2107 |  | 7 Days Work | 9174624 |
| 2109 | 36900.37000.37100.37800.38500.41600.248400 | Blockwork | 10d | 2026-10-07 | 2026-10-17 | 2108 |  | 7 Days Work | 9174634 |
| 2110 | 36900.37000.37100.37800.38500.41600.248500 | MEP Clearance -2 | 10d | 2026-10-17 | 2026-10-27 | 2109 |  | 7 Days Work | 9174644 |
| 2111 | 36900.37000.37100.37800.38500.41600.248600 | Gypsum Plaster | 14d | 2026-10-27 | 2026-11-10 | 2110 |  | 7 Days Work | 9174654 |
| 2112 | 36900.37000.37100.37800.38500.41600.248700 | Kitchen Platform | 3d | 2026-11-10 | 2026-11-13 | 2111 |  | 7 Days Work | 9174664 |
| 2113 | 36900.37000.37100.37800.38500.41600.248800 | Kitchen dado | 7d | 2026-11-13 | 2026-11-20 | 2112 |  | 7 Days Work | 9174674 |
| 2114 | 36900.37000.37100.37800.38500.41600.248900 | Fire Fighting | 5d | 2026-11-20 | 2026-11-25 | 2113 |  | 7 Days Work | 9174684 |
| 2115 | 36900.37000.37100.37800.38500.41600.249000 | Anticapilary | 5d | 2026-11-25 | 2026-11-30 | 2114 |  | 7 Days Work | 9174694 |
| 2116 | 36900.37000.37100.37800.38500.41600.249100 | Stone Laying | 10d | 2027-01-02 | 2027-01-12 | 2156 |  | 7 Days Work | 9174704 |
| 2117 | 36900.37000.37100.37800.38500.41600.249200 | Tiles Laying | 7d | 2027-01-02 | 2027-01-09 | 2156 |  | 7 Days Work | 9174714 |
| 2118 | 36900.37000.37100.37800.38500.41600.249300 | 1st cutting/polishing of stone flooring | 7d | 2027-01-09 | 2027-01-16 | 2117 |  | 7 Days Work | 9174724 |
| 2119 | 36900.37000.37100.37800.38500.41600.249400 | Tiles/Stone skirting | 5d | 2027-01-16 | 2027-01-21 | 2118 |  | 7 Days Work | 9174734 |
| 2120 | 36900.37000.37100.37800.38500.41600.249500 | Protechtion sheet | 1d | 2027-01-21 | 2027-01-22 | 2119 |  | 7 Days Work | 9174744 |
| 2121 | 36900.37000.37100.37800.38500.41600.249600 | Installation of Temporary Door | 1d | 2027-01-22 | 2027-01-23 | 2120 |  | 7 Days Work | 9174754 |
| 2122 | 36900.37000.37100.37800.38500.41600.249700 | Fixing of window tracks | 5d | 2027-01-23 | 2027-01-28 | 2121 |  | 7 Days Work | 9174764 |
| 2123 | 36900.37000.37100.37800.38500.41600.249800 | Wire Pulling | 7d | 2027-01-28 | 2027-02-04 | 2122 |  | 7 Days Work | 9174774 |
| 2124 | 36900.37000.37100.37800.38500.41600.249900 | Gypsum Remaining | 5d | 2027-02-04 | 2027-02-09 | 2123 |  | 7 Days Work | 9174784 |
| 2125 | 36900.37000.37100.37800.38500.41600.250000 | Fixing of windoow shutter | 5d | 2027-02-09 | 2027-02-14 | 2124 |  | 7 Days Work | 9174794 |
| 2126 | 36900.37000.37100.37800.38500.41600.250100 | Putty Works - walls & ceiling | 15d | 2027-02-14 | 2027-03-01 | 2125 |  | 7 Days Work | 9174804 |
| 2127 | 36900.37000.37100.37800.38500.41600.250200 | False Ceiling- Framing | 10d | 2027-03-01 | 2027-03-11 | 2126 |  | 7 Days Work | 9174814 |
| 2128 | 36900.37000.37100.37800.38500.41600.250300 | Pre Hung Door | 3d | 2027-03-11 | 2027-03-14 | 2127 |  | 7 Days Work | 9174824 |
| 2129 | 36900.37000.37100.37800.38500.41600.250400 | Protechtion sheet | 2d | 2027-03-14 | 2027-03-16 | 2128 |  | 7 Days Work | 9174834 |
| 2130 | 36900.37000.37100.37800.38500.41600.250500 | Skirting near door | 2d | 2027-03-16 | 2027-03-18 | 2129 |  | 7 Days Work | 9174844 |
| 2131 | 36900.37000.37100.37800.38500.41600.250600 | Electrical Switch box fixing | 14d | 2027-03-18 | 2027-04-01 | 2130 |  | 7 Days Work | 9174854 |
| 2132 | 36900.37000.37100.37800.38500.41600.250700 | Fire Fighting painting | 5d | 2027-04-01 | 2027-04-06 | 2131 |  | 7 Days Work | 9174864 |
| 2133 | 36900.37000.37100.37800.38500.41600.250800 | Protection of all flooring, door & window hardware | 5d | 2027-04-06 | 2027-04-11 | 2132 |  | 7 Days Work | 9174874 |
| 2134 | 36900.37000.37100.37800.38500.41600.250900 | 1st coat primer- ceiling 1st & walls | 14d | 2027-04-11 | 2027-04-25 | 2133 |  | 7 Days Work | 9174884 |
| 2135 | 36900.37000.37100.37800.38500.41600.251000 | Wooden Flooring | 5d | 2027-04-25 | 2027-04-30 | 2134 |  | 7 Days Work | 9174894 |
| 2136 | 36900.37000.37100.37800.38500.41600.251100 | Removing of Temporary Railing & installation of Glass Railing | 5d | 2027-04-25 | 2027-04-30 | 2134 |  | 7 Days Work | 9174904 |
| 2137 | 36900.37000.37100.37800.38500.41600.251200 | Tile Grouting | 7d | 2027-04-25 | 2027-05-02 | 2134 |  | 7 Days Work | 9174914 |
| 2138 | 36900.37000.37100.37800.38500.41600.251300 | False Ceiling | 5d | 2027-05-02 | 2027-05-07 | 2137 |  | 7 Days Work | 9174924 |
| 2139 | 36900.37000.37100.37800.38500.41600.251400 | 2nd coat of primer | 10d | 2027-05-07 | 2027-05-17 | 2138 |  | 7 Days Work | 9174934 |
| 2140 | 36900.37000.37100.37800.38500.41600.251500 | Final cutting/polishing of stone flooring | 7d | 2027-05-17 | 2027-05-24 | 2139 |  | 7 Days Work | 9174944 |

| ID | WBS | Task | Duration | Start | Finish | Predecessors | Constraint | Calendar | Unique_Task_ID |
| --- | --- | --- | --- | --- | --- | --- | --- | --- | --- |
| 2141 | 36900.37000.37100.37800.38500.41600.55900 | **Toilet** | 237d | 2026-09-28 | 2027-05-23 |  | start no earlier than 2026-09-28 | 7 Days Work | 9170234 |
| 2142 | 36900.37000.37100.37800.38500.41600.55900.801100 | Toilet_MEP Clearance -1 | 7d | 2026-09-28 | 2026-10-05 | 2105 |  | 7 Days Work | 9181604 |
| 2143 | 36900.37000.37100.37800.38500.41600.55900.801200 | Toilet_Level Marking | 1d | 2026-10-05 | 2026-10-06 | 2142 |  | 7 Days Work | 9181614 |
| 2144 | 36900.37000.37100.37800.38500.41600.55900.801300 | Toilet_Chasing work for Electrical conduit & concealed plumbing | 5d | 2026-10-06 | 2026-10-11 | 2143 |  | 7 Days Work | 9181624 |
| 2145 | 36900.37000.37100.37800.38500.41600.55900.801400 | Toilet_Plumbing work 1st fix | 5d | 2026-10-11 | 2026-10-16 | 2144 |  | 7 Days Work | 9181634 |
| 2146 | 36900.37000.37100.37800.38500.41600.55900.801500 | Toilet_Sleeve/Bore Packing | 5d | 2026-10-16 | 2026-10-21 | 2145 |  | 7 Days Work | 9181644 |
| 2147 | 36900.37000.37100.37800.38500.41600.55900.801600 | Toilet_Waterproofing | 10d | 2026-10-21 | 2026-10-31 | 2146 |  | 7 Days Work | 9181654 |
| 2148 | 36900.37000.37100.37800.38500.41600.55900.801700 | Toilet_Screed | 1d | 2026-10-31 | 2026-11-01 | 2147 |  | 7 Days Work | 9181664 |
| 2149 | 36900.37000.37100.37800.38500.41600.55900.801800 | Toilet_Plumbing 2nd fix | 5d | 2026-11-01 | 2026-11-06 | 2148 |  | 7 Days Work | 9181674 |
| 2150 | 36900.37000.37100.37800.38500.41600.55900.801900 | Toilet_Ledge wall | 5d | 2026-11-06 | 2026-11-11 | 2149 |  | 7 Days Work | 9181684 |
| 2151 | 36900.37000.37100.37800.38500.41600.55900.802000 | Toilet_Cement Plaster | 5d | 2026-11-11 | 2026-11-16 | 2150 |  | 7 Days Work | 9181694 |
| 2152 | 36900.37000.37100.37800.38500.41600.55900.802100 | Toilet_Door Frame | 1d | 2026-11-16 | 2026-11-17 | 2151 |  | 7 Days Work | 9181704 |
| 2153 | 36900.37000.37100.37800.38500.41600.55900.802200 | Toilet_Wash basin & Couter | 3d | 2026-11-17 | 2026-11-20 | 2152 |  | 7 Days Work | 9181714 |
| 2154 | 36900.37000.37100.37800.38500.41600.55900.802300 | Toilet_Wall dado | 20d | 2026-11-20 | 2026-12-10 | 2153 |  | 7 Days Work | 9181724 |
| 2155 | 36900.37000.37100.37800.38500.41600.55900.802400 | Toilet_Granite Work-Ledge wall top | 3d | 2026-12-10 | 2026-12-13 | 2154 |  | 7 Days Work | 9181734 |
| 2156 | 36900.37000.37100.37800.38500.41600.55900.802500 | Toilet_Floor Tilling work | 20d | 2026-12-13 | 2027-01-02 | 2155 |  | 7 Days Work | 9181744 |
| 2157 | 36900.37000.37100.37800.38500.41600.55900.802600 | Toilet_1st row of dado | 5d | 2027-01-02 | 2027-01-07 | 2156 |  | 7 Days Work | 9181754 |
| 2158 | 36900.37000.37100.37800.38500.41600.55900.802700 | Toilet_Window Fixing | 14d | 2027-01-07 | 2027-01-21 | 2157 |  | 7 Days Work | 9181764 |
| 2159 | 36900.37000.37100.37800.38500.41600.55900.802800 | Toilet_Services above False ceiling | 21d | 2027-01-21 | 2027-02-11 | 2158 |  | 7 Days Work | 9181774 |
| 2160 | 36900.37000.37100.37800.38500.41600.55900.802900 | Toilet_False Ceiling framing | 12d | 2027-02-11 | 2027-02-23 | 2159 |  | 7 Days Work | 9181784 |
| 2161 | 36900.37000.37100.37800.38500.41600.55900.803000 | Toilet_Door Frame | 5d | 2027-02-23 | 2027-02-28 | 2160 |  | 7 Days Work | 9181794 |
| 2162 | 36900.37000.37100.37800.38500.41600.55900.803100 | Toilet_Epoxy Tile Grouting | 7d | 2027-04-25 | 2027-05-02 | 2137SS |  | 7 Days Work | 9181804 |
| 2163 | 36900.37000.37100.37800.38500.41600.55900.803200 | Toilet_False ceiling board fixing, CP Sanitary Fixture, Electric Fixture | 21d | 2027-05-02 | 2027-05-23 | 2162 |  | 7 Days Work | 9181814 |
| 2164 | 36900.37000.37100.37800.38500.41700 | **13th Habitable/15th Floor** | 245d | 2026-09-30 | 2027-06-02 |  | start no earlier than 2026-09-30 | 7 Days Work | 9170044 |
| 2165 | 36900.37000.37100.37800.38500.41700.251600 | Post Pour | 7d | 2026-09-30 | 2026-10-07 | 1436FS+15d |  | 7 Days Work | 9174954 |
| 2166 | 36900.37000.37100.37800.38500.41700.251700 | MEP Clearance -1 | 5d | 2026-10-07 | 2026-10-12 | 2165 |  | 7 Days Work | 9174964 |
| 2167 | 36900.37000.37100.37800.38500.41700.251800 | Benchmark | 1d | 2026-10-12 | 2026-10-13 | 2166 |  | 7 Days Work | 9174974 |
| 2168 | 36900.37000.37100.37800.38500.41700.251900 | Temporary Railing | 3d | 2026-10-13 | 2026-10-16 | 2167 |  | 7 Days Work | 9174984 |
| 2169 | 36900.37000.37100.37800.38500.41700.252000 | Blockwork | 10d | 2026-10-16 | 2026-10-26 | 2168 |  | 7 Days Work | 9174994 |
| 2170 | 36900.37000.37100.37800.38500.41700.252100 | MEP Clearance -2 | 10d | 2026-10-26 | 2026-11-05 | 2169 |  | 7 Days Work | 9175004 |
| 2171 | 36900.37000.37100.37800.38500.41700.252200 | Gypsum Plaster | 14d | 2026-11-05 | 2026-11-19 | 2170 |  | 7 Days Work | 9175014 |
| 2172 | 36900.37000.37100.37800.38500.41700.252300 | Kitchen Platform | 3d | 2026-11-19 | 2026-11-22 | 2171 |  | 7 Days Work | 9175024 |
| 2173 | 36900.37000.37100.37800.38500.41700.252400 | Kitchen dado | 7d | 2026-11-22 | 2026-11-29 | 2172 |  | 7 Days Work | 9175034 |
| 2174 | 36900.37000.37100.37800.38500.41700.252500 | Fire Fighting | 5d | 2026-11-29 | 2026-12-04 | 2173 |  | 7 Days Work | 9175044 |
| 2175 | 36900.37000.37100.37800.38500.41700.252600 | Anticapilary | 5d | 2026-12-04 | 2026-12-09 | 2174 |  | 7 Days Work | 9175054 |
| 2176 | 36900.37000.37100.37800.38500.41700.252700 | Stone Laying | 10d | 2027-01-11 | 2027-01-21 | 2216 |  | 7 Days Work | 9175064 |
| 2177 | 36900.37000.37100.37800.38500.41700.252800 | Tiles Laying | 7d | 2027-01-11 | 2027-01-18 | 2216 |  | 7 Days Work | 9175074 |
| 2178 | 36900.37000.37100.37800.38500.41700.252900 | 1st cutting/polishing of stone flooring | 7d | 2027-01-18 | 2027-01-25 | 2177 |  | 7 Days Work | 9175084 |
| 2179 | 36900.37000.37100.37800.38500.41700.253000 | Tiles/Stone skirting | 5d | 2027-01-25 | 2027-01-30 | 2178 |  | 7 Days Work | 9175094 |
| 2180 | 36900.37000.37100.37800.38500.41700.253100 | Protechtion sheet | 1d | 2027-01-30 | 2027-01-31 | 2179 |  | 7 Days Work | 9175104 |
| 2181 | 36900.37000.37100.37800.38500.41700.253200 | Installation of Temporary Door | 1d | 2027-01-31 | 2027-02-01 | 2180 |  | 7 Days Work | 9175114 |
| 2182 | 36900.37000.37100.37800.38500.41700.253300 | Fixing of window tracks | 5d | 2027-02-01 | 2027-02-06 | 2181 |  | 7 Days Work | 9175124 |
| 2183 | 36900.37000.37100.37800.38500.41700.253400 | Wire Pulling | 7d | 2027-02-06 | 2027-02-13 | 2182 |  | 7 Days Work | 9175134 |
| 2184 | 36900.37000.37100.37800.38500.41700.253500 | Gypsum Remaining | 5d | 2027-02-13 | 2027-02-18 | 2183 |  | 7 Days Work | 9175144 |
| 2185 | 36900.37000.37100.37800.38500.41700.253600 | Fixing of windoow shutter | 5d | 2027-02-18 | 2027-02-23 | 2184 |  | 7 Days Work | 9175154 |
| 2186 | 36900.37000.37100.37800.38500.41700.253700 | Putty Works - walls & ceiling | 15d | 2027-02-23 | 2027-03-10 | 2185 |  | 7 Days Work | 9175164 |
| 2187 | 36900.37000.37100.37800.38500.41700.253800 | False Ceiling- Framing | 10d | 2027-03-10 | 2027-03-20 | 2186 |  | 7 Days Work | 9175174 |
| 2188 | 36900.37000.37100.37800.38500.41700.253900 | Pre Hung Door | 3d | 2027-03-20 | 2027-03-23 | 2187 |  | 7 Days Work | 9175184 |
| 2189 | 36900.37000.37100.37800.38500.41700.254000 | Protechtion sheet | 2d | 2027-03-23 | 2027-03-25 | 2188 |  | 7 Days Work | 9175194 |
| 2190 | 36900.37000.37100.37800.38500.41700.254100 | Skirting near door | 2d | 2027-03-25 | 2027-03-27 | 2189 |  | 7 Days Work | 9175204 |
| 2191 | 36900.37000.37100.37800.38500.41700.254200 | Electrical Switch box fixing | 14d | 2027-03-27 | 2027-04-10 | 2190 |  | 7 Days Work | 9175214 |
| 2192 | 36900.37000.37100.37800.38500.41700.254300 | Fire Fighting painting | 5d | 2027-04-10 | 2027-04-15 | 2191 |  | 7 Days Work | 9175224 |
| 2193 | 36900.37000.37100.37800.38500.41700.254400 | Protection of all flooring, door & window hardware | 5d | 2027-04-15 | 2027-04-20 | 2192 |  | 7 Days Work | 9175234 |
| 2194 | 36900.37000.37100.37800.38500.41700.254500 | 1st coat primer- ceiling 1st & walls | 14d | 2027-04-20 | 2027-05-04 | 2193 |  | 7 Days Work | 9175244 |
| 2195 | 36900.37000.37100.37800.38500.41700.254600 | Wooden Flooring | 5d | 2027-05-04 | 2027-05-09 | 2194 |  | 7 Days Work | 9175254 |
| 2196 | 36900.37000.37100.37800.38500.41700.254700 | Removing of Temporary Railing & installation of Glass Railing | 5d | 2027-05-04 | 2027-05-09 | 2194 |  | 7 Days Work | 9175264 |
| 2197 | 36900.37000.37100.37800.38500.41700.254800 | Tile Grouting | 7d | 2027-05-04 | 2027-05-11 | 2194 |  | 7 Days Work | 9175274 |
| 2198 | 36900.37000.37100.37800.38500.41700.254900 | False Ceiling | 5d | 2027-05-11 | 2027-05-16 | 2197 |  | 7 Days Work | 9175284 |
| 2199 | 36900.37000.37100.37800.38500.41700.255000 | 2nd coat of primer | 10d | 2027-05-16 | 2027-05-26 | 2198 |  | 7 Days Work | 9175294 |
| 2200 | 36900.37000.37100.37800.38500.41700.255100 | Final cutting/polishing of stone flooring | 7d | 2027-05-26 | 2027-06-02 | 2199 |  | 7 Days Work | 9175304 |

| ID | WBS | Task | Duration | Start | Finish | Predecessors | Constraint | Calendar | Unique_Task_ID |
| --- | --- | --- | --- | --- | --- | --- | --- | --- | --- |
| 2201 | 36900.37000.37100.37800.38500.41700.56000 | **Toilet** | 237d | 2026-10-07 | 2027-06-01 |  | start no earlier than 2026-10-07 | 7 Days Work | 9170244 |
| 2202 | 36900.37000.37100.37800.38500.41700.56000.803300 | Toilet_MEP Clearance -1 | 7d | 2026-10-07 | 2026-10-14 | 2165 |  | 7 Days Work | 9181824 |
| 2203 | 36900.37000.37100.37800.38500.41700.56000.803400 | Toilet_Level Marking | 1d | 2026-10-14 | 2026-10-15 | 2202 |  | 7 Days Work | 9181834 |
| 2204 | 36900.37000.37100.37800.38500.41700.56000.803500 | Toilet_Chasing work for Electrical conduit & concealed plumbing | 5d | 2026-10-15 | 2026-10-20 | 2203 |  | 7 Days Work | 9181844 |
| 2205 | 36900.37000.37100.37800.38500.41700.56000.803600 | Toilet_Plumbing work 1st fix | 5d | 2026-10-20 | 2026-10-25 | 2204 |  | 7 Days Work | 9181854 |
| 2206 | 36900.37000.37100.37800.38500.41700.56000.803700 | Toilet_Sleeve/Bore Packing | 5d | 2026-10-25 | 2026-10-30 | 2205 |  | 7 Days Work | 9181864 |
| 2207 | 36900.37000.37100.37800.38500.41700.56000.803800 | Toilet_Waterproofing | 10d | 2026-10-30 | 2026-11-09 | 2206 |  | 7 Days Work | 9181874 |
| 2208 | 36900.37000.37100.37800.38500.41700.56000.803900 | Toilet_Screed | 1d | 2026-11-09 | 2026-11-10 | 2207 |  | 7 Days Work | 9181884 |
| 2209 | 36900.37000.37100.37800.38500.41700.56000.804000 | Toilet_Plumbing 2nd fix | 5d | 2026-11-10 | 2026-11-15 | 2208 |  | 7 Days Work | 9181894 |
| 2210 | 36900.37000.37100.37800.38500.41700.56000.804100 | Toilet_Ledge wall | 5d | 2026-11-15 | 2026-11-20 | 2209 |  | 7 Days Work | 9181904 |
| 2211 | 36900.37000.37100.37800.38500.41700.56000.804200 | Toilet_Cement Plaster | 5d | 2026-11-20 | 2026-11-25 | 2210 |  | 7 Days Work | 9181914 |
| 2212 | 36900.37000.37100.37800.38500.41700.56000.804300 | Toilet_Door Frame | 1d | 2026-11-25 | 2026-11-26 | 2211 |  | 7 Days Work | 9181924 |
| 2213 | 36900.37000.37100.37800.38500.41700.56000.804400 | Toilet_Wash basin & Couter | 3d | 2026-11-26 | 2026-11-29 | 2212 |  | 7 Days Work | 9181934 |
| 2214 | 36900.37000.37100.37800.38500.41700.56000.804500 | Toilet_Wall dado | 20d | 2026-11-29 | 2026-12-19 | 2213 |  | 7 Days Work | 9181944 |
| 2215 | 36900.37000.37100.37800.38500.41700.56000.804600 | Toilet_Granite Work-Ledge wall top | 3d | 2026-12-19 | 2026-12-22 | 2214 |  | 7 Days Work | 9181954 |
| 2216 | 36900.37000.37100.37800.38500.41700.56000.804700 | Toilet_Floor Tilling work | 20d | 2026-12-22 | 2027-01-11 | 2215 |  | 7 Days Work | 9181964 |
| 2217 | 36900.37000.37100.37800.38500.41700.56000.804800 | Toilet_1st row of dado | 5d | 2027-01-11 | 2027-01-16 | 2216 |  | 7 Days Work | 9181974 |
| 2218 | 36900.37000.37100.37800.38500.41700.56000.804900 | Toilet_Window Fixing | 14d | 2027-01-16 | 2027-01-30 | 2217 |  | 7 Days Work | 9181984 |
| 2219 | 36900.37000.37100.37800.38500.41700.56000.805000 | Toilet_Services above False ceiling | 21d | 2027-01-30 | 2027-02-20 | 2218 |  | 7 Days Work | 9181994 |
| 2220 | 36900.37000.37100.37800.38500.41700.56000.805100 | Toilet_False Ceiling framing | 12d | 2027-02-20 | 2027-03-04 | 2219 |  | 7 Days Work | 9182004 |
| 2221 | 36900.37000.37100.37800.38500.41700.56000.805200 | Toilet_Door Frame | 5d | 2027-03-04 | 2027-03-09 | 2220 |  | 7 Days Work | 9182014 |
| 2222 | 36900.37000.37100.37800.38500.41700.56000.805300 | Toilet_Epoxy Tile Grouting | 7d | 2027-05-04 | 2027-05-11 | 2197SS |  | 7 Days Work | 9182024 |
| 2223 | 36900.37000.37100.37800.38500.41700.56000.805400 | Toilet_False ceiling board fixing, CP Sanitary Fixture, Electric Fixture | 21d | 2027-05-11 | 2027-06-01 | 2222 |  | 7 Days Work | 9182034 |
| 2224 | 36900.37000.37100.37800.38500.41800 | **14th Habitable/16th Floor** | 245d | 2026-10-09 | 2027-06-11 |  | start no earlier than 2026-10-09 | 7 Days Work | 9170054 |
| 2225 | 36900.37000.37100.37800.38500.41800.255200 | Post Pour | 7d | 2026-10-09 | 2026-10-16 | 1437FS+15d |  | 7 Days Work | 9175314 |
| 2226 | 36900.37000.37100.37800.38500.41800.255300 | MEP Clearance -1 | 5d | 2026-10-16 | 2026-10-21 | 2225 |  | 7 Days Work | 9175324 |
| 2227 | 36900.37000.37100.37800.38500.41800.255400 | Benchmark | 1d | 2026-10-21 | 2026-10-22 | 2226 |  | 7 Days Work | 9175334 |
| 2228 | 36900.37000.37100.37800.38500.41800.255500 | Temporary Railing | 3d | 2026-10-22 | 2026-10-25 | 2227 |  | 7 Days Work | 9175344 |
| 2229 | 36900.37000.37100.37800.38500.41800.255600 | Blockwork | 10d | 2026-10-25 | 2026-11-04 | 2228 |  | 7 Days Work | 9175354 |
| 2230 | 36900.37000.37100.37800.38500.41800.255700 | MEP Clearance -2 | 10d | 2026-11-04 | 2026-11-14 | 2229 |  | 7 Days Work | 9175364 |
| 2231 | 36900.37000.37100.37800.38500.41800.255800 | Gypsum Plaster | 14d | 2026-11-14 | 2026-11-28 | 2230 |  | 7 Days Work | 9175374 |
| 2232 | 36900.37000.37100.37800.38500.41800.255900 | Kitchen Platform | 3d | 2026-11-28 | 2026-12-01 | 2231 |  | 7 Days Work | 9175384 |
| 2233 | 36900.37000.37100.37800.38500.41800.256000 | Kitchen dado | 7d | 2026-12-01 | 2026-12-08 | 2232 |  | 7 Days Work | 9175394 |
| 2234 | 36900.37000.37100.37800.38500.41800.256100 | Fire Fighting | 5d | 2026-12-08 | 2026-12-13 | 2233 |  | 7 Days Work | 9175404 |
| 2235 | 36900.37000.37100.37800.38500.41800.256200 | Anticapilary | 5d | 2026-12-13 | 2026-12-18 | 2234 |  | 7 Days Work | 9175414 |
| 2236 | 36900.37000.37100.37800.38500.41800.256300 | Stone Laying | 10d | 2027-01-20 | 2027-01-30 | 2276 |  | 7 Days Work | 9175424 |
| 2237 | 36900.37000.37100.37800.38500.41800.256400 | Tiles Laying | 7d | 2027-01-20 | 2027-01-27 | 2276 |  | 7 Days Work | 9175434 |
| 2238 | 36900.37000.37100.37800.38500.41800.256500 | 1st cutting/polishing of stone flooring | 7d | 2027-01-27 | 2027-02-03 | 2237 |  | 7 Days Work | 9175444 |
| 2239 | 36900.37000.37100.37800.38500.41800.256600 | Tiles/Stone skirting | 5d | 2027-02-03 | 2027-02-08 | 2238 |  | 7 Days Work | 9175454 |
| 2240 | 36900.37000.37100.37800.38500.41800.256700 | Protechtion sheet | 1d | 2027-02-08 | 2027-02-09 | 2239 |  | 7 Days Work | 9175464 |
| 2241 | 36900.37000.37100.37800.38500.41800.256800 | Installation of Temporary Door | 1d | 2027-02-09 | 2027-02-10 | 2240 |  | 7 Days Work | 9175474 |
| 2242 | 36900.37000.37100.37800.38500.41800.256900 | Fixing of window tracks | 5d | 2027-02-10 | 2027-02-15 | 2241 |  | 7 Days Work | 9175484 |
| 2243 | 36900.37000.37100.37800.38500.41800.257000 | Wire Pulling | 7d | 2027-02-15 | 2027-02-22 | 2242 |  | 7 Days Work | 9175494 |
| 2244 | 36900.37000.37100.37800.38500.41800.257100 | Gypsum Remaining | 5d | 2027-02-22 | 2027-02-27 | 2243 |  | 7 Days Work | 9175504 |
| 2245 | 36900.37000.37100.37800.38500.41800.257200 | Fixing of windoow shutter | 5d | 2027-02-27 | 2027-03-04 | 2244 |  | 7 Days Work | 9175514 |
| 2246 | 36900.37000.37100.37800.38500.41800.257300 | Putty Works - walls & ceiling | 15d | 2027-03-04 | 2027-03-19 | 2245 |  | 7 Days Work | 9175524 |
| 2247 | 36900.37000.37100.37800.38500.41800.257400 | False Ceiling- Framing | 10d | 2027-03-19 | 2027-03-29 | 2246 |  | 7 Days Work | 9175534 |
| 2248 | 36900.37000.37100.37800.38500.41800.257500 | Pre Hung Door | 3d | 2027-03-29 | 2027-04-01 | 2247 |  | 7 Days Work | 9175544 |
| 2249 | 36900.37000.37100.37800.38500.41800.257600 | Protechtion sheet | 2d | 2027-04-01 | 2027-04-03 | 2248 |  | 7 Days Work | 9175554 |
| 2250 | 36900.37000.37100.37800.38500.41800.257700 | Skirting near door | 2d | 2027-04-03 | 2027-04-05 | 2249 |  | 7 Days Work | 9175564 |
| 2251 | 36900.37000.37100.37800.38500.41800.257800 | Electrical Switch box fixing | 14d | 2027-04-05 | 2027-04-19 | 2250 |  | 7 Days Work | 9175574 |
| 2252 | 36900.37000.37100.37800.38500.41800.257900 | Fire Fighting painting | 5d | 2027-04-19 | 2027-04-24 | 2251 |  | 7 Days Work | 9175584 |
| 2253 | 36900.37000.37100.37800.38500.41800.258000 | Protection of all flooring, door & window hardware | 5d | 2027-04-24 | 2027-04-29 | 2252 |  | 7 Days Work | 9175594 |
| 2254 | 36900.37000.37100.37800.38500.41800.258100 | 1st coat primer- ceiling 1st & walls | 14d | 2027-04-29 | 2027-05-13 | 2253 |  | 7 Days Work | 9175604 |
| 2255 | 36900.37000.37100.37800.38500.41800.258200 | Wooden Flooring | 5d | 2027-05-13 | 2027-05-18 | 2254 |  | 7 Days Work | 9175614 |
| 2256 | 36900.37000.37100.37800.38500.41800.258300 | Removing of Temporary Railing & installation of Glass Railing | 5d | 2027-05-13 | 2027-05-18 | 2254 |  | 7 Days Work | 9175624 |
| 2257 | 36900.37000.37100.37800.38500.41800.258400 | Tile Grouting | 7d | 2027-05-13 | 2027-05-20 | 2254 |  | 7 Days Work | 9175634 |
| 2258 | 36900.37000.37100.37800.38500.41800.258500 | False Ceiling | 5d | 2027-05-20 | 2027-05-25 | 2257 |  | 7 Days Work | 9175644 |
| 2259 | 36900.37000.37100.37800.38500.41800.258600 | 2nd coat of primer | 10d | 2027-05-25 | 2027-06-04 | 2258 |  | 7 Days Work | 9175654 |
| 2260 | 36900.37000.37100.37800.38500.41800.258700 | Final cutting/polishing of stone flooring | 7d | 2027-06-04 | 2027-06-11 | 2259 |  | 7 Days Work | 9175664 |

| ID | WBS | Task | Duration | Start | Finish | Predecessors | Constraint | Calendar | Unique_Task_ID |
| --- | --- | --- | --- | --- | --- | --- | --- | --- | --- |
| 2261 | 36900.37000.37100.37800.38500.41800.56100 | **Toilet** | 237d | 2026-10-16 | 2027-06-10 |  | start no earlier than 2026-10-16 | 7 Days Work | 9170254 |
| 2262 | 36900.37000.37100.37800.38500.41800.56100.805500 | Toilet_MEP Clearance -1 | 7d | 2026-10-16 | 2026-10-23 | 2225 |  | 7 Days Work | 9182044 |
| 2263 | 36900.37000.37100.37800.38500.41800.56100.805600 | Toilet_Level Marking | 1d | 2026-10-23 | 2026-10-24 | 2262 |  | 7 Days Work | 9182054 |
| 2264 | 36900.37000.37100.37800.38500.41800.56100.805700 | Toilet_Chasing work for Electrical conduit & concealed plumbing | 5d | 2026-10-24 | 2026-10-29 | 2263 |  | 7 Days Work | 9182064 |
| 2265 | 36900.37000.37100.37800.38500.41800.56100.805800 | Toilet_Plumbing work 1st fix | 5d | 2026-10-29 | 2026-11-03 | 2264 |  | 7 Days Work | 9182074 |
| 2266 | 36900.37000.37100.37800.38500.41800.56100.805900 | Toilet_Sleeve/Bore Packing | 5d | 2026-11-03 | 2026-11-08 | 2265 |  | 7 Days Work | 9182084 |
| 2267 | 36900.37000.37100.37800.38500.41800.56100.806000 | Toilet_Waterproofing | 10d | 2026-11-08 | 2026-11-18 | 2266 |  | 7 Days Work | 9182094 |
| 2268 | 36900.37000.37100.37800.38500.41800.56100.806100 | Toilet_Screed | 1d | 2026-11-18 | 2026-11-19 | 2267 |  | 7 Days Work | 9182104 |
| 2269 | 36900.37000.37100.37800.38500.41800.56100.806200 | Toilet_Plumbing 2nd fix | 5d | 2026-11-19 | 2026-11-24 | 2268 |  | 7 Days Work | 9182114 |
| 2270 | 36900.37000.37100.37800.38500.41800.56100.806300 | Toilet_Ledge wall | 5d | 2026-11-24 | 2026-11-29 | 2269 |  | 7 Days Work | 9182124 |
| 2271 | 36900.37000.37100.37800.38500.41800.56100.806400 | Toilet_Cement Plaster | 5d | 2026-11-29 | 2026-12-04 | 2270 |  | 7 Days Work | 9182134 |
| 2272 | 36900.37000.37100.37800.38500.41800.56100.806500 | Toilet_Door Frame | 1d | 2026-12-04 | 2026-12-05 | 2271 |  | 7 Days Work | 9182144 |
| 2273 | 36900.37000.37100.37800.38500.41800.56100.806600 | Toilet_Wash basin & Couter | 3d | 2026-12-05 | 2026-12-08 | 2272 |  | 7 Days Work | 9182154 |
| 2274 | 36900.37000.37100.37800.38500.41800.56100.806700 | Toilet_Wall dado | 20d | 2026-12-08 | 2026-12-28 | 2273 |  | 7 Days Work | 9182164 |
| 2275 | 36900.37000.37100.37800.38500.41800.56100.806800 | Toilet_Granite Work-Ledge wall top | 3d | 2026-12-28 | 2026-12-31 | 2274 |  | 7 Days Work | 9182174 |
| 2276 | 36900.37000.37100.37800.38500.41800.56100.806900 | Toilet_Floor Tilling work | 20d | 2026-12-31 | 2027-01-20 | 2275 |  | 7 Days Work | 9182184 |
| 2277 | 36900.37000.37100.37800.38500.41800.56100.807000 | Toilet_1st row of dado | 5d | 2027-01-20 | 2027-01-25 | 2276 |  | 7 Days Work | 9182194 |
| 2278 | 36900.37000.37100.37800.38500.41800.56100.807100 | Toilet_Window Fixing | 14d | 2027-01-25 | 2027-02-08 | 2277 |  | 7 Days Work | 9182204 |
| 2279 | 36900.37000.37100.37800.38500.41800.56100.807200 | Toilet_Services above False ceiling | 21d | 2027-02-08 | 2027-03-01 | 2278 |  | 7 Days Work | 9182214 |
| 2280 | 36900.37000.37100.37800.38500.41800.56100.807300 | Toilet_False Ceiling framing | 12d | 2027-03-01 | 2027-03-13 | 2279 |  | 7 Days Work | 9182224 |
| 2281 | 36900.37000.37100.37800.38500.41800.56100.807400 | Toilet_Door Frame | 5d | 2027-03-13 | 2027-03-18 | 2280 |  | 7 Days Work | 9182234 |
| 2282 | 36900.37000.37100.37800.38500.41800.56100.807500 | Toilet_Epoxy Tile Grouting | 7d | 2027-05-13 | 2027-05-20 | 2257SS |  | 7 Days Work | 9182244 |
| 2283 | 36900.37000.37100.37800.38500.41800.56100.807600 | Toilet_False ceiling board fixing, CP Sanitary Fixture, Electric Fixture | 21d | 2027-05-20 | 2027-06-10 | 2282 |  | 7 Days Work | 9182254 |
| 2284 | 36900.37000.37100.37800.38500.41900 | **15th Habitable/17th Floor** | 245d | 2026-10-18 | 2027-06-20 |  | start no earlier than 2026-10-18 | 7 Days Work | 9170064 |
| 2285 | 36900.37000.37100.37800.38500.41900.258800 | Post Pour | 7d | 2026-10-18 | 2026-10-25 | 1438FS+15d |  | 7 Days Work | 9175674 |
| 2286 | 36900.37000.37100.37800.38500.41900.258900 | MEP Clearance -1 | 5d | 2026-10-25 | 2026-10-30 | 2285 |  | 7 Days Work | 9175684 |
| 2287 | 36900.37000.37100.37800.38500.41900.259000 | Benchmark | 1d | 2026-10-30 | 2026-10-31 | 2286 |  | 7 Days Work | 9175694 |
| 2288 | 36900.37000.37100.37800.38500.41900.259100 | Temporary Railing | 3d | 2026-10-31 | 2026-11-03 | 2287 |  | 7 Days Work | 9175704 |
| 2289 | 36900.37000.37100.37800.38500.41900.259200 | Blockwork | 10d | 2026-11-03 | 2026-11-13 | 2288 |  | 7 Days Work | 9175714 |
| 2290 | 36900.37000.37100.37800.38500.41900.259300 | MEP Clearance -2 | 10d | 2026-11-13 | 2026-11-23 | 2289 |  | 7 Days Work | 9175724 |
| 2291 | 36900.37000.37100.37800.38500.41900.259400 | Gypsum Plaster | 14d | 2026-11-23 | 2026-12-07 | 2290 |  | 7 Days Work | 9175734 |
| 2292 | 36900.37000.37100.37800.38500.41900.259500 | Kitchen Platform | 3d | 2026-12-07 | 2026-12-10 | 2291 |  | 7 Days Work | 9175744 |
| 2293 | 36900.37000.37100.37800.38500.41900.259600 | Kitchen dado | 7d | 2026-12-10 | 2026-12-17 | 2292 |  | 7 Days Work | 9175754 |
| 2294 | 36900.37000.37100.37800.38500.41900.259700 | Fire Fighting | 5d | 2026-12-17 | 2026-12-22 | 2293 |  | 7 Days Work | 9175764 |
| 2295 | 36900.37000.37100.37800.38500.41900.259800 | Anticapilary | 5d | 2026-12-22 | 2026-12-27 | 2294 |  | 7 Days Work | 9175774 |
| 2296 | 36900.37000.37100.37800.38500.41900.259900 | Stone Laying | 10d | 2027-01-29 | 2027-02-08 | 2336 |  | 7 Days Work | 9175784 |
| 2297 | 36900.37000.37100.37800.38500.41900.260000 | Tiles Laying | 7d | 2027-01-29 | 2027-02-05 | 2336 |  | 7 Days Work | 9175794 |
| 2298 | 36900.37000.37100.37800.38500.41900.260100 | 1st cutting/polishing of stone flooring | 7d | 2027-02-05 | 2027-02-12 | 2297 |  | 7 Days Work | 9175804 |
| 2299 | 36900.37000.37100.37800.38500.41900.260200 | Tiles/Stone skirting | 5d | 2027-02-12 | 2027-02-17 | 2298 |  | 7 Days Work | 9175814 |
| 2300 | 36900.37000.37100.37800.38500.41900.260300 | Protechtion sheet | 1d | 2027-02-17 | 2027-02-18 | 2299 |  | 7 Days Work | 9175824 |
| 2301 | 36900.37000.37100.37800.38500.41900.260400 | Installation of Temporary Door | 1d | 2027-02-18 | 2027-02-19 | 2300 |  | 7 Days Work | 9175834 |
| 2302 | 36900.37000.37100.37800.38500.41900.260500 | Fixing of window tracks | 5d | 2027-02-19 | 2027-02-24 | 2301 |  | 7 Days Work | 9175844 |
| 2303 | 36900.37000.37100.37800.38500.41900.260600 | Wire Pulling | 7d | 2027-02-24 | 2027-03-03 | 2302 |  | 7 Days Work | 9175854 |
| 2304 | 36900.37000.37100.37800.38500.41900.260700 | Gypsum Remaining | 5d | 2027-03-03 | 2027-03-08 | 2303 |  | 7 Days Work | 9175864 |
| 2305 | 36900.37000.37100.37800.38500.41900.260800 | Fixing of windoow shutter | 5d | 2027-03-08 | 2027-03-13 | 2304 |  | 7 Days Work | 9175874 |
| 2306 | 36900.37000.37100.37800.38500.41900.260900 | Putty Works - walls & ceiling | 15d | 2027-03-13 | 2027-03-28 | 2305 |  | 7 Days Work | 9175884 |
| 2307 | 36900.37000.37100.37800.38500.41900.261000 | False Ceiling- Framing | 10d | 2027-03-28 | 2027-04-07 | 2306 |  | 7 Days Work | 9175894 |
| 2308 | 36900.37000.37100.37800.38500.41900.261100 | Pre Hung Door | 3d | 2027-04-07 | 2027-04-10 | 2307 |  | 7 Days Work | 9175904 |
| 2309 | 36900.37000.37100.37800.38500.41900.261200 | Protechtion sheet | 2d | 2027-04-10 | 2027-04-12 | 2308 |  | 7 Days Work | 9175914 |
| 2310 | 36900.37000.37100.37800.38500.41900.261300 | Skirting near door | 2d | 2027-04-12 | 2027-04-14 | 2309 |  | 7 Days Work | 9175924 |
| 2311 | 36900.37000.37100.37800.38500.41900.261400 | Electrical Switch box fixing | 14d | 2027-04-14 | 2027-04-28 | 2310 |  | 7 Days Work | 9175934 |
| 2312 | 36900.37000.37100.37800.38500.41900.261500 | Fire Fighting painting | 5d | 2027-04-28 | 2027-05-03 | 2311 |  | 7 Days Work | 9175944 |
| 2313 | 36900.37000.37100.37800.38500.41900.261600 | Protection of all flooring, door & window hardware | 5d | 2027-05-03 | 2027-05-08 | 2312 |  | 7 Days Work | 9175954 |
| 2314 | 36900.37000.37100.37800.38500.41900.261700 | 1st coat primer- ceiling 1st & walls | 14d | 2027-05-08 | 2027-05-22 | 2313 |  | 7 Days Work | 9175964 |
| 2315 | 36900.37000.37100.37800.38500.41900.261800 | Wooden Flooring | 5d | 2027-05-22 | 2027-05-27 | 2314 |  | 7 Days Work | 9175974 |
| 2316 | 36900.37000.37100.37800.38500.41900.261900 | Removing of Temporary Railing & installation of Glass Railing | 5d | 2027-05-22 | 2027-05-27 | 2314 |  | 7 Days Work | 9175984 |
| 2317 | 36900.37000.37100.37800.38500.41900.262000 | Tile Grouting | 7d | 2027-05-22 | 2027-05-29 | 2314 |  | 7 Days Work | 9175994 |
| 2318 | 36900.37000.37100.37800.38500.41900.262100 | False Ceiling | 5d | 2027-05-29 | 2027-06-03 | 2317 |  | 7 Days Work | 9176004 |
| 2319 | 36900.37000.37100.37800.38500.41900.262200 | 2nd coat of primer | 10d | 2027-06-03 | 2027-06-13 | 2318 |  | 7 Days Work | 9176014 |
| 2320 | 36900.37000.37100.37800.38500.41900.262300 | Final cutting/polishing of stone flooring | 7d | 2027-06-13 | 2027-06-20 | 2319 |  | 7 Days Work | 9176024 |

| ID | WBS | Task | Duration | Start | Finish | Predecessors | Constraint | Calendar | Unique_Task_ID |
| --- | --- | --- | --- | --- | --- | --- | --- | --- | --- |
| 2321 | 36900.37000.37100.37800.38500.41900.56200 | **Toilet** | 237d | 2026-10-25 | 2027-06-19 |  | start no earlier than 2026-10-25 | 7 Days Work | 9170264 |
| 2322 | 36900.37000.37100.37800.38500.41900.56200.807700 | Toilet_MEP Clearance -1 | 7d | 2026-10-25 | 2026-11-01 | 2285 |  | 7 Days Work | 9182264 |
| 2323 | 36900.37000.37100.37800.38500.41900.56200.807800 | Toilet_Level Marking | 1d | 2026-11-01 | 2026-11-02 | 2322 |  | 7 Days Work | 9182274 |
| 2324 | 36900.37000.37100.37800.38500.41900.56200.807900 | Toilet_Chasing work for Electrical conduit & concealed plumbing | 5d | 2026-11-02 | 2026-11-07 | 2323 |  | 7 Days Work | 9182284 |
| 2325 | 36900.37000.37100.37800.38500.41900.56200.808000 | Toilet_Plumbing work 1st fix | 5d | 2026-11-07 | 2026-11-12 | 2324 |  | 7 Days Work | 9182294 |
| 2326 | 36900.37000.37100.37800.38500.41900.56200.808100 | Toilet_Sleeve/Bore Packing | 5d | 2026-11-12 | 2026-11-17 | 2325 |  | 7 Days Work | 9182304 |
| 2327 | 36900.37000.37100.37800.38500.41900.56200.808200 | Toilet_Waterproofing | 10d | 2026-11-17 | 2026-11-27 | 2326 |  | 7 Days Work | 9182314 |
| 2328 | 36900.37000.37100.37800.38500.41900.56200.808300 | Toilet_Screed | 1d | 2026-11-27 | 2026-11-28 | 2327 |  | 7 Days Work | 9182324 |
| 2329 | 36900.37000.37100.37800.38500.41900.56200.808400 | Toilet_Plumbing 2nd fix | 5d | 2026-11-28 | 2026-12-03 | 2328 |  | 7 Days Work | 9182334 |
| 2330 | 36900.37000.37100.37800.38500.41900.56200.808500 | Toilet_Ledge wall | 5d | 2026-12-03 | 2026-12-08 | 2329 |  | 7 Days Work | 9182344 |
| 2331 | 36900.37000.37100.37800.38500.41900.56200.808600 | Toilet_Cement Plaster | 5d | 2026-12-08 | 2026-12-13 | 2330 |  | 7 Days Work | 9182354 |
| 2332 | 36900.37000.37100.37800.38500.41900.56200.808700 | Toilet_Door Frame | 1d | 2026-12-13 | 2026-12-14 | 2331 |  | 7 Days Work | 9182364 |
| 2333 | 36900.37000.37100.37800.38500.41900.56200.808800 | Toilet_Wash basin & Couter | 3d | 2026-12-14 | 2026-12-17 | 2332 |  | 7 Days Work | 9182374 |
| 2334 | 36900.37000.37100.37800.38500.41900.56200.808900 | Toilet_Wall dado | 20d | 2026-12-17 | 2027-01-06 | 2333 |  | 7 Days Work | 9182384 |
| 2335 | 36900.37000.37100.37800.38500.41900.56200.809000 | Toilet_Granite Work-Ledge wall top | 3d | 2027-01-06 | 2027-01-09 | 2334 |  | 7 Days Work | 9182394 |
| 2336 | 36900.37000.37100.37800.38500.41900.56200.809100 | Toilet_Floor Tilling work | 20d | 2027-01-09 | 2027-01-29 | 2335 |  | 7 Days Work | 9182404 |
| 2337 | 36900.37000.37100.37800.38500.41900.56200.809200 | Toilet_1st row of dado | 5d | 2027-01-29 | 2027-02-03 | 2336 |  | 7 Days Work | 9182414 |
| 2338 | 36900.37000.37100.37800.38500.41900.56200.809300 | Toilet_Window Fixing | 14d | 2027-02-03 | 2027-02-17 | 2337 |  | 7 Days Work | 9182424 |
| 2339 | 36900.37000.37100.37800.38500.41900.56200.809400 | Toilet_Services above False ceiling | 21d | 2027-02-17 | 2027-03-10 | 2338 |  | 7 Days Work | 9182434 |
| 2340 | 36900.37000.37100.37800.38500.41900.56200.809500 | Toilet_False Ceiling framing | 12d | 2027-03-10 | 2027-03-22 | 2339 |  | 7 Days Work | 9182444 |
| 2341 | 36900.37000.37100.37800.38500.41900.56200.809600 | Toilet_Door Frame | 5d | 2027-03-22 | 2027-03-27 | 2340 |  | 7 Days Work | 9182454 |
| 2342 | 36900.37000.37100.37800.38500.41900.56200.809700 | Toilet_Epoxy Tile Grouting | 7d | 2027-05-22 | 2027-05-29 | 2317SS |  | 7 Days Work | 9182464 |
| 2343 | 36900.37000.37100.37800.38500.41900.56200.809800 | Toilet_False ceiling board fixing, CP Sanitary Fixture, Electric Fixture | 21d | 2027-05-29 | 2027-06-19 | 2342 |  | 7 Days Work | 9182474 |
| 2344 | 36900.37000.37100.37800.38500.42000 | **16th Habitable/18th Floor** | 245d | 2026-10-30 | 2027-07-02 |  | start no earlier than 2026-10-30 | 7 Days Work | 9170074 |
| 2345 | 36900.37000.37100.37800.38500.42000.262400 | Post Pour | 7d | 2026-10-30 | 2026-11-06 | 1439FS+15d |  | 7 Days Work | 9176034 |
| 2346 | 36900.37000.37100.37800.38500.42000.262500 | MEP Clearance -1 | 5d | 2026-11-06 | 2026-11-11 | 2345 |  | 7 Days Work | 9176044 |
| 2347 | 36900.37000.37100.37800.38500.42000.262600 | Benchmark | 1d | 2026-11-11 | 2026-11-12 | 2346 |  | 7 Days Work | 9176054 |
| 2348 | 36900.37000.37100.37800.38500.42000.262700 | Temporary Railing | 3d | 2026-11-12 | 2026-11-15 | 2347 |  | 7 Days Work | 9176064 |
| 2349 | 36900.37000.37100.37800.38500.42000.262800 | Blockwork | 10d | 2026-11-15 | 2026-11-25 | 2348 |  | 7 Days Work | 9176074 |
| 2350 | 36900.37000.37100.37800.38500.42000.262900 | MEP Clearance -2 | 10d | 2026-11-25 | 2026-12-05 | 2349 |  | 7 Days Work | 9176084 |
| 2351 | 36900.37000.37100.37800.38500.42000.263000 | Gypsum Plaster | 14d | 2026-12-05 | 2026-12-19 | 2350 |  | 7 Days Work | 9176094 |
| 2352 | 36900.37000.37100.37800.38500.42000.263100 | Kitchen Platform | 3d | 2026-12-19 | 2026-12-22 | 2351 |  | 7 Days Work | 9176104 |
| 2353 | 36900.37000.37100.37800.38500.42000.263200 | Kitchen dado | 7d | 2026-12-22 | 2026-12-29 | 2352 |  | 7 Days Work | 9176114 |
| 2354 | 36900.37000.37100.37800.38500.42000.263300 | Fire Fighting | 5d | 2026-12-29 | 2027-01-03 | 2353 |  | 7 Days Work | 9176124 |
| 2355 | 36900.37000.37100.37800.38500.42000.263400 | Anticapilary | 5d | 2027-01-03 | 2027-01-08 | 2354 |  | 7 Days Work | 9176134 |
| 2356 | 36900.37000.37100.37800.38500.42000.263500 | Stone Laying | 10d | 2027-02-10 | 2027-02-20 | 2396 |  | 7 Days Work | 9176144 |
| 2357 | 36900.37000.37100.37800.38500.42000.263600 | Tiles Laying | 7d | 2027-02-10 | 2027-02-17 | 2396 |  | 7 Days Work | 9176154 |
| 2358 | 36900.37000.37100.37800.38500.42000.263700 | 1st cutting/polishing of stone flooring | 7d | 2027-02-17 | 2027-02-24 | 2357 |  | 7 Days Work | 9176164 |
| 2359 | 36900.37000.37100.37800.38500.42000.263800 | Tiles/Stone skirting | 5d | 2027-02-24 | 2027-03-01 | 2358 |  | 7 Days Work | 9176174 |
| 2360 | 36900.37000.37100.37800.38500.42000.263900 | Protechtion sheet | 1d | 2027-03-01 | 2027-03-02 | 2359 |  | 7 Days Work | 9176184 |
| 2361 | 36900.37000.37100.37800.38500.42000.264000 | Installation of Temporary Door | 1d | 2027-03-02 | 2027-03-03 | 2360 |  | 7 Days Work | 9176194 |
| 2362 | 36900.37000.37100.37800.38500.42000.264100 | Fixing of window tracks | 5d | 2027-03-03 | 2027-03-08 | 2361 |  | 7 Days Work | 9176204 |
| 2363 | 36900.37000.37100.37800.38500.42000.264200 | Wire Pulling | 7d | 2027-03-08 | 2027-03-15 | 2362 |  | 7 Days Work | 9176214 |
| 2364 | 36900.37000.37100.37800.38500.42000.264300 | Gypsum Remaining | 5d | 2027-03-15 | 2027-03-20 | 2363 |  | 7 Days Work | 9176224 |
| 2365 | 36900.37000.37100.37800.38500.42000.264400 | Fixing of windoow shutter | 5d | 2027-03-20 | 2027-03-25 | 2364 |  | 7 Days Work | 9176234 |
| 2366 | 36900.37000.37100.37800.38500.42000.264500 | Putty Works - walls & ceiling | 15d | 2027-03-25 | 2027-04-09 | 2365 |  | 7 Days Work | 9176244 |
| 2367 | 36900.37000.37100.37800.38500.42000.264600 | False Ceiling- Framing | 10d | 2027-04-09 | 2027-04-19 | 2366 |  | 7 Days Work | 9176254 |
| 2368 | 36900.37000.37100.37800.38500.42000.264700 | Pre Hung Door | 3d | 2027-04-19 | 2027-04-22 | 2367 |  | 7 Days Work | 9176264 |
| 2369 | 36900.37000.37100.37800.38500.42000.264800 | Protechtion sheet | 2d | 2027-04-22 | 2027-04-24 | 2368 |  | 7 Days Work | 9176274 |
| 2370 | 36900.37000.37100.37800.38500.42000.264900 | Skirting near door | 2d | 2027-04-24 | 2027-04-26 | 2369 |  | 7 Days Work | 9176284 |
| 2371 | 36900.37000.37100.37800.38500.42000.265000 | Electrical Switch box fixing | 14d | 2027-04-26 | 2027-05-10 | 2370 |  | 7 Days Work | 9176294 |
| 2372 | 36900.37000.37100.37800.38500.42000.265100 | Fire Fighting painting | 5d | 2027-05-10 | 2027-05-15 | 2371 |  | 7 Days Work | 9176304 |
| 2373 | 36900.37000.37100.37800.38500.42000.265200 | Protection of all flooring, door & window hardware | 5d | 2027-05-15 | 2027-05-20 | 2372 |  | 7 Days Work | 9176314 |
| 2374 | 36900.37000.37100.37800.38500.42000.265300 | 1st coat primer- ceiling 1st & walls | 14d | 2027-05-20 | 2027-06-03 | 2373 |  | 7 Days Work | 9176324 |
| 2375 | 36900.37000.37100.37800.38500.42000.265400 | Wooden Flooring | 5d | 2027-06-03 | 2027-06-08 | 2374 |  | 7 Days Work | 9176334 |
| 2376 | 36900.37000.37100.37800.38500.42000.265500 | Removing of Temporary Railing & installation of Glass Railing | 5d | 2027-06-03 | 2027-06-08 | 2374 |  | 7 Days Work | 9176344 |
| 2377 | 36900.37000.37100.37800.38500.42000.265600 | Tile Grouting | 7d | 2027-06-03 | 2027-06-10 | 2374 |  | 7 Days Work | 9176354 |
| 2378 | 36900.37000.37100.37800.38500.42000.265700 | False Ceiling | 5d | 2027-06-10 | 2027-06-15 | 2377 |  | 7 Days Work | 9176364 |
| 2379 | 36900.37000.37100.37800.38500.42000.265800 | 2nd coat of primer | 10d | 2027-06-15 | 2027-06-25 | 2378 |  | 7 Days Work | 9176374 |
| 2380 | 36900.37000.37100.37800.38500.42000.265900 | Final cutting/polishing of stone flooring | 7d | 2027-06-25 | 2027-07-02 | 2379 |  | 7 Days Work | 9176384 |

| ID | WBS | Task | Duration | Start | Finish | Predecessors | Constraint | Calendar | Unique_Task_ID |
| --- | --- | --- | --- | --- | --- | --- | --- | --- | --- |
| 2381 | 36900.37000.37100.37800.38500.42000.56300 | **Toilet** | 237d | 2026-11-06 | 2027-07-01 |  | start no earlier than 2026-11-06 | 7 Days Work | 9170274 |
| 2382 | 36900.37000.37100.37800.38500.42000.56300.809900 | Toilet_MEP Clearance -1 | 7d | 2026-11-06 | 2026-11-13 | 2345 |  | 7 Days Work | 9182484 |
| 2383 | 36900.37000.37100.37800.38500.42000.56300.810000 | Toilet_Level Marking | 1d | 2026-11-13 | 2026-11-14 | 2382 |  | 7 Days Work | 9182494 |
| 2384 | 36900.37000.37100.37800.38500.42000.56300.810100 | Toilet_Chasing work for Electrical conduit & concealed plumbing | 5d | 2026-11-14 | 2026-11-19 | 2383 |  | 7 Days Work | 9182504 |
| 2385 | 36900.37000.37100.37800.38500.42000.56300.810200 | Toilet_Plumbing work 1st fix | 5d | 2026-11-19 | 2026-11-24 | 2384 |  | 7 Days Work | 9182514 |
| 2386 | 36900.37000.37100.37800.38500.42000.56300.810300 | Toilet_Sleeve/Bore Packing | 5d | 2026-11-24 | 2026-11-29 | 2385 |  | 7 Days Work | 9182524 |
| 2387 | 36900.37000.37100.37800.38500.42000.56300.810400 | Toilet_Waterproofing | 10d | 2026-11-29 | 2026-12-09 | 2386 |  | 7 Days Work | 9182534 |
| 2388 | 36900.37000.37100.37800.38500.42000.56300.810500 | Toilet_Screed | 1d | 2026-12-09 | 2026-12-10 | 2387 |  | 7 Days Work | 9182544 |
| 2389 | 36900.37000.37100.37800.38500.42000.56300.810600 | Toilet_Plumbing 2nd fix | 5d | 2026-12-10 | 2026-12-15 | 2388 |  | 7 Days Work | 9182554 |
| 2390 | 36900.37000.37100.37800.38500.42000.56300.810700 | Toilet_Ledge wall | 5d | 2026-12-15 | 2026-12-20 | 2389 |  | 7 Days Work | 9182564 |
| 2391 | 36900.37000.37100.37800.38500.42000.56300.810800 | Toilet_Cement Plaster | 5d | 2026-12-20 | 2026-12-25 | 2390 |  | 7 Days Work | 9182574 |
| 2392 | 36900.37000.37100.37800.38500.42000.56300.810900 | Toilet_Door Frame | 1d | 2026-12-25 | 2026-12-26 | 2391 |  | 7 Days Work | 9182584 |
| 2393 | 36900.37000.37100.37800.38500.42000.56300.811000 | Toilet_Wash basin & Couter | 3d | 2026-12-26 | 2026-12-29 | 2392 |  | 7 Days Work | 9182594 |
| 2394 | 36900.37000.37100.37800.38500.42000.56300.811100 | Toilet_Wall dado | 20d | 2026-12-29 | 2027-01-18 | 2393 |  | 7 Days Work | 9182604 |
| 2395 | 36900.37000.37100.37800.38500.42000.56300.811200 | Toilet_Granite Work-Ledge wall top | 3d | 2027-01-18 | 2027-01-21 | 2394 |  | 7 Days Work | 9182614 |
| 2396 | 36900.37000.37100.37800.38500.42000.56300.811300 | Toilet_Floor Tilling work | 20d | 2027-01-21 | 2027-02-10 | 2395 |  | 7 Days Work | 9182624 |
| 2397 | 36900.37000.37100.37800.38500.42000.56300.811400 | Toilet_1st row of dado | 5d | 2027-02-10 | 2027-02-15 | 2396 |  | 7 Days Work | 9182634 |
| 2398 | 36900.37000.37100.37800.38500.42000.56300.811500 | Toilet_Window Fixing | 14d | 2027-02-15 | 2027-03-01 | 2397 |  | 7 Days Work | 9182644 |
| 2399 | 36900.37000.37100.37800.38500.42000.56300.811600 | Toilet_Services above False ceiling | 21d | 2027-03-01 | 2027-03-22 | 2398 |  | 7 Days Work | 9182654 |
| 2400 | 36900.37000.37100.37800.38500.42000.56300.811700 | Toilet_False Ceiling framing | 12d | 2027-03-22 | 2027-04-03 | 2399 |  | 7 Days Work | 9182664 |
| 2401 | 36900.37000.37100.37800.38500.42000.56300.811800 | Toilet_Door Frame | 5d | 2027-04-03 | 2027-04-08 | 2400 |  | 7 Days Work | 9182674 |
| 2402 | 36900.37000.37100.37800.38500.42000.56300.811900 | Toilet_Epoxy Tile Grouting | 7d | 2027-06-03 | 2027-06-10 | 2377SS |  | 7 Days Work | 9182684 |
| 2403 | 36900.37000.37100.37800.38500.42000.56300.812000 | Toilet_False ceiling board fixing, CP Sanitary Fixture, Electric Fixture | 21d | 2027-06-10 | 2027-07-01 | 2402 |  | 7 Days Work | 9182694 |
| 2404 | 36900.37000.37100.37800.38500.42100 | **17th Habitable/19th Floor** | 245d | 2026-11-08 | 2027-07-11 |  | start no earlier than 2026-11-08 | 7 Days Work | 9170084 |
| 2405 | 36900.37000.37100.37800.38500.42100.266000 | Post Pour | 7d | 2026-11-08 | 2026-11-15 | 1440FS+15d |  | 7 Days Work | 9176394 |
| 2406 | 36900.37000.37100.37800.38500.42100.266100 | MEP Clearance -1 | 5d | 2026-11-15 | 2026-11-20 | 2405 |  | 7 Days Work | 9176404 |
| 2407 | 36900.37000.37100.37800.38500.42100.266200 | Benchmark | 1d | 2026-11-20 | 2026-11-21 | 2406 |  | 7 Days Work | 9176414 |
| 2408 | 36900.37000.37100.37800.38500.42100.266300 | Temporary Railing | 3d | 2026-11-21 | 2026-11-24 | 2407 |  | 7 Days Work | 9176424 |
| 2409 | 36900.37000.37100.37800.38500.42100.266400 | Blockwork | 10d | 2026-11-24 | 2026-12-04 | 2408 |  | 7 Days Work | 9176434 |
| 2410 | 36900.37000.37100.37800.38500.42100.266500 | MEP Clearance -2 | 10d | 2026-12-04 | 2026-12-14 | 2409 |  | 7 Days Work | 9176444 |
| 2411 | 36900.37000.37100.37800.38500.42100.266600 | Gypsum Plaster | 14d | 2026-12-14 | 2026-12-28 | 2410 |  | 7 Days Work | 9176454 |
| 2412 | 36900.37000.37100.37800.38500.42100.266700 | Kitchen Platform | 3d | 2026-12-28 | 2026-12-31 | 2411 |  | 7 Days Work | 9176464 |
| 2413 | 36900.37000.37100.37800.38500.42100.266800 | Kitchen dado | 7d | 2026-12-31 | 2027-01-07 | 2412 |  | 7 Days Work | 9176474 |
| 2414 | 36900.37000.37100.37800.38500.42100.266900 | Fire Fighting | 5d | 2027-01-07 | 2027-01-12 | 2413 |  | 7 Days Work | 9176484 |
| 2415 | 36900.37000.37100.37800.38500.42100.267000 | Anticapilary | 5d | 2027-01-12 | 2027-01-17 | 2414 |  | 7 Days Work | 9176494 |
| 2416 | 36900.37000.37100.37800.38500.42100.267100 | Stone Laying | 10d | 2027-02-19 | 2027-03-01 | 2456 |  | 7 Days Work | 9176504 |
| 2417 | 36900.37000.37100.37800.38500.42100.267200 | Tiles Laying | 7d | 2027-02-19 | 2027-02-26 | 2456 |  | 7 Days Work | 9176514 |
| 2418 | 36900.37000.37100.37800.38500.42100.267300 | 1st cutting/polishing of stone flooring | 7d | 2027-02-26 | 2027-03-05 | 2417 |  | 7 Days Work | 9176524 |
| 2419 | 36900.37000.37100.37800.38500.42100.267400 | Tiles/Stone skirting | 5d | 2027-03-05 | 2027-03-10 | 2418 |  | 7 Days Work | 9176534 |
| 2420 | 36900.37000.37100.37800.38500.42100.267500 | Protechtion sheet | 1d | 2027-03-10 | 2027-03-11 | 2419 |  | 7 Days Work | 9176544 |
| 2421 | 36900.37000.37100.37800.38500.42100.267600 | Installation of Temporary Door | 1d | 2027-03-11 | 2027-03-12 | 2420 |  | 7 Days Work | 9176554 |
| 2422 | 36900.37000.37100.37800.38500.42100.267700 | Fixing of window tracks | 5d | 2027-03-12 | 2027-03-17 | 2421 |  | 7 Days Work | 9176564 |
| 2423 | 36900.37000.37100.37800.38500.42100.267800 | Wire Pulling | 7d | 2027-03-17 | 2027-03-24 | 2422 |  | 7 Days Work | 9176574 |
| 2424 | 36900.37000.37100.37800.38500.42100.267900 | Gypsum Remaining | 5d | 2027-03-24 | 2027-03-29 | 2423 |  | 7 Days Work | 9176584 |
| 2425 | 36900.37000.37100.37800.38500.42100.268000 | Fixing of windoow shutter | 5d | 2027-03-29 | 2027-04-03 | 2424 |  | 7 Days Work | 9176594 |
| 2426 | 36900.37000.37100.37800.38500.42100.268100 | Putty Works - walls & ceiling | 15d | 2027-04-03 | 2027-04-18 | 2425 |  | 7 Days Work | 9176604 |
| 2427 | 36900.37000.37100.37800.38500.42100.268200 | False Ceiling- Framing | 10d | 2027-04-18 | 2027-04-28 | 2426 |  | 7 Days Work | 9176614 |
| 2428 | 36900.37000.37100.37800.38500.42100.268300 | Pre Hung Door | 3d | 2027-04-28 | 2027-05-01 | 2427 |  | 7 Days Work | 9176624 |
| 2429 | 36900.37000.37100.37800.38500.42100.268400 | Protechtion sheet | 2d | 2027-05-01 | 2027-05-03 | 2428 |  | 7 Days Work | 9176634 |
| 2430 | 36900.37000.37100.37800.38500.42100.268500 | Skirting near door | 2d | 2027-05-03 | 2027-05-05 | 2429 |  | 7 Days Work | 9176644 |
| 2431 | 36900.37000.37100.37800.38500.42100.268600 | Electrical Switch box fixing | 14d | 2027-05-05 | 2027-05-19 | 2430 |  | 7 Days Work | 9176654 |
| 2432 | 36900.37000.37100.37800.38500.42100.268700 | Fire Fighting painting | 5d | 2027-05-19 | 2027-05-24 | 2431 |  | 7 Days Work | 9176664 |
| 2433 | 36900.37000.37100.37800.38500.42100.268800 | Protection of all flooring, door & window hardware | 5d | 2027-05-24 | 2027-05-29 | 2432 |  | 7 Days Work | 9176674 |
| 2434 | 36900.37000.37100.37800.38500.42100.268900 | 1st coat primer- ceiling 1st & walls | 14d | 2027-05-29 | 2027-06-12 | 2433 |  | 7 Days Work | 9176684 |
| 2435 | 36900.37000.37100.37800.38500.42100.269000 | Wooden Flooring | 5d | 2027-06-12 | 2027-06-17 | 2434 |  | 7 Days Work | 9176694 |
| 2436 | 36900.37000.37100.37800.38500.42100.269100 | Removing of Temporary Railing & installation of Glass Railing | 5d | 2027-06-12 | 2027-06-17 | 2434 |  | 7 Days Work | 9176704 |
| 2437 | 36900.37000.37100.37800.38500.42100.269200 | Tile Grouting | 7d | 2027-06-12 | 2027-06-19 | 2434 |  | 7 Days Work | 9176714 |
| 2438 | 36900.37000.37100.37800.38500.42100.269300 | False Ceiling | 5d | 2027-06-19 | 2027-06-24 | 2437 |  | 7 Days Work | 9176724 |
| 2439 | 36900.37000.37100.37800.38500.42100.269400 | 2nd coat of primer | 10d | 2027-06-24 | 2027-07-04 | 2438 |  | 7 Days Work | 9176734 |
| 2440 | 36900.37000.37100.37800.38500.42100.269500 | Final cutting/polishing of stone flooring | 7d | 2027-07-04 | 2027-07-11 | 2439 |  | 7 Days Work | 9176744 |

| ID | WBS | Task | Duration | Start | Finish | Predecessors | Constraint | Calendar | Unique_Task_ID |
| --- | --- | --- | --- | --- | --- | --- | --- | --- | --- |
| 2441 | 36900.37000.37100.37800.38500.42100.56400 | **Toilet** | 237d | 2026-11-15 | 2027-07-10 |  | start no earlier than 2026-11-15 | 7 Days Work | 9170284 |
| 2442 | 36900.37000.37100.37800.38500.42100.56400.812100 | Toilet_MEP Clearance -1 | 7d | 2026-11-15 | 2026-11-22 | 2405 |  | 7 Days Work | 9182704 |
| 2443 | 36900.37000.37100.37800.38500.42100.56400.812200 | Toilet_Level Marking | 1d | 2026-11-22 | 2026-11-23 | 2442 |  | 7 Days Work | 9182714 |
| 2444 | 36900.37000.37100.37800.38500.42100.56400.812300 | Toilet_Chasing work for Electrical conduit & concealed plumbing | 5d | 2026-11-23 | 2026-11-28 | 2443 |  | 7 Days Work | 9182724 |
| 2445 | 36900.37000.37100.37800.38500.42100.56400.812400 | Toilet_Plumbing work 1st fix | 5d | 2026-11-28 | 2026-12-03 | 2444 |  | 7 Days Work | 9182734 |
| 2446 | 36900.37000.37100.37800.38500.42100.56400.812500 | Toilet_Sleeve/Bore Packing | 5d | 2026-12-03 | 2026-12-08 | 2445 |  | 7 Days Work | 9182744 |
| 2447 | 36900.37000.37100.37800.38500.42100.56400.812600 | Toilet_Waterproofing | 10d | 2026-12-08 | 2026-12-18 | 2446 |  | 7 Days Work | 9182754 |
| 2448 | 36900.37000.37100.37800.38500.42100.56400.812700 | Toilet_Screed | 1d | 2026-12-18 | 2026-12-19 | 2447 |  | 7 Days Work | 9182764 |
| 2449 | 36900.37000.37100.37800.38500.42100.56400.812800 | Toilet_Plumbing 2nd fix | 5d | 2026-12-19 | 2026-12-24 | 2448 |  | 7 Days Work | 9182774 |
| 2450 | 36900.37000.37100.37800.38500.42100.56400.812900 | Toilet_Ledge wall | 5d | 2026-12-24 | 2026-12-29 | 2449 |  | 7 Days Work | 9182784 |
| 2451 | 36900.37000.37100.37800.38500.42100.56400.813000 | Toilet_Cement Plaster | 5d | 2026-12-29 | 2027-01-03 | 2450 |  | 7 Days Work | 9182794 |
| 2452 | 36900.37000.37100.37800.38500.42100.56400.813100 | Toilet_Door Frame | 1d | 2027-01-03 | 2027-01-04 | 2451 |  | 7 Days Work | 9182804 |
| 2453 | 36900.37000.37100.37800.38500.42100.56400.813200 | Toilet_Wash basin & Couter | 3d | 2027-01-04 | 2027-01-07 | 2452 |  | 7 Days Work | 9182814 |
| 2454 | 36900.37000.37100.37800.38500.42100.56400.813300 | Toilet_Wall dado | 20d | 2027-01-07 | 2027-01-27 | 2453 |  | 7 Days Work | 9182824 |
| 2455 | 36900.37000.37100.37800.38500.42100.56400.813400 | Toilet_Granite Work-Ledge wall top | 3d | 2027-01-27 | 2027-01-30 | 2454 |  | 7 Days Work | 9182834 |
| 2456 | 36900.37000.37100.37800.38500.42100.56400.813500 | Toilet_Floor Tilling work | 20d | 2027-01-30 | 2027-02-19 | 2455 |  | 7 Days Work | 9182844 |
| 2457 | 36900.37000.37100.37800.38500.42100.56400.813600 | Toilet_1st row of dado | 5d | 2027-02-19 | 2027-02-24 | 2456 |  | 7 Days Work | 9182854 |
| 2458 | 36900.37000.37100.37800.38500.42100.56400.813700 | Toilet_Window Fixing | 14d | 2027-02-24 | 2027-03-10 | 2457 |  | 7 Days Work | 9182864 |
| 2459 | 36900.37000.37100.37800.38500.42100.56400.813800 | Toilet_Services above False ceiling | 21d | 2027-03-10 | 2027-03-31 | 2458 |  | 7 Days Work | 9182874 |
| 2460 | 36900.37000.37100.37800.38500.42100.56400.813900 | Toilet_False Ceiling framing | 12d | 2027-03-31 | 2027-04-12 | 2459 |  | 7 Days Work | 9182884 |
| 2461 | 36900.37000.37100.37800.38500.42100.56400.814000 | Toilet_Door Frame | 5d | 2027-04-12 | 2027-04-17 | 2460 |  | 7 Days Work | 9182894 |
| 2462 | 36900.37000.37100.37800.38500.42100.56400.814100 | Toilet_Epoxy Tile Grouting | 7d | 2027-06-12 | 2027-06-19 | 2437SS |  | 7 Days Work | 9182904 |
| 2463 | 36900.37000.37100.37800.38500.42100.56400.814200 | Toilet_False ceiling board fixing, CP Sanitary Fixture, Electric Fixture | 21d | 2027-06-19 | 2027-07-10 | 2462 |  | 7 Days Work | 9182914 |
| 2464 | 36900.37000.37100.37800.38500.42200 | **18th Habitable/20th Floor** | 245d | 2026-11-20 | 2027-07-23 |  | start no earlier than 2026-11-20 | 7 Days Work | 9170094 |
| 2465 | 36900.37000.37100.37800.38500.42200.269600 | Post Pour | 7d | 2026-11-20 | 2026-11-27 | 1441FS+15d |  | 7 Days Work | 9176754 |
| 2466 | 36900.37000.37100.37800.38500.42200.269700 | MEP Clearance -1 | 5d | 2026-11-27 | 2026-12-02 | 2465 |  | 7 Days Work | 9176764 |
| 2467 | 36900.37000.37100.37800.38500.42200.269800 | Benchmark | 1d | 2026-12-02 | 2026-12-03 | 2466 |  | 7 Days Work | 9176774 |
| 2468 | 36900.37000.37100.37800.38500.42200.269900 | Temporary Railing | 3d | 2026-12-03 | 2026-12-06 | 2467 |  | 7 Days Work | 9176784 |
| 2469 | 36900.37000.37100.37800.38500.42200.270000 | Blockwork | 10d | 2026-12-06 | 2026-12-16 | 2468 |  | 7 Days Work | 9176794 |
| 2470 | 36900.37000.37100.37800.38500.42200.270100 | MEP Clearance -2 | 10d | 2026-12-16 | 2026-12-26 | 2469 |  | 7 Days Work | 9176804 |
| 2471 | 36900.37000.37100.37800.38500.42200.270200 | Gypsum Plaster | 14d | 2026-12-26 | 2027-01-09 | 2470 |  | 7 Days Work | 9043574 |
| 2472 | 36900.37000.37100.37800.38500.42200.270300 | Kitchen Platform | 3d | 2027-01-09 | 2027-01-12 | 2471 |  | 7 Days Work | 9176824 |
| 2473 | 36900.37000.37100.37800.38500.42200.270400 | Kitchen dado | 7d | 2027-01-12 | 2027-01-19 | 2472 |  | 7 Days Work | 9176834 |
| 2474 | 36900.37000.37100.37800.38500.42200.270500 | Fire Fighting | 5d | 2027-01-19 | 2027-01-24 | 2473 |  | 7 Days Work | 9176844 |
| 2475 | 36900.37000.37100.37800.38500.42200.270600 | Anticapilary | 5d | 2027-01-24 | 2027-01-29 | 2474 |  | 7 Days Work | 9176854 |
| 2476 | 36900.37000.37100.37800.38500.42200.270700 | Stone Laying | 10d | 2027-03-03 | 2027-03-13 | 2516 |  | 7 Days Work | 9176864 |
| 2477 | 36900.37000.37100.37800.38500.42200.270800 | Tiles Laying | 7d | 2027-03-03 | 2027-03-10 | 2516 |  | 7 Days Work | 9043584 |
| 2478 | 36900.37000.37100.37800.38500.42200.270900 | 1st cutting/polishing of stone flooring | 7d | 2027-03-10 | 2027-03-17 | 2477 |  | 7 Days Work | 9176884 |
| 2479 | 36900.37000.37100.37800.38500.42200.271000 | Tiles/Stone skirting | 5d | 2027-03-17 | 2027-03-22 | 2478 |  | 7 Days Work | 9176894 |
| 2480 | 36900.37000.37100.37800.38500.42200.271100 | Protechtion sheet | 1d | 2027-03-22 | 2027-03-23 | 2479 |  | 7 Days Work | 9176904 |
| 2481 | 36900.37000.37100.37800.38500.42200.271200 | Installation of Temporary Door | 1d | 2027-03-23 | 2027-03-24 | 2480 |  | 7 Days Work | 9176914 |
| 2482 | 36900.37000.37100.37800.38500.42200.271300 | Fixing of window tracks | 5d | 2027-03-24 | 2027-03-29 | 2481 |  | 7 Days Work | 9176924 |
| 2483 | 36900.37000.37100.37800.38500.42200.271400 | Wire Pulling | 7d | 2027-03-29 | 2027-04-05 | 2482 |  | 7 Days Work | 9176934 |
| 2484 | 36900.37000.37100.37800.38500.42200.271500 | Gypsum Remaining | 5d | 2027-04-05 | 2027-04-10 | 2483 |  | 7 Days Work | 9176944 |
| 2485 | 36900.37000.37100.37800.38500.42200.271600 | Fixing of windoow shutter | 5d | 2027-04-10 | 2027-04-15 | 2484 |  | 7 Days Work | 9176954 |
| 2486 | 36900.37000.37100.37800.38500.42200.271700 | Putty Works - walls & ceiling | 15d | 2027-04-15 | 2027-04-30 | 2485 |  | 7 Days Work | 9176964 |
| 2487 | 36900.37000.37100.37800.38500.42200.271800 | False Ceiling- Framing | 10d | 2027-04-30 | 2027-05-10 | 2486 |  | 7 Days Work | 9176974 |
| 2488 | 36900.37000.37100.37800.38500.42200.271900 | Pre Hung Door | 3d | 2027-05-10 | 2027-05-13 | 2487 |  | 7 Days Work | 9176984 |
| 2489 | 36900.37000.37100.37800.38500.42200.272000 | Protechtion sheet | 2d | 2027-05-13 | 2027-05-15 | 2488 |  | 7 Days Work | 9176994 |
| 2490 | 36900.37000.37100.37800.38500.42200.272100 | Skirting near door | 2d | 2027-05-15 | 2027-05-17 | 2489 |  | 7 Days Work | 9177004 |
| 2491 | 36900.37000.37100.37800.38500.42200.272200 | Electrical Switch box fixing | 14d | 2027-05-17 | 2027-05-31 | 2490 |  | 7 Days Work | 9177014 |
| 2492 | 36900.37000.37100.37800.38500.42200.272300 | Fire Fighting painting | 5d | 2027-05-31 | 2027-06-05 | 2491 |  | 7 Days Work | 9177024 |
| 2493 | 36900.37000.37100.37800.38500.42200.272400 | Protection of all flooring, door & window hardware | 5d | 2027-06-05 | 2027-06-10 | 2492 |  | 7 Days Work | 9177034 |
| 2494 | 36900.37000.37100.37800.38500.42200.272500 | 1st coat primer- ceiling 1st & walls | 14d | 2027-06-10 | 2027-06-24 | 2493 |  | 7 Days Work | 9177044 |
| 2495 | 36900.37000.37100.37800.38500.42200.272600 | Wooden Flooring | 5d | 2027-06-24 | 2027-06-29 | 2494 |  | 7 Days Work | 9177054 |
| 2496 | 36900.37000.37100.37800.38500.42200.272700 | Removing of Temporary Railing & installation of Glass Railing | 5d | 2027-06-24 | 2027-06-29 | 2494 |  | 7 Days Work | 9177064 |
| 2497 | 36900.37000.37100.37800.38500.42200.272800 | Tile Grouting | 7d | 2027-06-24 | 2027-07-01 | 2494 |  | 7 Days Work | 9177074 |
| 2498 | 36900.37000.37100.37800.38500.42200.272900 | False Ceiling | 5d | 2027-07-01 | 2027-07-06 | 2497 |  | 7 Days Work | 9177084 |
| 2499 | 36900.37000.37100.37800.38500.42200.273000 | 2nd coat of primer | 10d | 2027-07-06 | 2027-07-16 | 2498 |  | 7 Days Work | 9177094 |
| 2500 | 36900.37000.37100.37800.38500.42200.273100 | Final cutting/polishing of stone flooring | 7d | 2027-07-16 | 2027-07-23 | 2499 |  | 7 Days Work | 9177104 |

| ID | WBS | Task | Duration | Start | Finish | Predecessors | Constraint | Calendar | Unique_Task_ID |
| --- | --- | --- | --- | --- | --- | --- | --- | --- | --- |
| 2501 | 36900.37000.37100.37800.38500.42200.56500 | **Toilet** | 237d | 2026-11-27 | 2027-07-22 |  | start no earlier than 2026-11-27 | 7 Days Work | 9170294 |
| 2502 | 36900.37000.37100.37800.38500.42200.56500.814300 | Toilet_MEP Clearance -1 | 7d | 2026-11-27 | 2026-12-04 | 2465 |  | 7 Days Work | 9182924 |
| 2503 | 36900.37000.37100.37800.38500.42200.56500.814400 | Toilet_Level Marking | 1d | 2026-12-04 | 2026-12-05 | 2502 |  | 7 Days Work | 9182934 |
| 2504 | 36900.37000.37100.37800.38500.42200.56500.814500 | Toilet_Chasing work for Electrical conduit & concealed plumbing | 5d | 2026-12-05 | 2026-12-10 | 2503 |  | 7 Days Work | 9182944 |
| 2505 | 36900.37000.37100.37800.38500.42200.56500.814600 | Toilet_Plumbing work 1st fix | 5d | 2026-12-10 | 2026-12-15 | 2504 |  | 7 Days Work | 9182954 |
| 2506 | 36900.37000.37100.37800.38500.42200.56500.814700 | Toilet_Sleeve/Bore Packing | 5d | 2026-12-15 | 2026-12-20 | 2505 |  | 7 Days Work | 9182964 |
| 2507 | 36900.37000.37100.37800.38500.42200.56500.814800 | Toilet_Waterproofing | 10d | 2026-12-20 | 2026-12-30 | 2506 |  | 7 Days Work | 9182974 |
| 2508 | 36900.37000.37100.37800.38500.42200.56500.814900 | Toilet_Screed | 1d | 2026-12-30 | 2026-12-31 | 2507 |  | 7 Days Work | 9182984 |
| 2509 | 36900.37000.37100.37800.38500.42200.56500.815000 | Toilet_Plumbing 2nd fix | 5d | 2026-12-31 | 2027-01-05 | 2508 |  | 7 Days Work | 9182994 |
| 2510 | 36900.37000.37100.37800.38500.42200.56500.815100 | Toilet_Ledge wall | 5d | 2027-01-05 | 2027-01-10 | 2509 |  | 7 Days Work | 9183004 |
| 2511 | 36900.37000.37100.37800.38500.42200.56500.815200 | Toilet_Cement Plaster | 5d | 2027-01-10 | 2027-01-15 | 2510 |  | 7 Days Work | 9183014 |
| 2512 | 36900.37000.37100.37800.38500.42200.56500.815300 | Toilet_Door Frame | 1d | 2027-01-15 | 2027-01-16 | 2511 |  | 7 Days Work | 9183024 |
| 2513 | 36900.37000.37100.37800.38500.42200.56500.815400 | Toilet_Wash basin & Couter | 3d | 2027-01-16 | 2027-01-19 | 2512 |  | 7 Days Work | 9183034 |
| 2514 | 36900.37000.37100.37800.38500.42200.56500.815500 | Toilet_Wall dado | 20d | 2027-01-19 | 2027-02-08 | 2513 |  | 7 Days Work | 9183044 |
| 2515 | 36900.37000.37100.37800.38500.42200.56500.815600 | Toilet_Granite Work-Ledge wall top | 3d | 2027-02-08 | 2027-02-11 | 2514 |  | 7 Days Work | 9183054 |
| 2516 | 36900.37000.37100.37800.38500.42200.56500.815700 | Toilet_Floor Tilling work | 20d | 2027-02-11 | 2027-03-03 | 2515 |  | 7 Days Work | 9183064 |
| 2517 | 36900.37000.37100.37800.38500.42200.56500.815800 | Toilet_1st row of dado | 5d | 2027-03-03 | 2027-03-08 | 2516 |  | 7 Days Work | 9183074 |
| 2518 | 36900.37000.37100.37800.38500.42200.56500.815900 | Toilet_Window Fixing | 14d | 2027-03-08 | 2027-03-22 | 2517 |  | 7 Days Work | 9183084 |
| 2519 | 36900.37000.37100.37800.38500.42200.56500.816000 | Toilet_Services above False ceiling | 21d | 2027-03-22 | 2027-04-12 | 2518 |  | 7 Days Work | 9183094 |
| 2520 | 36900.37000.37100.37800.38500.42200.56500.816100 | Toilet_False Ceiling framing | 12d | 2027-04-12 | 2027-04-24 | 2519 |  | 7 Days Work | 9183104 |
| 2521 | 36900.37000.37100.37800.38500.42200.56500.816200 | Toilet_Door Frame | 5d | 2027-04-24 | 2027-04-29 | 2520 |  | 7 Days Work | 9183114 |
| 2522 | 36900.37000.37100.37800.38500.42200.56500.816300 | Toilet_Epoxy Tile Grouting | 7d | 2027-06-24 | 2027-07-01 | 2497SS |  | 7 Days Work | 9183124 |
| 2523 | 36900.37000.37100.37800.38500.42200.56500.816400 | Toilet_False ceiling board fixing, CP Sanitary Fixture, Electric Fixture | 21d | 2027-07-01 | 2027-07-22 | 2522 |  | 7 Days Work | 9183134 |
| 2524 | 36900.37000.37100.37800.52800 | **Common area Finishing** | 311d | 2027-01-21 | 2027-11-28 |  | start no earlier than 2027-01-21 | 7 Days Work | 9170114 |
| 2525 | 36900.37000.37100.37800.52800.70100 | **1st Habitable/3rd Floor** | 158d | 2027-01-21 | 2027-06-28 |  | start no earlier than 2027-01-21 | 7 Days Work | 9170504 |
| 2526 | 36900.37000.37100.37800.52800.70100.273200 | Side blockwork for lift shafts | 9d | 2027-01-21 | 2027-01-30 | 2711 |  | 7 Days Work | 9177474 |
| 2527 | 36900.37000.37100.37800.52800.70100.273300 | Door Threshold for lifts | 6d | 2027-01-30 | 2027-02-05 | 2526 |  | 7 Days Work | 9177484 |
| 2528 | 36900.37000.37100.37800.52800.70100.273400 | Granite Cladding | 10d | 2027-02-05 | 2027-02-15 | 2527 |  | 7 Days Work | 9177494 |
| 2529 | 36900.37000.37100.37800.52800.70100.273500 | MEP Services | 60d | 2027-02-15 | 2027-04-16 | 2528 |  | 7 Days Work | 9177504 |
| 2530 | 36900.37000.37100.37800.52800.70100.273600 | Flooring+Skirting | 20d | 2027-04-16 | 2027-05-06 | 2529 |  | 7 Days Work | 9177514 |
| 2531 | 36900.37000.37100.37800.52800.70100.273700 | Wall finishes | 21d | 2027-05-06 | 2027-05-27 | 2530 |  | 7 Days Work | 9177524 |
| 2532 | 36900.37000.37100.37800.52800.70100.273800 | False Ceiling | 10d | 2027-05-27 | 2027-06-06 | 2531 |  | 7 Days Work | 9177534 |
| 2533 | 36900.37000.37100.37800.52800.70100.273900 | Staircase | 15d | 2027-06-06 | 2027-06-21 | 2532 |  | 7 Days Work | 9177544 |
| 2534 | 36900.37000.37100.37800.52800.70100.274000 | Deep Cleaning | 7d | 2027-06-21 | 2027-06-28 | 2533 |  | 7 Days Work | 9177554 |

| ID | WBS | Task | Duration | Start | Finish | Predecessors | Constraint | Calendar | Unique_Task_ID |
| --- | --- | --- | --- | --- | --- | --- | --- | --- | --- |
| 2535 | 36900.37000.37100.37800.52800.70200 | **2nd Habitable/4th Floor** | 158d | 2027-01-30 | 2027-07-07 |  | start no earlier than 2027-01-30 | 7 Days Work | 9170494 |
| 2536 | 36900.37000.37100.37800.52800.70200.274100 | Side blockwork for lift shafts | 9d | 2027-01-30 | 2027-02-08 | 2526 |  | 7 Days Work | 9177564 |
| 2537 | 36900.37000.37100.37800.52800.70200.274200 | Door Threshold for lifts | 6d | 2027-02-08 | 2027-02-14 | 2536 |  | 7 Days Work | 9177574 |
| 2538 | 36900.37000.37100.37800.52800.70200.274300 | Granite Cladding | 10d | 2027-02-14 | 2027-02-24 | 2537 |  | 7 Days Work | 9177584 |
| 2539 | 36900.37000.37100.37800.52800.70200.274400 | MEP Services | 60d | 2027-02-24 | 2027-04-25 | 2538 |  | 7 Days Work | 9177594 |
| 2540 | 36900.37000.37100.37800.52800.70200.274500 | Flooring+Skirting | 20d | 2027-04-25 | 2027-05-15 | 2539 |  | 7 Days Work | 9177604 |
| 2541 | 36900.37000.37100.37800.52800.70200.274600 | Wall finishes | 21d | 2027-05-15 | 2027-06-05 | 2540 |  | 7 Days Work | 9177614 |
| 2542 | 36900.37000.37100.37800.52800.70200.274700 | False Ceiling | 10d | 2027-06-05 | 2027-06-15 | 2541 |  | 7 Days Work | 9177624 |
| 2543 | 36900.37000.37100.37800.52800.70200.274800 | Staircase | 15d | 2027-06-15 | 2027-06-30 | 2542 |  | 7 Days Work | 9177634 |
| 2544 | 36900.37000.37100.37800.52800.70200.274900 | Deep Cleaning | 7d | 2027-06-30 | 2027-07-07 | 2543 |  | 7 Days Work | 9177644 |
| 2545 | 36900.37000.37100.37800.52800.70300 | **3rd Habitable/5th Floor** | 158d | 2027-02-08 | 2027-07-16 |  | start no earlier than 2027-02-08 | 7 Days Work | 9170484 |
| 2546 | 36900.37000.37100.37800.52800.70300.275000 | Side blockwork for lift shafts | 9d | 2027-02-08 | 2027-02-17 | 2536 |  | 7 Days Work | 9177654 |
| 2547 | 36900.37000.37100.37800.52800.70300.275100 | Door Threshold for lifts | 6d | 2027-02-17 | 2027-02-23 | 2546 |  | 7 Days Work | 9177664 |
| 2548 | 36900.37000.37100.37800.52800.70300.275200 | Granite Cladding | 10d | 2027-02-23 | 2027-03-05 | 2547 |  | 7 Days Work | 9177674 |
| 2549 | 36900.37000.37100.37800.52800.70300.275300 | MEP Services | 60d | 2027-03-05 | 2027-05-04 | 2548 |  | 7 Days Work | 9177684 |
| 2550 | 36900.37000.37100.37800.52800.70300.275400 | Flooring+Skirting | 20d | 2027-05-04 | 2027-05-24 | 2549 |  | 7 Days Work | 9177694 |
| 2551 | 36900.37000.37100.37800.52800.70300.275500 | Wall finishes | 21d | 2027-05-24 | 2027-06-14 | 2550 |  | 7 Days Work | 9177704 |
| 2552 | 36900.37000.37100.37800.52800.70300.275600 | False Ceiling | 10d | 2027-06-14 | 2027-06-24 | 2551 |  | 7 Days Work | 9177714 |
| 2553 | 36900.37000.37100.37800.52800.70300.275700 | Staircase | 15d | 2027-06-24 | 2027-07-09 | 2552 |  | 7 Days Work | 9177724 |
| 2554 | 36900.37000.37100.37800.52800.70300.275800 | Deep Cleaning | 7d | 2027-07-09 | 2027-07-16 | 2553 |  | 7 Days Work | 9177734 |
| 2555 | 36900.37000.37100.37800.52800.70400 | **4th Habitable/6th Floor** | 158d | 2027-02-17 | 2027-07-25 |  | start no earlier than 2027-02-17 | 7 Days Work | 9170444 |
| 2556 | 36900.37000.37100.37800.52800.70400.275900 | Side blockwork for lift shafts | 9d | 2027-02-17 | 2027-02-26 | 2546 |  | 7 Days Work | 9177744 |
| 2557 | 36900.37000.37100.37800.52800.70400.276000 | Door Threshold for lifts | 6d | 2027-02-26 | 2027-03-04 | 2556 |  | 7 Days Work | 9177754 |
| 2558 | 36900.37000.37100.37800.52800.70400.276100 | Granite Cladding | 10d | 2027-03-04 | 2027-03-14 | 2557 |  | 7 Days Work | 9177764 |
| 2559 | 36900.37000.37100.37800.52800.70400.276200 | MEP Services | 60d | 2027-03-14 | 2027-05-13 | 2558 |  | 7 Days Work | 9177774 |
| 2560 | 36900.37000.37100.37800.52800.70400.276300 | Flooring+Skirting | 20d | 2027-05-13 | 2027-06-02 | 2559 |  | 7 Days Work | 9177784 |
| 2561 | 36900.37000.37100.37800.52800.70400.276400 | Wall finishes | 21d | 2027-06-02 | 2027-06-23 | 2560 |  | 7 Days Work | 9177794 |
| 2562 | 36900.37000.37100.37800.52800.70400.276500 | False Ceiling | 10d | 2027-06-23 | 2027-07-03 | 2561 |  | 7 Days Work | 9177804 |
| 2563 | 36900.37000.37100.37800.52800.70400.276600 | Staircase | 15d | 2027-07-03 | 2027-07-18 | 2562 |  | 7 Days Work | 9177814 |
| 2564 | 36900.37000.37100.37800.52800.70400.276700 | Deep Cleaning | 7d | 2027-07-18 | 2027-07-25 | 2563 |  | 7 Days Work | 9177824 |

| ID | WBS | Task | Duration | Start | Finish | Predecessors | Constraint | Calendar | Unique_Task_ID |
| --- | --- | --- | --- | --- | --- | --- | --- | --- | --- |
| 2565 | 36900.37000.37100.37800.52800.70500 | **5th Habitable/7th Floor** | 158d | 2027-02-26 | 2027-08-03 |  | start no earlier than 2027-02-26 | 7 Days Work | 9170434 |
| 2566 | 36900.37000.37100.37800.52800.70500.276800 | Side blockwork for lift shafts | 9d | 2027-02-26 | 2027-03-07 | 2556 |  | 7 Days Work | 9177834 |
| 2567 | 36900.37000.37100.37800.52800.70500.276900 | Door Threshold for lifts | 6d | 2027-03-07 | 2027-03-13 | 2566 |  | 7 Days Work | 9177844 |
| 2568 | 36900.37000.37100.37800.52800.70500.277000 | Granite Cladding | 10d | 2027-03-13 | 2027-03-23 | 2567 |  | 7 Days Work | 9177854 |
| 2569 | 36900.37000.37100.37800.52800.70500.277100 | MEP Services | 60d | 2027-03-23 | 2027-05-22 | 2568 |  | 7 Days Work | 9177864 |
| 2570 | 36900.37000.37100.37800.52800.70500.277200 | Flooring+Skirting | 20d | 2027-05-22 | 2027-06-11 | 2569 |  | 7 Days Work | 9177874 |
| 2571 | 36900.37000.37100.37800.52800.70500.277300 | Wall finishes | 21d | 2027-06-11 | 2027-07-02 | 2570 |  | 7 Days Work | 9177884 |
| 2572 | 36900.37000.37100.37800.52800.70500.277400 | False Ceiling | 10d | 2027-07-02 | 2027-07-12 | 2571 |  | 7 Days Work | 9177894 |
| 2573 | 36900.37000.37100.37800.52800.70500.277500 | Staircase | 15d | 2027-07-12 | 2027-07-27 | 2572 |  | 7 Days Work | 9177904 |
| 2574 | 36900.37000.37100.37800.52800.70500.277600 | Deep Cleaning | 7d | 2027-07-27 | 2027-08-03 | 2573 |  | 7 Days Work | 9177914 |
| 2575 | 36900.37000.37100.37800.52800.70600 | **6th Habitable/8th Floor** | 158d | 2027-03-07 | 2027-08-12 |  | start no earlier than 2027-03-07 | 7 Days Work | 9170334 |
| 2576 | 36900.37000.37100.37800.52800.70600.277700 | Side blockwork for lift shafts | 9d | 2027-03-07 | 2027-03-16 | 2566 |  | 7 Days Work | 9177924 |
| 2577 | 36900.37000.37100.37800.52800.70600.277800 | Door Threshold for lifts | 6d | 2027-03-16 | 2027-03-22 | 2576 |  | 7 Days Work | 9177934 |
| 2578 | 36900.37000.37100.37800.52800.70600.277900 | Granite Cladding | 10d | 2027-03-22 | 2027-04-01 | 2577 |  | 7 Days Work | 9177944 |
| 2579 | 36900.37000.37100.37800.52800.70600.278000 | MEP Services | 60d | 2027-04-01 | 2027-05-31 | 2578 |  | 7 Days Work | 9177954 |
| 2580 | 36900.37000.37100.37800.52800.70600.278100 | Flooring+Skirting | 20d | 2027-05-31 | 2027-06-20 | 2579 |  | 7 Days Work | 9177964 |
| 2581 | 36900.37000.37100.37800.52800.70600.278200 | Wall finishes | 21d | 2027-06-20 | 2027-07-11 | 2580 |  | 7 Days Work | 9177974 |
| 2582 | 36900.37000.37100.37800.52800.70600.278300 | False Ceiling | 10d | 2027-07-11 | 2027-07-21 | 2581 |  | 7 Days Work | 9177984 |
| 2583 | 36900.37000.37100.37800.52800.70600.278400 | Staircase | 15d | 2027-07-21 | 2027-08-05 | 2582 |  | 7 Days Work | 9177994 |
| 2584 | 36900.37000.37100.37800.52800.70600.278500 | Deep Cleaning | 7d | 2027-08-05 | 2027-08-12 | 2583 |  | 7 Days Work | 9178004 |
| 2585 | 36900.37000.37100.37800.52800.70700 | **7th Habitable/9th Floor** | 158d | 2027-03-16 | 2027-08-21 |  | start no earlier than 2027-03-16 | 7 Days Work | 9170354 |
| 2586 | 36900.37000.37100.37800.52800.70700.278600 | Side blockwork for lift shafts | 9d | 2027-03-16 | 2027-03-25 | 2576 |  | 7 Days Work | 9178014 |
| 2587 | 36900.37000.37100.37800.52800.70700.278700 | Door Threshold for lifts | 6d | 2027-03-25 | 2027-03-31 | 2586 |  | 7 Days Work | 9178024 |
| 2588 | 36900.37000.37100.37800.52800.70700.278800 | Granite Cladding | 10d | 2027-03-31 | 2027-04-10 | 2587 |  | 7 Days Work | 9178034 |
| 2589 | 36900.37000.37100.37800.52800.70700.278900 | MEP Services | 60d | 2027-04-10 | 2027-06-09 | 2588 |  | 7 Days Work | 9178044 |
| 2590 | 36900.37000.37100.37800.52800.70700.279000 | Flooring+Skirting | 20d | 2027-06-09 | 2027-06-29 | 2589 |  | 7 Days Work | 9178054 |
| 2591 | 36900.37000.37100.37800.52800.70700.279100 | Wall finishes | 21d | 2027-06-29 | 2027-07-20 | 2590 |  | 7 Days Work | 9178064 |
| 2592 | 36900.37000.37100.37800.52800.70700.279200 | False Ceiling | 10d | 2027-07-20 | 2027-07-30 | 2591 |  | 7 Days Work | 9178074 |
| 2593 | 36900.37000.37100.37800.52800.70700.279300 | Staircase | 15d | 2027-07-30 | 2027-08-14 | 2592 |  | 7 Days Work | 9178084 |
| 2594 | 36900.37000.37100.37800.52800.70700.279400 | Deep Cleaning | 7d | 2027-08-14 | 2027-08-21 | 2593 |  | 7 Days Work | 9178094 |

| ID | WBS | Task | Duration | Start | Finish | Predecessors | Constraint | Calendar | Unique_Task_ID |
| --- | --- | --- | --- | --- | --- | --- | --- | --- | --- |
| 2595 | 36900.37000.37100.37800.52800.70800 | **8th Habitable/10th Floor** | 158d | 2027-03-25 | 2027-08-30 |  | start no earlier than 2027-03-25 | 7 Days Work | 9170364 |
| 2596 | 36900.37000.37100.37800.52800.70800.279500 | Side blockwork for lift shafts | 9d | 2027-03-25 | 2027-04-03 | 2586 |  | 7 Days Work | 9178104 |
| 2597 | 36900.37000.37100.37800.52800.70800.279600 | Door Threshold for lifts | 6d | 2027-04-03 | 2027-04-09 | 2596 |  | 7 Days Work | 9178114 |
| 2598 | 36900.37000.37100.37800.52800.70800.279700 | Granite Cladding | 10d | 2027-04-09 | 2027-04-19 | 2597 |  | 7 Days Work | 9178124 |
| 2599 | 36900.37000.37100.37800.52800.70800.279800 | MEP Services | 60d | 2027-04-19 | 2027-06-18 | 2598 |  | 7 Days Work | 9178134 |
| 2600 | 36900.37000.37100.37800.52800.70800.279900 | Flooring+Skirting | 20d | 2027-06-18 | 2027-07-08 | 2599 |  | 7 Days Work | 9178144 |
| 2601 | 36900.37000.37100.37800.52800.70800.280000 | Wall finishes | 21d | 2027-07-08 | 2027-07-29 | 2600 |  | 7 Days Work | 9178154 |
| 2602 | 36900.37000.37100.37800.52800.70800.280100 | False Ceiling | 10d | 2027-07-29 | 2027-08-08 | 2601 |  | 7 Days Work | 9178164 |
| 2603 | 36900.37000.37100.37800.52800.70800.280200 | Staircase | 15d | 2027-08-08 | 2027-08-23 | 2602 |  | 7 Days Work | 9178174 |
| 2604 | 36900.37000.37100.37800.52800.70800.280300 | Deep Cleaning | 7d | 2027-08-23 | 2027-08-30 | 2603 |  | 7 Days Work | 9178184 |
| 2605 | 36900.37000.37100.37800.52800.70900 | **9th Habitable/11th Floor** | 158d | 2027-04-03 | 2027-09-08 |  | start no earlier than 2027-04-03 | 7 Days Work | 9170374 |
| 2606 | 36900.37000.37100.37800.52800.70900.280400 | Side blockwork for lift shafts | 9d | 2027-04-03 | 2027-04-12 | 2596 |  | 7 Days Work | 9178194 |
| 2607 | 36900.37000.37100.37800.52800.70900.280500 | Door Threshold for lifts | 6d | 2027-04-12 | 2027-04-18 | 2606 |  | 7 Days Work | 9178204 |
| 2608 | 36900.37000.37100.37800.52800.70900.280600 | Granite Cladding | 10d | 2027-04-18 | 2027-04-28 | 2607 |  | 7 Days Work | 9178214 |
| 2609 | 36900.37000.37100.37800.52800.70900.280700 | MEP Services | 60d | 2027-04-28 | 2027-06-27 | 2608 |  | 7 Days Work | 9178224 |
| 2610 | 36900.37000.37100.37800.52800.70900.280800 | Flooring+Skirting | 20d | 2027-06-27 | 2027-07-17 | 2609 |  | 7 Days Work | 9178234 |
| 2611 | 36900.37000.37100.37800.52800.70900.280900 | Wall finishes | 21d | 2027-07-17 | 2027-08-07 | 2610 |  | 7 Days Work | 9178244 |
| 2612 | 36900.37000.37100.37800.52800.70900.281000 | False Ceiling | 10d | 2027-08-07 | 2027-08-17 | 2611 |  | 7 Days Work | 9178254 |
| 2613 | 36900.37000.37100.37800.52800.70900.281100 | Staircase | 15d | 2027-08-17 | 2027-09-01 | 2612 |  | 7 Days Work | 9178264 |
| 2614 | 36900.37000.37100.37800.52800.70900.281200 | Deep Cleaning | 7d | 2027-09-01 | 2027-09-08 | 2613 |  | 7 Days Work | 9178274 |
| 2615 | 36900.37000.37100.37800.52800.71000 | **10th Habitable/12th Floor** | 158d | 2027-04-12 | 2027-09-17 |  | start no earlier than 2027-04-12 | 7 Days Work | 9170344 |
| 2616 | 36900.37000.37100.37800.52800.71000.281300 | Side blockwork for lift shafts | 9d | 2027-04-12 | 2027-04-21 | 2606 |  | 7 Days Work | 9178284 |
| 2617 | 36900.37000.37100.37800.52800.71000.281400 | Door Threshold for lifts | 6d | 2027-04-21 | 2027-04-27 | 2616 |  | 7 Days Work | 9178294 |
| 2618 | 36900.37000.37100.37800.52800.71000.281500 | Granite Cladding | 10d | 2027-04-27 | 2027-05-07 | 2617 |  | 7 Days Work | 9178304 |
| 2619 | 36900.37000.37100.37800.52800.71000.281600 | MEP Services | 60d | 2027-05-07 | 2027-07-06 | 2618 |  | 7 Days Work | 9178314 |
| 2620 | 36900.37000.37100.37800.52800.71000.281700 | Flooring+Skirting | 20d | 2027-07-06 | 2027-07-26 | 2619 |  | 7 Days Work | 9178324 |
| 2621 | 36900.37000.37100.37800.52800.71000.281800 | Wall finishes | 21d | 2027-07-26 | 2027-08-16 | 2620 |  | 7 Days Work | 9178334 |
| 2622 | 36900.37000.37100.37800.52800.71000.281900 | False Ceiling | 10d | 2027-08-16 | 2027-08-26 | 2621 |  | 7 Days Work | 9178344 |
| 2623 | 36900.37000.37100.37800.52800.71000.282000 | Staircase | 15d | 2027-08-26 | 2027-09-10 | 2622 |  | 7 Days Work | 9178354 |
| 2624 | 36900.37000.37100.37800.52800.71000.282100 | Deep Cleaning | 7d | 2027-09-10 | 2027-09-17 | 2623 |  | 7 Days Work | 9178364 |

| ID | WBS | Task | Duration | Start | Finish | Predecessors | Constraint | Calendar | Unique_Task_ID |
| --- | --- | --- | --- | --- | --- | --- | --- | --- | --- |
| 2625 | 36900.37000.37100.37800.52800.71100 | **11th Habitable/13th Floor** | 158d | 2027-04-21 | 2027-09-26 |  | start no earlier than 2027-04-21 | 7 Days Work | 9170324 |
| 2626 | 36900.37000.37100.37800.52800.71100.282200 | Side blockwork for lift shafts | 9d | 2027-04-21 | 2027-04-30 | 2616 |  | 7 Days Work | 9178374 |
| 2627 | 36900.37000.37100.37800.52800.71100.282300 | Door Threshold for lifts | 6d | 2027-04-30 | 2027-05-06 | 2626 |  | 7 Days Work | 9178384 |
| 2628 | 36900.37000.37100.37800.52800.71100.282400 | Granite Cladding | 10d | 2027-05-06 | 2027-05-16 | 2627 |  | 7 Days Work | 9178394 |
| 2629 | 36900.37000.37100.37800.52800.71100.282500 | MEP Services | 60d | 2027-05-16 | 2027-07-15 | 2628 |  | 7 Days Work | 9178404 |
| 2630 | 36900.37000.37100.37800.52800.71100.282600 | Flooring+Skirting | 20d | 2027-07-15 | 2027-08-04 | 2629 |  | 7 Days Work | 9178414 |
| 2631 | 36900.37000.37100.37800.52800.71100.282700 | Wall finishes | 21d | 2027-08-04 | 2027-08-25 | 2630 |  | 7 Days Work | 9178424 |
| 2632 | 36900.37000.37100.37800.52800.71100.282800 | False Ceiling | 10d | 2027-08-25 | 2027-09-04 | 2631 |  | 7 Days Work | 9178434 |
| 2633 | 36900.37000.37100.37800.52800.71100.282900 | Staircase | 15d | 2027-09-04 | 2027-09-19 | 2632 |  | 7 Days Work | 9178444 |
| 2634 | 36900.37000.37100.37800.52800.71100.283000 | Deep Cleaning | 7d | 2027-09-19 | 2027-09-26 | 2633 |  | 7 Days Work | 9178454 |
| 2635 | 36900.37000.37100.37800.52800.71200 | **12th Habitable/14th Floor** | 158d | 2027-04-30 | 2027-10-05 |  | start no earlier than 2027-04-30 | 7 Days Work | 9170384 |
| 2636 | 36900.37000.37100.37800.52800.71200.283100 | Side blockwork for lift shafts | 9d | 2027-04-30 | 2027-05-09 | 2626 |  | 7 Days Work | 9178464 |
| 2637 | 36900.37000.37100.37800.52800.71200.283200 | Door Threshold for lifts | 6d | 2027-05-09 | 2027-05-15 | 2636 |  | 7 Days Work | 9178474 |
| 2638 | 36900.37000.37100.37800.52800.71200.283300 | Granite Cladding | 10d | 2027-05-15 | 2027-05-25 | 2637 |  | 7 Days Work | 9178484 |
| 2639 | 36900.37000.37100.37800.52800.71200.283400 | MEP Services | 60d | 2027-05-25 | 2027-07-24 | 2638 |  | 7 Days Work | 9178494 |
| 2640 | 36900.37000.37100.37800.52800.71200.283500 | Flooring+Skirting | 20d | 2027-07-24 | 2027-08-13 | 2639 |  | 7 Days Work | 9178504 |
| 2641 | 36900.37000.37100.37800.52800.71200.283600 | Wall finishes | 21d | 2027-08-13 | 2027-09-03 | 2640 |  | 7 Days Work | 9178514 |
| 2642 | 36900.37000.37100.37800.52800.71200.283700 | False Ceiling | 10d | 2027-09-03 | 2027-09-13 | 2641 |  | 7 Days Work | 9178524 |
| 2643 | 36900.37000.37100.37800.52800.71200.283800 | Staircase | 15d | 2027-09-13 | 2027-09-28 | 2642 |  | 7 Days Work | 9178534 |
| 2644 | 36900.37000.37100.37800.52800.71200.283900 | Deep Cleaning | 7d | 2027-09-28 | 2027-10-05 | 2643 |  | 7 Days Work | 9178544 |
| 2645 | 36900.37000.37100.37800.52800.71300 | **13th Habitable/15th Floor** | 158d | 2027-05-09 | 2027-10-14 |  | start no earlier than 2027-05-09 | 7 Days Work | 9170394 |
| 2646 | 36900.37000.37100.37800.52800.71300.284000 | Side blockwork for lift shafts | 9d | 2027-05-09 | 2027-05-18 | 2636 |  | 7 Days Work | 9178554 |
| 2647 | 36900.37000.37100.37800.52800.71300.284100 | Door Threshold for lifts | 6d | 2027-05-18 | 2027-05-24 | 2646 |  | 7 Days Work | 9178564 |
| 2648 | 36900.37000.37100.37800.52800.71300.284200 | Granite Cladding | 10d | 2027-05-24 | 2027-06-03 | 2647 |  | 7 Days Work | 9178574 |
| 2649 | 36900.37000.37100.37800.52800.71300.284300 | MEP Services | 60d | 2027-06-03 | 2027-08-02 | 2648 |  | 7 Days Work | 9178584 |
| 2650 | 36900.37000.37100.37800.52800.71300.284400 | Flooring+Skirting | 20d | 2027-08-02 | 2027-08-22 | 2649 |  | 7 Days Work | 9178594 |
| 2651 | 36900.37000.37100.37800.52800.71300.284500 | Wall finishes | 21d | 2027-08-22 | 2027-09-12 | 2650 |  | 7 Days Work | 9178604 |
| 2652 | 36900.37000.37100.37800.52800.71300.284600 | False Ceiling | 10d | 2027-09-12 | 2027-09-22 | 2651 |  | 7 Days Work | 9178614 |
| 2653 | 36900.37000.37100.37800.52800.71300.284700 | Staircase | 15d | 2027-09-22 | 2027-10-07 | 2652 |  | 7 Days Work | 9178624 |
| 2654 | 36900.37000.37100.37800.52800.71300.284800 | Deep Cleaning | 7d | 2027-10-07 | 2027-10-14 | 2653 |  | 7 Days Work | 9178634 |

| ID | WBS | Task | Duration | Start | Finish | Predecessors | Constraint | Calendar | Unique_Task_ID |
| --- | --- | --- | --- | --- | --- | --- | --- | --- | --- |
| 2655 | 36900.37000.37100.37800.52800.71400 | **14th Habitable/16th Floor** | 158d | 2027-05-18 | 2027-10-23 |  | start no earlier than 2027-05-18 | 7 Days Work | 9170404 |
| 2656 | 36900.37000.37100.37800.52800.71400.284900 | Side blockwork for lift shafts | 9d | 2027-05-18 | 2027-05-27 | 2646 |  | 7 Days Work | 9178644 |
| 2657 | 36900.37000.37100.37800.52800.71400.285000 | Door Threshold for lifts | 6d | 2027-05-27 | 2027-06-02 | 2656 |  | 7 Days Work | 9178654 |
| 2658 | 36900.37000.37100.37800.52800.71400.285100 | Granite Cladding | 10d | 2027-06-02 | 2027-06-12 | 2657 |  | 7 Days Work | 9178664 |
| 2659 | 36900.37000.37100.37800.52800.71400.285200 | MEP Services | 60d | 2027-06-12 | 2027-08-11 | 2658 |  | 7 Days Work | 9178674 |
| 2660 | 36900.37000.37100.37800.52800.71400.285300 | Flooring+Skirting | 20d | 2027-08-11 | 2027-08-31 | 2659 |  | 7 Days Work | 9178684 |
| 2661 | 36900.37000.37100.37800.52800.71400.285400 | Wall finishes | 21d | 2027-08-31 | 2027-09-21 | 2660 |  | 7 Days Work | 9178694 |
| 2662 | 36900.37000.37100.37800.52800.71400.285500 | False Ceiling | 10d | 2027-09-21 | 2027-10-01 | 2661 |  | 7 Days Work | 9178704 |
| 2663 | 36900.37000.37100.37800.52800.71400.285600 | Staircase | 15d | 2027-10-01 | 2027-10-16 | 2662 |  | 7 Days Work | 9178714 |
| 2664 | 36900.37000.37100.37800.52800.71400.285700 | Deep Cleaning | 7d | 2027-10-16 | 2027-10-23 | 2663 |  | 7 Days Work | 9178724 |
| 2665 | 36900.37000.37100.37800.52800.71500 | **15th Habitable/17th Floor** | 158d | 2027-05-27 | 2027-11-01 |  | start no earlier than 2027-05-27 | 7 Days Work | 9170414 |
| 2666 | 36900.37000.37100.37800.52800.71500.285800 | Side blockwork for lift shafts | 9d | 2027-05-27 | 2027-06-05 | 2656 |  | 7 Days Work | 9178734 |
| 2667 | 36900.37000.37100.37800.52800.71500.285900 | Door Threshold for lifts | 6d | 2027-06-05 | 2027-06-11 | 2666 |  | 7 Days Work | 9178744 |
| 2668 | 36900.37000.37100.37800.52800.71500.286000 | Granite Cladding | 10d | 2027-06-11 | 2027-06-21 | 2667 |  | 7 Days Work | 9178754 |
| 2669 | 36900.37000.37100.37800.52800.71500.286100 | MEP Services | 60d | 2027-06-21 | 2027-08-20 | 2668 |  | 7 Days Work | 9178764 |
| 2670 | 36900.37000.37100.37800.52800.71500.286200 | Flooring+Skirting | 20d | 2027-08-20 | 2027-09-09 | 2669 |  | 7 Days Work | 9178774 |
| 2671 | 36900.37000.37100.37800.52800.71500.286300 | Wall finishes | 21d | 2027-09-09 | 2027-09-30 | 2670 |  | 7 Days Work | 9178784 |
| 2672 | 36900.37000.37100.37800.52800.71500.286400 | False Ceiling | 10d | 2027-09-30 | 2027-10-10 | 2671 |  | 7 Days Work | 9178794 |
| 2673 | 36900.37000.37100.37800.52800.71500.286500 | Staircase | 15d | 2027-10-10 | 2027-10-25 | 2672 |  | 7 Days Work | 9178804 |
| 2674 | 36900.37000.37100.37800.52800.71500.286600 | Deep Cleaning | 7d | 2027-10-25 | 2027-11-01 | 2673 |  | 7 Days Work | 9178814 |
| 2675 | 36900.37000.37100.37800.52800.71600 | **16th Habitable/18th Floor** | 158d | 2027-06-05 | 2027-11-10 |  | start no earlier than 2027-06-05 | 7 Days Work | 9170424 |
| 2676 | 36900.37000.37100.37800.52800.71600.286700 | Side blockwork for lift shafts | 9d | 2027-06-05 | 2027-06-14 | 2666 |  | 7 Days Work | 9178824 |
| 2677 | 36900.37000.37100.37800.52800.71600.286800 | Door Threshold for lifts | 6d | 2027-06-14 | 2027-06-20 | 2676 |  | 7 Days Work | 9178834 |
| 2678 | 36900.37000.37100.37800.52800.71600.286900 | Granite Cladding | 10d | 2027-06-20 | 2027-06-30 | 2677 |  | 7 Days Work | 9178844 |
| 2679 | 36900.37000.37100.37800.52800.71600.287000 | MEP Services | 60d | 2027-06-30 | 2027-08-29 | 2678 |  | 7 Days Work | 9178854 |
| 2680 | 36900.37000.37100.37800.52800.71600.287100 | Flooring+Skirting | 20d | 2027-08-29 | 2027-09-18 | 2679 |  | 7 Days Work | 9178864 |
| 2681 | 36900.37000.37100.37800.52800.71600.287200 | Wall finishes | 21d | 2027-09-18 | 2027-10-09 | 2680 |  | 7 Days Work | 9178874 |
| 2682 | 36900.37000.37100.37800.52800.71600.287300 | False Ceiling | 10d | 2027-10-09 | 2027-10-19 | 2681 |  | 7 Days Work | 9178884 |
| 2683 | 36900.37000.37100.37800.52800.71600.287400 | Staircase | 15d | 2027-10-19 | 2027-11-03 | 2682 |  | 7 Days Work | 9178894 |
| 2684 | 36900.37000.37100.37800.52800.71600.287500 | Deep Cleaning | 7d | 2027-11-03 | 2027-11-10 | 2683 |  | 7 Days Work | 9178904 |

| ID | WBS | Task | Duration | Start | Finish | Predecessors | Constraint | Calendar | Unique_Task_ID |
| --- | --- | --- | --- | --- | --- | --- | --- | --- | --- |
| 2685 | 36900.37000.37100.37800.52800.71700 | **17th Habitable/19th Floor** | 158d | 2027-06-14 | 2027-11-19 |  | start no earlier than 2027-06-14 | 7 Days Work | 9170454 |
| 2686 | 36900.37000.37100.37800.52800.71700.287600 | Side blockwork for lift shafts | 9d | 2027-06-14 | 2027-06-23 | 2676 |  | 7 Days Work | 9178914 |
| 2687 | 36900.37000.37100.37800.52800.71700.287700 | Door Threshold for lifts | 6d | 2027-06-23 | 2027-06-29 | 2686 |  | 7 Days Work | 9178924 |
| 2688 | 36900.37000.37100.37800.52800.71700.287800 | Granite Cladding | 10d | 2027-06-29 | 2027-07-09 | 2687 |  | 7 Days Work | 9178934 |
| 2689 | 36900.37000.37100.37800.52800.71700.287900 | MEP Services | 60d | 2027-07-09 | 2027-09-07 | 2688 |  | 7 Days Work | 9178944 |
| 2690 | 36900.37000.37100.37800.52800.71700.288000 | Flooring+Skirting | 20d | 2027-09-07 | 2027-09-27 | 2689 |  | 7 Days Work | 9178954 |
| 2691 | 36900.37000.37100.37800.52800.71700.288100 | Wall finishes | 21d | 2027-09-27 | 2027-10-18 | 2690 |  | 7 Days Work | 9178964 |
| 2692 | 36900.37000.37100.37800.52800.71700.288200 | False Ceiling | 10d | 2027-10-18 | 2027-10-28 | 2691 |  | 7 Days Work | 9178974 |
| 2693 | 36900.37000.37100.37800.52800.71700.288300 | Staircase | 15d | 2027-10-28 | 2027-11-12 | 2692 |  | 7 Days Work | 9178984 |
| 2694 | 36900.37000.37100.37800.52800.71700.288400 | Deep Cleaning | 7d | 2027-11-12 | 2027-11-19 | 2693 |  | 7 Days Work | 9178994 |
| 2695 | 36900.37000.37100.37800.52800.71800 | **18th Habitable/20th Floor** | 158d | 2027-06-23 | 2027-11-28 |  | start no earlier than 2027-06-23 | 7 Days Work | 9170464 |
| 2696 | 36900.37000.37100.37800.52800.71800.288500 | Side blockwork for lift shafts | 9d | 2027-06-23 | 2027-07-02 | 2686 |  | 7 Days Work | 9179004 |
| 2697 | 36900.37000.37100.37800.52800.71800.288600 | Door Threshold for lifts | 6d | 2027-07-02 | 2027-07-08 | 2696 |  | 7 Days Work | 9179014 |
| 2698 | 36900.37000.37100.37800.52800.71800.288700 | Granite Cladding | 10d | 2027-07-08 | 2027-07-18 | 2697 |  | 7 Days Work | 9179024 |
| 2699 | 36900.37000.37100.37800.52800.71800.288800 | MEP Services | 60d | 2027-07-18 | 2027-09-16 | 2698 |  | 7 Days Work | 9179034 |
| 2700 | 36900.37000.37100.37800.52800.71800.288900 | Flooring+Skirting | 20d | 2027-09-16 | 2027-10-06 | 2699 |  | 7 Days Work | 9179044 |
| 2701 | 36900.37000.37100.37800.52800.71800.289000 | Wall finishes | 21d | 2027-10-06 | 2027-10-27 | 2700 |  | 7 Days Work | 9179054 |
| 2702 | 36900.37000.37100.37800.52800.71800.289100 | False Ceiling | 10d | 2027-10-27 | 2027-11-06 | 2701 |  | 7 Days Work | 9179064 |
| 2703 | 36900.37000.37100.37800.52800.71800.289200 | Staircase | 15d | 2027-11-06 | 2027-11-21 | 2702 |  | 7 Days Work | 9179074 |
| 2704 | 36900.37000.37100.37800.52800.71800.289300 | Deep Cleaning | 7d | 2027-11-21 | 2027-11-28 | 2703 |  | 7 Days Work | 9043604 |
| 2705 | 36900.37000.37100.37800.67600 | **Lift** | 323.25d | 2026-04-18 | 2027-03-07 |  | start no earlier than 2026-04-18 | 7 Days Work | 9170314 |
| 2706 | 36900.37000.37100.37800.67600.115700 | Order Issue | 105d | 2026-04-18 | 2026-08-01 | 1433FS-120d |  | 7 Days Work | 9170514 |
| 2707 | 36900.37000.37100.37800.67600.115800 | Shop drawing approval | 30d | 2026-08-01 | 2026-08-31 | 2706 |  | 7 Days Work | 9170524 |
| 2708 | 36900.37000.37100.37800.67600.115900 | Material recipt | 90d | 2026-08-31 | 2026-11-29 | 2707 |  | 7 Days Work | 9170534 |
| 2709 | 36900.37000.37100.37800.67600.116000 | Lift Shaft Handover | 30d | 2026-12-10 | 2027-01-09 | 1442 |  | 7 Days Work | 9170544 |
| 2710 | 36900.37000.37100.37800.67600.116100 | Template fixing by lift contractor | 7d | 2027-01-09 | 2027-01-16 | 2709 |  | 7 Days Work | 9170554 |
| 2711 | 36900.37000.37100.37800.67600.116200 | Centre line marking for lift shafts | 5d | 2027-01-16 | 2027-01-21 | 2710 |  | 7 Days Work | 9170564 |
| 2712 | 36900.37000.37100.37800.67600.116300 | Rail & Bracket Fixing | 5d | 2027-01-21 | 2027-01-26 | 2711 |  | 7 Days Work | 9170574 |
| 2713 | 36900.37000.37100.37800.67600.116400 | Cage Installation | 5d | 2027-01-26 | 2027-01-31 | 2712 |  | 7 Days Work | 9170584 |
| 2714 | 36900.37000.37100.37800.67600.116500 | Slow Speed | 20d | 2027-01-31 | 2027-02-20 | 2713 |  | 7 Days Work | 9170594 |
| 2715 | 36900.37000.37100.37800.67600.116600 | High Spped | 5d | 2027-02-20 | 2027-02-25 | 2714 |  | 7 Days Work | 9170604 |
| 2716 | 36900.37000.37100.37800.67600.116700 | Commisioning | 7d | 2027-02-25 | 2027-03-04 | 2715 |  | 7 Days Work | 9170614 |
| 2717 | 36900.37000.37100.37800.67600.116800 | Handover | 3d | 2027-03-04 | 2027-03-07 | 2716 |  | 7 Days Work | 9043594 |
| 2718 | 36900.37000.37100.37800.100200 | External Paint | 90d | 2027-03-20 | 2027-06-18 | 1441FS+135d |  | 7 Days Work | 9042584 |

| ID | WBS | Task | Duration | Start | Finish | Predecessors | Complete | Constraint | Calendar | Unique_Task_ID |
| --- | --- | --- | --- | --- | --- | --- | --- | --- | --- | --- |
| 2719 | 36900.37000.37100.37700 | **Tower-3** | 991.25d | 2025-03-04 | 2027-11-20 |  | 2% | start no earlier than 2025-03-04 | 7 Days Work | 9042624 |
| 2720 | 36900.37000.37100.37700.90200 | Pilling- Non Effected of Tree Noc Zone | 117d | 2025-03-04 | 2025-07-18 | 4FS-67d | 100% | start no earlier than 2025-03-04 | 7 Days Work | 9043614 |
| 2721 | 36900.37000.37100.37700.90100 | Pilling-Effected of Tree Noc Zone | 45d | 2025-06-13 | 2025-07-27 | 5FS+3d | 100% | start no earlier than 2025-06-13 | 7 Days Work | 10343858 |
| 2722 | 36900.37000.37100.37700.90000 | SPT Test | 30d | 2025-06-03 | 2025-07-18 | 2720FF+15d | 100% | start no earlier than 2025-06-03 | 7 Days Work | 10343628 |
| 2723 | 36900.37000.37100.37700.89900 | Dynamic | 5d | 2025-10-26 | 2025-10-30 | 2720FS+28d | 100% | start no earlier than 2025-10-26 | 7 Days Work | 10343638 |
| 2724 | 36900.37000.37100.37700.89800 | Static Load Test | 14d | 2025-08-11 | 2025-08-30 | 2720FS+28d | 100% | start no earlier than 2025-08-11 | 7 Days Work | 10343648 |
| 2725 | 36900.37000.37100.37700.89700 | Excavation | 15d | 2025-10-13 | 2025-11-04 | 2724 | 100% | start no earlier than 2025-10-13 | 7 Days Work | 9043615 |
| 2726 | 36900.37000.37100.37700.89600 | PCC | 16d | 2025-10-15 | 2025-11-04 | 2725 | 100% | start no earlier than 2025-10-15 | 7 Days Work | 9043616 |
| 2727 | 36900.37000.37100.37700.89500 | Pile Head Breaing | 31d | 2025-10-04 | 2025-11-08 | 2726 | 100% | start no earlier than 2025-10-04 | 7 Days Work | 9043617 |
| 2728 | 36900.37000.37100.37700.89400 | PIT | 7d | 2025-11-05 | 2025-11-11 | 2725 | 100% | start no earlier than 2025-11-05 | 7 Days Work | 10343658 |
| 2729 | 36900.37000.37100.37700.89300 | Raft-reinforcement | 29d | 2025-10-29 | 2025-12-15 | 2728 | 44% | start no earlier than 2025-10-29 | 7 Days Work | 9043624 |
| 2730 | 36900.37000.37100.37700.89200 | Raft-Shuttering | 29d | 2025-11-04 | 2025-12-20 | 2729FF+5d | 89% |  | 7 Days Work | 9043625 |
| 2731 | 36900.37000.37100.37700.89100 | Raft-concreting | 27d | 2025-11-08 | 2025-12-21 | 2730FF+1d | 81% |  | 7 Days Work | 9043626 |
| 2732 | 36900.37000.37100.37700.100300 | up to PL | 22d | 2025-12-22 | 2026-01-13 | 2731FS+0.25d |  |  | 7 Days Work | 9043634 |
| 2733 | 36900.37000.37100.37700.100400 | 1st Floor Slab RCC | 25d | 2026-01-13 | 2026-02-07 | 2732 |  |  | 7 Days Work | 9043644 |
| 2734 | 36900.37000.37100.37700.100500 | 2nd Floor Slab RCC | 25d | 2026-02-07 | 2026-03-04 | 2733 |  |  | 7 Days Work | 9043654 |
| 2735 | 36900.37000.37100.37700.100600 | 3rd Floor Slab RCC | 25d | 2026-03-04 | 2026-03-29 | 2734 |  |  | 7 Days Work | 9043664 |
| 2736 | 36900.37000.37100.37700.100700 | 4th Floor Slab RCC | 21d | 2026-03-29 | 2026-04-19 | 2735 |  |  | 7 Days Work | 9043674 |
| 2737 | 36900.37000.37100.37700.100800 | 5th Floor Slab RCC | 15d | 2026-04-19 | 2026-05-04 | 2736 |  |  | 7 Days Work | 9043684 |
| 2738 | 36900.37000.37100.37700.100900 | 6th Floor Slab RCC | 9d | 2026-05-04 | 2026-05-13 | 2737 |  |  | 7 Days Work | 9043694 |
| 2739 | 36900.37000.37100.37700.101000 | 7th Floor Slab RCC | 12d | 2026-05-13 | 2026-05-25 | 2738 |  |  | 7 Days Work | 9043704 |
| 2740 | 36900.37000.37100.37700.101100 | 8th Floor Slab RCC | 9d | 2026-05-25 | 2026-06-03 | 2739 |  |  | 7 Days Work | 9043714 |
| 2741 | 36900.37000.37100.37700.101200 | 9th Floor Slab RCC | 9d | 2026-06-03 | 2026-06-12 | 2740 |  |  | 7 Days Work | 9043724 |
| 2742 | 36900.37000.37100.37700.101300 | 10th Floor Slab RCC | 9d | 2026-06-12 | 2026-06-21 | 2741 |  |  | 7 Days Work | 9043734 |
| 2743 | 36900.37000.37100.37700.101400 | 11th Floor Slab RCC | 12d | 2026-06-21 | 2026-07-03 | 2742 |  |  | 7 Days Work | 9043744 |
| 2744 | 36900.37000.37100.37700.101500 | 12th Floor Slab RCC | 9d | 2026-07-03 | 2026-07-12 | 2743 |  |  | 7 Days Work | 9043754 |
| 2745 | 36900.37000.37100.37700.101600 | 13th Floor Slab RCC | 9d | 2026-07-12 | 2026-07-21 | 2744 |  |  | 7 Days Work | 9043764 |
| 2746 | 36900.37000.37100.37700.101700 | 14th Floor Slab RCC | 9d | 2026-07-21 | 2026-07-30 | 2745 |  |  | 7 Days Work | 9043774 |
| 2747 | 36900.37000.37100.37700.101800 | 15th Floor Slab RCC | 12d | 2026-07-30 | 2026-08-11 | 2746 |  |  | 7 Days Work | 9043784 |
| 2748 | 36900.37000.37100.37700.101900 | 16th Floor Slab RCC | 9d | 2026-08-11 | 2026-08-20 | 2747 |  |  | 7 Days Work | 9043794 |
| 2749 | 36900.37000.37100.37700.102000 | 17th Floor Slab RCC | 9d | 2026-08-20 | 2026-08-29 | 2748 |  |  | 7 Days Work | 9043804 |
| 2750 | 36900.37000.37100.37700.102100 | 18th Floor Slab RCC | 9d | 2026-08-29 | 2026-09-07 | 2749 |  |  | 7 Days Work | 9043814 |
| 2751 | 36900.37000.37100.37700.102200 | 19th Floor Slab RCC | 12d | 2026-09-07 | 2026-09-19 | 2750 |  |  | 7 Days Work | 9043824 |
| 2752 | 36900.37000.37100.37700.102300 | 20th Floor Slab RCC | 9d | 2026-09-19 | 2026-09-28 | 2751 |  |  | 7 Days Work | 9043834 |
| 2753 | 36900.37000.37100.37700.102400 | 21st Floor Slab RCC | 9d | 2026-09-28 | 2026-10-07 | 2752 |  |  | 7 Days Work | 9043844 |
| 2754 | 36900.37000.37100.37700.102500 | Terrace | 12d | 2026-10-07 | 2026-10-19 | 2753 |  |  | 7 Days Work | 9043854 |
| 2755 | 36900.37000.37100.37700.102600 | Above Terrace | 35d | 2026-10-19 | 2026-11-23 | 2754 |  |  | 7 Days Work | 9043855 |

| ID | WBS | Task | Duration | Start | Finish | Predecessors | Constraint | Calendar | Unique_Task_ID |
| --- | --- | --- | --- | --- | --- | --- | --- | --- | --- |
| 2756 | 36900.37000.37100.37700.38400 | **Flat Finishing** | 428d | 2026-05-04 | 2027-07-06 |  | start no earlier than 2026-05-04 | 7 Days Work | 9183364 |
| 2757 | 36900.37000.37100.37700.38400.42300 | **1st Habitable/3rd Floor** | 245d | 2026-05-04 | 2027-01-04 |  | start no earlier than 2026-05-04 | 7 Days Work | 9183374 |
| 2758 | 36900.37000.37100.37700.38400.42300.289400 | Post Pour | 7d | 2026-05-04 | 2026-05-11 | 2736FS+15d |  | 7 Days Work | 9184084 |
| 2759 | 36900.37000.37100.37700.38400.42300.289500 | MEP Clearance -1 | 5d | 2026-05-11 | 2026-05-16 | 2758 |  | 7 Days Work | 9184094 |
| 2760 | 36900.37000.37100.37700.38400.42300.289600 | Benchmark | 1d | 2026-05-16 | 2026-05-17 | 2759 |  | 7 Days Work | 9184104 |
| 2761 | 36900.37000.37100.37700.38400.42300.289700 | Temporary Railing | 3d | 2026-05-17 | 2026-05-20 | 2760 |  | 7 Days Work | 9184114 |
| 2762 | 36900.37000.37100.37700.38400.42300.289800 | Blockwork | 10d | 2026-05-20 | 2026-05-30 | 2761 |  | 7 Days Work | 9184124 |
| 2763 | 36900.37000.37100.37700.38400.42300.289900 | MEP Clearance -2 | 10d | 2026-05-30 | 2026-06-09 | 2762 |  | 7 Days Work | 9184134 |
| 2764 | 36900.37000.37100.37700.38400.42300.290000 | Gypsum Plaster | 14d | 2026-06-09 | 2026-06-23 | 2763 |  | 7 Days Work | 9043864 |
| 2765 | 36900.37000.37100.37700.38400.42300.290100 | Kitchen Platform | 3d | 2026-06-23 | 2026-06-26 | 2764 |  | 7 Days Work | 9184154 |
| 2766 | 36900.37000.37100.37700.38400.42300.290200 | Kitchen dado | 7d | 2026-06-26 | 2026-07-03 | 2765 |  | 7 Days Work | 9184164 |
| 2767 | 36900.37000.37100.37700.38400.42300.290300 | Fire Fighting | 5d | 2026-07-03 | 2026-07-08 | 2766 |  | 7 Days Work | 9184174 |
| 2768 | 36900.37000.37100.37700.38400.42300.290400 | Anticapilary | 5d | 2026-07-08 | 2026-07-13 | 2767 |  | 7 Days Work | 9184184 |
| 2769 | 36900.37000.37100.37700.38400.42300.290500 | Stone Laying | 10d | 2026-08-15 | 2026-08-25 | 2809 |  | 7 Days Work | 9184194 |
| 2770 | 36900.37000.37100.37700.38400.42300.290600 | Tiles Laying | 7d | 2026-08-15 | 2026-08-22 | 2809 |  | 7 Days Work | 9043874 |
| 2771 | 36900.37000.37100.37700.38400.42300.290700 | 1st cutting/polishing of stone flooring | 7d | 2026-08-22 | 2026-08-29 | 2770 |  | 7 Days Work | 9184214 |
| 2772 | 36900.37000.37100.37700.38400.42300.290800 | Tiles/Stone skirting | 5d | 2026-08-29 | 2026-09-03 | 2771 |  | 7 Days Work | 9184224 |
| 2773 | 36900.37000.37100.37700.38400.42300.290900 | Protechtion sheet | 1d | 2026-09-03 | 2026-09-04 | 2772 |  | 7 Days Work | 9184234 |
| 2774 | 36900.37000.37100.37700.38400.42300.291000 | Installation of Temporary Door | 1d | 2026-09-04 | 2026-09-05 | 2773 |  | 7 Days Work | 9184244 |
| 2775 | 36900.37000.37100.37700.38400.42300.291100 | Fixing of window tracks | 5d | 2026-09-05 | 2026-09-10 | 2774 |  | 7 Days Work | 9184254 |
| 2776 | 36900.37000.37100.37700.38400.42300.291200 | Wire Pulling | 7d | 2026-09-10 | 2026-09-17 | 2775 |  | 7 Days Work | 9184264 |
| 2777 | 36900.37000.37100.37700.38400.42300.291300 | Gypsum Remaining | 5d | 2026-09-17 | 2026-09-22 | 2776 |  | 7 Days Work | 9184274 |
| 2778 | 36900.37000.37100.37700.38400.42300.291400 | Fixing of windoow shutter | 5d | 2026-09-22 | 2026-09-27 | 2777 |  | 7 Days Work | 9184284 |
| 2779 | 36900.37000.37100.37700.38400.42300.291500 | Putty Works - walls & ceiling | 15d | 2026-09-27 | 2026-10-12 | 2778 |  | 7 Days Work | 9184294 |
| 2780 | 36900.37000.37100.37700.38400.42300.291600 | False Ceiling- Framing | 10d | 2026-10-12 | 2026-10-22 | 2779 |  | 7 Days Work | 9184304 |
| 2781 | 36900.37000.37100.37700.38400.42300.291700 | Pre Hung Door | 3d | 2026-10-22 | 2026-10-25 | 2780 |  | 7 Days Work | 9184314 |
| 2782 | 36900.37000.37100.37700.38400.42300.291800 | Protechtion sheet | 2d | 2026-10-25 | 2026-10-27 | 2781 |  | 7 Days Work | 9184324 |
| 2783 | 36900.37000.37100.37700.38400.42300.291900 | Skirting near door | 2d | 2026-10-27 | 2026-10-29 | 2782 |  | 7 Days Work | 9184334 |
| 2784 | 36900.37000.37100.37700.38400.42300.292000 | Electrical Switch box fixing | 14d | 2026-10-29 | 2026-11-12 | 2783 |  | 7 Days Work | 9184344 |
| 2785 | 36900.37000.37100.37700.38400.42300.292100 | Fire Fighting painting | 5d | 2026-11-12 | 2026-11-17 | 2784 |  | 7 Days Work | 9184354 |
| 2786 | 36900.37000.37100.37700.38400.42300.292200 | Protection of all flooring, door & window hardware | 5d | 2026-11-17 | 2026-11-22 | 2785 |  | 7 Days Work | 9184364 |
| 2787 | 36900.37000.37100.37700.38400.42300.292300 | 1st coat primer- ceiling 1st & walls | 14d | 2026-11-22 | 2026-12-06 | 2786 |  | 7 Days Work | 9184374 |
| 2788 | 36900.37000.37100.37700.38400.42300.292400 | Wooden Flooring | 5d | 2026-12-06 | 2026-12-11 | 2787 |  | 7 Days Work | 9184384 |
| 2789 | 36900.37000.37100.37700.38400.42300.292500 | Removing of Temporary Railing & installation of Glass Railing | 5d | 2026-12-06 | 2026-12-11 | 2787 |  | 7 Days Work | 9184394 |
| 2790 | 36900.37000.37100.37700.38400.42300.292600 | Tile Grouting | 7d | 2026-12-06 | 2026-12-13 | 2787 |  | 7 Days Work | 9184404 |
| 2791 | 36900.37000.37100.37700.38400.42300.292700 | False Ceiling | 5d | 2026-12-13 | 2026-12-18 | 2790 |  | 7 Days Work | 9184414 |
| 2792 | 36900.37000.37100.37700.38400.42300.292800 | 2nd coat of primer | 10d | 2026-12-18 | 2026-12-28 | 2791 |  | 7 Days Work | 9184424 |
| 2793 | 36900.37000.37100.37700.38400.42300.292900 | Final cutting/polishing of stone flooring | 7d | 2026-12-28 | 2027-01-04 | 2792 |  | 7 Days Work | 9184434 |

| ID | WBS | Task | Duration | Start | Finish | Predecessors | Constraint | Calendar | Unique_Task_ID |
| --- | --- | --- | --- | --- | --- | --- | --- | --- | --- |
| 2794 | 36900.37000.37100.37700.38400.42300.56600 | **Toilet** | 237d | 2026-05-11 | 2027-01-03 |  | start no earlier than 2026-05-11 | 7 Days Work | 9183574 |
| 2795 | 36900.37000.37100.37700.38400.42300.56600.816500 | Toilet_MEP Clearance -1 | 7d | 2026-05-11 | 2026-05-18 | 2758 |  | 7 Days Work | 9192634 |
| 2796 | 36900.37000.37100.37700.38400.42300.56600.816600 | Toilet_Level Marking | 1d | 2026-05-18 | 2026-05-19 | 2795 |  | 7 Days Work | 9192644 |
| 2797 | 36900.37000.37100.37700.38400.42300.56600.816700 | Toilet_Chasing work for Electrical conduit & concealed plumbing | 5d | 2026-05-19 | 2026-05-24 | 2796 |  | 7 Days Work | 9192654 |
| 2798 | 36900.37000.37100.37700.38400.42300.56600.816800 | Toilet_Plumbing work 1st fix | 5d | 2026-05-24 | 2026-05-29 | 2797 |  | 7 Days Work | 9192664 |
| 2799 | 36900.37000.37100.37700.38400.42300.56600.816900 | Toilet_Sleeve/Bore Packing | 5d | 2026-05-29 | 2026-06-03 | 2798 |  | 7 Days Work | 9192674 |
| 2800 | 36900.37000.37100.37700.38400.42300.56600.817000 | Toilet_Waterproofing | 10d | 2026-06-03 | 2026-06-13 | 2799 |  | 7 Days Work | 9192684 |
| 2801 | 36900.37000.37100.37700.38400.42300.56600.817100 | Toilet_Screed | 1d | 2026-06-13 | 2026-06-14 | 2800 |  | 7 Days Work | 9192694 |
| 2802 | 36900.37000.37100.37700.38400.42300.56600.817200 | Toilet_Plumbing 2nd fix | 5d | 2026-06-14 | 2026-06-19 | 2801 |  | 7 Days Work | 9192704 |
| 2803 | 36900.37000.37100.37700.38400.42300.56600.817300 | Toilet_Ledge wall | 5d | 2026-06-19 | 2026-06-24 | 2802 |  | 7 Days Work | 9192714 |
| 2804 | 36900.37000.37100.37700.38400.42300.56600.817400 | Toilet_Cement Plaster | 5d | 2026-06-24 | 2026-06-29 | 2803 |  | 7 Days Work | 9192724 |
| 2805 | 36900.37000.37100.37700.38400.42300.56600.817500 | Toilet_Door Frame | 1d | 2026-06-29 | 2026-06-30 | 2804 |  | 7 Days Work | 9192734 |
| 2806 | 36900.37000.37100.37700.38400.42300.56600.817600 | Toilet_Wash basin & Couter | 3d | 2026-06-30 | 2026-07-03 | 2805 |  | 7 Days Work | 9192744 |
| 2807 | 36900.37000.37100.37700.38400.42300.56600.817700 | Toilet_Wall dado | 20d | 2026-07-03 | 2026-07-23 | 2806 |  | 7 Days Work | 9192754 |
| 2808 | 36900.37000.37100.37700.38400.42300.56600.817800 | Toilet_Granite Work-Ledge wall top | 3d | 2026-07-23 | 2026-07-26 | 2807 |  | 7 Days Work | 9192764 |
| 2809 | 36900.37000.37100.37700.38400.42300.56600.817900 | Toilet_Floor Tilling work | 20d | 2026-07-26 | 2026-08-15 | 2808 |  | 7 Days Work | 9192774 |
| 2810 | 36900.37000.37100.37700.38400.42300.56600.818000 | Toilet_1st row of dado | 5d | 2026-08-15 | 2026-08-20 | 2809 |  | 7 Days Work | 9192784 |
| 2811 | 36900.37000.37100.37700.38400.42300.56600.818100 | Toilet_Window Fixing | 14d | 2026-08-20 | 2026-09-03 | 2810 |  | 7 Days Work | 9192794 |
| 2812 | 36900.37000.37100.37700.38400.42300.56600.818200 | Toilet_Services above False ceiling | 21d | 2026-09-03 | 2026-09-24 | 2811 |  | 7 Days Work | 9192804 |
| 2813 | 36900.37000.37100.37700.38400.42300.56600.818300 | Toilet_False Ceiling framing | 12d | 2026-09-24 | 2026-10-06 | 2812 |  | 7 Days Work | 9192814 |
| 2814 | 36900.37000.37100.37700.38400.42300.56600.818400 | Toilet_Door Frame | 5d | 2026-10-06 | 2026-10-11 | 2813 |  | 7 Days Work | 9192824 |
| 2815 | 36900.37000.37100.37700.38400.42300.56600.818500 | Toilet_Epoxy Tile Grouting | 7d | 2026-12-06 | 2026-12-13 | 2790SS |  | 7 Days Work | 9192834 |
| 2816 | 36900.37000.37100.37700.38400.42300.56600.818600 | Toilet_False ceiling board fixing, CP Sanitary Fixture, Electric Fixture | 21d | 2026-12-13 | 2027-01-03 | 2815 |  | 7 Days Work | 9192844 |
| 2817 | 36900.37000.37100.37700.38400.42400 | **2nd Habitable/4th Floor** | 245d | 2026-05-19 | 2027-01-19 |  | start no earlier than 2026-05-19 | 7 Days Work | 9183384 |
| 2818 | 36900.37000.37100.37700.38400.42400.293000 | Post Pour | 7d | 2026-05-19 | 2026-05-26 | 2737FS+15d |  | 7 Days Work | 9184444 |
| 2819 | 36900.37000.37100.37700.38400.42400.293100 | MEP Clearance -1 | 5d | 2026-05-26 | 2026-05-31 | 2818 |  | 7 Days Work | 9184454 |
| 2820 | 36900.37000.37100.37700.38400.42400.293200 | Benchmark | 1d | 2026-05-31 | 2026-06-01 | 2819 |  | 7 Days Work | 9184464 |
| 2821 | 36900.37000.37100.37700.38400.42400.293300 | Temporary Railing | 3d | 2026-06-01 | 2026-06-04 | 2820 |  | 7 Days Work | 9184474 |
| 2822 | 36900.37000.37100.37700.38400.42400.293400 | Blockwork | 10d | 2026-06-04 | 2026-06-14 | 2821 |  | 7 Days Work | 9184484 |
| 2823 | 36900.37000.37100.37700.38400.42400.293500 | MEP Clearance -2 | 10d | 2026-06-14 | 2026-06-24 | 2822 |  | 7 Days Work | 9184494 |
| 2824 | 36900.37000.37100.37700.38400.42400.293600 | Gypsum Plaster | 14d | 2026-06-24 | 2026-07-08 | 2823 |  | 7 Days Work | 9184504 |
| 2825 | 36900.37000.37100.37700.38400.42400.293700 | Kitchen Platform | 3d | 2026-07-08 | 2026-07-11 | 2824 |  | 7 Days Work | 9184514 |
| 2826 | 36900.37000.37100.37700.38400.42400.293800 | Kitchen dado | 7d | 2026-07-11 | 2026-07-18 | 2825 |  | 7 Days Work | 9184524 |
| 2827 | 36900.37000.37100.37700.38400.42400.293900 | Fire Fighting | 5d | 2026-07-18 | 2026-07-23 | 2826 |  | 7 Days Work | 9184534 |
| 2828 | 36900.37000.37100.37700.38400.42400.294000 | Anticapilary | 5d | 2026-07-23 | 2026-07-28 | 2827 |  | 7 Days Work | 9184544 |
| 2829 | 36900.37000.37100.37700.38400.42400.294100 | Stone Laying | 10d | 2026-08-30 | 2026-09-09 | 2869 |  | 7 Days Work | 9184554 |
| 2830 | 36900.37000.37100.37700.38400.42400.294200 | Tiles Laying | 7d | 2026-08-30 | 2026-09-06 | 2869 |  | 7 Days Work | 9184564 |
| 2831 | 36900.37000.37100.37700.38400.42400.294300 | 1st cutting/polishing of stone flooring | 7d | 2026-09-06 | 2026-09-13 | 2830 |  | 7 Days Work | 9184574 |
| 2832 | 36900.37000.37100.37700.38400.42400.294400 | Tiles/Stone skirting | 5d | 2026-09-13 | 2026-09-18 | 2831 |  | 7 Days Work | 9184584 |
| 2833 | 36900.37000.37100.37700.38400.42400.294500 | Protechtion sheet | 1d | 2026-09-18 | 2026-09-19 | 2832 |  | 7 Days Work | 9184594 |
| 2834 | 36900.37000.37100.37700.38400.42400.294600 | Installation of Temporary Door | 1d | 2026-09-19 | 2026-09-20 | 2833 |  | 7 Days Work | 9184604 |
| 2835 | 36900.37000.37100.37700.38400.42400.294700 | Fixing of window tracks | 5d | 2026-09-20 | 2026-09-25 | 2834 |  | 7 Days Work | 9184614 |
| 2836 | 36900.37000.37100.37700.38400.42400.294800 | Wire Pulling | 7d | 2026-09-25 | 2026-10-02 | 2835 |  | 7 Days Work | 9184624 |
| 2837 | 36900.37000.37100.37700.38400.42400.294900 | Gypsum Remaining | 5d | 2026-10-02 | 2026-10-07 | 2836 |  | 7 Days Work | 9184634 |
| 2838 | 36900.37000.37100.37700.38400.42400.295000 | Fixing of windoow shutter | 5d | 2026-10-07 | 2026-10-12 | 2837 |  | 7 Days Work | 9184644 |
| 2839 | 36900.37000.37100.37700.38400.42400.295100 | Putty Works - walls & ceiling | 15d | 2026-10-12 | 2026-10-27 | 2838 |  | 7 Days Work | 9184654 |
| 2840 | 36900.37000.37100.37700.38400.42400.295200 | False Ceiling- Framing | 10d | 2026-10-27 | 2026-11-06 | 2839 |  | 7 Days Work | 9184664 |
| 2841 | 36900.37000.37100.37700.38400.42400.295300 | Pre Hung Door | 3d | 2026-11-06 | 2026-11-09 | 2840 |  | 7 Days Work | 9184674 |
| 2842 | 36900.37000.37100.37700.38400.42400.295400 | Protechtion sheet | 2d | 2026-11-09 | 2026-11-11 | 2841 |  | 7 Days Work | 9184684 |
| 2843 | 36900.37000.37100.37700.38400.42400.295500 | Skirting near door | 2d | 2026-11-11 | 2026-11-13 | 2842 |  | 7 Days Work | 9184694 |
| 2844 | 36900.37000.37100.37700.38400.42400.295600 | Electrical Switch box fixing | 14d | 2026-11-13 | 2026-11-27 | 2843 |  | 7 Days Work | 9184704 |
| 2845 | 36900.37000.37100.37700.38400.42400.295700 | Fire Fighting painting | 5d | 2026-11-27 | 2026-12-02 | 2844 |  | 7 Days Work | 9184714 |
| 2846 | 36900.37000.37100.37700.38400.42400.295800 | Protection of all flooring, door & window hardware | 5d | 2026-12-02 | 2026-12-07 | 2845 |  | 7 Days Work | 9184724 |
| 2847 | 36900.37000.37100.37700.38400.42400.295900 | 1st coat primer- ceiling 1st & walls | 14d | 2026-12-07 | 2026-12-21 | 2846 |  | 7 Days Work | 9184734 |
| 2848 | 36900.37000.37100.37700.38400.42400.296000 | Wooden Flooring | 5d | 2026-12-21 | 2026-12-26 | 2847 |  | 7 Days Work | 9184744 |
| 2849 | 36900.37000.37100.37700.38400.42400.296100 | Removing of Temporary Railing & installation of Glass Railing | 5d | 2026-12-21 | 2026-12-26 | 2847 |  | 7 Days Work | 9184754 |
| 2850 | 36900.37000.37100.37700.38400.42400.296200 | Tile Grouting | 7d | 2026-12-21 | 2026-12-28 | 2847 |  | 7 Days Work | 9184764 |
| 2851 | 36900.37000.37100.37700.38400.42400.296300 | False Ceiling | 5d | 2026-12-28 | 2027-01-02 | 2850 |  | 7 Days Work | 9184774 |
| 2852 | 36900.37000.37100.37700.38400.42400.296400 | 2nd coat of primer | 10d | 2027-01-02 | 2027-01-12 | 2851 |  | 7 Days Work | 9184784 |
| 2853 | 36900.37000.37100.37700.38400.42400.296500 | Final cutting/polishing of stone flooring | 7d | 2027-01-12 | 2027-01-19 | 2852 |  | 7 Days Work | 9184794 |

| ID | WBS | Task | Duration | Start | Finish | Predecessors | Constraint | Calendar | Unique_Task_ID |
| --- | --- | --- | --- | --- | --- | --- | --- | --- | --- |
| 2854 | 36900.37000.37100.37700.38400.42400.56700 | **Toilet** | 237d | 2026-05-26 | 2027-01-18 |  | start no earlier than 2026-05-26 | 7 Days Work | 9183584 |
| 2855 | 36900.37000.37100.37700.38400.42400.56700.818700 | Toilet_MEP Clearance -1 | 7d | 2026-05-26 | 2026-06-02 | 2818 |  | 7 Days Work | 9192854 |
| 2856 | 36900.37000.37100.37700.38400.42400.56700.818800 | Toilet_Level Marking | 1d | 2026-06-02 | 2026-06-03 | 2855 |  | 7 Days Work | 9192864 |
| 2857 | 36900.37000.37100.37700.38400.42400.56700.818900 | Toilet_Chasing work for Electrical conduit & concealed plumbing | 5d | 2026-06-03 | 2026-06-08 | 2856 |  | 7 Days Work | 9192874 |
| 2858 | 36900.37000.37100.37700.38400.42400.56700.819000 | Toilet_Plumbing work 1st fix | 5d | 2026-06-08 | 2026-06-13 | 2857 |  | 7 Days Work | 9192884 |
| 2859 | 36900.37000.37100.37700.38400.42400.56700.819100 | Toilet_Sleeve/Bore Packing | 5d | 2026-06-13 | 2026-06-18 | 2858 |  | 7 Days Work | 9192894 |
| 2860 | 36900.37000.37100.37700.38400.42400.56700.819200 | Toilet_Waterproofing | 10d | 2026-06-18 | 2026-06-28 | 2859 |  | 7 Days Work | 9192904 |
| 2861 | 36900.37000.37100.37700.38400.42400.56700.819300 | Toilet_Screed | 1d | 2026-06-28 | 2026-06-29 | 2860 |  | 7 Days Work | 9192914 |
| 2862 | 36900.37000.37100.37700.38400.42400.56700.819400 | Toilet_Plumbing 2nd fix | 5d | 2026-06-29 | 2026-07-04 | 2861 |  | 7 Days Work | 9192924 |
| 2863 | 36900.37000.37100.37700.38400.42400.56700.819500 | Toilet_Ledge wall | 5d | 2026-07-04 | 2026-07-09 | 2862 |  | 7 Days Work | 9192934 |
| 2864 | 36900.37000.37100.37700.38400.42400.56700.819600 | Toilet_Cement Plaster | 5d | 2026-07-09 | 2026-07-14 | 2863 |  | 7 Days Work | 9192944 |
| 2865 | 36900.37000.37100.37700.38400.42400.56700.819700 | Toilet_Door Frame | 1d | 2026-07-14 | 2026-07-15 | 2864 |  | 7 Days Work | 9192954 |
| 2866 | 36900.37000.37100.37700.38400.42400.56700.819800 | Toilet_Wash basin & Couter | 3d | 2026-07-15 | 2026-07-18 | 2865 |  | 7 Days Work | 9192964 |
| 2867 | 36900.37000.37100.37700.38400.42400.56700.819900 | Toilet_Wall dado | 20d | 2026-07-18 | 2026-08-07 | 2866 |  | 7 Days Work | 9192974 |
| 2868 | 36900.37000.37100.37700.38400.42400.56700.820000 | Toilet_Granite Work-Ledge wall top | 3d | 2026-08-07 | 2026-08-10 | 2867 |  | 7 Days Work | 9192984 |
| 2869 | 36900.37000.37100.37700.38400.42400.56700.820100 | Toilet_Floor Tilling work | 20d | 2026-08-10 | 2026-08-30 | 2868 |  | 7 Days Work | 9192994 |
| 2870 | 36900.37000.37100.37700.38400.42400.56700.820200 | Toilet_1st row of dado | 5d | 2026-08-30 | 2026-09-04 | 2869 |  | 7 Days Work | 9193004 |
| 2871 | 36900.37000.37100.37700.38400.42400.56700.820300 | Toilet_Window Fixing | 14d | 2026-09-04 | 2026-09-18 | 2870 |  | 7 Days Work | 9193014 |
| 2872 | 36900.37000.37100.37700.38400.42400.56700.820400 | Toilet_Services above False ceiling | 21d | 2026-09-18 | 2026-10-09 | 2871 |  | 7 Days Work | 9193024 |
| 2873 | 36900.37000.37100.37700.38400.42400.56700.820500 | Toilet_False Ceiling framing | 12d | 2026-10-09 | 2026-10-21 | 2872 |  | 7 Days Work | 9193034 |
| 2874 | 36900.37000.37100.37700.38400.42400.56700.820600 | Toilet_Door Frame | 5d | 2026-10-21 | 2026-10-26 | 2873 |  | 7 Days Work | 9193044 |
| 2875 | 36900.37000.37100.37700.38400.42400.56700.820700 | Toilet_Epoxy Tile Grouting | 7d | 2026-12-21 | 2026-12-28 | 2850SS |  | 7 Days Work | 9193054 |
| 2876 | 36900.37000.37100.37700.38400.42400.56700.820800 | Toilet_False ceiling board fixing, CP Sanitary Fixture, Electric Fixture | 21d | 2026-12-28 | 2027-01-18 | 2875 |  | 7 Days Work | 9193064 |
| 2877 | 36900.37000.37100.37700.38400.42500 | **3rd Habitable/5th Floor** | 245d | 2026-05-28 | 2027-01-28 |  | start no earlier than 2026-05-28 | 7 Days Work | 9183394 |
| 2878 | 36900.37000.37100.37700.38400.42500.296600 | Post Pour | 7d | 2026-05-28 | 2026-06-04 | 2738FS+15d |  | 7 Days Work | 9184804 |
| 2879 | 36900.37000.37100.37700.38400.42500.296700 | MEP Clearance -1 | 5d | 2026-06-04 | 2026-06-09 | 2878 |  | 7 Days Work | 9184814 |
| 2880 | 36900.37000.37100.37700.38400.42500.296800 | Benchmark | 1d | 2026-06-09 | 2026-06-10 | 2879 |  | 7 Days Work | 9184824 |
| 2881 | 36900.37000.37100.37700.38400.42500.296900 | Temporary Railing | 3d | 2026-06-10 | 2026-06-13 | 2880 |  | 7 Days Work | 9184834 |
| 2882 | 36900.37000.37100.37700.38400.42500.297000 | Blockwork | 10d | 2026-06-13 | 2026-06-23 | 2881 |  | 7 Days Work | 9184844 |
| 2883 | 36900.37000.37100.37700.38400.42500.297100 | MEP Clearance -2 | 10d | 2026-06-23 | 2026-07-03 | 2882 |  | 7 Days Work | 9184854 |
| 2884 | 36900.37000.37100.37700.38400.42500.297200 | Gypsum Plaster | 14d | 2026-07-03 | 2026-07-17 | 2883 |  | 7 Days Work | 9184864 |
| 2885 | 36900.37000.37100.37700.38400.42500.297300 | Kitchen Platform | 3d | 2026-07-17 | 2026-07-20 | 2884 |  | 7 Days Work | 9184874 |
| 2886 | 36900.37000.37100.37700.38400.42500.297400 | Kitchen dado | 7d | 2026-07-20 | 2026-07-27 | 2885 |  | 7 Days Work | 9184884 |
| 2887 | 36900.37000.37100.37700.38400.42500.297500 | Fire Fighting | 5d | 2026-07-27 | 2026-08-01 | 2886 |  | 7 Days Work | 9184894 |
| 2888 | 36900.37000.37100.37700.38400.42500.297600 | Anticapilary | 5d | 2026-08-01 | 2026-08-06 | 2887 |  | 7 Days Work | 9184904 |
| 2889 | 36900.37000.37100.37700.38400.42500.297700 | Stone Laying | 10d | 2026-09-08 | 2026-09-18 | 2929 |  | 7 Days Work | 9184914 |
| 2890 | 36900.37000.37100.37700.38400.42500.297800 | Tiles Laying | 7d | 2026-09-08 | 2026-09-15 | 2929 |  | 7 Days Work | 9184924 |
| 2891 | 36900.37000.37100.37700.38400.42500.297900 | 1st cutting/polishing of stone flooring | 7d | 2026-09-15 | 2026-09-22 | 2890 |  | 7 Days Work | 9184934 |
| 2892 | 36900.37000.37100.37700.38400.42500.298000 | Tiles/Stone skirting | 5d | 2026-09-22 | 2026-09-27 | 2891 |  | 7 Days Work | 9184944 |
| 2893 | 36900.37000.37100.37700.38400.42500.298100 | Protechtion sheet | 1d | 2026-09-27 | 2026-09-28 | 2892 |  | 7 Days Work | 9184954 |
| 2894 | 36900.37000.37100.37700.38400.42500.298200 | Installation of Temporary Door | 1d | 2026-09-28 | 2026-09-29 | 2893 |  | 7 Days Work | 9184964 |
| 2895 | 36900.37000.37100.37700.38400.42500.298300 | Fixing of window tracks | 5d | 2026-09-29 | 2026-10-04 | 2894 |  | 7 Days Work | 9184974 |
| 2896 | 36900.37000.37100.37700.38400.42500.298400 | Wire Pulling | 7d | 2026-10-04 | 2026-10-11 | 2895 |  | 7 Days Work | 9184984 |
| 2897 | 36900.37000.37100.37700.38400.42500.298500 | Gypsum Remaining | 5d | 2026-10-11 | 2026-10-16 | 2896 |  | 7 Days Work | 9184994 |
| 2898 | 36900.37000.37100.37700.38400.42500.298600 | Fixing of windoow shutter | 5d | 2026-10-16 | 2026-10-21 | 2897 |  | 7 Days Work | 9185004 |
| 2899 | 36900.37000.37100.37700.38400.42500.298700 | Putty Works - walls & ceiling | 15d | 2026-10-21 | 2026-11-05 | 2898 |  | 7 Days Work | 9185014 |
| 2900 | 36900.37000.37100.37700.38400.42500.298800 | False Ceiling- Framing | 10d | 2026-11-05 | 2026-11-15 | 2899 |  | 7 Days Work | 9185024 |
| 2901 | 36900.37000.37100.37700.38400.42500.298900 | Pre Hung Door | 3d | 2026-11-15 | 2026-11-18 | 2900 |  | 7 Days Work | 9185034 |
| 2902 | 36900.37000.37100.37700.38400.42500.299000 | Protechtion sheet | 2d | 2026-11-18 | 2026-11-20 | 2901 |  | 7 Days Work | 9185044 |
| 2903 | 36900.37000.37100.37700.38400.42500.299100 | Skirting near door | 2d | 2026-11-20 | 2026-11-22 | 2902 |  | 7 Days Work | 9185054 |
| 2904 | 36900.37000.37100.37700.38400.42500.299200 | Electrical Switch box fixing | 14d | 2026-11-22 | 2026-12-06 | 2903 |  | 7 Days Work | 9185064 |
| 2905 | 36900.37000.37100.37700.38400.42500.299300 | Fire Fighting painting | 5d | 2026-12-06 | 2026-12-11 | 2904 |  | 7 Days Work | 9185074 |
| 2906 | 36900.37000.37100.37700.38400.42500.299400 | Protection of all flooring, door & window hardware | 5d | 2026-12-11 | 2026-12-16 | 2905 |  | 7 Days Work | 9185084 |
| 2907 | 36900.37000.37100.37700.38400.42500.299500 | 1st coat primer- ceiling 1st & walls | 14d | 2026-12-16 | 2026-12-30 | 2906 |  | 7 Days Work | 9185094 |
| 2908 | 36900.37000.37100.37700.38400.42500.299600 | Wooden Flooring | 5d | 2026-12-30 | 2027-01-04 | 2907 |  | 7 Days Work | 9185104 |
| 2909 | 36900.37000.37100.37700.38400.42500.299700 | Removing of Temporary Railing & installation of Glass Railing | 5d | 2026-12-30 | 2027-01-04 | 2907 |  | 7 Days Work | 9185114 |
| 2910 | 36900.37000.37100.37700.38400.42500.299800 | Tile Grouting | 7d | 2026-12-30 | 2027-01-06 | 2907 |  | 7 Days Work | 9185124 |
| 2911 | 36900.37000.37100.37700.38400.42500.299900 | False Ceiling | 5d | 2027-01-06 | 2027-01-11 | 2910 |  | 7 Days Work | 9185134 |
| 2912 | 36900.37000.37100.37700.38400.42500.300000 | 2nd coat of primer | 10d | 2027-01-11 | 2027-01-21 | 2911 |  | 7 Days Work | 9185144 |
| 2913 | 36900.37000.37100.37700.38400.42500.300100 | Final cutting/polishing of stone flooring | 7d | 2027-01-21 | 2027-01-28 | 2912 |  | 7 Days Work | 9185154 |

| ID | WBS | Task | Duration | Start | Finish | Predecessors | Constraint | Calendar | Unique_Task_ID |
| --- | --- | --- | --- | --- | --- | --- | --- | --- | --- |
| 2914 | 36900.37000.37100.37700.38400.42500.56800 | **Toilet** | 237d | 2026-06-04 | 2027-01-27 |  | start no earlier than 2026-06-04 | 7 Days Work | 9183594 |
| 2915 | 36900.37000.37100.37700.38400.42500.56800.820900 | Toilet_MEP Clearance -1 | 7d | 2026-06-04 | 2026-06-11 | 2878 |  | 7 Days Work | 9193074 |
| 2916 | 36900.37000.37100.37700.38400.42500.56800.821000 | Toilet_Level Marking | 1d | 2026-06-11 | 2026-06-12 | 2915 |  | 7 Days Work | 9193084 |
| 2917 | 36900.37000.37100.37700.38400.42500.56800.821100 | Toilet_Chasing work for Electrical conduit & concealed plumbing | 5d | 2026-06-12 | 2026-06-17 | 2916 |  | 7 Days Work | 9193094 |
| 2918 | 36900.37000.37100.37700.38400.42500.56800.821200 | Toilet_Plumbing work 1st fix | 5d | 2026-06-17 | 2026-06-22 | 2917 |  | 7 Days Work | 9193104 |
| 2919 | 36900.37000.37100.37700.38400.42500.56800.821300 | Toilet_Sleeve/Bore Packing | 5d | 2026-06-22 | 2026-06-27 | 2918 |  | 7 Days Work | 9193114 |
| 2920 | 36900.37000.37100.37700.38400.42500.56800.821400 | Toilet_Waterproofing | 10d | 2026-06-27 | 2026-07-07 | 2919 |  | 7 Days Work | 9193124 |
| 2921 | 36900.37000.37100.37700.38400.42500.56800.821500 | Toilet_Screed | 1d | 2026-07-07 | 2026-07-08 | 2920 |  | 7 Days Work | 9193134 |
| 2922 | 36900.37000.37100.37700.38400.42500.56800.821600 | Toilet_Plumbing 2nd fix | 5d | 2026-07-08 | 2026-07-13 | 2921 |  | 7 Days Work | 9193144 |
| 2923 | 36900.37000.37100.37700.38400.42500.56800.821700 | Toilet_Ledge wall | 5d | 2026-07-13 | 2026-07-18 | 2922 |  | 7 Days Work | 9193154 |
| 2924 | 36900.37000.37100.37700.38400.42500.56800.821800 | Toilet_Cement Plaster | 5d | 2026-07-18 | 2026-07-23 | 2923 |  | 7 Days Work | 9193164 |
| 2925 | 36900.37000.37100.37700.38400.42500.56800.821900 | Toilet_Door Frame | 1d | 2026-07-23 | 2026-07-24 | 2924 |  | 7 Days Work | 9193174 |
| 2926 | 36900.37000.37100.37700.38400.42500.56800.822000 | Toilet_Wash basin & Couter | 3d | 2026-07-24 | 2026-07-27 | 2925 |  | 7 Days Work | 9193184 |
| 2927 | 36900.37000.37100.37700.38400.42500.56800.822100 | Toilet_Wall dado | 20d | 2026-07-27 | 2026-08-16 | 2926 |  | 7 Days Work | 9193194 |
| 2928 | 36900.37000.37100.37700.38400.42500.56800.822200 | Toilet_Granite Work-Ledge wall top | 3d | 2026-08-16 | 2026-08-19 | 2927 |  | 7 Days Work | 9193204 |
| 2929 | 36900.37000.37100.37700.38400.42500.56800.822300 | Toilet_Floor Tilling work | 20d | 2026-08-19 | 2026-09-08 | 2928 |  | 7 Days Work | 9193214 |
| 2930 | 36900.37000.37100.37700.38400.42500.56800.822400 | Toilet_1st row of dado | 5d | 2026-09-08 | 2026-09-13 | 2929 |  | 7 Days Work | 9193224 |
| 2931 | 36900.37000.37100.37700.38400.42500.56800.822500 | Toilet_Window Fixing | 14d | 2026-09-13 | 2026-09-27 | 2930 |  | 7 Days Work | 9193234 |
| 2932 | 36900.37000.37100.37700.38400.42500.56800.822600 | Toilet_Services above False ceiling | 21d | 2026-09-27 | 2026-10-18 | 2931 |  | 7 Days Work | 9193244 |
| 2933 | 36900.37000.37100.37700.38400.42500.56800.822700 | Toilet_False Ceiling framing | 12d | 2026-10-18 | 2026-10-30 | 2932 |  | 7 Days Work | 9193254 |
| 2934 | 36900.37000.37100.37700.38400.42500.56800.822800 | Toilet_Door Frame | 5d | 2026-10-30 | 2026-11-04 | 2933 |  | 7 Days Work | 9193264 |
| 2935 | 36900.37000.37100.37700.38400.42500.56800.822900 | Toilet_Epoxy Tile Grouting | 7d | 2026-12-30 | 2027-01-06 | 2910SS |  | 7 Days Work | 9193274 |
| 2936 | 36900.37000.37100.37700.38400.42500.56800.823000 | Toilet_False ceiling board fixing, CP Sanitary Fixture, Electric Fixture | 21d | 2027-01-06 | 2027-01-27 | 2935 |  | 7 Days Work | 9193284 |
| 2937 | 36900.37000.37100.37700.38400.42600 | **4th Habitable/6th Floor** | 245d | 2026-06-09 | 2027-02-09 |  | start no earlier than 2026-06-09 | 7 Days Work | 9183404 |
| 2938 | 36900.37000.37100.37700.38400.42600.300200 | Post Pour | 7d | 2026-06-09 | 2026-06-16 | 2739FS+15d |  | 7 Days Work | 9185164 |
| 2939 | 36900.37000.37100.37700.38400.42600.300300 | MEP Clearance -1 | 5d | 2026-06-16 | 2026-06-21 | 2938 |  | 7 Days Work | 9185174 |
| 2940 | 36900.37000.37100.37700.38400.42600.300400 | Benchmark | 1d | 2026-06-21 | 2026-06-22 | 2939 |  | 7 Days Work | 9185184 |
| 2941 | 36900.37000.37100.37700.38400.42600.300500 | Temporary Railing | 3d | 2026-06-22 | 2026-06-25 | 2940 |  | 7 Days Work | 9185194 |
| 2942 | 36900.37000.37100.37700.38400.42600.300600 | Blockwork | 10d | 2026-06-25 | 2026-07-05 | 2941 |  | 7 Days Work | 9185204 |
| 2943 | 36900.37000.37100.37700.38400.42600.300700 | MEP Clearance -2 | 10d | 2026-07-05 | 2026-07-15 | 2942 |  | 7 Days Work | 9185214 |
| 2944 | 36900.37000.37100.37700.38400.42600.300800 | Gypsum Plaster | 14d | 2026-07-15 | 2026-07-29 | 2943 |  | 7 Days Work | 9185224 |
| 2945 | 36900.37000.37100.37700.38400.42600.300900 | Kitchen Platform | 3d | 2026-07-29 | 2026-08-01 | 2944 |  | 7 Days Work | 9185234 |
| 2946 | 36900.37000.37100.37700.38400.42600.301000 | Kitchen dado | 7d | 2026-08-01 | 2026-08-08 | 2945 |  | 7 Days Work | 9185244 |
| 2947 | 36900.37000.37100.37700.38400.42600.301100 | Fire Fighting | 5d | 2026-08-08 | 2026-08-13 | 2946 |  | 7 Days Work | 9185254 |
| 2948 | 36900.37000.37100.37700.38400.42600.301200 | Anticapilary | 5d | 2026-08-13 | 2026-08-18 | 2947 |  | 7 Days Work | 9185264 |
| 2949 | 36900.37000.37100.37700.38400.42600.301300 | Stone Laying | 10d | 2026-09-20 | 2026-09-30 | 2989 |  | 7 Days Work | 9185274 |
| 2950 | 36900.37000.37100.37700.38400.42600.301400 | Tiles Laying | 7d | 2026-09-20 | 2026-09-27 | 2989 |  | 7 Days Work | 9185284 |
| 2951 | 36900.37000.37100.37700.38400.42600.301500 | 1st cutting/polishing of stone flooring | 7d | 2026-09-27 | 2026-10-04 | 2950 |  | 7 Days Work | 9185294 |
| 2952 | 36900.37000.37100.37700.38400.42600.301600 | Tiles/Stone skirting | 5d | 2026-10-04 | 2026-10-09 | 2951 |  | 7 Days Work | 9185304 |
| 2953 | 36900.37000.37100.37700.38400.42600.301700 | Protechtion sheet | 1d | 2026-10-09 | 2026-10-10 | 2952 |  | 7 Days Work | 9185314 |
| 2954 | 36900.37000.37100.37700.38400.42600.301800 | Installation of Temporary Door | 1d | 2026-10-10 | 2026-10-11 | 2953 |  | 7 Days Work | 9185324 |
| 2955 | 36900.37000.37100.37700.38400.42600.301900 | Fixing of window tracks | 5d | 2026-10-11 | 2026-10-16 | 2954 |  | 7 Days Work | 9185334 |
| 2956 | 36900.37000.37100.37700.38400.42600.302000 | Wire Pulling | 7d | 2026-10-16 | 2026-10-23 | 2955 |  | 7 Days Work | 9185344 |
| 2957 | 36900.37000.37100.37700.38400.42600.302100 | Gypsum Remaining | 5d | 2026-10-23 | 2026-10-28 | 2956 |  | 7 Days Work | 9185354 |
| 2958 | 36900.37000.37100.37700.38400.42600.302200 | Fixing of windoow shutter | 5d | 2026-10-28 | 2026-11-02 | 2957 |  | 7 Days Work | 9185364 |
| 2959 | 36900.37000.37100.37700.38400.42600.302300 | Putty Works - walls & ceiling | 15d | 2026-11-02 | 2026-11-17 | 2958 |  | 7 Days Work | 9185374 |
| 2960 | 36900.37000.37100.37700.38400.42600.302400 | False Ceiling- Framing | 10d | 2026-11-17 | 2026-11-27 | 2959 |  | 7 Days Work | 9185384 |
| 2961 | 36900.37000.37100.37700.38400.42600.302500 | Pre Hung Door | 3d | 2026-11-27 | 2026-11-30 | 2960 |  | 7 Days Work | 9185394 |
| 2962 | 36900.37000.37100.37700.38400.42600.302600 | Protechtion sheet | 2d | 2026-11-30 | 2026-12-02 | 2961 |  | 7 Days Work | 9185404 |
| 2963 | 36900.37000.37100.37700.38400.42600.302700 | Skirting near door | 2d | 2026-12-02 | 2026-12-04 | 2962 |  | 7 Days Work | 9185414 |
| 2964 | 36900.37000.37100.37700.38400.42600.302800 | Electrical Switch box fixing | 14d | 2026-12-04 | 2026-12-18 | 2963 |  | 7 Days Work | 9185424 |
| 2965 | 36900.37000.37100.37700.38400.42600.302900 | Fire Fighting painting | 5d | 2026-12-18 | 2026-12-23 | 2964 |  | 7 Days Work | 9185434 |
| 2966 | 36900.37000.37100.37700.38400.42600.303000 | Protection of all flooring, door & window hardware | 5d | 2026-12-23 | 2026-12-28 | 2965 |  | 7 Days Work | 9185444 |
| 2967 | 36900.37000.37100.37700.38400.42600.303100 | 1st coat primer- ceiling 1st & walls | 14d | 2026-12-28 | 2027-01-11 | 2966 |  | 7 Days Work | 9185454 |
| 2968 | 36900.37000.37100.37700.38400.42600.303200 | Wooden Flooring | 5d | 2027-01-11 | 2027-01-16 | 2967 |  | 7 Days Work | 9185464 |
| 2969 | 36900.37000.37100.37700.38400.42600.303300 | Removing of Temporary Railing & installation of Glass Railing | 5d | 2027-01-11 | 2027-01-16 | 2967 |  | 7 Days Work | 9185474 |
| 2970 | 36900.37000.37100.37700.38400.42600.303400 | Tile Grouting | 7d | 2027-01-11 | 2027-01-18 | 2967 |  | 7 Days Work | 9185484 |
| 2971 | 36900.37000.37100.37700.38400.42600.303500 | False Ceiling | 5d | 2027-01-18 | 2027-01-23 | 2970 |  | 7 Days Work | 9185494 |
| 2972 | 36900.37000.37100.37700.38400.42600.303600 | 2nd coat of primer | 10d | 2027-01-23 | 2027-02-02 | 2971 |  | 7 Days Work | 9185504 |
| 2973 | 36900.37000.37100.37700.38400.42600.303700 | Final cutting/polishing of stone flooring | 7d | 2027-02-02 | 2027-02-09 | 2972 |  | 7 Days Work | 9185514 |

| ID | WBS | Task | Duration | Start | Finish | Predecessors | Constraint | Calendar | Unique_Task_ID |
| --- | --- | --- | --- | --- | --- | --- | --- | --- | --- |
| 2974 | 36900.37000.37100.37700.38400.42600.56900 | **Toilet** | 237d | 2026-06-16 | 2027-02-08 |  | start no earlier than 2026-06-16 | 7 Days Work | 9183604 |
| 2975 | 36900.37000.37100.37700.38400.42600.56900.823100 | Toilet_MEP Clearance -1 | 7d | 2026-06-16 | 2026-06-23 | 2938 |  | 7 Days Work | 9193294 |
| 2976 | 36900.37000.37100.37700.38400.42600.56900.823200 | Toilet_Level Marking | 1d | 2026-06-23 | 2026-06-24 | 2975 |  | 7 Days Work | 9193304 |
| 2977 | 36900.37000.37100.37700.38400.42600.56900.823300 | Toilet_Chasing work for Electrical conduit & concealed plumbing | 5d | 2026-06-24 | 2026-06-29 | 2976 |  | 7 Days Work | 9193314 |
| 2978 | 36900.37000.37100.37700.38400.42600.56900.823400 | Toilet_Plumbing work 1st fix | 5d | 2026-06-29 | 2026-07-04 | 2977 |  | 7 Days Work | 9193324 |
| 2979 | 36900.37000.37100.37700.38400.42600.56900.823500 | Toilet_Sleeve/Bore Packing | 5d | 2026-07-04 | 2026-07-09 | 2978 |  | 7 Days Work | 9193334 |
| 2980 | 36900.37000.37100.37700.38400.42600.56900.823600 | Toilet_Waterproofing | 10d | 2026-07-09 | 2026-07-19 | 2979 |  | 7 Days Work | 9193344 |
| 2981 | 36900.37000.37100.37700.38400.42600.56900.823700 | Toilet_Screed | 1d | 2026-07-19 | 2026-07-20 | 2980 |  | 7 Days Work | 9193354 |
| 2982 | 36900.37000.37100.37700.38400.42600.56900.823800 | Toilet_Plumbing 2nd fix | 5d | 2026-07-20 | 2026-07-25 | 2981 |  | 7 Days Work | 9193364 |
| 2983 | 36900.37000.37100.37700.38400.42600.56900.823900 | Toilet_Ledge wall | 5d | 2026-07-25 | 2026-07-30 | 2982 |  | 7 Days Work | 9193374 |
| 2984 | 36900.37000.37100.37700.38400.42600.56900.824000 | Toilet_Cement Plaster | 5d | 2026-07-30 | 2026-08-04 | 2983 |  | 7 Days Work | 9193384 |
| 2985 | 36900.37000.37100.37700.38400.42600.56900.824100 | Toilet_Door Frame | 1d | 2026-08-04 | 2026-08-05 | 2984 |  | 7 Days Work | 9193394 |
| 2986 | 36900.37000.37100.37700.38400.42600.56900.824200 | Toilet_Wash basin & Couter | 3d | 2026-08-05 | 2026-08-08 | 2985 |  | 7 Days Work | 9193404 |
| 2987 | 36900.37000.37100.37700.38400.42600.56900.824300 | Toilet_Wall dado | 20d | 2026-08-08 | 2026-08-28 | 2986 |  | 7 Days Work | 9193414 |
| 2988 | 36900.37000.37100.37700.38400.42600.56900.824400 | Toilet_Granite Work-Ledge wall top | 3d | 2026-08-28 | 2026-08-31 | 2987 |  | 7 Days Work | 9193424 |
| 2989 | 36900.37000.37100.37700.38400.42600.56900.824500 | Toilet_Floor Tilling work | 20d | 2026-08-31 | 2026-09-20 | 2988 |  | 7 Days Work | 9193434 |
| 2990 | 36900.37000.37100.37700.38400.42600.56900.824600 | Toilet_1st row of dado | 5d | 2026-09-20 | 2026-09-25 | 2989 |  | 7 Days Work | 9193444 |
| 2991 | 36900.37000.37100.37700.38400.42600.56900.824700 | Toilet_Window Fixing | 14d | 2026-09-25 | 2026-10-09 | 2990 |  | 7 Days Work | 9193454 |
| 2992 | 36900.37000.37100.37700.38400.42600.56900.824800 | Toilet_Services above False ceiling | 21d | 2026-10-09 | 2026-10-30 | 2991 |  | 7 Days Work | 9193464 |
| 2993 | 36900.37000.37100.37700.38400.42600.56900.824900 | Toilet_False Ceiling framing | 12d | 2026-10-30 | 2026-11-11 | 2992 |  | 7 Days Work | 9193474 |
| 2994 | 36900.37000.37100.37700.38400.42600.56900.825000 | Toilet_Door Frame | 5d | 2026-11-11 | 2026-11-16 | 2993 |  | 7 Days Work | 9193484 |
| 2995 | 36900.37000.37100.37700.38400.42600.56900.825100 | Toilet_Epoxy Tile Grouting | 7d | 2027-01-11 | 2027-01-18 | 2970SS |  | 7 Days Work | 9193494 |
| 2996 | 36900.37000.37100.37700.38400.42600.56900.825200 | Toilet_False ceiling board fixing, CP Sanitary Fixture, Electric Fixture | 21d | 2027-01-18 | 2027-02-08 | 2995 |  | 7 Days Work | 9193504 |
| 2997 | 36900.37000.37100.37700.38400.42700 | **5th Habitable/7th Floor** | 245d | 2026-06-18 | 2027-02-18 |  | start no earlier than 2026-06-18 | 7 Days Work | 9183414 |
| 2998 | 36900.37000.37100.37700.38400.42700.303800 | Post Pour | 7d | 2026-06-18 | 2026-06-25 | 2740FS+15d |  | 7 Days Work | 9185524 |
| 2999 | 36900.37000.37100.37700.38400.42700.303900 | MEP Clearance -1 | 5d | 2026-06-25 | 2026-06-30 | 2998 |  | 7 Days Work | 9185534 |
| 3000 | 36900.37000.37100.37700.38400.42700.304000 | Benchmark | 1d | 2026-06-30 | 2026-07-01 | 2999 |  | 7 Days Work | 9185544 |
| 3001 | 36900.37000.37100.37700.38400.42700.304100 | Temporary Railing | 3d | 2026-07-01 | 2026-07-04 | 3000 |  | 7 Days Work | 9185554 |
| 3002 | 36900.37000.37100.37700.38400.42700.304200 | Blockwork | 10d | 2026-07-04 | 2026-07-14 | 3001 |  | 7 Days Work | 9185564 |
| 3003 | 36900.37000.37100.37700.38400.42700.304300 | MEP Clearance -2 | 10d | 2026-07-14 | 2026-07-24 | 3002 |  | 7 Days Work | 9185574 |
| 3004 | 36900.37000.37100.37700.38400.42700.304400 | Gypsum Plaster | 14d | 2026-07-24 | 2026-08-07 | 3003 |  | 7 Days Work | 9185584 |
| 3005 | 36900.37000.37100.37700.38400.42700.304500 | Kitchen Platform | 3d | 2026-08-07 | 2026-08-10 | 3004 |  | 7 Days Work | 9185594 |
| 3006 | 36900.37000.37100.37700.38400.42700.304600 | Kitchen dado | 7d | 2026-08-10 | 2026-08-17 | 3005 |  | 7 Days Work | 9185604 |
| 3007 | 36900.37000.37100.37700.38400.42700.304700 | Fire Fighting | 5d | 2026-08-17 | 2026-08-22 | 3006 |  | 7 Days Work | 9185614 |
| 3008 | 36900.37000.37100.37700.38400.42700.304800 | Anticapilary | 5d | 2026-08-22 | 2026-08-27 | 3007 |  | 7 Days Work | 9185624 |
| 3009 | 36900.37000.37100.37700.38400.42700.304900 | Stone Laying | 10d | 2026-09-29 | 2026-10-09 | 3049 |  | 7 Days Work | 9185634 |
| 3010 | 36900.37000.37100.37700.38400.42700.305000 | Tiles Laying | 7d | 2026-09-29 | 2026-10-06 | 3049 |  | 7 Days Work | 9185644 |
| 3011 | 36900.37000.37100.37700.38400.42700.305100 | 1st cutting/polishing of stone flooring | 7d | 2026-10-06 | 2026-10-13 | 3010 |  | 7 Days Work | 9185654 |
| 3012 | 36900.37000.37100.37700.38400.42700.305200 | Tiles/Stone skirting | 5d | 2026-10-13 | 2026-10-18 | 3011 |  | 7 Days Work | 9185664 |
| 3013 | 36900.37000.37100.37700.38400.42700.305300 | Protechtion sheet | 1d | 2026-10-18 | 2026-10-19 | 3012 |  | 7 Days Work | 9185674 |
| 3014 | 36900.37000.37100.37700.38400.42700.305400 | Installation of Temporary Door | 1d | 2026-10-19 | 2026-10-20 | 3013 |  | 7 Days Work | 9185684 |
| 3015 | 36900.37000.37100.37700.38400.42700.305500 | Fixing of window tracks | 5d | 2026-10-20 | 2026-10-25 | 3014 |  | 7 Days Work | 9185694 |
| 3016 | 36900.37000.37100.37700.38400.42700.305600 | Wire Pulling | 7d | 2026-10-25 | 2026-11-01 | 3015 |  | 7 Days Work | 9185704 |
| 3017 | 36900.37000.37100.37700.38400.42700.305700 | Gypsum Remaining | 5d | 2026-11-01 | 2026-11-06 | 3016 |  | 7 Days Work | 9185714 |
| 3018 | 36900.37000.37100.37700.38400.42700.305800 | Fixing of windoow shutter | 5d | 2026-11-06 | 2026-11-11 | 3017 |  | 7 Days Work | 9185724 |
| 3019 | 36900.37000.37100.37700.38400.42700.305900 | Putty Works - walls & ceiling | 15d | 2026-11-11 | 2026-11-26 | 3018 |  | 7 Days Work | 9185734 |
| 3020 | 36900.37000.37100.37700.38400.42700.306000 | False Ceiling- Framing | 10d | 2026-11-26 | 2026-12-06 | 3019 |  | 7 Days Work | 9185744 |
| 3021 | 36900.37000.37100.37700.38400.42700.306100 | Pre Hung Door | 3d | 2026-12-06 | 2026-12-09 | 3020 |  | 7 Days Work | 9185754 |
| 3022 | 36900.37000.37100.37700.38400.42700.306200 | Protechtion sheet | 2d | 2026-12-09 | 2026-12-11 | 3021 |  | 7 Days Work | 9185764 |
| 3023 | 36900.37000.37100.37700.38400.42700.306300 | Skirting near door | 2d | 2026-12-11 | 2026-12-13 | 3022 |  | 7 Days Work | 9185774 |
| 3024 | 36900.37000.37100.37700.38400.42700.306400 | Electrical Switch box fixing | 14d | 2026-12-13 | 2026-12-27 | 3023 |  | 7 Days Work | 9185784 |
| 3025 | 36900.37000.37100.37700.38400.42700.306500 | Fire Fighting painting | 5d | 2026-12-27 | 2027-01-01 | 3024 |  | 7 Days Work | 9185794 |
| 3026 | 36900.37000.37100.37700.38400.42700.306600 | Protection of all flooring, door & window hardware | 5d | 2027-01-01 | 2027-01-06 | 3025 |  | 7 Days Work | 9185804 |
| 3027 | 36900.37000.37100.37700.38400.42700.306700 | 1st coat primer- ceiling 1st & walls | 14d | 2027-01-06 | 2027-01-20 | 3026 |  | 7 Days Work | 9185814 |
| 3028 | 36900.37000.37100.37700.38400.42700.306800 | Wooden Flooring | 5d | 2027-01-20 | 2027-01-25 | 3027 |  | 7 Days Work | 9185824 |
| 3029 | 36900.37000.37100.37700.38400.42700.306900 | Removing of Temporary Railing & installation of Glass Railing | 5d | 2027-01-20 | 2027-01-25 | 3027 |  | 7 Days Work | 9185834 |
| 3030 | 36900.37000.37100.37700.38400.42700.307000 | Tile Grouting | 7d | 2027-01-20 | 2027-01-27 | 3027 |  | 7 Days Work | 9185844 |
| 3031 | 36900.37000.37100.37700.38400.42700.307100 | False Ceiling | 5d | 2027-01-27 | 2027-02-01 | 3030 |  | 7 Days Work | 9185854 |
| 3032 | 36900.37000.37100.37700.38400.42700.307200 | 2nd coat of primer | 10d | 2027-02-01 | 2027-02-11 | 3031 |  | 7 Days Work | 9185864 |
| 3033 | 36900.37000.37100.37700.38400.42700.307300 | Final cutting/polishing of stone flooring | 7d | 2027-02-11 | 2027-02-18 | 3032 |  | 7 Days Work | 9185874 |

| ID | WBS | Task | Duration | Start | Finish | Predecessors | Constraint | Calendar | Unique_Task_ID |
| --- | --- | --- | --- | --- | --- | --- | --- | --- | --- |
| 3034 | 36900.37000.37100.37700.38400.42700.57000 | **Toilet** | 237d | 2026-06-25 | 2027-02-17 |  | start no earlier than 2026-06-25 | 7 Days Work | 9183614 |
| 3035 | 36900.37000.37100.37700.38400.42700.57000.825300 | Toilet_MEP Clearance -1 | 7d | 2026-06-25 | 2026-07-02 | 2998 |  | 7 Days Work | 9193514 |
| 3036 | 36900.37000.37100.37700.38400.42700.57000.825400 | Toilet_Level Marking | 1d | 2026-07-02 | 2026-07-03 | 3035 |  | 7 Days Work | 9193524 |
| 3037 | 36900.37000.37100.37700.38400.42700.57000.825500 | Toilet_Chasing work for Electrical conduit & concealed plumbing | 5d | 2026-07-03 | 2026-07-08 | 3036 |  | 7 Days Work | 9193534 |
| 3038 | 36900.37000.37100.37700.38400.42700.57000.825600 | Toilet_Plumbing work 1st fix | 5d | 2026-07-08 | 2026-07-13 | 3037 |  | 7 Days Work | 9193544 |
| 3039 | 36900.37000.37100.37700.38400.42700.57000.825700 | Toilet_Sleeve/Bore Packing | 5d | 2026-07-13 | 2026-07-18 | 3038 |  | 7 Days Work | 9193554 |
| 3040 | 36900.37000.37100.37700.38400.42700.57000.825800 | Toilet_Waterproofing | 10d | 2026-07-18 | 2026-07-28 | 3039 |  | 7 Days Work | 9193564 |
| 3041 | 36900.37000.37100.37700.38400.42700.57000.825900 | Toilet_Screed | 1d | 2026-07-28 | 2026-07-29 | 3040 |  | 7 Days Work | 9193574 |
| 3042 | 36900.37000.37100.37700.38400.42700.57000.826000 | Toilet_Plumbing 2nd fix | 5d | 2026-07-29 | 2026-08-03 | 3041 |  | 7 Days Work | 9193584 |
| 3043 | 36900.37000.37100.37700.38400.42700.57000.826100 | Toilet_Ledge wall | 5d | 2026-08-03 | 2026-08-08 | 3042 |  | 7 Days Work | 9193594 |
| 3044 | 36900.37000.37100.37700.38400.42700.57000.826200 | Toilet_Cement Plaster | 5d | 2026-08-08 | 2026-08-13 | 3043 |  | 7 Days Work | 9193604 |
| 3045 | 36900.37000.37100.37700.38400.42700.57000.826300 | Toilet_Door Frame | 1d | 2026-08-13 | 2026-08-14 | 3044 |  | 7 Days Work | 9193614 |
| 3046 | 36900.37000.37100.37700.38400.42700.57000.826400 | Toilet_Wash basin & Couter | 3d | 2026-08-14 | 2026-08-17 | 3045 |  | 7 Days Work | 9193624 |
| 3047 | 36900.37000.37100.37700.38400.42700.57000.826500 | Toilet_Wall dado | 20d | 2026-08-17 | 2026-09-06 | 3046 |  | 7 Days Work | 9193634 |
| 3048 | 36900.37000.37100.37700.38400.42700.57000.826600 | Toilet_Granite Work-Ledge wall top | 3d | 2026-09-06 | 2026-09-09 | 3047 |  | 7 Days Work | 9193644 |
| 3049 | 36900.37000.37100.37700.38400.42700.57000.826700 | Toilet_Floor Tilling work | 20d | 2026-09-09 | 2026-09-29 | 3048 |  | 7 Days Work | 9193654 |
| 3050 | 36900.37000.37100.37700.38400.42700.57000.826800 | Toilet_1st row of dado | 5d | 2026-09-29 | 2026-10-04 | 3049 |  | 7 Days Work | 9193664 |
| 3051 | 36900.37000.37100.37700.38400.42700.57000.826900 | Toilet_Window Fixing | 14d | 2026-10-04 | 2026-10-18 | 3050 |  | 7 Days Work | 9193674 |
| 3052 | 36900.37000.37100.37700.38400.42700.57000.827000 | Toilet_Services above False ceiling | 21d | 2026-10-18 | 2026-11-08 | 3051 |  | 7 Days Work | 9193684 |
| 3053 | 36900.37000.37100.37700.38400.42700.57000.827100 | Toilet_False Ceiling framing | 12d | 2026-11-08 | 2026-11-20 | 3052 |  | 7 Days Work | 9193694 |
| 3054 | 36900.37000.37100.37700.38400.42700.57000.827200 | Toilet_Door Frame | 5d | 2026-11-20 | 2026-11-25 | 3053 |  | 7 Days Work | 9193704 |
| 3055 | 36900.37000.37100.37700.38400.42700.57000.827300 | Toilet_Epoxy Tile Grouting | 7d | 2027-01-20 | 2027-01-27 | 3030SS |  | 7 Days Work | 9193714 |
| 3056 | 36900.37000.37100.37700.38400.42700.57000.827400 | Toilet_False ceiling board fixing, CP Sanitary Fixture, Electric Fixture | 21d | 2027-01-27 | 2027-02-17 | 3055 |  | 7 Days Work | 9193724 |
| 3057 | 36900.37000.37100.37700.38400.42800 | **6th Habitable/8th Floor** | 245d | 2026-06-27 | 2027-02-27 |  | start no earlier than 2026-06-27 | 7 Days Work | 9183424 |
| 3058 | 36900.37000.37100.37700.38400.42800.307400 | Post Pour | 7d | 2026-06-27 | 2026-07-04 | 2741FS+15d |  | 7 Days Work | 9185884 |
| 3059 | 36900.37000.37100.37700.38400.42800.307500 | MEP Clearance -1 | 5d | 2026-07-04 | 2026-07-09 | 3058 |  | 7 Days Work | 9185894 |
| 3060 | 36900.37000.37100.37700.38400.42800.307600 | Benchmark | 1d | 2026-07-09 | 2026-07-10 | 3059 |  | 7 Days Work | 9185904 |
| 3061 | 36900.37000.37100.37700.38400.42800.307700 | Temporary Railing | 3d | 2026-07-10 | 2026-07-13 | 3060 |  | 7 Days Work | 9185914 |
| 3062 | 36900.37000.37100.37700.38400.42800.307800 | Blockwork | 10d | 2026-07-13 | 2026-07-23 | 3061 |  | 7 Days Work | 9185924 |
| 3063 | 36900.37000.37100.37700.38400.42800.307900 | MEP Clearance -2 | 10d | 2026-07-23 | 2026-08-02 | 3062 |  | 7 Days Work | 9185934 |
| 3064 | 36900.37000.37100.37700.38400.42800.308000 | Gypsum Plaster | 14d | 2026-08-02 | 2026-08-16 | 3063 |  | 7 Days Work | 9185944 |
| 3065 | 36900.37000.37100.37700.38400.42800.308100 | Kitchen Platform | 3d | 2026-08-16 | 2026-08-19 | 3064 |  | 7 Days Work | 9185954 |
| 3066 | 36900.37000.37100.37700.38400.42800.308200 | Kitchen dado | 7d | 2026-08-19 | 2026-08-26 | 3065 |  | 7 Days Work | 9185964 |
| 3067 | 36900.37000.37100.37700.38400.42800.308300 | Fire Fighting | 5d | 2026-08-26 | 2026-08-31 | 3066 |  | 7 Days Work | 9185974 |
| 3068 | 36900.37000.37100.37700.38400.42800.308400 | Anticapilary | 5d | 2026-08-31 | 2026-09-05 | 3067 |  | 7 Days Work | 9185984 |
| 3069 | 36900.37000.37100.37700.38400.42800.308500 | Stone Laying | 10d | 2026-10-08 | 2026-10-18 | 3109 |  | 7 Days Work | 9185994 |
| 3070 | 36900.37000.37100.37700.38400.42800.308600 | Tiles Laying | 7d | 2026-10-08 | 2026-10-15 | 3109 |  | 7 Days Work | 9186004 |
| 3071 | 36900.37000.37100.37700.38400.42800.308700 | 1st cutting/polishing of stone flooring | 7d | 2026-10-15 | 2026-10-22 | 3070 |  | 7 Days Work | 9186014 |
| 3072 | 36900.37000.37100.37700.38400.42800.308800 | Tiles/Stone skirting | 5d | 2026-10-22 | 2026-10-27 | 3071 |  | 7 Days Work | 9186024 |
| 3073 | 36900.37000.37100.37700.38400.42800.308900 | Protechtion sheet | 1d | 2026-10-27 | 2026-10-28 | 3072 |  | 7 Days Work | 9186034 |
| 3074 | 36900.37000.37100.37700.38400.42800.309000 | Installation of Temporary Door | 1d | 2026-10-28 | 2026-10-29 | 3073 |  | 7 Days Work | 9186044 |
| 3075 | 36900.37000.37100.37700.38400.42800.309100 | Fixing of window tracks | 5d | 2026-10-29 | 2026-11-03 | 3074 |  | 7 Days Work | 9186054 |
| 3076 | 36900.37000.37100.37700.38400.42800.309200 | Wire Pulling | 7d | 2026-11-03 | 2026-11-10 | 3075 |  | 7 Days Work | 9186064 |
| 3077 | 36900.37000.37100.37700.38400.42800.309300 | Gypsum Remaining | 5d | 2026-11-10 | 2026-11-15 | 3076 |  | 7 Days Work | 9186074 |
| 3078 | 36900.37000.37100.37700.38400.42800.309400 | Fixing of windoow shutter | 5d | 2026-11-15 | 2026-11-20 | 3077 |  | 7 Days Work | 9186084 |
| 3079 | 36900.37000.37100.37700.38400.42800.309500 | Putty Works - walls & ceiling | 15d | 2026-11-20 | 2026-12-05 | 3078 |  | 7 Days Work | 9186094 |
| 3080 | 36900.37000.37100.37700.38400.42800.309600 | False Ceiling- Framing | 10d | 2026-12-05 | 2026-12-15 | 3079 |  | 7 Days Work | 9186104 |
| 3081 | 36900.37000.37100.37700.38400.42800.309700 | Pre Hung Door | 3d | 2026-12-15 | 2026-12-18 | 3080 |  | 7 Days Work | 9186114 |
| 3082 | 36900.37000.37100.37700.38400.42800.309800 | Protechtion sheet | 2d | 2026-12-18 | 2026-12-20 | 3081 |  | 7 Days Work | 9186124 |
| 3083 | 36900.37000.37100.37700.38400.42800.309900 | Skirting near door | 2d | 2026-12-20 | 2026-12-22 | 3082 |  | 7 Days Work | 9186134 |
| 3084 | 36900.37000.37100.37700.38400.42800.310000 | Electrical Switch box fixing | 14d | 2026-12-22 | 2027-01-05 | 3083 |  | 7 Days Work | 9186144 |
| 3085 | 36900.37000.37100.37700.38400.42800.310100 | Fire Fighting painting | 5d | 2027-01-05 | 2027-01-10 | 3084 |  | 7 Days Work | 9186154 |
| 3086 | 36900.37000.37100.37700.38400.42800.310200 | Protection of all flooring, door & window hardware | 5d | 2027-01-10 | 2027-01-15 | 3085 |  | 7 Days Work | 9186164 |
| 3087 | 36900.37000.37100.37700.38400.42800.310300 | 1st coat primer- ceiling 1st & walls | 14d | 2027-01-15 | 2027-01-29 | 3086 |  | 7 Days Work | 9186174 |
| 3088 | 36900.37000.37100.37700.38400.42800.310400 | Wooden Flooring | 5d | 2027-01-29 | 2027-02-03 | 3087 |  | 7 Days Work | 9186184 |
| 3089 | 36900.37000.37100.37700.38400.42800.310500 | Removing of Temporary Railing & installation of Glass Railing | 5d | 2027-01-29 | 2027-02-03 | 3087 |  | 7 Days Work | 9186194 |
| 3090 | 36900.37000.37100.37700.38400.42800.310600 | Tile Grouting | 7d | 2027-01-29 | 2027-02-05 | 3087 |  | 7 Days Work | 9186204 |
| 3091 | 36900.37000.37100.37700.38400.42800.310700 | False Ceiling | 5d | 2027-02-05 | 2027-02-10 | 3090 |  | 7 Days Work | 9186214 |
| 3092 | 36900.37000.37100.37700.38400.42800.310800 | 2nd coat of primer | 10d | 2027-02-10 | 2027-02-20 | 3091 |  | 7 Days Work | 9186224 |
| 3093 | 36900.37000.37100.37700.38400.42800.310900 | Final cutting/polishing of stone flooring | 7d | 2027-02-20 | 2027-02-27 | 3092 |  | 7 Days Work | 9186234 |

| ID | WBS | Task | Duration | Start | Finish | Predecessors | Constraint | Calendar | Unique_Task_ID |
| --- | --- | --- | --- | --- | --- | --- | --- | --- | --- |
| 3094 | 36900.37000.37100.37700.38400.42800.57100 | **Toilet** | 237d | 2026-07-04 | 2027-02-26 |  | start no earlier than 2026-07-04 | 7 Days Work | 9183624 |
| 3095 | 36900.37000.37100.37700.38400.42800.57100.827500 | Toilet_MEP Clearance -1 | 7d | 2026-07-04 | 2026-07-11 | 3058 |  | 7 Days Work | 9193734 |
| 3096 | 36900.37000.37100.37700.38400.42800.57100.827600 | Toilet_Level Marking | 1d | 2026-07-11 | 2026-07-12 | 3095 |  | 7 Days Work | 9193744 |
| 3097 | 36900.37000.37100.37700.38400.42800.57100.827700 | Toilet_Chasing work for Electrical conduit & concealed plumbing | 5d | 2026-07-12 | 2026-07-17 | 3096 |  | 7 Days Work | 9193754 |
| 3098 | 36900.37000.37100.37700.38400.42800.57100.827800 | Toilet_Plumbing work 1st fix | 5d | 2026-07-17 | 2026-07-22 | 3097 |  | 7 Days Work | 9193764 |
| 3099 | 36900.37000.37100.37700.38400.42800.57100.827900 | Toilet_Sleeve/Bore Packing | 5d | 2026-07-22 | 2026-07-27 | 3098 |  | 7 Days Work | 9193774 |
| 3100 | 36900.37000.37100.37700.38400.42800.57100.828000 | Toilet_Waterproofing | 10d | 2026-07-27 | 2026-08-06 | 3099 |  | 7 Days Work | 9193784 |
| 3101 | 36900.37000.37100.37700.38400.42800.57100.828100 | Toilet_Screed | 1d | 2026-08-06 | 2026-08-07 | 3100 |  | 7 Days Work | 9193794 |
| 3102 | 36900.37000.37100.37700.38400.42800.57100.828200 | Toilet_Plumbing 2nd fix | 5d | 2026-08-07 | 2026-08-12 | 3101 |  | 7 Days Work | 9193804 |
| 3103 | 36900.37000.37100.37700.38400.42800.57100.828300 | Toilet_Ledge wall | 5d | 2026-08-12 | 2026-08-17 | 3102 |  | 7 Days Work | 9193814 |
| 3104 | 36900.37000.37100.37700.38400.42800.57100.828400 | Toilet_Cement Plaster | 5d | 2026-08-17 | 2026-08-22 | 3103 |  | 7 Days Work | 9193824 |
| 3105 | 36900.37000.37100.37700.38400.42800.57100.828500 | Toilet_Door Frame | 1d | 2026-08-22 | 2026-08-23 | 3104 |  | 7 Days Work | 9193834 |
| 3106 | 36900.37000.37100.37700.38400.42800.57100.828600 | Toilet_Wash basin & Couter | 3d | 2026-08-23 | 2026-08-26 | 3105 |  | 7 Days Work | 9193844 |
| 3107 | 36900.37000.37100.37700.38400.42800.57100.828700 | Toilet_Wall dado | 20d | 2026-08-26 | 2026-09-15 | 3106 |  | 7 Days Work | 9193854 |
| 3108 | 36900.37000.37100.37700.38400.42800.57100.828800 | Toilet_Granite Work-Ledge wall top | 3d | 2026-09-15 | 2026-09-18 | 3107 |  | 7 Days Work | 9193864 |
| 3109 | 36900.37000.37100.37700.38400.42800.57100.828900 | Toilet_Floor Tilling work | 20d | 2026-09-18 | 2026-10-08 | 3108 |  | 7 Days Work | 9193874 |
| 3110 | 36900.37000.37100.37700.38400.42800.57100.829000 | Toilet_1st row of dado | 5d | 2026-10-08 | 2026-10-13 | 3109 |  | 7 Days Work | 9193884 |
| 3111 | 36900.37000.37100.37700.38400.42800.57100.829100 | Toilet_Window Fixing | 14d | 2026-10-13 | 2026-10-27 | 3110 |  | 7 Days Work | 9193894 |
| 3112 | 36900.37000.37100.37700.38400.42800.57100.829200 | Toilet_Services above False ceiling | 21d | 2026-10-27 | 2026-11-17 | 3111 |  | 7 Days Work | 9193904 |
| 3113 | 36900.37000.37100.37700.38400.42800.57100.829300 | Toilet_False Ceiling framing | 12d | 2026-11-17 | 2026-11-29 | 3112 |  | 7 Days Work | 9193914 |
| 3114 | 36900.37000.37100.37700.38400.42800.57100.829400 | Toilet_Door Frame | 5d | 2026-11-29 | 2026-12-04 | 3113 |  | 7 Days Work | 9193924 |
| 3115 | 36900.37000.37100.37700.38400.42800.57100.829500 | Toilet_Epoxy Tile Grouting | 7d | 2027-01-29 | 2027-02-05 | 3090SS |  | 7 Days Work | 9193934 |
| 3116 | 36900.37000.37100.37700.38400.42800.57100.829600 | Toilet_False ceiling board fixing, CP Sanitary Fixture, Electric Fixture | 21d | 2027-02-05 | 2027-02-26 | 3115 |  | 7 Days Work | 9193944 |
| 3117 | 36900.37000.37100.37700.38400.42900 | **7th Habitable/9th Floor** | 245d | 2026-07-06 | 2027-03-08 |  | start no earlier than 2026-07-06 | 7 Days Work | 9183434 |
| 3118 | 36900.37000.37100.37700.38400.42900.311000 | Post Pour | 7d | 2026-07-06 | 2026-07-13 | 2742FS+15d |  | 7 Days Work | 9186244 |
| 3119 | 36900.37000.37100.37700.38400.42900.311100 | MEP Clearance -1 | 5d | 2026-07-13 | 2026-07-18 | 3118 |  | 7 Days Work | 9186254 |
| 3120 | 36900.37000.37100.37700.38400.42900.311200 | Benchmark | 1d | 2026-07-18 | 2026-07-19 | 3119 |  | 7 Days Work | 9186264 |
| 3121 | 36900.37000.37100.37700.38400.42900.311300 | Temporary Railing | 3d | 2026-07-19 | 2026-07-22 | 3120 |  | 7 Days Work | 9186274 |
| 3122 | 36900.37000.37100.37700.38400.42900.311400 | Blockwork | 10d | 2026-07-22 | 2026-08-01 | 3121 |  | 7 Days Work | 9186284 |
| 3123 | 36900.37000.37100.37700.38400.42900.311500 | MEP Clearance -2 | 10d | 2026-08-01 | 2026-08-11 | 3122 |  | 7 Days Work | 9186294 |
| 3124 | 36900.37000.37100.37700.38400.42900.311600 | Gypsum Plaster | 14d | 2026-08-11 | 2026-08-25 | 3123 |  | 7 Days Work | 9186304 |
| 3125 | 36900.37000.37100.37700.38400.42900.311700 | Kitchen Platform | 3d | 2026-08-25 | 2026-08-28 | 3124 |  | 7 Days Work | 9186314 |
| 3126 | 36900.37000.37100.37700.38400.42900.311800 | Kitchen dado | 7d | 2026-08-28 | 2026-09-04 | 3125 |  | 7 Days Work | 9186324 |
| 3127 | 36900.37000.37100.37700.38400.42900.311900 | Fire Fighting | 5d | 2026-09-04 | 2026-09-09 | 3126 |  | 7 Days Work | 9186334 |
| 3128 | 36900.37000.37100.37700.38400.42900.312000 | Anticapilary | 5d | 2026-09-09 | 2026-09-14 | 3127 |  | 7 Days Work | 9186344 |
| 3129 | 36900.37000.37100.37700.38400.42900.312100 | Stone Laying | 10d | 2026-10-17 | 2026-10-27 | 3169 |  | 7 Days Work | 9186354 |
| 3130 | 36900.37000.37100.37700.38400.42900.312200 | Tiles Laying | 7d | 2026-10-17 | 2026-10-24 | 3169 |  | 7 Days Work | 9186364 |
| 3131 | 36900.37000.37100.37700.38400.42900.312300 | 1st cutting/polishing of stone flooring | 7d | 2026-10-24 | 2026-10-31 | 3130 |  | 7 Days Work | 9186374 |
| 3132 | 36900.37000.37100.37700.38400.42900.312400 | Tiles/Stone skirting | 5d | 2026-10-31 | 2026-11-05 | 3131 |  | 7 Days Work | 9186384 |
| 3133 | 36900.37000.37100.37700.38400.42900.312500 | Protechtion sheet | 1d | 2026-11-05 | 2026-11-06 | 3132 |  | 7 Days Work | 9186394 |
| 3134 | 36900.37000.37100.37700.38400.42900.312600 | Installation of Temporary Door | 1d | 2026-11-06 | 2026-11-07 | 3133 |  | 7 Days Work | 9186404 |
| 3135 | 36900.37000.37100.37700.38400.42900.312700 | Fixing of window tracks | 5d | 2026-11-07 | 2026-11-12 | 3134 |  | 7 Days Work | 9186414 |
| 3136 | 36900.37000.37100.37700.38400.42900.312800 | Wire Pulling | 7d | 2026-11-12 | 2026-11-19 | 3135 |  | 7 Days Work | 9186424 |
| 3137 | 36900.37000.37100.37700.38400.42900.312900 | Gypsum Remaining | 5d | 2026-11-19 | 2026-11-24 | 3136 |  | 7 Days Work | 9186434 |
| 3138 | 36900.37000.37100.37700.38400.42900.313000 | Fixing of windoow shutter | 5d | 2026-11-24 | 2026-11-29 | 3137 |  | 7 Days Work | 9186444 |
| 3139 | 36900.37000.37100.37700.38400.42900.313100 | Putty Works - walls & ceiling | 15d | 2026-11-29 | 2026-12-14 | 3138 |  | 7 Days Work | 9186454 |
| 3140 | 36900.37000.37100.37700.38400.42900.313200 | False Ceiling- Framing | 10d | 2026-12-14 | 2026-12-24 | 3139 |  | 7 Days Work | 9186464 |
| 3141 | 36900.37000.37100.37700.38400.42900.313300 | Pre Hung Door | 3d | 2026-12-24 | 2026-12-27 | 3140 |  | 7 Days Work | 9186474 |
| 3142 | 36900.37000.37100.37700.38400.42900.313400 | Protechtion sheet | 2d | 2026-12-27 | 2026-12-29 | 3141 |  | 7 Days Work | 9186484 |
| 3143 | 36900.37000.37100.37700.38400.42900.313500 | Skirting near door | 2d | 2026-12-29 | 2026-12-31 | 3142 |  | 7 Days Work | 9186494 |
| 3144 | 36900.37000.37100.37700.38400.42900.313600 | Electrical Switch box fixing | 14d | 2026-12-31 | 2027-01-14 | 3143 |  | 7 Days Work | 9186504 |
| 3145 | 36900.37000.37100.37700.38400.42900.313700 | Fire Fighting painting | 5d | 2027-01-14 | 2027-01-19 | 3144 |  | 7 Days Work | 9186514 |
| 3146 | 36900.37000.37100.37700.38400.42900.313800 | Protection of all flooring, door & window hardware | 5d | 2027-01-19 | 2027-01-24 | 3145 |  | 7 Days Work | 9186524 |
| 3147 | 36900.37000.37100.37700.38400.42900.313900 | 1st coat primer- ceiling 1st & walls | 14d | 2027-01-24 | 2027-02-07 | 3146 |  | 7 Days Work | 9186534 |
| 3148 | 36900.37000.37100.37700.38400.42900.314000 | Wooden Flooring | 5d | 2027-02-07 | 2027-02-12 | 3147 |  | 7 Days Work | 9186544 |
| 3149 | 36900.37000.37100.37700.38400.42900.314100 | Removing of Temporary Railing & installation of Glass Railing | 5d | 2027-02-07 | 2027-02-12 | 3147 |  | 7 Days Work | 9186554 |
| 3150 | 36900.37000.37100.37700.38400.42900.314200 | Tile Grouting | 7d | 2027-02-07 | 2027-02-14 | 3147 |  | 7 Days Work | 9186564 |
| 3151 | 36900.37000.37100.37700.38400.42900.314300 | False Ceiling | 5d | 2027-02-14 | 2027-02-19 | 3150 |  | 7 Days Work | 9186574 |
| 3152 | 36900.37000.37100.37700.38400.42900.314400 | 2nd coat of primer | 10d | 2027-02-19 | 2027-03-01 | 3151 |  | 7 Days Work | 9186584 |
| 3153 | 36900.37000.37100.37700.38400.42900.314500 | Final cutting/polishing of stone flooring | 7d | 2027-03-01 | 2027-03-08 | 3152 |  | 7 Days Work | 9186594 |

| ID | WBS | Task | Duration | Start | Finish | Predecessors | Constraint | Calendar | Unique_Task_ID |
| --- | --- | --- | --- | --- | --- | --- | --- | --- | --- |
| 3154 | 36900.37000.37100.37700.38400.42900.57200 | **Toilet** | 237d | 2026-07-13 | 2027-03-07 |  | start no earlier than 2026-07-13 | 7 Days Work | 9183634 |
| 3155 | 36900.37000.37100.37700.38400.42900.57200.829700 | Toilet_MEP Clearance -1 | 7d | 2026-07-13 | 2026-07-20 | 3118 |  | 7 Days Work | 9193954 |
| 3156 | 36900.37000.37100.37700.38400.42900.57200.829800 | Toilet_Level Marking | 1d | 2026-07-20 | 2026-07-21 | 3155 |  | 7 Days Work | 9193964 |
| 3157 | 36900.37000.37100.37700.38400.42900.57200.829900 | Toilet_Chasing work for Electrical conduit & concealed plumbing | 5d | 2026-07-21 | 2026-07-26 | 3156 |  | 7 Days Work | 9193974 |
| 3158 | 36900.37000.37100.37700.38400.42900.57200.830000 | Toilet_Plumbing work 1st fix | 5d | 2026-07-26 | 2026-07-31 | 3157 |  | 7 Days Work | 9193984 |
| 3159 | 36900.37000.37100.37700.38400.42900.57200.830100 | Toilet_Sleeve/Bore Packing | 5d | 2026-07-31 | 2026-08-05 | 3158 |  | 7 Days Work | 9193994 |
| 3160 | 36900.37000.37100.37700.38400.42900.57200.830200 | Toilet_Waterproofing | 10d | 2026-08-05 | 2026-08-15 | 3159 |  | 7 Days Work | 9194004 |
| 3161 | 36900.37000.37100.37700.38400.42900.57200.830300 | Toilet_Screed | 1d | 2026-08-15 | 2026-08-16 | 3160 |  | 7 Days Work | 9194014 |
| 3162 | 36900.37000.37100.37700.38400.42900.57200.830400 | Toilet_Plumbing 2nd fix | 5d | 2026-08-16 | 2026-08-21 | 3161 |  | 7 Days Work | 9194024 |
| 3163 | 36900.37000.37100.37700.38400.42900.57200.830500 | Toilet_Ledge wall | 5d | 2026-08-21 | 2026-08-26 | 3162 |  | 7 Days Work | 9194034 |
| 3164 | 36900.37000.37100.37700.38400.42900.57200.830600 | Toilet_Cement Plaster | 5d | 2026-08-26 | 2026-08-31 | 3163 |  | 7 Days Work | 9194044 |
| 3165 | 36900.37000.37100.37700.38400.42900.57200.830700 | Toilet_Door Frame | 1d | 2026-08-31 | 2026-09-01 | 3164 |  | 7 Days Work | 9194054 |
| 3166 | 36900.37000.37100.37700.38400.42900.57200.830800 | Toilet_Wash basin & Couter | 3d | 2026-09-01 | 2026-09-04 | 3165 |  | 7 Days Work | 9194064 |
| 3167 | 36900.37000.37100.37700.38400.42900.57200.830900 | Toilet_Wall dado | 20d | 2026-09-04 | 2026-09-24 | 3166 |  | 7 Days Work | 9194074 |
| 3168 | 36900.37000.37100.37700.38400.42900.57200.831000 | Toilet_Granite Work-Ledge wall top | 3d | 2026-09-24 | 2026-09-27 | 3167 |  | 7 Days Work | 9194084 |
| 3169 | 36900.37000.37100.37700.38400.42900.57200.831100 | Toilet_Floor Tilling work | 20d | 2026-09-27 | 2026-10-17 | 3168 |  | 7 Days Work | 9194094 |
| 3170 | 36900.37000.37100.37700.38400.42900.57200.831200 | Toilet_1st row of dado | 5d | 2026-10-17 | 2026-10-22 | 3169 |  | 7 Days Work | 9194104 |
| 3171 | 36900.37000.37100.37700.38400.42900.57200.831300 | Toilet_Window Fixing | 14d | 2026-10-22 | 2026-11-05 | 3170 |  | 7 Days Work | 9194114 |
| 3172 | 36900.37000.37100.37700.38400.42900.57200.831400 | Toilet_Services above False ceiling | 21d | 2026-11-05 | 2026-11-26 | 3171 |  | 7 Days Work | 9194124 |
| 3173 | 36900.37000.37100.37700.38400.42900.57200.831500 | Toilet_False Ceiling framing | 12d | 2026-11-26 | 2026-12-08 | 3172 |  | 7 Days Work | 9194134 |
| 3174 | 36900.37000.37100.37700.38400.42900.57200.831600 | Toilet_Door Frame | 5d | 2026-12-08 | 2026-12-13 | 3173 |  | 7 Days Work | 9194144 |
| 3175 | 36900.37000.37100.37700.38400.42900.57200.831700 | Toilet_Epoxy Tile Grouting | 7d | 2027-02-07 | 2027-02-14 | 3150SS |  | 7 Days Work | 9194154 |
| 3176 | 36900.37000.37100.37700.38400.42900.57200.831800 | Toilet_False ceiling board fixing, CP Sanitary Fixture, Electric Fixture | 21d | 2027-02-14 | 2027-03-07 | 3175 |  | 7 Days Work | 9194164 |
| 3177 | 36900.37000.37100.37700.38400.43000 | **8th Habitable/10th Floor** | 245d | 2026-07-18 | 2027-03-20 |  | start no earlier than 2026-07-18 | 7 Days Work | 9183444 |
| 3178 | 36900.37000.37100.37700.38400.43000.314600 | Post Pour | 7d | 2026-07-18 | 2026-07-25 | 2743FS+15d |  | 7 Days Work | 9186604 |
| 3179 | 36900.37000.37100.37700.38400.43000.314700 | MEP Clearance -1 | 5d | 2026-07-25 | 2026-07-30 | 3178 |  | 7 Days Work | 9186614 |
| 3180 | 36900.37000.37100.37700.38400.43000.314800 | Benchmark | 1d | 2026-07-30 | 2026-07-31 | 3179 |  | 7 Days Work | 9186624 |
| 3181 | 36900.37000.37100.37700.38400.43000.314900 | Temporary Railing | 3d | 2026-07-31 | 2026-08-03 | 3180 |  | 7 Days Work | 9186634 |
| 3182 | 36900.37000.37100.37700.38400.43000.315000 | Blockwork | 10d | 2026-08-03 | 2026-08-13 | 3181 |  | 7 Days Work | 9186644 |
| 3183 | 36900.37000.37100.37700.38400.43000.315100 | MEP Clearance -2 | 10d | 2026-08-13 | 2026-08-23 | 3182 |  | 7 Days Work | 9186654 |
| 3184 | 36900.37000.37100.37700.38400.43000.315200 | Gypsum Plaster | 14d | 2026-08-23 | 2026-09-06 | 3183 |  | 7 Days Work | 9186664 |
| 3185 | 36900.37000.37100.37700.38400.43000.315300 | Kitchen Platform | 3d | 2026-09-06 | 2026-09-09 | 3184 |  | 7 Days Work | 9186674 |
| 3186 | 36900.37000.37100.37700.38400.43000.315400 | Kitchen dado | 7d | 2026-09-09 | 2026-09-16 | 3185 |  | 7 Days Work | 9186684 |
| 3187 | 36900.37000.37100.37700.38400.43000.315500 | Fire Fighting | 5d | 2026-09-16 | 2026-09-21 | 3186 |  | 7 Days Work | 9186694 |
| 3188 | 36900.37000.37100.37700.38400.43000.315600 | Anticapilary | 5d | 2026-09-21 | 2026-09-26 | 3187 |  | 7 Days Work | 9186704 |
| 3189 | 36900.37000.37100.37700.38400.43000.315700 | Stone Laying | 10d | 2026-10-29 | 2026-11-08 | 3229 |  | 7 Days Work | 9186714 |
| 3190 | 36900.37000.37100.37700.38400.43000.315800 | Tiles Laying | 7d | 2026-10-29 | 2026-11-05 | 3229 |  | 7 Days Work | 9186724 |
| 3191 | 36900.37000.37100.37700.38400.43000.315900 | 1st cutting/polishing of stone flooring | 7d | 2026-11-05 | 2026-11-12 | 3190 |  | 7 Days Work | 9186734 |
| 3192 | 36900.37000.37100.37700.38400.43000.316000 | Tiles/Stone skirting | 5d | 2026-11-12 | 2026-11-17 | 3191 |  | 7 Days Work | 9186744 |
| 3193 | 36900.37000.37100.37700.38400.43000.316100 | Protechtion sheet | 1d | 2026-11-17 | 2026-11-18 | 3192 |  | 7 Days Work | 9186754 |
| 3194 | 36900.37000.37100.37700.38400.43000.316200 | Installation of Temporary Door | 1d | 2026-11-18 | 2026-11-19 | 3193 |  | 7 Days Work | 9186764 |
| 3195 | 36900.37000.37100.37700.38400.43000.316300 | Fixing of window tracks | 5d | 2026-11-19 | 2026-11-24 | 3194 |  | 7 Days Work | 9186774 |
| 3196 | 36900.37000.37100.37700.38400.43000.316400 | Wire Pulling | 7d | 2026-11-24 | 2026-12-01 | 3195 |  | 7 Days Work | 9186784 |
| 3197 | 36900.37000.37100.37700.38400.43000.316500 | Gypsum Remaining | 5d | 2026-12-01 | 2026-12-06 | 3196 |  | 7 Days Work | 9186794 |
| 3198 | 36900.37000.37100.37700.38400.43000.316600 | Fixing of windoow shutter | 5d | 2026-12-06 | 2026-12-11 | 3197 |  | 7 Days Work | 9186804 |
| 3199 | 36900.37000.37100.37700.38400.43000.316700 | Putty Works - walls & ceiling | 15d | 2026-12-11 | 2026-12-26 | 3198 |  | 7 Days Work | 9186814 |
| 3200 | 36900.37000.37100.37700.38400.43000.316800 | False Ceiling- Framing | 10d | 2026-12-26 | 2027-01-05 | 3199 |  | 7 Days Work | 9186824 |
| 3201 | 36900.37000.37100.37700.38400.43000.316900 | Pre Hung Door | 3d | 2027-01-05 | 2027-01-08 | 3200 |  | 7 Days Work | 9186834 |
| 3202 | 36900.37000.37100.37700.38400.43000.317000 | Protechtion sheet | 2d | 2027-01-08 | 2027-01-10 | 3201 |  | 7 Days Work | 9186844 |
| 3203 | 36900.37000.37100.37700.38400.43000.317100 | Skirting near door | 2d | 2027-01-10 | 2027-01-12 | 3202 |  | 7 Days Work | 9186854 |
| 3204 | 36900.37000.37100.37700.38400.43000.317200 | Electrical Switch box fixing | 14d | 2027-01-12 | 2027-01-26 | 3203 |  | 7 Days Work | 9186864 |
| 3205 | 36900.37000.37100.37700.38400.43000.317300 | Fire Fighting painting | 5d | 2027-01-26 | 2027-01-31 | 3204 |  | 7 Days Work | 9186874 |
| 3206 | 36900.37000.37100.37700.38400.43000.317400 | Protection of all flooring, door & window hardware | 5d | 2027-01-31 | 2027-02-05 | 3205 |  | 7 Days Work | 9186884 |
| 3207 | 36900.37000.37100.37700.38400.43000.317500 | 1st coat primer- ceiling 1st & walls | 14d | 2027-02-05 | 2027-02-19 | 3206 |  | 7 Days Work | 9186894 |
| 3208 | 36900.37000.37100.37700.38400.43000.317600 | Wooden Flooring | 5d | 2027-02-19 | 2027-02-24 | 3207 |  | 7 Days Work | 9186904 |
| 3209 | 36900.37000.37100.37700.38400.43000.317700 | Removing of Temporary Railing & installation of Glass Railing | 5d | 2027-02-19 | 2027-02-24 | 3207 |  | 7 Days Work | 9186914 |
| 3210 | 36900.37000.37100.37700.38400.43000.317800 | Tile Grouting | 7d | 2027-02-19 | 2027-02-26 | 3207 |  | 7 Days Work | 9186924 |
| 3211 | 36900.37000.37100.37700.38400.43000.317900 | False Ceiling | 5d | 2027-02-26 | 2027-03-03 | 3210 |  | 7 Days Work | 9186934 |
| 3212 | 36900.37000.37100.37700.38400.43000.318000 | 2nd coat of primer | 10d | 2027-03-03 | 2027-03-13 | 3211 |  | 7 Days Work | 9186944 |
| 3213 | 36900.37000.37100.37700.38400.43000.318100 | Final cutting/polishing of stone flooring | 7d | 2027-03-13 | 2027-03-20 | 3212 |  | 7 Days Work | 9186954 |

| ID | WBS | Task | Duration | Start | Finish | Predecessors | Constraint | Calendar | Unique_Task_ID |
| --- | --- | --- | --- | --- | --- | --- | --- | --- | --- |
| 3214 | 36900.37000.37100.37700.38400.43000.57300 | **Toilet** | 237d | 2026-07-25 | 2027-03-19 |  | start no earlier than 2026-07-25 | 7 Days Work | 9183644 |
| 3215 | 36900.37000.37100.37700.38400.43000.57300.831900 | Toilet_MEP Clearance -1 | 7d | 2026-07-25 | 2026-08-01 | 3178 |  | 7 Days Work | 9194174 |
| 3216 | 36900.37000.37100.37700.38400.43000.57300.832000 | Toilet_Level Marking | 1d | 2026-08-01 | 2026-08-02 | 3215 |  | 7 Days Work | 9194184 |
| 3217 | 36900.37000.37100.37700.38400.43000.57300.832100 | Toilet_Chasing work for Electrical conduit & concealed plumbing | 5d | 2026-08-02 | 2026-08-07 | 3216 |  | 7 Days Work | 9194194 |
| 3218 | 36900.37000.37100.37700.38400.43000.57300.832200 | Toilet_Plumbing work 1st fix | 5d | 2026-08-07 | 2026-08-12 | 3217 |  | 7 Days Work | 9194204 |
| 3219 | 36900.37000.37100.37700.38400.43000.57300.832300 | Toilet_Sleeve/Bore Packing | 5d | 2026-08-12 | 2026-08-17 | 3218 |  | 7 Days Work | 9194214 |
| 3220 | 36900.37000.37100.37700.38400.43000.57300.832400 | Toilet_Waterproofing | 10d | 2026-08-17 | 2026-08-27 | 3219 |  | 7 Days Work | 9194224 |
| 3221 | 36900.37000.37100.37700.38400.43000.57300.832500 | Toilet_Screed | 1d | 2026-08-27 | 2026-08-28 | 3220 |  | 7 Days Work | 9194234 |
| 3222 | 36900.37000.37100.37700.38400.43000.57300.832600 | Toilet_Plumbing 2nd fix | 5d | 2026-08-28 | 2026-09-02 | 3221 |  | 7 Days Work | 9194244 |
| 3223 | 36900.37000.37100.37700.38400.43000.57300.832700 | Toilet_Ledge wall | 5d | 2026-09-02 | 2026-09-07 | 3222 |  | 7 Days Work | 9194254 |
| 3224 | 36900.37000.37100.37700.38400.43000.57300.832800 | Toilet_Cement Plaster | 5d | 2026-09-07 | 2026-09-12 | 3223 |  | 7 Days Work | 9194264 |
| 3225 | 36900.37000.37100.37700.38400.43000.57300.832900 | Toilet_Door Frame | 1d | 2026-09-12 | 2026-09-13 | 3224 |  | 7 Days Work | 9194274 |
| 3226 | 36900.37000.37100.37700.38400.43000.57300.833000 | Toilet_Wash basin & Couter | 3d | 2026-09-13 | 2026-09-16 | 3225 |  | 7 Days Work | 9194284 |
| 3227 | 36900.37000.37100.37700.38400.43000.57300.833100 | Toilet_Wall dado | 20d | 2026-09-16 | 2026-10-06 | 3226 |  | 7 Days Work | 9194294 |
| 3228 | 36900.37000.37100.37700.38400.43000.57300.833200 | Toilet_Granite Work-Ledge wall top | 3d | 2026-10-06 | 2026-10-09 | 3227 |  | 7 Days Work | 9194304 |
| 3229 | 36900.37000.37100.37700.38400.43000.57300.833300 | Toilet_Floor Tilling work | 20d | 2026-10-09 | 2026-10-29 | 3228 |  | 7 Days Work | 9194314 |
| 3230 | 36900.37000.37100.37700.38400.43000.57300.833400 | Toilet_1st row of dado | 5d | 2026-10-29 | 2026-11-03 | 3229 |  | 7 Days Work | 9194324 |
| 3231 | 36900.37000.37100.37700.38400.43000.57300.833500 | Toilet_Window Fixing | 14d | 2026-11-03 | 2026-11-17 | 3230 |  | 7 Days Work | 9194334 |
| 3232 | 36900.37000.37100.37700.38400.43000.57300.833600 | Toilet_Services above False ceiling | 21d | 2026-11-17 | 2026-12-08 | 3231 |  | 7 Days Work | 9194344 |
| 3233 | 36900.37000.37100.37700.38400.43000.57300.833700 | Toilet_False Ceiling framing | 12d | 2026-12-08 | 2026-12-20 | 3232 |  | 7 Days Work | 9194354 |
| 3234 | 36900.37000.37100.37700.38400.43000.57300.833800 | Toilet_Door Frame | 5d | 2026-12-20 | 2026-12-25 | 3233 |  | 7 Days Work | 9194364 |
| 3235 | 36900.37000.37100.37700.38400.43000.57300.833900 | Toilet_Epoxy Tile Grouting | 7d | 2027-02-19 | 2027-02-26 | 3210SS |  | 7 Days Work | 9194374 |
| 3236 | 36900.37000.37100.37700.38400.43000.57300.834000 | Toilet_False ceiling board fixing, CP Sanitary Fixture, Electric Fixture | 21d | 2027-02-26 | 2027-03-19 | 3235 |  | 7 Days Work | 9194384 |
| 3237 | 36900.37000.37100.37700.38400.43100 | **9th Habitable/11th Floor** | 245d | 2026-07-27 | 2027-03-29 |  | start no earlier than 2026-07-27 | 7 Days Work | 9183454 |
| 3238 | 36900.37000.37100.37700.38400.43100.318200 | Post Pour | 7d | 2026-07-27 | 2026-08-03 | 2744FS+15d |  | 7 Days Work | 9186964 |
| 3239 | 36900.37000.37100.37700.38400.43100.318300 | MEP Clearance -1 | 5d | 2026-08-03 | 2026-08-08 | 3238 |  | 7 Days Work | 9186974 |
| 3240 | 36900.37000.37100.37700.38400.43100.318400 | Benchmark | 1d | 2026-08-08 | 2026-08-09 | 3239 |  | 7 Days Work | 9186984 |
| 3241 | 36900.37000.37100.37700.38400.43100.318500 | Temporary Railing | 3d | 2026-08-09 | 2026-08-12 | 3240 |  | 7 Days Work | 9186994 |
| 3242 | 36900.37000.37100.37700.38400.43100.318600 | Blockwork | 10d | 2026-08-12 | 2026-08-22 | 3241 |  | 7 Days Work | 9187004 |
| 3243 | 36900.37000.37100.37700.38400.43100.318700 | MEP Clearance -2 | 10d | 2026-08-22 | 2026-09-01 | 3242 |  | 7 Days Work | 9187014 |
| 3244 | 36900.37000.37100.37700.38400.43100.318800 | Gypsum Plaster | 14d | 2026-09-01 | 2026-09-15 | 3243 |  | 7 Days Work | 9187024 |
| 3245 | 36900.37000.37100.37700.38400.43100.318900 | Kitchen Platform | 3d | 2026-09-15 | 2026-09-18 | 3244 |  | 7 Days Work | 9187034 |
| 3246 | 36900.37000.37100.37700.38400.43100.319000 | Kitchen dado | 7d | 2026-09-18 | 2026-09-25 | 3245 |  | 7 Days Work | 9187044 |
| 3247 | 36900.37000.37100.37700.38400.43100.319100 | Fire Fighting | 5d | 2026-09-25 | 2026-09-30 | 3246 |  | 7 Days Work | 9187054 |
| 3248 | 36900.37000.37100.37700.38400.43100.319200 | Anticapilary | 5d | 2026-09-30 | 2026-10-05 | 3247 |  | 7 Days Work | 9187064 |
| 3249 | 36900.37000.37100.37700.38400.43100.319300 | Stone Laying | 10d | 2026-11-07 | 2026-11-17 | 3289 |  | 7 Days Work | 9187074 |
| 3250 | 36900.37000.37100.37700.38400.43100.319400 | Tiles Laying | 7d | 2026-11-07 | 2026-11-14 | 3289 |  | 7 Days Work | 9187084 |
| 3251 | 36900.37000.37100.37700.38400.43100.319500 | 1st cutting/polishing of stone flooring | 7d | 2026-11-14 | 2026-11-21 | 3250 |  | 7 Days Work | 9187094 |
| 3252 | 36900.37000.37100.37700.38400.43100.319600 | Tiles/Stone skirting | 5d | 2026-11-21 | 2026-11-26 | 3251 |  | 7 Days Work | 9187104 |
| 3253 | 36900.37000.37100.37700.38400.43100.319700 | Protechtion sheet | 1d | 2026-11-26 | 2026-11-27 | 3252 |  | 7 Days Work | 9187114 |
| 3254 | 36900.37000.37100.37700.38400.43100.319800 | Installation of Temporary Door | 1d | 2026-11-27 | 2026-11-28 | 3253 |  | 7 Days Work | 9187124 |
| 3255 | 36900.37000.37100.37700.38400.43100.319900 | Fixing of window tracks | 5d | 2026-11-28 | 2026-12-03 | 3254 |  | 7 Days Work | 9187134 |
| 3256 | 36900.37000.37100.37700.38400.43100.320000 | Wire Pulling | 7d | 2026-12-03 | 2026-12-10 | 3255 |  | 7 Days Work | 9187144 |
| 3257 | 36900.37000.37100.37700.38400.43100.320100 | Gypsum Remaining | 5d | 2026-12-10 | 2026-12-15 | 3256 |  | 7 Days Work | 9187154 |
| 3258 | 36900.37000.37100.37700.38400.43100.320200 | Fixing of windoow shutter | 5d | 2026-12-15 | 2026-12-20 | 3257 |  | 7 Days Work | 9187164 |
| 3259 | 36900.37000.37100.37700.38400.43100.320300 | Putty Works - walls & ceiling | 15d | 2026-12-20 | 2027-01-04 | 3258 |  | 7 Days Work | 9187174 |
| 3260 | 36900.37000.37100.37700.38400.43100.320400 | False Ceiling- Framing | 10d | 2027-01-04 | 2027-01-14 | 3259 |  | 7 Days Work | 9187184 |
| 3261 | 36900.37000.37100.37700.38400.43100.320500 | Pre Hung Door | 3d | 2027-01-14 | 2027-01-17 | 3260 |  | 7 Days Work | 9187194 |
| 3262 | 36900.37000.37100.37700.38400.43100.320600 | Protechtion sheet | 2d | 2027-01-17 | 2027-01-19 | 3261 |  | 7 Days Work | 9187204 |
| 3263 | 36900.37000.37100.37700.38400.43100.320700 | Skirting near door | 2d | 2027-01-19 | 2027-01-21 | 3262 |  | 7 Days Work | 9187214 |
| 3264 | 36900.37000.37100.37700.38400.43100.320800 | Electrical Switch box fixing | 14d | 2027-01-21 | 2027-02-04 | 3263 |  | 7 Days Work | 9187224 |
| 3265 | 36900.37000.37100.37700.38400.43100.320900 | Fire Fighting painting | 5d | 2027-02-04 | 2027-02-09 | 3264 |  | 7 Days Work | 9187234 |
| 3266 | 36900.37000.37100.37700.38400.43100.321000 | Protection of all flooring, door & window hardware | 5d | 2027-02-09 | 2027-02-14 | 3265 |  | 7 Days Work | 9187244 |
| 3267 | 36900.37000.37100.37700.38400.43100.321100 | 1st coat primer- ceiling 1st & walls | 14d | 2027-02-14 | 2027-02-28 | 3266 |  | 7 Days Work | 9187254 |
| 3268 | 36900.37000.37100.37700.38400.43100.321200 | Wooden Flooring | 5d | 2027-02-28 | 2027-03-05 | 3267 |  | 7 Days Work | 9187264 |
| 3269 | 36900.37000.37100.37700.38400.43100.321300 | Removing of Temporary Railing & installation of Glass Railing | 5d | 2027-02-28 | 2027-03-05 | 3267 |  | 7 Days Work | 9187274 |
| 3270 | 36900.37000.37100.37700.38400.43100.321400 | Tile Grouting | 7d | 2027-02-28 | 2027-03-07 | 3267 |  | 7 Days Work | 9187284 |
| 3271 | 36900.37000.37100.37700.38400.43100.321500 | False Ceiling | 5d | 2027-03-07 | 2027-03-12 | 3270 |  | 7 Days Work | 9187294 |
| 3272 | 36900.37000.37100.37700.38400.43100.321600 | 2nd coat of primer | 10d | 2027-03-12 | 2027-03-22 | 3271 |  | 7 Days Work | 9187304 |
| 3273 | 36900.37000.37100.37700.38400.43100.321700 | Final cutting/polishing of stone flooring | 7d | 2027-03-22 | 2027-03-29 | 3272 |  | 7 Days Work | 9187314 |

| ID | WBS | Task | Duration | Start | Finish | Predecessors | Constraint | Calendar | Unique_Task_ID |
| --- | --- | --- | --- | --- | --- | --- | --- | --- | --- |
| 3274 | 36900.37000.37100.37700.38400.43100.57400 | **Toilet** | 237d | 2026-08-03 | 2027-03-28 |  | start no earlier than 2026-08-03 | 7 Days Work | 9183654 |
| 3275 | 36900.37000.37100.37700.38400.43100.57400.834100 | Toilet_MEP Clearance -1 | 7d | 2026-08-03 | 2026-08-10 | 3238 |  | 7 Days Work | 9194394 |
| 3276 | 36900.37000.37100.37700.38400.43100.57400.834200 | Toilet_Level Marking | 1d | 2026-08-10 | 2026-08-11 | 3275 |  | 7 Days Work | 9194404 |
| 3277 | 36900.37000.37100.37700.38400.43100.57400.834300 | Toilet_Chasing work for Electrical conduit & concealed plumbing | 5d | 2026-08-11 | 2026-08-16 | 3276 |  | 7 Days Work | 9194414 |
| 3278 | 36900.37000.37100.37700.38400.43100.57400.834400 | Toilet_Plumbing work 1st fix | 5d | 2026-08-16 | 2026-08-21 | 3277 |  | 7 Days Work | 9194424 |
| 3279 | 36900.37000.37100.37700.38400.43100.57400.834500 | Toilet_Sleeve/Bore Packing | 5d | 2026-08-21 | 2026-08-26 | 3278 |  | 7 Days Work | 9194434 |
| 3280 | 36900.37000.37100.37700.38400.43100.57400.834600 | Toilet_Waterproofing | 10d | 2026-08-26 | 2026-09-05 | 3279 |  | 7 Days Work | 9194444 |
| 3281 | 36900.37000.37100.37700.38400.43100.57400.834700 | Toilet_Screed | 1d | 2026-09-05 | 2026-09-06 | 3280 |  | 7 Days Work | 9194454 |
| 3282 | 36900.37000.37100.37700.38400.43100.57400.834800 | Toilet_Plumbing 2nd fix | 5d | 2026-09-06 | 2026-09-11 | 3281 |  | 7 Days Work | 9194464 |
| 3283 | 36900.37000.37100.37700.38400.43100.57400.834900 | Toilet_Ledge wall | 5d | 2026-09-11 | 2026-09-16 | 3282 |  | 7 Days Work | 9194474 |
| 3284 | 36900.37000.37100.37700.38400.43100.57400.835000 | Toilet_Cement Plaster | 5d | 2026-09-16 | 2026-09-21 | 3283 |  | 7 Days Work | 9194484 |
| 3285 | 36900.37000.37100.37700.38400.43100.57400.835100 | Toilet_Door Frame | 1d | 2026-09-21 | 2026-09-22 | 3284 |  | 7 Days Work | 9194494 |
| 3286 | 36900.37000.37100.37700.38400.43100.57400.835200 | Toilet_Wash basin & Couter | 3d | 2026-09-22 | 2026-09-25 | 3285 |  | 7 Days Work | 9194504 |
| 3287 | 36900.37000.37100.37700.38400.43100.57400.835300 | Toilet_Wall dado | 20d | 2026-09-25 | 2026-10-15 | 3286 |  | 7 Days Work | 9194514 |
| 3288 | 36900.37000.37100.37700.38400.43100.57400.835400 | Toilet_Granite Work-Ledge wall top | 3d | 2026-10-15 | 2026-10-18 | 3287 |  | 7 Days Work | 9194524 |
| 3289 | 36900.37000.37100.37700.38400.43100.57400.835500 | Toilet_Floor Tilling work | 20d | 2026-10-18 | 2026-11-07 | 3288 |  | 7 Days Work | 9194534 |
| 3290 | 36900.37000.37100.37700.38400.43100.57400.835600 | Toilet_1st row of dado | 5d | 2026-11-07 | 2026-11-12 | 3289 |  | 7 Days Work | 9194544 |
| 3291 | 36900.37000.37100.37700.38400.43100.57400.835700 | Toilet_Window Fixing | 14d | 2026-11-12 | 2026-11-26 | 3290 |  | 7 Days Work | 9194554 |
| 3292 | 36900.37000.37100.37700.38400.43100.57400.835800 | Toilet_Services above False ceiling | 21d | 2026-11-26 | 2026-12-17 | 3291 |  | 7 Days Work | 9194564 |
| 3293 | 36900.37000.37100.37700.38400.43100.57400.835900 | Toilet_False Ceiling framing | 12d | 2026-12-17 | 2026-12-29 | 3292 |  | 7 Days Work | 9194574 |
| 3294 | 36900.37000.37100.37700.38400.43100.57400.836000 | Toilet_Door Frame | 5d | 2026-12-29 | 2027-01-03 | 3293 |  | 7 Days Work | 9194584 |
| 3295 | 36900.37000.37100.37700.38400.43100.57400.836100 | Toilet_Epoxy Tile Grouting | 7d | 2027-02-28 | 2027-03-07 | 3270SS |  | 7 Days Work | 9194594 |
| 3296 | 36900.37000.37100.37700.38400.43100.57400.836200 | Toilet_False ceiling board fixing, CP Sanitary Fixture, Electric Fixture | 21d | 2027-03-07 | 2027-03-28 | 3295 |  | 7 Days Work | 9194604 |
| 3297 | 36900.37000.37100.37700.38400.43200 | **10th Habitable/12th Floor** | 245d | 2026-08-05 | 2027-04-07 |  | start no earlier than 2026-08-05 | 7 Days Work | 9183464 |
| 3298 | 36900.37000.37100.37700.38400.43200.321800 | Post Pour | 7d | 2026-08-05 | 2026-08-12 | 2745FS+15d |  | 7 Days Work | 9187324 |
| 3299 | 36900.37000.37100.37700.38400.43200.321900 | MEP Clearance -1 | 5d | 2026-08-12 | 2026-08-17 | 3298 |  | 7 Days Work | 9187334 |
| 3300 | 36900.37000.37100.37700.38400.43200.322000 | Benchmark | 1d | 2026-08-17 | 2026-08-18 | 3299 |  | 7 Days Work | 9187344 |
| 3301 | 36900.37000.37100.37700.38400.43200.322100 | Temporary Railing | 3d | 2026-08-18 | 2026-08-21 | 3300 |  | 7 Days Work | 9187354 |
| 3302 | 36900.37000.37100.37700.38400.43200.322200 | Blockwork | 10d | 2026-08-21 | 2026-08-31 | 3301 |  | 7 Days Work | 9187364 |
| 3303 | 36900.37000.37100.37700.38400.43200.322300 | MEP Clearance -2 | 10d | 2026-08-31 | 2026-09-10 | 3302 |  | 7 Days Work | 9187374 |
| 3304 | 36900.37000.37100.37700.38400.43200.322400 | Gypsum Plaster | 14d | 2026-09-10 | 2026-09-24 | 3303 |  | 7 Days Work | 9187384 |
| 3305 | 36900.37000.37100.37700.38400.43200.322500 | Kitchen Platform | 3d | 2026-09-24 | 2026-09-27 | 3304 |  | 7 Days Work | 9187394 |
| 3306 | 36900.37000.37100.37700.38400.43200.322600 | Kitchen dado | 7d | 2026-09-27 | 2026-10-04 | 3305 |  | 7 Days Work | 9187404 |
| 3307 | 36900.37000.37100.37700.38400.43200.322700 | Fire Fighting | 5d | 2026-10-04 | 2026-10-09 | 3306 |  | 7 Days Work | 9187414 |
| 3308 | 36900.37000.37100.37700.38400.43200.322800 | Anticapilary | 5d | 2026-10-09 | 2026-10-14 | 3307 |  | 7 Days Work | 9187424 |
| 3309 | 36900.37000.37100.37700.38400.43200.322900 | Stone Laying | 10d | 2026-11-16 | 2026-11-26 | 3349 |  | 7 Days Work | 9187434 |
| 3310 | 36900.37000.37100.37700.38400.43200.323000 | Tiles Laying | 7d | 2026-11-16 | 2026-11-23 | 3349 |  | 7 Days Work | 9187444 |
| 3311 | 36900.37000.37100.37700.38400.43200.323100 | 1st cutting/polishing of stone flooring | 7d | 2026-11-23 | 2026-11-30 | 3310 |  | 7 Days Work | 9187454 |
| 3312 | 36900.37000.37100.37700.38400.43200.323200 | Tiles/Stone skirting | 5d | 2026-11-30 | 2026-12-05 | 3311 |  | 7 Days Work | 9187464 |
| 3313 | 36900.37000.37100.37700.38400.43200.323300 | Protechtion sheet | 1d | 2026-12-05 | 2026-12-06 | 3312 |  | 7 Days Work | 9187474 |
| 3314 | 36900.37000.37100.37700.38400.43200.323400 | Installation of Temporary Door | 1d | 2026-12-06 | 2026-12-07 | 3313 |  | 7 Days Work | 9187484 |
| 3315 | 36900.37000.37100.37700.38400.43200.323500 | Fixing of window tracks | 5d | 2026-12-07 | 2026-12-12 | 3314 |  | 7 Days Work | 9187494 |
| 3316 | 36900.37000.37100.37700.38400.43200.323600 | Wire Pulling | 7d | 2026-12-12 | 2026-12-19 | 3315 |  | 7 Days Work | 9187504 |
| 3317 | 36900.37000.37100.37700.38400.43200.323700 | Gypsum Remaining | 5d | 2026-12-19 | 2026-12-24 | 3316 |  | 7 Days Work | 9187514 |
| 3318 | 36900.37000.37100.37700.38400.43200.323800 | Fixing of windoow shutter | 5d | 2026-12-24 | 2026-12-29 | 3317 |  | 7 Days Work | 9187524 |
| 3319 | 36900.37000.37100.37700.38400.43200.323900 | Putty Works - walls & ceiling | 15d | 2026-12-29 | 2027-01-13 | 3318 |  | 7 Days Work | 9187534 |
| 3320 | 36900.37000.37100.37700.38400.43200.324000 | False Ceiling- Framing | 10d | 2027-01-13 | 2027-01-23 | 3319 |  | 7 Days Work | 9187544 |
| 3321 | 36900.37000.37100.37700.38400.43200.324100 | Pre Hung Door | 3d | 2027-01-23 | 2027-01-26 | 3320 |  | 7 Days Work | 9187554 |
| 3322 | 36900.37000.37100.37700.38400.43200.324200 | Protechtion sheet | 2d | 2027-01-26 | 2027-01-28 | 3321 |  | 7 Days Work | 9187564 |
| 3323 | 36900.37000.37100.37700.38400.43200.324300 | Skirting near door | 2d | 2027-01-28 | 2027-01-30 | 3322 |  | 7 Days Work | 9187574 |
| 3324 | 36900.37000.37100.37700.38400.43200.324400 | Electrical Switch box fixing | 14d | 2027-01-30 | 2027-02-13 | 3323 |  | 7 Days Work | 9187584 |
| 3325 | 36900.37000.37100.37700.38400.43200.324500 | Fire Fighting painting | 5d | 2027-02-13 | 2027-02-18 | 3324 |  | 7 Days Work | 9187594 |
| 3326 | 36900.37000.37100.37700.38400.43200.324600 | Protection of all flooring, door & window hardware | 5d | 2027-02-18 | 2027-02-23 | 3325 |  | 7 Days Work | 9187604 |
| 3327 | 36900.37000.37100.37700.38400.43200.324700 | 1st coat primer- ceiling 1st & walls | 14d | 2027-02-23 | 2027-03-09 | 3326 |  | 7 Days Work | 9187614 |
| 3328 | 36900.37000.37100.37700.38400.43200.324800 | Wooden Flooring | 5d | 2027-03-09 | 2027-03-14 | 3327 |  | 7 Days Work | 9187624 |
| 3329 | 36900.37000.37100.37700.38400.43200.324900 | Removing of Temporary Railing & installation of Glass Railing | 5d | 2027-03-09 | 2027-03-14 | 3327 |  | 7 Days Work | 9187634 |
| 3330 | 36900.37000.37100.37700.38400.43200.325000 | Tile Grouting | 7d | 2027-03-09 | 2027-03-16 | 3327 |  | 7 Days Work | 9187644 |
| 3331 | 36900.37000.37100.37700.38400.43200.325100 | False Ceiling | 5d | 2027-03-16 | 2027-03-21 | 3330 |  | 7 Days Work | 9187654 |
| 3332 | 36900.37000.37100.37700.38400.43200.325200 | 2nd coat of primer | 10d | 2027-03-21 | 2027-03-31 | 3331 |  | 7 Days Work | 9187664 |
| 3333 | 36900.37000.37100.37700.38400.43200.325300 | Final cutting/polishing of stone flooring | 7d | 2027-03-31 | 2027-04-07 | 3332 |  | 7 Days Work | 9187674 |

| ID | WBS | Task | Duration | Start | Finish | Predecessors | Constraint | Calendar | Unique_Task_ID |
| --- | --- | --- | --- | --- | --- | --- | --- | --- | --- |
| 3334 | 36900.37000.37100.37700.38400.43200.57500 | **Toilet** | 237d | 2026-08-12 | 2027-04-06 |  | start no earlier than 2026-08-12 | 7 Days Work | 9183664 |
| 3335 | 36900.37000.37100.37700.38400.43200.57500.836300 | Toilet_MEP Clearance -1 | 7d | 2026-08-12 | 2026-08-19 | 3298 |  | 7 Days Work | 9194614 |
| 3336 | 36900.37000.37100.37700.38400.43200.57500.836400 | Toilet_Level Marking | 1d | 2026-08-19 | 2026-08-20 | 3335 |  | 7 Days Work | 9194624 |
| 3337 | 36900.37000.37100.37700.38400.43200.57500.836500 | Toilet_Chasing work for Electrical conduit & concealed plumbing | 5d | 2026-08-20 | 2026-08-25 | 3336 |  | 7 Days Work | 9194634 |
| 3338 | 36900.37000.37100.37700.38400.43200.57500.836600 | Toilet_Plumbing work 1st fix | 5d | 2026-08-25 | 2026-08-30 | 3337 |  | 7 Days Work | 9194644 |
| 3339 | 36900.37000.37100.37700.38400.43200.57500.836700 | Toilet_Sleeve/Bore Packing | 5d | 2026-08-30 | 2026-09-04 | 3338 |  | 7 Days Work | 9194654 |
| 3340 | 36900.37000.37100.37700.38400.43200.57500.836800 | Toilet_Waterproofing | 10d | 2026-09-04 | 2026-09-14 | 3339 |  | 7 Days Work | 9194664 |
| 3341 | 36900.37000.37100.37700.38400.43200.57500.836900 | Toilet_Screed | 1d | 2026-09-14 | 2026-09-15 | 3340 |  | 7 Days Work | 9194674 |
| 3342 | 36900.37000.37100.37700.38400.43200.57500.837000 | Toilet_Plumbing 2nd fix | 5d | 2026-09-15 | 2026-09-20 | 3341 |  | 7 Days Work | 9194684 |
| 3343 | 36900.37000.37100.37700.38400.43200.57500.837100 | Toilet_Ledge wall | 5d | 2026-09-20 | 2026-09-25 | 3342 |  | 7 Days Work | 9194694 |
| 3344 | 36900.37000.37100.37700.38400.43200.57500.837200 | Toilet_Cement Plaster | 5d | 2026-09-25 | 2026-09-30 | 3343 |  | 7 Days Work | 9194704 |
| 3345 | 36900.37000.37100.37700.38400.43200.57500.837300 | Toilet_Door Frame | 1d | 2026-09-30 | 2026-10-01 | 3344 |  | 7 Days Work | 9194714 |
| 3346 | 36900.37000.37100.37700.38400.43200.57500.837400 | Toilet_Wash basin & Couter | 3d | 2026-10-01 | 2026-10-04 | 3345 |  | 7 Days Work | 9194724 |
| 3347 | 36900.37000.37100.37700.38400.43200.57500.837500 | Toilet_Wall dado | 20d | 2026-10-04 | 2026-10-24 | 3346 |  | 7 Days Work | 9194734 |
| 3348 | 36900.37000.37100.37700.38400.43200.57500.837600 | Toilet_Granite Work-Ledge wall top | 3d | 2026-10-24 | 2026-10-27 | 3347 |  | 7 Days Work | 9194744 |
| 3349 | 36900.37000.37100.37700.38400.43200.57500.837700 | Toilet_Floor Tilling work | 20d | 2026-10-27 | 2026-11-16 | 3348 |  | 7 Days Work | 9194754 |
| 3350 | 36900.37000.37100.37700.38400.43200.57500.837800 | Toilet_1st row of dado | 5d | 2026-11-16 | 2026-11-21 | 3349 |  | 7 Days Work | 9194764 |
| 3351 | 36900.37000.37100.37700.38400.43200.57500.837900 | Toilet_Window Fixing | 14d | 2026-11-21 | 2026-12-05 | 3350 |  | 7 Days Work | 9194774 |
| 3352 | 36900.37000.37100.37700.38400.43200.57500.838000 | Toilet_Services above False ceiling | 21d | 2026-12-05 | 2026-12-26 | 3351 |  | 7 Days Work | 9194784 |
| 3353 | 36900.37000.37100.37700.38400.43200.57500.838100 | Toilet_False Ceiling framing | 12d | 2026-12-26 | 2027-01-07 | 3352 |  | 7 Days Work | 9194794 |
| 3354 | 36900.37000.37100.37700.38400.43200.57500.838200 | Toilet_Door Frame | 5d | 2027-01-07 | 2027-01-12 | 3353 |  | 7 Days Work | 9194804 |
| 3355 | 36900.37000.37100.37700.38400.43200.57500.838300 | Toilet_Epoxy Tile Grouting | 7d | 2027-03-09 | 2027-03-16 | 3330SS |  | 7 Days Work | 9194814 |
| 3356 | 36900.37000.37100.37700.38400.43200.57500.838400 | Toilet_False ceiling board fixing, CP Sanitary Fixture, Electric Fixture | 21d | 2027-03-16 | 2027-04-06 | 3355 |  | 7 Days Work | 9194824 |
| 3357 | 36900.37000.37100.37700.38400.43300 | **11th Habitable/13th Floor** | 245d | 2026-08-14 | 2027-04-16 |  | start no earlier than 2026-08-14 | 7 Days Work | 9183474 |
| 3358 | 36900.37000.37100.37700.38400.43300.325400 | Post Pour | 7d | 2026-08-14 | 2026-08-21 | 2746FS+15d |  | 7 Days Work | 9187684 |
| 3359 | 36900.37000.37100.37700.38400.43300.325500 | MEP Clearance -1 | 5d | 2026-08-21 | 2026-08-26 | 3358 |  | 7 Days Work | 9187694 |
| 3360 | 36900.37000.37100.37700.38400.43300.325600 | Benchmark | 1d | 2026-08-26 | 2026-08-27 | 3359 |  | 7 Days Work | 9187704 |
| 3361 | 36900.37000.37100.37700.38400.43300.325700 | Temporary Railing | 3d | 2026-08-27 | 2026-08-30 | 3360 |  | 7 Days Work | 9187714 |
| 3362 | 36900.37000.37100.37700.38400.43300.325800 | Blockwork | 10d | 2026-08-30 | 2026-09-09 | 3361 |  | 7 Days Work | 9187724 |
| 3363 | 36900.37000.37100.37700.38400.43300.325900 | MEP Clearance -2 | 10d | 2026-09-09 | 2026-09-19 | 3362 |  | 7 Days Work | 9187734 |
| 3364 | 36900.37000.37100.37700.38400.43300.326000 | Gypsum Plaster | 14d | 2026-09-19 | 2026-10-03 | 3363 |  | 7 Days Work | 9187744 |
| 3365 | 36900.37000.37100.37700.38400.43300.326100 | Kitchen Platform | 3d | 2026-10-03 | 2026-10-06 | 3364 |  | 7 Days Work | 9187754 |
| 3366 | 36900.37000.37100.37700.38400.43300.326200 | Kitchen dado | 7d | 2026-10-06 | 2026-10-13 | 3365 |  | 7 Days Work | 9187764 |
| 3367 | 36900.37000.37100.37700.38400.43300.326300 | Fire Fighting | 5d | 2026-10-13 | 2026-10-18 | 3366 |  | 7 Days Work | 9187774 |
| 3368 | 36900.37000.37100.37700.38400.43300.326400 | Anticapilary | 5d | 2026-10-18 | 2026-10-23 | 3367 |  | 7 Days Work | 9187784 |
| 3369 | 36900.37000.37100.37700.38400.43300.326500 | Stone Laying | 10d | 2026-11-25 | 2026-12-05 | 3409 |  | 7 Days Work | 9187794 |
| 3370 | 36900.37000.37100.37700.38400.43300.326600 | Tiles Laying | 7d | 2026-11-25 | 2026-12-02 | 3409 |  | 7 Days Work | 9187804 |
| 3371 | 36900.37000.37100.37700.38400.43300.326700 | 1st cutting/polishing of stone flooring | 7d | 2026-12-02 | 2026-12-09 | 3370 |  | 7 Days Work | 9187814 |
| 3372 | 36900.37000.37100.37700.38400.43300.326800 | Tiles/Stone skirting | 5d | 2026-12-09 | 2026-12-14 | 3371 |  | 7 Days Work | 9187824 |
| 3373 | 36900.37000.37100.37700.38400.43300.326900 | Protechtion sheet | 1d | 2026-12-14 | 2026-12-15 | 3372 |  | 7 Days Work | 9187834 |
| 3374 | 36900.37000.37100.37700.38400.43300.327000 | Installation of Temporary Door | 1d | 2026-12-15 | 2026-12-16 | 3373 |  | 7 Days Work | 9187844 |
| 3375 | 36900.37000.37100.37700.38400.43300.327100 | Fixing of window tracks | 5d | 2026-12-16 | 2026-12-21 | 3374 |  | 7 Days Work | 9187854 |
| 3376 | 36900.37000.37100.37700.38400.43300.327200 | Wire Pulling | 7d | 2026-12-21 | 2026-12-28 | 3375 |  | 7 Days Work | 9187864 |
| 3377 | 36900.37000.37100.37700.38400.43300.327300 | Gypsum Remaining | 5d | 2026-12-28 | 2027-01-02 | 3376 |  | 7 Days Work | 9187874 |
| 3378 | 36900.37000.37100.37700.38400.43300.327400 | Fixing of windoow shutter | 5d | 2027-01-02 | 2027-01-07 | 3377 |  | 7 Days Work | 9187884 |
| 3379 | 36900.37000.37100.37700.38400.43300.327500 | Putty Works - walls & ceiling | 15d | 2027-01-07 | 2027-01-22 | 3378 |  | 7 Days Work | 9187894 |
| 3380 | 36900.37000.37100.37700.38400.43300.327600 | False Ceiling- Framing | 10d | 2027-01-22 | 2027-02-01 | 3379 |  | 7 Days Work | 9187904 |
| 3381 | 36900.37000.37100.37700.38400.43300.327700 | Pre Hung Door | 3d | 2027-02-01 | 2027-02-04 | 3380 |  | 7 Days Work | 9187914 |
| 3382 | 36900.37000.37100.37700.38400.43300.327800 | Protechtion sheet | 2d | 2027-02-04 | 2027-02-06 | 3381 |  | 7 Days Work | 9187924 |
| 3383 | 36900.37000.37100.37700.38400.43300.327900 | Skirting near door | 2d | 2027-02-06 | 2027-02-08 | 3382 |  | 7 Days Work | 9187934 |
| 3384 | 36900.37000.37100.37700.38400.43300.328000 | Electrical Switch box fixing | 14d | 2027-02-08 | 2027-02-22 | 3383 |  | 7 Days Work | 9187944 |
| 3385 | 36900.37000.37100.37700.38400.43300.328100 | Fire Fighting painting | 5d | 2027-02-22 | 2027-02-27 | 3384 |  | 7 Days Work | 9187954 |
| 3386 | 36900.37000.37100.37700.38400.43300.328200 | Protection of all flooring, door & window hardware | 5d | 2027-02-27 | 2027-03-04 | 3385 |  | 7 Days Work | 9187964 |
| 3387 | 36900.37000.37100.37700.38400.43300.328300 | 1st coat primer- ceiling 1st & walls | 14d | 2027-03-04 | 2027-03-18 | 3386 |  | 7 Days Work | 9187974 |
| 3388 | 36900.37000.37100.37700.38400.43300.328400 | Wooden Flooring | 5d | 2027-03-18 | 2027-03-23 | 3387 |  | 7 Days Work | 9187984 |
| 3389 | 36900.37000.37100.37700.38400.43300.328500 | Removing of Temporary Railing & installation of Glass Railing | 5d | 2027-03-18 | 2027-03-23 | 3387 |  | 7 Days Work | 9187994 |
| 3390 | 36900.37000.37100.37700.38400.43300.328600 | Tile Grouting | 7d | 2027-03-18 | 2027-03-25 | 3387 |  | 7 Days Work | 9188004 |
| 3391 | 36900.37000.37100.37700.38400.43300.328700 | False Ceiling | 5d | 2027-03-25 | 2027-03-30 | 3390 |  | 7 Days Work | 9188014 |
| 3392 | 36900.37000.37100.37700.38400.43300.328800 | 2nd coat of primer | 10d | 2027-03-30 | 2027-04-09 | 3391 |  | 7 Days Work | 9188024 |
| 3393 | 36900.37000.37100.37700.38400.43300.328900 | Final cutting/polishing of stone flooring | 7d | 2027-04-09 | 2027-04-16 | 3392 |  | 7 Days Work | 9188034 |

| ID | WBS | Task | Duration | Start | Finish | Predecessors | Constraint | Calendar | Unique_Task_ID |
| --- | --- | --- | --- | --- | --- | --- | --- | --- | --- |
| 3394 | 36900.37000.37100.37700.38400.43300.57600 | **Toilet** | 237d | 2026-08-21 | 2027-04-15 |  | start no earlier than 2026-08-21 | 7 Days Work | 9183674 |
| 3395 | 36900.37000.37100.37700.38400.43300.57600.838500 | Toilet_MEP Clearance -1 | 7d | 2026-08-21 | 2026-08-28 | 3358 |  | 7 Days Work | 9194834 |
| 3396 | 36900.37000.37100.37700.38400.43300.57600.838600 | Toilet_Level Marking | 1d | 2026-08-28 | 2026-08-29 | 3395 |  | 7 Days Work | 9194844 |
| 3397 | 36900.37000.37100.37700.38400.43300.57600.838700 | Toilet_Chasing work for Electrical conduit & concealed plumbing | 5d | 2026-08-29 | 2026-09-03 | 3396 |  | 7 Days Work | 9194854 |
| 3398 | 36900.37000.37100.37700.38400.43300.57600.838800 | Toilet_Plumbing work 1st fix | 5d | 2026-09-03 | 2026-09-08 | 3397 |  | 7 Days Work | 9194864 |
| 3399 | 36900.37000.37100.37700.38400.43300.57600.838900 | Toilet_Sleeve/Bore Packing | 5d | 2026-09-08 | 2026-09-13 | 3398 |  | 7 Days Work | 9194874 |
| 3400 | 36900.37000.37100.37700.38400.43300.57600.839000 | Toilet_Waterproofing | 10d | 2026-09-13 | 2026-09-23 | 3399 |  | 7 Days Work | 9194884 |
| 3401 | 36900.37000.37100.37700.38400.43300.57600.839100 | Toilet_Screed | 1d | 2026-09-23 | 2026-09-24 | 3400 |  | 7 Days Work | 9194894 |
| 3402 | 36900.37000.37100.37700.38400.43300.57600.839200 | Toilet_Plumbing 2nd fix | 5d | 2026-09-24 | 2026-09-29 | 3401 |  | 7 Days Work | 9194904 |
| 3403 | 36900.37000.37100.37700.38400.43300.57600.839300 | Toilet_Ledge wall | 5d | 2026-09-29 | 2026-10-04 | 3402 |  | 7 Days Work | 9194914 |
| 3404 | 36900.37000.37100.37700.38400.43300.57600.839400 | Toilet_Cement Plaster | 5d | 2026-10-04 | 2026-10-09 | 3403 |  | 7 Days Work | 9194924 |
| 3405 | 36900.37000.37100.37700.38400.43300.57600.839500 | Toilet_Door Frame | 1d | 2026-10-09 | 2026-10-10 | 3404 |  | 7 Days Work | 9194934 |
| 3406 | 36900.37000.37100.37700.38400.43300.57600.839600 | Toilet_Wash basin & Couter | 3d | 2026-10-10 | 2026-10-13 | 3405 |  | 7 Days Work | 9194944 |
| 3407 | 36900.37000.37100.37700.38400.43300.57600.839700 | Toilet_Wall dado | 20d | 2026-10-13 | 2026-11-02 | 3406 |  | 7 Days Work | 9194954 |
| 3408 | 36900.37000.37100.37700.38400.43300.57600.839800 | Toilet_Granite Work-Ledge wall top | 3d | 2026-11-02 | 2026-11-05 | 3407 |  | 7 Days Work | 9194964 |
| 3409 | 36900.37000.37100.37700.38400.43300.57600.839900 | Toilet_Floor Tilling work | 20d | 2026-11-05 | 2026-11-25 | 3408 |  | 7 Days Work | 9194974 |
| 3410 | 36900.37000.37100.37700.38400.43300.57600.840000 | Toilet_1st row of dado | 5d | 2026-11-25 | 2026-11-30 | 3409 |  | 7 Days Work | 9194984 |
| 3411 | 36900.37000.37100.37700.38400.43300.57600.840100 | Toilet_Window Fixing | 14d | 2026-11-30 | 2026-12-14 | 3410 |  | 7 Days Work | 9194994 |
| 3412 | 36900.37000.37100.37700.38400.43300.57600.840200 | Toilet_Services above False ceiling | 21d | 2026-12-14 | 2027-01-04 | 3411 |  | 7 Days Work | 9195004 |
| 3413 | 36900.37000.37100.37700.38400.43300.57600.840300 | Toilet_False Ceiling framing | 12d | 2027-01-04 | 2027-01-16 | 3412 |  | 7 Days Work | 9195014 |
| 3414 | 36900.37000.37100.37700.38400.43300.57600.840400 | Toilet_Door Frame | 5d | 2027-01-16 | 2027-01-21 | 3413 |  | 7 Days Work | 9195024 |
| 3415 | 36900.37000.37100.37700.38400.43300.57600.840500 | Toilet_Epoxy Tile Grouting | 7d | 2027-03-18 | 2027-03-25 | 3390SS |  | 7 Days Work | 9195034 |
| 3416 | 36900.37000.37100.37700.38400.43300.57600.840600 | Toilet_False ceiling board fixing, CP Sanitary Fixture, Electric Fixture | 21d | 2027-03-25 | 2027-04-15 | 3415 |  | 7 Days Work | 9195044 |
| 3417 | 36900.37000.37100.37700.38400.43400 | **12th Habitable/14th Floor** | 245d | 2026-08-26 | 2027-04-28 |  | start no earlier than 2026-08-26 | 7 Days Work | 9183484 |
| 3418 | 36900.37000.37100.37700.38400.43400.329000 | Post Pour | 7d | 2026-08-26 | 2026-09-02 | 2747FS+15d |  | 7 Days Work | 9188044 |
| 3419 | 36900.37000.37100.37700.38400.43400.329100 | MEP Clearance -1 | 5d | 2026-09-02 | 2026-09-07 | 3418 |  | 7 Days Work | 9188054 |
| 3420 | 36900.37000.37100.37700.38400.43400.329200 | Benchmark | 1d | 2026-09-07 | 2026-09-08 | 3419 |  | 7 Days Work | 9188064 |
| 3421 | 36900.37000.37100.37700.38400.43400.329300 | Temporary Railing | 3d | 2026-09-08 | 2026-09-11 | 3420 |  | 7 Days Work | 9188074 |
| 3422 | 36900.37000.37100.37700.38400.43400.329400 | Blockwork | 10d | 2026-09-11 | 2026-09-21 | 3421 |  | 7 Days Work | 9188084 |
| 3423 | 36900.37000.37100.37700.38400.43400.329500 | MEP Clearance -2 | 10d | 2026-09-21 | 2026-10-01 | 3422 |  | 7 Days Work | 9188094 |
| 3424 | 36900.37000.37100.37700.38400.43400.329600 | Gypsum Plaster | 14d | 2026-10-01 | 2026-10-15 | 3423 |  | 7 Days Work | 9188104 |
| 3425 | 36900.37000.37100.37700.38400.43400.329700 | Kitchen Platform | 3d | 2026-10-15 | 2026-10-18 | 3424 |  | 7 Days Work | 9188114 |
| 3426 | 36900.37000.37100.37700.38400.43400.329800 | Kitchen dado | 7d | 2026-10-18 | 2026-10-25 | 3425 |  | 7 Days Work | 9188124 |
| 3427 | 36900.37000.37100.37700.38400.43400.329900 | Fire Fighting | 5d | 2026-10-25 | 2026-10-30 | 3426 |  | 7 Days Work | 9188134 |
| 3428 | 36900.37000.37100.37700.38400.43400.330000 | Anticapilary | 5d | 2026-10-30 | 2026-11-04 | 3427 |  | 7 Days Work | 9188144 |
| 3429 | 36900.37000.37100.37700.38400.43400.330100 | Stone Laying | 10d | 2026-12-07 | 2026-12-17 | 3469 |  | 7 Days Work | 9188154 |
| 3430 | 36900.37000.37100.37700.38400.43400.330200 | Tiles Laying | 7d | 2026-12-07 | 2026-12-14 | 3469 |  | 7 Days Work | 9188164 |
| 3431 | 36900.37000.37100.37700.38400.43400.330300 | 1st cutting/polishing of stone flooring | 7d | 2026-12-14 | 2026-12-21 | 3430 |  | 7 Days Work | 9188174 |
| 3432 | 36900.37000.37100.37700.38400.43400.330400 | Tiles/Stone skirting | 5d | 2026-12-21 | 2026-12-26 | 3431 |  | 7 Days Work | 9188184 |
| 3433 | 36900.37000.37100.37700.38400.43400.330500 | Protechtion sheet | 1d | 2026-12-26 | 2026-12-27 | 3432 |  | 7 Days Work | 9188194 |
| 3434 | 36900.37000.37100.37700.38400.43400.330600 | Installation of Temporary Door | 1d | 2026-12-27 | 2026-12-28 | 3433 |  | 7 Days Work | 9188204 |
| 3435 | 36900.37000.37100.37700.38400.43400.330700 | Fixing of window tracks | 5d | 2026-12-28 | 2027-01-02 | 3434 |  | 7 Days Work | 9188214 |
| 3436 | 36900.37000.37100.37700.38400.43400.330800 | Wire Pulling | 7d | 2027-01-02 | 2027-01-09 | 3435 |  | 7 Days Work | 9188224 |
| 3437 | 36900.37000.37100.37700.38400.43400.330900 | Gypsum Remaining | 5d | 2027-01-09 | 2027-01-14 | 3436 |  | 7 Days Work | 9188234 |
| 3438 | 36900.37000.37100.37700.38400.43400.331000 | Fixing of windoow shutter | 5d | 2027-01-14 | 2027-01-19 | 3437 |  | 7 Days Work | 9188244 |
| 3439 | 36900.37000.37100.37700.38400.43400.331100 | Putty Works - walls & ceiling | 15d | 2027-01-19 | 2027-02-03 | 3438 |  | 7 Days Work | 9188254 |
| 3440 | 36900.37000.37100.37700.38400.43400.331200 | False Ceiling- Framing | 10d | 2027-02-03 | 2027-02-13 | 3439 |  | 7 Days Work | 9188264 |
| 3441 | 36900.37000.37100.37700.38400.43400.331300 | Pre Hung Door | 3d | 2027-02-13 | 2027-02-16 | 3440 |  | 7 Days Work | 9188274 |
| 3442 | 36900.37000.37100.37700.38400.43400.331400 | Protechtion sheet | 2d | 2027-02-16 | 2027-02-18 | 3441 |  | 7 Days Work | 9188284 |
| 3443 | 36900.37000.37100.37700.38400.43400.331500 | Skirting near door | 2d | 2027-02-18 | 2027-02-20 | 3442 |  | 7 Days Work | 9188294 |
| 3444 | 36900.37000.37100.37700.38400.43400.331600 | Electrical Switch box fixing | 14d | 2027-02-20 | 2027-03-06 | 3443 |  | 7 Days Work | 9188304 |
| 3445 | 36900.37000.37100.37700.38400.43400.331700 | Fire Fighting painting | 5d | 2027-03-06 | 2027-03-11 | 3444 |  | 7 Days Work | 9188314 |
| 3446 | 36900.37000.37100.37700.38400.43400.331800 | Protection of all flooring, door & window hardware | 5d | 2027-03-11 | 2027-03-16 | 3445 |  | 7 Days Work | 9188324 |
| 3447 | 36900.37000.37100.37700.38400.43400.331900 | 1st coat primer- ceiling 1st & walls | 14d | 2027-03-16 | 2027-03-30 | 3446 |  | 7 Days Work | 9188334 |
| 3448 | 36900.37000.37100.37700.38400.43400.332000 | Wooden Flooring | 5d | 2027-03-30 | 2027-04-04 | 3447 |  | 7 Days Work | 9188344 |
| 3449 | 36900.37000.37100.37700.38400.43400.332100 | Removing of Temporary Railing & installation of Glass Railing | 5d | 2027-03-30 | 2027-04-04 | 3447 |  | 7 Days Work | 9188354 |
| 3450 | 36900.37000.37100.37700.38400.43400.332200 | Tile Grouting | 7d | 2027-03-30 | 2027-04-06 | 3447 |  | 7 Days Work | 9188364 |
| 3451 | 36900.37000.37100.37700.38400.43400.332300 | False Ceiling | 5d | 2027-04-06 | 2027-04-11 | 3450 |  | 7 Days Work | 9188374 |
| 3452 | 36900.37000.37100.37700.38400.43400.332400 | 2nd coat of primer | 10d | 2027-04-11 | 2027-04-21 | 3451 |  | 7 Days Work | 9188384 |
| 3453 | 36900.37000.37100.37700.38400.43400.332500 | Final cutting/polishing of stone flooring | 7d | 2027-04-21 | 2027-04-28 | 3452 |  | 7 Days Work | 9188394 |

| ID | WBS | Task | Duration | Start | Finish | Predecessors | Constraint | Calendar | Unique_Task_ID |
| --- | --- | --- | --- | --- | --- | --- | --- | --- | --- |
| 3454 | 36900.37000.37100.37700.38400.43400.57700 | **Toilet** | 237d | 2026-09-02 | 2027-04-27 |  | start no earlier than 2026-09-02 | 7 Days Work | 9183684 |
| 3455 | 36900.37000.37100.37700.38400.43400.57700.840700 | Toilet_MEP Clearance -1 | 7d | 2026-09-02 | 2026-09-09 | 3418 |  | 7 Days Work | 9195054 |
| 3456 | 36900.37000.37100.37700.38400.43400.57700.840800 | Toilet_Level Marking | 1d | 2026-09-09 | 2026-09-10 | 3455 |  | 7 Days Work | 9195064 |
| 3457 | 36900.37000.37100.37700.38400.43400.57700.840900 | Toilet_Chasing work for Electrical conduit & concealed plumbing | 5d | 2026-09-10 | 2026-09-15 | 3456 |  | 7 Days Work | 9195074 |
| 3458 | 36900.37000.37100.37700.38400.43400.57700.841000 | Toilet_Plumbing work 1st fix | 5d | 2026-09-15 | 2026-09-20 | 3457 |  | 7 Days Work | 9195084 |
| 3459 | 36900.37000.37100.37700.38400.43400.57700.841100 | Toilet_Sleeve/Bore Packing | 5d | 2026-09-20 | 2026-09-25 | 3458 |  | 7 Days Work | 9195094 |
| 3460 | 36900.37000.37100.37700.38400.43400.57700.841200 | Toilet_Waterproofing | 10d | 2026-09-25 | 2026-10-05 | 3459 |  | 7 Days Work | 9195104 |
| 3461 | 36900.37000.37100.37700.38400.43400.57700.841300 | Toilet_Screed | 1d | 2026-10-05 | 2026-10-06 | 3460 |  | 7 Days Work | 9195114 |
| 3462 | 36900.37000.37100.37700.38400.43400.57700.841400 | Toilet_Plumbing 2nd fix | 5d | 2026-10-06 | 2026-10-11 | 3461 |  | 7 Days Work | 9195124 |
| 3463 | 36900.37000.37100.37700.38400.43400.57700.841500 | Toilet_Ledge wall | 5d | 2026-10-11 | 2026-10-16 | 3462 |  | 7 Days Work | 9195134 |
| 3464 | 36900.37000.37100.37700.38400.43400.57700.841600 | Toilet_Cement Plaster | 5d | 2026-10-16 | 2026-10-21 | 3463 |  | 7 Days Work | 9195144 |
| 3465 | 36900.37000.37100.37700.38400.43400.57700.841700 | Toilet_Door Frame | 1d | 2026-10-21 | 2026-10-22 | 3464 |  | 7 Days Work | 9195154 |
| 3466 | 36900.37000.37100.37700.38400.43400.57700.841800 | Toilet_Wash basin & Couter | 3d | 2026-10-22 | 2026-10-25 | 3465 |  | 7 Days Work | 9195164 |
| 3467 | 36900.37000.37100.37700.38400.43400.57700.841900 | Toilet_Wall dado | 20d | 2026-10-25 | 2026-11-14 | 3466 |  | 7 Days Work | 9195174 |
| 3468 | 36900.37000.37100.37700.38400.43400.57700.842000 | Toilet_Granite Work-Ledge wall top | 3d | 2026-11-14 | 2026-11-17 | 3467 |  | 7 Days Work | 9195184 |
| 3469 | 36900.37000.37100.37700.38400.43400.57700.842100 | Toilet_Floor Tilling work | 20d | 2026-11-17 | 2026-12-07 | 3468 |  | 7 Days Work | 9195194 |
| 3470 | 36900.37000.37100.37700.38400.43400.57700.842200 | Toilet_1st row of dado | 5d | 2026-12-07 | 2026-12-12 | 3469 |  | 7 Days Work | 9195204 |
| 3471 | 36900.37000.37100.37700.38400.43400.57700.842300 | Toilet_Window Fixing | 14d | 2026-12-12 | 2026-12-26 | 3470 |  | 7 Days Work | 9195214 |
| 3472 | 36900.37000.37100.37700.38400.43400.57700.842400 | Toilet_Services above False ceiling | 21d | 2026-12-26 | 2027-01-16 | 3471 |  | 7 Days Work | 9195224 |
| 3473 | 36900.37000.37100.37700.38400.43400.57700.842500 | Toilet_False Ceiling framing | 12d | 2027-01-16 | 2027-01-28 | 3472 |  | 7 Days Work | 9195234 |
| 3474 | 36900.37000.37100.37700.38400.43400.57700.842600 | Toilet_Door Frame | 5d | 2027-01-28 | 2027-02-02 | 3473 |  | 7 Days Work | 9195244 |
| 3475 | 36900.37000.37100.37700.38400.43400.57700.842700 | Toilet_Epoxy Tile Grouting | 7d | 2027-03-30 | 2027-04-06 | 3450SS |  | 7 Days Work | 9195254 |
| 3476 | 36900.37000.37100.37700.38400.43400.57700.842800 | Toilet_False ceiling board fixing, CP Sanitary Fixture, Electric Fixture | 21d | 2027-04-06 | 2027-04-27 | 3475 |  | 7 Days Work | 9195264 |
| 3477 | 36900.37000.37100.37700.38400.43500 | **13th Habitable/15th Floor** | 245d | 2026-09-04 | 2027-05-07 |  | start no earlier than 2026-09-04 | 7 Days Work | 9183494 |
| 3478 | 36900.37000.37100.37700.38400.43500.332600 | Post Pour | 7d | 2026-09-04 | 2026-09-11 | 2748FS+15d |  | 7 Days Work | 9188404 |
| 3479 | 36900.37000.37100.37700.38400.43500.332700 | MEP Clearance -1 | 5d | 2026-09-11 | 2026-09-16 | 3478 |  | 7 Days Work | 9188414 |
| 3480 | 36900.37000.37100.37700.38400.43500.332800 | Benchmark | 1d | 2026-09-16 | 2026-09-17 | 3479 |  | 7 Days Work | 9188424 |
| 3481 | 36900.37000.37100.37700.38400.43500.332900 | Temporary Railing | 3d | 2026-09-17 | 2026-09-20 | 3480 |  | 7 Days Work | 9188434 |
| 3482 | 36900.37000.37100.37700.38400.43500.333000 | Blockwork | 10d | 2026-09-20 | 2026-09-30 | 3481 |  | 7 Days Work | 9188444 |
| 3483 | 36900.37000.37100.37700.38400.43500.333100 | MEP Clearance -2 | 10d | 2026-09-30 | 2026-10-10 | 3482 |  | 7 Days Work | 9188454 |
| 3484 | 36900.37000.37100.37700.38400.43500.333200 | Gypsum Plaster | 14d | 2026-10-10 | 2026-10-24 | 3483 |  | 7 Days Work | 9188464 |
| 3485 | 36900.37000.37100.37700.38400.43500.333300 | Kitchen Platform | 3d | 2026-10-24 | 2026-10-27 | 3484 |  | 7 Days Work | 9188474 |
| 3486 | 36900.37000.37100.37700.38400.43500.333400 | Kitchen dado | 7d | 2026-10-27 | 2026-11-03 | 3485 |  | 7 Days Work | 9188484 |
| 3487 | 36900.37000.37100.37700.38400.43500.333500 | Fire Fighting | 5d | 2026-11-03 | 2026-11-08 | 3486 |  | 7 Days Work | 9188494 |
| 3488 | 36900.37000.37100.37700.38400.43500.333600 | Anticapilary | 5d | 2026-11-08 | 2026-11-13 | 3487 |  | 7 Days Work | 9188504 |
| 3489 | 36900.37000.37100.37700.38400.43500.333700 | Stone Laying | 10d | 2026-12-16 | 2026-12-26 | 3529 |  | 7 Days Work | 9188514 |
| 3490 | 36900.37000.37100.37700.38400.43500.333800 | Tiles Laying | 7d | 2026-12-16 | 2026-12-23 | 3529 |  | 7 Days Work | 9188524 |
| 3491 | 36900.37000.37100.37700.38400.43500.333900 | 1st cutting/polishing of stone flooring | 7d | 2026-12-23 | 2026-12-30 | 3490 |  | 7 Days Work | 9188534 |
| 3492 | 36900.37000.37100.37700.38400.43500.334000 | Tiles/Stone skirting | 5d | 2026-12-30 | 2027-01-04 | 3491 |  | 7 Days Work | 9188544 |
| 3493 | 36900.37000.37100.37700.38400.43500.334100 | Protechtion sheet | 1d | 2027-01-04 | 2027-01-05 | 3492 |  | 7 Days Work | 9188554 |
| 3494 | 36900.37000.37100.37700.38400.43500.334200 | Installation of Temporary Door | 1d | 2027-01-05 | 2027-01-06 | 3493 |  | 7 Days Work | 9188564 |
| 3495 | 36900.37000.37100.37700.38400.43500.334300 | Fixing of window tracks | 5d | 2027-01-06 | 2027-01-11 | 3494 |  | 7 Days Work | 9188574 |
| 3496 | 36900.37000.37100.37700.38400.43500.334400 | Wire Pulling | 7d | 2027-01-11 | 2027-01-18 | 3495 |  | 7 Days Work | 9188584 |
| 3497 | 36900.37000.37100.37700.38400.43500.334500 | Gypsum Remaining | 5d | 2027-01-18 | 2027-01-23 | 3496 |  | 7 Days Work | 9188594 |
| 3498 | 36900.37000.37100.37700.38400.43500.334600 | Fixing of windoow shutter | 5d | 2027-01-23 | 2027-01-28 | 3497 |  | 7 Days Work | 9188604 |
| 3499 | 36900.37000.37100.37700.38400.43500.334700 | Putty Works - walls & ceiling | 15d | 2027-01-28 | 2027-02-12 | 3498 |  | 7 Days Work | 9188614 |
| 3500 | 36900.37000.37100.37700.38400.43500.334800 | False Ceiling- Framing | 10d | 2027-02-12 | 2027-02-22 | 3499 |  | 7 Days Work | 9188624 |
| 3501 | 36900.37000.37100.37700.38400.43500.334900 | Pre Hung Door | 3d | 2027-02-22 | 2027-02-25 | 3500 |  | 7 Days Work | 9188634 |
| 3502 | 36900.37000.37100.37700.38400.43500.335000 | Protechtion sheet | 2d | 2027-02-25 | 2027-02-27 | 3501 |  | 7 Days Work | 9188644 |
| 3503 | 36900.37000.37100.37700.38400.43500.335100 | Skirting near door | 2d | 2027-02-27 | 2027-03-01 | 3502 |  | 7 Days Work | 9188654 |
| 3504 | 36900.37000.37100.37700.38400.43500.335200 | Electrical Switch box fixing | 14d | 2027-03-01 | 2027-03-15 | 3503 |  | 7 Days Work | 9188664 |
| 3505 | 36900.37000.37100.37700.38400.43500.335300 | Fire Fighting painting | 5d | 2027-03-15 | 2027-03-20 | 3504 |  | 7 Days Work | 9188674 |
| 3506 | 36900.37000.37100.37700.38400.43500.335400 | Protection of all flooring, door & window hardware | 5d | 2027-03-20 | 2027-03-25 | 3505 |  | 7 Days Work | 9188684 |
| 3507 | 36900.37000.37100.37700.38400.43500.335500 | 1st coat primer- ceiling 1st & walls | 14d | 2027-03-25 | 2027-04-08 | 3506 |  | 7 Days Work | 9188694 |
| 3508 | 36900.37000.37100.37700.38400.43500.335600 | Wooden Flooring | 5d | 2027-04-08 | 2027-04-13 | 3507 |  | 7 Days Work | 9188704 |
| 3509 | 36900.37000.37100.37700.38400.43500.335700 | Removing of Temporary Railing & installation of Glass Railing | 5d | 2027-04-08 | 2027-04-13 | 3507 |  | 7 Days Work | 9188714 |
| 3510 | 36900.37000.37100.37700.38400.43500.335800 | Tile Grouting | 7d | 2027-04-08 | 2027-04-15 | 3507 |  | 7 Days Work | 9188724 |
| 3511 | 36900.37000.37100.37700.38400.43500.335900 | False Ceiling | 5d | 2027-04-15 | 2027-04-20 | 3510 |  | 7 Days Work | 9188734 |
| 3512 | 36900.37000.37100.37700.38400.43500.336000 | 2nd coat of primer | 10d | 2027-04-20 | 2027-04-30 | 3511 |  | 7 Days Work | 9188744 |
| 3513 | 36900.37000.37100.37700.38400.43500.336100 | Final cutting/polishing of stone flooring | 7d | 2027-04-30 | 2027-05-07 | 3512 |  | 7 Days Work | 9188754 |

| ID | WBS | Task | Duration | Start | Finish | Predecessors | Constraint | Calendar | Unique_Task_ID |
| --- | --- | --- | --- | --- | --- | --- | --- | --- | --- |
| 3514 | 36900.37000.37100.37700.38400.43500.57800 | **Toilet** | 237d | 2026-09-11 | 2027-05-06 |  | start no earlier than 2026-09-11 | 7 Days Work | 9183694 |
| 3515 | 36900.37000.37100.37700.38400.43500.57800.842900 | Toilet_MEP Clearance -1 | 7d | 2026-09-11 | 2026-09-18 | 3478 |  | 7 Days Work | 9195274 |
| 3516 | 36900.37000.37100.37700.38400.43500.57800.843000 | Toilet_Level Marking | 1d | 2026-09-18 | 2026-09-19 | 3515 |  | 7 Days Work | 9195284 |
| 3517 | 36900.37000.37100.37700.38400.43500.57800.843100 | Toilet_Chasing work for Electrical conduit & concealed plumbing | 5d | 2026-09-19 | 2026-09-24 | 3516 |  | 7 Days Work | 9195294 |
| 3518 | 36900.37000.37100.37700.38400.43500.57800.843200 | Toilet_Plumbing work 1st fix | 5d | 2026-09-24 | 2026-09-29 | 3517 |  | 7 Days Work | 9195304 |
| 3519 | 36900.37000.37100.37700.38400.43500.57800.843300 | Toilet_Sleeve/Bore Packing | 5d | 2026-09-29 | 2026-10-04 | 3518 |  | 7 Days Work | 9195314 |
| 3520 | 36900.37000.37100.37700.38400.43500.57800.843400 | Toilet_Waterproofing | 10d | 2026-10-04 | 2026-10-14 | 3519 |  | 7 Days Work | 9195324 |
| 3521 | 36900.37000.37100.37700.38400.43500.57800.843500 | Toilet_Screed | 1d | 2026-10-14 | 2026-10-15 | 3520 |  | 7 Days Work | 9195334 |
| 3522 | 36900.37000.37100.37700.38400.43500.57800.843600 | Toilet_Plumbing 2nd fix | 5d | 2026-10-15 | 2026-10-20 | 3521 |  | 7 Days Work | 9195344 |
| 3523 | 36900.37000.37100.37700.38400.43500.57800.843700 | Toilet_Ledge wall | 5d | 2026-10-20 | 2026-10-25 | 3522 |  | 7 Days Work | 9195354 |
| 3524 | 36900.37000.37100.37700.38400.43500.57800.843800 | Toilet_Cement Plaster | 5d | 2026-10-25 | 2026-10-30 | 3523 |  | 7 Days Work | 9195364 |
| 3525 | 36900.37000.37100.37700.38400.43500.57800.843900 | Toilet_Door Frame | 1d | 2026-10-30 | 2026-10-31 | 3524 |  | 7 Days Work | 9195374 |
| 3526 | 36900.37000.37100.37700.38400.43500.57800.844000 | Toilet_Wash basin & Couter | 3d | 2026-10-31 | 2026-11-03 | 3525 |  | 7 Days Work | 9195384 |
| 3527 | 36900.37000.37100.37700.38400.43500.57800.844100 | Toilet_Wall dado | 20d | 2026-11-03 | 2026-11-23 | 3526 |  | 7 Days Work | 9195394 |
| 3528 | 36900.37000.37100.37700.38400.43500.57800.844200 | Toilet_Granite Work-Ledge wall top | 3d | 2026-11-23 | 2026-11-26 | 3527 |  | 7 Days Work | 9195404 |
| 3529 | 36900.37000.37100.37700.38400.43500.57800.844300 | Toilet_Floor Tilling work | 20d | 2026-11-26 | 2026-12-16 | 3528 |  | 7 Days Work | 9195414 |
| 3530 | 36900.37000.37100.37700.38400.43500.57800.844400 | Toilet_1st row of dado | 5d | 2026-12-16 | 2026-12-21 | 3529 |  | 7 Days Work | 9195424 |
| 3531 | 36900.37000.37100.37700.38400.43500.57800.844500 | Toilet_Window Fixing | 14d | 2026-12-21 | 2027-01-04 | 3530 |  | 7 Days Work | 9195434 |
| 3532 | 36900.37000.37100.37700.38400.43500.57800.844600 | Toilet_Services above False ceiling | 21d | 2027-01-04 | 2027-01-25 | 3531 |  | 7 Days Work | 9195444 |
| 3533 | 36900.37000.37100.37700.38400.43500.57800.844700 | Toilet_False Ceiling framing | 12d | 2027-01-25 | 2027-02-06 | 3532 |  | 7 Days Work | 9195454 |
| 3534 | 36900.37000.37100.37700.38400.43500.57800.844800 | Toilet_Door Frame | 5d | 2027-02-06 | 2027-02-11 | 3533 |  | 7 Days Work | 9195464 |
| 3535 | 36900.37000.37100.37700.38400.43500.57800.844900 | Toilet_Epoxy Tile Grouting | 7d | 2027-04-08 | 2027-04-15 | 3510SS |  | 7 Days Work | 9195474 |
| 3536 | 36900.37000.37100.37700.38400.43500.57800.845000 | Toilet_False ceiling board fixing, CP Sanitary Fixture, Electric Fixture | 21d | 2027-04-15 | 2027-05-06 | 3535 |  | 7 Days Work | 9195484 |
| 3537 | 36900.37000.37100.37700.38400.43600 | **14th Habitable/16th Floor** | 245d | 2026-09-13 | 2027-05-16 |  | start no earlier than 2026-09-13 | 7 Days Work | 9183504 |
| 3538 | 36900.37000.37100.37700.38400.43600.336200 | Post Pour | 7d | 2026-09-13 | 2026-09-20 | 2749FS+15d |  | 7 Days Work | 9188764 |
| 3539 | 36900.37000.37100.37700.38400.43600.336300 | MEP Clearance -1 | 5d | 2026-09-20 | 2026-09-25 | 3538 |  | 7 Days Work | 9188774 |
| 3540 | 36900.37000.37100.37700.38400.43600.336400 | Benchmark | 1d | 2026-09-25 | 2026-09-26 | 3539 |  | 7 Days Work | 9188784 |
| 3541 | 36900.37000.37100.37700.38400.43600.336500 | Temporary Railing | 3d | 2026-09-26 | 2026-09-29 | 3540 |  | 7 Days Work | 9188794 |
| 3542 | 36900.37000.37100.37700.38400.43600.336600 | Blockwork | 10d | 2026-09-29 | 2026-10-09 | 3541 |  | 7 Days Work | 9188804 |
| 3543 | 36900.37000.37100.37700.38400.43600.336700 | MEP Clearance -2 | 10d | 2026-10-09 | 2026-10-19 | 3542 |  | 7 Days Work | 9188814 |
| 3544 | 36900.37000.37100.37700.38400.43600.336800 | Gypsum Plaster | 14d | 2026-10-19 | 2026-11-02 | 3543 |  | 7 Days Work | 9188824 |
| 3545 | 36900.37000.37100.37700.38400.43600.336900 | Kitchen Platform | 3d | 2026-11-02 | 2026-11-05 | 3544 |  | 7 Days Work | 9188834 |
| 3546 | 36900.37000.37100.37700.38400.43600.337000 | Kitchen dado | 7d | 2026-11-05 | 2026-11-12 | 3545 |  | 7 Days Work | 9188844 |
| 3547 | 36900.37000.37100.37700.38400.43600.337100 | Fire Fighting | 5d | 2026-11-12 | 2026-11-17 | 3546 |  | 7 Days Work | 9188854 |
| 3548 | 36900.37000.37100.37700.38400.43600.337200 | Anticapilary | 5d | 2026-11-17 | 2026-11-22 | 3547 |  | 7 Days Work | 9188864 |
| 3549 | 36900.37000.37100.37700.38400.43600.337300 | Stone Laying | 10d | 2026-12-25 | 2027-01-04 | 3589 |  | 7 Days Work | 9188874 |
| 3550 | 36900.37000.37100.37700.38400.43600.337400 | Tiles Laying | 7d | 2026-12-25 | 2027-01-01 | 3589 |  | 7 Days Work | 9188884 |
| 3551 | 36900.37000.37100.37700.38400.43600.337500 | 1st cutting/polishing of stone flooring | 7d | 2027-01-01 | 2027-01-08 | 3550 |  | 7 Days Work | 9188894 |
| 3552 | 36900.37000.37100.37700.38400.43600.337600 | Tiles/Stone skirting | 5d | 2027-01-08 | 2027-01-13 | 3551 |  | 7 Days Work | 9188904 |
| 3553 | 36900.37000.37100.37700.38400.43600.337700 | Protechtion sheet | 1d | 2027-01-13 | 2027-01-14 | 3552 |  | 7 Days Work | 9188914 |
| 3554 | 36900.37000.37100.37700.38400.43600.337800 | Installation of Temporary Door | 1d | 2027-01-14 | 2027-01-15 | 3553 |  | 7 Days Work | 9188924 |
| 3555 | 36900.37000.37100.37700.38400.43600.337900 | Fixing of window tracks | 5d | 2027-01-15 | 2027-01-20 | 3554 |  | 7 Days Work | 9188934 |
| 3556 | 36900.37000.37100.37700.38400.43600.338000 | Wire Pulling | 7d | 2027-01-20 | 2027-01-27 | 3555 |  | 7 Days Work | 9188944 |
| 3557 | 36900.37000.37100.37700.38400.43600.338100 | Gypsum Remaining | 5d | 2027-01-27 | 2027-02-01 | 3556 |  | 7 Days Work | 9188954 |
| 3558 | 36900.37000.37100.37700.38400.43600.338200 | Fixing of windoow shutter | 5d | 2027-02-01 | 2027-02-06 | 3557 |  | 7 Days Work | 9188964 |
| 3559 | 36900.37000.37100.37700.38400.43600.338300 | Putty Works - walls & ceiling | 15d | 2027-02-06 | 2027-02-21 | 3558 |  | 7 Days Work | 9188974 |
| 3560 | 36900.37000.37100.37700.38400.43600.338400 | False Ceiling- Framing | 10d | 2027-02-21 | 2027-03-03 | 3559 |  | 7 Days Work | 9188984 |
| 3561 | 36900.37000.37100.37700.38400.43600.338500 | Pre Hung Door | 3d | 2027-03-03 | 2027-03-06 | 3560 |  | 7 Days Work | 9188994 |
| 3562 | 36900.37000.37100.37700.38400.43600.338600 | Protechtion sheet | 2d | 2027-03-06 | 2027-03-08 | 3561 |  | 7 Days Work | 9189004 |
| 3563 | 36900.37000.37100.37700.38400.43600.338700 | Skirting near door | 2d | 2027-03-08 | 2027-03-10 | 3562 |  | 7 Days Work | 9189014 |
| 3564 | 36900.37000.37100.37700.38400.43600.338800 | Electrical Switch box fixing | 14d | 2027-03-10 | 2027-03-24 | 3563 |  | 7 Days Work | 9189024 |
| 3565 | 36900.37000.37100.37700.38400.43600.338900 | Fire Fighting painting | 5d | 2027-03-24 | 2027-03-29 | 3564 |  | 7 Days Work | 9189034 |
| 3566 | 36900.37000.37100.37700.38400.43600.339000 | Protection of all flooring, door & window hardware | 5d | 2027-03-29 | 2027-04-03 | 3565 |  | 7 Days Work | 9189044 |
| 3567 | 36900.37000.37100.37700.38400.43600.339100 | 1st coat primer- ceiling 1st & walls | 14d | 2027-04-03 | 2027-04-17 | 3566 |  | 7 Days Work | 9189054 |
| 3568 | 36900.37000.37100.37700.38400.43600.339200 | Wooden Flooring | 5d | 2027-04-17 | 2027-04-22 | 3567 |  | 7 Days Work | 9189064 |
| 3569 | 36900.37000.37100.37700.38400.43600.339300 | Removing of Temporary Railing & installation of Glass Railing | 5d | 2027-04-17 | 2027-04-22 | 3567 |  | 7 Days Work | 9189074 |
| 3570 | 36900.37000.37100.37700.38400.43600.339400 | Tile Grouting | 7d | 2027-04-17 | 2027-04-24 | 3567 |  | 7 Days Work | 9189084 |
| 3571 | 36900.37000.37100.37700.38400.43600.339500 | False Ceiling | 5d | 2027-04-24 | 2027-04-29 | 3570 |  | 7 Days Work | 9189094 |
| 3572 | 36900.37000.37100.37700.38400.43600.339600 | 2nd coat of primer | 10d | 2027-04-29 | 2027-05-09 | 3571 |  | 7 Days Work | 9189104 |
| 3573 | 36900.37000.37100.37700.38400.43600.339700 | Final cutting/polishing of stone flooring | 7d | 2027-05-09 | 2027-05-16 | 3572 |  | 7 Days Work | 9189114 |

| ID | WBS | Task | Duration | Start | Finish | Predecessors | Constraint | Calendar | Unique_Task_ID |
| --- | --- | --- | --- | --- | --- | --- | --- | --- | --- |
| 3574 | 36900.37000.37100.37700.38400.43600.57900 | **Toilet** | 237d | 2026-09-20 | 2027-05-15 |  | start no earlier than 2026-09-20 | 7 Days Work | 9183704 |
| 3575 | 36900.37000.37100.37700.38400.43600.57900.845100 | Toilet_MEP Clearance -1 | 7d | 2026-09-20 | 2026-09-27 | 3538 |  | 7 Days Work | 9195494 |
| 3576 | 36900.37000.37100.37700.38400.43600.57900.845200 | Toilet_Level Marking | 1d | 2026-09-27 | 2026-09-28 | 3575 |  | 7 Days Work | 9195504 |
| 3577 | 36900.37000.37100.37700.38400.43600.57900.845300 | Toilet_Chasing work for Electrical conduit & concealed plumbing | 5d | 2026-09-28 | 2026-10-03 | 3576 |  | 7 Days Work | 9195514 |
| 3578 | 36900.37000.37100.37700.38400.43600.57900.845400 | Toilet_Plumbing work 1st fix | 5d | 2026-10-03 | 2026-10-08 | 3577 |  | 7 Days Work | 9195524 |
| 3579 | 36900.37000.37100.37700.38400.43600.57900.845500 | Toilet_Sleeve/Bore Packing | 5d | 2026-10-08 | 2026-10-13 | 3578 |  | 7 Days Work | 9195534 |
| 3580 | 36900.37000.37100.37700.38400.43600.57900.845600 | Toilet_Waterproofing | 10d | 2026-10-13 | 2026-10-23 | 3579 |  | 7 Days Work | 9195544 |
| 3581 | 36900.37000.37100.37700.38400.43600.57900.845700 | Toilet_Screed | 1d | 2026-10-23 | 2026-10-24 | 3580 |  | 7 Days Work | 9195554 |
| 3582 | 36900.37000.37100.37700.38400.43600.57900.845800 | Toilet_Plumbing 2nd fix | 5d | 2026-10-24 | 2026-10-29 | 3581 |  | 7 Days Work | 9195564 |
| 3583 | 36900.37000.37100.37700.38400.43600.57900.845900 | Toilet_Ledge wall | 5d | 2026-10-29 | 2026-11-03 | 3582 |  | 7 Days Work | 9195574 |
| 3584 | 36900.37000.37100.37700.38400.43600.57900.846000 | Toilet_Cement Plaster | 5d | 2026-11-03 | 2026-11-08 | 3583 |  | 7 Days Work | 9195584 |
| 3585 | 36900.37000.37100.37700.38400.43600.57900.846100 | Toilet_Door Frame | 1d | 2026-11-08 | 2026-11-09 | 3584 |  | 7 Days Work | 9195594 |
| 3586 | 36900.37000.37100.37700.38400.43600.57900.846200 | Toilet_Wash basin & Couter | 3d | 2026-11-09 | 2026-11-12 | 3585 |  | 7 Days Work | 9195604 |
| 3587 | 36900.37000.37100.37700.38400.43600.57900.846300 | Toilet_Wall dado | 20d | 2026-11-12 | 2026-12-02 | 3586 |  | 7 Days Work | 9195614 |
| 3588 | 36900.37000.37100.37700.38400.43600.57900.846400 | Toilet_Granite Work-Ledge wall top | 3d | 2026-12-02 | 2026-12-05 | 3587 |  | 7 Days Work | 9195624 |
| 3589 | 36900.37000.37100.37700.38400.43600.57900.846500 | Toilet_Floor Tilling work | 20d | 2026-12-05 | 2026-12-25 | 3588 |  | 7 Days Work | 9195634 |
| 3590 | 36900.37000.37100.37700.38400.43600.57900.846600 | Toilet_1st row of dado | 5d | 2026-12-25 | 2026-12-30 | 3589 |  | 7 Days Work | 9195644 |
| 3591 | 36900.37000.37100.37700.38400.43600.57900.846700 | Toilet_Window Fixing | 14d | 2026-12-30 | 2027-01-13 | 3590 |  | 7 Days Work | 9195654 |
| 3592 | 36900.37000.37100.37700.38400.43600.57900.846800 | Toilet_Services above False ceiling | 21d | 2027-01-13 | 2027-02-03 | 3591 |  | 7 Days Work | 9195664 |
| 3593 | 36900.37000.37100.37700.38400.43600.57900.846900 | Toilet_False Ceiling framing | 12d | 2027-02-03 | 2027-02-15 | 3592 |  | 7 Days Work | 9195674 |
| 3594 | 36900.37000.37100.37700.38400.43600.57900.847000 | Toilet_Door Frame | 5d | 2027-02-15 | 2027-02-20 | 3593 |  | 7 Days Work | 9195684 |
| 3595 | 36900.37000.37100.37700.38400.43600.57900.847100 | Toilet_Epoxy Tile Grouting | 7d | 2027-04-17 | 2027-04-24 | 3570SS |  | 7 Days Work | 9195694 |
| 3596 | 36900.37000.37100.37700.38400.43600.57900.847200 | Toilet_False ceiling board fixing, CP Sanitary Fixture, Electric Fixture | 21d | 2027-04-24 | 2027-05-15 | 3595 |  | 7 Days Work | 9195704 |
| 3597 | 36900.37000.37100.37700.38400.43700 | **15th Habitable/17th Floor** | 245d | 2026-09-22 | 2027-05-25 |  | start no earlier than 2026-09-22 | 7 Days Work | 9183514 |
| 3598 | 36900.37000.37100.37700.38400.43700.339800 | Post Pour | 7d | 2026-09-22 | 2026-09-29 | 2750FS+15d |  | 7 Days Work | 9189124 |
| 3599 | 36900.37000.37100.37700.38400.43700.339900 | MEP Clearance -1 | 5d | 2026-09-29 | 2026-10-04 | 3598 |  | 7 Days Work | 9189134 |
| 3600 | 36900.37000.37100.37700.38400.43700.340000 | Benchmark | 1d | 2026-10-04 | 2026-10-05 | 3599 |  | 7 Days Work | 9189144 |
| 3601 | 36900.37000.37100.37700.38400.43700.340100 | Temporary Railing | 3d | 2026-10-05 | 2026-10-08 | 3600 |  | 7 Days Work | 9189154 |
| 3602 | 36900.37000.37100.37700.38400.43700.340200 | Blockwork | 10d | 2026-10-08 | 2026-10-18 | 3601 |  | 7 Days Work | 9189164 |
| 3603 | 36900.37000.37100.37700.38400.43700.340300 | MEP Clearance -2 | 10d | 2026-10-18 | 2026-10-28 | 3602 |  | 7 Days Work | 9189174 |
| 3604 | 36900.37000.37100.37700.38400.43700.340400 | Gypsum Plaster | 14d | 2026-10-28 | 2026-11-11 | 3603 |  | 7 Days Work | 9189184 |
| 3605 | 36900.37000.37100.37700.38400.43700.340500 | Kitchen Platform | 3d | 2026-11-11 | 2026-11-14 | 3604 |  | 7 Days Work | 9189194 |
| 3606 | 36900.37000.37100.37700.38400.43700.340600 | Kitchen dado | 7d | 2026-11-14 | 2026-11-21 | 3605 |  | 7 Days Work | 9189204 |
| 3607 | 36900.37000.37100.37700.38400.43700.340700 | Fire Fighting | 5d | 2026-11-21 | 2026-11-26 | 3606 |  | 7 Days Work | 9189214 |
| 3608 | 36900.37000.37100.37700.38400.43700.340800 | Anticapilary | 5d | 2026-11-26 | 2026-12-01 | 3607 |  | 7 Days Work | 9189224 |
| 3609 | 36900.37000.37100.37700.38400.43700.340900 | Stone Laying | 10d | 2027-01-03 | 2027-01-13 | 3649 |  | 7 Days Work | 9189234 |
| 3610 | 36900.37000.37100.37700.38400.43700.341000 | Tiles Laying | 7d | 2027-01-03 | 2027-01-10 | 3649 |  | 7 Days Work | 9189244 |
| 3611 | 36900.37000.37100.37700.38400.43700.341100 | 1st cutting/polishing of stone flooring | 7d | 2027-01-10 | 2027-01-17 | 3610 |  | 7 Days Work | 9189254 |
| 3612 | 36900.37000.37100.37700.38400.43700.341200 | Tiles/Stone skirting | 5d | 2027-01-17 | 2027-01-22 | 3611 |  | 7 Days Work | 9189264 |
| 3613 | 36900.37000.37100.37700.38400.43700.341300 | Protechtion sheet | 1d | 2027-01-22 | 2027-01-23 | 3612 |  | 7 Days Work | 9189274 |
| 3614 | 36900.37000.37100.37700.38400.43700.341400 | Installation of Temporary Door | 1d | 2027-01-23 | 2027-01-24 | 3613 |  | 7 Days Work | 9189284 |
| 3615 | 36900.37000.37100.37700.38400.43700.341500 | Fixing of window tracks | 5d | 2027-01-24 | 2027-01-29 | 3614 |  | 7 Days Work | 9189294 |
| 3616 | 36900.37000.37100.37700.38400.43700.341600 | Wire Pulling | 7d | 2027-01-29 | 2027-02-05 | 3615 |  | 7 Days Work | 9189304 |
| 3617 | 36900.37000.37100.37700.38400.43700.341700 | Gypsum Remaining | 5d | 2027-02-05 | 2027-02-10 | 3616 |  | 7 Days Work | 9189314 |
| 3618 | 36900.37000.37100.37700.38400.43700.341800 | Fixing of windoow shutter | 5d | 2027-02-10 | 2027-02-15 | 3617 |  | 7 Days Work | 9189324 |
| 3619 | 36900.37000.37100.37700.38400.43700.341900 | Putty Works - walls & ceiling | 15d | 2027-02-15 | 2027-03-02 | 3618 |  | 7 Days Work | 9189334 |
| 3620 | 36900.37000.37100.37700.38400.43700.342000 | False Ceiling- Framing | 10d | 2027-03-02 | 2027-03-12 | 3619 |  | 7 Days Work | 9189344 |
| 3621 | 36900.37000.37100.37700.38400.43700.342100 | Pre Hung Door | 3d | 2027-03-12 | 2027-03-15 | 3620 |  | 7 Days Work | 9189354 |
| 3622 | 36900.37000.37100.37700.38400.43700.342200 | Protechtion sheet | 2d | 2027-03-15 | 2027-03-17 | 3621 |  | 7 Days Work | 9189364 |
| 3623 | 36900.37000.37100.37700.38400.43700.342300 | Skirting near door | 2d | 2027-03-17 | 2027-03-19 | 3622 |  | 7 Days Work | 9189374 |
| 3624 | 36900.37000.37100.37700.38400.43700.342400 | Electrical Switch box fixing | 14d | 2027-03-19 | 2027-04-02 | 3623 |  | 7 Days Work | 9189384 |
| 3625 | 36900.37000.37100.37700.38400.43700.342500 | Fire Fighting painting | 5d | 2027-04-02 | 2027-04-07 | 3624 |  | 7 Days Work | 9189394 |
| 3626 | 36900.37000.37100.37700.38400.43700.342600 | Protection of all flooring, door & window hardware | 5d | 2027-04-07 | 2027-04-12 | 3625 |  | 7 Days Work | 9189404 |
| 3627 | 36900.37000.37100.37700.38400.43700.342700 | 1st coat primer- ceiling 1st & walls | 14d | 2027-04-12 | 2027-04-26 | 3626 |  | 7 Days Work | 9189414 |
| 3628 | 36900.37000.37100.37700.38400.43700.342800 | Wooden Flooring | 5d | 2027-04-26 | 2027-05-01 | 3627 |  | 7 Days Work | 9189424 |
| 3629 | 36900.37000.37100.37700.38400.43700.342900 | Removing of Temporary Railing & installation of Glass Railing | 5d | 2027-04-26 | 2027-05-01 | 3627 |  | 7 Days Work | 9189434 |
| 3630 | 36900.37000.37100.37700.38400.43700.343000 | Tile Grouting | 7d | 2027-04-26 | 2027-05-03 | 3627 |  | 7 Days Work | 9189444 |
| 3631 | 36900.37000.37100.37700.38400.43700.343100 | False Ceiling | 5d | 2027-05-03 | 2027-05-08 | 3630 |  | 7 Days Work | 9189454 |
| 3632 | 36900.37000.37100.37700.38400.43700.343200 | 2nd coat of primer | 10d | 2027-05-08 | 2027-05-18 | 3631 |  | 7 Days Work | 9189464 |
| 3633 | 36900.37000.37100.37700.38400.43700.343300 | Final cutting/polishing of stone flooring | 7d | 2027-05-18 | 2027-05-25 | 3632 |  | 7 Days Work | 9189474 |

| ID | WBS | Task | Duration | Start | Finish | Predecessors | Constraint | Calendar | Unique_Task_ID |
| --- | --- | --- | --- | --- | --- | --- | --- | --- | --- |
| 3634 | 36900.37000.37100.37700.38400.43700.58000 | **Toilet** | 237d | 2026-09-29 | 2027-05-24 |  | start no earlier than 2026-09-29 | 7 Days Work | 9183714 |
| 3635 | 36900.37000.37100.37700.38400.43700.58000.847300 | Toilet_MEP Clearance -1 | 7d | 2026-09-29 | 2026-10-06 | 3598 |  | 7 Days Work | 9195714 |
| 3636 | 36900.37000.37100.37700.38400.43700.58000.847400 | Toilet_Level Marking | 1d | 2026-10-06 | 2026-10-07 | 3635 |  | 7 Days Work | 9195724 |
| 3637 | 36900.37000.37100.37700.38400.43700.58000.847500 | Toilet_Chasing work for Electrical conduit & concealed plumbing | 5d | 2026-10-07 | 2026-10-12 | 3636 |  | 7 Days Work | 9195734 |
| 3638 | 36900.37000.37100.37700.38400.43700.58000.847600 | Toilet_Plumbing work 1st fix | 5d | 2026-10-12 | 2026-10-17 | 3637 |  | 7 Days Work | 9195744 |
| 3639 | 36900.37000.37100.37700.38400.43700.58000.847700 | Toilet_Sleeve/Bore Packing | 5d | 2026-10-17 | 2026-10-22 | 3638 |  | 7 Days Work | 9195754 |
| 3640 | 36900.37000.37100.37700.38400.43700.58000.847800 | Toilet_Waterproofing | 10d | 2026-10-22 | 2026-11-01 | 3639 |  | 7 Days Work | 9195764 |
| 3641 | 36900.37000.37100.37700.38400.43700.58000.847900 | Toilet_Screed | 1d | 2026-11-01 | 2026-11-02 | 3640 |  | 7 Days Work | 9195774 |
| 3642 | 36900.37000.37100.37700.38400.43700.58000.848000 | Toilet_Plumbing 2nd fix | 5d | 2026-11-02 | 2026-11-07 | 3641 |  | 7 Days Work | 9195784 |
| 3643 | 36900.37000.37100.37700.38400.43700.58000.848100 | Toilet_Ledge wall | 5d | 2026-11-07 | 2026-11-12 | 3642 |  | 7 Days Work | 9195794 |
| 3644 | 36900.37000.37100.37700.38400.43700.58000.848200 | Toilet_Cement Plaster | 5d | 2026-11-12 | 2026-11-17 | 3643 |  | 7 Days Work | 9195804 |
| 3645 | 36900.37000.37100.37700.38400.43700.58000.848300 | Toilet_Door Frame | 1d | 2026-11-17 | 2026-11-18 | 3644 |  | 7 Days Work | 9195814 |
| 3646 | 36900.37000.37100.37700.38400.43700.58000.848400 | Toilet_Wash basin & Couter | 3d | 2026-11-18 | 2026-11-21 | 3645 |  | 7 Days Work | 9195824 |
| 3647 | 36900.37000.37100.37700.38400.43700.58000.848500 | Toilet_Wall dado | 20d | 2026-11-21 | 2026-12-11 | 3646 |  | 7 Days Work | 9195834 |
| 3648 | 36900.37000.37100.37700.38400.43700.58000.848600 | Toilet_Granite Work-Ledge wall top | 3d | 2026-12-11 | 2026-12-14 | 3647 |  | 7 Days Work | 9195844 |
| 3649 | 36900.37000.37100.37700.38400.43700.58000.848700 | Toilet_Floor Tilling work | 20d | 2026-12-14 | 2027-01-03 | 3648 |  | 7 Days Work | 9195854 |
| 3650 | 36900.37000.37100.37700.38400.43700.58000.848800 | Toilet_1st row of dado | 5d | 2027-01-03 | 2027-01-08 | 3649 |  | 7 Days Work | 9195864 |
| 3651 | 36900.37000.37100.37700.38400.43700.58000.848900 | Toilet_Window Fixing | 14d | 2027-01-08 | 2027-01-22 | 3650 |  | 7 Days Work | 9195874 |
| 3652 | 36900.37000.37100.37700.38400.43700.58000.849000 | Toilet_Services above False ceiling | 21d | 2027-01-22 | 2027-02-12 | 3651 |  | 7 Days Work | 9195884 |
| 3653 | 36900.37000.37100.37700.38400.43700.58000.849100 | Toilet_False Ceiling framing | 12d | 2027-02-12 | 2027-02-24 | 3652 |  | 7 Days Work | 9195894 |
| 3654 | 36900.37000.37100.37700.38400.43700.58000.849200 | Toilet_Door Frame | 5d | 2027-02-24 | 2027-03-01 | 3653 |  | 7 Days Work | 9195904 |
| 3655 | 36900.37000.37100.37700.38400.43700.58000.849300 | Toilet_Epoxy Tile Grouting | 7d | 2027-04-26 | 2027-05-03 | 3630SS |  | 7 Days Work | 9195914 |
| 3656 | 36900.37000.37100.37700.38400.43700.58000.849400 | Toilet_False ceiling board fixing, CP Sanitary Fixture, Electric Fixture | 21d | 2027-05-03 | 2027-05-24 | 3655 |  | 7 Days Work | 9195924 |
| 3657 | 36900.37000.37100.37700.38400.43800 | **16th Habitable/18th Floor** | 245d | 2026-10-04 | 2027-06-06 |  | start no earlier than 2026-10-04 | 7 Days Work | 9183524 |
| 3658 | 36900.37000.37100.37700.38400.43800.343400 | Post Pour | 7d | 2026-10-04 | 2026-10-11 | 2751FS+15d |  | 7 Days Work | 9189484 |
| 3659 | 36900.37000.37100.37700.38400.43800.343500 | MEP Clearance -1 | 5d | 2026-10-11 | 2026-10-16 | 3658 |  | 7 Days Work | 9189494 |
| 3660 | 36900.37000.37100.37700.38400.43800.343600 | Benchmark | 1d | 2026-10-16 | 2026-10-17 | 3659 |  | 7 Days Work | 9189504 |
| 3661 | 36900.37000.37100.37700.38400.43800.343700 | Temporary Railing | 3d | 2026-10-17 | 2026-10-20 | 3660 |  | 7 Days Work | 9189514 |
| 3662 | 36900.37000.37100.37700.38400.43800.343800 | Blockwork | 10d | 2026-10-20 | 2026-10-30 | 3661 |  | 7 Days Work | 9189524 |
| 3663 | 36900.37000.37100.37700.38400.43800.343900 | MEP Clearance -2 | 10d | 2026-10-30 | 2026-11-09 | 3662 |  | 7 Days Work | 9189534 |
| 3664 | 36900.37000.37100.37700.38400.43800.344000 | Gypsum Plaster | 14d | 2026-11-09 | 2026-11-23 | 3663 |  | 7 Days Work | 9189544 |
| 3665 | 36900.37000.37100.37700.38400.43800.344100 | Kitchen Platform | 3d | 2026-11-23 | 2026-11-26 | 3664 |  | 7 Days Work | 9189554 |
| 3666 | 36900.37000.37100.37700.38400.43800.344200 | Kitchen dado | 7d | 2026-11-26 | 2026-12-03 | 3665 |  | 7 Days Work | 9189564 |
| 3667 | 36900.37000.37100.37700.38400.43800.344300 | Fire Fighting | 5d | 2026-12-03 | 2026-12-08 | 3666 |  | 7 Days Work | 9189574 |
| 3668 | 36900.37000.37100.37700.38400.43800.344400 | Anticapilary | 5d | 2026-12-08 | 2026-12-13 | 3667 |  | 7 Days Work | 9189584 |
| 3669 | 36900.37000.37100.37700.38400.43800.344500 | Stone Laying | 10d | 2027-01-15 | 2027-01-25 | 3709 |  | 7 Days Work | 9189594 |
| 3670 | 36900.37000.37100.37700.38400.43800.344600 | Tiles Laying | 7d | 2027-01-15 | 2027-01-22 | 3709 |  | 7 Days Work | 9189604 |
| 3671 | 36900.37000.37100.37700.38400.43800.344700 | 1st cutting/polishing of stone flooring | 7d | 2027-01-22 | 2027-01-29 | 3670 |  | 7 Days Work | 9189614 |
| 3672 | 36900.37000.37100.37700.38400.43800.344800 | Tiles/Stone skirting | 5d | 2027-01-29 | 2027-02-03 | 3671 |  | 7 Days Work | 9189624 |
| 3673 | 36900.37000.37100.37700.38400.43800.344900 | Protechtion sheet | 1d | 2027-02-03 | 2027-02-04 | 3672 |  | 7 Days Work | 9189634 |
| 3674 | 36900.37000.37100.37700.38400.43800.345000 | Installation of Temporary Door | 1d | 2027-02-04 | 2027-02-05 | 3673 |  | 7 Days Work | 9189644 |
| 3675 | 36900.37000.37100.37700.38400.43800.345100 | Fixing of window tracks | 5d | 2027-02-05 | 2027-02-10 | 3674 |  | 7 Days Work | 9189654 |
| 3676 | 36900.37000.37100.37700.38400.43800.345200 | Wire Pulling | 7d | 2027-02-10 | 2027-02-17 | 3675 |  | 7 Days Work | 9189664 |
| 3677 | 36900.37000.37100.37700.38400.43800.345300 | Gypsum Remaining | 5d | 2027-02-17 | 2027-02-22 | 3676 |  | 7 Days Work | 9189674 |
| 3678 | 36900.37000.37100.37700.38400.43800.345400 | Fixing of windoow shutter | 5d | 2027-02-22 | 2027-02-27 | 3677 |  | 7 Days Work | 9189684 |
| 3679 | 36900.37000.37100.37700.38400.43800.345500 | Putty Works - walls & ceiling | 15d | 2027-02-27 | 2027-03-14 | 3678 |  | 7 Days Work | 9189694 |
| 3680 | 36900.37000.37100.37700.38400.43800.345600 | False Ceiling- Framing | 10d | 2027-03-14 | 2027-03-24 | 3679 |  | 7 Days Work | 9189704 |
| 3681 | 36900.37000.37100.37700.38400.43800.345700 | Pre Hung Door | 3d | 2027-03-24 | 2027-03-27 | 3680 |  | 7 Days Work | 9189714 |
| 3682 | 36900.37000.37100.37700.38400.43800.345800 | Protechtion sheet | 2d | 2027-03-27 | 2027-03-29 | 3681 |  | 7 Days Work | 9189724 |
| 3683 | 36900.37000.37100.37700.38400.43800.345900 | Skirting near door | 2d | 2027-03-29 | 2027-03-31 | 3682 |  | 7 Days Work | 9189734 |
| 3684 | 36900.37000.37100.37700.38400.43800.346000 | Electrical Switch box fixing | 14d | 2027-03-31 | 2027-04-14 | 3683 |  | 7 Days Work | 9189744 |
| 3685 | 36900.37000.37100.37700.38400.43800.346100 | Fire Fighting painting | 5d | 2027-04-14 | 2027-04-19 | 3684 |  | 7 Days Work | 9189754 |
| 3686 | 36900.37000.37100.37700.38400.43800.346200 | Protection of all flooring, door & window hardware | 5d | 2027-04-19 | 2027-04-24 | 3685 |  | 7 Days Work | 9189764 |
| 3687 | 36900.37000.37100.37700.38400.43800.346300 | 1st coat primer- ceiling 1st & walls | 14d | 2027-04-24 | 2027-05-08 | 3686 |  | 7 Days Work | 9189774 |
| 3688 | 36900.37000.37100.37700.38400.43800.346400 | Wooden Flooring | 5d | 2027-05-08 | 2027-05-13 | 3687 |  | 7 Days Work | 9189784 |
| 3689 | 36900.37000.37100.37700.38400.43800.346500 | Removing of Temporary Railing & installation of Glass Railing | 5d | 2027-05-08 | 2027-05-13 | 3687 |  | 7 Days Work | 9189794 |
| 3690 | 36900.37000.37100.37700.38400.43800.346600 | Tile Grouting | 7d | 2027-05-08 | 2027-05-15 | 3687 |  | 7 Days Work | 9189804 |
| 3691 | 36900.37000.37100.37700.38400.43800.346700 | False Ceiling | 5d | 2027-05-15 | 2027-05-20 | 3690 |  | 7 Days Work | 9189814 |
| 3692 | 36900.37000.37100.37700.38400.43800.346800 | 2nd coat of primer | 10d | 2027-05-20 | 2027-05-30 | 3691 |  | 7 Days Work | 9189824 |
| 3693 | 36900.37000.37100.37700.38400.43800.346900 | Final cutting/polishing of stone flooring | 7d | 2027-05-30 | 2027-06-06 | 3692 |  | 7 Days Work | 9189834 |

| ID | WBS | Task | Duration | Start | Finish | Predecessors | Constraint | Calendar | Unique_Task_ID |
| --- | --- | --- | --- | --- | --- | --- | --- | --- | --- |
| 3694 | 36900.37000.37100.37700.38400.43800.58100 | **Toilet** | 237d | 2026-10-11 | 2027-06-05 |  | start no earlier than 2026-10-11 | 7 Days Work | 9183724 |
| 3695 | 36900.37000.37100.37700.38400.43800.58100.849500 | Toilet_MEP Clearance -1 | 7d | 2026-10-11 | 2026-10-18 | 3658 |  | 7 Days Work | 9195934 |
| 3696 | 36900.37000.37100.37700.38400.43800.58100.849600 | Toilet_Level Marking | 1d | 2026-10-18 | 2026-10-19 | 3695 |  | 7 Days Work | 9195944 |
| 3697 | 36900.37000.37100.37700.38400.43800.58100.849700 | Toilet_Chasing work for Electrical conduit & concealed plumbing | 5d | 2026-10-19 | 2026-10-24 | 3696 |  | 7 Days Work | 9195954 |
| 3698 | 36900.37000.37100.37700.38400.43800.58100.849800 | Toilet_Plumbing work 1st fix | 5d | 2026-10-24 | 2026-10-29 | 3697 |  | 7 Days Work | 9195964 |
| 3699 | 36900.37000.37100.37700.38400.43800.58100.849900 | Toilet_Sleeve/Bore Packing | 5d | 2026-10-29 | 2026-11-03 | 3698 |  | 7 Days Work | 9195974 |
| 3700 | 36900.37000.37100.37700.38400.43800.58100.850000 | Toilet_Waterproofing | 10d | 2026-11-03 | 2026-11-13 | 3699 |  | 7 Days Work | 9195984 |
| 3701 | 36900.37000.37100.37700.38400.43800.58100.850100 | Toilet_Screed | 1d | 2026-11-13 | 2026-11-14 | 3700 |  | 7 Days Work | 9195994 |
| 3702 | 36900.37000.37100.37700.38400.43800.58100.850200 | Toilet_Plumbing 2nd fix | 5d | 2026-11-14 | 2026-11-19 | 3701 |  | 7 Days Work | 9196004 |
| 3703 | 36900.37000.37100.37700.38400.43800.58100.850300 | Toilet_Ledge wall | 5d | 2026-11-19 | 2026-11-24 | 3702 |  | 7 Days Work | 9196014 |
| 3704 | 36900.37000.37100.37700.38400.43800.58100.850400 | Toilet_Cement Plaster | 5d | 2026-11-24 | 2026-11-29 | 3703 |  | 7 Days Work | 9196024 |
| 3705 | 36900.37000.37100.37700.38400.43800.58100.850500 | Toilet_Door Frame | 1d | 2026-11-29 | 2026-11-30 | 3704 |  | 7 Days Work | 9196034 |
| 3706 | 36900.37000.37100.37700.38400.43800.58100.850600 | Toilet_Wash basin & Couter | 3d | 2026-11-30 | 2026-12-03 | 3705 |  | 7 Days Work | 9196044 |
| 3707 | 36900.37000.37100.37700.38400.43800.58100.850700 | Toilet_Wall dado | 20d | 2026-12-03 | 2026-12-23 | 3706 |  | 7 Days Work | 9196054 |
| 3708 | 36900.37000.37100.37700.38400.43800.58100.850800 | Toilet_Granite Work-Ledge wall top | 3d | 2026-12-23 | 2026-12-26 | 3707 |  | 7 Days Work | 9196064 |
| 3709 | 36900.37000.37100.37700.38400.43800.58100.850900 | Toilet_Floor Tilling work | 20d | 2026-12-26 | 2027-01-15 | 3708 |  | 7 Days Work | 9196074 |
| 3710 | 36900.37000.37100.37700.38400.43800.58100.851000 | Toilet_1st row of dado | 5d | 2027-01-15 | 2027-01-20 | 3709 |  | 7 Days Work | 9196084 |
| 3711 | 36900.37000.37100.37700.38400.43800.58100.851100 | Toilet_Window Fixing | 14d | 2027-01-20 | 2027-02-03 | 3710 |  | 7 Days Work | 9196094 |
| 3712 | 36900.37000.37100.37700.38400.43800.58100.851200 | Toilet_Services above False ceiling | 21d | 2027-02-03 | 2027-02-24 | 3711 |  | 7 Days Work | 9196104 |
| 3713 | 36900.37000.37100.37700.38400.43800.58100.851300 | Toilet_False Ceiling framing | 12d | 2027-02-24 | 2027-03-08 | 3712 |  | 7 Days Work | 9196114 |
| 3714 | 36900.37000.37100.37700.38400.43800.58100.851400 | Toilet_Door Frame | 5d | 2027-03-08 | 2027-03-13 | 3713 |  | 7 Days Work | 9196124 |
| 3715 | 36900.37000.37100.37700.38400.43800.58100.851500 | Toilet_Epoxy Tile Grouting | 7d | 2027-05-08 | 2027-05-15 | 3690SS |  | 7 Days Work | 9196134 |
| 3716 | 36900.37000.37100.37700.38400.43800.58100.851600 | Toilet_False ceiling board fixing, CP Sanitary Fixture, Electric Fixture | 21d | 2027-05-15 | 2027-06-05 | 3715 |  | 7 Days Work | 9196144 |
| 3717 | 36900.37000.37100.37700.38400.43900 | **17th Habitable/19th Floor** | 245d | 2026-10-13 | 2027-06-15 |  | start no earlier than 2026-10-13 | 7 Days Work | 9183534 |
| 3718 | 36900.37000.37100.37700.38400.43900.347000 | Post Pour | 7d | 2026-10-13 | 2026-10-20 | 2752FS+15d |  | 7 Days Work | 9189844 |
| 3719 | 36900.37000.37100.37700.38400.43900.347100 | MEP Clearance -1 | 5d | 2026-10-20 | 2026-10-25 | 3718 |  | 7 Days Work | 9189854 |
| 3720 | 36900.37000.37100.37700.38400.43900.347200 | Benchmark | 1d | 2026-10-25 | 2026-10-26 | 3719 |  | 7 Days Work | 9189864 |
| 3721 | 36900.37000.37100.37700.38400.43900.347300 | Temporary Railing | 3d | 2026-10-26 | 2026-10-29 | 3720 |  | 7 Days Work | 9189874 |
| 3722 | 36900.37000.37100.37700.38400.43900.347400 | Blockwork | 10d | 2026-10-29 | 2026-11-08 | 3721 |  | 7 Days Work | 9189884 |
| 3723 | 36900.37000.37100.37700.38400.43900.347500 | MEP Clearance -2 | 10d | 2026-11-08 | 2026-11-18 | 3722 |  | 7 Days Work | 9189894 |
| 3724 | 36900.37000.37100.37700.38400.43900.347600 | Gypsum Plaster | 14d | 2026-11-18 | 2026-12-02 | 3723 |  | 7 Days Work | 9189904 |
| 3725 | 36900.37000.37100.37700.38400.43900.347700 | Kitchen Platform | 3d | 2026-12-02 | 2026-12-05 | 3724 |  | 7 Days Work | 9189914 |
| 3726 | 36900.37000.37100.37700.38400.43900.347800 | Kitchen dado | 7d | 2026-12-05 | 2026-12-12 | 3725 |  | 7 Days Work | 9189924 |
| 3727 | 36900.37000.37100.37700.38400.43900.347900 | Fire Fighting | 5d | 2026-12-12 | 2026-12-17 | 3726 |  | 7 Days Work | 9189934 |
| 3728 | 36900.37000.37100.37700.38400.43900.348000 | Anticapilary | 5d | 2026-12-17 | 2026-12-22 | 3727 |  | 7 Days Work | 9189944 |
| 3729 | 36900.37000.37100.37700.38400.43900.348100 | Stone Laying | 10d | 2027-01-24 | 2027-02-03 | 3769 |  | 7 Days Work | 9189954 |
| 3730 | 36900.37000.37100.37700.38400.43900.348200 | Tiles Laying | 7d | 2027-01-24 | 2027-01-31 | 3769 |  | 7 Days Work | 9189964 |
| 3731 | 36900.37000.37100.37700.38400.43900.348300 | 1st cutting/polishing of stone flooring | 7d | 2027-01-31 | 2027-02-07 | 3730 |  | 7 Days Work | 9189974 |
| 3732 | 36900.37000.37100.37700.38400.43900.348400 | Tiles/Stone skirting | 5d | 2027-02-07 | 2027-02-12 | 3731 |  | 7 Days Work | 9189984 |
| 3733 | 36900.37000.37100.37700.38400.43900.348500 | Protechtion sheet | 1d | 2027-02-12 | 2027-02-13 | 3732 |  | 7 Days Work | 9189994 |
| 3734 | 36900.37000.37100.37700.38400.43900.348600 | Installation of Temporary Door | 1d | 2027-02-13 | 2027-02-14 | 3733 |  | 7 Days Work | 9190004 |
| 3735 | 36900.37000.37100.37700.38400.43900.348700 | Fixing of window tracks | 5d | 2027-02-14 | 2027-02-19 | 3734 |  | 7 Days Work | 9190014 |
| 3736 | 36900.37000.37100.37700.38400.43900.348800 | Wire Pulling | 7d | 2027-02-19 | 2027-02-26 | 3735 |  | 7 Days Work | 9190024 |
| 3737 | 36900.37000.37100.37700.38400.43900.348900 | Gypsum Remaining | 5d | 2027-02-26 | 2027-03-03 | 3736 |  | 7 Days Work | 9190034 |
| 3738 | 36900.37000.37100.37700.38400.43900.349000 | Fixing of windoow shutter | 5d | 2027-03-03 | 2027-03-08 | 3737 |  | 7 Days Work | 9190044 |
| 3739 | 36900.37000.37100.37700.38400.43900.349100 | Putty Works - walls & ceiling | 15d | 2027-03-08 | 2027-03-23 | 3738 |  | 7 Days Work | 9190054 |
| 3740 | 36900.37000.37100.37700.38400.43900.349200 | False Ceiling- Framing | 10d | 2027-03-23 | 2027-04-02 | 3739 |  | 7 Days Work | 9190064 |
| 3741 | 36900.37000.37100.37700.38400.43900.349300 | Pre Hung Door | 3d | 2027-04-02 | 2027-04-05 | 3740 |  | 7 Days Work | 9190074 |
| 3742 | 36900.37000.37100.37700.38400.43900.349400 | Protechtion sheet | 2d | 2027-04-05 | 2027-04-07 | 3741 |  | 7 Days Work | 9190084 |
| 3743 | 36900.37000.37100.37700.38400.43900.349500 | Skirting near door | 2d | 2027-04-07 | 2027-04-09 | 3742 |  | 7 Days Work | 9190094 |
| 3744 | 36900.37000.37100.37700.38400.43900.349600 | Electrical Switch box fixing | 14d | 2027-04-09 | 2027-04-23 | 3743 |  | 7 Days Work | 9190104 |
| 3745 | 36900.37000.37100.37700.38400.43900.349700 | Fire Fighting painting | 5d | 2027-04-23 | 2027-04-28 | 3744 |  | 7 Days Work | 9190114 |
| 3746 | 36900.37000.37100.37700.38400.43900.349800 | Protection of all flooring, door & window hardware | 5d | 2027-04-28 | 2027-05-03 | 3745 |  | 7 Days Work | 9190124 |
| 3747 | 36900.37000.37100.37700.38400.43900.349900 | 1st coat primer- ceiling 1st & walls | 14d | 2027-05-03 | 2027-05-17 | 3746 |  | 7 Days Work | 9190134 |
| 3748 | 36900.37000.37100.37700.38400.43900.350000 | Wooden Flooring | 5d | 2027-05-17 | 2027-05-22 | 3747 |  | 7 Days Work | 9190144 |
| 3749 | 36900.37000.37100.37700.38400.43900.350100 | Removing of Temporary Railing & installation of Glass Railing | 5d | 2027-05-17 | 2027-05-22 | 3747 |  | 7 Days Work | 9190154 |
| 3750 | 36900.37000.37100.37700.38400.43900.350200 | Tile Grouting | 7d | 2027-05-17 | 2027-05-24 | 3747 |  | 7 Days Work | 9190164 |
| 3751 | 36900.37000.37100.37700.38400.43900.350300 | False Ceiling | 5d | 2027-05-24 | 2027-05-29 | 3750 |  | 7 Days Work | 9190174 |
| 3752 | 36900.37000.37100.37700.38400.43900.350400 | 2nd coat of primer | 10d | 2027-05-29 | 2027-06-08 | 3751 |  | 7 Days Work | 9190184 |
| 3753 | 36900.37000.37100.37700.38400.43900.350500 | Final cutting/polishing of stone flooring | 7d | 2027-06-08 | 2027-06-15 | 3752 |  | 7 Days Work | 9190194 |

| ID | WBS | Task | Duration | Start | Finish | Predecessors | Constraint | Calendar | Unique_Task_ID |
| --- | --- | --- | --- | --- | --- | --- | --- | --- | --- |
| 3754 | 36900.37000.37100.37700.38400.43900.58200 | **Toilet** | 237d | 2026-10-20 | 2027-06-14 |  | start no earlier than 2026-10-20 | 7 Days Work | 9183734 |
| 3755 | 36900.37000.37100.37700.38400.43900.58200.851700 | Toilet_MEP Clearance -1 | 7d | 2026-10-20 | 2026-10-27 | 3718 |  | 7 Days Work | 9196154 |
| 3756 | 36900.37000.37100.37700.38400.43900.58200.851800 | Toilet_Level Marking | 1d | 2026-10-27 | 2026-10-28 | 3755 |  | 7 Days Work | 9196164 |
| 3757 | 36900.37000.37100.37700.38400.43900.58200.851900 | Toilet_Chasing work for Electrical conduit & concealed plumbing | 5d | 2026-10-28 | 2026-11-02 | 3756 |  | 7 Days Work | 9196174 |
| 3758 | 36900.37000.37100.37700.38400.43900.58200.852000 | Toilet_Plumbing work 1st fix | 5d | 2026-11-02 | 2026-11-07 | 3757 |  | 7 Days Work | 9196184 |
| 3759 | 36900.37000.37100.37700.38400.43900.58200.852100 | Toilet_Sleeve/Bore Packing | 5d | 2026-11-07 | 2026-11-12 | 3758 |  | 7 Days Work | 9196194 |
| 3760 | 36900.37000.37100.37700.38400.43900.58200.852200 | Toilet_Waterproofing | 10d | 2026-11-12 | 2026-11-22 | 3759 |  | 7 Days Work | 9196204 |
| 3761 | 36900.37000.37100.37700.38400.43900.58200.852300 | Toilet_Screed | 1d | 2026-11-22 | 2026-11-23 | 3760 |  | 7 Days Work | 9196214 |
| 3762 | 36900.37000.37100.37700.38400.43900.58200.852400 | Toilet_Plumbing 2nd fix | 5d | 2026-11-23 | 2026-11-28 | 3761 |  | 7 Days Work | 9196224 |
| 3763 | 36900.37000.37100.37700.38400.43900.58200.852500 | Toilet_Ledge wall | 5d | 2026-11-28 | 2026-12-03 | 3762 |  | 7 Days Work | 9196234 |
| 3764 | 36900.37000.37100.37700.38400.43900.58200.852600 | Toilet_Cement Plaster | 5d | 2026-12-03 | 2026-12-08 | 3763 |  | 7 Days Work | 9196244 |
| 3765 | 36900.37000.37100.37700.38400.43900.58200.852700 | Toilet_Door Frame | 1d | 2026-12-08 | 2026-12-09 | 3764 |  | 7 Days Work | 9196254 |
| 3766 | 36900.37000.37100.37700.38400.43900.58200.852800 | Toilet_Wash basin & Couter | 3d | 2026-12-09 | 2026-12-12 | 3765 |  | 7 Days Work | 9196264 |
| 3767 | 36900.37000.37100.37700.38400.43900.58200.852900 | Toilet_Wall dado | 20d | 2026-12-12 | 2027-01-01 | 3766 |  | 7 Days Work | 9196274 |
| 3768 | 36900.37000.37100.37700.38400.43900.58200.853000 | Toilet_Granite Work-Ledge wall top | 3d | 2027-01-01 | 2027-01-04 | 3767 |  | 7 Days Work | 9196284 |
| 3769 | 36900.37000.37100.37700.38400.43900.58200.853100 | Toilet_Floor Tilling work | 20d | 2027-01-04 | 2027-01-24 | 3768 |  | 7 Days Work | 9196294 |
| 3770 | 36900.37000.37100.37700.38400.43900.58200.853200 | Toilet_1st row of dado | 5d | 2027-01-24 | 2027-01-29 | 3769 |  | 7 Days Work | 9196304 |
| 3771 | 36900.37000.37100.37700.38400.43900.58200.853300 | Toilet_Window Fixing | 14d | 2027-01-29 | 2027-02-12 | 3770 |  | 7 Days Work | 9196314 |
| 3772 | 36900.37000.37100.37700.38400.43900.58200.853400 | Toilet_Services above False ceiling | 21d | 2027-02-12 | 2027-03-05 | 3771 |  | 7 Days Work | 9196324 |
| 3773 | 36900.37000.37100.37700.38400.43900.58200.853500 | Toilet_False Ceiling framing | 12d | 2027-03-05 | 2027-03-17 | 3772 |  | 7 Days Work | 9196334 |
| 3774 | 36900.37000.37100.37700.38400.43900.58200.853600 | Toilet_Door Frame | 5d | 2027-03-17 | 2027-03-22 | 3773 |  | 7 Days Work | 9196344 |
| 3775 | 36900.37000.37100.37700.38400.43900.58200.853700 | Toilet_Epoxy Tile Grouting | 7d | 2027-05-17 | 2027-05-24 | 3750SS |  | 7 Days Work | 9196354 |
| 3776 | 36900.37000.37100.37700.38400.43900.58200.853800 | Toilet_False ceiling board fixing, CP Sanitary Fixture, Electric Fixture | 21d | 2027-05-24 | 2027-06-14 | 3775 |  | 7 Days Work | 9196364 |
| 3777 | 36900.37000.37100.37700.38400.44000 | **18th Habitable/20th Floor** | 245d | 2026-10-22 | 2027-06-24 |  | start no earlier than 2026-10-22 | 7 Days Work | 9183544 |
| 3778 | 36900.37000.37100.37700.38400.44000.350600 | Post Pour | 7d | 2026-10-22 | 2026-10-29 | 2753FS+15d |  | 7 Days Work | 9190204 |
| 3779 | 36900.37000.37100.37700.38400.44000.350700 | MEP Clearance -1 | 5d | 2026-10-29 | 2026-11-03 | 3778 |  | 7 Days Work | 9190214 |
| 3780 | 36900.37000.37100.37700.38400.44000.350800 | Benchmark | 1d | 2026-11-03 | 2026-11-04 | 3779 |  | 7 Days Work | 9190224 |
| 3781 | 36900.37000.37100.37700.38400.44000.350900 | Temporary Railing | 3d | 2026-11-04 | 2026-11-07 | 3780 |  | 7 Days Work | 9190234 |
| 3782 | 36900.37000.37100.37700.38400.44000.351000 | Blockwork | 10d | 2026-11-07 | 2026-11-17 | 3781 |  | 7 Days Work | 9190244 |
| 3783 | 36900.37000.37100.37700.38400.44000.351100 | MEP Clearance -2 | 10d | 2026-11-17 | 2026-11-27 | 3782 |  | 7 Days Work | 9190254 |
| 3784 | 36900.37000.37100.37700.38400.44000.351200 | Gypsum Plaster | 14d | 2026-11-27 | 2026-12-11 | 3783 |  | 7 Days Work | 9190264 |
| 3785 | 36900.37000.37100.37700.38400.44000.351300 | Kitchen Platform | 3d | 2026-12-11 | 2026-12-14 | 3784 |  | 7 Days Work | 9190274 |
| 3786 | 36900.37000.37100.37700.38400.44000.351400 | Kitchen dado | 7d | 2026-12-14 | 2026-12-21 | 3785 |  | 7 Days Work | 9190284 |
| 3787 | 36900.37000.37100.37700.38400.44000.351500 | Fire Fighting | 5d | 2026-12-21 | 2026-12-26 | 3786 |  | 7 Days Work | 9190294 |
| 3788 | 36900.37000.37100.37700.38400.44000.351600 | Anticapilary | 5d | 2026-12-26 | 2026-12-31 | 3787 |  | 7 Days Work | 9190304 |
| 3789 | 36900.37000.37100.37700.38400.44000.351700 | Stone Laying | 10d | 2027-02-02 | 2027-02-12 | 3829 |  | 7 Days Work | 9190314 |
| 3790 | 36900.37000.37100.37700.38400.44000.351800 | Tiles Laying | 7d | 2027-02-02 | 2027-02-09 | 3829 |  | 7 Days Work | 9190324 |
| 3791 | 36900.37000.37100.37700.38400.44000.351900 | 1st cutting/polishing of stone flooring | 7d | 2027-02-09 | 2027-02-16 | 3790 |  | 7 Days Work | 9190334 |
| 3792 | 36900.37000.37100.37700.38400.44000.352000 | Tiles/Stone skirting | 5d | 2027-02-16 | 2027-02-21 | 3791 |  | 7 Days Work | 9190344 |
| 3793 | 36900.37000.37100.37700.38400.44000.352100 | Protechtion sheet | 1d | 2027-02-21 | 2027-02-22 | 3792 |  | 7 Days Work | 9190354 |
| 3794 | 36900.37000.37100.37700.38400.44000.352200 | Installation of Temporary Door | 1d | 2027-02-22 | 2027-02-23 | 3793 |  | 7 Days Work | 9190364 |
| 3795 | 36900.37000.37100.37700.38400.44000.352300 | Fixing of window tracks | 5d | 2027-02-23 | 2027-02-28 | 3794 |  | 7 Days Work | 9190374 |
| 3796 | 36900.37000.37100.37700.38400.44000.352400 | Wire Pulling | 7d | 2027-02-28 | 2027-03-07 | 3795 |  | 7 Days Work | 9190384 |
| 3797 | 36900.37000.37100.37700.38400.44000.352500 | Gypsum Remaining | 5d | 2027-03-07 | 2027-03-12 | 3796 |  | 7 Days Work | 9190394 |
| 3798 | 36900.37000.37100.37700.38400.44000.352600 | Fixing of windoow shutter | 5d | 2027-03-12 | 2027-03-17 | 3797 |  | 7 Days Work | 9190404 |
| 3799 | 36900.37000.37100.37700.38400.44000.352700 | Putty Works - walls & ceiling | 15d | 2027-03-17 | 2027-04-01 | 3798 |  | 7 Days Work | 9190414 |
| 3800 | 36900.37000.37100.37700.38400.44000.352800 | False Ceiling- Framing | 10d | 2027-04-01 | 2027-04-11 | 3799 |  | 7 Days Work | 9190424 |
| 3801 | 36900.37000.37100.37700.38400.44000.352900 | Pre Hung Door | 3d | 2027-04-11 | 2027-04-14 | 3800 |  | 7 Days Work | 9190434 |
| 3802 | 36900.37000.37100.37700.38400.44000.353000 | Protechtion sheet | 2d | 2027-04-14 | 2027-04-16 | 3801 |  | 7 Days Work | 9190444 |
| 3803 | 36900.37000.37100.37700.38400.44000.353100 | Skirting near door | 2d | 2027-04-16 | 2027-04-18 | 3802 |  | 7 Days Work | 9190454 |
| 3804 | 36900.37000.37100.37700.38400.44000.353200 | Electrical Switch box fixing | 14d | 2027-04-18 | 2027-05-02 | 3803 |  | 7 Days Work | 9190464 |
| 3805 | 36900.37000.37100.37700.38400.44000.353300 | Fire Fighting painting | 5d | 2027-05-02 | 2027-05-07 | 3804 |  | 7 Days Work | 9190474 |
| 3806 | 36900.37000.37100.37700.38400.44000.353400 | Protection of all flooring, door & window hardware | 5d | 2027-05-07 | 2027-05-12 | 3805 |  | 7 Days Work | 9190484 |
| 3807 | 36900.37000.37100.37700.38400.44000.353500 | 1st coat primer- ceiling 1st & walls | 14d | 2027-05-12 | 2027-05-26 | 3806 |  | 7 Days Work | 9190494 |
| 3808 | 36900.37000.37100.37700.38400.44000.353600 | Wooden Flooring | 5d | 2027-05-26 | 2027-05-31 | 3807 |  | 7 Days Work | 9190504 |
| 3809 | 36900.37000.37100.37700.38400.44000.353700 | Removing of Temporary Railing & installation of Glass Railing | 5d | 2027-05-26 | 2027-05-31 | 3807 |  | 7 Days Work | 9190514 |
| 3810 | 36900.37000.37100.37700.38400.44000.353800 | Tile Grouting | 7d | 2027-05-26 | 2027-06-02 | 3807 |  | 7 Days Work | 9190524 |
| 3811 | 36900.37000.37100.37700.38400.44000.353900 | False Ceiling | 5d | 2027-06-02 | 2027-06-07 | 3810 |  | 7 Days Work | 9190534 |
| 3812 | 36900.37000.37100.37700.38400.44000.354000 | 2nd coat of primer | 10d | 2027-06-07 | 2027-06-17 | 3811 |  | 7 Days Work | 9190544 |
| 3813 | 36900.37000.37100.37700.38400.44000.354100 | Final cutting/polishing of stone flooring | 7d | 2027-06-17 | 2027-06-24 | 3812 |  | 7 Days Work | 9190554 |

| ID | WBS | Task | Duration | Start | Finish | Predecessors | Constraint | Calendar | Unique_Task_ID |
| --- | --- | --- | --- | --- | --- | --- | --- | --- | --- |
| 3814 | 36900.37000.37100.37700.38400.44000.58300 | **Toilet** | 237d | 2026-10-29 | 2027-06-23 |  | start no earlier than 2026-10-29 | 7 Days Work | 9183744 |
| 3815 | 36900.37000.37100.37700.38400.44000.58300.853900 | Toilet_MEP Clearance -1 | 7d | 2026-10-29 | 2026-11-05 | 3778 |  | 7 Days Work | 9196374 |
| 3816 | 36900.37000.37100.37700.38400.44000.58300.854000 | Toilet_Level Marking | 1d | 2026-11-05 | 2026-11-06 | 3815 |  | 7 Days Work | 9196384 |
| 3817 | 36900.37000.37100.37700.38400.44000.58300.854100 | Toilet_Chasing work for Electrical conduit & concealed plumbing | 5d | 2026-11-06 | 2026-11-11 | 3816 |  | 7 Days Work | 9196394 |
| 3818 | 36900.37000.37100.37700.38400.44000.58300.854200 | Toilet_Plumbing work 1st fix | 5d | 2026-11-11 | 2026-11-16 | 3817 |  | 7 Days Work | 9196404 |
| 3819 | 36900.37000.37100.37700.38400.44000.58300.854300 | Toilet_Sleeve/Bore Packing | 5d | 2026-11-16 | 2026-11-21 | 3818 |  | 7 Days Work | 9196414 |
| 3820 | 36900.37000.37100.37700.38400.44000.58300.854400 | Toilet_Waterproofing | 10d | 2026-11-21 | 2026-12-01 | 3819 |  | 7 Days Work | 9196424 |
| 3821 | 36900.37000.37100.37700.38400.44000.58300.854500 | Toilet_Screed | 1d | 2026-12-01 | 2026-12-02 | 3820 |  | 7 Days Work | 9196434 |
| 3822 | 36900.37000.37100.37700.38400.44000.58300.854600 | Toilet_Plumbing 2nd fix | 5d | 2026-12-02 | 2026-12-07 | 3821 |  | 7 Days Work | 9196444 |
| 3823 | 36900.37000.37100.37700.38400.44000.58300.854700 | Toilet_Ledge wall | 5d | 2026-12-07 | 2026-12-12 | 3822 |  | 7 Days Work | 9196454 |
| 3824 | 36900.37000.37100.37700.38400.44000.58300.854800 | Toilet_Cement Plaster | 5d | 2026-12-12 | 2026-12-17 | 3823 |  | 7 Days Work | 9196464 |
| 3825 | 36900.37000.37100.37700.38400.44000.58300.854900 | Toilet_Door Frame | 1d | 2026-12-17 | 2026-12-18 | 3824 |  | 7 Days Work | 9196474 |
| 3826 | 36900.37000.37100.37700.38400.44000.58300.855000 | Toilet_Wash basin & Couter | 3d | 2026-12-18 | 2026-12-21 | 3825 |  | 7 Days Work | 9196484 |
| 3827 | 36900.37000.37100.37700.38400.44000.58300.855100 | Toilet_Wall dado | 20d | 2026-12-21 | 2027-01-10 | 3826 |  | 7 Days Work | 9196494 |
| 3828 | 36900.37000.37100.37700.38400.44000.58300.855200 | Toilet_Granite Work-Ledge wall top | 3d | 2027-01-10 | 2027-01-13 | 3827 |  | 7 Days Work | 9196504 |
| 3829 | 36900.37000.37100.37700.38400.44000.58300.855300 | Toilet_Floor Tilling work | 20d | 2027-01-13 | 2027-02-02 | 3828 |  | 7 Days Work | 9196514 |
| 3830 | 36900.37000.37100.37700.38400.44000.58300.855400 | Toilet_1st row of dado | 5d | 2027-02-02 | 2027-02-07 | 3829 |  | 7 Days Work | 9196524 |
| 3831 | 36900.37000.37100.37700.38400.44000.58300.855500 | Toilet_Window Fixing | 14d | 2027-02-07 | 2027-02-21 | 3830 |  | 7 Days Work | 9196534 |
| 3832 | 36900.37000.37100.37700.38400.44000.58300.855600 | Toilet_Services above False ceiling | 21d | 2027-02-21 | 2027-03-14 | 3831 |  | 7 Days Work | 9196544 |
| 3833 | 36900.37000.37100.37700.38400.44000.58300.855700 | Toilet_False Ceiling framing | 12d | 2027-03-14 | 2027-03-26 | 3832 |  | 7 Days Work | 9196554 |
| 3834 | 36900.37000.37100.37700.38400.44000.58300.855800 | Toilet_Door Frame | 5d | 2027-03-26 | 2027-03-31 | 3833 |  | 7 Days Work | 9196564 |
| 3835 | 36900.37000.37100.37700.38400.44000.58300.855900 | Toilet_Epoxy Tile Grouting | 7d | 2027-05-26 | 2027-06-02 | 3810SS |  | 7 Days Work | 9196574 |
| 3836 | 36900.37000.37100.37700.38400.44000.58300.856000 | Toilet_False ceiling board fixing, CP Sanitary Fixture, Electric Fixture | 21d | 2027-06-02 | 2027-06-23 | 3835 |  | 7 Days Work | 9196584 |
| 3837 | 36900.37000.37100.37700.38400.44100 | **19th Habitable/21st Floor** | 245d | 2026-11-03 | 2027-07-06 |  | start no earlier than 2026-11-03 | 7 Days Work | 9183554 |
| 3838 | 36900.37000.37100.37700.38400.44100.354200 | Post Pour | 7d | 2026-11-03 | 2026-11-10 | 2754FS+15d |  | 7 Days Work | 9190564 |
| 3839 | 36900.37000.37100.37700.38400.44100.354300 | MEP Clearance -1 | 5d | 2026-11-10 | 2026-11-15 | 3838 |  | 7 Days Work | 9190574 |
| 3840 | 36900.37000.37100.37700.38400.44100.354400 | Benchmark | 1d | 2026-11-15 | 2026-11-16 | 3839 |  | 7 Days Work | 9190584 |
| 3841 | 36900.37000.37100.37700.38400.44100.354500 | Temporary Railing | 3d | 2026-11-16 | 2026-11-19 | 3840 |  | 7 Days Work | 9190594 |
| 3842 | 36900.37000.37100.37700.38400.44100.354600 | Blockwork | 10d | 2026-11-19 | 2026-11-29 | 3841 |  | 7 Days Work | 9190604 |
| 3843 | 36900.37000.37100.37700.38400.44100.354700 | MEP Clearance -2 | 10d | 2026-11-29 | 2026-12-09 | 3842 |  | 7 Days Work | 9190614 |
| 3844 | 36900.37000.37100.37700.38400.44100.354800 | Gypsum Plaster | 14d | 2026-12-09 | 2026-12-23 | 3843 |  | 7 Days Work | 9190624 |
| 3845 | 36900.37000.37100.37700.38400.44100.354900 | Kitchen Platform | 3d | 2026-12-23 | 2026-12-26 | 3844 |  | 7 Days Work | 9190634 |
| 3846 | 36900.37000.37100.37700.38400.44100.355000 | Kitchen dado | 7d | 2026-12-26 | 2027-01-02 | 3845 |  | 7 Days Work | 9190644 |
| 3847 | 36900.37000.37100.37700.38400.44100.355100 | Fire Fighting | 5d | 2027-01-02 | 2027-01-07 | 3846 |  | 7 Days Work | 9190654 |
| 3848 | 36900.37000.37100.37700.38400.44100.355200 | Anticapilary | 5d | 2027-01-07 | 2027-01-12 | 3847 |  | 7 Days Work | 9190664 |
| 3849 | 36900.37000.37100.37700.38400.44100.355300 | Stone Laying | 10d | 2027-02-14 | 2027-02-24 | 3889 |  | 7 Days Work | 9190674 |
| 3850 | 36900.37000.37100.37700.38400.44100.355400 | Tiles Laying | 7d | 2027-02-14 | 2027-02-21 | 3889 |  | 7 Days Work | 9190684 |
| 3851 | 36900.37000.37100.37700.38400.44100.355500 | 1st cutting/polishing of stone flooring | 7d | 2027-02-21 | 2027-02-28 | 3850 |  | 7 Days Work | 9190694 |
| 3852 | 36900.37000.37100.37700.38400.44100.355600 | Tiles/Stone skirting | 5d | 2027-02-28 | 2027-03-05 | 3851 |  | 7 Days Work | 9190704 |
| 3853 | 36900.37000.37100.37700.38400.44100.355700 | Protechtion sheet | 1d | 2027-03-05 | 2027-03-06 | 3852 |  | 7 Days Work | 9190714 |
| 3854 | 36900.37000.37100.37700.38400.44100.355800 | Installation of Temporary Door | 1d | 2027-03-06 | 2027-03-07 | 3853 |  | 7 Days Work | 9190724 |
| 3855 | 36900.37000.37100.37700.38400.44100.355900 | Fixing of window tracks | 5d | 2027-03-07 | 2027-03-12 | 3854 |  | 7 Days Work | 9190734 |
| 3856 | 36900.37000.37100.37700.38400.44100.356000 | Wire Pulling | 7d | 2027-03-12 | 2027-03-19 | 3855 |  | 7 Days Work | 9190744 |
| 3857 | 36900.37000.37100.37700.38400.44100.356100 | Gypsum Remaining | 5d | 2027-03-19 | 2027-03-24 | 3856 |  | 7 Days Work | 9190754 |
| 3858 | 36900.37000.37100.37700.38400.44100.356200 | Fixing of windoow shutter | 5d | 2027-03-24 | 2027-03-29 | 3857 |  | 7 Days Work | 9190764 |
| 3859 | 36900.37000.37100.37700.38400.44100.356300 | Putty Works - walls & ceiling | 15d | 2027-03-29 | 2027-04-13 | 3858 |  | 7 Days Work | 9190774 |
| 3860 | 36900.37000.37100.37700.38400.44100.356400 | False Ceiling- Framing | 10d | 2027-04-13 | 2027-04-23 | 3859 |  | 7 Days Work | 9190784 |
| 3861 | 36900.37000.37100.37700.38400.44100.356500 | Pre Hung Door | 3d | 2027-04-23 | 2027-04-26 | 3860 |  | 7 Days Work | 9190794 |
| 3862 | 36900.37000.37100.37700.38400.44100.356600 | Protechtion sheet | 2d | 2027-04-26 | 2027-04-28 | 3861 |  | 7 Days Work | 9190804 |
| 3863 | 36900.37000.37100.37700.38400.44100.356700 | Skirting near door | 2d | 2027-04-28 | 2027-04-30 | 3862 |  | 7 Days Work | 9190814 |
| 3864 | 36900.37000.37100.37700.38400.44100.356800 | Electrical Switch box fixing | 14d | 2027-04-30 | 2027-05-14 | 3863 |  | 7 Days Work | 9190824 |
| 3865 | 36900.37000.37100.37700.38400.44100.356900 | Fire Fighting painting | 5d | 2027-05-14 | 2027-05-19 | 3864 |  | 7 Days Work | 9190834 |
| 3866 | 36900.37000.37100.37700.38400.44100.357000 | Protection of all flooring, door & window hardware | 5d | 2027-05-19 | 2027-05-24 | 3865 |  | 7 Days Work | 9190844 |
| 3867 | 36900.37000.37100.37700.38400.44100.357100 | 1st coat primer- ceiling 1st & walls | 14d | 2027-05-24 | 2027-06-07 | 3866 |  | 7 Days Work | 9190854 |
| 3868 | 36900.37000.37100.37700.38400.44100.357200 | Wooden Flooring | 5d | 2027-06-07 | 2027-06-12 | 3867 |  | 7 Days Work | 9190864 |
| 3869 | 36900.37000.37100.37700.38400.44100.357300 | Removing of Temporary Railing & installation of Glass Railing | 5d | 2027-06-07 | 2027-06-12 | 3867 |  | 7 Days Work | 9190874 |
| 3870 | 36900.37000.37100.37700.38400.44100.357400 | Tile Grouting | 7d | 2027-06-07 | 2027-06-14 | 3867 |  | 7 Days Work | 9190884 |
| 3871 | 36900.37000.37100.37700.38400.44100.357500 | False Ceiling | 5d | 2027-06-14 | 2027-06-19 | 3870 |  | 7 Days Work | 9190894 |
| 3872 | 36900.37000.37100.37700.38400.44100.357600 | 2nd coat of primer | 10d | 2027-06-19 | 2027-06-29 | 3871 |  | 7 Days Work | 9190904 |
| 3873 | 36900.37000.37100.37700.38400.44100.357700 | Final cutting/polishing of stone flooring | 7d | 2027-06-29 | 2027-07-06 | 3872 |  | 7 Days Work | 9190914 |

| ID | WBS | Task | Duration | Start | Finish | Predecessors | Constraint | Calendar | Unique_Task_ID |
| --- | --- | --- | --- | --- | --- | --- | --- | --- | --- |
| 3874 | 36900.37000.37100.37700.38400.44100.58400 | **Toilet** | 237d | 2026-11-10 | 2027-07-05 |  | start no earlier than 2026-11-10 | 7 Days Work | 9183754 |
| 3875 | 36900.37000.37100.37700.38400.44100.58400.856100 | Toilet_MEP Clearance -1 | 7d | 2026-11-10 | 2026-11-17 | 3838 |  | 7 Days Work | 9196594 |
| 3876 | 36900.37000.37100.37700.38400.44100.58400.856200 | Toilet_Level Marking | 1d | 2026-11-17 | 2026-11-18 | 3875 |  | 7 Days Work | 9196604 |
| 3877 | 36900.37000.37100.37700.38400.44100.58400.856300 | Toilet_Chasing work for Electrical conduit & concealed plumbing | 5d | 2026-11-18 | 2026-11-23 | 3876 |  | 7 Days Work | 9196614 |
| 3878 | 36900.37000.37100.37700.38400.44100.58400.856400 | Toilet_Plumbing work 1st fix | 5d | 2026-11-23 | 2026-11-28 | 3877 |  | 7 Days Work | 9196624 |
| 3879 | 36900.37000.37100.37700.38400.44100.58400.856500 | Toilet_Sleeve/Bore Packing | 5d | 2026-11-28 | 2026-12-03 | 3878 |  | 7 Days Work | 9196634 |
| 3880 | 36900.37000.37100.37700.38400.44100.58400.856600 | Toilet_Waterproofing | 10d | 2026-12-03 | 2026-12-13 | 3879 |  | 7 Days Work | 9196644 |
| 3881 | 36900.37000.37100.37700.38400.44100.58400.856700 | Toilet_Screed | 1d | 2026-12-13 | 2026-12-14 | 3880 |  | 7 Days Work | 9196654 |
| 3882 | 36900.37000.37100.37700.38400.44100.58400.856800 | Toilet_Plumbing 2nd fix | 5d | 2026-12-14 | 2026-12-19 | 3881 |  | 7 Days Work | 9196664 |
| 3883 | 36900.37000.37100.37700.38400.44100.58400.856900 | Toilet_Ledge wall | 5d | 2026-12-19 | 2026-12-24 | 3882 |  | 7 Days Work | 9196674 |
| 3884 | 36900.37000.37100.37700.38400.44100.58400.857000 | Toilet_Cement Plaster | 5d | 2026-12-24 | 2026-12-29 | 3883 |  | 7 Days Work | 9196684 |
| 3885 | 36900.37000.37100.37700.38400.44100.58400.857100 | Toilet_Door Frame | 1d | 2026-12-29 | 2026-12-30 | 3884 |  | 7 Days Work | 9196694 |
| 3886 | 36900.37000.37100.37700.38400.44100.58400.857200 | Toilet_Wash basin & Couter | 3d | 2026-12-30 | 2027-01-02 | 3885 |  | 7 Days Work | 9196704 |
| 3887 | 36900.37000.37100.37700.38400.44100.58400.857300 | Toilet_Wall dado | 20d | 2027-01-02 | 2027-01-22 | 3886 |  | 7 Days Work | 9196714 |
| 3888 | 36900.37000.37100.37700.38400.44100.58400.857400 | Toilet_Granite Work-Ledge wall top | 3d | 2027-01-22 | 2027-01-25 | 3887 |  | 7 Days Work | 9196724 |
| 3889 | 36900.37000.37100.37700.38400.44100.58400.857500 | Toilet_Floor Tilling work | 20d | 2027-01-25 | 2027-02-14 | 3888 |  | 7 Days Work | 9196734 |
| 3890 | 36900.37000.37100.37700.38400.44100.58400.857600 | Toilet_1st row of dado | 5d | 2027-02-14 | 2027-02-19 | 3889 |  | 7 Days Work | 9196744 |
| 3891 | 36900.37000.37100.37700.38400.44100.58400.857700 | Toilet_Window Fixing | 14d | 2027-02-19 | 2027-03-05 | 3890 |  | 7 Days Work | 9196754 |
| 3892 | 36900.37000.37100.37700.38400.44100.58400.857800 | Toilet_Services above False ceiling | 21d | 2027-03-05 | 2027-03-26 | 3891 |  | 7 Days Work | 9196764 |
| 3893 | 36900.37000.37100.37700.38400.44100.58400.857900 | Toilet_False Ceiling framing | 12d | 2027-03-26 | 2027-04-07 | 3892 |  | 7 Days Work | 9196774 |
| 3894 | 36900.37000.37100.37700.38400.44100.58400.858000 | Toilet_Door Frame | 5d | 2027-04-07 | 2027-04-12 | 3893 |  | 7 Days Work | 9196784 |
| 3895 | 36900.37000.37100.37700.38400.44100.58400.858100 | Toilet_Epoxy Tile Grouting | 7d | 2027-06-07 | 2027-06-14 | 3870SS |  | 7 Days Work | 9196794 |
| 3896 | 36900.37000.37100.37700.38400.44100.58400.858200 | Toilet_False ceiling board fixing, CP Sanitary Fixture, Electric Fixture | 21d | 2027-06-14 | 2027-07-05 | 3895 |  | 7 Days Work | 9196804 |
| 3897 | 36900.37000.37100.37700.52700 | **Common area Finishing** | 320d | 2027-01-04 | 2027-11-20 |  | start no earlier than 2027-01-04 | 7 Days Work | 9183564 |
| 3898 | 36900.37000.37100.37700.52700.71900 | **1st Habitable/3rd Floor** | 158d | 2027-01-04 | 2027-06-11 |  | start no earlier than 2027-01-04 | 7 Days Work | 9183954 |
| 3899 | 36900.37000.37100.37700.52700.71900.357800 | Side blockwork for lift shafts | 9d | 2027-01-04 | 2027-01-13 | 4094 |  | 7 Days Work | 9190924 |
| 3900 | 36900.37000.37100.37700.52700.71900.357900 | Door Threshold for lifts | 6d | 2027-01-13 | 2027-01-19 | 3899 |  | 7 Days Work | 9190934 |
| 3901 | 36900.37000.37100.37700.52700.71900.358000 | Granite Cladding | 10d | 2027-01-19 | 2027-01-29 | 3900 |  | 7 Days Work | 9190944 |
| 3902 | 36900.37000.37100.37700.52700.71900.358100 | MEP Services | 60d | 2027-01-29 | 2027-03-30 | 3901 |  | 7 Days Work | 9190954 |
| 3903 | 36900.37000.37100.37700.52700.71900.358200 | Flooring+Skirting | 20d | 2027-03-30 | 2027-04-19 | 3902 |  | 7 Days Work | 9190964 |
| 3904 | 36900.37000.37100.37700.52700.71900.358300 | Wall finishes | 21d | 2027-04-19 | 2027-05-10 | 3903 |  | 7 Days Work | 9190974 |
| 3905 | 36900.37000.37100.37700.52700.71900.358400 | False Ceiling | 10d | 2027-05-10 | 2027-05-20 | 3904 |  | 7 Days Work | 9190984 |
| 3906 | 36900.37000.37100.37700.52700.71900.358500 | Staircase | 15d | 2027-05-20 | 2027-06-04 | 3905 |  | 7 Days Work | 9190994 |
| 3907 | 36900.37000.37100.37700.52700.71900.358600 | Deep Cleaning | 7d | 2027-06-04 | 2027-06-11 | 3906 |  | 7 Days Work | 9191004 |

| ID | WBS | Task | Duration | Start | Finish | Predecessors | Constraint | Calendar | Unique_Task_ID |
| --- | --- | --- | --- | --- | --- | --- | --- | --- | --- |
| 3908 | 36900.37000.37100.37700.52700.72000 | **2nd Habitable/4th Floor** | 158d | 2027-01-13 | 2027-06-20 |  | start no earlier than 2027-01-13 | 7 Days Work | 9183944 |
| 3909 | 36900.37000.37100.37700.52700.72000.358700 | Side blockwork for lift shafts | 9d | 2027-01-13 | 2027-01-22 | 3899 |  | 7 Days Work | 9191014 |
| 3910 | 36900.37000.37100.37700.52700.72000.358800 | Door Threshold for lifts | 6d | 2027-01-22 | 2027-01-28 | 3909 |  | 7 Days Work | 9191024 |
| 3911 | 36900.37000.37100.37700.52700.72000.358900 | Granite Cladding | 10d | 2027-01-28 | 2027-02-07 | 3910 |  | 7 Days Work | 9191034 |
| 3912 | 36900.37000.37100.37700.52700.72000.359000 | MEP Services | 60d | 2027-02-07 | 2027-04-08 | 3911 |  | 7 Days Work | 9191044 |
| 3913 | 36900.37000.37100.37700.52700.72000.359100 | Flooring+Skirting | 20d | 2027-04-08 | 2027-04-28 | 3912 |  | 7 Days Work | 9191054 |
| 3914 | 36900.37000.37100.37700.52700.72000.359200 | Wall finishes | 21d | 2027-04-28 | 2027-05-19 | 3913 |  | 7 Days Work | 9191064 |
| 3915 | 36900.37000.37100.37700.52700.72000.359300 | False Ceiling | 10d | 2027-05-19 | 2027-05-29 | 3914 |  | 7 Days Work | 9191074 |
| 3916 | 36900.37000.37100.37700.52700.72000.359400 | Staircase | 15d | 2027-05-29 | 2027-06-13 | 3915 |  | 7 Days Work | 9191084 |
| 3917 | 36900.37000.37100.37700.52700.72000.359500 | Deep Cleaning | 7d | 2027-06-13 | 2027-06-20 | 3916 |  | 7 Days Work | 9191094 |
| 3918 | 36900.37000.37100.37700.52700.72100 | **3rd Habitable/5th Floor** | 158d | 2027-01-22 | 2027-06-29 |  | start no earlier than 2027-01-22 | 7 Days Work | 9183934 |
| 3919 | 36900.37000.37100.37700.52700.72100.359600 | Side blockwork for lift shafts | 9d | 2027-01-22 | 2027-01-31 | 3909 |  | 7 Days Work | 9191104 |
| 3920 | 36900.37000.37100.37700.52700.72100.359700 | Door Threshold for lifts | 6d | 2027-01-31 | 2027-02-06 | 3919 |  | 7 Days Work | 9191114 |
| 3921 | 36900.37000.37100.37700.52700.72100.359800 | Granite Cladding | 10d | 2027-02-06 | 2027-02-16 | 3920 |  | 7 Days Work | 9191124 |
| 3922 | 36900.37000.37100.37700.52700.72100.359900 | MEP Services | 60d | 2027-02-16 | 2027-04-17 | 3921 |  | 7 Days Work | 9191134 |
| 3923 | 36900.37000.37100.37700.52700.72100.360000 | Flooring+Skirting | 20d | 2027-04-17 | 2027-05-07 | 3922 |  | 7 Days Work | 9191144 |
| 3924 | 36900.37000.37100.37700.52700.72100.360100 | Wall finishes | 21d | 2027-05-07 | 2027-05-28 | 3923 |  | 7 Days Work | 9191154 |
| 3925 | 36900.37000.37100.37700.52700.72100.360200 | False Ceiling | 10d | 2027-05-28 | 2027-06-07 | 3924 |  | 7 Days Work | 9191164 |
| 3926 | 36900.37000.37100.37700.52700.72100.360300 | Staircase | 15d | 2027-06-07 | 2027-06-22 | 3925 |  | 7 Days Work | 9191174 |
| 3927 | 36900.37000.37100.37700.52700.72100.360400 | Deep Cleaning | 7d | 2027-06-22 | 2027-06-29 | 3926 |  | 7 Days Work | 9191184 |
| 3928 | 36900.37000.37100.37700.52700.72200 | **4th Habitable/6th Floor** | 158d | 2027-01-31 | 2027-07-08 |  | start no earlier than 2027-01-31 | 7 Days Work | 9183894 |
| 3929 | 36900.37000.37100.37700.52700.72200.360500 | Side blockwork for lift shafts | 9d | 2027-01-31 | 2027-02-09 | 3919 |  | 7 Days Work | 9191194 |
| 3930 | 36900.37000.37100.37700.52700.72200.360600 | Door Threshold for lifts | 6d | 2027-02-09 | 2027-02-15 | 3929 |  | 7 Days Work | 9191204 |
| 3931 | 36900.37000.37100.37700.52700.72200.360700 | Granite Cladding | 10d | 2027-02-15 | 2027-02-25 | 3930 |  | 7 Days Work | 9191214 |
| 3932 | 36900.37000.37100.37700.52700.72200.360800 | MEP Services | 60d | 2027-02-25 | 2027-04-26 | 3931 |  | 7 Days Work | 9191224 |
| 3933 | 36900.37000.37100.37700.52700.72200.360900 | Flooring+Skirting | 20d | 2027-04-26 | 2027-05-16 | 3932 |  | 7 Days Work | 9191234 |
| 3934 | 36900.37000.37100.37700.52700.72200.361000 | Wall finishes | 21d | 2027-05-16 | 2027-06-06 | 3933 |  | 7 Days Work | 9191244 |
| 3935 | 36900.37000.37100.37700.52700.72200.361100 | False Ceiling | 10d | 2027-06-06 | 2027-06-16 | 3934 |  | 7 Days Work | 9191254 |
| 3936 | 36900.37000.37100.37700.52700.72200.361200 | Staircase | 15d | 2027-06-16 | 2027-07-01 | 3935 |  | 7 Days Work | 9191264 |
| 3937 | 36900.37000.37100.37700.52700.72200.361300 | Deep Cleaning | 7d | 2027-07-01 | 2027-07-08 | 3936 |  | 7 Days Work | 9191274 |

| ID | WBS | Task | Duration | Start | Finish | Predecessors | Constraint | Calendar | Unique_Task_ID |
| --- | --- | --- | --- | --- | --- | --- | --- | --- | --- |
| 3938 | 36900.37000.37100.37700.52700.72300 | **5th Habitable/7th Floor** | 158d | 2027-02-09 | 2027-07-17 |  | start no earlier than 2027-02-09 | 7 Days Work | 9183884 |
| 3939 | 36900.37000.37100.37700.52700.72300.361400 | Side blockwork for lift shafts | 9d | 2027-02-09 | 2027-02-18 | 3929 |  | 7 Days Work | 9191284 |
| 3940 | 36900.37000.37100.37700.52700.72300.361500 | Door Threshold for lifts | 6d | 2027-02-18 | 2027-02-24 | 3939 |  | 7 Days Work | 9191294 |
| 3941 | 36900.37000.37100.37700.52700.72300.361600 | Granite Cladding | 10d | 2027-02-24 | 2027-03-06 | 3940 |  | 7 Days Work | 9191304 |
| 3942 | 36900.37000.37100.37700.52700.72300.361700 | MEP Services | 60d | 2027-03-06 | 2027-05-05 | 3941 |  | 7 Days Work | 9191314 |
| 3943 | 36900.37000.37100.37700.52700.72300.361800 | Flooring+Skirting | 20d | 2027-05-05 | 2027-05-25 | 3942 |  | 7 Days Work | 9191324 |
| 3944 | 36900.37000.37100.37700.52700.72300.361900 | Wall finishes | 21d | 2027-05-25 | 2027-06-15 | 3943 |  | 7 Days Work | 9191334 |
| 3945 | 36900.37000.37100.37700.52700.72300.362000 | False Ceiling | 10d | 2027-06-15 | 2027-06-25 | 3944 |  | 7 Days Work | 9191344 |
| 3946 | 36900.37000.37100.37700.52700.72300.362100 | Staircase | 15d | 2027-06-25 | 2027-07-10 | 3945 |  | 7 Days Work | 9191354 |
| 3947 | 36900.37000.37100.37700.52700.72300.362200 | Deep Cleaning | 7d | 2027-07-10 | 2027-07-17 | 3946 |  | 7 Days Work | 9191364 |
| 3948 | 36900.37000.37100.37700.52700.72400 | **6th Habitable/8th Floor** | 158d | 2027-02-18 | 2027-07-26 |  | start no earlier than 2027-02-18 | 7 Days Work | 9183784 |
| 3949 | 36900.37000.37100.37700.52700.72400.362300 | Side blockwork for lift shafts | 9d | 2027-02-18 | 2027-02-27 | 3939 |  | 7 Days Work | 9191374 |
| 3950 | 36900.37000.37100.37700.52700.72400.362400 | Door Threshold for lifts | 6d | 2027-02-27 | 2027-03-05 | 3949 |  | 7 Days Work | 9191384 |
| 3951 | 36900.37000.37100.37700.52700.72400.362500 | Granite Cladding | 10d | 2027-03-05 | 2027-03-15 | 3950 |  | 7 Days Work | 9191394 |
| 3952 | 36900.37000.37100.37700.52700.72400.362600 | MEP Services | 60d | 2027-03-15 | 2027-05-14 | 3951 |  | 7 Days Work | 9191404 |
| 3953 | 36900.37000.37100.37700.52700.72400.362700 | Flooring+Skirting | 20d | 2027-05-14 | 2027-06-03 | 3952 |  | 7 Days Work | 9191414 |
| 3954 | 36900.37000.37100.37700.52700.72400.362800 | Wall finishes | 21d | 2027-06-03 | 2027-06-24 | 3953 |  | 7 Days Work | 9191424 |
| 3955 | 36900.37000.37100.37700.52700.72400.362900 | False Ceiling | 10d | 2027-06-24 | 2027-07-04 | 3954 |  | 7 Days Work | 9191434 |
| 3956 | 36900.37000.37100.37700.52700.72400.363000 | Staircase | 15d | 2027-07-04 | 2027-07-19 | 3955 |  | 7 Days Work | 9191444 |
| 3957 | 36900.37000.37100.37700.52700.72400.363100 | Deep Cleaning | 7d | 2027-07-19 | 2027-07-26 | 3956 |  | 7 Days Work | 9191454 |
| 3958 | 36900.37000.37100.37700.52700.72500 | **7th Habitable/9th Floor** | 158d | 2027-02-27 | 2027-08-04 |  | start no earlier than 2027-02-27 | 7 Days Work | 9183804 |
| 3959 | 36900.37000.37100.37700.52700.72500.363200 | Side blockwork for lift shafts | 9d | 2027-02-27 | 2027-03-08 | 3949 |  | 7 Days Work | 9191464 |
| 3960 | 36900.37000.37100.37700.52700.72500.363300 | Door Threshold for lifts | 6d | 2027-03-08 | 2027-03-14 | 3959 |  | 7 Days Work | 9191474 |
| 3961 | 36900.37000.37100.37700.52700.72500.363400 | Granite Cladding | 10d | 2027-03-14 | 2027-03-24 | 3960 |  | 7 Days Work | 9191484 |
| 3962 | 36900.37000.37100.37700.52700.72500.363500 | MEP Services | 60d | 2027-03-24 | 2027-05-23 | 3961 |  | 7 Days Work | 9191494 |
| 3963 | 36900.37000.37100.37700.52700.72500.363600 | Flooring+Skirting | 20d | 2027-05-23 | 2027-06-12 | 3962 |  | 7 Days Work | 9191504 |
| 3964 | 36900.37000.37100.37700.52700.72500.363700 | Wall finishes | 21d | 2027-06-12 | 2027-07-03 | 3963 |  | 7 Days Work | 9191514 |
| 3965 | 36900.37000.37100.37700.52700.72500.363800 | False Ceiling | 10d | 2027-07-03 | 2027-07-13 | 3964 |  | 7 Days Work | 9191524 |
| 3966 | 36900.37000.37100.37700.52700.72500.363900 | Staircase | 15d | 2027-07-13 | 2027-07-28 | 3965 |  | 7 Days Work | 9191534 |
| 3967 | 36900.37000.37100.37700.52700.72500.364000 | Deep Cleaning | 7d | 2027-07-28 | 2027-08-04 | 3966 |  | 7 Days Work | 9191544 |

| ID | WBS | Task | Duration | Start | Finish | Predecessors | Constraint | Calendar | Unique_Task_ID |
| --- | --- | --- | --- | --- | --- | --- | --- | --- | --- |
| 3968 | 36900.37000.37100.37700.52700.72600 | **8th Habitable/10th Floor** | 158d | 2027-03-08 | 2027-08-13 |  | start no earlier than 2027-03-08 | 7 Days Work | 9183814 |
| 3969 | 36900.37000.37100.37700.52700.72600.364100 | Side blockwork for lift shafts | 9d | 2027-03-08 | 2027-03-17 | 3959 |  | 7 Days Work | 9191554 |
| 3970 | 36900.37000.37100.37700.52700.72600.364200 | Door Threshold for lifts | 6d | 2027-03-17 | 2027-03-23 | 3969 |  | 7 Days Work | 9191564 |
| 3971 | 36900.37000.37100.37700.52700.72600.364300 | Granite Cladding | 10d | 2027-03-23 | 2027-04-02 | 3970 |  | 7 Days Work | 9191574 |
| 3972 | 36900.37000.37100.37700.52700.72600.364400 | MEP Services | 60d | 2027-04-02 | 2027-06-01 | 3971 |  | 7 Days Work | 9191584 |
| 3973 | 36900.37000.37100.37700.52700.72600.364500 | Flooring+Skirting | 20d | 2027-06-01 | 2027-06-21 | 3972 |  | 7 Days Work | 9191594 |
| 3974 | 36900.37000.37100.37700.52700.72600.364600 | Wall finishes | 21d | 2027-06-21 | 2027-07-12 | 3973 |  | 7 Days Work | 9191604 |
| 3975 | 36900.37000.37100.37700.52700.72600.364700 | False Ceiling | 10d | 2027-07-12 | 2027-07-22 | 3974 |  | 7 Days Work | 9191614 |
| 3976 | 36900.37000.37100.37700.52700.72600.364800 | Staircase | 15d | 2027-07-22 | 2027-08-06 | 3975 |  | 7 Days Work | 9191624 |
| 3977 | 36900.37000.37100.37700.52700.72600.364900 | Deep Cleaning | 7d | 2027-08-06 | 2027-08-13 | 3976 |  | 7 Days Work | 9191634 |
| 3978 | 36900.37000.37100.37700.52700.72700 | **9th Habitable/11th Floor** | 158d | 2027-03-17 | 2027-08-22 |  | start no earlier than 2027-03-17 | 7 Days Work | 9183824 |
| 3979 | 36900.37000.37100.37700.52700.72700.365000 | Side blockwork for lift shafts | 9d | 2027-03-17 | 2027-03-26 | 3969 |  | 7 Days Work | 9191644 |
| 3980 | 36900.37000.37100.37700.52700.72700.365100 | Door Threshold for lifts | 6d | 2027-03-26 | 2027-04-01 | 3979 |  | 7 Days Work | 9191654 |
| 3981 | 36900.37000.37100.37700.52700.72700.365200 | Granite Cladding | 10d | 2027-04-01 | 2027-04-11 | 3980 |  | 7 Days Work | 9191664 |
| 3982 | 36900.37000.37100.37700.52700.72700.365300 | MEP Services | 60d | 2027-04-11 | 2027-06-10 | 3981 |  | 7 Days Work | 9191674 |
| 3983 | 36900.37000.37100.37700.52700.72700.365400 | Flooring+Skirting | 20d | 2027-06-10 | 2027-06-30 | 3982 |  | 7 Days Work | 9191684 |
| 3984 | 36900.37000.37100.37700.52700.72700.365500 | Wall finishes | 21d | 2027-06-30 | 2027-07-21 | 3983 |  | 7 Days Work | 9191694 |
| 3985 | 36900.37000.37100.37700.52700.72700.365600 | False Ceiling | 10d | 2027-07-21 | 2027-07-31 | 3984 |  | 7 Days Work | 9191704 |
| 3986 | 36900.37000.37100.37700.52700.72700.365700 | Staircase | 15d | 2027-07-31 | 2027-08-15 | 3985 |  | 7 Days Work | 9191714 |
| 3987 | 36900.37000.37100.37700.52700.72700.365800 | Deep Cleaning | 7d | 2027-08-15 | 2027-08-22 | 3986 |  | 7 Days Work | 9191724 |
| 3988 | 36900.37000.37100.37700.52700.72800 | **10th Habitable/12th Floor** | 158d | 2027-03-26 | 2027-08-31 |  | start no earlier than 2027-03-26 | 7 Days Work | 9183794 |
| 3989 | 36900.37000.37100.37700.52700.72800.365900 | Side blockwork for lift shafts | 9d | 2027-03-26 | 2027-04-04 | 3979 |  | 7 Days Work | 9191734 |
| 3990 | 36900.37000.37100.37700.52700.72800.366000 | Door Threshold for lifts | 6d | 2027-04-04 | 2027-04-10 | 3989 |  | 7 Days Work | 9191744 |
| 3991 | 36900.37000.37100.37700.52700.72800.366100 | Granite Cladding | 10d | 2027-04-10 | 2027-04-20 | 3990 |  | 7 Days Work | 9191754 |
| 3992 | 36900.37000.37100.37700.52700.72800.366200 | MEP Services | 60d | 2027-04-20 | 2027-06-19 | 3991 |  | 7 Days Work | 9191764 |
| 3993 | 36900.37000.37100.37700.52700.72800.366300 | Flooring+Skirting | 20d | 2027-06-19 | 2027-07-09 | 3992 |  | 7 Days Work | 9191774 |
| 3994 | 36900.37000.37100.37700.52700.72800.366400 | Wall finishes | 21d | 2027-07-09 | 2027-07-30 | 3993 |  | 7 Days Work | 9191784 |
| 3995 | 36900.37000.37100.37700.52700.72800.366500 | False Ceiling | 10d | 2027-07-30 | 2027-08-09 | 3994 |  | 7 Days Work | 9191794 |
| 3996 | 36900.37000.37100.37700.52700.72800.366600 | Staircase | 15d | 2027-08-09 | 2027-08-24 | 3995 |  | 7 Days Work | 9191804 |
| 3997 | 36900.37000.37100.37700.52700.72800.366700 | Deep Cleaning | 7d | 2027-08-24 | 2027-08-31 | 3996 |  | 7 Days Work | 9191814 |

| ID | WBS | Task | Duration | Start | Finish | Predecessors | Constraint | Calendar | Unique_Task_ID |
| --- | --- | --- | --- | --- | --- | --- | --- | --- | --- |
| 3998 | 36900.37000.37100.37700.52700.72900 | **11th Habitable/13th Floor** | 158d | 2027-04-04 | 2027-09-09 |  | start no earlier than 2027-04-04 | 7 Days Work | 9183774 |
| 3999 | 36900.37000.37100.37700.52700.72900.366800 | Side blockwork for lift shafts | 9d | 2027-04-04 | 2027-04-13 | 3989 |  | 7 Days Work | 9191824 |
| 4000 | 36900.37000.37100.37700.52700.72900.366900 | Door Threshold for lifts | 6d | 2027-04-13 | 2027-04-19 | 3999 |  | 7 Days Work | 9191834 |
| 4001 | 36900.37000.37100.37700.52700.72900.367000 | Granite Cladding | 10d | 2027-04-19 | 2027-04-29 | 4000 |  | 7 Days Work | 9191844 |
| 4002 | 36900.37000.37100.37700.52700.72900.367100 | MEP Services | 60d | 2027-04-29 | 2027-06-28 | 4001 |  | 7 Days Work | 9191854 |
| 4003 | 36900.37000.37100.37700.52700.72900.367200 | Flooring+Skirting | 20d | 2027-06-28 | 2027-07-18 | 4002 |  | 7 Days Work | 9191864 |
| 4004 | 36900.37000.37100.37700.52700.72900.367300 | Wall finishes | 21d | 2027-07-18 | 2027-08-08 | 4003 |  | 7 Days Work | 9191874 |
| 4005 | 36900.37000.37100.37700.52700.72900.367400 | False Ceiling | 10d | 2027-08-08 | 2027-08-18 | 4004 |  | 7 Days Work | 9191884 |
| 4006 | 36900.37000.37100.37700.52700.72900.367500 | Staircase | 15d | 2027-08-18 | 2027-09-02 | 4005 |  | 7 Days Work | 9191894 |
| 4007 | 36900.37000.37100.37700.52700.72900.367600 | Deep Cleaning | 7d | 2027-09-02 | 2027-09-09 | 4006 |  | 7 Days Work | 9191904 |
| 4008 | 36900.37000.37100.37700.52700.73000 | **12th Habitable/14th Floor** | 158d | 2027-04-13 | 2027-09-18 |  | start no earlier than 2027-04-13 | 7 Days Work | 9183834 |
| 4009 | 36900.37000.37100.37700.52700.73000.367700 | Side blockwork for lift shafts | 9d | 2027-04-13 | 2027-04-22 | 3999 |  | 7 Days Work | 9191914 |
| 4010 | 36900.37000.37100.37700.52700.73000.367800 | Door Threshold for lifts | 6d | 2027-04-22 | 2027-04-28 | 4009 |  | 7 Days Work | 9191924 |
| 4011 | 36900.37000.37100.37700.52700.73000.367900 | Granite Cladding | 10d | 2027-04-28 | 2027-05-08 | 4010 |  | 7 Days Work | 9191934 |
| 4012 | 36900.37000.37100.37700.52700.73000.368000 | MEP Services | 60d | 2027-05-08 | 2027-07-07 | 4011 |  | 7 Days Work | 9191944 |
| 4013 | 36900.37000.37100.37700.52700.73000.368100 | Flooring+Skirting | 20d | 2027-07-07 | 2027-07-27 | 4012 |  | 7 Days Work | 9191954 |
| 4014 | 36900.37000.37100.37700.52700.73000.368200 | Wall finishes | 21d | 2027-07-27 | 2027-08-17 | 4013 |  | 7 Days Work | 9191964 |
| 4015 | 36900.37000.37100.37700.52700.73000.368300 | False Ceiling | 10d | 2027-08-17 | 2027-08-27 | 4014 |  | 7 Days Work | 9191974 |
| 4016 | 36900.37000.37100.37700.52700.73000.368400 | Staircase | 15d | 2027-08-27 | 2027-09-11 | 4015 |  | 7 Days Work | 9191984 |
| 4017 | 36900.37000.37100.37700.52700.73000.368500 | Deep Cleaning | 7d | 2027-09-11 | 2027-09-18 | 4016 |  | 7 Days Work | 9191994 |
| 4018 | 36900.37000.37100.37700.52700.73100 | **13th Habitable/15th Floor** | 158d | 2027-04-22 | 2027-09-27 |  | start no earlier than 2027-04-22 | 7 Days Work | 9183844 |
| 4019 | 36900.37000.37100.37700.52700.73100.368600 | Side blockwork for lift shafts | 9d | 2027-04-22 | 2027-05-01 | 4009 |  | 7 Days Work | 9192004 |
| 4020 | 36900.37000.37100.37700.52700.73100.368700 | Door Threshold for lifts | 6d | 2027-05-01 | 2027-05-07 | 4019 |  | 7 Days Work | 9192014 |
| 4021 | 36900.37000.37100.37700.52700.73100.368800 | Granite Cladding | 10d | 2027-05-07 | 2027-05-17 | 4020 |  | 7 Days Work | 9192024 |
| 4022 | 36900.37000.37100.37700.52700.73100.368900 | MEP Services | 60d | 2027-05-17 | 2027-07-16 | 4021 |  | 7 Days Work | 9192034 |
| 4023 | 36900.37000.37100.37700.52700.73100.369000 | Flooring+Skirting | 20d | 2027-07-16 | 2027-08-05 | 4022 |  | 7 Days Work | 9192044 |
| 4024 | 36900.37000.37100.37700.52700.73100.369100 | Wall finishes | 21d | 2027-08-05 | 2027-08-26 | 4023 |  | 7 Days Work | 9192054 |
| 4025 | 36900.37000.37100.37700.52700.73100.369200 | False Ceiling | 10d | 2027-08-26 | 2027-09-05 | 4024 |  | 7 Days Work | 9192064 |
| 4026 | 36900.37000.37100.37700.52700.73100.369300 | Staircase | 15d | 2027-09-05 | 2027-09-20 | 4025 |  | 7 Days Work | 9192074 |
| 4027 | 36900.37000.37100.37700.52700.73100.369400 | Deep Cleaning | 7d | 2027-09-20 | 2027-09-27 | 4026 |  | 7 Days Work | 9192084 |

| ID | WBS | Task | Duration | Start | Finish | Predecessors | Constraint | Calendar | Unique_Task_ID |
| --- | --- | --- | --- | --- | --- | --- | --- | --- | --- |
| 4028 | 36900.37000.37100.37700.52700.73200 | **14th Habitable/16th Floor** | 158d | 2027-05-01 | 2027-10-06 |  | start no earlier than 2027-05-01 | 7 Days Work | 9183854 |
| 4029 | 36900.37000.37100.37700.52700.73200.369500 | Side blockwork for lift shafts | 9d | 2027-05-01 | 2027-05-10 | 4019 |  | 7 Days Work | 9192094 |
| 4030 | 36900.37000.37100.37700.52700.73200.369600 | Door Threshold for lifts | 6d | 2027-05-10 | 2027-05-16 | 4029 |  | 7 Days Work | 9192104 |
| 4031 | 36900.37000.37100.37700.52700.73200.369700 | Granite Cladding | 10d | 2027-05-16 | 2027-05-26 | 4030 |  | 7 Days Work | 9192114 |
| 4032 | 36900.37000.37100.37700.52700.73200.369800 | MEP Services | 60d | 2027-05-26 | 2027-07-25 | 4031 |  | 7 Days Work | 9192124 |
| 4033 | 36900.37000.37100.37700.52700.73200.369900 | Flooring+Skirting | 20d | 2027-07-25 | 2027-08-14 | 4032 |  | 7 Days Work | 9192134 |
| 4034 | 36900.37000.37100.37700.52700.73200.370000 | Wall finishes | 21d | 2027-08-14 | 2027-09-04 | 4033 |  | 7 Days Work | 9192144 |
| 4035 | 36900.37000.37100.37700.52700.73200.370100 | False Ceiling | 10d | 2027-09-04 | 2027-09-14 | 4034 |  | 7 Days Work | 9192154 |
| 4036 | 36900.37000.37100.37700.52700.73200.370200 | Staircase | 15d | 2027-09-14 | 2027-09-29 | 4035 |  | 7 Days Work | 9192164 |
| 4037 | 36900.37000.37100.37700.52700.73200.370300 | Deep Cleaning | 7d | 2027-09-29 | 2027-10-06 | 4036 |  | 7 Days Work | 9192174 |
| 4038 | 36900.37000.37100.37700.52700.73300 | **15th Habitable/17th Floor** | 158d | 2027-05-10 | 2027-10-15 |  | start no earlier than 2027-05-10 | 7 Days Work | 9183864 |
| 4039 | 36900.37000.37100.37700.52700.73300.370400 | Side blockwork for lift shafts | 9d | 2027-05-10 | 2027-05-19 | 4029 |  | 7 Days Work | 9192184 |
| 4040 | 36900.37000.37100.37700.52700.73300.370500 | Door Threshold for lifts | 6d | 2027-05-19 | 2027-05-25 | 4039 |  | 7 Days Work | 9192194 |
| 4041 | 36900.37000.37100.37700.52700.73300.370600 | Granite Cladding | 10d | 2027-05-25 | 2027-06-04 | 4040 |  | 7 Days Work | 9192204 |
| 4042 | 36900.37000.37100.37700.52700.73300.370700 | MEP Services | 60d | 2027-06-04 | 2027-08-03 | 4041 |  | 7 Days Work | 9192214 |
| 4043 | 36900.37000.37100.37700.52700.73300.370800 | Flooring+Skirting | 20d | 2027-08-03 | 2027-08-23 | 4042 |  | 7 Days Work | 9192224 |
| 4044 | 36900.37000.37100.37700.52700.73300.370900 | Wall finishes | 21d | 2027-08-23 | 2027-09-13 | 4043 |  | 7 Days Work | 9192234 |
| 4045 | 36900.37000.37100.37700.52700.73300.371000 | False Ceiling | 10d | 2027-09-13 | 2027-09-23 | 4044 |  | 7 Days Work | 9192244 |
| 4046 | 36900.37000.37100.37700.52700.73300.371100 | Staircase | 15d | 2027-09-23 | 2027-10-08 | 4045 |  | 7 Days Work | 9192254 |
| 4047 | 36900.37000.37100.37700.52700.73300.371200 | Deep Cleaning | 7d | 2027-10-08 | 2027-10-15 | 4046 |  | 7 Days Work | 9192264 |
| 4048 | 36900.37000.37100.37700.52700.73400 | **16th Habitable/18th Floor** | 158d | 2027-05-19 | 2027-10-24 |  | start no earlier than 2027-05-19 | 7 Days Work | 9183874 |
| 4049 | 36900.37000.37100.37700.52700.73400.371300 | Side blockwork for lift shafts | 9d | 2027-05-19 | 2027-05-28 | 4039 |  | 7 Days Work | 9192274 |
| 4050 | 36900.37000.37100.37700.52700.73400.371400 | Door Threshold for lifts | 6d | 2027-05-28 | 2027-06-03 | 4049 |  | 7 Days Work | 9192284 |
| 4051 | 36900.37000.37100.37700.52700.73400.371500 | Granite Cladding | 10d | 2027-06-03 | 2027-06-13 | 4050 |  | 7 Days Work | 9192294 |
| 4052 | 36900.37000.37100.37700.52700.73400.371600 | MEP Services | 60d | 2027-06-13 | 2027-08-12 | 4051 |  | 7 Days Work | 9192304 |
| 4053 | 36900.37000.37100.37700.52700.73400.371700 | Flooring+Skirting | 20d | 2027-08-12 | 2027-09-01 | 4052 |  | 7 Days Work | 9192314 |
| 4054 | 36900.37000.37100.37700.52700.73400.371800 | Wall finishes | 21d | 2027-09-01 | 2027-09-22 | 4053 |  | 7 Days Work | 9192324 |
| 4055 | 36900.37000.37100.37700.52700.73400.371900 | False Ceiling | 10d | 2027-09-22 | 2027-10-02 | 4054 |  | 7 Days Work | 9192334 |
| 4056 | 36900.37000.37100.37700.52700.73400.372000 | Staircase | 15d | 2027-10-02 | 2027-10-17 | 4055 |  | 7 Days Work | 9192344 |
| 4057 | 36900.37000.37100.37700.52700.73400.372100 | Deep Cleaning | 7d | 2027-10-17 | 2027-10-24 | 4056 |  | 7 Days Work | 9192354 |

| ID | WBS | Task | Duration | Start | Finish | Predecessors | Constraint | Calendar | Unique_Task_ID |
| --- | --- | --- | --- | --- | --- | --- | --- | --- | --- |
| 4058 | 36900.37000.37100.37700.52700.73500 | **17th Habitable/19th Floor** | 158d | 2027-05-28 | 2027-11-02 |  | start no earlier than 2027-05-28 | 7 Days Work | 9183904 |
| 4059 | 36900.37000.37100.37700.52700.73500.372200 | Side blockwork for lift shafts | 9d | 2027-05-28 | 2027-06-06 | 4049 |  | 7 Days Work | 9192364 |
| 4060 | 36900.37000.37100.37700.52700.73500.372300 | Door Threshold for lifts | 6d | 2027-06-06 | 2027-06-12 | 4059 |  | 7 Days Work | 9192374 |
| 4061 | 36900.37000.37100.37700.52700.73500.372400 | Granite Cladding | 10d | 2027-06-12 | 2027-06-22 | 4060 |  | 7 Days Work | 9192384 |
| 4062 | 36900.37000.37100.37700.52700.73500.372500 | MEP Services | 60d | 2027-06-22 | 2027-08-21 | 4061 |  | 7 Days Work | 9192394 |
| 4063 | 36900.37000.37100.37700.52700.73500.372600 | Flooring+Skirting | 20d | 2027-08-21 | 2027-09-10 | 4062 |  | 7 Days Work | 9192404 |
| 4064 | 36900.37000.37100.37700.52700.73500.372700 | Wall finishes | 21d | 2027-09-10 | 2027-10-01 | 4063 |  | 7 Days Work | 9192414 |
| 4065 | 36900.37000.37100.37700.52700.73500.372800 | False Ceiling | 10d | 2027-10-01 | 2027-10-11 | 4064 |  | 7 Days Work | 9192424 |
| 4066 | 36900.37000.37100.37700.52700.73500.372900 | Staircase | 15d | 2027-10-11 | 2027-10-26 | 4065 |  | 7 Days Work | 9192434 |
| 4067 | 36900.37000.37100.37700.52700.73500.373000 | Deep Cleaning | 7d | 2027-10-26 | 2027-11-02 | 4066 |  | 7 Days Work | 9192444 |
| 4068 | 36900.37000.37100.37700.52700.73600 | **18th Habitable/20th Floor** | 158d | 2027-06-06 | 2027-11-11 |  | start no earlier than 2027-06-06 | 7 Days Work | 9183914 |
| 4069 | 36900.37000.37100.37700.52700.73600.373100 | Side blockwork for lift shafts | 9d | 2027-06-06 | 2027-06-15 | 4059 |  | 7 Days Work | 9192454 |
| 4070 | 36900.37000.37100.37700.52700.73600.373200 | Door Threshold for lifts | 6d | 2027-06-15 | 2027-06-21 | 4069 |  | 7 Days Work | 9192464 |
| 4071 | 36900.37000.37100.37700.52700.73600.373300 | Granite Cladding | 10d | 2027-06-21 | 2027-07-01 | 4070 |  | 7 Days Work | 9192474 |
| 4072 | 36900.37000.37100.37700.52700.73600.373400 | MEP Services | 60d | 2027-07-01 | 2027-08-30 | 4071 |  | 7 Days Work | 9192484 |
| 4073 | 36900.37000.37100.37700.52700.73600.373500 | Flooring+Skirting | 20d | 2027-08-30 | 2027-09-19 | 4072 |  | 7 Days Work | 9192494 |
| 4074 | 36900.37000.37100.37700.52700.73600.373600 | Wall finishes | 21d | 2027-09-19 | 2027-10-10 | 4073 |  | 7 Days Work | 9192504 |
| 4075 | 36900.37000.37100.37700.52700.73600.373700 | False Ceiling | 10d | 2027-10-10 | 2027-10-20 | 4074 |  | 7 Days Work | 9192514 |
| 4076 | 36900.37000.37100.37700.52700.73600.373800 | Staircase | 15d | 2027-10-20 | 2027-11-04 | 4075 |  | 7 Days Work | 9192524 |
| 4077 | 36900.37000.37100.37700.52700.73600.373900 | Deep Cleaning | 7d | 2027-11-04 | 2027-11-11 | 4076 |  | 7 Days Work | 9192534 |
| 4078 | 36900.37000.37100.37700.52700.73700 | **19th Habitable/21st Floor** | 158d | 2027-06-15 | 2027-11-20 |  | start no earlier than 2027-06-15 | 7 Days Work | 9183924 |
| 4079 | 36900.37000.37100.37700.52700.73700.374000 | Side blockwork for lift shafts | 9d | 2027-06-15 | 2027-06-24 | 4069 |  | 7 Days Work | 9192544 |
| 4080 | 36900.37000.37100.37700.52700.73700.374100 | Door Threshold for lifts | 6d | 2027-06-24 | 2027-06-30 | 4079 |  | 7 Days Work | 9192554 |
| 4081 | 36900.37000.37100.37700.52700.73700.374200 | Granite Cladding | 10d | 2027-06-30 | 2027-07-10 | 4080 |  | 7 Days Work | 9192564 |
| 4082 | 36900.37000.37100.37700.52700.73700.374300 | MEP Services | 60d | 2027-07-10 | 2027-09-08 | 4081 |  | 7 Days Work | 9192574 |
| 4083 | 36900.37000.37100.37700.52700.73700.374400 | Flooring+Skirting | 20d | 2027-09-08 | 2027-09-28 | 4082 |  | 7 Days Work | 9192584 |
| 4084 | 36900.37000.37100.37700.52700.73700.374500 | Wall finishes | 21d | 2027-09-28 | 2027-10-19 | 4083 |  | 7 Days Work | 9192594 |
| 4085 | 36900.37000.37100.37700.52700.73700.374600 | False Ceiling | 10d | 2027-10-19 | 2027-10-29 | 4084 |  | 7 Days Work | 9192604 |
| 4086 | 36900.37000.37100.37700.52700.73700.374700 | Staircase | 15d | 2027-10-29 | 2027-11-13 | 4085 |  | 7 Days Work | 9192614 |
| 4087 | 36900.37000.37100.37700.52700.73700.374800 | Deep Cleaning | 7d | 2027-11-13 | 2027-11-20 | 4086 |  | 7 Days Work | 9043894 |

| ID | WBS | Task | Duration | Start | Finish | Predecessors | Complete | Constraint | Calendar | Unique_Task_ID |
| --- | --- | --- | --- | --- | --- | --- | --- | --- | --- | --- |
| 4088 | 36900.37000.37100.37700.67700 | **Lift** | 332d | 2026-03-23 | 2027-02-18 |  |  | start no earlier than 2026-03-23 | 7 Days Work | 9183764 |
| 4089 | 36900.37000.37100.37700.67700.116900 | Order Issue | 104d | 2026-03-23 | 2026-07-05 | 2745FS-120d |  |  | 7 Days Work | 9183964 |
| 4090 | 36900.37000.37100.37700.67700.117000 | Shop drawing approval | 30d | 2026-07-05 | 2026-08-04 | 4089 |  |  | 7 Days Work | 9183974 |
| 4091 | 36900.37000.37100.37700.67700.117100 | Material recipt | 90d | 2026-08-04 | 2026-11-02 | 4090 |  |  | 7 Days Work | 9183984 |
| 4092 | 36900.37000.37100.37700.67700.117200 | Lift Shaft Handover | 30d | 2026-11-23 | 2026-12-23 | 2755 |  |  | 7 Days Work | 9183994 |
| 4093 | 36900.37000.37100.37700.67700.117300 | Template fixing by lift contractor | 7d | 2026-12-23 | 2026-12-30 | 4092 |  |  | 7 Days Work | 9184004 |
| 4094 | 36900.37000.37100.37700.67700.117400 | Centre line marking for lift shafts | 5d | 2026-12-30 | 2027-01-04 | 4093 |  |  | 7 Days Work | 9184014 |
| 4095 | 36900.37000.37100.37700.67700.117500 | Rail & Bracket Fixing | 5d | 2027-01-04 | 2027-01-09 | 4094 |  |  | 7 Days Work | 9184024 |
| 4096 | 36900.37000.37100.37700.67700.117600 | Cage Installation | 5d | 2027-01-09 | 2027-01-14 | 4095 |  |  | 7 Days Work | 9184034 |
| 4097 | 36900.37000.37100.37700.67700.117700 | Slow Speed | 20d | 2027-01-14 | 2027-02-03 | 4096 |  |  | 7 Days Work | 9184044 |
| 4098 | 36900.37000.37100.37700.67700.117800 | High Spped | 5d | 2027-02-03 | 2027-02-08 | 4097 |  |  | 7 Days Work | 9184054 |
| 4099 | 36900.37000.37100.37700.67700.117900 | Commisioning | 7d | 2027-02-08 | 2027-02-15 | 4098 |  |  | 7 Days Work | 9184064 |
| 4100 | 36900.37000.37100.37700.67700.118000 | Handover | 3d | 2027-02-15 | 2027-02-18 | 4099 |  |  | 7 Days Work | 9043884 |
| 4101 | 36900.37000.37100.37700.102700 | External Paint | 90d | 2027-03-03 | 2027-06-01 | 2754FS+135d |  |  | 7 Days Work | 9145954 |
| 4102 | 36900.37000.37100.37500 | **Tower-4** | 982d | 2025-02-22 | 2027-10-31 |  | 2% | start no earlier than 2025-02-22 | 7 Days Work | 9042634 |
| 4103 | 36900.37000.37100.37500.89000 | Pilling | 101d | 2025-02-22 | 2025-06-12 | 2720SS+1d | 100% | start no earlier than 2025-02-22 | 7 Days Work | 9043904 |
| 4104 | 36900.37000.37100.37500.88900 | Addition Pilling | 43d | 2025-08-17 | 2025-11-05 |  | 100% | start no earlier than 2025-08-17 | 7 Days Work | 10430338 |
| 4105 | 36900.37000.37100.37500.88800 | SPT Test | 30d | 2025-05-19 | 2025-06-27 | 4103FF+15d | 100% | start no earlier than 2025-05-19 | 7 Days Work | 10343668 |
| 4106 | 36900.37000.37100.37500.88700 | Dynamic | 1d | 2025-06-27 | 2025-06-27 | 4103FS+28d | 100% | start no earlier than 2025-06-27 | 7 Days Work | 10343678 |
| 4107 | 36900.37000.37100.37500.88600 | Static Load Test | 9d | 2025-07-27 | 2025-08-08 | 4103FS+28d | 100% | start no earlier than 2025-07-27 | 7 Days Work | 10343688 |
| 4108 | 36900.37000.37100.37500.88500 | Excavation | 27d | 2025-07-25 | 2025-12-01 | 4107 | 92% | start no earlier than 2025-07-25 | 7 Days Work | 9043905 |
| 4109 | 36900.37000.37100.37500.88400 | Pile Breaking | 30d | 2025-07-26 | 2025-12-04 | 4108FS-107d | 83% | start no earlier than 2025-07-26 | 7 Days Work | 10419698 |
| 4110 | 36900.37000.37100.37500.88300 | PCC | 22d | 2025-07-26 | 2025-11-30 | 4109FS-113d | 95% | start no earlier than 2025-07-26 | 7 Days Work | 10419718 |
| 4111 | 36900.37000.37100.37500.88200 | PIT | 9d | 2025-06-26 | 2025-11-30 | 4109 | 88% | start no earlier than 2025-06-26 | 7 Days Work | 10343698 |
| 4112 | 36900.37000.37100.37500.88100 | Raft-reinforcement | 20d | 2025-11-20 | 2025-12-09 | 4111 | 50% | start no earlier than 2025-11-20 | 7 Days Work | 9043914 |
| 4113 | 36900.37000.37100.37500.102800 | Raft-Shuttering | 18d | 2025-11-30 | 2025-12-17 | 4112SS+5d |  |  | 7 Days Work | 10723888 |
| 4114 | 36900.37000.37100.37500.102900 | Raft-concreting | 18d | 2025-12-05 | 2025-12-22 | 4113SS+5d |  |  | 7 Days Work | 10723898 |
| 4115 | 36900.37000.37100.37500.103000 | up to PL | 22d | 2025-12-10 | 2025-12-31 | 4112 |  |  | 7 Days Work | 9043924 |
| 4116 | 36900.37000.37100.37500.103100 | 1st Floor Slab RCC | 25d | 2026-01-01 | 2026-01-25 | 4115 |  |  | 7 Days Work | 9043934 |
| 4117 | 36900.37000.37100.37500.103200 | 2nd Floor Slab RCC | 25d | 2026-01-26 | 2026-02-19 | 4116 |  |  | 7 Days Work | 9043944 |
| 4118 | 36900.37000.37100.37500.103300 | 3rd Floor Slab RCC | 21d | 2026-02-20 | 2026-03-12 | 4117 |  |  | 7 Days Work | 9043954 |
| 4119 | 36900.37000.37100.37500.103400 | 4th Floor Slab RCC | 15d | 2026-03-13 | 2026-03-27 | 4118 |  |  | 7 Days Work | 9043964 |
| 4120 | 36900.37000.37100.37500.103500 | 5th Floor Slab RCC | 9d | 2026-03-28 | 2026-04-05 | 4119 |  |  | 7 Days Work | 9043974 |
| 4121 | 36900.37000.37100.37500.103600 | 6th Floor Slab RCC | 9d | 2026-04-06 | 2026-04-14 | 4120 |  |  | 7 Days Work | 9043984 |
| 4122 | 36900.37000.37100.37500.103700 | 7th Floor Slab RCC | 12d | 2026-04-15 | 2026-04-26 | 4121 |  |  | 7 Days Work | 9043994 |
| 4123 | 36900.37000.37100.37500.103800 | 8th Floor Slab RCC | 9d | 2026-04-27 | 2026-05-05 | 4122 |  |  | 7 Days Work | 9044004 |
| 4124 | 36900.37000.37100.37500.103900 | 9th Floor Slab RCC | 9d | 2026-05-06 | 2026-05-14 | 4123 |  |  | 7 Days Work | 9044014 |
| 4125 | 36900.37000.37100.37500.104000 | 10th Floor Slab RCC | 9d | 2026-05-15 | 2026-05-23 | 4124 |  |  | 7 Days Work | 9044024 |
| 4126 | 36900.37000.37100.37500.104100 | 11th Floor Slab RCC | 12d | 2026-05-24 | 2026-06-04 | 4125 |  |  | 7 Days Work | 9044034 |
| 4127 | 36900.37000.37100.37500.104200 | 12th Floor Slab RCC | 9d | 2026-06-05 | 2026-06-13 | 4126 |  |  | 7 Days Work | 9044044 |
| 4128 | 36900.37000.37100.37500.104300 | 13th Floor Slab RCC | 9d | 2026-06-14 | 2026-06-22 | 4127 |  |  | 7 Days Work | 9044054 |
| 4129 | 36900.37000.37100.37500.104400 | 14th Floor Slab RCC | 9d | 2026-06-23 | 2026-07-01 | 4128 |  |  | 7 Days Work | 9044064 |
| 4130 | 36900.37000.37100.37500.104500 | 15th Floor Slab RCC | 12d | 2026-07-02 | 2026-07-13 | 4129 |  |  | 7 Days Work | 9044074 |
| 4131 | 36900.37000.37100.37500.104600 | 16th Floor Slab RCC | 9d | 2026-07-14 | 2026-07-22 | 4130 |  |  | 7 Days Work | 9044084 |
| 4132 | 36900.37000.37100.37500.104700 | 17th Floor Slab RCC | 9d | 2026-07-23 | 2026-07-31 | 4131 |  |  | 7 Days Work | 9044094 |
| 4133 | 36900.37000.37100.37500.104800 | 18th Floor Slab RCC | 9d | 2026-08-01 | 2026-08-09 | 4132 |  |  | 7 Days Work | 9044104 |
| 4134 | 36900.37000.37100.37500.104900 | 19th Floor Slab RCC | 12d | 2026-08-10 | 2026-08-21 | 4133 |  |  | 7 Days Work | 9044114 |
| 4135 | 36900.37000.37100.37500.105000 | 20th Floor Slab RCC | 9d | 2026-08-22 | 2026-08-30 | 4134 |  |  | 7 Days Work | 9044124 |
| 4136 | 36900.37000.37100.37500.105100 | 21st Floor Slab RCC | 9d | 2026-08-31 | 2026-09-08 | 4135 |  |  | 7 Days Work | 9044134 |
| 4137 | 36900.37000.37100.37500.105200 | Terrace | 12d | 2026-09-09 | 2026-09-20 | 4136 |  |  | 7 Days Work | 9044144 |
| 4138 | 36900.37000.37100.37500.105300 | Above Terrace | 35d | 2026-09-21 | 2026-10-25 | 4137 |  |  | 7 Days Work | 9044145 |

| ID | WBS | Task | Duration | Start | Finish | Predecessors | Constraint | Calendar | Unique_Task_ID |
| --- | --- | --- | --- | --- | --- | --- | --- | --- | --- |
| 4139 | 36900.37000.37100.37500.37900 | **Flat Finishing** | 437d | 2026-03-28 | 2027-06-07 |  | start no earlier than 2026-03-28 | 7 Days Work | 9196814 |
| 4140 | 36900.37000.37100.37500.37900.44200 | **1st Habitable/2nd Floor** | 245d | 2026-03-28 | 2026-11-27 |  | start no earlier than 2026-03-28 | 7 Days Work | 9196824 |
| 4141 | 36900.37000.37100.37500.37900.44200.374900 | Post Pour | 7d | 2026-03-28 | 2026-04-03 | 4118FS+15d |  | 7 Days Work | 9197534 |
| 4142 | 36900.37000.37100.37500.37900.44200.375000 | MEP Clearance -1 | 5d | 2026-04-04 | 2026-04-08 | 4141 |  | 7 Days Work | 9197544 |
| 4143 | 36900.37000.37100.37500.37900.44200.375100 | Benchmark | 1d | 2026-04-09 | 2026-04-09 | 4142 |  | 7 Days Work | 9197554 |
| 4144 | 36900.37000.37100.37500.37900.44200.375200 | Temporary Railing | 3d | 2026-04-10 | 2026-04-12 | 4143 |  | 7 Days Work | 9197564 |
| 4145 | 36900.37000.37100.37500.37900.44200.375300 | Blockwork | 10d | 2026-04-13 | 2026-04-22 | 4144 |  | 7 Days Work | 9197574 |
| 4146 | 36900.37000.37100.37500.37900.44200.375400 | MEP Clearance -2 | 10d | 2026-04-23 | 2026-05-02 | 4145 |  | 7 Days Work | 9197584 |
| 4147 | 36900.37000.37100.37500.37900.44200.375500 | Gypsum Plaster | 14d | 2026-05-03 | 2026-05-16 | 4146 |  | 7 Days Work | 9197594 |
| 4148 | 36900.37000.37100.37500.37900.44200.375600 | Kitchen Platform | 3d | 2026-05-17 | 2026-05-19 | 4147 |  | 7 Days Work | 9197604 |
| 4149 | 36900.37000.37100.37500.37900.44200.375700 | Kitchen dado | 7d | 2026-05-20 | 2026-05-26 | 4148 |  | 7 Days Work | 9197614 |
| 4150 | 36900.37000.37100.37500.37900.44200.375800 | Fire Fighting | 5d | 2026-05-27 | 2026-05-31 | 4149 |  | 7 Days Work | 9197624 |
| 4151 | 36900.37000.37100.37500.37900.44200.375900 | Anticapilary | 5d | 2026-06-01 | 2026-06-05 | 4150 |  | 7 Days Work | 9197634 |
| 4152 | 36900.37000.37100.37500.37900.44200.376000 | Stone Laying | 10d | 2026-07-09 | 2026-07-18 | 4192 |  | 7 Days Work | 9197644 |
| 4153 | 36900.37000.37100.37500.37900.44200.376100 | Tiles Laying | 7d | 2026-07-09 | 2026-07-15 | 4192 |  | 7 Days Work | 9197654 |
| 4154 | 36900.37000.37100.37500.37900.44200.376200 | 1st cutting/polishing of stone flooring | 7d | 2026-07-16 | 2026-07-22 | 4153 |  | 7 Days Work | 9197664 |
| 4155 | 36900.37000.37100.37500.37900.44200.376300 | Tiles/Stone skirting | 5d | 2026-07-23 | 2026-07-27 | 4154 |  | 7 Days Work | 9197674 |
| 4156 | 36900.37000.37100.37500.37900.44200.376400 | Protechtion sheet | 1d | 2026-07-28 | 2026-07-28 | 4155 |  | 7 Days Work | 9197684 |
| 4157 | 36900.37000.37100.37500.37900.44200.376500 | Installation of Temporary Door | 1d | 2026-07-29 | 2026-07-29 | 4156 |  | 7 Days Work | 9197694 |
| 4158 | 36900.37000.37100.37500.37900.44200.376600 | Fixing of window tracks | 5d | 2026-07-30 | 2026-08-03 | 4157 |  | 7 Days Work | 9197704 |
| 4159 | 36900.37000.37100.37500.37900.44200.376700 | Wire Pulling | 7d | 2026-08-04 | 2026-08-10 | 4158 |  | 7 Days Work | 9197714 |
| 4160 | 36900.37000.37100.37500.37900.44200.376800 | Gypsum Remaining | 5d | 2026-08-11 | 2026-08-15 | 4159 |  | 7 Days Work | 9197724 |
| 4161 | 36900.37000.37100.37500.37900.44200.376900 | Fixing of windoow shutter | 5d | 2026-08-16 | 2026-08-20 | 4160 |  | 7 Days Work | 9197734 |
| 4162 | 36900.37000.37100.37500.37900.44200.377000 | Putty Works - walls & ceiling | 15d | 2026-08-21 | 2026-09-04 | 4161 |  | 7 Days Work | 9197744 |
| 4163 | 36900.37000.37100.37500.37900.44200.377100 | False Ceiling- Framing | 10d | 2026-09-05 | 2026-09-14 | 4162 |  | 7 Days Work | 9197754 |
| 4164 | 36900.37000.37100.37500.37900.44200.377200 | Pre Hung Door | 3d | 2026-09-15 | 2026-09-17 | 4163 |  | 7 Days Work | 9197764 |
| 4165 | 36900.37000.37100.37500.37900.44200.377300 | Protechtion sheet | 2d | 2026-09-18 | 2026-09-19 | 4164 |  | 7 Days Work | 9197774 |
| 4166 | 36900.37000.37100.37500.37900.44200.377400 | Skirting near door | 2d | 2026-09-20 | 2026-09-21 | 4165 |  | 7 Days Work | 9197784 |
| 4167 | 36900.37000.37100.37500.37900.44200.377500 | Electrical Switch box fixing | 14d | 2026-09-22 | 2026-10-05 | 4166 |  | 7 Days Work | 9197794 |
| 4168 | 36900.37000.37100.37500.37900.44200.377600 | Fire Fighting painting | 5d | 2026-10-06 | 2026-10-10 | 4167 |  | 7 Days Work | 9197804 |
| 4169 | 36900.37000.37100.37500.37900.44200.377700 | Protection of all flooring, door & window hardware | 5d | 2026-10-11 | 2026-10-15 | 4168 |  | 7 Days Work | 9197814 |
| 4170 | 36900.37000.37100.37500.37900.44200.377800 | 1st coat primer- ceiling 1st & walls | 14d | 2026-10-16 | 2026-10-29 | 4169 |  | 7 Days Work | 9197824 |
| 4171 | 36900.37000.37100.37500.37900.44200.377900 | Wooden Flooring | 5d | 2026-10-30 | 2026-11-03 | 4170 |  | 7 Days Work | 9197834 |
| 4172 | 36900.37000.37100.37500.37900.44200.378000 | Removing of Temporary Railing & installation of Glass Railing | 5d | 2026-10-30 | 2026-11-03 | 4170 |  | 7 Days Work | 9197844 |
| 4173 | 36900.37000.37100.37500.37900.44200.378100 | Tile Grouting | 7d | 2026-10-30 | 2026-11-05 | 4170 |  | 7 Days Work | 9197854 |
| 4174 | 36900.37000.37100.37500.37900.44200.378200 | False Ceiling | 5d | 2026-11-06 | 2026-11-10 | 4173 |  | 7 Days Work | 9197864 |
| 4175 | 36900.37000.37100.37500.37900.44200.378300 | 2nd coat of primer | 10d | 2026-11-11 | 2026-11-20 | 4174 |  | 7 Days Work | 9197874 |
| 4176 | 36900.37000.37100.37500.37900.44200.378400 | Final cutting/polishing of stone flooring | 7d | 2026-11-21 | 2026-11-27 | 4175 |  | 7 Days Work | 9197884 |

| ID | WBS | Task | Duration | Start | Finish | Predecessors | Constraint | Calendar | Unique_Task_ID |
| --- | --- | --- | --- | --- | --- | --- | --- | --- | --- |
| 4177 | 36900.37000.37100.37500.37900.44200.58500 | **Toilet** | 237d | 2026-04-04 | 2026-11-26 |  | start no earlier than 2026-04-04 | 7 Days Work | 9197024 |
| 4178 | 36900.37000.37100.37500.37900.44200.58500.858300 | Toilet_MEP Clearance -1 | 7d | 2026-04-04 | 2026-04-10 | 4141 |  | 7 Days Work | 9206084 |
| 4179 | 36900.37000.37100.37500.37900.44200.58500.858400 | Toilet_Level Marking | 1d | 2026-04-11 | 2026-04-11 | 4178 |  | 7 Days Work | 9206094 |
| 4180 | 36900.37000.37100.37500.37900.44200.58500.858500 | Toilet_Chasing work for Electrical conduit & concealed plumbing | 5d | 2026-04-12 | 2026-04-16 | 4179 |  | 7 Days Work | 9206104 |
| 4181 | 36900.37000.37100.37500.37900.44200.58500.858600 | Toilet_Plumbing work 1st fix | 5d | 2026-04-17 | 2026-04-21 | 4180 |  | 7 Days Work | 9206114 |
| 4182 | 36900.37000.37100.37500.37900.44200.58500.858700 | Toilet_Sleeve/Bore Packing | 5d | 2026-04-22 | 2026-04-26 | 4181 |  | 7 Days Work | 9206124 |
| 4183 | 36900.37000.37100.37500.37900.44200.58500.858800 | Toilet_Waterproofing | 10d | 2026-04-27 | 2026-05-06 | 4182 |  | 7 Days Work | 9206134 |
| 4184 | 36900.37000.37100.37500.37900.44200.58500.858900 | Toilet_Screed | 1d | 2026-05-07 | 2026-05-07 | 4183 |  | 7 Days Work | 9206144 |
| 4185 | 36900.37000.37100.37500.37900.44200.58500.859000 | Toilet_Plumbing 2nd fix | 5d | 2026-05-08 | 2026-05-12 | 4184 |  | 7 Days Work | 9206154 |
| 4186 | 36900.37000.37100.37500.37900.44200.58500.859100 | Toilet_Ledge wall | 5d | 2026-05-13 | 2026-05-17 | 4185 |  | 7 Days Work | 9206164 |
| 4187 | 36900.37000.37100.37500.37900.44200.58500.859200 | Toilet_Cement Plaster | 5d | 2026-05-18 | 2026-05-22 | 4186 |  | 7 Days Work | 9206174 |
| 4188 | 36900.37000.37100.37500.37900.44200.58500.859300 | Toilet_Door Frame | 1d | 2026-05-23 | 2026-05-23 | 4187 |  | 7 Days Work | 9206184 |
| 4189 | 36900.37000.37100.37500.37900.44200.58500.859400 | Toilet_Wash basin & Couter | 3d | 2026-05-24 | 2026-05-26 | 4188 |  | 7 Days Work | 9206194 |
| 4190 | 36900.37000.37100.37500.37900.44200.58500.859500 | Toilet_Wall dado | 20d | 2026-05-27 | 2026-06-15 | 4189 |  | 7 Days Work | 9206204 |
| 4191 | 36900.37000.37100.37500.37900.44200.58500.859600 | Toilet_Granite Work-Ledge wall top | 3d | 2026-06-16 | 2026-06-18 | 4190 |  | 7 Days Work | 9206214 |
| 4192 | 36900.37000.37100.37500.37900.44200.58500.859700 | Toilet_Floor Tilling work | 20d | 2026-06-19 | 2026-07-08 | 4191 |  | 7 Days Work | 9206224 |
| 4193 | 36900.37000.37100.37500.37900.44200.58500.859800 | Toilet_1st row of dado | 5d | 2026-07-09 | 2026-07-13 | 4192 |  | 7 Days Work | 9206234 |
| 4194 | 36900.37000.37100.37500.37900.44200.58500.859900 | Toilet_Window Fixing | 14d | 2026-07-14 | 2026-07-27 | 4193 |  | 7 Days Work | 9206244 |
| 4195 | 36900.37000.37100.37500.37900.44200.58500.860000 | Toilet_Services above False ceiling | 21d | 2026-07-28 | 2026-08-17 | 4194 |  | 7 Days Work | 9206254 |
| 4196 | 36900.37000.37100.37500.37900.44200.58500.860100 | Toilet_False Ceiling framing | 12d | 2026-08-18 | 2026-08-29 | 4195 |  | 7 Days Work | 9206264 |
| 4197 | 36900.37000.37100.37500.37900.44200.58500.860200 | Toilet_Door Frame | 5d | 2026-08-30 | 2026-09-03 | 4196 |  | 7 Days Work | 9206274 |
| 4198 | 36900.37000.37100.37500.37900.44200.58500.860300 | Toilet_Epoxy Tile Grouting | 7d | 2026-10-30 | 2026-11-05 | 4173SS |  | 7 Days Work | 9206284 |
| 4199 | 36900.37000.37100.37500.37900.44200.58500.860400 | Toilet_False ceiling board fixing, CP Sanitary Fixture, Electric Fixture | 21d | 2026-11-06 | 2026-11-26 | 4198 |  | 7 Days Work | 9206294 |
| 4200 | 36900.37000.37100.37500.37900.44300 | **2nd Habitable/3rd Floor** | 245d | 2026-04-12 | 2026-12-12 |  | start no earlier than 2026-04-12 | 7 Days Work | 9196834 |
| 4201 | 36900.37000.37100.37500.37900.44300.378500 | Post Pour | 7d | 2026-04-12 | 2026-04-18 | 4119FS+15d |  | 7 Days Work | 9197894 |
| 4202 | 36900.37000.37100.37500.37900.44300.378600 | MEP Clearance -1 | 5d | 2026-04-19 | 2026-04-23 | 4201 |  | 7 Days Work | 9197904 |
| 4203 | 36900.37000.37100.37500.37900.44300.378700 | Benchmark | 1d | 2026-04-24 | 2026-04-24 | 4202 |  | 7 Days Work | 9197914 |
| 4204 | 36900.37000.37100.37500.37900.44300.378800 | Temporary Railing | 3d | 2026-04-25 | 2026-04-27 | 4203 |  | 7 Days Work | 9197924 |
| 4205 | 36900.37000.37100.37500.37900.44300.378900 | Blockwork | 10d | 2026-04-28 | 2026-05-07 | 4204 |  | 7 Days Work | 9197934 |
| 4206 | 36900.37000.37100.37500.37900.44300.379000 | MEP Clearance -2 | 10d | 2026-05-08 | 2026-05-17 | 4205 |  | 7 Days Work | 9197944 |
| 4207 | 36900.37000.37100.37500.37900.44300.379100 | Gypsum Plaster | 14d | 2026-05-18 | 2026-05-31 | 4206 |  | 7 Days Work | 9197954 |
| 4208 | 36900.37000.37100.37500.37900.44300.379200 | Kitchen Platform | 3d | 2026-06-01 | 2026-06-03 | 4207 |  | 7 Days Work | 9197964 |
| 4209 | 36900.37000.37100.37500.37900.44300.379300 | Kitchen dado | 7d | 2026-06-04 | 2026-06-10 | 4208 |  | 7 Days Work | 9197974 |
| 4210 | 36900.37000.37100.37500.37900.44300.379400 | Fire Fighting | 5d | 2026-06-11 | 2026-06-15 | 4209 |  | 7 Days Work | 9197984 |
| 4211 | 36900.37000.37100.37500.37900.44300.379500 | Anticapilary | 5d | 2026-06-16 | 2026-06-20 | 4210 |  | 7 Days Work | 9197994 |
| 4212 | 36900.37000.37100.37500.37900.44300.379600 | Stone Laying | 10d | 2026-07-24 | 2026-08-02 | 4252 |  | 7 Days Work | 9198004 |
| 4213 | 36900.37000.37100.37500.37900.44300.379700 | Tiles Laying | 7d | 2026-07-24 | 2026-07-30 | 4252 |  | 7 Days Work | 9198014 |
| 4214 | 36900.37000.37100.37500.37900.44300.379800 | 1st cutting/polishing of stone flooring | 7d | 2026-07-31 | 2026-08-06 | 4213 |  | 7 Days Work | 9198024 |
| 4215 | 36900.37000.37100.37500.37900.44300.379900 | Tiles/Stone skirting | 5d | 2026-08-07 | 2026-08-11 | 4214 |  | 7 Days Work | 9198034 |
| 4216 | 36900.37000.37100.37500.37900.44300.380000 | Protechtion sheet | 1d | 2026-08-12 | 2026-08-12 | 4215 |  | 7 Days Work | 9198044 |
| 4217 | 36900.37000.37100.37500.37900.44300.380100 | Installation of Temporary Door | 1d | 2026-08-13 | 2026-08-13 | 4216 |  | 7 Days Work | 9198054 |
| 4218 | 36900.37000.37100.37500.37900.44300.380200 | Fixing of window tracks | 5d | 2026-08-14 | 2026-08-18 | 4217 |  | 7 Days Work | 9198064 |
| 4219 | 36900.37000.37100.37500.37900.44300.380300 | Wire Pulling | 7d | 2026-08-19 | 2026-08-25 | 4218 |  | 7 Days Work | 9198074 |
| 4220 | 36900.37000.37100.37500.37900.44300.380400 | Gypsum Remaining | 5d | 2026-08-26 | 2026-08-30 | 4219 |  | 7 Days Work | 9198084 |
| 4221 | 36900.37000.37100.37500.37900.44300.380500 | Fixing of windoow shutter | 5d | 2026-08-31 | 2026-09-04 | 4220 |  | 7 Days Work | 9198094 |
| 4222 | 36900.37000.37100.37500.37900.44300.380600 | Putty Works - walls & ceiling | 15d | 2026-09-05 | 2026-09-19 | 4221 |  | 7 Days Work | 9198104 |
| 4223 | 36900.37000.37100.37500.37900.44300.380700 | False Ceiling- Framing | 10d | 2026-09-20 | 2026-09-29 | 4222 |  | 7 Days Work | 9198114 |
| 4224 | 36900.37000.37100.37500.37900.44300.380800 | Pre Hung Door | 3d | 2026-09-30 | 2026-10-02 | 4223 |  | 7 Days Work | 9198124 |
| 4225 | 36900.37000.37100.37500.37900.44300.380900 | Protechtion sheet | 2d | 2026-10-03 | 2026-10-04 | 4224 |  | 7 Days Work | 9198134 |
| 4226 | 36900.37000.37100.37500.37900.44300.381000 | Skirting near door | 2d | 2026-10-05 | 2026-10-06 | 4225 |  | 7 Days Work | 9198144 |
| 4227 | 36900.37000.37100.37500.37900.44300.381100 | Electrical Switch box fixing | 14d | 2026-10-07 | 2026-10-20 | 4226 |  | 7 Days Work | 9198154 |
| 4228 | 36900.37000.37100.37500.37900.44300.381200 | Fire Fighting painting | 5d | 2026-10-21 | 2026-10-25 | 4227 |  | 7 Days Work | 9198164 |
| 4229 | 36900.37000.37100.37500.37900.44300.381300 | Protection of all flooring, door & window hardware | 5d | 2026-10-26 | 2026-10-30 | 4228 |  | 7 Days Work | 9198174 |
| 4230 | 36900.37000.37100.37500.37900.44300.381400 | 1st coat primer- ceiling 1st & walls | 14d | 2026-10-31 | 2026-11-13 | 4229 |  | 7 Days Work | 9198184 |
| 4231 | 36900.37000.37100.37500.37900.44300.381500 | Wooden Flooring | 5d | 2026-11-14 | 2026-11-18 | 4230 |  | 7 Days Work | 9198194 |
| 4232 | 36900.37000.37100.37500.37900.44300.381600 | Removing of Temporary Railing & installation of Glass Railing | 5d | 2026-11-14 | 2026-11-18 | 4230 |  | 7 Days Work | 9198204 |
| 4233 | 36900.37000.37100.37500.37900.44300.381700 | Tile Grouting | 7d | 2026-11-14 | 2026-11-20 | 4230 |  | 7 Days Work | 9198214 |
| 4234 | 36900.37000.37100.37500.37900.44300.381800 | False Ceiling | 5d | 2026-11-21 | 2026-11-25 | 4233 |  | 7 Days Work | 9198224 |
| 4235 | 36900.37000.37100.37500.37900.44300.381900 | 2nd coat of primer | 10d | 2026-11-26 | 2026-12-05 | 4234 |  | 7 Days Work | 9198234 |
| 4236 | 36900.37000.37100.37500.37900.44300.382000 | Final cutting/polishing of stone flooring | 7d | 2026-12-06 | 2026-12-12 | 4235 |  | 7 Days Work | 9198244 |

| ID | WBS | Task | Duration | Start | Finish | Predecessors | Constraint | Calendar | Unique_Task_ID |
| --- | --- | --- | --- | --- | --- | --- | --- | --- | --- |
| 4237 | 36900.37000.37100.37500.37900.44300.58600 | **Toilet** | 237d | 2026-04-19 | 2026-12-11 |  | start no earlier than 2026-04-19 | 7 Days Work | 9197034 |
| 4238 | 36900.37000.37100.37500.37900.44300.58600.860500 | Toilet_MEP Clearance -1 | 7d | 2026-04-19 | 2026-04-25 | 4201 |  | 7 Days Work | 9206304 |
| 4239 | 36900.37000.37100.37500.37900.44300.58600.860600 | Toilet_Level Marking | 1d | 2026-04-26 | 2026-04-26 | 4238 |  | 7 Days Work | 9206314 |
| 4240 | 36900.37000.37100.37500.37900.44300.58600.860700 | Toilet_Chasing work for Electrical conduit & concealed plumbing | 5d | 2026-04-27 | 2026-05-01 | 4239 |  | 7 Days Work | 9206324 |
| 4241 | 36900.37000.37100.37500.37900.44300.58600.860800 | Toilet_Plumbing work 1st fix | 5d | 2026-05-02 | 2026-05-06 | 4240 |  | 7 Days Work | 9206334 |
| 4242 | 36900.37000.37100.37500.37900.44300.58600.860900 | Toilet_Sleeve/Bore Packing | 5d | 2026-05-07 | 2026-05-11 | 4241 |  | 7 Days Work | 9206344 |
| 4243 | 36900.37000.37100.37500.37900.44300.58600.861000 | Toilet_Waterproofing | 10d | 2026-05-12 | 2026-05-21 | 4242 |  | 7 Days Work | 9206354 |
| 4244 | 36900.37000.37100.37500.37900.44300.58600.861100 | Toilet_Screed | 1d | 2026-05-22 | 2026-05-22 | 4243 |  | 7 Days Work | 9206364 |
| 4245 | 36900.37000.37100.37500.37900.44300.58600.861200 | Toilet_Plumbing 2nd fix | 5d | 2026-05-23 | 2026-05-27 | 4244 |  | 7 Days Work | 9206374 |
| 4246 | 36900.37000.37100.37500.37900.44300.58600.861300 | Toilet_Ledge wall | 5d | 2026-05-28 | 2026-06-01 | 4245 |  | 7 Days Work | 9206384 |
| 4247 | 36900.37000.37100.37500.37900.44300.58600.861400 | Toilet_Cement Plaster | 5d | 2026-06-02 | 2026-06-06 | 4246 |  | 7 Days Work | 9206394 |
| 4248 | 36900.37000.37100.37500.37900.44300.58600.861500 | Toilet_Door Frame | 1d | 2026-06-07 | 2026-06-07 | 4247 |  | 7 Days Work | 9206404 |
| 4249 | 36900.37000.37100.37500.37900.44300.58600.861600 | Toilet_Wash basin & Couter | 3d | 2026-06-08 | 2026-06-10 | 4248 |  | 7 Days Work | 9206414 |
| 4250 | 36900.37000.37100.37500.37900.44300.58600.861700 | Toilet_Wall dado | 20d | 2026-06-11 | 2026-06-30 | 4249 |  | 7 Days Work | 9206424 |
| 4251 | 36900.37000.37100.37500.37900.44300.58600.861800 | Toilet_Granite Work-Ledge wall top | 3d | 2026-07-01 | 2026-07-03 | 4250 |  | 7 Days Work | 9206434 |
| 4252 | 36900.37000.37100.37500.37900.44300.58600.861900 | Toilet_Floor Tilling work | 20d | 2026-07-04 | 2026-07-23 | 4251 |  | 7 Days Work | 9206444 |
| 4253 | 36900.37000.37100.37500.37900.44300.58600.862000 | Toilet_1st row of dado | 5d | 2026-07-24 | 2026-07-28 | 4252 |  | 7 Days Work | 9206454 |
| 4254 | 36900.37000.37100.37500.37900.44300.58600.862100 | Toilet_Window Fixing | 14d | 2026-07-29 | 2026-08-11 | 4253 |  | 7 Days Work | 9206464 |
| 4255 | 36900.37000.37100.37500.37900.44300.58600.862200 | Toilet_Services above False ceiling | 21d | 2026-08-12 | 2026-09-01 | 4254 |  | 7 Days Work | 9206474 |
| 4256 | 36900.37000.37100.37500.37900.44300.58600.862300 | Toilet_False Ceiling framing | 12d | 2026-09-02 | 2026-09-13 | 4255 |  | 7 Days Work | 9206484 |
| 4257 | 36900.37000.37100.37500.37900.44300.58600.862400 | Toilet_Door Frame | 5d | 2026-09-14 | 2026-09-18 | 4256 |  | 7 Days Work | 9206494 |
| 4258 | 36900.37000.37100.37500.37900.44300.58600.862500 | Toilet_Epoxy Tile Grouting | 7d | 2026-11-14 | 2026-11-20 | 4233SS |  | 7 Days Work | 9206504 |
| 4259 | 36900.37000.37100.37500.37900.44300.58600.862600 | Toilet_False ceiling board fixing, CP Sanitary Fixture, Electric Fixture | 21d | 2026-11-21 | 2026-12-11 | 4258 |  | 7 Days Work | 9206514 |
| 4260 | 36900.37000.37100.37500.37900.44400 | **3rd Habitable/4th Floor** | 245d | 2026-04-21 | 2026-12-21 |  | start no earlier than 2026-04-21 | 7 Days Work | 9196844 |
| 4261 | 36900.37000.37100.37500.37900.44400.382100 | Post Pour | 7d | 2026-04-21 | 2026-04-27 | 4120FS+15d |  | 7 Days Work | 9198254 |
| 4262 | 36900.37000.37100.37500.37900.44400.382200 | MEP Clearance -1 | 5d | 2026-04-28 | 2026-05-02 | 4261 |  | 7 Days Work | 9198264 |
| 4263 | 36900.37000.37100.37500.37900.44400.382300 | Benchmark | 1d | 2026-05-03 | 2026-05-03 | 4262 |  | 7 Days Work | 9198274 |
| 4264 | 36900.37000.37100.37500.37900.44400.382400 | Temporary Railing | 3d | 2026-05-04 | 2026-05-06 | 4263 |  | 7 Days Work | 9198284 |
| 4265 | 36900.37000.37100.37500.37900.44400.382500 | Blockwork | 10d | 2026-05-07 | 2026-05-16 | 4264 |  | 7 Days Work | 9198294 |
| 4266 | 36900.37000.37100.37500.37900.44400.382600 | MEP Clearance -2 | 10d | 2026-05-17 | 2026-05-26 | 4265 |  | 7 Days Work | 9198304 |
| 4267 | 36900.37000.37100.37500.37900.44400.382700 | Gypsum Plaster | 14d | 2026-05-27 | 2026-06-09 | 4266 |  | 7 Days Work | 9198314 |
| 4268 | 36900.37000.37100.37500.37900.44400.382800 | Kitchen Platform | 3d | 2026-06-10 | 2026-06-12 | 4267 |  | 7 Days Work | 9198324 |
| 4269 | 36900.37000.37100.37500.37900.44400.382900 | Kitchen dado | 7d | 2026-06-13 | 2026-06-19 | 4268 |  | 7 Days Work | 9198334 |
| 4270 | 36900.37000.37100.37500.37900.44400.383000 | Fire Fighting | 5d | 2026-06-20 | 2026-06-24 | 4269 |  | 7 Days Work | 9198344 |
| 4271 | 36900.37000.37100.37500.37900.44400.383100 | Anticapilary | 5d | 2026-06-25 | 2026-06-29 | 4270 |  | 7 Days Work | 9198354 |
| 4272 | 36900.37000.37100.37500.37900.44400.383200 | Stone Laying | 10d | 2026-08-02 | 2026-08-11 | 4312 |  | 7 Days Work | 9198364 |
| 4273 | 36900.37000.37100.37500.37900.44400.383300 | Tiles Laying | 7d | 2026-08-02 | 2026-08-08 | 4312 |  | 7 Days Work | 9198374 |
| 4274 | 36900.37000.37100.37500.37900.44400.383400 | 1st cutting/polishing of stone flooring | 7d | 2026-08-09 | 2026-08-15 | 4273 |  | 7 Days Work | 9198384 |
| 4275 | 36900.37000.37100.37500.37900.44400.383500 | Tiles/Stone skirting | 5d | 2026-08-16 | 2026-08-20 | 4274 |  | 7 Days Work | 9198394 |
| 4276 | 36900.37000.37100.37500.37900.44400.383600 | Protechtion sheet | 1d | 2026-08-21 | 2026-08-21 | 4275 |  | 7 Days Work | 9198404 |
| 4277 | 36900.37000.37100.37500.37900.44400.383700 | Installation of Temporary Door | 1d | 2026-08-22 | 2026-08-22 | 4276 |  | 7 Days Work | 9198414 |
| 4278 | 36900.37000.37100.37500.37900.44400.383800 | Fixing of window tracks | 5d | 2026-08-23 | 2026-08-27 | 4277 |  | 7 Days Work | 9198424 |
| 4279 | 36900.37000.37100.37500.37900.44400.383900 | Wire Pulling | 7d | 2026-08-28 | 2026-09-03 | 4278 |  | 7 Days Work | 9198434 |
| 4280 | 36900.37000.37100.37500.37900.44400.384000 | Gypsum Remaining | 5d | 2026-09-04 | 2026-09-08 | 4279 |  | 7 Days Work | 9198444 |
| 4281 | 36900.37000.37100.37500.37900.44400.384100 | Fixing of windoow shutter | 5d | 2026-09-09 | 2026-09-13 | 4280 |  | 7 Days Work | 9198454 |
| 4282 | 36900.37000.37100.37500.37900.44400.384200 | Putty Works - walls & ceiling | 15d | 2026-09-14 | 2026-09-28 | 4281 |  | 7 Days Work | 9198464 |
| 4283 | 36900.37000.37100.37500.37900.44400.384300 | False Ceiling- Framing | 10d | 2026-09-29 | 2026-10-08 | 4282 |  | 7 Days Work | 9198474 |
| 4284 | 36900.37000.37100.37500.37900.44400.384400 | Pre Hung Door | 3d | 2026-10-09 | 2026-10-11 | 4283 |  | 7 Days Work | 9198484 |
| 4285 | 36900.37000.37100.37500.37900.44400.384500 | Protechtion sheet | 2d | 2026-10-12 | 2026-10-13 | 4284 |  | 7 Days Work | 9198494 |
| 4286 | 36900.37000.37100.37500.37900.44400.384600 | Skirting near door | 2d | 2026-10-14 | 2026-10-15 | 4285 |  | 7 Days Work | 9198504 |
| 4287 | 36900.37000.37100.37500.37900.44400.384700 | Electrical Switch box fixing | 14d | 2026-10-16 | 2026-10-29 | 4286 |  | 7 Days Work | 9198514 |
| 4288 | 36900.37000.37100.37500.37900.44400.384800 | Fire Fighting painting | 5d | 2026-10-30 | 2026-11-03 | 4287 |  | 7 Days Work | 9198524 |
| 4289 | 36900.37000.37100.37500.37900.44400.384900 | Protection of all flooring, door & window hardware | 5d | 2026-11-04 | 2026-11-08 | 4288 |  | 7 Days Work | 9198534 |
| 4290 | 36900.37000.37100.37500.37900.44400.385000 | 1st coat primer- ceiling 1st & walls | 14d | 2026-11-09 | 2026-11-22 | 4289 |  | 7 Days Work | 9198544 |
| 4291 | 36900.37000.37100.37500.37900.44400.385100 | Wooden Flooring | 5d | 2026-11-23 | 2026-11-27 | 4290 |  | 7 Days Work | 9198554 |
| 4292 | 36900.37000.37100.37500.37900.44400.385200 | Removing of Temporary Railing & installation of Glass Railing | 5d | 2026-11-23 | 2026-11-27 | 4290 |  | 7 Days Work | 9198564 |
| 4293 | 36900.37000.37100.37500.37900.44400.385300 | Tile Grouting | 7d | 2026-11-23 | 2026-11-29 | 4290 |  | 7 Days Work | 9198574 |
| 4294 | 36900.37000.37100.37500.37900.44400.385400 | False Ceiling | 5d | 2026-11-30 | 2026-12-04 | 4293 |  | 7 Days Work | 9198584 |
| 4295 | 36900.37000.37100.37500.37900.44400.385500 | 2nd coat of primer | 10d | 2026-12-05 | 2026-12-14 | 4294 |  | 7 Days Work | 9198594 |
| 4296 | 36900.37000.37100.37500.37900.44400.385600 | Final cutting/polishing of stone flooring | 7d | 2026-12-15 | 2026-12-21 | 4295 |  | 7 Days Work | 9198604 |

| ID | WBS | Task | Duration | Start | Finish | Predecessors | Constraint | Calendar | Unique_Task_ID |
| --- | --- | --- | --- | --- | --- | --- | --- | --- | --- |
| 4297 | 36900.37000.37100.37500.37900.44400.58700 | **Toilet** | 237d | 2026-04-28 | 2026-12-20 |  | start no earlier than 2026-04-28 | 7 Days Work | 9197044 |
| 4298 | 36900.37000.37100.37500.37900.44400.58700.862700 | Toilet_MEP Clearance -1 | 7d | 2026-04-28 | 2026-05-04 | 4261 |  | 7 Days Work | 9206524 |
| 4299 | 36900.37000.37100.37500.37900.44400.58700.862800 | Toilet_Level Marking | 1d | 2026-05-05 | 2026-05-05 | 4298 |  | 7 Days Work | 9206534 |
| 4300 | 36900.37000.37100.37500.37900.44400.58700.862900 | Toilet_Chasing work for Electrical conduit & concealed plumbing | 5d | 2026-05-06 | 2026-05-10 | 4299 |  | 7 Days Work | 9206544 |
| 4301 | 36900.37000.37100.37500.37900.44400.58700.863000 | Toilet_Plumbing work 1st fix | 5d | 2026-05-11 | 2026-05-15 | 4300 |  | 7 Days Work | 9206554 |
| 4302 | 36900.37000.37100.37500.37900.44400.58700.863100 | Toilet_Sleeve/Bore Packing | 5d | 2026-05-16 | 2026-05-20 | 4301 |  | 7 Days Work | 9206564 |
| 4303 | 36900.37000.37100.37500.37900.44400.58700.863200 | Toilet_Waterproofing | 10d | 2026-05-21 | 2026-05-30 | 4302 |  | 7 Days Work | 9206574 |
| 4304 | 36900.37000.37100.37500.37900.44400.58700.863300 | Toilet_Screed | 1d | 2026-05-31 | 2026-05-31 | 4303 |  | 7 Days Work | 9206584 |
| 4305 | 36900.37000.37100.37500.37900.44400.58700.863400 | Toilet_Plumbing 2nd fix | 5d | 2026-06-01 | 2026-06-05 | 4304 |  | 7 Days Work | 9206594 |
| 4306 | 36900.37000.37100.37500.37900.44400.58700.863500 | Toilet_Ledge wall | 5d | 2026-06-06 | 2026-06-10 | 4305 |  | 7 Days Work | 9206604 |
| 4307 | 36900.37000.37100.37500.37900.44400.58700.863600 | Toilet_Cement Plaster | 5d | 2026-06-11 | 2026-06-15 | 4306 |  | 7 Days Work | 9206614 |
| 4308 | 36900.37000.37100.37500.37900.44400.58700.863700 | Toilet_Door Frame | 1d | 2026-06-16 | 2026-06-16 | 4307 |  | 7 Days Work | 9206624 |
| 4309 | 36900.37000.37100.37500.37900.44400.58700.863800 | Toilet_Wash basin & Couter | 3d | 2026-06-17 | 2026-06-19 | 4308 |  | 7 Days Work | 9206634 |
| 4310 | 36900.37000.37100.37500.37900.44400.58700.863900 | Toilet_Wall dado | 20d | 2026-06-20 | 2026-07-09 | 4309 |  | 7 Days Work | 9206644 |
| 4311 | 36900.37000.37100.37500.37900.44400.58700.864000 | Toilet_Granite Work-Ledge wall top | 3d | 2026-07-10 | 2026-07-12 | 4310 |  | 7 Days Work | 9206654 |
| 4312 | 36900.37000.37100.37500.37900.44400.58700.864100 | Toilet_Floor Tilling work | 20d | 2026-07-13 | 2026-08-01 | 4311 |  | 7 Days Work | 9206664 |
| 4313 | 36900.37000.37100.37500.37900.44400.58700.864200 | Toilet_1st row of dado | 5d | 2026-08-02 | 2026-08-06 | 4312 |  | 7 Days Work | 9206674 |
| 4314 | 36900.37000.37100.37500.37900.44400.58700.864300 | Toilet_Window Fixing | 14d | 2026-08-07 | 2026-08-20 | 4313 |  | 7 Days Work | 9206684 |
| 4315 | 36900.37000.37100.37500.37900.44400.58700.864400 | Toilet_Services above False ceiling | 21d | 2026-08-21 | 2026-09-10 | 4314 |  | 7 Days Work | 9206694 |
| 4316 | 36900.37000.37100.37500.37900.44400.58700.864500 | Toilet_False Ceiling framing | 12d | 2026-09-11 | 2026-09-22 | 4315 |  | 7 Days Work | 9206704 |
| 4317 | 36900.37000.37100.37500.37900.44400.58700.864600 | Toilet_Door Frame | 5d | 2026-09-23 | 2026-09-27 | 4316 |  | 7 Days Work | 9206714 |
| 4318 | 36900.37000.37100.37500.37900.44400.58700.864700 | Toilet_Epoxy Tile Grouting | 7d | 2026-11-23 | 2026-11-29 | 4293SS |  | 7 Days Work | 9206724 |
| 4319 | 36900.37000.37100.37500.37900.44400.58700.864800 | Toilet_False ceiling board fixing, CP Sanitary Fixture, Electric Fixture | 21d | 2026-11-30 | 2026-12-20 | 4318 |  | 7 Days Work | 9206734 |
| 4320 | 36900.37000.37100.37500.37900.44500 | **4th Habitable/5th Floor** | 245d | 2026-04-30 | 2026-12-30 |  | start no earlier than 2026-04-30 | 7 Days Work | 9196854 |
| 4321 | 36900.37000.37100.37500.37900.44500.385700 | Post Pour | 7d | 2026-04-30 | 2026-05-06 | 4121FS+15d |  | 7 Days Work | 9198614 |
| 4322 | 36900.37000.37100.37500.37900.44500.385800 | MEP Clearance -1 | 5d | 2026-05-07 | 2026-05-11 | 4321 |  | 7 Days Work | 9198624 |
| 4323 | 36900.37000.37100.37500.37900.44500.385900 | Benchmark | 1d | 2026-05-12 | 2026-05-12 | 4322 |  | 7 Days Work | 9198634 |
| 4324 | 36900.37000.37100.37500.37900.44500.386000 | Temporary Railing | 3d | 2026-05-13 | 2026-05-15 | 4323 |  | 7 Days Work | 9198644 |
| 4325 | 36900.37000.37100.37500.37900.44500.386100 | Blockwork | 10d | 2026-05-16 | 2026-05-25 | 4324 |  | 7 Days Work | 9198654 |
| 4326 | 36900.37000.37100.37500.37900.44500.386200 | MEP Clearance -2 | 10d | 2026-05-26 | 2026-06-04 | 4325 |  | 7 Days Work | 9198664 |
| 4327 | 36900.37000.37100.37500.37900.44500.386300 | Gypsum Plaster | 14d | 2026-06-05 | 2026-06-18 | 4326 |  | 7 Days Work | 9198674 |
| 4328 | 36900.37000.37100.37500.37900.44500.386400 | Kitchen Platform | 3d | 2026-06-19 | 2026-06-21 | 4327 |  | 7 Days Work | 9198684 |
| 4329 | 36900.37000.37100.37500.37900.44500.386500 | Kitchen dado | 7d | 2026-06-22 | 2026-06-28 | 4328 |  | 7 Days Work | 9198694 |
| 4330 | 36900.37000.37100.37500.37900.44500.386600 | Fire Fighting | 5d | 2026-06-29 | 2026-07-03 | 4329 |  | 7 Days Work | 9198704 |
| 4331 | 36900.37000.37100.37500.37900.44500.386700 | Anticapilary | 5d | 2026-07-04 | 2026-07-08 | 4330 |  | 7 Days Work | 9198714 |
| 4332 | 36900.37000.37100.37500.37900.44500.386800 | Stone Laying | 10d | 2026-08-11 | 2026-08-20 | 4372 |  | 7 Days Work | 9198724 |
| 4333 | 36900.37000.37100.37500.37900.44500.386900 | Tiles Laying | 7d | 2026-08-11 | 2026-08-17 | 4372 |  | 7 Days Work | 9198734 |
| 4334 | 36900.37000.37100.37500.37900.44500.387000 | 1st cutting/polishing of stone flooring | 7d | 2026-08-18 | 2026-08-24 | 4333 |  | 7 Days Work | 9198744 |
| 4335 | 36900.37000.37100.37500.37900.44500.387100 | Tiles/Stone skirting | 5d | 2026-08-25 | 2026-08-29 | 4334 |  | 7 Days Work | 9198754 |
| 4336 | 36900.37000.37100.37500.37900.44500.387200 | Protechtion sheet | 1d | 2026-08-30 | 2026-08-30 | 4335 |  | 7 Days Work | 9198764 |
| 4337 | 36900.37000.37100.37500.37900.44500.387300 | Installation of Temporary Door | 1d | 2026-08-31 | 2026-08-31 | 4336 |  | 7 Days Work | 9198774 |
| 4338 | 36900.37000.37100.37500.37900.44500.387400 | Fixing of window tracks | 5d | 2026-09-01 | 2026-09-05 | 4337 |  | 7 Days Work | 9198784 |
| 4339 | 36900.37000.37100.37500.37900.44500.387500 | Wire Pulling | 7d | 2026-09-06 | 2026-09-12 | 4338 |  | 7 Days Work | 9198794 |
| 4340 | 36900.37000.37100.37500.37900.44500.387600 | Gypsum Remaining | 5d | 2026-09-13 | 2026-09-17 | 4339 |  | 7 Days Work | 9198804 |
| 4341 | 36900.37000.37100.37500.37900.44500.387700 | Fixing of windoow shutter | 5d | 2026-09-18 | 2026-09-22 | 4340 |  | 7 Days Work | 9198814 |
| 4342 | 36900.37000.37100.37500.37900.44500.387800 | Putty Works - walls & ceiling | 15d | 2026-09-23 | 2026-10-07 | 4341 |  | 7 Days Work | 9198824 |
| 4343 | 36900.37000.37100.37500.37900.44500.387900 | False Ceiling- Framing | 10d | 2026-10-08 | 2026-10-17 | 4342 |  | 7 Days Work | 9198834 |
| 4344 | 36900.37000.37100.37500.37900.44500.388000 | Pre Hung Door | 3d | 2026-10-18 | 2026-10-20 | 4343 |  | 7 Days Work | 9198844 |
| 4345 | 36900.37000.37100.37500.37900.44500.388100 | Protechtion sheet | 2d | 2026-10-21 | 2026-10-22 | 4344 |  | 7 Days Work | 9198854 |
| 4346 | 36900.37000.37100.37500.37900.44500.388200 | Skirting near door | 2d | 2026-10-23 | 2026-10-24 | 4345 |  | 7 Days Work | 9198864 |
| 4347 | 36900.37000.37100.37500.37900.44500.388300 | Electrical Switch box fixing | 14d | 2026-10-25 | 2026-11-07 | 4346 |  | 7 Days Work | 9198874 |
| 4348 | 36900.37000.37100.37500.37900.44500.388400 | Fire Fighting painting | 5d | 2026-11-08 | 2026-11-12 | 4347 |  | 7 Days Work | 9198884 |
| 4349 | 36900.37000.37100.37500.37900.44500.388500 | Protection of all flooring, door & window hardware | 5d | 2026-11-13 | 2026-11-17 | 4348 |  | 7 Days Work | 9198894 |
| 4350 | 36900.37000.37100.37500.37900.44500.388600 | 1st coat primer- ceiling 1st & walls | 14d | 2026-11-18 | 2026-12-01 | 4349 |  | 7 Days Work | 9198904 |
| 4351 | 36900.37000.37100.37500.37900.44500.388700 | Wooden Flooring | 5d | 2026-12-02 | 2026-12-06 | 4350 |  | 7 Days Work | 9198914 |
| 4352 | 36900.37000.37100.37500.37900.44500.388800 | Removing of Temporary Railing & installation of Glass Railing | 5d | 2026-12-02 | 2026-12-06 | 4350 |  | 7 Days Work | 9198924 |
| 4353 | 36900.37000.37100.37500.37900.44500.388900 | Tile Grouting | 7d | 2026-12-02 | 2026-12-08 | 4350 |  | 7 Days Work | 9198934 |
| 4354 | 36900.37000.37100.37500.37900.44500.389000 | False Ceiling | 5d | 2026-12-09 | 2026-12-13 | 4353 |  | 7 Days Work | 9198944 |
| 4355 | 36900.37000.37100.37500.37900.44500.389100 | 2nd coat of primer | 10d | 2026-12-14 | 2026-12-23 | 4354 |  | 7 Days Work | 9198954 |
| 4356 | 36900.37000.37100.37500.37900.44500.389200 | Final cutting/polishing of stone flooring | 7d | 2026-12-24 | 2026-12-30 | 4355 |  | 7 Days Work | 9198964 |

| ID | WBS | Task | Duration | Start | Finish | Predecessors | Constraint | Calendar | Unique_Task_ID |
| --- | --- | --- | --- | --- | --- | --- | --- | --- | --- |
| 4357 | 36900.37000.37100.37500.37900.44500.58800 | **Toilet** | 237d | 2026-05-07 | 2026-12-29 |  | start no earlier than 2026-05-07 | 7 Days Work | 9197054 |
| 4358 | 36900.37000.37100.37500.37900.44500.58800.864900 | Toilet_MEP Clearance -1 | 7d | 2026-05-07 | 2026-05-13 | 4321 |  | 7 Days Work | 9206744 |
| 4359 | 36900.37000.37100.37500.37900.44500.58800.865000 | Toilet_Level Marking | 1d | 2026-05-14 | 2026-05-14 | 4358 |  | 7 Days Work | 9206754 |
| 4360 | 36900.37000.37100.37500.37900.44500.58800.865100 | Toilet_Chasing work for Electrical conduit & concealed plumbing | 5d | 2026-05-15 | 2026-05-19 | 4359 |  | 7 Days Work | 9206764 |
| 4361 | 36900.37000.37100.37500.37900.44500.58800.865200 | Toilet_Plumbing work 1st fix | 5d | 2026-05-20 | 2026-05-24 | 4360 |  | 7 Days Work | 9206774 |
| 4362 | 36900.37000.37100.37500.37900.44500.58800.865300 | Toilet_Sleeve/Bore Packing | 5d | 2026-05-25 | 2026-05-29 | 4361 |  | 7 Days Work | 9206784 |
| 4363 | 36900.37000.37100.37500.37900.44500.58800.865400 | Toilet_Waterproofing | 10d | 2026-05-30 | 2026-06-08 | 4362 |  | 7 Days Work | 9206794 |
| 4364 | 36900.37000.37100.37500.37900.44500.58800.865500 | Toilet_Screed | 1d | 2026-06-09 | 2026-06-09 | 4363 |  | 7 Days Work | 9206804 |
| 4365 | 36900.37000.37100.37500.37900.44500.58800.865600 | Toilet_Plumbing 2nd fix | 5d | 2026-06-10 | 2026-06-14 | 4364 |  | 7 Days Work | 9206814 |
| 4366 | 36900.37000.37100.37500.37900.44500.58800.865700 | Toilet_Ledge wall | 5d | 2026-06-15 | 2026-06-19 | 4365 |  | 7 Days Work | 9206824 |
| 4367 | 36900.37000.37100.37500.37900.44500.58800.865800 | Toilet_Cement Plaster | 5d | 2026-06-20 | 2026-06-24 | 4366 |  | 7 Days Work | 9206834 |
| 4368 | 36900.37000.37100.37500.37900.44500.58800.865900 | Toilet_Door Frame | 1d | 2026-06-25 | 2026-06-25 | 4367 |  | 7 Days Work | 9206844 |
| 4369 | 36900.37000.37100.37500.37900.44500.58800.866000 | Toilet_Wash basin & Couter | 3d | 2026-06-26 | 2026-06-28 | 4368 |  | 7 Days Work | 9206854 |
| 4370 | 36900.37000.37100.37500.37900.44500.58800.866100 | Toilet_Wall dado | 20d | 2026-06-29 | 2026-07-18 | 4369 |  | 7 Days Work | 9206864 |
| 4371 | 36900.37000.37100.37500.37900.44500.58800.866200 | Toilet_Granite Work-Ledge wall top | 3d | 2026-07-19 | 2026-07-21 | 4370 |  | 7 Days Work | 9206874 |
| 4372 | 36900.37000.37100.37500.37900.44500.58800.866300 | Toilet_Floor Tilling work | 20d | 2026-07-22 | 2026-08-10 | 4371 |  | 7 Days Work | 9206884 |
| 4373 | 36900.37000.37100.37500.37900.44500.58800.866400 | Toilet_1st row of dado | 5d | 2026-08-11 | 2026-08-15 | 4372 |  | 7 Days Work | 9206894 |
| 4374 | 36900.37000.37100.37500.37900.44500.58800.866500 | Toilet_Window Fixing | 14d | 2026-08-16 | 2026-08-29 | 4373 |  | 7 Days Work | 9206904 |
| 4375 | 36900.37000.37100.37500.37900.44500.58800.866600 | Toilet_Services above False ceiling | 21d | 2026-08-30 | 2026-09-19 | 4374 |  | 7 Days Work | 9206914 |
| 4376 | 36900.37000.37100.37500.37900.44500.58800.866700 | Toilet_False Ceiling framing | 12d | 2026-09-20 | 2026-10-01 | 4375 |  | 7 Days Work | 9206924 |
| 4377 | 36900.37000.37100.37500.37900.44500.58800.866800 | Toilet_Door Frame | 5d | 2026-10-02 | 2026-10-06 | 4376 |  | 7 Days Work | 9206934 |
| 4378 | 36900.37000.37100.37500.37900.44500.58800.866900 | Toilet_Epoxy Tile Grouting | 7d | 2026-12-02 | 2026-12-08 | 4353SS |  | 7 Days Work | 9206944 |
| 4379 | 36900.37000.37100.37500.37900.44500.58800.867000 | Toilet_False ceiling board fixing, CP Sanitary Fixture, Electric Fixture | 21d | 2026-12-09 | 2026-12-29 | 4378 |  | 7 Days Work | 9206954 |
| 4380 | 36900.37000.37100.37500.37900.44600 | **5th Habitable/6th Floor** | 245d | 2026-05-12 | 2027-01-11 |  | start no earlier than 2026-05-12 | 7 Days Work | 9196864 |
| 4381 | 36900.37000.37100.37500.37900.44600.389300 | Post Pour | 7d | 2026-05-12 | 2026-05-18 | 4122FS+15d |  | 7 Days Work | 9198974 |
| 4382 | 36900.37000.37100.37500.37900.44600.389400 | MEP Clearance -1 | 5d | 2026-05-19 | 2026-05-23 | 4381 |  | 7 Days Work | 9198984 |
| 4383 | 36900.37000.37100.37500.37900.44600.389500 | Benchmark | 1d | 2026-05-24 | 2026-05-24 | 4382 |  | 7 Days Work | 9198994 |
| 4384 | 36900.37000.37100.37500.37900.44600.389600 | Temporary Railing | 3d | 2026-05-25 | 2026-05-27 | 4383 |  | 7 Days Work | 9199004 |
| 4385 | 36900.37000.37100.37500.37900.44600.389700 | Blockwork | 10d | 2026-05-28 | 2026-06-06 | 4384 |  | 7 Days Work | 9199014 |
| 4386 | 36900.37000.37100.37500.37900.44600.389800 | MEP Clearance -2 | 10d | 2026-06-07 | 2026-06-16 | 4385 |  | 7 Days Work | 9199024 |
| 4387 | 36900.37000.37100.37500.37900.44600.389900 | Gypsum Plaster | 14d | 2026-06-17 | 2026-06-30 | 4386 |  | 7 Days Work | 9199034 |
| 4388 | 36900.37000.37100.37500.37900.44600.390000 | Kitchen Platform | 3d | 2026-07-01 | 2026-07-03 | 4387 |  | 7 Days Work | 9199044 |
| 4389 | 36900.37000.37100.37500.37900.44600.390100 | Kitchen dado | 7d | 2026-07-04 | 2026-07-10 | 4388 |  | 7 Days Work | 9199054 |
| 4390 | 36900.37000.37100.37500.37900.44600.390200 | Fire Fighting | 5d | 2026-07-11 | 2026-07-15 | 4389 |  | 7 Days Work | 9199064 |
| 4391 | 36900.37000.37100.37500.37900.44600.390300 | Anticapilary | 5d | 2026-07-16 | 2026-07-20 | 4390 |  | 7 Days Work | 9199074 |
| 4392 | 36900.37000.37100.37500.37900.44600.390400 | Stone Laying | 10d | 2026-08-23 | 2026-09-01 | 4432 |  | 7 Days Work | 9199084 |
| 4393 | 36900.37000.37100.37500.37900.44600.390500 | Tiles Laying | 7d | 2026-08-23 | 2026-08-29 | 4432 |  | 7 Days Work | 9199094 |
| 4394 | 36900.37000.37100.37500.37900.44600.390600 | 1st cutting/polishing of stone flooring | 7d | 2026-08-30 | 2026-09-05 | 4393 |  | 7 Days Work | 9199104 |
| 4395 | 36900.37000.37100.37500.37900.44600.390700 | Tiles/Stone skirting | 5d | 2026-09-06 | 2026-09-10 | 4394 |  | 7 Days Work | 9199114 |
| 4396 | 36900.37000.37100.37500.37900.44600.390800 | Protechtion sheet | 1d | 2026-09-11 | 2026-09-11 | 4395 |  | 7 Days Work | 9199124 |
| 4397 | 36900.37000.37100.37500.37900.44600.390900 | Installation of Temporary Door | 1d | 2026-09-12 | 2026-09-12 | 4396 |  | 7 Days Work | 9199134 |
| 4398 | 36900.37000.37100.37500.37900.44600.391000 | Fixing of window tracks | 5d | 2026-09-13 | 2026-09-17 | 4397 |  | 7 Days Work | 9199144 |
| 4399 | 36900.37000.37100.37500.37900.44600.391100 | Wire Pulling | 7d | 2026-09-18 | 2026-09-24 | 4398 |  | 7 Days Work | 9199154 |
| 4400 | 36900.37000.37100.37500.37900.44600.391200 | Gypsum Remaining | 5d | 2026-09-25 | 2026-09-29 | 4399 |  | 7 Days Work | 9199164 |
| 4401 | 36900.37000.37100.37500.37900.44600.391300 | Fixing of windoow shutter | 5d | 2026-09-30 | 2026-10-04 | 4400 |  | 7 Days Work | 9199174 |
| 4402 | 36900.37000.37100.37500.37900.44600.391400 | Putty Works - walls & ceiling | 15d | 2026-10-05 | 2026-10-19 | 4401 |  | 7 Days Work | 9199184 |
| 4403 | 36900.37000.37100.37500.37900.44600.391500 | False Ceiling- Framing | 10d | 2026-10-20 | 2026-10-29 | 4402 |  | 7 Days Work | 9199194 |
| 4404 | 36900.37000.37100.37500.37900.44600.391600 | Pre Hung Door | 3d | 2026-10-30 | 2026-11-01 | 4403 |  | 7 Days Work | 9199204 |
| 4405 | 36900.37000.37100.37500.37900.44600.391700 | Protechtion sheet | 2d | 2026-11-02 | 2026-11-03 | 4404 |  | 7 Days Work | 9199214 |
| 4406 | 36900.37000.37100.37500.37900.44600.391800 | Skirting near door | 2d | 2026-11-04 | 2026-11-05 | 4405 |  | 7 Days Work | 9199224 |
| 4407 | 36900.37000.37100.37500.37900.44600.391900 | Electrical Switch box fixing | 14d | 2026-11-06 | 2026-11-19 | 4406 |  | 7 Days Work | 9199234 |
| 4408 | 36900.37000.37100.37500.37900.44600.392000 | Fire Fighting painting | 5d | 2026-11-20 | 2026-11-24 | 4407 |  | 7 Days Work | 9199244 |
| 4409 | 36900.37000.37100.37500.37900.44600.392100 | Protection of all flooring, door & window hardware | 5d | 2026-11-25 | 2026-11-29 | 4408 |  | 7 Days Work | 9199254 |
| 4410 | 36900.37000.37100.37500.37900.44600.392200 | 1st coat primer- ceiling 1st & walls | 14d | 2026-11-30 | 2026-12-13 | 4409 |  | 7 Days Work | 9199264 |
| 4411 | 36900.37000.37100.37500.37900.44600.392300 | Wooden Flooring | 5d | 2026-12-14 | 2026-12-18 | 4410 |  | 7 Days Work | 9199274 |
| 4412 | 36900.37000.37100.37500.37900.44600.392400 | Removing of Temporary Railing & installation of Glass Railing | 5d | 2026-12-14 | 2026-12-18 | 4410 |  | 7 Days Work | 9199284 |
| 4413 | 36900.37000.37100.37500.37900.44600.392500 | Tile Grouting | 7d | 2026-12-14 | 2026-12-20 | 4410 |  | 7 Days Work | 9199294 |
| 4414 | 36900.37000.37100.37500.37900.44600.392600 | False Ceiling | 5d | 2026-12-21 | 2026-12-25 | 4413 |  | 7 Days Work | 9199304 |
| 4415 | 36900.37000.37100.37500.37900.44600.392700 | 2nd coat of primer | 10d | 2026-12-26 | 2027-01-04 | 4414 |  | 7 Days Work | 9199314 |
| 4416 | 36900.37000.37100.37500.37900.44600.392800 | Final cutting/polishing of stone flooring | 7d | 2027-01-05 | 2027-01-11 | 4415 |  | 7 Days Work | 9199324 |

| ID | WBS | Task | Duration | Start | Finish | Predecessors | Constraint | Calendar | Unique_Task_ID |
| --- | --- | --- | --- | --- | --- | --- | --- | --- | --- |
| 4417 | 36900.37000.37100.37500.37900.44600.58900 | **Toilet** | 237d | 2026-05-19 | 2027-01-10 |  | start no earlier than 2026-05-19 | 7 Days Work | 9197064 |
| 4418 | 36900.37000.37100.37500.37900.44600.58900.867100 | Toilet_MEP Clearance -1 | 7d | 2026-05-19 | 2026-05-25 | 4381 |  | 7 Days Work | 9206964 |
| 4419 | 36900.37000.37100.37500.37900.44600.58900.867200 | Toilet_Level Marking | 1d | 2026-05-26 | 2026-05-26 | 4418 |  | 7 Days Work | 9206974 |
| 4420 | 36900.37000.37100.37500.37900.44600.58900.867300 | Toilet_Chasing work for Electrical conduit & concealed plumbing | 5d | 2026-05-27 | 2026-05-31 | 4419 |  | 7 Days Work | 9206984 |
| 4421 | 36900.37000.37100.37500.37900.44600.58900.867400 | Toilet_Plumbing work 1st fix | 5d | 2026-06-01 | 2026-06-05 | 4420 |  | 7 Days Work | 9206994 |
| 4422 | 36900.37000.37100.37500.37900.44600.58900.867500 | Toilet_Sleeve/Bore Packing | 5d | 2026-06-06 | 2026-06-10 | 4421 |  | 7 Days Work | 9207004 |
| 4423 | 36900.37000.37100.37500.37900.44600.58900.867600 | Toilet_Waterproofing | 10d | 2026-06-11 | 2026-06-20 | 4422 |  | 7 Days Work | 9207014 |
| 4424 | 36900.37000.37100.37500.37900.44600.58900.867700 | Toilet_Screed | 1d | 2026-06-21 | 2026-06-21 | 4423 |  | 7 Days Work | 9207024 |
| 4425 | 36900.37000.37100.37500.37900.44600.58900.867800 | Toilet_Plumbing 2nd fix | 5d | 2026-06-22 | 2026-06-26 | 4424 |  | 7 Days Work | 9207034 |
| 4426 | 36900.37000.37100.37500.37900.44600.58900.867900 | Toilet_Ledge wall | 5d | 2026-06-27 | 2026-07-01 | 4425 |  | 7 Days Work | 9207044 |
| 4427 | 36900.37000.37100.37500.37900.44600.58900.868000 | Toilet_Cement Plaster | 5d | 2026-07-02 | 2026-07-06 | 4426 |  | 7 Days Work | 9207054 |
| 4428 | 36900.37000.37100.37500.37900.44600.58900.868100 | Toilet_Door Frame | 1d | 2026-07-07 | 2026-07-07 | 4427 |  | 7 Days Work | 9207064 |
| 4429 | 36900.37000.37100.37500.37900.44600.58900.868200 | Toilet_Wash basin & Couter | 3d | 2026-07-08 | 2026-07-10 | 4428 |  | 7 Days Work | 9207074 |
| 4430 | 36900.37000.37100.37500.37900.44600.58900.868300 | Toilet_Wall dado | 20d | 2026-07-11 | 2026-07-30 | 4429 |  | 7 Days Work | 9207084 |
| 4431 | 36900.37000.37100.37500.37900.44600.58900.868400 | Toilet_Granite Work-Ledge wall top | 3d | 2026-07-31 | 2026-08-02 | 4430 |  | 7 Days Work | 9207094 |
| 4432 | 36900.37000.37100.37500.37900.44600.58900.868500 | Toilet_Floor Tilling work | 20d | 2026-08-03 | 2026-08-22 | 4431 |  | 7 Days Work | 9207104 |
| 4433 | 36900.37000.37100.37500.37900.44600.58900.868600 | Toilet_1st row of dado | 5d | 2026-08-23 | 2026-08-27 | 4432 |  | 7 Days Work | 9207114 |
| 4434 | 36900.37000.37100.37500.37900.44600.58900.868700 | Toilet_Window Fixing | 14d | 2026-08-28 | 2026-09-10 | 4433 |  | 7 Days Work | 9207124 |
| 4435 | 36900.37000.37100.37500.37900.44600.58900.868800 | Toilet_Services above False ceiling | 21d | 2026-09-11 | 2026-10-01 | 4434 |  | 7 Days Work | 9207134 |
| 4436 | 36900.37000.37100.37500.37900.44600.58900.868900 | Toilet_False Ceiling framing | 12d | 2026-10-02 | 2026-10-13 | 4435 |  | 7 Days Work | 9207144 |
| 4437 | 36900.37000.37100.37500.37900.44600.58900.869000 | Toilet_Door Frame | 5d | 2026-10-14 | 2026-10-18 | 4436 |  | 7 Days Work | 9207154 |
| 4438 | 36900.37000.37100.37500.37900.44600.58900.869100 | Toilet_Epoxy Tile Grouting | 7d | 2026-12-14 | 2026-12-20 | 4413SS |  | 7 Days Work | 9207164 |
| 4439 | 36900.37000.37100.37500.37900.44600.58900.869200 | Toilet_False ceiling board fixing, CP Sanitary Fixture, Electric Fixture | 21d | 2026-12-21 | 2027-01-10 | 4438 |  | 7 Days Work | 9207174 |
| 4440 | 36900.37000.37100.37500.37900.44700 | **6th Habitable/7th Floor** | 245d | 2026-05-21 | 2027-01-20 |  | start no earlier than 2026-05-21 | 7 Days Work | 9196874 |
| 4441 | 36900.37000.37100.37500.37900.44700.392900 | Post Pour | 7d | 2026-05-21 | 2026-05-27 | 4123FS+15d |  | 7 Days Work | 9199334 |
| 4442 | 36900.37000.37100.37500.37900.44700.393000 | MEP Clearance -1 | 5d | 2026-05-28 | 2026-06-01 | 4441 |  | 7 Days Work | 9199344 |
| 4443 | 36900.37000.37100.37500.37900.44700.393100 | Benchmark | 1d | 2026-06-02 | 2026-06-02 | 4442 |  | 7 Days Work | 9199354 |
| 4444 | 36900.37000.37100.37500.37900.44700.393200 | Temporary Railing | 3d | 2026-06-03 | 2026-06-05 | 4443 |  | 7 Days Work | 9199364 |
| 4445 | 36900.37000.37100.37500.37900.44700.393300 | Blockwork | 10d | 2026-06-06 | 2026-06-15 | 4444 |  | 7 Days Work | 9199374 |
| 4446 | 36900.37000.37100.37500.37900.44700.393400 | MEP Clearance -2 | 10d | 2026-06-16 | 2026-06-25 | 4445 |  | 7 Days Work | 9199384 |
| 4447 | 36900.37000.37100.37500.37900.44700.393500 | Gypsum Plaster | 14d | 2026-06-26 | 2026-07-09 | 4446 |  | 7 Days Work | 9199394 |
| 4448 | 36900.37000.37100.37500.37900.44700.393600 | Kitchen Platform | 3d | 2026-07-10 | 2026-07-12 | 4447 |  | 7 Days Work | 9199404 |
| 4449 | 36900.37000.37100.37500.37900.44700.393700 | Kitchen dado | 7d | 2026-07-13 | 2026-07-19 | 4448 |  | 7 Days Work | 9199414 |
| 4450 | 36900.37000.37100.37500.37900.44700.393800 | Fire Fighting | 5d | 2026-07-20 | 2026-07-24 | 4449 |  | 7 Days Work | 9199424 |
| 4451 | 36900.37000.37100.37500.37900.44700.393900 | Anticapilary | 5d | 2026-07-25 | 2026-07-29 | 4450 |  | 7 Days Work | 9199434 |
| 4452 | 36900.37000.37100.37500.37900.44700.394000 | Stone Laying | 10d | 2026-09-01 | 2026-09-10 | 4492 |  | 7 Days Work | 9199444 |
| 4453 | 36900.37000.37100.37500.37900.44700.394100 | Tiles Laying | 7d | 2026-09-01 | 2026-09-07 | 4492 |  | 7 Days Work | 9199454 |
| 4454 | 36900.37000.37100.37500.37900.44700.394200 | 1st cutting/polishing of stone flooring | 7d | 2026-09-08 | 2026-09-14 | 4453 |  | 7 Days Work | 9199464 |
| 4455 | 36900.37000.37100.37500.37900.44700.394300 | Tiles/Stone skirting | 5d | 2026-09-15 | 2026-09-19 | 4454 |  | 7 Days Work | 9199474 |
| 4456 | 36900.37000.37100.37500.37900.44700.394400 | Protechtion sheet | 1d | 2026-09-20 | 2026-09-20 | 4455 |  | 7 Days Work | 9199484 |
| 4457 | 36900.37000.37100.37500.37900.44700.394500 | Installation of Temporary Door | 1d | 2026-09-21 | 2026-09-21 | 4456 |  | 7 Days Work | 9199494 |
| 4458 | 36900.37000.37100.37500.37900.44700.394600 | Fixing of window tracks | 5d | 2026-09-22 | 2026-09-26 | 4457 |  | 7 Days Work | 9199504 |
| 4459 | 36900.37000.37100.37500.37900.44700.394700 | Wire Pulling | 7d | 2026-09-27 | 2026-10-03 | 4458 |  | 7 Days Work | 9199514 |
| 4460 | 36900.37000.37100.37500.37900.44700.394800 | Gypsum Remaining | 5d | 2026-10-04 | 2026-10-08 | 4459 |  | 7 Days Work | 9199524 |
| 4461 | 36900.37000.37100.37500.37900.44700.394900 | Fixing of windoow shutter | 5d | 2026-10-09 | 2026-10-13 | 4460 |  | 7 Days Work | 9199534 |
| 4462 | 36900.37000.37100.37500.37900.44700.395000 | Putty Works - walls & ceiling | 15d | 2026-10-14 | 2026-10-28 | 4461 |  | 7 Days Work | 9199544 |
| 4463 | 36900.37000.37100.37500.37900.44700.395100 | False Ceiling- Framing | 10d | 2026-10-29 | 2026-11-07 | 4462 |  | 7 Days Work | 9199554 |
| 4464 | 36900.37000.37100.37500.37900.44700.395200 | Pre Hung Door | 3d | 2026-11-08 | 2026-11-10 | 4463 |  | 7 Days Work | 9199564 |
| 4465 | 36900.37000.37100.37500.37900.44700.395300 | Protechtion sheet | 2d | 2026-11-11 | 2026-11-12 | 4464 |  | 7 Days Work | 9199574 |
| 4466 | 36900.37000.37100.37500.37900.44700.395400 | Skirting near door | 2d | 2026-11-13 | 2026-11-14 | 4465 |  | 7 Days Work | 9199584 |
| 4467 | 36900.37000.37100.37500.37900.44700.395500 | Electrical Switch box fixing | 14d | 2026-11-15 | 2026-11-28 | 4466 |  | 7 Days Work | 9199594 |
| 4468 | 36900.37000.37100.37500.37900.44700.395600 | Fire Fighting painting | 5d | 2026-11-29 | 2026-12-03 | 4467 |  | 7 Days Work | 9199604 |
| 4469 | 36900.37000.37100.37500.37900.44700.395700 | Protection of all flooring, door & window hardware | 5d | 2026-12-04 | 2026-12-08 | 4468 |  | 7 Days Work | 9199614 |
| 4470 | 36900.37000.37100.37500.37900.44700.395800 | 1st coat primer- ceiling 1st & walls | 14d | 2026-12-09 | 2026-12-22 | 4469 |  | 7 Days Work | 9199624 |
| 4471 | 36900.37000.37100.37500.37900.44700.395900 | Wooden Flooring | 5d | 2026-12-23 | 2026-12-27 | 4470 |  | 7 Days Work | 9199634 |
| 4472 | 36900.37000.37100.37500.37900.44700.396000 | Removing of Temporary Railing & installation of Glass Railing | 5d | 2026-12-23 | 2026-12-27 | 4470 |  | 7 Days Work | 9199644 |
| 4473 | 36900.37000.37100.37500.37900.44700.396100 | Tile Grouting | 7d | 2026-12-23 | 2026-12-29 | 4470 |  | 7 Days Work | 9199654 |
| 4474 | 36900.37000.37100.37500.37900.44700.396200 | False Ceiling | 5d | 2026-12-30 | 2027-01-03 | 4473 |  | 7 Days Work | 9199664 |
| 4475 | 36900.37000.37100.37500.37900.44700.396300 | 2nd coat of primer | 10d | 2027-01-04 | 2027-01-13 | 4474 |  | 7 Days Work | 9199674 |
| 4476 | 36900.37000.37100.37500.37900.44700.396400 | Final cutting/polishing of stone flooring | 7d | 2027-01-14 | 2027-01-20 | 4475 |  | 7 Days Work | 9199684 |

| ID | WBS | Task | Duration | Start | Finish | Predecessors | Constraint | Calendar | Unique_Task_ID |
| --- | --- | --- | --- | --- | --- | --- | --- | --- | --- |
| 4477 | 36900.37000.37100.37500.37900.44700.59000 | **Toilet** | 237d | 2026-05-28 | 2027-01-19 |  | start no earlier than 2026-05-28 | 7 Days Work | 9197074 |
| 4478 | 36900.37000.37100.37500.37900.44700.59000.869300 | Toilet_MEP Clearance -1 | 7d | 2026-05-28 | 2026-06-03 | 4441 |  | 7 Days Work | 9207184 |
| 4479 | 36900.37000.37100.37500.37900.44700.59000.869400 | Toilet_Level Marking | 1d | 2026-06-04 | 2026-06-04 | 4478 |  | 7 Days Work | 9207194 |
| 4480 | 36900.37000.37100.37500.37900.44700.59000.869500 | Toilet_Chasing work for Electrical conduit & concealed plumbing | 5d | 2026-06-05 | 2026-06-09 | 4479 |  | 7 Days Work | 9207204 |
| 4481 | 36900.37000.37100.37500.37900.44700.59000.869600 | Toilet_Plumbing work 1st fix | 5d | 2026-06-10 | 2026-06-14 | 4480 |  | 7 Days Work | 9207214 |
| 4482 | 36900.37000.37100.37500.37900.44700.59000.869700 | Toilet_Sleeve/Bore Packing | 5d | 2026-06-15 | 2026-06-19 | 4481 |  | 7 Days Work | 9207224 |
| 4483 | 36900.37000.37100.37500.37900.44700.59000.869800 | Toilet_Waterproofing | 10d | 2026-06-20 | 2026-06-29 | 4482 |  | 7 Days Work | 9207234 |
| 4484 | 36900.37000.37100.37500.37900.44700.59000.869900 | Toilet_Screed | 1d | 2026-06-30 | 2026-06-30 | 4483 |  | 7 Days Work | 9207244 |
| 4485 | 36900.37000.37100.37500.37900.44700.59000.870000 | Toilet_Plumbing 2nd fix | 5d | 2026-07-01 | 2026-07-05 | 4484 |  | 7 Days Work | 9207254 |
| 4486 | 36900.37000.37100.37500.37900.44700.59000.870100 | Toilet_Ledge wall | 5d | 2026-07-06 | 2026-07-10 | 4485 |  | 7 Days Work | 9207264 |
| 4487 | 36900.37000.37100.37500.37900.44700.59000.870200 | Toilet_Cement Plaster | 5d | 2026-07-11 | 2026-07-15 | 4486 |  | 7 Days Work | 9207274 |
| 4488 | 36900.37000.37100.37500.37900.44700.59000.870300 | Toilet_Door Frame | 1d | 2026-07-16 | 2026-07-16 | 4487 |  | 7 Days Work | 9207284 |
| 4489 | 36900.37000.37100.37500.37900.44700.59000.870400 | Toilet_Wash basin & Couter | 3d | 2026-07-17 | 2026-07-19 | 4488 |  | 7 Days Work | 9207294 |
| 4490 | 36900.37000.37100.37500.37900.44700.59000.870500 | Toilet_Wall dado | 20d | 2026-07-20 | 2026-08-08 | 4489 |  | 7 Days Work | 9207304 |
| 4491 | 36900.37000.37100.37500.37900.44700.59000.870600 | Toilet_Granite Work-Ledge wall top | 3d | 2026-08-09 | 2026-08-11 | 4490 |  | 7 Days Work | 9207314 |
| 4492 | 36900.37000.37100.37500.37900.44700.59000.870700 | Toilet_Floor Tilling work | 20d | 2026-08-12 | 2026-08-31 | 4491 |  | 7 Days Work | 9207324 |
| 4493 | 36900.37000.37100.37500.37900.44700.59000.870800 | Toilet_1st row of dado | 5d | 2026-09-01 | 2026-09-05 | 4492 |  | 7 Days Work | 9207334 |
| 4494 | 36900.37000.37100.37500.37900.44700.59000.870900 | Toilet_Window Fixing | 14d | 2026-09-06 | 2026-09-19 | 4493 |  | 7 Days Work | 9207344 |
| 4495 | 36900.37000.37100.37500.37900.44700.59000.871000 | Toilet_Services above False ceiling | 21d | 2026-09-20 | 2026-10-10 | 4494 |  | 7 Days Work | 9207354 |
| 4496 | 36900.37000.37100.37500.37900.44700.59000.871100 | Toilet_False Ceiling framing | 12d | 2026-10-11 | 2026-10-22 | 4495 |  | 7 Days Work | 9207364 |
| 4497 | 36900.37000.37100.37500.37900.44700.59000.871200 | Toilet_Door Frame | 5d | 2026-10-23 | 2026-10-27 | 4496 |  | 7 Days Work | 9207374 |
| 4498 | 36900.37000.37100.37500.37900.44700.59000.871300 | Toilet_Epoxy Tile Grouting | 7d | 2026-12-23 | 2026-12-29 | 4473SS |  | 7 Days Work | 9207384 |
| 4499 | 36900.37000.37100.37500.37900.44700.59000.871400 | Toilet_False ceiling board fixing, CP Sanitary Fixture, Electric Fixture | 21d | 2026-12-30 | 2027-01-19 | 4498 |  | 7 Days Work | 9207394 |
| 4500 | 36900.37000.37100.37500.37900.44800 | **7th Habitable/8th Floor** | 245d | 2026-05-30 | 2027-01-29 |  | start no earlier than 2026-05-30 | 7 Days Work | 9196884 |
| 4501 | 36900.37000.37100.37500.37900.44800.396500 | Post Pour | 7d | 2026-05-30 | 2026-06-05 | 4124FS+15d |  | 7 Days Work | 9199694 |
| 4502 | 36900.37000.37100.37500.37900.44800.396600 | MEP Clearance -1 | 5d | 2026-06-06 | 2026-06-10 | 4501 |  | 7 Days Work | 9199704 |
| 4503 | 36900.37000.37100.37500.37900.44800.396700 | Benchmark | 1d | 2026-06-11 | 2026-06-11 | 4502 |  | 7 Days Work | 9199714 |
| 4504 | 36900.37000.37100.37500.37900.44800.396800 | Temporary Railing | 3d | 2026-06-12 | 2026-06-14 | 4503 |  | 7 Days Work | 9199724 |
| 4505 | 36900.37000.37100.37500.37900.44800.396900 | Blockwork | 10d | 2026-06-15 | 2026-06-24 | 4504 |  | 7 Days Work | 9199734 |
| 4506 | 36900.37000.37100.37500.37900.44800.397000 | MEP Clearance -2 | 10d | 2026-06-25 | 2026-07-04 | 4505 |  | 7 Days Work | 9199744 |
| 4507 | 36900.37000.37100.37500.37900.44800.397100 | Gypsum Plaster | 14d | 2026-07-05 | 2026-07-18 | 4506 |  | 7 Days Work | 9199754 |
| 4508 | 36900.37000.37100.37500.37900.44800.397200 | Kitchen Platform | 3d | 2026-07-19 | 2026-07-21 | 4507 |  | 7 Days Work | 9199764 |
| 4509 | 36900.37000.37100.37500.37900.44800.397300 | Kitchen dado | 7d | 2026-07-22 | 2026-07-28 | 4508 |  | 7 Days Work | 9199774 |
| 4510 | 36900.37000.37100.37500.37900.44800.397400 | Fire Fighting | 5d | 2026-07-29 | 2026-08-02 | 4509 |  | 7 Days Work | 9199784 |
| 4511 | 36900.37000.37100.37500.37900.44800.397500 | Anticapilary | 5d | 2026-08-03 | 2026-08-07 | 4510 |  | 7 Days Work | 9199794 |
| 4512 | 36900.37000.37100.37500.37900.44800.397600 | Stone Laying | 10d | 2026-09-10 | 2026-09-19 | 4552 |  | 7 Days Work | 9199804 |
| 4513 | 36900.37000.37100.37500.37900.44800.397700 | Tiles Laying | 7d | 2026-09-10 | 2026-09-16 | 4552 |  | 7 Days Work | 9199814 |
| 4514 | 36900.37000.37100.37500.37900.44800.397800 | 1st cutting/polishing of stone flooring | 7d | 2026-09-17 | 2026-09-23 | 4513 |  | 7 Days Work | 9199824 |
| 4515 | 36900.37000.37100.37500.37900.44800.397900 | Tiles/Stone skirting | 5d | 2026-09-24 | 2026-09-28 | 4514 |  | 7 Days Work | 9199834 |
| 4516 | 36900.37000.37100.37500.37900.44800.398000 | Protechtion sheet | 1d | 2026-09-29 | 2026-09-29 | 4515 |  | 7 Days Work | 9199844 |
| 4517 | 36900.37000.37100.37500.37900.44800.398100 | Installation of Temporary Door | 1d | 2026-09-30 | 2026-09-30 | 4516 |  | 7 Days Work | 9199854 |
| 4518 | 36900.37000.37100.37500.37900.44800.398200 | Fixing of window tracks | 5d | 2026-10-01 | 2026-10-05 | 4517 |  | 7 Days Work | 9199864 |
| 4519 | 36900.37000.37100.37500.37900.44800.398300 | Wire Pulling | 7d | 2026-10-06 | 2026-10-12 | 4518 |  | 7 Days Work | 9199874 |
| 4520 | 36900.37000.37100.37500.37900.44800.398400 | Gypsum Remaining | 5d | 2026-10-13 | 2026-10-17 | 4519 |  | 7 Days Work | 9199884 |
| 4521 | 36900.37000.37100.37500.37900.44800.398500 | Fixing of windoow shutter | 5d | 2026-10-18 | 2026-10-22 | 4520 |  | 7 Days Work | 9199894 |
| 4522 | 36900.37000.37100.37500.37900.44800.398600 | Putty Works - walls & ceiling | 15d | 2026-10-23 | 2026-11-06 | 4521 |  | 7 Days Work | 9199904 |
| 4523 | 36900.37000.37100.37500.37900.44800.398700 | False Ceiling- Framing | 10d | 2026-11-07 | 2026-11-16 | 4522 |  | 7 Days Work | 9199914 |
| 4524 | 36900.37000.37100.37500.37900.44800.398800 | Pre Hung Door | 3d | 2026-11-17 | 2026-11-19 | 4523 |  | 7 Days Work | 9199924 |
| 4525 | 36900.37000.37100.37500.37900.44800.398900 | Protechtion sheet | 2d | 2026-11-20 | 2026-11-21 | 4524 |  | 7 Days Work | 9199934 |
| 4526 | 36900.37000.37100.37500.37900.44800.399000 | Skirting near door | 2d | 2026-11-22 | 2026-11-23 | 4525 |  | 7 Days Work | 9199944 |
| 4527 | 36900.37000.37100.37500.37900.44800.399100 | Electrical Switch box fixing | 14d | 2026-11-24 | 2026-12-07 | 4526 |  | 7 Days Work | 9199954 |
| 4528 | 36900.37000.37100.37500.37900.44800.399200 | Fire Fighting painting | 5d | 2026-12-08 | 2026-12-12 | 4527 |  | 7 Days Work | 9199964 |
| 4529 | 36900.37000.37100.37500.37900.44800.399300 | Protection of all flooring, door & window hardware | 5d | 2026-12-13 | 2026-12-17 | 4528 |  | 7 Days Work | 9199974 |
| 4530 | 36900.37000.37100.37500.37900.44800.399400 | 1st coat primer- ceiling 1st & walls | 14d | 2026-12-18 | 2026-12-31 | 4529 |  | 7 Days Work | 9199984 |
| 4531 | 36900.37000.37100.37500.37900.44800.399500 | Wooden Flooring | 5d | 2027-01-01 | 2027-01-05 | 4530 |  | 7 Days Work | 9199994 |
| 4532 | 36900.37000.37100.37500.37900.44800.399600 | Removing of Temporary Railing & installation of Glass Railing | 5d | 2027-01-01 | 2027-01-05 | 4530 |  | 7 Days Work | 9200004 |
| 4533 | 36900.37000.37100.37500.37900.44800.399700 | Tile Grouting | 7d | 2027-01-01 | 2027-01-07 | 4530 |  | 7 Days Work | 9200014 |
| 4534 | 36900.37000.37100.37500.37900.44800.399800 | False Ceiling | 5d | 2027-01-08 | 2027-01-12 | 4533 |  | 7 Days Work | 9200024 |
| 4535 | 36900.37000.37100.37500.37900.44800.399900 | 2nd coat of primer | 10d | 2027-01-13 | 2027-01-22 | 4534 |  | 7 Days Work | 9200034 |
| 4536 | 36900.37000.37100.37500.37900.44800.400000 | Final cutting/polishing of stone flooring | 7d | 2027-01-23 | 2027-01-29 | 4535 |  | 7 Days Work | 9200044 |

| ID | WBS | Task | Duration | Start | Finish | Predecessors | Constraint | Calendar | Unique_Task_ID |
| --- | --- | --- | --- | --- | --- | --- | --- | --- | --- |
| 4537 | 36900.37000.37100.37500.37900.44800.59100 | **Toilet** | 237d | 2026-06-06 | 2027-01-28 |  | start no earlier than 2026-06-06 | 7 Days Work | 9197084 |
| 4538 | 36900.37000.37100.37500.37900.44800.59100.871500 | Toilet_MEP Clearance -1 | 7d | 2026-06-06 | 2026-06-12 | 4501 |  | 7 Days Work | 9207404 |
| 4539 | 36900.37000.37100.37500.37900.44800.59100.871600 | Toilet_Level Marking | 1d | 2026-06-13 | 2026-06-13 | 4538 |  | 7 Days Work | 9207414 |
| 4540 | 36900.37000.37100.37500.37900.44800.59100.871700 | Toilet_Chasing work for Electrical conduit & concealed plumbing | 5d | 2026-06-14 | 2026-06-18 | 4539 |  | 7 Days Work | 9207424 |
| 4541 | 36900.37000.37100.37500.37900.44800.59100.871800 | Toilet_Plumbing work 1st fix | 5d | 2026-06-19 | 2026-06-23 | 4540 |  | 7 Days Work | 9207434 |
| 4542 | 36900.37000.37100.37500.37900.44800.59100.871900 | Toilet_Sleeve/Bore Packing | 5d | 2026-06-24 | 2026-06-28 | 4541 |  | 7 Days Work | 9207444 |
| 4543 | 36900.37000.37100.37500.37900.44800.59100.872000 | Toilet_Waterproofing | 10d | 2026-06-29 | 2026-07-08 | 4542 |  | 7 Days Work | 9207454 |
| 4544 | 36900.37000.37100.37500.37900.44800.59100.872100 | Toilet_Screed | 1d | 2026-07-09 | 2026-07-09 | 4543 |  | 7 Days Work | 9207464 |
| 4545 | 36900.37000.37100.37500.37900.44800.59100.872200 | Toilet_Plumbing 2nd fix | 5d | 2026-07-10 | 2026-07-14 | 4544 |  | 7 Days Work | 9207474 |
| 4546 | 36900.37000.37100.37500.37900.44800.59100.872300 | Toilet_Ledge wall | 5d | 2026-07-15 | 2026-07-19 | 4545 |  | 7 Days Work | 9207484 |
| 4547 | 36900.37000.37100.37500.37900.44800.59100.872400 | Toilet_Cement Plaster | 5d | 2026-07-20 | 2026-07-24 | 4546 |  | 7 Days Work | 9207494 |
| 4548 | 36900.37000.37100.37500.37900.44800.59100.872500 | Toilet_Door Frame | 1d | 2026-07-25 | 2026-07-25 | 4547 |  | 7 Days Work | 9207504 |
| 4549 | 36900.37000.37100.37500.37900.44800.59100.872600 | Toilet_Wash basin & Couter | 3d | 2026-07-26 | 2026-07-28 | 4548 |  | 7 Days Work | 9207514 |
| 4550 | 36900.37000.37100.37500.37900.44800.59100.872700 | Toilet_Wall dado | 20d | 2026-07-29 | 2026-08-17 | 4549 |  | 7 Days Work | 9207524 |
| 4551 | 36900.37000.37100.37500.37900.44800.59100.872800 | Toilet_Granite Work-Ledge wall top | 3d | 2026-08-18 | 2026-08-20 | 4550 |  | 7 Days Work | 9207534 |
| 4552 | 36900.37000.37100.37500.37900.44800.59100.872900 | Toilet_Floor Tilling work | 20d | 2026-08-21 | 2026-09-09 | 4551 |  | 7 Days Work | 9207544 |
| 4553 | 36900.37000.37100.37500.37900.44800.59100.873000 | Toilet_1st row of dado | 5d | 2026-09-10 | 2026-09-14 | 4552 |  | 7 Days Work | 9207554 |
| 4554 | 36900.37000.37100.37500.37900.44800.59100.873100 | Toilet_Window Fixing | 14d | 2026-09-15 | 2026-09-28 | 4553 |  | 7 Days Work | 9207564 |
| 4555 | 36900.37000.37100.37500.37900.44800.59100.873200 | Toilet_Services above False ceiling | 21d | 2026-09-29 | 2026-10-19 | 4554 |  | 7 Days Work | 9207574 |
| 4556 | 36900.37000.37100.37500.37900.44800.59100.873300 | Toilet_False Ceiling framing | 12d | 2026-10-20 | 2026-10-31 | 4555 |  | 7 Days Work | 9207584 |
| 4557 | 36900.37000.37100.37500.37900.44800.59100.873400 | Toilet_Door Frame | 5d | 2026-11-01 | 2026-11-05 | 4556 |  | 7 Days Work | 9207594 |
| 4558 | 36900.37000.37100.37500.37900.44800.59100.873500 | Toilet_Epoxy Tile Grouting | 7d | 2027-01-01 | 2027-01-07 | 4533SS |  | 7 Days Work | 9207604 |
| 4559 | 36900.37000.37100.37500.37900.44800.59100.873600 | Toilet_False ceiling board fixing, CP Sanitary Fixture, Electric Fixture | 21d | 2027-01-08 | 2027-01-28 | 4558 |  | 7 Days Work | 9207614 |
| 4560 | 36900.37000.37100.37500.37900.44900 | **8th Habitable/9th Floor** | 245d | 2026-06-08 | 2027-02-07 |  | start no earlier than 2026-06-08 | 7 Days Work | 9196894 |
| 4561 | 36900.37000.37100.37500.37900.44900.400100 | Post Pour | 7d | 2026-06-08 | 2026-06-14 | 4125FS+15d |  | 7 Days Work | 9200054 |
| 4562 | 36900.37000.37100.37500.37900.44900.400200 | MEP Clearance -1 | 5d | 2026-06-15 | 2026-06-19 | 4561 |  | 7 Days Work | 9200064 |
| 4563 | 36900.37000.37100.37500.37900.44900.400300 | Benchmark | 1d | 2026-06-20 | 2026-06-20 | 4562 |  | 7 Days Work | 9200074 |
| 4564 | 36900.37000.37100.37500.37900.44900.400400 | Temporary Railing | 3d | 2026-06-21 | 2026-06-23 | 4563 |  | 7 Days Work | 9200084 |
| 4565 | 36900.37000.37100.37500.37900.44900.400500 | Blockwork | 10d | 2026-06-24 | 2026-07-03 | 4564 |  | 7 Days Work | 9200094 |
| 4566 | 36900.37000.37100.37500.37900.44900.400600 | MEP Clearance -2 | 10d | 2026-07-04 | 2026-07-13 | 4565 |  | 7 Days Work | 9200104 |
| 4567 | 36900.37000.37100.37500.37900.44900.400700 | Gypsum Plaster | 14d | 2026-07-14 | 2026-07-27 | 4566 |  | 7 Days Work | 9200114 |
| 4568 | 36900.37000.37100.37500.37900.44900.400800 | Kitchen Platform | 3d | 2026-07-28 | 2026-07-30 | 4567 |  | 7 Days Work | 9200124 |
| 4569 | 36900.37000.37100.37500.37900.44900.400900 | Kitchen dado | 7d | 2026-07-31 | 2026-08-06 | 4568 |  | 7 Days Work | 9200134 |
| 4570 | 36900.37000.37100.37500.37900.44900.401000 | Fire Fighting | 5d | 2026-08-07 | 2026-08-11 | 4569 |  | 7 Days Work | 9200144 |
| 4571 | 36900.37000.37100.37500.37900.44900.401100 | Anticapilary | 5d | 2026-08-12 | 2026-08-16 | 4570 |  | 7 Days Work | 9200154 |
| 4572 | 36900.37000.37100.37500.37900.44900.401200 | Stone Laying | 10d | 2026-09-19 | 2026-09-28 | 4612 |  | 7 Days Work | 9200164 |
| 4573 | 36900.37000.37100.37500.37900.44900.401300 | Tiles Laying | 7d | 2026-09-19 | 2026-09-25 | 4612 |  | 7 Days Work | 9200174 |
| 4574 | 36900.37000.37100.37500.37900.44900.401400 | 1st cutting/polishing of stone flooring | 7d | 2026-09-26 | 2026-10-02 | 4573 |  | 7 Days Work | 9200184 |
| 4575 | 36900.37000.37100.37500.37900.44900.401500 | Tiles/Stone skirting | 5d | 2026-10-03 | 2026-10-07 | 4574 |  | 7 Days Work | 9200194 |
| 4576 | 36900.37000.37100.37500.37900.44900.401600 | Protechtion sheet | 1d | 2026-10-08 | 2026-10-08 | 4575 |  | 7 Days Work | 9200204 |
| 4577 | 36900.37000.37100.37500.37900.44900.401700 | Installation of Temporary Door | 1d | 2026-10-09 | 2026-10-09 | 4576 |  | 7 Days Work | 9200214 |
| 4578 | 36900.37000.37100.37500.37900.44900.401800 | Fixing of window tracks | 5d | 2026-10-10 | 2026-10-14 | 4577 |  | 7 Days Work | 9200224 |
| 4579 | 36900.37000.37100.37500.37900.44900.401900 | Wire Pulling | 7d | 2026-10-15 | 2026-10-21 | 4578 |  | 7 Days Work | 9200234 |
| 4580 | 36900.37000.37100.37500.37900.44900.402000 | Gypsum Remaining | 5d | 2026-10-22 | 2026-10-26 | 4579 |  | 7 Days Work | 9200244 |
| 4581 | 36900.37000.37100.37500.37900.44900.402100 | Fixing of windoow shutter | 5d | 2026-10-27 | 2026-10-31 | 4580 |  | 7 Days Work | 9200254 |
| 4582 | 36900.37000.37100.37500.37900.44900.402200 | Putty Works - walls & ceiling | 15d | 2026-11-01 | 2026-11-15 | 4581 |  | 7 Days Work | 9200264 |
| 4583 | 36900.37000.37100.37500.37900.44900.402300 | False Ceiling- Framing | 10d | 2026-11-16 | 2026-11-25 | 4582 |  | 7 Days Work | 9200274 |
| 4584 | 36900.37000.37100.37500.37900.44900.402400 | Pre Hung Door | 3d | 2026-11-26 | 2026-11-28 | 4583 |  | 7 Days Work | 9200284 |
| 4585 | 36900.37000.37100.37500.37900.44900.402500 | Protechtion sheet | 2d | 2026-11-29 | 2026-11-30 | 4584 |  | 7 Days Work | 9200294 |
| 4586 | 36900.37000.37100.37500.37900.44900.402600 | Skirting near door | 2d | 2026-12-01 | 2026-12-02 | 4585 |  | 7 Days Work | 9200304 |
| 4587 | 36900.37000.37100.37500.37900.44900.402700 | Electrical Switch box fixing | 14d | 2026-12-03 | 2026-12-16 | 4586 |  | 7 Days Work | 9200314 |
| 4588 | 36900.37000.37100.37500.37900.44900.402800 | Fire Fighting painting | 5d | 2026-12-17 | 2026-12-21 | 4587 |  | 7 Days Work | 9200324 |
| 4589 | 36900.37000.37100.37500.37900.44900.402900 | Protection of all flooring, door & window hardware | 5d | 2026-12-22 | 2026-12-26 | 4588 |  | 7 Days Work | 9200334 |
| 4590 | 36900.37000.37100.37500.37900.44900.403000 | 1st coat primer- ceiling 1st & walls | 14d | 2026-12-27 | 2027-01-09 | 4589 |  | 7 Days Work | 9200344 |
| 4591 | 36900.37000.37100.37500.37900.44900.403100 | Wooden Flooring | 5d | 2027-01-10 | 2027-01-14 | 4590 |  | 7 Days Work | 9200354 |
| 4592 | 36900.37000.37100.37500.37900.44900.403200 | Removing of Temporary Railing & installation of Glass Railing | 5d | 2027-01-10 | 2027-01-14 | 4590 |  | 7 Days Work | 9200364 |
| 4593 | 36900.37000.37100.37500.37900.44900.403300 | Tile Grouting | 7d | 2027-01-10 | 2027-01-16 | 4590 |  | 7 Days Work | 9200374 |
| 4594 | 36900.37000.37100.37500.37900.44900.403400 | False Ceiling | 5d | 2027-01-17 | 2027-01-21 | 4593 |  | 7 Days Work | 9200384 |
| 4595 | 36900.37000.37100.37500.37900.44900.403500 | 2nd coat of primer | 10d | 2027-01-22 | 2027-01-31 | 4594 |  | 7 Days Work | 9200394 |
| 4596 | 36900.37000.37100.37500.37900.44900.403600 | Final cutting/polishing of stone flooring | 7d | 2027-02-01 | 2027-02-07 | 4595 |  | 7 Days Work | 9200404 |

| ID | WBS | Task | Duration | Start | Finish | Predecessors | Constraint | Calendar | Unique_Task_ID |
| --- | --- | --- | --- | --- | --- | --- | --- | --- | --- |
| 4597 | 36900.37000.37100.37500.37900.44900.59200 | **Toilet** | 237d | 2026-06-15 | 2027-02-06 |  | start no earlier than 2026-06-15 | 7 Days Work | 9197094 |
| 4598 | 36900.37000.37100.37500.37900.44900.59200.873700 | Toilet_MEP Clearance -1 | 7d | 2026-06-15 | 2026-06-21 | 4561 |  | 7 Days Work | 9207624 |
| 4599 | 36900.37000.37100.37500.37900.44900.59200.873800 | Toilet_Level Marking | 1d | 2026-06-22 | 2026-06-22 | 4598 |  | 7 Days Work | 9207634 |
| 4600 | 36900.37000.37100.37500.37900.44900.59200.873900 | Toilet_Chasing work for Electrical conduit & concealed plumbing | 5d | 2026-06-23 | 2026-06-27 | 4599 |  | 7 Days Work | 9207644 |
| 4601 | 36900.37000.37100.37500.37900.44900.59200.874000 | Toilet_Plumbing work 1st fix | 5d | 2026-06-28 | 2026-07-02 | 4600 |  | 7 Days Work | 9207654 |
| 4602 | 36900.37000.37100.37500.37900.44900.59200.874100 | Toilet_Sleeve/Bore Packing | 5d | 2026-07-03 | 2026-07-07 | 4601 |  | 7 Days Work | 9207664 |
| 4603 | 36900.37000.37100.37500.37900.44900.59200.874200 | Toilet_Waterproofing | 10d | 2026-07-08 | 2026-07-17 | 4602 |  | 7 Days Work | 9207674 |
| 4604 | 36900.37000.37100.37500.37900.44900.59200.874300 | Toilet_Screed | 1d | 2026-07-18 | 2026-07-18 | 4603 |  | 7 Days Work | 9207684 |
| 4605 | 36900.37000.37100.37500.37900.44900.59200.874400 | Toilet_Plumbing 2nd fix | 5d | 2026-07-19 | 2026-07-23 | 4604 |  | 7 Days Work | 9207694 |
| 4606 | 36900.37000.37100.37500.37900.44900.59200.874500 | Toilet_Ledge wall | 5d | 2026-07-24 | 2026-07-28 | 4605 |  | 7 Days Work | 9207704 |
| 4607 | 36900.37000.37100.37500.37900.44900.59200.874600 | Toilet_Cement Plaster | 5d | 2026-07-29 | 2026-08-02 | 4606 |  | 7 Days Work | 9207714 |
| 4608 | 36900.37000.37100.37500.37900.44900.59200.874700 | Toilet_Door Frame | 1d | 2026-08-03 | 2026-08-03 | 4607 |  | 7 Days Work | 9207724 |
| 4609 | 36900.37000.37100.37500.37900.44900.59200.874800 | Toilet_Wash basin & Couter | 3d | 2026-08-04 | 2026-08-06 | 4608 |  | 7 Days Work | 9207734 |
| 4610 | 36900.37000.37100.37500.37900.44900.59200.874900 | Toilet_Wall dado | 20d | 2026-08-07 | 2026-08-26 | 4609 |  | 7 Days Work | 9207744 |
| 4611 | 36900.37000.37100.37500.37900.44900.59200.875000 | Toilet_Granite Work-Ledge wall top | 3d | 2026-08-27 | 2026-08-29 | 4610 |  | 7 Days Work | 9207754 |
| 4612 | 36900.37000.37100.37500.37900.44900.59200.875100 | Toilet_Floor Tilling work | 20d | 2026-08-30 | 2026-09-18 | 4611 |  | 7 Days Work | 9207764 |
| 4613 | 36900.37000.37100.37500.37900.44900.59200.875200 | Toilet_1st row of dado | 5d | 2026-09-19 | 2026-09-23 | 4612 |  | 7 Days Work | 9207774 |
| 4614 | 36900.37000.37100.37500.37900.44900.59200.875300 | Toilet_Window Fixing | 14d | 2026-09-24 | 2026-10-07 | 4613 |  | 7 Days Work | 9207784 |
| 4615 | 36900.37000.37100.37500.37900.44900.59200.875400 | Toilet_Services above False ceiling | 21d | 2026-10-08 | 2026-10-28 | 4614 |  | 7 Days Work | 9207794 |
| 4616 | 36900.37000.37100.37500.37900.44900.59200.875500 | Toilet_False Ceiling framing | 12d | 2026-10-29 | 2026-11-09 | 4615 |  | 7 Days Work | 9207804 |
| 4617 | 36900.37000.37100.37500.37900.44900.59200.875600 | Toilet_Door Frame | 5d | 2026-11-10 | 2026-11-14 | 4616 |  | 7 Days Work | 9207814 |
| 4618 | 36900.37000.37100.37500.37900.44900.59200.875700 | Toilet_Epoxy Tile Grouting | 7d | 2027-01-10 | 2027-01-16 | 4593SS |  | 7 Days Work | 9207824 |
| 4619 | 36900.37000.37100.37500.37900.44900.59200.875800 | Toilet_False ceiling board fixing, CP Sanitary Fixture, Electric Fixture | 21d | 2027-01-17 | 2027-02-06 | 4618 |  | 7 Days Work | 9207834 |
| 4620 | 36900.37000.37100.37500.37900.45000 | **9th Habitable/10th Floor** | 245d | 2026-06-20 | 2027-02-19 |  | start no earlier than 2026-06-20 | 7 Days Work | 9196904 |
| 4621 | 36900.37000.37100.37500.37900.45000.403700 | Post Pour | 7d | 2026-06-20 | 2026-06-26 | 4126FS+15d |  | 7 Days Work | 9200414 |
| 4622 | 36900.37000.37100.37500.37900.45000.403800 | MEP Clearance -1 | 5d | 2026-06-27 | 2026-07-01 | 4621 |  | 7 Days Work | 9200424 |
| 4623 | 36900.37000.37100.37500.37900.45000.403900 | Benchmark | 1d | 2026-07-02 | 2026-07-02 | 4622 |  | 7 Days Work | 9200434 |
| 4624 | 36900.37000.37100.37500.37900.45000.404000 | Temporary Railing | 3d | 2026-07-03 | 2026-07-05 | 4623 |  | 7 Days Work | 9200444 |
| 4625 | 36900.37000.37100.37500.37900.45000.404100 | Blockwork | 10d | 2026-07-06 | 2026-07-15 | 4624 |  | 7 Days Work | 9200454 |
| 4626 | 36900.37000.37100.37500.37900.45000.404200 | MEP Clearance -2 | 10d | 2026-07-16 | 2026-07-25 | 4625 |  | 7 Days Work | 9200464 |
| 4627 | 36900.37000.37100.37500.37900.45000.404300 | Gypsum Plaster | 14d | 2026-07-26 | 2026-08-08 | 4626 |  | 7 Days Work | 9200474 |
| 4628 | 36900.37000.37100.37500.37900.45000.404400 | Kitchen Platform | 3d | 2026-08-09 | 2026-08-11 | 4627 |  | 7 Days Work | 9200484 |
| 4629 | 36900.37000.37100.37500.37900.45000.404500 | Kitchen dado | 7d | 2026-08-12 | 2026-08-18 | 4628 |  | 7 Days Work | 9200494 |
| 4630 | 36900.37000.37100.37500.37900.45000.404600 | Fire Fighting | 5d | 2026-08-19 | 2026-08-23 | 4629 |  | 7 Days Work | 9200504 |
| 4631 | 36900.37000.37100.37500.37900.45000.404700 | Anticapilary | 5d | 2026-08-24 | 2026-08-28 | 4630 |  | 7 Days Work | 9200514 |
| 4632 | 36900.37000.37100.37500.37900.45000.404800 | Stone Laying | 10d | 2026-10-01 | 2026-10-10 | 4672 |  | 7 Days Work | 9200524 |
| 4633 | 36900.37000.37100.37500.37900.45000.404900 | Tiles Laying | 7d | 2026-10-01 | 2026-10-07 | 4672 |  | 7 Days Work | 9200534 |
| 4634 | 36900.37000.37100.37500.37900.45000.405000 | 1st cutting/polishing of stone flooring | 7d | 2026-10-08 | 2026-10-14 | 4633 |  | 7 Days Work | 9200544 |
| 4635 | 36900.37000.37100.37500.37900.45000.405100 | Tiles/Stone skirting | 5d | 2026-10-15 | 2026-10-19 | 4634 |  | 7 Days Work | 9200554 |
| 4636 | 36900.37000.37100.37500.37900.45000.405200 | Protechtion sheet | 1d | 2026-10-20 | 2026-10-20 | 4635 |  | 7 Days Work | 9200564 |
| 4637 | 36900.37000.37100.37500.37900.45000.405300 | Installation of Temporary Door | 1d | 2026-10-21 | 2026-10-21 | 4636 |  | 7 Days Work | 9200574 |
| 4638 | 36900.37000.37100.37500.37900.45000.405400 | Fixing of window tracks | 5d | 2026-10-22 | 2026-10-26 | 4637 |  | 7 Days Work | 9200584 |
| 4639 | 36900.37000.37100.37500.37900.45000.405500 | Wire Pulling | 7d | 2026-10-27 | 2026-11-02 | 4638 |  | 7 Days Work | 9200594 |
| 4640 | 36900.37000.37100.37500.37900.45000.405600 | Gypsum Remaining | 5d | 2026-11-03 | 2026-11-07 | 4639 |  | 7 Days Work | 9200604 |
| 4641 | 36900.37000.37100.37500.37900.45000.405700 | Fixing of windoow shutter | 5d | 2026-11-08 | 2026-11-12 | 4640 |  | 7 Days Work | 9200614 |
| 4642 | 36900.37000.37100.37500.37900.45000.405800 | Putty Works - walls & ceiling | 15d | 2026-11-13 | 2026-11-27 | 4641 |  | 7 Days Work | 9200624 |
| 4643 | 36900.37000.37100.37500.37900.45000.405900 | False Ceiling- Framing | 10d | 2026-11-28 | 2026-12-07 | 4642 |  | 7 Days Work | 9200634 |
| 4644 | 36900.37000.37100.37500.37900.45000.406000 | Pre Hung Door | 3d | 2026-12-08 | 2026-12-10 | 4643 |  | 7 Days Work | 9200644 |
| 4645 | 36900.37000.37100.37500.37900.45000.406100 | Protechtion sheet | 2d | 2026-12-11 | 2026-12-12 | 4644 |  | 7 Days Work | 9200654 |
| 4646 | 36900.37000.37100.37500.37900.45000.406200 | Skirting near door | 2d | 2026-12-13 | 2026-12-14 | 4645 |  | 7 Days Work | 9200664 |
| 4647 | 36900.37000.37100.37500.37900.45000.406300 | Electrical Switch box fixing | 14d | 2026-12-15 | 2026-12-28 | 4646 |  | 7 Days Work | 9200674 |
| 4648 | 36900.37000.37100.37500.37900.45000.406400 | Fire Fighting painting | 5d | 2026-12-29 | 2027-01-02 | 4647 |  | 7 Days Work | 9200684 |
| 4649 | 36900.37000.37100.37500.37900.45000.406500 | Protection of all flooring, door & window hardware | 5d | 2027-01-03 | 2027-01-07 | 4648 |  | 7 Days Work | 9200694 |
| 4650 | 36900.37000.37100.37500.37900.45000.406600 | 1st coat primer- ceiling 1st & walls | 14d | 2027-01-08 | 2027-01-21 | 4649 |  | 7 Days Work | 9200704 |
| 4651 | 36900.37000.37100.37500.37900.45000.406700 | Wooden Flooring | 5d | 2027-01-22 | 2027-01-26 | 4650 |  | 7 Days Work | 9200714 |
| 4652 | 36900.37000.37100.37500.37900.45000.406800 | Removing of Temporary Railing & installation of Glass Railing | 5d | 2027-01-22 | 2027-01-26 | 4650 |  | 7 Days Work | 9200724 |
| 4653 | 36900.37000.37100.37500.37900.45000.406900 | Tile Grouting | 7d | 2027-01-22 | 2027-01-28 | 4650 |  | 7 Days Work | 9200734 |
| 4654 | 36900.37000.37100.37500.37900.45000.407000 | False Ceiling | 5d | 2027-01-29 | 2027-02-02 | 4653 |  | 7 Days Work | 9200744 |
| 4655 | 36900.37000.37100.37500.37900.45000.407100 | 2nd coat of primer | 10d | 2027-02-03 | 2027-02-12 | 4654 |  | 7 Days Work | 9200754 |
| 4656 | 36900.37000.37100.37500.37900.45000.407200 | Final cutting/polishing of stone flooring | 7d | 2027-02-13 | 2027-02-19 | 4655 |  | 7 Days Work | 9200764 |

| ID | WBS | Task | Duration | Start | Finish | Predecessors | Constraint | Calendar | Unique_Task_ID |
| --- | --- | --- | --- | --- | --- | --- | --- | --- | --- |
| 4657 | 36900.37000.37100.37500.37900.45000.59300 | **Toilet** | 237d | 2026-06-27 | 2027-02-18 |  | start no earlier than 2026-06-27 | 7 Days Work | 9197104 |
| 4658 | 36900.37000.37100.37500.37900.45000.59300.875900 | Toilet_MEP Clearance -1 | 7d | 2026-06-27 | 2026-07-03 | 4621 |  | 7 Days Work | 9207844 |
| 4659 | 36900.37000.37100.37500.37900.45000.59300.876000 | Toilet_Level Marking | 1d | 2026-07-04 | 2026-07-04 | 4658 |  | 7 Days Work | 9207854 |
| 4660 | 36900.37000.37100.37500.37900.45000.59300.876100 | Toilet_Chasing work for Electrical conduit & concealed plumbing | 5d | 2026-07-05 | 2026-07-09 | 4659 |  | 7 Days Work | 9207864 |
| 4661 | 36900.37000.37100.37500.37900.45000.59300.876200 | Toilet_Plumbing work 1st fix | 5d | 2026-07-10 | 2026-07-14 | 4660 |  | 7 Days Work | 9207874 |
| 4662 | 36900.37000.37100.37500.37900.45000.59300.876300 | Toilet_Sleeve/Bore Packing | 5d | 2026-07-15 | 2026-07-19 | 4661 |  | 7 Days Work | 9207884 |
| 4663 | 36900.37000.37100.37500.37900.45000.59300.876400 | Toilet_Waterproofing | 10d | 2026-07-20 | 2026-07-29 | 4662 |  | 7 Days Work | 9207894 |
| 4664 | 36900.37000.37100.37500.37900.45000.59300.876500 | Toilet_Screed | 1d | 2026-07-30 | 2026-07-30 | 4663 |  | 7 Days Work | 9207904 |
| 4665 | 36900.37000.37100.37500.37900.45000.59300.876600 | Toilet_Plumbing 2nd fix | 5d | 2026-07-31 | 2026-08-04 | 4664 |  | 7 Days Work | 9207914 |
| 4666 | 36900.37000.37100.37500.37900.45000.59300.876700 | Toilet_Ledge wall | 5d | 2026-08-05 | 2026-08-09 | 4665 |  | 7 Days Work | 9207924 |
| 4667 | 36900.37000.37100.37500.37900.45000.59300.876800 | Toilet_Cement Plaster | 5d | 2026-08-10 | 2026-08-14 | 4666 |  | 7 Days Work | 9207934 |
| 4668 | 36900.37000.37100.37500.37900.45000.59300.876900 | Toilet_Door Frame | 1d | 2026-08-15 | 2026-08-15 | 4667 |  | 7 Days Work | 9207944 |
| 4669 | 36900.37000.37100.37500.37900.45000.59300.877000 | Toilet_Wash basin & Couter | 3d | 2026-08-16 | 2026-08-18 | 4668 |  | 7 Days Work | 9207954 |
| 4670 | 36900.37000.37100.37500.37900.45000.59300.877100 | Toilet_Wall dado | 20d | 2026-08-19 | 2026-09-07 | 4669 |  | 7 Days Work | 9207964 |
| 4671 | 36900.37000.37100.37500.37900.45000.59300.877200 | Toilet_Granite Work-Ledge wall top | 3d | 2026-09-08 | 2026-09-10 | 4670 |  | 7 Days Work | 9207974 |
| 4672 | 36900.37000.37100.37500.37900.45000.59300.877300 | Toilet_Floor Tilling work | 20d | 2026-09-11 | 2026-09-30 | 4671 |  | 7 Days Work | 9207984 |
| 4673 | 36900.37000.37100.37500.37900.45000.59300.877400 | Toilet_1st row of dado | 5d | 2026-10-01 | 2026-10-05 | 4672 |  | 7 Days Work | 9207994 |
| 4674 | 36900.37000.37100.37500.37900.45000.59300.877500 | Toilet_Window Fixing | 14d | 2026-10-06 | 2026-10-19 | 4673 |  | 7 Days Work | 9208004 |
| 4675 | 36900.37000.37100.37500.37900.45000.59300.877600 | Toilet_Services above False ceiling | 21d | 2026-10-20 | 2026-11-09 | 4674 |  | 7 Days Work | 9208014 |
| 4676 | 36900.37000.37100.37500.37900.45000.59300.877700 | Toilet_False Ceiling framing | 12d | 2026-11-10 | 2026-11-21 | 4675 |  | 7 Days Work | 9208024 |
| 4677 | 36900.37000.37100.37500.37900.45000.59300.877800 | Toilet_Door Frame | 5d | 2026-11-22 | 2026-11-26 | 4676 |  | 7 Days Work | 9208034 |
| 4678 | 36900.37000.37100.37500.37900.45000.59300.877900 | Toilet_Epoxy Tile Grouting | 7d | 2027-01-22 | 2027-01-28 | 4653SS |  | 7 Days Work | 9208044 |
| 4679 | 36900.37000.37100.37500.37900.45000.59300.878000 | Toilet_False ceiling board fixing, CP Sanitary Fixture, Electric Fixture | 21d | 2027-01-29 | 2027-02-18 | 4678 |  | 7 Days Work | 9208054 |
| 4680 | 36900.37000.37100.37500.37900.45100 | **10th Habitable/11th Floor** | 245d | 2026-06-29 | 2027-02-28 |  | start no earlier than 2026-06-29 | 7 Days Work | 9196914 |
| 4681 | 36900.37000.37100.37500.37900.45100.407300 | Post Pour | 7d | 2026-06-29 | 2026-07-05 | 4127FS+15d |  | 7 Days Work | 9200774 |
| 4682 | 36900.37000.37100.37500.37900.45100.407400 | MEP Clearance -1 | 5d | 2026-07-06 | 2026-07-10 | 4681 |  | 7 Days Work | 9200784 |
| 4683 | 36900.37000.37100.37500.37900.45100.407500 | Benchmark | 1d | 2026-07-11 | 2026-07-11 | 4682 |  | 7 Days Work | 9200794 |
| 4684 | 36900.37000.37100.37500.37900.45100.407600 | Temporary Railing | 3d | 2026-07-12 | 2026-07-14 | 4683 |  | 7 Days Work | 9200804 |
| 4685 | 36900.37000.37100.37500.37900.45100.407700 | Blockwork | 10d | 2026-07-15 | 2026-07-24 | 4684 |  | 7 Days Work | 9200814 |
| 4686 | 36900.37000.37100.37500.37900.45100.407800 | MEP Clearance -2 | 10d | 2026-07-25 | 2026-08-03 | 4685 |  | 7 Days Work | 9200824 |
| 4687 | 36900.37000.37100.37500.37900.45100.407900 | Gypsum Plaster | 14d | 2026-08-04 | 2026-08-17 | 4686 |  | 7 Days Work | 9200834 |
| 4688 | 36900.37000.37100.37500.37900.45100.408000 | Kitchen Platform | 3d | 2026-08-18 | 2026-08-20 | 4687 |  | 7 Days Work | 9200844 |
| 4689 | 36900.37000.37100.37500.37900.45100.408100 | Kitchen dado | 7d | 2026-08-21 | 2026-08-27 | 4688 |  | 7 Days Work | 9200854 |
| 4690 | 36900.37000.37100.37500.37900.45100.408200 | Fire Fighting | 5d | 2026-08-28 | 2026-09-01 | 4689 |  | 7 Days Work | 9200864 |
| 4691 | 36900.37000.37100.37500.37900.45100.408300 | Anticapilary | 5d | 2026-09-02 | 2026-09-06 | 4690 |  | 7 Days Work | 9200874 |
| 4692 | 36900.37000.37100.37500.37900.45100.408400 | Stone Laying | 10d | 2026-10-10 | 2026-10-19 | 4732 |  | 7 Days Work | 9200884 |
| 4693 | 36900.37000.37100.37500.37900.45100.408500 | Tiles Laying | 7d | 2026-10-10 | 2026-10-16 | 4732 |  | 7 Days Work | 9200894 |
| 4694 | 36900.37000.37100.37500.37900.45100.408600 | 1st cutting/polishing of stone flooring | 7d | 2026-10-17 | 2026-10-23 | 4693 |  | 7 Days Work | 9200904 |
| 4695 | 36900.37000.37100.37500.37900.45100.408700 | Tiles/Stone skirting | 5d | 2026-10-24 | 2026-10-28 | 4694 |  | 7 Days Work | 9200914 |
| 4696 | 36900.37000.37100.37500.37900.45100.408800 | Protechtion sheet | 1d | 2026-10-29 | 2026-10-29 | 4695 |  | 7 Days Work | 9200924 |
| 4697 | 36900.37000.37100.37500.37900.45100.408900 | Installation of Temporary Door | 1d | 2026-10-30 | 2026-10-30 | 4696 |  | 7 Days Work | 9200934 |
| 4698 | 36900.37000.37100.37500.37900.45100.409000 | Fixing of window tracks | 5d | 2026-10-31 | 2026-11-04 | 4697 |  | 7 Days Work | 9200944 |
| 4699 | 36900.37000.37100.37500.37900.45100.409100 | Wire Pulling | 7d | 2026-11-05 | 2026-11-11 | 4698 |  | 7 Days Work | 9200954 |
| 4700 | 36900.37000.37100.37500.37900.45100.409200 | Gypsum Remaining | 5d | 2026-11-12 | 2026-11-16 | 4699 |  | 7 Days Work | 9200964 |
| 4701 | 36900.37000.37100.37500.37900.45100.409300 | Fixing of windoow shutter | 5d | 2026-11-17 | 2026-11-21 | 4700 |  | 7 Days Work | 9200974 |
| 4702 | 36900.37000.37100.37500.37900.45100.409400 | Putty Works - walls & ceiling | 15d | 2026-11-22 | 2026-12-06 | 4701 |  | 7 Days Work | 9200984 |
| 4703 | 36900.37000.37100.37500.37900.45100.409500 | False Ceiling- Framing | 10d | 2026-12-07 | 2026-12-16 | 4702 |  | 7 Days Work | 9200994 |
| 4704 | 36900.37000.37100.37500.37900.45100.409600 | Pre Hung Door | 3d | 2026-12-17 | 2026-12-19 | 4703 |  | 7 Days Work | 9201004 |
| 4705 | 36900.37000.37100.37500.37900.45100.409700 | Protechtion sheet | 2d | 2026-12-20 | 2026-12-21 | 4704 |  | 7 Days Work | 9201014 |
| 4706 | 36900.37000.37100.37500.37900.45100.409800 | Skirting near door | 2d | 2026-12-22 | 2026-12-23 | 4705 |  | 7 Days Work | 9201024 |
| 4707 | 36900.37000.37100.37500.37900.45100.409900 | Electrical Switch box fixing | 14d | 2026-12-24 | 2027-01-06 | 4706 |  | 7 Days Work | 9201034 |
| 4708 | 36900.37000.37100.37500.37900.45100.410000 | Fire Fighting painting | 5d | 2027-01-07 | 2027-01-11 | 4707 |  | 7 Days Work | 9201044 |
| 4709 | 36900.37000.37100.37500.37900.45100.410100 | Protection of all flooring, door & window hardware | 5d | 2027-01-12 | 2027-01-16 | 4708 |  | 7 Days Work | 9201054 |
| 4710 | 36900.37000.37100.37500.37900.45100.410200 | 1st coat primer- ceiling 1st & walls | 14d | 2027-01-17 | 2027-01-30 | 4709 |  | 7 Days Work | 9201064 |
| 4711 | 36900.37000.37100.37500.37900.45100.410300 | Wooden Flooring | 5d | 2027-01-31 | 2027-02-04 | 4710 |  | 7 Days Work | 9201074 |
| 4712 | 36900.37000.37100.37500.37900.45100.410400 | Removing of Temporary Railing & installation of Glass Railing | 5d | 2027-01-31 | 2027-02-04 | 4710 |  | 7 Days Work | 9201084 |
| 4713 | 36900.37000.37100.37500.37900.45100.410500 | Tile Grouting | 7d | 2027-01-31 | 2027-02-06 | 4710 |  | 7 Days Work | 9201094 |
| 4714 | 36900.37000.37100.37500.37900.45100.410600 | False Ceiling | 5d | 2027-02-07 | 2027-02-11 | 4713 |  | 7 Days Work | 9201104 |
| 4715 | 36900.37000.37100.37500.37900.45100.410700 | 2nd coat of primer | 10d | 2027-02-12 | 2027-02-21 | 4714 |  | 7 Days Work | 9201114 |
| 4716 | 36900.37000.37100.37500.37900.45100.410800 | Final cutting/polishing of stone flooring | 7d | 2027-02-22 | 2027-02-28 | 4715 |  | 7 Days Work | 9201124 |

| ID | WBS | Task | Duration | Start | Finish | Predecessors | Constraint | Calendar | Unique_Task_ID |
| --- | --- | --- | --- | --- | --- | --- | --- | --- | --- |
| 4717 | 36900.37000.37100.37500.37900.45100.59400 | **Toilet** | 237d | 2026-07-06 | 2027-02-27 |  | start no earlier than 2026-07-06 | 7 Days Work | 9197114 |
| 4718 | 36900.37000.37100.37500.37900.45100.59400.878100 | Toilet_MEP Clearance -1 | 7d | 2026-07-06 | 2026-07-12 | 4681 |  | 7 Days Work | 9208064 |
| 4719 | 36900.37000.37100.37500.37900.45100.59400.878200 | Toilet_Level Marking | 1d | 2026-07-13 | 2026-07-13 | 4718 |  | 7 Days Work | 9208074 |
| 4720 | 36900.37000.37100.37500.37900.45100.59400.878300 | Toilet_Chasing work for Electrical conduit & concealed plumbing | 5d | 2026-07-14 | 2026-07-18 | 4719 |  | 7 Days Work | 9208084 |
| 4721 | 36900.37000.37100.37500.37900.45100.59400.878400 | Toilet_Plumbing work 1st fix | 5d | 2026-07-19 | 2026-07-23 | 4720 |  | 7 Days Work | 9208094 |
| 4722 | 36900.37000.37100.37500.37900.45100.59400.878500 | Toilet_Sleeve/Bore Packing | 5d | 2026-07-24 | 2026-07-28 | 4721 |  | 7 Days Work | 9208104 |
| 4723 | 36900.37000.37100.37500.37900.45100.59400.878600 | Toilet_Waterproofing | 10d | 2026-07-29 | 2026-08-07 | 4722 |  | 7 Days Work | 9208114 |
| 4724 | 36900.37000.37100.37500.37900.45100.59400.878700 | Toilet_Screed | 1d | 2026-08-08 | 2026-08-08 | 4723 |  | 7 Days Work | 9208124 |
| 4725 | 36900.37000.37100.37500.37900.45100.59400.878800 | Toilet_Plumbing 2nd fix | 5d | 2026-08-09 | 2026-08-13 | 4724 |  | 7 Days Work | 9208134 |
| 4726 | 36900.37000.37100.37500.37900.45100.59400.878900 | Toilet_Ledge wall | 5d | 2026-08-14 | 2026-08-18 | 4725 |  | 7 Days Work | 9208144 |
| 4727 | 36900.37000.37100.37500.37900.45100.59400.879000 | Toilet_Cement Plaster | 5d | 2026-08-19 | 2026-08-23 | 4726 |  | 7 Days Work | 9208154 |
| 4728 | 36900.37000.37100.37500.37900.45100.59400.879100 | Toilet_Door Frame | 1d | 2026-08-24 | 2026-08-24 | 4727 |  | 7 Days Work | 9208164 |
| 4729 | 36900.37000.37100.37500.37900.45100.59400.879200 | Toilet_Wash basin & Couter | 3d | 2026-08-25 | 2026-08-27 | 4728 |  | 7 Days Work | 9208174 |
| 4730 | 36900.37000.37100.37500.37900.45100.59400.879300 | Toilet_Wall dado | 20d | 2026-08-28 | 2026-09-16 | 4729 |  | 7 Days Work | 9208184 |
| 4731 | 36900.37000.37100.37500.37900.45100.59400.879400 | Toilet_Granite Work-Ledge wall top | 3d | 2026-09-17 | 2026-09-19 | 4730 |  | 7 Days Work | 9208194 |
| 4732 | 36900.37000.37100.37500.37900.45100.59400.879500 | Toilet_Floor Tilling work | 20d | 2026-09-20 | 2026-10-09 | 4731 |  | 7 Days Work | 9208204 |
| 4733 | 36900.37000.37100.37500.37900.45100.59400.879600 | Toilet_1st row of dado | 5d | 2026-10-10 | 2026-10-14 | 4732 |  | 7 Days Work | 9208214 |
| 4734 | 36900.37000.37100.37500.37900.45100.59400.879700 | Toilet_Window Fixing | 14d | 2026-10-15 | 2026-10-28 | 4733 |  | 7 Days Work | 9208224 |
| 4735 | 36900.37000.37100.37500.37900.45100.59400.879800 | Toilet_Services above False ceiling | 21d | 2026-10-29 | 2026-11-18 | 4734 |  | 7 Days Work | 9208234 |
| 4736 | 36900.37000.37100.37500.37900.45100.59400.879900 | Toilet_False Ceiling framing | 12d | 2026-11-19 | 2026-11-30 | 4735 |  | 7 Days Work | 9208244 |
| 4737 | 36900.37000.37100.37500.37900.45100.59400.880000 | Toilet_Door Frame | 5d | 2026-12-01 | 2026-12-05 | 4736 |  | 7 Days Work | 9208254 |
| 4738 | 36900.37000.37100.37500.37900.45100.59400.880100 | Toilet_Epoxy Tile Grouting | 7d | 2027-01-31 | 2027-02-06 | 4713SS |  | 7 Days Work | 9208264 |
| 4739 | 36900.37000.37100.37500.37900.45100.59400.880200 | Toilet_False ceiling board fixing, CP Sanitary Fixture, Electric Fixture | 21d | 2027-02-07 | 2027-02-27 | 4738 |  | 7 Days Work | 9208274 |
| 4740 | 36900.37000.37100.37500.37900.45200 | **11th Habitable/12th Floor** | 245d | 2026-07-08 | 2027-03-09 |  | start no earlier than 2026-07-08 | 7 Days Work | 9196924 |
| 4741 | 36900.37000.37100.37500.37900.45200.410900 | Post Pour | 7d | 2026-07-08 | 2026-07-14 | 4128FS+15d |  | 7 Days Work | 9201134 |
| 4742 | 36900.37000.37100.37500.37900.45200.411000 | MEP Clearance -1 | 5d | 2026-07-15 | 2026-07-19 | 4741 |  | 7 Days Work | 9201144 |
| 4743 | 36900.37000.37100.37500.37900.45200.411100 | Benchmark | 1d | 2026-07-20 | 2026-07-20 | 4742 |  | 7 Days Work | 9201154 |
| 4744 | 36900.37000.37100.37500.37900.45200.411200 | Temporary Railing | 3d | 2026-07-21 | 2026-07-23 | 4743 |  | 7 Days Work | 9201164 |
| 4745 | 36900.37000.37100.37500.37900.45200.411300 | Blockwork | 10d | 2026-07-24 | 2026-08-02 | 4744 |  | 7 Days Work | 9201174 |
| 4746 | 36900.37000.37100.37500.37900.45200.411400 | MEP Clearance -2 | 10d | 2026-08-03 | 2026-08-12 | 4745 |  | 7 Days Work | 9201184 |
| 4747 | 36900.37000.37100.37500.37900.45200.411500 | Gypsum Plaster | 14d | 2026-08-13 | 2026-08-26 | 4746 |  | 7 Days Work | 9201194 |
| 4748 | 36900.37000.37100.37500.37900.45200.411600 | Kitchen Platform | 3d | 2026-08-27 | 2026-08-29 | 4747 |  | 7 Days Work | 9201204 |
| 4749 | 36900.37000.37100.37500.37900.45200.411700 | Kitchen dado | 7d | 2026-08-30 | 2026-09-05 | 4748 |  | 7 Days Work | 9201214 |
| 4750 | 36900.37000.37100.37500.37900.45200.411800 | Fire Fighting | 5d | 2026-09-06 | 2026-09-10 | 4749 |  | 7 Days Work | 9201224 |
| 4751 | 36900.37000.37100.37500.37900.45200.411900 | Anticapilary | 5d | 2026-09-11 | 2026-09-15 | 4750 |  | 7 Days Work | 9201234 |
| 4752 | 36900.37000.37100.37500.37900.45200.412000 | Stone Laying | 10d | 2026-10-19 | 2026-10-28 | 4792 |  | 7 Days Work | 9201244 |
| 4753 | 36900.37000.37100.37500.37900.45200.412100 | Tiles Laying | 7d | 2026-10-19 | 2026-10-25 | 4792 |  | 7 Days Work | 9201254 |
| 4754 | 36900.37000.37100.37500.37900.45200.412200 | 1st cutting/polishing of stone flooring | 7d | 2026-10-26 | 2026-11-01 | 4753 |  | 7 Days Work | 9201264 |
| 4755 | 36900.37000.37100.37500.37900.45200.412300 | Tiles/Stone skirting | 5d | 2026-11-02 | 2026-11-06 | 4754 |  | 7 Days Work | 9201274 |
| 4756 | 36900.37000.37100.37500.37900.45200.412400 | Protechtion sheet | 1d | 2026-11-07 | 2026-11-07 | 4755 |  | 7 Days Work | 9201284 |
| 4757 | 36900.37000.37100.37500.37900.45200.412500 | Installation of Temporary Door | 1d | 2026-11-08 | 2026-11-08 | 4756 |  | 7 Days Work | 9201294 |
| 4758 | 36900.37000.37100.37500.37900.45200.412600 | Fixing of window tracks | 5d | 2026-11-09 | 2026-11-13 | 4757 |  | 7 Days Work | 9201304 |
| 4759 | 36900.37000.37100.37500.37900.45200.412700 | Wire Pulling | 7d | 2026-11-14 | 2026-11-20 | 4758 |  | 7 Days Work | 9201314 |
| 4760 | 36900.37000.37100.37500.37900.45200.412800 | Gypsum Remaining | 5d | 2026-11-21 | 2026-11-25 | 4759 |  | 7 Days Work | 9201324 |
| 4761 | 36900.37000.37100.37500.37900.45200.412900 | Fixing of windoow shutter | 5d | 2026-11-26 | 2026-11-30 | 4760 |  | 7 Days Work | 9201334 |
| 4762 | 36900.37000.37100.37500.37900.45200.413000 | Putty Works - walls & ceiling | 15d | 2026-12-01 | 2026-12-15 | 4761 |  | 7 Days Work | 9201344 |
| 4763 | 36900.37000.37100.37500.37900.45200.413100 | False Ceiling- Framing | 10d | 2026-12-16 | 2026-12-25 | 4762 |  | 7 Days Work | 9201354 |
| 4764 | 36900.37000.37100.37500.37900.45200.413200 | Pre Hung Door | 3d | 2026-12-26 | 2026-12-28 | 4763 |  | 7 Days Work | 9201364 |
| 4765 | 36900.37000.37100.37500.37900.45200.413300 | Protechtion sheet | 2d | 2026-12-29 | 2026-12-30 | 4764 |  | 7 Days Work | 9201374 |
| 4766 | 36900.37000.37100.37500.37900.45200.413400 | Skirting near door | 2d | 2026-12-31 | 2027-01-01 | 4765 |  | 7 Days Work | 9201384 |
| 4767 | 36900.37000.37100.37500.37900.45200.413500 | Electrical Switch box fixing | 14d | 2027-01-02 | 2027-01-15 | 4766 |  | 7 Days Work | 9201394 |
| 4768 | 36900.37000.37100.37500.37900.45200.413600 | Fire Fighting painting | 5d | 2027-01-16 | 2027-01-20 | 4767 |  | 7 Days Work | 9201404 |
| 4769 | 36900.37000.37100.37500.37900.45200.413700 | Protection of all flooring, door & window hardware | 5d | 2027-01-21 | 2027-01-25 | 4768 |  | 7 Days Work | 9201414 |
| 4770 | 36900.37000.37100.37500.37900.45200.413800 | 1st coat primer- ceiling 1st & walls | 14d | 2027-01-26 | 2027-02-08 | 4769 |  | 7 Days Work | 9201424 |
| 4771 | 36900.37000.37100.37500.37900.45200.413900 | Wooden Flooring | 5d | 2027-02-09 | 2027-02-13 | 4770 |  | 7 Days Work | 9201434 |
| 4772 | 36900.37000.37100.37500.37900.45200.414000 | Removing of Temporary Railing & installation of Glass Railing | 5d | 2027-02-09 | 2027-02-13 | 4770 |  | 7 Days Work | 9201444 |
| 4773 | 36900.37000.37100.37500.37900.45200.414100 | Tile Grouting | 7d | 2027-02-09 | 2027-02-15 | 4770 |  | 7 Days Work | 9201454 |
| 4774 | 36900.37000.37100.37500.37900.45200.414200 | False Ceiling | 5d | 2027-02-16 | 2027-02-20 | 4773 |  | 7 Days Work | 9201464 |
| 4775 | 36900.37000.37100.37500.37900.45200.414300 | 2nd coat of primer | 10d | 2027-02-21 | 2027-03-02 | 4774 |  | 7 Days Work | 9201474 |
| 4776 | 36900.37000.37100.37500.37900.45200.414400 | Final cutting/polishing of stone flooring | 7d | 2027-03-03 | 2027-03-09 | 4775 |  | 7 Days Work | 9201484 |

| ID | WBS | Task | Duration | Start | Finish | Predecessors | Constraint | Calendar | Unique_Task_ID |
| --- | --- | --- | --- | --- | --- | --- | --- | --- | --- |
| 4777 | 36900.37000.37100.37500.37900.45200.59500 | **Toilet** | 237d | 2026-07-15 | 2027-03-08 |  | start no earlier than 2026-07-15 | 7 Days Work | 9197124 |
| 4778 | 36900.37000.37100.37500.37900.45200.59500.880300 | Toilet_MEP Clearance -1 | 7d | 2026-07-15 | 2026-07-21 | 4741 |  | 7 Days Work | 9208284 |
| 4779 | 36900.37000.37100.37500.37900.45200.59500.880400 | Toilet_Level Marking | 1d | 2026-07-22 | 2026-07-22 | 4778 |  | 7 Days Work | 9208294 |
| 4780 | 36900.37000.37100.37500.37900.45200.59500.880500 | Toilet_Chasing work for Electrical conduit & concealed plumbing | 5d | 2026-07-23 | 2026-07-27 | 4779 |  | 7 Days Work | 9208304 |
| 4781 | 36900.37000.37100.37500.37900.45200.59500.880600 | Toilet_Plumbing work 1st fix | 5d | 2026-07-28 | 2026-08-01 | 4780 |  | 7 Days Work | 9208314 |
| 4782 | 36900.37000.37100.37500.37900.45200.59500.880700 | Toilet_Sleeve/Bore Packing | 5d | 2026-08-02 | 2026-08-06 | 4781 |  | 7 Days Work | 9208324 |
| 4783 | 36900.37000.37100.37500.37900.45200.59500.880800 | Toilet_Waterproofing | 10d | 2026-08-07 | 2026-08-16 | 4782 |  | 7 Days Work | 9208334 |
| 4784 | 36900.37000.37100.37500.37900.45200.59500.880900 | Toilet_Screed | 1d | 2026-08-17 | 2026-08-17 | 4783 |  | 7 Days Work | 9208344 |
| 4785 | 36900.37000.37100.37500.37900.45200.59500.881000 | Toilet_Plumbing 2nd fix | 5d | 2026-08-18 | 2026-08-22 | 4784 |  | 7 Days Work | 9208354 |
| 4786 | 36900.37000.37100.37500.37900.45200.59500.881100 | Toilet_Ledge wall | 5d | 2026-08-23 | 2026-08-27 | 4785 |  | 7 Days Work | 9208364 |
| 4787 | 36900.37000.37100.37500.37900.45200.59500.881200 | Toilet_Cement Plaster | 5d | 2026-08-28 | 2026-09-01 | 4786 |  | 7 Days Work | 9208374 |
| 4788 | 36900.37000.37100.37500.37900.45200.59500.881300 | Toilet_Door Frame | 1d | 2026-09-02 | 2026-09-02 | 4787 |  | 7 Days Work | 9208384 |
| 4789 | 36900.37000.37100.37500.37900.45200.59500.881400 | Toilet_Wash basin & Couter | 3d | 2026-09-03 | 2026-09-05 | 4788 |  | 7 Days Work | 9208394 |
| 4790 | 36900.37000.37100.37500.37900.45200.59500.881500 | Toilet_Wall dado | 20d | 2026-09-06 | 2026-09-25 | 4789 |  | 7 Days Work | 9208404 |
| 4791 | 36900.37000.37100.37500.37900.45200.59500.881600 | Toilet_Granite Work-Ledge wall top | 3d | 2026-09-26 | 2026-09-28 | 4790 |  | 7 Days Work | 9208414 |
| 4792 | 36900.37000.37100.37500.37900.45200.59500.881700 | Toilet_Floor Tilling work | 20d | 2026-09-29 | 2026-10-18 | 4791 |  | 7 Days Work | 9208424 |
| 4793 | 36900.37000.37100.37500.37900.45200.59500.881800 | Toilet_1st row of dado | 5d | 2026-10-19 | 2026-10-23 | 4792 |  | 7 Days Work | 9208434 |
| 4794 | 36900.37000.37100.37500.37900.45200.59500.881900 | Toilet_Window Fixing | 14d | 2026-10-24 | 2026-11-06 | 4793 |  | 7 Days Work | 9208444 |
| 4795 | 36900.37000.37100.37500.37900.45200.59500.882000 | Toilet_Services above False ceiling | 21d | 2026-11-07 | 2026-11-27 | 4794 |  | 7 Days Work | 9208454 |
| 4796 | 36900.37000.37100.37500.37900.45200.59500.882100 | Toilet_False Ceiling framing | 12d | 2026-11-28 | 2026-12-09 | 4795 |  | 7 Days Work | 9208464 |
| 4797 | 36900.37000.37100.37500.37900.45200.59500.882200 | Toilet_Door Frame | 5d | 2026-12-10 | 2026-12-14 | 4796 |  | 7 Days Work | 9208474 |
| 4798 | 36900.37000.37100.37500.37900.45200.59500.882300 | Toilet_Epoxy Tile Grouting | 7d | 2027-02-09 | 2027-02-15 | 4773SS |  | 7 Days Work | 9208484 |
| 4799 | 36900.37000.37100.37500.37900.45200.59500.882400 | Toilet_False ceiling board fixing, CP Sanitary Fixture, Electric Fixture | 21d | 2027-02-16 | 2027-03-08 | 4798 |  | 7 Days Work | 9208494 |
| 4800 | 36900.37000.37100.37500.37900.45300 | **12th Habitable/13th Floor** | 245d | 2026-07-17 | 2027-03-18 |  | start no earlier than 2026-07-17 | 7 Days Work | 9196934 |
| 4801 | 36900.37000.37100.37500.37900.45300.414500 | Post Pour | 7d | 2026-07-17 | 2026-07-23 | 4129FS+15d |  | 7 Days Work | 9201494 |
| 4802 | 36900.37000.37100.37500.37900.45300.414600 | MEP Clearance -1 | 5d | 2026-07-24 | 2026-07-28 | 4801 |  | 7 Days Work | 9201504 |
| 4803 | 36900.37000.37100.37500.37900.45300.414700 | Benchmark | 1d | 2026-07-29 | 2026-07-29 | 4802 |  | 7 Days Work | 9201514 |
| 4804 | 36900.37000.37100.37500.37900.45300.414800 | Temporary Railing | 3d | 2026-07-30 | 2026-08-01 | 4803 |  | 7 Days Work | 9201524 |
| 4805 | 36900.37000.37100.37500.37900.45300.414900 | Blockwork | 10d | 2026-08-02 | 2026-08-11 | 4804 |  | 7 Days Work | 9201534 |
| 4806 | 36900.37000.37100.37500.37900.45300.415000 | MEP Clearance -2 | 10d | 2026-08-12 | 2026-08-21 | 4805 |  | 7 Days Work | 9201544 |
| 4807 | 36900.37000.37100.37500.37900.45300.415100 | Gypsum Plaster | 14d | 2026-08-22 | 2026-09-04 | 4806 |  | 7 Days Work | 9201554 |
| 4808 | 36900.37000.37100.37500.37900.45300.415200 | Kitchen Platform | 3d | 2026-09-05 | 2026-09-07 | 4807 |  | 7 Days Work | 9201564 |
| 4809 | 36900.37000.37100.37500.37900.45300.415300 | Kitchen dado | 7d | 2026-09-08 | 2026-09-14 | 4808 |  | 7 Days Work | 9201574 |
| 4810 | 36900.37000.37100.37500.37900.45300.415400 | Fire Fighting | 5d | 2026-09-15 | 2026-09-19 | 4809 |  | 7 Days Work | 9201584 |
| 4811 | 36900.37000.37100.37500.37900.45300.415500 | Anticapilary | 5d | 2026-09-20 | 2026-09-24 | 4810 |  | 7 Days Work | 9201594 |
| 4812 | 36900.37000.37100.37500.37900.45300.415600 | Stone Laying | 10d | 2026-10-28 | 2026-11-06 | 4852 |  | 7 Days Work | 9201604 |
| 4813 | 36900.37000.37100.37500.37900.45300.415700 | Tiles Laying | 7d | 2026-10-28 | 2026-11-03 | 4852 |  | 7 Days Work | 9201614 |
| 4814 | 36900.37000.37100.37500.37900.45300.415800 | 1st cutting/polishing of stone flooring | 7d | 2026-11-04 | 2026-11-10 | 4813 |  | 7 Days Work | 9201624 |
| 4815 | 36900.37000.37100.37500.37900.45300.415900 | Tiles/Stone skirting | 5d | 2026-11-11 | 2026-11-15 | 4814 |  | 7 Days Work | 9201634 |
| 4816 | 36900.37000.37100.37500.37900.45300.416000 | Protechtion sheet | 1d | 2026-11-16 | 2026-11-16 | 4815 |  | 7 Days Work | 9201644 |
| 4817 | 36900.37000.37100.37500.37900.45300.416100 | Installation of Temporary Door | 1d | 2026-11-17 | 2026-11-17 | 4816 |  | 7 Days Work | 9201654 |
| 4818 | 36900.37000.37100.37500.37900.45300.416200 | Fixing of window tracks | 5d | 2026-11-18 | 2026-11-22 | 4817 |  | 7 Days Work | 9201664 |
| 4819 | 36900.37000.37100.37500.37900.45300.416300 | Wire Pulling | 7d | 2026-11-23 | 2026-11-29 | 4818 |  | 7 Days Work | 9201674 |
| 4820 | 36900.37000.37100.37500.37900.45300.416400 | Gypsum Remaining | 5d | 2026-11-30 | 2026-12-04 | 4819 |  | 7 Days Work | 9201684 |
| 4821 | 36900.37000.37100.37500.37900.45300.416500 | Fixing of windoow shutter | 5d | 2026-12-05 | 2026-12-09 | 4820 |  | 7 Days Work | 9201694 |
| 4822 | 36900.37000.37100.37500.37900.45300.416600 | Putty Works - walls & ceiling | 15d | 2026-12-10 | 2026-12-24 | 4821 |  | 7 Days Work | 9201704 |
| 4823 | 36900.37000.37100.37500.37900.45300.416700 | False Ceiling- Framing | 10d | 2026-12-25 | 2027-01-03 | 4822 |  | 7 Days Work | 9201714 |
| 4824 | 36900.37000.37100.37500.37900.45300.416800 | Pre Hung Door | 3d | 2027-01-04 | 2027-01-06 | 4823 |  | 7 Days Work | 9201724 |
| 4825 | 36900.37000.37100.37500.37900.45300.416900 | Protechtion sheet | 2d | 2027-01-07 | 2027-01-08 | 4824 |  | 7 Days Work | 9201734 |
| 4826 | 36900.37000.37100.37500.37900.45300.417000 | Skirting near door | 2d | 2027-01-09 | 2027-01-10 | 4825 |  | 7 Days Work | 9201744 |
| 4827 | 36900.37000.37100.37500.37900.45300.417100 | Electrical Switch box fixing | 14d | 2027-01-11 | 2027-01-24 | 4826 |  | 7 Days Work | 9201754 |
| 4828 | 36900.37000.37100.37500.37900.45300.417200 | Fire Fighting painting | 5d | 2027-01-25 | 2027-01-29 | 4827 |  | 7 Days Work | 9201764 |
| 4829 | 36900.37000.37100.37500.37900.45300.417300 | Protection of all flooring, door & window hardware | 5d | 2027-01-30 | 2027-02-03 | 4828 |  | 7 Days Work | 9201774 |
| 4830 | 36900.37000.37100.37500.37900.45300.417400 | 1st coat primer- ceiling 1st & walls | 14d | 2027-02-04 | 2027-02-17 | 4829 |  | 7 Days Work | 9201784 |
| 4831 | 36900.37000.37100.37500.37900.45300.417500 | Wooden Flooring | 5d | 2027-02-18 | 2027-02-22 | 4830 |  | 7 Days Work | 9201794 |
| 4832 | 36900.37000.37100.37500.37900.45300.417600 | Removing of Temporary Railing & installation of Glass Railing | 5d | 2027-02-18 | 2027-02-22 | 4830 |  | 7 Days Work | 9201804 |
| 4833 | 36900.37000.37100.37500.37900.45300.417700 | Tile Grouting | 7d | 2027-02-18 | 2027-02-24 | 4830 |  | 7 Days Work | 9201814 |
| 4834 | 36900.37000.37100.37500.37900.45300.417800 | False Ceiling | 5d | 2027-02-25 | 2027-03-01 | 4833 |  | 7 Days Work | 9201824 |
| 4835 | 36900.37000.37100.37500.37900.45300.417900 | 2nd coat of primer | 10d | 2027-03-02 | 2027-03-11 | 4834 |  | 7 Days Work | 9201834 |
| 4836 | 36900.37000.37100.37500.37900.45300.418000 | Final cutting/polishing of stone flooring | 7d | 2027-03-12 | 2027-03-18 | 4835 |  | 7 Days Work | 9201844 |

| ID | WBS | Task | Duration | Start | Finish | Predecessors | Constraint | Calendar | Unique_Task_ID |
| --- | --- | --- | --- | --- | --- | --- | --- | --- | --- |
| 4837 | 36900.37000.37100.37500.37900.45300.59600 | **Toilet** | 237d | 2026-07-24 | 2027-03-17 |  | start no earlier than 2026-07-24 | 7 Days Work | 9197134 |
| 4838 | 36900.37000.37100.37500.37900.45300.59600.882500 | Toilet_MEP Clearance -1 | 7d | 2026-07-24 | 2026-07-30 | 4801 |  | 7 Days Work | 9208504 |
| 4839 | 36900.37000.37100.37500.37900.45300.59600.882600 | Toilet_Level Marking | 1d | 2026-07-31 | 2026-07-31 | 4838 |  | 7 Days Work | 9208514 |
| 4840 | 36900.37000.37100.37500.37900.45300.59600.882700 | Toilet_Chasing work for Electrical conduit & concealed plumbing | 5d | 2026-08-01 | 2026-08-05 | 4839 |  | 7 Days Work | 9208524 |
| 4841 | 36900.37000.37100.37500.37900.45300.59600.882800 | Toilet_Plumbing work 1st fix | 5d | 2026-08-06 | 2026-08-10 | 4840 |  | 7 Days Work | 9208534 |
| 4842 | 36900.37000.37100.37500.37900.45300.59600.882900 | Toilet_Sleeve/Bore Packing | 5d | 2026-08-11 | 2026-08-15 | 4841 |  | 7 Days Work | 9208544 |
| 4843 | 36900.37000.37100.37500.37900.45300.59600.883000 | Toilet_Waterproofing | 10d | 2026-08-16 | 2026-08-25 | 4842 |  | 7 Days Work | 9208554 |
| 4844 | 36900.37000.37100.37500.37900.45300.59600.883100 | Toilet_Screed | 1d | 2026-08-26 | 2026-08-26 | 4843 |  | 7 Days Work | 9208564 |
| 4845 | 36900.37000.37100.37500.37900.45300.59600.883200 | Toilet_Plumbing 2nd fix | 5d | 2026-08-27 | 2026-08-31 | 4844 |  | 7 Days Work | 9208574 |
| 4846 | 36900.37000.37100.37500.37900.45300.59600.883300 | Toilet_Ledge wall | 5d | 2026-09-01 | 2026-09-05 | 4845 |  | 7 Days Work | 9208584 |
| 4847 | 36900.37000.37100.37500.37900.45300.59600.883400 | Toilet_Cement Plaster | 5d | 2026-09-06 | 2026-09-10 | 4846 |  | 7 Days Work | 9208594 |
| 4848 | 36900.37000.37100.37500.37900.45300.59600.883500 | Toilet_Door Frame | 1d | 2026-09-11 | 2026-09-11 | 4847 |  | 7 Days Work | 9208604 |
| 4849 | 36900.37000.37100.37500.37900.45300.59600.883600 | Toilet_Wash basin & Couter | 3d | 2026-09-12 | 2026-09-14 | 4848 |  | 7 Days Work | 9208614 |
| 4850 | 36900.37000.37100.37500.37900.45300.59600.883700 | Toilet_Wall dado | 20d | 2026-09-15 | 2026-10-04 | 4849 |  | 7 Days Work | 9208624 |
| 4851 | 36900.37000.37100.37500.37900.45300.59600.883800 | Toilet_Granite Work-Ledge wall top | 3d | 2026-10-05 | 2026-10-07 | 4850 |  | 7 Days Work | 9208634 |
| 4852 | 36900.37000.37100.37500.37900.45300.59600.883900 | Toilet_Floor Tilling work | 20d | 2026-10-08 | 2026-10-27 | 4851 |  | 7 Days Work | 9208644 |
| 4853 | 36900.37000.37100.37500.37900.45300.59600.884000 | Toilet_1st row of dado | 5d | 2026-10-28 | 2026-11-01 | 4852 |  | 7 Days Work | 9208654 |
| 4854 | 36900.37000.37100.37500.37900.45300.59600.884100 | Toilet_Window Fixing | 14d | 2026-11-02 | 2026-11-15 | 4853 |  | 7 Days Work | 9208664 |
| 4855 | 36900.37000.37100.37500.37900.45300.59600.884200 | Toilet_Services above False ceiling | 21d | 2026-11-16 | 2026-12-06 | 4854 |  | 7 Days Work | 9208674 |
| 4856 | 36900.37000.37100.37500.37900.45300.59600.884300 | Toilet_False Ceiling framing | 12d | 2026-12-07 | 2026-12-18 | 4855 |  | 7 Days Work | 9208684 |
| 4857 | 36900.37000.37100.37500.37900.45300.59600.884400 | Toilet_Door Frame | 5d | 2026-12-19 | 2026-12-23 | 4856 |  | 7 Days Work | 9208694 |
| 4858 | 36900.37000.37100.37500.37900.45300.59600.884500 | Toilet_Epoxy Tile Grouting | 7d | 2027-02-18 | 2027-02-24 | 4833SS |  | 7 Days Work | 9208704 |
| 4859 | 36900.37000.37100.37500.37900.45300.59600.884600 | Toilet_False ceiling board fixing, CP Sanitary Fixture, Electric Fixture | 21d | 2027-02-25 | 2027-03-17 | 4858 |  | 7 Days Work | 9208714 |
| 4860 | 36900.37000.37100.37500.37900.45400 | **13th Habitable/14th Floor** | 245d | 2026-07-29 | 2027-03-30 |  | start no earlier than 2026-07-29 | 7 Days Work | 9196944 |
| 4861 | 36900.37000.37100.37500.37900.45400.418100 | Post Pour | 7d | 2026-07-29 | 2026-08-04 | 4130FS+15d |  | 7 Days Work | 9201854 |
| 4862 | 36900.37000.37100.37500.37900.45400.418200 | MEP Clearance -1 | 5d | 2026-08-05 | 2026-08-09 | 4861 |  | 7 Days Work | 9201864 |
| 4863 | 36900.37000.37100.37500.37900.45400.418300 | Benchmark | 1d | 2026-08-10 | 2026-08-10 | 4862 |  | 7 Days Work | 9201874 |
| 4864 | 36900.37000.37100.37500.37900.45400.418400 | Temporary Railing | 3d | 2026-08-11 | 2026-08-13 | 4863 |  | 7 Days Work | 9201884 |
| 4865 | 36900.37000.37100.37500.37900.45400.418500 | Blockwork | 10d | 2026-08-14 | 2026-08-23 | 4864 |  | 7 Days Work | 9201894 |
| 4866 | 36900.37000.37100.37500.37900.45400.418600 | MEP Clearance -2 | 10d | 2026-08-24 | 2026-09-02 | 4865 |  | 7 Days Work | 9201904 |
| 4867 | 36900.37000.37100.37500.37900.45400.418700 | Gypsum Plaster | 14d | 2026-09-03 | 2026-09-16 | 4866 |  | 7 Days Work | 9201914 |
| 4868 | 36900.37000.37100.37500.37900.45400.418800 | Kitchen Platform | 3d | 2026-09-17 | 2026-09-19 | 4867 |  | 7 Days Work | 9201924 |
| 4869 | 36900.37000.37100.37500.37900.45400.418900 | Kitchen dado | 7d | 2026-09-20 | 2026-09-26 | 4868 |  | 7 Days Work | 9201934 |
| 4870 | 36900.37000.37100.37500.37900.45400.419000 | Fire Fighting | 5d | 2026-09-27 | 2026-10-01 | 4869 |  | 7 Days Work | 9201944 |
| 4871 | 36900.37000.37100.37500.37900.45400.419100 | Anticapilary | 5d | 2026-10-02 | 2026-10-06 | 4870 |  | 7 Days Work | 9201954 |
| 4872 | 36900.37000.37100.37500.37900.45400.419200 | Stone Laying | 10d | 2026-11-09 | 2026-11-18 | 4912 |  | 7 Days Work | 9201964 |
| 4873 | 36900.37000.37100.37500.37900.45400.419300 | Tiles Laying | 7d | 2026-11-09 | 2026-11-15 | 4912 |  | 7 Days Work | 9201974 |
| 4874 | 36900.37000.37100.37500.37900.45400.419400 | 1st cutting/polishing of stone flooring | 7d | 2026-11-16 | 2026-11-22 | 4873 |  | 7 Days Work | 9201984 |
| 4875 | 36900.37000.37100.37500.37900.45400.419500 | Tiles/Stone skirting | 5d | 2026-11-23 | 2026-11-27 | 4874 |  | 7 Days Work | 9201994 |
| 4876 | 36900.37000.37100.37500.37900.45400.419600 | Protechtion sheet | 1d | 2026-11-28 | 2026-11-28 | 4875 |  | 7 Days Work | 9202004 |
| 4877 | 36900.37000.37100.37500.37900.45400.419700 | Installation of Temporary Door | 1d | 2026-11-29 | 2026-11-29 | 4876 |  | 7 Days Work | 9202014 |
| 4878 | 36900.37000.37100.37500.37900.45400.419800 | Fixing of window tracks | 5d | 2026-11-30 | 2026-12-04 | 4877 |  | 7 Days Work | 9202024 |
| 4879 | 36900.37000.37100.37500.37900.45400.419900 | Wire Pulling | 7d | 2026-12-05 | 2026-12-11 | 4878 |  | 7 Days Work | 9202034 |
| 4880 | 36900.37000.37100.37500.37900.45400.420000 | Gypsum Remaining | 5d | 2026-12-12 | 2026-12-16 | 4879 |  | 7 Days Work | 9202044 |
| 4881 | 36900.37000.37100.37500.37900.45400.420100 | Fixing of windoow shutter | 5d | 2026-12-17 | 2026-12-21 | 4880 |  | 7 Days Work | 9202054 |
| 4882 | 36900.37000.37100.37500.37900.45400.420200 | Putty Works - walls & ceiling | 15d | 2026-12-22 | 2027-01-05 | 4881 |  | 7 Days Work | 9202064 |
| 4883 | 36900.37000.37100.37500.37900.45400.420300 | False Ceiling- Framing | 10d | 2027-01-06 | 2027-01-15 | 4882 |  | 7 Days Work | 9202074 |
| 4884 | 36900.37000.37100.37500.37900.45400.420400 | Pre Hung Door | 3d | 2027-01-16 | 2027-01-18 | 4883 |  | 7 Days Work | 9202084 |
| 4885 | 36900.37000.37100.37500.37900.45400.420500 | Protechtion sheet | 2d | 2027-01-19 | 2027-01-20 | 4884 |  | 7 Days Work | 9202094 |
| 4886 | 36900.37000.37100.37500.37900.45400.420600 | Skirting near door | 2d | 2027-01-21 | 2027-01-22 | 4885 |  | 7 Days Work | 9202104 |
| 4887 | 36900.37000.37100.37500.37900.45400.420700 | Electrical Switch box fixing | 14d | 2027-01-23 | 2027-02-05 | 4886 |  | 7 Days Work | 9202114 |
| 4888 | 36900.37000.37100.37500.37900.45400.420800 | Fire Fighting painting | 5d | 2027-02-06 | 2027-02-10 | 4887 |  | 7 Days Work | 9202124 |
| 4889 | 36900.37000.37100.37500.37900.45400.420900 | Protection of all flooring, door & window hardware | 5d | 2027-02-11 | 2027-02-15 | 4888 |  | 7 Days Work | 9202134 |
| 4890 | 36900.37000.37100.37500.37900.45400.421000 | 1st coat primer- ceiling 1st & walls | 14d | 2027-02-16 | 2027-03-01 | 4889 |  | 7 Days Work | 9202144 |
| 4891 | 36900.37000.37100.37500.37900.45400.421100 | Wooden Flooring | 5d | 2027-03-02 | 2027-03-06 | 4890 |  | 7 Days Work | 9202154 |
| 4892 | 36900.37000.37100.37500.37900.45400.421200 | Removing of Temporary Railing & installation of Glass Railing | 5d | 2027-03-02 | 2027-03-06 | 4890 |  | 7 Days Work | 9202164 |
| 4893 | 36900.37000.37100.37500.37900.45400.421300 | Tile Grouting | 7d | 2027-03-02 | 2027-03-08 | 4890 |  | 7 Days Work | 9202174 |
| 4894 | 36900.37000.37100.37500.37900.45400.421400 | False Ceiling | 5d | 2027-03-09 | 2027-03-13 | 4893 |  | 7 Days Work | 9202184 |
| 4895 | 36900.37000.37100.37500.37900.45400.421500 | 2nd coat of primer | 10d | 2027-03-14 | 2027-03-23 | 4894 |  | 7 Days Work | 9202194 |
| 4896 | 36900.37000.37100.37500.37900.45400.421600 | Final cutting/polishing of stone flooring | 7d | 2027-03-24 | 2027-03-30 | 4895 |  | 7 Days Work | 9202204 |

| ID | WBS | Task | Duration | Start | Finish | Predecessors | Constraint | Calendar | Unique_Task_ID |
| --- | --- | --- | --- | --- | --- | --- | --- | --- | --- |
| 4897 | 36900.37000.37100.37500.37900.45400.59700 | **Toilet** | 237d | 2026-08-05 | 2027-03-29 |  | start no earlier than 2026-08-05 | 7 Days Work | 9197144 |
| 4898 | 36900.37000.37100.37500.37900.45400.59700.884700 | Toilet_MEP Clearance -1 | 7d | 2026-08-05 | 2026-08-11 | 4861 |  | 7 Days Work | 9208724 |
| 4899 | 36900.37000.37100.37500.37900.45400.59700.884800 | Toilet_Level Marking | 1d | 2026-08-12 | 2026-08-12 | 4898 |  | 7 Days Work | 9208734 |
| 4900 | 36900.37000.37100.37500.37900.45400.59700.884900 | Toilet_Chasing work for Electrical conduit & concealed plumbing | 5d | 2026-08-13 | 2026-08-17 | 4899 |  | 7 Days Work | 9208744 |
| 4901 | 36900.37000.37100.37500.37900.45400.59700.885000 | Toilet_Plumbing work 1st fix | 5d | 2026-08-18 | 2026-08-22 | 4900 |  | 7 Days Work | 9208754 |
| 4902 | 36900.37000.37100.37500.37900.45400.59700.885100 | Toilet_Sleeve/Bore Packing | 5d | 2026-08-23 | 2026-08-27 | 4901 |  | 7 Days Work | 9208764 |
| 4903 | 36900.37000.37100.37500.37900.45400.59700.885200 | Toilet_Waterproofing | 10d | 2026-08-28 | 2026-09-06 | 4902 |  | 7 Days Work | 9208774 |
| 4904 | 36900.37000.37100.37500.37900.45400.59700.885300 | Toilet_Screed | 1d | 2026-09-07 | 2026-09-07 | 4903 |  | 7 Days Work | 9208784 |
| 4905 | 36900.37000.37100.37500.37900.45400.59700.885400 | Toilet_Plumbing 2nd fix | 5d | 2026-09-08 | 2026-09-12 | 4904 |  | 7 Days Work | 9208794 |
| 4906 | 36900.37000.37100.37500.37900.45400.59700.885500 | Toilet_Ledge wall | 5d | 2026-09-13 | 2026-09-17 | 4905 |  | 7 Days Work | 9208804 |
| 4907 | 36900.37000.37100.37500.37900.45400.59700.885600 | Toilet_Cement Plaster | 5d | 2026-09-18 | 2026-09-22 | 4906 |  | 7 Days Work | 9208814 |
| 4908 | 36900.37000.37100.37500.37900.45400.59700.885700 | Toilet_Door Frame | 1d | 2026-09-23 | 2026-09-23 | 4907 |  | 7 Days Work | 9208824 |
| 4909 | 36900.37000.37100.37500.37900.45400.59700.885800 | Toilet_Wash basin & Couter | 3d | 2026-09-24 | 2026-09-26 | 4908 |  | 7 Days Work | 9208834 |
| 4910 | 36900.37000.37100.37500.37900.45400.59700.885900 | Toilet_Wall dado | 20d | 2026-09-27 | 2026-10-16 | 4909 |  | 7 Days Work | 9208844 |
| 4911 | 36900.37000.37100.37500.37900.45400.59700.886000 | Toilet_Granite Work-Ledge wall top | 3d | 2026-10-17 | 2026-10-19 | 4910 |  | 7 Days Work | 9208854 |
| 4912 | 36900.37000.37100.37500.37900.45400.59700.886100 | Toilet_Floor Tilling work | 20d | 2026-10-20 | 2026-11-08 | 4911 |  | 7 Days Work | 9208864 |
| 4913 | 36900.37000.37100.37500.37900.45400.59700.886200 | Toilet_1st row of dado | 5d | 2026-11-09 | 2026-11-13 | 4912 |  | 7 Days Work | 9208874 |
| 4914 | 36900.37000.37100.37500.37900.45400.59700.886300 | Toilet_Window Fixing | 14d | 2026-11-14 | 2026-11-27 | 4913 |  | 7 Days Work | 9208884 |
| 4915 | 36900.37000.37100.37500.37900.45400.59700.886400 | Toilet_Services above False ceiling | 21d | 2026-11-28 | 2026-12-18 | 4914 |  | 7 Days Work | 9208894 |
| 4916 | 36900.37000.37100.37500.37900.45400.59700.886500 | Toilet_False Ceiling framing | 12d | 2026-12-19 | 2026-12-30 | 4915 |  | 7 Days Work | 9208904 |
| 4917 | 36900.37000.37100.37500.37900.45400.59700.886600 | Toilet_Door Frame | 5d | 2026-12-31 | 2027-01-04 | 4916 |  | 7 Days Work | 9208914 |
| 4918 | 36900.37000.37100.37500.37900.45400.59700.886700 | Toilet_Epoxy Tile Grouting | 7d | 2027-03-02 | 2027-03-08 | 4893SS |  | 7 Days Work | 9208924 |
| 4919 | 36900.37000.37100.37500.37900.45400.59700.886800 | Toilet_False ceiling board fixing, CP Sanitary Fixture, Electric Fixture | 21d | 2027-03-09 | 2027-03-29 | 4918 |  | 7 Days Work | 9208934 |
| 4920 | 36900.37000.37100.37500.37900.45500 | **14th Habitable/15th Floor** | 245d | 2026-08-07 | 2027-04-08 |  | start no earlier than 2026-08-07 | 7 Days Work | 9196954 |
| 4921 | 36900.37000.37100.37500.37900.45500.421700 | Post Pour | 7d | 2026-08-07 | 2026-08-13 | 4131FS+15d |  | 7 Days Work | 9202214 |
| 4922 | 36900.37000.37100.37500.37900.45500.421800 | MEP Clearance -1 | 5d | 2026-08-14 | 2026-08-18 | 4921 |  | 7 Days Work | 9202224 |
| 4923 | 36900.37000.37100.37500.37900.45500.421900 | Benchmark | 1d | 2026-08-19 | 2026-08-19 | 4922 |  | 7 Days Work | 9202234 |
| 4924 | 36900.37000.37100.37500.37900.45500.422000 | Temporary Railing | 3d | 2026-08-20 | 2026-08-22 | 4923 |  | 7 Days Work | 9202244 |
| 4925 | 36900.37000.37100.37500.37900.45500.422100 | Blockwork | 10d | 2026-08-23 | 2026-09-01 | 4924 |  | 7 Days Work | 9202254 |
| 4926 | 36900.37000.37100.37500.37900.45500.422200 | MEP Clearance -2 | 10d | 2026-09-02 | 2026-09-11 | 4925 |  | 7 Days Work | 9202264 |
| 4927 | 36900.37000.37100.37500.37900.45500.422300 | Gypsum Plaster | 14d | 2026-09-12 | 2026-09-25 | 4926 |  | 7 Days Work | 9202274 |
| 4928 | 36900.37000.37100.37500.37900.45500.422400 | Kitchen Platform | 3d | 2026-09-26 | 2026-09-28 | 4927 |  | 7 Days Work | 9202284 |
| 4929 | 36900.37000.37100.37500.37900.45500.422500 | Kitchen dado | 7d | 2026-09-29 | 2026-10-05 | 4928 |  | 7 Days Work | 9202294 |
| 4930 | 36900.37000.37100.37500.37900.45500.422600 | Fire Fighting | 5d | 2026-10-06 | 2026-10-10 | 4929 |  | 7 Days Work | 9202304 |
| 4931 | 36900.37000.37100.37500.37900.45500.422700 | Anticapilary | 5d | 2026-10-11 | 2026-10-15 | 4930 |  | 7 Days Work | 9202314 |
| 4932 | 36900.37000.37100.37500.37900.45500.422800 | Stone Laying | 10d | 2026-11-18 | 2026-11-27 | 4972 |  | 7 Days Work | 9202324 |
| 4933 | 36900.37000.37100.37500.37900.45500.422900 | Tiles Laying | 7d | 2026-11-18 | 2026-11-24 | 4972 |  | 7 Days Work | 9202334 |
| 4934 | 36900.37000.37100.37500.37900.45500.423000 | 1st cutting/polishing of stone flooring | 7d | 2026-11-25 | 2026-12-01 | 4933 |  | 7 Days Work | 9202344 |
| 4935 | 36900.37000.37100.37500.37900.45500.423100 | Tiles/Stone skirting | 5d | 2026-12-02 | 2026-12-06 | 4934 |  | 7 Days Work | 9202354 |
| 4936 | 36900.37000.37100.37500.37900.45500.423200 | Protechtion sheet | 1d | 2026-12-07 | 2026-12-07 | 4935 |  | 7 Days Work | 9202364 |
| 4937 | 36900.37000.37100.37500.37900.45500.423300 | Installation of Temporary Door | 1d | 2026-12-08 | 2026-12-08 | 4936 |  | 7 Days Work | 9202374 |
| 4938 | 36900.37000.37100.37500.37900.45500.423400 | Fixing of window tracks | 5d | 2026-12-09 | 2026-12-13 | 4937 |  | 7 Days Work | 9202384 |
| 4939 | 36900.37000.37100.37500.37900.45500.423500 | Wire Pulling | 7d | 2026-12-14 | 2026-12-20 | 4938 |  | 7 Days Work | 9202394 |
| 4940 | 36900.37000.37100.37500.37900.45500.423600 | Gypsum Remaining | 5d | 2026-12-21 | 2026-12-25 | 4939 |  | 7 Days Work | 9202404 |
| 4941 | 36900.37000.37100.37500.37900.45500.423700 | Fixing of windoow shutter | 5d | 2026-12-26 | 2026-12-30 | 4940 |  | 7 Days Work | 9202414 |
| 4942 | 36900.37000.37100.37500.37900.45500.423800 | Putty Works - walls & ceiling | 15d | 2026-12-31 | 2027-01-14 | 4941 |  | 7 Days Work | 9202424 |
| 4943 | 36900.37000.37100.37500.37900.45500.423900 | False Ceiling- Framing | 10d | 2027-01-15 | 2027-01-24 | 4942 |  | 7 Days Work | 9202434 |
| 4944 | 36900.37000.37100.37500.37900.45500.424000 | Pre Hung Door | 3d | 2027-01-25 | 2027-01-27 | 4943 |  | 7 Days Work | 9202444 |
| 4945 | 36900.37000.37100.37500.37900.45500.424100 | Protechtion sheet | 2d | 2027-01-28 | 2027-01-29 | 4944 |  | 7 Days Work | 9202454 |
| 4946 | 36900.37000.37100.37500.37900.45500.424200 | Skirting near door | 2d | 2027-01-30 | 2027-01-31 | 4945 |  | 7 Days Work | 9202464 |
| 4947 | 36900.37000.37100.37500.37900.45500.424300 | Electrical Switch box fixing | 14d | 2027-02-01 | 2027-02-14 | 4946 |  | 7 Days Work | 9202474 |
| 4948 | 36900.37000.37100.37500.37900.45500.424400 | Fire Fighting painting | 5d | 2027-02-15 | 2027-02-19 | 4947 |  | 7 Days Work | 9202484 |
| 4949 | 36900.37000.37100.37500.37900.45500.424500 | Protection of all flooring, door & window hardware | 5d | 2027-02-20 | 2027-02-24 | 4948 |  | 7 Days Work | 9202494 |
| 4950 | 36900.37000.37100.37500.37900.45500.424600 | 1st coat primer- ceiling 1st & walls | 14d | 2027-02-25 | 2027-03-10 | 4949 |  | 7 Days Work | 9202504 |
| 4951 | 36900.37000.37100.37500.37900.45500.424700 | Wooden Flooring | 5d | 2027-03-11 | 2027-03-15 | 4950 |  | 7 Days Work | 9202514 |
| 4952 | 36900.37000.37100.37500.37900.45500.424800 | Removing of Temporary Railing & installation of Glass Railing | 5d | 2027-03-11 | 2027-03-15 | 4950 |  | 7 Days Work | 9202524 |
| 4953 | 36900.37000.37100.37500.37900.45500.424900 | Tile Grouting | 7d | 2027-03-11 | 2027-03-17 | 4950 |  | 7 Days Work | 9202534 |
| 4954 | 36900.37000.37100.37500.37900.45500.425000 | False Ceiling | 5d | 2027-03-18 | 2027-03-22 | 4953 |  | 7 Days Work | 9202544 |
| 4955 | 36900.37000.37100.37500.37900.45500.425100 | 2nd coat of primer | 10d | 2027-03-23 | 2027-04-01 | 4954 |  | 7 Days Work | 9202554 |
| 4956 | 36900.37000.37100.37500.37900.45500.425200 | Final cutting/polishing of stone flooring | 7d | 2027-04-02 | 2027-04-08 | 4955 |  | 7 Days Work | 9202564 |

| ID | WBS | Task | Duration | Start | Finish | Predecessors | Constraint | Calendar | Unique_Task_ID |
| --- | --- | --- | --- | --- | --- | --- | --- | --- | --- |
| 4957 | 36900.37000.37100.37500.37900.45500.59800 | **Toilet** | 237d | 2026-08-14 | 2027-04-07 |  | start no earlier than 2026-08-14 | 7 Days Work | 9197154 |
| 4958 | 36900.37000.37100.37500.37900.45500.59800.886900 | Toilet_MEP Clearance -1 | 7d | 2026-08-14 | 2026-08-20 | 4921 |  | 7 Days Work | 9208944 |
| 4959 | 36900.37000.37100.37500.37900.45500.59800.887000 | Toilet_Level Marking | 1d | 2026-08-21 | 2026-08-21 | 4958 |  | 7 Days Work | 9208954 |
| 4960 | 36900.37000.37100.37500.37900.45500.59800.887100 | Toilet_Chasing work for Electrical conduit & concealed plumbing | 5d | 2026-08-22 | 2026-08-26 | 4959 |  | 7 Days Work | 9208964 |
| 4961 | 36900.37000.37100.37500.37900.45500.59800.887200 | Toilet_Plumbing work 1st fix | 5d | 2026-08-27 | 2026-08-31 | 4960 |  | 7 Days Work | 9208974 |
| 4962 | 36900.37000.37100.37500.37900.45500.59800.887300 | Toilet_Sleeve/Bore Packing | 5d | 2026-09-01 | 2026-09-05 | 4961 |  | 7 Days Work | 9208984 |
| 4963 | 36900.37000.37100.37500.37900.45500.59800.887400 | Toilet_Waterproofing | 10d | 2026-09-06 | 2026-09-15 | 4962 |  | 7 Days Work | 9208994 |
| 4964 | 36900.37000.37100.37500.37900.45500.59800.887500 | Toilet_Screed | 1d | 2026-09-16 | 2026-09-16 | 4963 |  | 7 Days Work | 9209004 |
| 4965 | 36900.37000.37100.37500.37900.45500.59800.887600 | Toilet_Plumbing 2nd fix | 5d | 2026-09-17 | 2026-09-21 | 4964 |  | 7 Days Work | 9209014 |
| 4966 | 36900.37000.37100.37500.37900.45500.59800.887700 | Toilet_Ledge wall | 5d | 2026-09-22 | 2026-09-26 | 4965 |  | 7 Days Work | 9209024 |
| 4967 | 36900.37000.37100.37500.37900.45500.59800.887800 | Toilet_Cement Plaster | 5d | 2026-09-27 | 2026-10-01 | 4966 |  | 7 Days Work | 9209034 |
| 4968 | 36900.37000.37100.37500.37900.45500.59800.887900 | Toilet_Door Frame | 1d | 2026-10-02 | 2026-10-02 | 4967 |  | 7 Days Work | 9209044 |
| 4969 | 36900.37000.37100.37500.37900.45500.59800.888000 | Toilet_Wash basin & Couter | 3d | 2026-10-03 | 2026-10-05 | 4968 |  | 7 Days Work | 9209054 |
| 4970 | 36900.37000.37100.37500.37900.45500.59800.888100 | Toilet_Wall dado | 20d | 2026-10-06 | 2026-10-25 | 4969 |  | 7 Days Work | 9209064 |
| 4971 | 36900.37000.37100.37500.37900.45500.59800.888200 | Toilet_Granite Work-Ledge wall top | 3d | 2026-10-26 | 2026-10-28 | 4970 |  | 7 Days Work | 9209074 |
| 4972 | 36900.37000.37100.37500.37900.45500.59800.888300 | Toilet_Floor Tilling work | 20d | 2026-10-29 | 2026-11-17 | 4971 |  | 7 Days Work | 9209084 |
| 4973 | 36900.37000.37100.37500.37900.45500.59800.888400 | Toilet_1st row of dado | 5d | 2026-11-18 | 2026-11-22 | 4972 |  | 7 Days Work | 9209094 |
| 4974 | 36900.37000.37100.37500.37900.45500.59800.888500 | Toilet_Window Fixing | 14d | 2026-11-23 | 2026-12-06 | 4973 |  | 7 Days Work | 9209104 |
| 4975 | 36900.37000.37100.37500.37900.45500.59800.888600 | Toilet_Services above False ceiling | 21d | 2026-12-07 | 2026-12-27 | 4974 |  | 7 Days Work | 9209114 |
| 4976 | 36900.37000.37100.37500.37900.45500.59800.888700 | Toilet_False Ceiling framing | 12d | 2026-12-28 | 2027-01-08 | 4975 |  | 7 Days Work | 9209124 |
| 4977 | 36900.37000.37100.37500.37900.45500.59800.888800 | Toilet_Door Frame | 5d | 2027-01-09 | 2027-01-13 | 4976 |  | 7 Days Work | 9209134 |
| 4978 | 36900.37000.37100.37500.37900.45500.59800.888900 | Toilet_Epoxy Tile Grouting | 7d | 2027-03-11 | 2027-03-17 | 4953SS |  | 7 Days Work | 9209144 |
| 4979 | 36900.37000.37100.37500.37900.45500.59800.889000 | Toilet_False ceiling board fixing, CP Sanitary Fixture, Electric Fixture | 21d | 2027-03-18 | 2027-04-07 | 4978 |  | 7 Days Work | 9209154 |
| 4980 | 36900.37000.37100.37500.37900.45600 | **15th Habitable/16th Floor** | 245d | 2026-08-16 | 2027-04-17 |  | start no earlier than 2026-08-16 | 7 Days Work | 9196964 |
| 4981 | 36900.37000.37100.37500.37900.45600.425300 | Post Pour | 7d | 2026-08-16 | 2026-08-22 | 4132FS+15d |  | 7 Days Work | 9202574 |
| 4982 | 36900.37000.37100.37500.37900.45600.425400 | MEP Clearance -1 | 5d | 2026-08-23 | 2026-08-27 | 4981 |  | 7 Days Work | 9202584 |
| 4983 | 36900.37000.37100.37500.37900.45600.425500 | Benchmark | 1d | 2026-08-28 | 2026-08-28 | 4982 |  | 7 Days Work | 9202594 |
| 4984 | 36900.37000.37100.37500.37900.45600.425600 | Temporary Railing | 3d | 2026-08-29 | 2026-08-31 | 4983 |  | 7 Days Work | 9202604 |
| 4985 | 36900.37000.37100.37500.37900.45600.425700 | Blockwork | 10d | 2026-09-01 | 2026-09-10 | 4984 |  | 7 Days Work | 9202614 |
| 4986 | 36900.37000.37100.37500.37900.45600.425800 | MEP Clearance -2 | 10d | 2026-09-11 | 2026-09-20 | 4985 |  | 7 Days Work | 9202624 |
| 4987 | 36900.37000.37100.37500.37900.45600.425900 | Gypsum Plaster | 14d | 2026-09-21 | 2026-10-04 | 4986 |  | 7 Days Work | 9202634 |
| 4988 | 36900.37000.37100.37500.37900.45600.426000 | Kitchen Platform | 3d | 2026-10-05 | 2026-10-07 | 4987 |  | 7 Days Work | 9202644 |
| 4989 | 36900.37000.37100.37500.37900.45600.426100 | Kitchen dado | 7d | 2026-10-08 | 2026-10-14 | 4988 |  | 7 Days Work | 9202654 |
| 4990 | 36900.37000.37100.37500.37900.45600.426200 | Fire Fighting | 5d | 2026-10-15 | 2026-10-19 | 4989 |  | 7 Days Work | 9202664 |
| 4991 | 36900.37000.37100.37500.37900.45600.426300 | Anticapilary | 5d | 2026-10-20 | 2026-10-24 | 4990 |  | 7 Days Work | 9202674 |
| 4992 | 36900.37000.37100.37500.37900.45600.426400 | Stone Laying | 10d | 2026-11-27 | 2026-12-06 | 5032 |  | 7 Days Work | 9202684 |
| 4993 | 36900.37000.37100.37500.37900.45600.426500 | Tiles Laying | 7d | 2026-11-27 | 2026-12-03 | 5032 |  | 7 Days Work | 9202694 |
| 4994 | 36900.37000.37100.37500.37900.45600.426600 | 1st cutting/polishing of stone flooring | 7d | 2026-12-04 | 2026-12-10 | 4993 |  | 7 Days Work | 9202704 |
| 4995 | 36900.37000.37100.37500.37900.45600.426700 | Tiles/Stone skirting | 5d | 2026-12-11 | 2026-12-15 | 4994 |  | 7 Days Work | 9202714 |
| 4996 | 36900.37000.37100.37500.37900.45600.426800 | Protechtion sheet | 1d | 2026-12-16 | 2026-12-16 | 4995 |  | 7 Days Work | 9202724 |
| 4997 | 36900.37000.37100.37500.37900.45600.426900 | Installation of Temporary Door | 1d | 2026-12-17 | 2026-12-17 | 4996 |  | 7 Days Work | 9202734 |
| 4998 | 36900.37000.37100.37500.37900.45600.427000 | Fixing of window tracks | 5d | 2026-12-18 | 2026-12-22 | 4997 |  | 7 Days Work | 9202744 |
| 4999 | 36900.37000.37100.37500.37900.45600.427100 | Wire Pulling | 7d | 2026-12-23 | 2026-12-29 | 4998 |  | 7 Days Work | 9202754 |
| 5000 | 36900.37000.37100.37500.37900.45600.427200 | Gypsum Remaining | 5d | 2026-12-30 | 2027-01-03 | 4999 |  | 7 Days Work | 9202764 |
| 5001 | 36900.37000.37100.37500.37900.45600.427300 | Fixing of windoow shutter | 5d | 2027-01-04 | 2027-01-08 | 5000 |  | 7 Days Work | 9202774 |
| 5002 | 36900.37000.37100.37500.37900.45600.427400 | Putty Works - walls & ceiling | 15d | 2027-01-09 | 2027-01-23 | 5001 |  | 7 Days Work | 9202784 |
| 5003 | 36900.37000.37100.37500.37900.45600.427500 | False Ceiling- Framing | 10d | 2027-01-24 | 2027-02-02 | 5002 |  | 7 Days Work | 9202794 |
| 5004 | 36900.37000.37100.37500.37900.45600.427600 | Pre Hung Door | 3d | 2027-02-03 | 2027-02-05 | 5003 |  | 7 Days Work | 9202804 |
| 5005 | 36900.37000.37100.37500.37900.45600.427700 | Protechtion sheet | 2d | 2027-02-06 | 2027-02-07 | 5004 |  | 7 Days Work | 9202814 |
| 5006 | 36900.37000.37100.37500.37900.45600.427800 | Skirting near door | 2d | 2027-02-08 | 2027-02-09 | 5005 |  | 7 Days Work | 9202824 |
| 5007 | 36900.37000.37100.37500.37900.45600.427900 | Electrical Switch box fixing | 14d | 2027-02-10 | 2027-02-23 | 5006 |  | 7 Days Work | 9202834 |
| 5008 | 36900.37000.37100.37500.37900.45600.428000 | Fire Fighting painting | 5d | 2027-02-24 | 2027-02-28 | 5007 |  | 7 Days Work | 9202844 |
| 5009 | 36900.37000.37100.37500.37900.45600.428100 | Protection of all flooring, door & window hardware | 5d | 2027-03-01 | 2027-03-05 | 5008 |  | 7 Days Work | 9202854 |
| 5010 | 36900.37000.37100.37500.37900.45600.428200 | 1st coat primer- ceiling 1st & walls | 14d | 2027-03-06 | 2027-03-19 | 5009 |  | 7 Days Work | 9202864 |
| 5011 | 36900.37000.37100.37500.37900.45600.428300 | Wooden Flooring | 5d | 2027-03-20 | 2027-03-24 | 5010 |  | 7 Days Work | 9202874 |
| 5012 | 36900.37000.37100.37500.37900.45600.428400 | Removing of Temporary Railing & installation of Glass Railing | 5d | 2027-03-20 | 2027-03-24 | 5010 |  | 7 Days Work | 9202884 |
| 5013 | 36900.37000.37100.37500.37900.45600.428500 | Tile Grouting | 7d | 2027-03-20 | 2027-03-26 | 5010 |  | 7 Days Work | 9202894 |
| 5014 | 36900.37000.37100.37500.37900.45600.428600 | False Ceiling | 5d | 2027-03-27 | 2027-03-31 | 5013 |  | 7 Days Work | 9202904 |
| 5015 | 36900.37000.37100.37500.37900.45600.428700 | 2nd coat of primer | 10d | 2027-04-01 | 2027-04-10 | 5014 |  | 7 Days Work | 9202914 |
| 5016 | 36900.37000.37100.37500.37900.45600.428800 | Final cutting/polishing of stone flooring | 7d | 2027-04-11 | 2027-04-17 | 5015 |  | 7 Days Work | 9202924 |

| ID | WBS | Task | Duration | Start | Finish | Predecessors | Constraint | Calendar | Unique_Task_ID |
| --- | --- | --- | --- | --- | --- | --- | --- | --- | --- |
| 5017 | 36900.37000.37100.37500.37900.45600.59900 | **Toilet** | 237d | 2026-08-23 | 2027-04-16 |  | start no earlier than 2026-08-23 | 7 Days Work | 9197164 |
| 5018 | 36900.37000.37100.37500.37900.45600.59900.889100 | Toilet_MEP Clearance -1 | 7d | 2026-08-23 | 2026-08-29 | 4981 |  | 7 Days Work | 9209164 |
| 5019 | 36900.37000.37100.37500.37900.45600.59900.889200 | Toilet_Level Marking | 1d | 2026-08-30 | 2026-08-30 | 5018 |  | 7 Days Work | 9209174 |
| 5020 | 36900.37000.37100.37500.37900.45600.59900.889300 | Toilet_Chasing work for Electrical conduit & concealed plumbing | 5d | 2026-08-31 | 2026-09-04 | 5019 |  | 7 Days Work | 9209184 |
| 5021 | 36900.37000.37100.37500.37900.45600.59900.889400 | Toilet_Plumbing work 1st fix | 5d | 2026-09-05 | 2026-09-09 | 5020 |  | 7 Days Work | 9209194 |
| 5022 | 36900.37000.37100.37500.37900.45600.59900.889500 | Toilet_Sleeve/Bore Packing | 5d | 2026-09-10 | 2026-09-14 | 5021 |  | 7 Days Work | 9209204 |
| 5023 | 36900.37000.37100.37500.37900.45600.59900.889600 | Toilet_Waterproofing | 10d | 2026-09-15 | 2026-09-24 | 5022 |  | 7 Days Work | 9209214 |
| 5024 | 36900.37000.37100.37500.37900.45600.59900.889700 | Toilet_Screed | 1d | 2026-09-25 | 2026-09-25 | 5023 |  | 7 Days Work | 9209224 |
| 5025 | 36900.37000.37100.37500.37900.45600.59900.889800 | Toilet_Plumbing 2nd fix | 5d | 2026-09-26 | 2026-09-30 | 5024 |  | 7 Days Work | 9209234 |
| 5026 | 36900.37000.37100.37500.37900.45600.59900.889900 | Toilet_Ledge wall | 5d | 2026-10-01 | 2026-10-05 | 5025 |  | 7 Days Work | 9209244 |
| 5027 | 36900.37000.37100.37500.37900.45600.59900.890000 | Toilet_Cement Plaster | 5d | 2026-10-06 | 2026-10-10 | 5026 |  | 7 Days Work | 9209254 |
| 5028 | 36900.37000.37100.37500.37900.45600.59900.890100 | Toilet_Door Frame | 1d | 2026-10-11 | 2026-10-11 | 5027 |  | 7 Days Work | 9209264 |
| 5029 | 36900.37000.37100.37500.37900.45600.59900.890200 | Toilet_Wash basin & Couter | 3d | 2026-10-12 | 2026-10-14 | 5028 |  | 7 Days Work | 9209274 |
| 5030 | 36900.37000.37100.37500.37900.45600.59900.890300 | Toilet_Wall dado | 20d | 2026-10-15 | 2026-11-03 | 5029 |  | 7 Days Work | 9209284 |
| 5031 | 36900.37000.37100.37500.37900.45600.59900.890400 | Toilet_Granite Work-Ledge wall top | 3d | 2026-11-04 | 2026-11-06 | 5030 |  | 7 Days Work | 9209294 |
| 5032 | 36900.37000.37100.37500.37900.45600.59900.890500 | Toilet_Floor Tilling work | 20d | 2026-11-07 | 2026-11-26 | 5031 |  | 7 Days Work | 9209304 |
| 5033 | 36900.37000.37100.37500.37900.45600.59900.890600 | Toilet_1st row of dado | 5d | 2026-11-27 | 2026-12-01 | 5032 |  | 7 Days Work | 9209314 |
| 5034 | 36900.37000.37100.37500.37900.45600.59900.890700 | Toilet_Window Fixing | 14d | 2026-12-02 | 2026-12-15 | 5033 |  | 7 Days Work | 9209324 |
| 5035 | 36900.37000.37100.37500.37900.45600.59900.890800 | Toilet_Services above False ceiling | 21d | 2026-12-16 | 2027-01-05 | 5034 |  | 7 Days Work | 9209334 |
| 5036 | 36900.37000.37100.37500.37900.45600.59900.890900 | Toilet_False Ceiling framing | 12d | 2027-01-06 | 2027-01-17 | 5035 |  | 7 Days Work | 9209344 |
| 5037 | 36900.37000.37100.37500.37900.45600.59900.891000 | Toilet_Door Frame | 5d | 2027-01-18 | 2027-01-22 | 5036 |  | 7 Days Work | 9209354 |
| 5038 | 36900.37000.37100.37500.37900.45600.59900.891100 | Toilet_Epoxy Tile Grouting | 7d | 2027-03-20 | 2027-03-26 | 5013SS |  | 7 Days Work | 9209364 |
| 5039 | 36900.37000.37100.37500.37900.45600.59900.891200 | Toilet_False ceiling board fixing, CP Sanitary Fixture, Electric Fixture | 21d | 2027-03-27 | 2027-04-16 | 5038 |  | 7 Days Work | 9209374 |
| 5040 | 36900.37000.37100.37500.37900.45700 | **16th Habitable/17th Floor** | 245d | 2026-08-25 | 2027-04-26 |  | start no earlier than 2026-08-25 | 7 Days Work | 9196974 |
| 5041 | 36900.37000.37100.37500.37900.45700.428900 | Post Pour | 7d | 2026-08-25 | 2026-08-31 | 4133FS+15d |  | 7 Days Work | 9202934 |
| 5042 | 36900.37000.37100.37500.37900.45700.429000 | MEP Clearance -1 | 5d | 2026-09-01 | 2026-09-05 | 5041 |  | 7 Days Work | 9202944 |
| 5043 | 36900.37000.37100.37500.37900.45700.429100 | Benchmark | 1d | 2026-09-06 | 2026-09-06 | 5042 |  | 7 Days Work | 9202954 |
| 5044 | 36900.37000.37100.37500.37900.45700.429200 | Temporary Railing | 3d | 2026-09-07 | 2026-09-09 | 5043 |  | 7 Days Work | 9202964 |
| 5045 | 36900.37000.37100.37500.37900.45700.429300 | Blockwork | 10d | 2026-09-10 | 2026-09-19 | 5044 |  | 7 Days Work | 9202974 |
| 5046 | 36900.37000.37100.37500.37900.45700.429400 | MEP Clearance -2 | 10d | 2026-09-20 | 2026-09-29 | 5045 |  | 7 Days Work | 9202984 |
| 5047 | 36900.37000.37100.37500.37900.45700.429500 | Gypsum Plaster | 14d | 2026-09-30 | 2026-10-13 | 5046 |  | 7 Days Work | 9202994 |
| 5048 | 36900.37000.37100.37500.37900.45700.429600 | Kitchen Platform | 3d | 2026-10-14 | 2026-10-16 | 5047 |  | 7 Days Work | 9203004 |
| 5049 | 36900.37000.37100.37500.37900.45700.429700 | Kitchen dado | 7d | 2026-10-17 | 2026-10-23 | 5048 |  | 7 Days Work | 9203014 |
| 5050 | 36900.37000.37100.37500.37900.45700.429800 | Fire Fighting | 5d | 2026-10-24 | 2026-10-28 | 5049 |  | 7 Days Work | 9203024 |
| 5051 | 36900.37000.37100.37500.37900.45700.429900 | Anticapilary | 5d | 2026-10-29 | 2026-11-02 | 5050 |  | 7 Days Work | 9203034 |
| 5052 | 36900.37000.37100.37500.37900.45700.430000 | Stone Laying | 10d | 2026-12-06 | 2026-12-15 | 5092 |  | 7 Days Work | 9203044 |
| 5053 | 36900.37000.37100.37500.37900.45700.430100 | Tiles Laying | 7d | 2026-12-06 | 2026-12-12 | 5092 |  | 7 Days Work | 9203054 |
| 5054 | 36900.37000.37100.37500.37900.45700.430200 | 1st cutting/polishing of stone flooring | 7d | 2026-12-13 | 2026-12-19 | 5053 |  | 7 Days Work | 9203064 |
| 5055 | 36900.37000.37100.37500.37900.45700.430300 | Tiles/Stone skirting | 5d | 2026-12-20 | 2026-12-24 | 5054 |  | 7 Days Work | 9203074 |
| 5056 | 36900.37000.37100.37500.37900.45700.430400 | Protechtion sheet | 1d | 2026-12-25 | 2026-12-25 | 5055 |  | 7 Days Work | 9203084 |
| 5057 | 36900.37000.37100.37500.37900.45700.430500 | Installation of Temporary Door | 1d | 2026-12-26 | 2026-12-26 | 5056 |  | 7 Days Work | 9203094 |
| 5058 | 36900.37000.37100.37500.37900.45700.430600 | Fixing of window tracks | 5d | 2026-12-27 | 2026-12-31 | 5057 |  | 7 Days Work | 9203104 |
| 5059 | 36900.37000.37100.37500.37900.45700.430700 | Wire Pulling | 7d | 2027-01-01 | 2027-01-07 | 5058 |  | 7 Days Work | 9203114 |
| 5060 | 36900.37000.37100.37500.37900.45700.430800 | Gypsum Remaining | 5d | 2027-01-08 | 2027-01-12 | 5059 |  | 7 Days Work | 9203124 |
| 5061 | 36900.37000.37100.37500.37900.45700.430900 | Fixing of windoow shutter | 5d | 2027-01-13 | 2027-01-17 | 5060 |  | 7 Days Work | 9203134 |
| 5062 | 36900.37000.37100.37500.37900.45700.431000 | Putty Works - walls & ceiling | 15d | 2027-01-18 | 2027-02-01 | 5061 |  | 7 Days Work | 9203144 |
| 5063 | 36900.37000.37100.37500.37900.45700.431100 | False Ceiling- Framing | 10d | 2027-02-02 | 2027-02-11 | 5062 |  | 7 Days Work | 9203154 |
| 5064 | 36900.37000.37100.37500.37900.45700.431200 | Pre Hung Door | 3d | 2027-02-12 | 2027-02-14 | 5063 |  | 7 Days Work | 9203164 |
| 5065 | 36900.37000.37100.37500.37900.45700.431300 | Protechtion sheet | 2d | 2027-02-15 | 2027-02-16 | 5064 |  | 7 Days Work | 9203174 |
| 5066 | 36900.37000.37100.37500.37900.45700.431400 | Skirting near door | 2d | 2027-02-17 | 2027-02-18 | 5065 |  | 7 Days Work | 9203184 |
| 5067 | 36900.37000.37100.37500.37900.45700.431500 | Electrical Switch box fixing | 14d | 2027-02-19 | 2027-03-04 | 5066 |  | 7 Days Work | 9203194 |
| 5068 | 36900.37000.37100.37500.37900.45700.431600 | Fire Fighting painting | 5d | 2027-03-05 | 2027-03-09 | 5067 |  | 7 Days Work | 9203204 |
| 5069 | 36900.37000.37100.37500.37900.45700.431700 | Protection of all flooring, door & window hardware | 5d | 2027-03-10 | 2027-03-14 | 5068 |  | 7 Days Work | 9203214 |
| 5070 | 36900.37000.37100.37500.37900.45700.431800 | 1st coat primer- ceiling 1st & walls | 14d | 2027-03-15 | 2027-03-28 | 5069 |  | 7 Days Work | 9203224 |
| 5071 | 36900.37000.37100.37500.37900.45700.431900 | Wooden Flooring | 5d | 2027-03-29 | 2027-04-02 | 5070 |  | 7 Days Work | 9203234 |
| 5072 | 36900.37000.37100.37500.37900.45700.432000 | Removing of Temporary Railing & installation of Glass Railing | 5d | 2027-03-29 | 2027-04-02 | 5070 |  | 7 Days Work | 9203244 |
| 5073 | 36900.37000.37100.37500.37900.45700.432100 | Tile Grouting | 7d | 2027-03-29 | 2027-04-04 | 5070 |  | 7 Days Work | 9203254 |
| 5074 | 36900.37000.37100.37500.37900.45700.432200 | False Ceiling | 5d | 2027-04-05 | 2027-04-09 | 5073 |  | 7 Days Work | 9203264 |
| 5075 | 36900.37000.37100.37500.37900.45700.432300 | 2nd coat of primer | 10d | 2027-04-10 | 2027-04-19 | 5074 |  | 7 Days Work | 9203274 |
| 5076 | 36900.37000.37100.37500.37900.45700.432400 | Final cutting/polishing of stone flooring | 7d | 2027-04-20 | 2027-04-26 | 5075 |  | 7 Days Work | 9203284 |

| ID | WBS | Task | Duration | Start | Finish | Predecessors | Constraint | Calendar | Unique_Task_ID |
| --- | --- | --- | --- | --- | --- | --- | --- | --- | --- |
| 5077 | 36900.37000.37100.37500.37900.45700.60000 | **Toilet** | 237d | 2026-09-01 | 2027-04-25 |  | start no earlier than 2026-09-01 | 7 Days Work | 9197174 |
| 5078 | 36900.37000.37100.37500.37900.45700.60000.891300 | Toilet_MEP Clearance -1 | 7d | 2026-09-01 | 2026-09-07 | 5041 |  | 7 Days Work | 9209384 |
| 5079 | 36900.37000.37100.37500.37900.45700.60000.891400 | Toilet_Level Marking | 1d | 2026-09-08 | 2026-09-08 | 5078 |  | 7 Days Work | 9209394 |
| 5080 | 36900.37000.37100.37500.37900.45700.60000.891500 | Toilet_Chasing work for Electrical conduit & concealed plumbing | 5d | 2026-09-09 | 2026-09-13 | 5079 |  | 7 Days Work | 9209404 |
| 5081 | 36900.37000.37100.37500.37900.45700.60000.891600 | Toilet_Plumbing work 1st fix | 5d | 2026-09-14 | 2026-09-18 | 5080 |  | 7 Days Work | 9209414 |
| 5082 | 36900.37000.37100.37500.37900.45700.60000.891700 | Toilet_Sleeve/Bore Packing | 5d | 2026-09-19 | 2026-09-23 | 5081 |  | 7 Days Work | 9209424 |
| 5083 | 36900.37000.37100.37500.37900.45700.60000.891800 | Toilet_Waterproofing | 10d | 2026-09-24 | 2026-10-03 | 5082 |  | 7 Days Work | 9209434 |
| 5084 | 36900.37000.37100.37500.37900.45700.60000.891900 | Toilet_Screed | 1d | 2026-10-04 | 2026-10-04 | 5083 |  | 7 Days Work | 9209444 |
| 5085 | 36900.37000.37100.37500.37900.45700.60000.892000 | Toilet_Plumbing 2nd fix | 5d | 2026-10-05 | 2026-10-09 | 5084 |  | 7 Days Work | 9209454 |
| 5086 | 36900.37000.37100.37500.37900.45700.60000.892100 | Toilet_Ledge wall | 5d | 2026-10-10 | 2026-10-14 | 5085 |  | 7 Days Work | 9209464 |
| 5087 | 36900.37000.37100.37500.37900.45700.60000.892200 | Toilet_Cement Plaster | 5d | 2026-10-15 | 2026-10-19 | 5086 |  | 7 Days Work | 9209474 |
| 5088 | 36900.37000.37100.37500.37900.45700.60000.892300 | Toilet_Door Frame | 1d | 2026-10-20 | 2026-10-20 | 5087 |  | 7 Days Work | 9209484 |
| 5089 | 36900.37000.37100.37500.37900.45700.60000.892400 | Toilet_Wash basin & Couter | 3d | 2026-10-21 | 2026-10-23 | 5088 |  | 7 Days Work | 9209494 |
| 5090 | 36900.37000.37100.37500.37900.45700.60000.892500 | Toilet_Wall dado | 20d | 2026-10-24 | 2026-11-12 | 5089 |  | 7 Days Work | 9209504 |
| 5091 | 36900.37000.37100.37500.37900.45700.60000.892600 | Toilet_Granite Work-Ledge wall top | 3d | 2026-11-13 | 2026-11-15 | 5090 |  | 7 Days Work | 9209514 |
| 5092 | 36900.37000.37100.37500.37900.45700.60000.892700 | Toilet_Floor Tilling work | 20d | 2026-11-16 | 2026-12-05 | 5091 |  | 7 Days Work | 9209524 |
| 5093 | 36900.37000.37100.37500.37900.45700.60000.892800 | Toilet_1st row of dado | 5d | 2026-12-06 | 2026-12-10 | 5092 |  | 7 Days Work | 9209534 |
| 5094 | 36900.37000.37100.37500.37900.45700.60000.892900 | Toilet_Window Fixing | 14d | 2026-12-11 | 2026-12-24 | 5093 |  | 7 Days Work | 9209544 |
| 5095 | 36900.37000.37100.37500.37900.45700.60000.893000 | Toilet_Services above False ceiling | 21d | 2026-12-25 | 2027-01-14 | 5094 |  | 7 Days Work | 9209554 |
| 5096 | 36900.37000.37100.37500.37900.45700.60000.893100 | Toilet_False Ceiling framing | 12d | 2027-01-15 | 2027-01-26 | 5095 |  | 7 Days Work | 9209564 |
| 5097 | 36900.37000.37100.37500.37900.45700.60000.893200 | Toilet_Door Frame | 5d | 2027-01-27 | 2027-01-31 | 5096 |  | 7 Days Work | 9209574 |
| 5098 | 36900.37000.37100.37500.37900.45700.60000.893300 | Toilet_Epoxy Tile Grouting | 7d | 2027-03-29 | 2027-04-04 | 5073SS |  | 7 Days Work | 9209584 |
| 5099 | 36900.37000.37100.37500.37900.45700.60000.893400 | Toilet_False ceiling board fixing, CP Sanitary Fixture, Electric Fixture | 21d | 2027-04-05 | 2027-04-25 | 5098 |  | 7 Days Work | 9209594 |
| 5100 | 36900.37000.37100.37500.37900.45800 | **17th Habitable/18th Floor** | 245d | 2026-09-06 | 2027-05-08 |  | start no earlier than 2026-09-06 | 7 Days Work | 9196984 |
| 5101 | 36900.37000.37100.37500.37900.45800.432500 | Post Pour | 7d | 2026-09-06 | 2026-09-12 | 4134FS+15d |  | 7 Days Work | 9203294 |
| 5102 | 36900.37000.37100.37500.37900.45800.432600 | MEP Clearance -1 | 5d | 2026-09-13 | 2026-09-17 | 5101 |  | 7 Days Work | 9203304 |
| 5103 | 36900.37000.37100.37500.37900.45800.432700 | Benchmark | 1d | 2026-09-18 | 2026-09-18 | 5102 |  | 7 Days Work | 9203314 |
| 5104 | 36900.37000.37100.37500.37900.45800.432800 | Temporary Railing | 3d | 2026-09-19 | 2026-09-21 | 5103 |  | 7 Days Work | 9203324 |
| 5105 | 36900.37000.37100.37500.37900.45800.432900 | Blockwork | 10d | 2026-09-22 | 2026-10-01 | 5104 |  | 7 Days Work | 9203334 |
| 5106 | 36900.37000.37100.37500.37900.45800.433000 | MEP Clearance -2 | 10d | 2026-10-02 | 2026-10-11 | 5105 |  | 7 Days Work | 9203344 |
| 5107 | 36900.37000.37100.37500.37900.45800.433100 | Gypsum Plaster | 14d | 2026-10-12 | 2026-10-25 | 5106 |  | 7 Days Work | 9203354 |
| 5108 | 36900.37000.37100.37500.37900.45800.433200 | Kitchen Platform | 3d | 2026-10-26 | 2026-10-28 | 5107 |  | 7 Days Work | 9203364 |
| 5109 | 36900.37000.37100.37500.37900.45800.433300 | Kitchen dado | 7d | 2026-10-29 | 2026-11-04 | 5108 |  | 7 Days Work | 9203374 |
| 5110 | 36900.37000.37100.37500.37900.45800.433400 | Fire Fighting | 5d | 2026-11-05 | 2026-11-09 | 5109 |  | 7 Days Work | 9203384 |
| 5111 | 36900.37000.37100.37500.37900.45800.433500 | Anticapilary | 5d | 2026-11-10 | 2026-11-14 | 5110 |  | 7 Days Work | 9203394 |
| 5112 | 36900.37000.37100.37500.37900.45800.433600 | Stone Laying | 10d | 2026-12-18 | 2026-12-27 | 5152 |  | 7 Days Work | 9203404 |
| 5113 | 36900.37000.37100.37500.37900.45800.433700 | Tiles Laying | 7d | 2026-12-18 | 2026-12-24 | 5152 |  | 7 Days Work | 9203414 |
| 5114 | 36900.37000.37100.37500.37900.45800.433800 | 1st cutting/polishing of stone flooring | 7d | 2026-12-25 | 2026-12-31 | 5113 |  | 7 Days Work | 9203424 |
| 5115 | 36900.37000.37100.37500.37900.45800.433900 | Tiles/Stone skirting | 5d | 2027-01-01 | 2027-01-05 | 5114 |  | 7 Days Work | 9203434 |
| 5116 | 36900.37000.37100.37500.37900.45800.434000 | Protechtion sheet | 1d | 2027-01-06 | 2027-01-06 | 5115 |  | 7 Days Work | 9203444 |
| 5117 | 36900.37000.37100.37500.37900.45800.434100 | Installation of Temporary Door | 1d | 2027-01-07 | 2027-01-07 | 5116 |  | 7 Days Work | 9203454 |
| 5118 | 36900.37000.37100.37500.37900.45800.434200 | Fixing of window tracks | 5d | 2027-01-08 | 2027-01-12 | 5117 |  | 7 Days Work | 9203464 |
| 5119 | 36900.37000.37100.37500.37900.45800.434300 | Wire Pulling | 7d | 2027-01-13 | 2027-01-19 | 5118 |  | 7 Days Work | 9203474 |
| 5120 | 36900.37000.37100.37500.37900.45800.434400 | Gypsum Remaining | 5d | 2027-01-20 | 2027-01-24 | 5119 |  | 7 Days Work | 9203484 |
| 5121 | 36900.37000.37100.37500.37900.45800.434500 | Fixing of windoow shutter | 5d | 2027-01-25 | 2027-01-29 | 5120 |  | 7 Days Work | 9203494 |
| 5122 | 36900.37000.37100.37500.37900.45800.434600 | Putty Works - walls & ceiling | 15d | 2027-01-30 | 2027-02-13 | 5121 |  | 7 Days Work | 9203504 |
| 5123 | 36900.37000.37100.37500.37900.45800.434700 | False Ceiling- Framing | 10d | 2027-02-14 | 2027-02-23 | 5122 |  | 7 Days Work | 9203514 |
| 5124 | 36900.37000.37100.37500.37900.45800.434800 | Pre Hung Door | 3d | 2027-02-24 | 2027-02-26 | 5123 |  | 7 Days Work | 9203524 |
| 5125 | 36900.37000.37100.37500.37900.45800.434900 | Protechtion sheet | 2d | 2027-02-27 | 2027-02-28 | 5124 |  | 7 Days Work | 9203534 |
| 5126 | 36900.37000.37100.37500.37900.45800.435000 | Skirting near door | 2d | 2027-03-01 | 2027-03-02 | 5125 |  | 7 Days Work | 9203544 |
| 5127 | 36900.37000.37100.37500.37900.45800.435100 | Electrical Switch box fixing | 14d | 2027-03-03 | 2027-03-16 | 5126 |  | 7 Days Work | 9203554 |
| 5128 | 36900.37000.37100.37500.37900.45800.435200 | Fire Fighting painting | 5d | 2027-03-17 | 2027-03-21 | 5127 |  | 7 Days Work | 9203564 |
| 5129 | 36900.37000.37100.37500.37900.45800.435300 | Protection of all flooring, door & window hardware | 5d | 2027-03-22 | 2027-03-26 | 5128 |  | 7 Days Work | 9203574 |
| 5130 | 36900.37000.37100.37500.37900.45800.435400 | 1st coat primer- ceiling 1st & walls | 14d | 2027-03-27 | 2027-04-09 | 5129 |  | 7 Days Work | 9203584 |
| 5131 | 36900.37000.37100.37500.37900.45800.435500 | Wooden Flooring | 5d | 2027-04-10 | 2027-04-14 | 5130 |  | 7 Days Work | 9203594 |
| 5132 | 36900.37000.37100.37500.37900.45800.435600 | Removing of Temporary Railing & installation of Glass Railing | 5d | 2027-04-10 | 2027-04-14 | 5130 |  | 7 Days Work | 9203604 |
| 5133 | 36900.37000.37100.37500.37900.45800.435700 | Tile Grouting | 7d | 2027-04-10 | 2027-04-16 | 5130 |  | 7 Days Work | 9203614 |
| 5134 | 36900.37000.37100.37500.37900.45800.435800 | False Ceiling | 5d | 2027-04-17 | 2027-04-21 | 5133 |  | 7 Days Work | 9203624 |
| 5135 | 36900.37000.37100.37500.37900.45800.435900 | 2nd coat of primer | 10d | 2027-04-22 | 2027-05-01 | 5134 |  | 7 Days Work | 9203634 |
| 5136 | 36900.37000.37100.37500.37900.45800.436000 | Final cutting/polishing of stone flooring | 7d | 2027-05-02 | 2027-05-08 | 5135 |  | 7 Days Work | 9203644 |

| ID | WBS | Task | Duration | Start | Finish | Predecessors | Constraint | Calendar | Unique_Task_ID |
| --- | --- | --- | --- | --- | --- | --- | --- | --- | --- |
| 5137 | 36900.37000.37100.37500.37900.45800.60100 | **Toilet** | 237d | 2026-09-13 | 2027-05-07 |  | start no earlier than 2026-09-13 | 7 Days Work | 9197184 |
| 5138 | 36900.37000.37100.37500.37900.45800.60100.893500 | Toilet_MEP Clearance -1 | 7d | 2026-09-13 | 2026-09-19 | 5101 |  | 7 Days Work | 9209604 |
| 5139 | 36900.37000.37100.37500.37900.45800.60100.893600 | Toilet_Level Marking | 1d | 2026-09-20 | 2026-09-20 | 5138 |  | 7 Days Work | 9209614 |
| 5140 | 36900.37000.37100.37500.37900.45800.60100.893700 | Toilet_Chasing work for Electrical conduit & concealed plumbing | 5d | 2026-09-21 | 2026-09-25 | 5139 |  | 7 Days Work | 9209624 |
| 5141 | 36900.37000.37100.37500.37900.45800.60100.893800 | Toilet_Plumbing work 1st fix | 5d | 2026-09-26 | 2026-09-30 | 5140 |  | 7 Days Work | 9209634 |
| 5142 | 36900.37000.37100.37500.37900.45800.60100.893900 | Toilet_Sleeve/Bore Packing | 5d | 2026-10-01 | 2026-10-05 | 5141 |  | 7 Days Work | 9209644 |
| 5143 | 36900.37000.37100.37500.37900.45800.60100.894000 | Toilet_Waterproofing | 10d | 2026-10-06 | 2026-10-15 | 5142 |  | 7 Days Work | 9209654 |
| 5144 | 36900.37000.37100.37500.37900.45800.60100.894100 | Toilet_Screed | 1d | 2026-10-16 | 2026-10-16 | 5143 |  | 7 Days Work | 9209664 |
| 5145 | 36900.37000.37100.37500.37900.45800.60100.894200 | Toilet_Plumbing 2nd fix | 5d | 2026-10-17 | 2026-10-21 | 5144 |  | 7 Days Work | 9209674 |
| 5146 | 36900.37000.37100.37500.37900.45800.60100.894300 | Toilet_Ledge wall | 5d | 2026-10-22 | 2026-10-26 | 5145 |  | 7 Days Work | 9209684 |
| 5147 | 36900.37000.37100.37500.37900.45800.60100.894400 | Toilet_Cement Plaster | 5d | 2026-10-27 | 2026-10-31 | 5146 |  | 7 Days Work | 9209694 |
| 5148 | 36900.37000.37100.37500.37900.45800.60100.894500 | Toilet_Door Frame | 1d | 2026-11-01 | 2026-11-01 | 5147 |  | 7 Days Work | 9209704 |
| 5149 | 36900.37000.37100.37500.37900.45800.60100.894600 | Toilet_Wash basin & Couter | 3d | 2026-11-02 | 2026-11-04 | 5148 |  | 7 Days Work | 9209714 |
| 5150 | 36900.37000.37100.37500.37900.45800.60100.894700 | Toilet_Wall dado | 20d | 2026-11-05 | 2026-11-24 | 5149 |  | 7 Days Work | 9209724 |
| 5151 | 36900.37000.37100.37500.37900.45800.60100.894800 | Toilet_Granite Work-Ledge wall top | 3d | 2026-11-25 | 2026-11-27 | 5150 |  | 7 Days Work | 9209734 |
| 5152 | 36900.37000.37100.37500.37900.45800.60100.894900 | Toilet_Floor Tilling work | 20d | 2026-11-28 | 2026-12-17 | 5151 |  | 7 Days Work | 9209744 |
| 5153 | 36900.37000.37100.37500.37900.45800.60100.895000 | Toilet_1st row of dado | 5d | 2026-12-18 | 2026-12-22 | 5152 |  | 7 Days Work | 9209754 |
| 5154 | 36900.37000.37100.37500.37900.45800.60100.895100 | Toilet_Window Fixing | 14d | 2026-12-23 | 2027-01-05 | 5153 |  | 7 Days Work | 9209764 |
| 5155 | 36900.37000.37100.37500.37900.45800.60100.895200 | Toilet_Services above False ceiling | 21d | 2027-01-06 | 2027-01-26 | 5154 |  | 7 Days Work | 9209774 |
| 5156 | 36900.37000.37100.37500.37900.45800.60100.895300 | Toilet_False Ceiling framing | 12d | 2027-01-27 | 2027-02-07 | 5155 |  | 7 Days Work | 9209784 |
| 5157 | 36900.37000.37100.37500.37900.45800.60100.895400 | Toilet_Door Frame | 5d | 2027-02-08 | 2027-02-12 | 5156 |  | 7 Days Work | 9209794 |
| 5158 | 36900.37000.37100.37500.37900.45800.60100.895500 | Toilet_Epoxy Tile Grouting | 7d | 2027-04-10 | 2027-04-16 | 5133SS |  | 7 Days Work | 9209804 |
| 5159 | 36900.37000.37100.37500.37900.45800.60100.895600 | Toilet_False ceiling board fixing, CP Sanitary Fixture, Electric Fixture | 21d | 2027-04-17 | 2027-05-07 | 5158 |  | 7 Days Work | 9209814 |
| 5160 | 36900.37000.37100.37500.37900.45900 | **18th Habitable/19th Floor** | 245d | 2026-09-15 | 2027-05-17 |  | start no earlier than 2026-09-15 | 7 Days Work | 9196994 |
| 5161 | 36900.37000.37100.37500.37900.45900.436100 | Post Pour | 7d | 2026-09-15 | 2026-09-21 | 4135FS+15d |  | 7 Days Work | 9203654 |
| 5162 | 36900.37000.37100.37500.37900.45900.436200 | MEP Clearance -1 | 5d | 2026-09-22 | 2026-09-26 | 5161 |  | 7 Days Work | 9203664 |
| 5163 | 36900.37000.37100.37500.37900.45900.436300 | Benchmark | 1d | 2026-09-27 | 2026-09-27 | 5162 |  | 7 Days Work | 9203674 |
| 5164 | 36900.37000.37100.37500.37900.45900.436400 | Temporary Railing | 3d | 2026-09-28 | 2026-09-30 | 5163 |  | 7 Days Work | 9203684 |
| 5165 | 36900.37000.37100.37500.37900.45900.436500 | Blockwork | 10d | 2026-10-01 | 2026-10-10 | 5164 |  | 7 Days Work | 9203694 |
| 5166 | 36900.37000.37100.37500.37900.45900.436600 | MEP Clearance -2 | 10d | 2026-10-11 | 2026-10-20 | 5165 |  | 7 Days Work | 9203704 |
| 5167 | 36900.37000.37100.37500.37900.45900.436700 | Gypsum Plaster | 14d | 2026-10-21 | 2026-11-03 | 5166 |  | 7 Days Work | 9203714 |
| 5168 | 36900.37000.37100.37500.37900.45900.436800 | Kitchen Platform | 3d | 2026-11-04 | 2026-11-06 | 5167 |  | 7 Days Work | 9203724 |
| 5169 | 36900.37000.37100.37500.37900.45900.436900 | Kitchen dado | 7d | 2026-11-07 | 2026-11-13 | 5168 |  | 7 Days Work | 9203734 |
| 5170 | 36900.37000.37100.37500.37900.45900.437000 | Fire Fighting | 5d | 2026-11-14 | 2026-11-18 | 5169 |  | 7 Days Work | 9203744 |
| 5171 | 36900.37000.37100.37500.37900.45900.437100 | Anticapilary | 5d | 2026-11-19 | 2026-11-23 | 5170 |  | 7 Days Work | 9203754 |
| 5172 | 36900.37000.37100.37500.37900.45900.437200 | Stone Laying | 10d | 2026-12-27 | 2027-01-05 | 5212 |  | 7 Days Work | 9203764 |
| 5173 | 36900.37000.37100.37500.37900.45900.437300 | Tiles Laying | 7d | 2026-12-27 | 2027-01-02 | 5212 |  | 7 Days Work | 9203774 |
| 5174 | 36900.37000.37100.37500.37900.45900.437400 | 1st cutting/polishing of stone flooring | 7d | 2027-01-03 | 2027-01-09 | 5173 |  | 7 Days Work | 9203784 |
| 5175 | 36900.37000.37100.37500.37900.45900.437500 | Tiles/Stone skirting | 5d | 2027-01-10 | 2027-01-14 | 5174 |  | 7 Days Work | 9203794 |
| 5176 | 36900.37000.37100.37500.37900.45900.437600 | Protechtion sheet | 1d | 2027-01-15 | 2027-01-15 | 5175 |  | 7 Days Work | 9203804 |
| 5177 | 36900.37000.37100.37500.37900.45900.437700 | Installation of Temporary Door | 1d | 2027-01-16 | 2027-01-16 | 5176 |  | 7 Days Work | 9203814 |
| 5178 | 36900.37000.37100.37500.37900.45900.437800 | Fixing of window tracks | 5d | 2027-01-17 | 2027-01-21 | 5177 |  | 7 Days Work | 9203824 |
| 5179 | 36900.37000.37100.37500.37900.45900.437900 | Wire Pulling | 7d | 2027-01-22 | 2027-01-28 | 5178 |  | 7 Days Work | 9203834 |
| 5180 | 36900.37000.37100.37500.37900.45900.438000 | Gypsum Remaining | 5d | 2027-01-29 | 2027-02-02 | 5179 |  | 7 Days Work | 9203844 |
| 5181 | 36900.37000.37100.37500.37900.45900.438100 | Fixing of windoow shutter | 5d | 2027-02-03 | 2027-02-07 | 5180 |  | 7 Days Work | 9203854 |
| 5182 | 36900.37000.37100.37500.37900.45900.438200 | Putty Works - walls & ceiling | 15d | 2027-02-08 | 2027-02-22 | 5181 |  | 7 Days Work | 9203864 |
| 5183 | 36900.37000.37100.37500.37900.45900.438300 | False Ceiling- Framing | 10d | 2027-02-23 | 2027-03-04 | 5182 |  | 7 Days Work | 9203874 |
| 5184 | 36900.37000.37100.37500.37900.45900.438400 | Pre Hung Door | 3d | 2027-03-05 | 2027-03-07 | 5183 |  | 7 Days Work | 9203884 |
| 5185 | 36900.37000.37100.37500.37900.45900.438500 | Protechtion sheet | 2d | 2027-03-08 | 2027-03-09 | 5184 |  | 7 Days Work | 9203894 |
| 5186 | 36900.37000.37100.37500.37900.45900.438600 | Skirting near door | 2d | 2027-03-10 | 2027-03-11 | 5185 |  | 7 Days Work | 9203904 |
| 5187 | 36900.37000.37100.37500.37900.45900.438700 | Electrical Switch box fixing | 14d | 2027-03-12 | 2027-03-25 | 5186 |  | 7 Days Work | 9203914 |
| 5188 | 36900.37000.37100.37500.37900.45900.438800 | Fire Fighting painting | 5d | 2027-03-26 | 2027-03-30 | 5187 |  | 7 Days Work | 9203924 |
| 5189 | 36900.37000.37100.37500.37900.45900.438900 | Protection of all flooring, door & window hardware | 5d | 2027-03-31 | 2027-04-04 | 5188 |  | 7 Days Work | 9203934 |
| 5190 | 36900.37000.37100.37500.37900.45900.439000 | 1st coat primer- ceiling 1st & walls | 14d | 2027-04-05 | 2027-04-18 | 5189 |  | 7 Days Work | 9203944 |
| 5191 | 36900.37000.37100.37500.37900.45900.439100 | Wooden Flooring | 5d | 2027-04-19 | 2027-04-23 | 5190 |  | 7 Days Work | 9203954 |
| 5192 | 36900.37000.37100.37500.37900.45900.439200 | Removing of Temporary Railing & installation of Glass Railing | 5d | 2027-04-19 | 2027-04-23 | 5190 |  | 7 Days Work | 9203964 |
| 5193 | 36900.37000.37100.37500.37900.45900.439300 | Tile Grouting | 7d | 2027-04-19 | 2027-04-25 | 5190 |  | 7 Days Work | 9203974 |
| 5194 | 36900.37000.37100.37500.37900.45900.439400 | False Ceiling | 5d | 2027-04-26 | 2027-04-30 | 5193 |  | 7 Days Work | 9203984 |
| 5195 | 36900.37000.37100.37500.37900.45900.439500 | 2nd coat of primer | 10d | 2027-05-01 | 2027-05-10 | 5194 |  | 7 Days Work | 9203994 |
| 5196 | 36900.37000.37100.37500.37900.45900.439600 | Final cutting/polishing of stone flooring | 7d | 2027-05-11 | 2027-05-17 | 5195 |  | 7 Days Work | 9204004 |

| ID | WBS | Task | Duration | Start | Finish | Predecessors | Constraint | Calendar | Unique_Task_ID |
| --- | --- | --- | --- | --- | --- | --- | --- | --- | --- |
| 5197 | 36900.37000.37100.37500.37900.45900.60200 | **Toilet** | 237d | 2026-09-22 | 2027-05-16 |  | start no earlier than 2026-09-22 | 7 Days Work | 9197194 |
| 5198 | 36900.37000.37100.37500.37900.45900.60200.895700 | Toilet_MEP Clearance -1 | 7d | 2026-09-22 | 2026-09-28 | 5161 |  | 7 Days Work | 9209824 |
| 5199 | 36900.37000.37100.37500.37900.45900.60200.895800 | Toilet_Level Marking | 1d | 2026-09-29 | 2026-09-29 | 5198 |  | 7 Days Work | 9209834 |
| 5200 | 36900.37000.37100.37500.37900.45900.60200.895900 | Toilet_Chasing work for Electrical conduit & concealed plumbing | 5d | 2026-09-30 | 2026-10-04 | 5199 |  | 7 Days Work | 9209844 |
| 5201 | 36900.37000.37100.37500.37900.45900.60200.896000 | Toilet_Plumbing work 1st fix | 5d | 2026-10-05 | 2026-10-09 | 5200 |  | 7 Days Work | 9209854 |
| 5202 | 36900.37000.37100.37500.37900.45900.60200.896100 | Toilet_Sleeve/Bore Packing | 5d | 2026-10-10 | 2026-10-14 | 5201 |  | 7 Days Work | 9209864 |
| 5203 | 36900.37000.37100.37500.37900.45900.60200.896200 | Toilet_Waterproofing | 10d | 2026-10-15 | 2026-10-24 | 5202 |  | 7 Days Work | 9209874 |
| 5204 | 36900.37000.37100.37500.37900.45900.60200.896300 | Toilet_Screed | 1d | 2026-10-25 | 2026-10-25 | 5203 |  | 7 Days Work | 9209884 |
| 5205 | 36900.37000.37100.37500.37900.45900.60200.896400 | Toilet_Plumbing 2nd fix | 5d | 2026-10-26 | 2026-10-30 | 5204 |  | 7 Days Work | 9209894 |
| 5206 | 36900.37000.37100.37500.37900.45900.60200.896500 | Toilet_Ledge wall | 5d | 2026-10-31 | 2026-11-04 | 5205 |  | 7 Days Work | 9209904 |
| 5207 | 36900.37000.37100.37500.37900.45900.60200.896600 | Toilet_Cement Plaster | 5d | 2026-11-05 | 2026-11-09 | 5206 |  | 7 Days Work | 9209914 |
| 5208 | 36900.37000.37100.37500.37900.45900.60200.896700 | Toilet_Door Frame | 1d | 2026-11-10 | 2026-11-10 | 5207 |  | 7 Days Work | 9209924 |
| 5209 | 36900.37000.37100.37500.37900.45900.60200.896800 | Toilet_Wash basin & Couter | 3d | 2026-11-11 | 2026-11-13 | 5208 |  | 7 Days Work | 9209934 |
| 5210 | 36900.37000.37100.37500.37900.45900.60200.896900 | Toilet_Wall dado | 20d | 2026-11-14 | 2026-12-03 | 5209 |  | 7 Days Work | 9209944 |
| 5211 | 36900.37000.37100.37500.37900.45900.60200.897000 | Toilet_Granite Work-Ledge wall top | 3d | 2026-12-04 | 2026-12-06 | 5210 |  | 7 Days Work | 9209954 |
| 5212 | 36900.37000.37100.37500.37900.45900.60200.897100 | Toilet_Floor Tilling work | 20d | 2026-12-07 | 2026-12-26 | 5211 |  | 7 Days Work | 9209964 |
| 5213 | 36900.37000.37100.37500.37900.45900.60200.897200 | Toilet_1st row of dado | 5d | 2026-12-27 | 2026-12-31 | 5212 |  | 7 Days Work | 9209974 |
| 5214 | 36900.37000.37100.37500.37900.45900.60200.897300 | Toilet_Window Fixing | 14d | 2027-01-01 | 2027-01-14 | 5213 |  | 7 Days Work | 9209984 |
| 5215 | 36900.37000.37100.37500.37900.45900.60200.897400 | Toilet_Services above False ceiling | 21d | 2027-01-15 | 2027-02-04 | 5214 |  | 7 Days Work | 9209994 |
| 5216 | 36900.37000.37100.37500.37900.45900.60200.897500 | Toilet_False Ceiling framing | 12d | 2027-02-05 | 2027-02-16 | 5215 |  | 7 Days Work | 9210004 |
| 5217 | 36900.37000.37100.37500.37900.45900.60200.897600 | Toilet_Door Frame | 5d | 2027-02-17 | 2027-02-21 | 5216 |  | 7 Days Work | 9210014 |
| 5218 | 36900.37000.37100.37500.37900.45900.60200.897700 | Toilet_Epoxy Tile Grouting | 7d | 2027-04-19 | 2027-04-25 | 5193SS |  | 7 Days Work | 9210024 |
| 5219 | 36900.37000.37100.37500.37900.45900.60200.897800 | Toilet_False ceiling board fixing, CP Sanitary Fixture, Electric Fixture | 21d | 2027-04-26 | 2027-05-16 | 5218 |  | 7 Days Work | 9210034 |
| 5220 | 36900.37000.37100.37500.37900.46000 | **19th Habitable/20th Floor** | 245d | 2026-09-24 | 2027-05-26 |  | start no earlier than 2026-09-24 | 7 Days Work | 9197004 |
| 5221 | 36900.37000.37100.37500.37900.46000.439700 | Post Pour | 7d | 2026-09-24 | 2026-09-30 | 4136FS+15d |  | 7 Days Work | 9204014 |
| 5222 | 36900.37000.37100.37500.37900.46000.439800 | MEP Clearance -1 | 5d | 2026-10-01 | 2026-10-05 | 5221 |  | 7 Days Work | 9204024 |
| 5223 | 36900.37000.37100.37500.37900.46000.439900 | Benchmark | 1d | 2026-10-06 | 2026-10-06 | 5222 |  | 7 Days Work | 9204034 |
| 5224 | 36900.37000.37100.37500.37900.46000.440000 | Temporary Railing | 3d | 2026-10-07 | 2026-10-09 | 5223 |  | 7 Days Work | 9204044 |
| 5225 | 36900.37000.37100.37500.37900.46000.440100 | Blockwork | 10d | 2026-10-10 | 2026-10-19 | 5224 |  | 7 Days Work | 9204054 |
| 5226 | 36900.37000.37100.37500.37900.46000.440200 | MEP Clearance -2 | 10d | 2026-10-20 | 2026-10-29 | 5225 |  | 7 Days Work | 9204064 |
| 5227 | 36900.37000.37100.37500.37900.46000.440300 | Gypsum Plaster | 14d | 2026-10-30 | 2026-11-12 | 5226 |  | 7 Days Work | 9204074 |
| 5228 | 36900.37000.37100.37500.37900.46000.440400 | Kitchen Platform | 3d | 2026-11-13 | 2026-11-15 | 5227 |  | 7 Days Work | 9204084 |
| 5229 | 36900.37000.37100.37500.37900.46000.440500 | Kitchen dado | 7d | 2026-11-16 | 2026-11-22 | 5228 |  | 7 Days Work | 9204094 |
| 5230 | 36900.37000.37100.37500.37900.46000.440600 | Fire Fighting | 5d | 2026-11-23 | 2026-11-27 | 5229 |  | 7 Days Work | 9204104 |
| 5231 | 36900.37000.37100.37500.37900.46000.440700 | Anticapilary | 5d | 2026-11-28 | 2026-12-02 | 5230 |  | 7 Days Work | 9204114 |
| 5232 | 36900.37000.37100.37500.37900.46000.440800 | Stone Laying | 10d | 2027-01-05 | 2027-01-14 | 5272 |  | 7 Days Work | 9204124 |
| 5233 | 36900.37000.37100.37500.37900.46000.440900 | Tiles Laying | 7d | 2027-01-05 | 2027-01-11 | 5272 |  | 7 Days Work | 9204134 |
| 5234 | 36900.37000.37100.37500.37900.46000.441000 | 1st cutting/polishing of stone flooring | 7d | 2027-01-12 | 2027-01-18 | 5233 |  | 7 Days Work | 9204144 |
| 5235 | 36900.37000.37100.37500.37900.46000.441100 | Tiles/Stone skirting | 5d | 2027-01-19 | 2027-01-23 | 5234 |  | 7 Days Work | 9204154 |
| 5236 | 36900.37000.37100.37500.37900.46000.441200 | Protechtion sheet | 1d | 2027-01-24 | 2027-01-24 | 5235 |  | 7 Days Work | 9204164 |
| 5237 | 36900.37000.37100.37500.37900.46000.441300 | Installation of Temporary Door | 1d | 2027-01-25 | 2027-01-25 | 5236 |  | 7 Days Work | 9204174 |
| 5238 | 36900.37000.37100.37500.37900.46000.441400 | Fixing of window tracks | 5d | 2027-01-26 | 2027-01-30 | 5237 |  | 7 Days Work | 9204184 |
| 5239 | 36900.37000.37100.37500.37900.46000.441500 | Wire Pulling | 7d | 2027-01-31 | 2027-02-06 | 5238 |  | 7 Days Work | 9204194 |
| 5240 | 36900.37000.37100.37500.37900.46000.441600 | Gypsum Remaining | 5d | 2027-02-07 | 2027-02-11 | 5239 |  | 7 Days Work | 9204204 |
| 5241 | 36900.37000.37100.37500.37900.46000.441700 | Fixing of windoow shutter | 5d | 2027-02-12 | 2027-02-16 | 5240 |  | 7 Days Work | 9204214 |
| 5242 | 36900.37000.37100.37500.37900.46000.441800 | Putty Works - walls & ceiling | 15d | 2027-02-17 | 2027-03-03 | 5241 |  | 7 Days Work | 9204224 |
| 5243 | 36900.37000.37100.37500.37900.46000.441900 | False Ceiling- Framing | 10d | 2027-03-04 | 2027-03-13 | 5242 |  | 7 Days Work | 9204234 |
| 5244 | 36900.37000.37100.37500.37900.46000.442000 | Pre Hung Door | 3d | 2027-03-14 | 2027-03-16 | 5243 |  | 7 Days Work | 9204244 |
| 5245 | 36900.37000.37100.37500.37900.46000.442100 | Protechtion sheet | 2d | 2027-03-17 | 2027-03-18 | 5244 |  | 7 Days Work | 9204254 |
| 5246 | 36900.37000.37100.37500.37900.46000.442200 | Skirting near door | 2d | 2027-03-19 | 2027-03-20 | 5245 |  | 7 Days Work | 9204264 |
| 5247 | 36900.37000.37100.37500.37900.46000.442300 | Electrical Switch box fixing | 14d | 2027-03-21 | 2027-04-03 | 5246 |  | 7 Days Work | 9204274 |
| 5248 | 36900.37000.37100.37500.37900.46000.442400 | Fire Fighting painting | 5d | 2027-04-04 | 2027-04-08 | 5247 |  | 7 Days Work | 9204284 |
| 5249 | 36900.37000.37100.37500.37900.46000.442500 | Protection of all flooring, door & window hardware | 5d | 2027-04-09 | 2027-04-13 | 5248 |  | 7 Days Work | 9204294 |
| 5250 | 36900.37000.37100.37500.37900.46000.442600 | 1st coat primer- ceiling 1st & walls | 14d | 2027-04-14 | 2027-04-27 | 5249 |  | 7 Days Work | 9204304 |
| 5251 | 36900.37000.37100.37500.37900.46000.442700 | Wooden Flooring | 5d | 2027-04-28 | 2027-05-02 | 5250 |  | 7 Days Work | 9204314 |
| 5252 | 36900.37000.37100.37500.37900.46000.442800 | Removing of Temporary Railing & installation of Glass Railing | 5d | 2027-04-28 | 2027-05-02 | 5250 |  | 7 Days Work | 9204324 |
| 5253 | 36900.37000.37100.37500.37900.46000.442900 | Tile Grouting | 7d | 2027-04-28 | 2027-05-04 | 5250 |  | 7 Days Work | 9204334 |
| 5254 | 36900.37000.37100.37500.37900.46000.443000 | False Ceiling | 5d | 2027-05-05 | 2027-05-09 | 5253 |  | 7 Days Work | 9204344 |
| 5255 | 36900.37000.37100.37500.37900.46000.443100 | 2nd coat of primer | 10d | 2027-05-10 | 2027-05-19 | 5254 |  | 7 Days Work | 9204354 |
| 5256 | 36900.37000.37100.37500.37900.46000.443200 | Final cutting/polishing of stone flooring | 7d | 2027-05-20 | 2027-05-26 | 5255 |  | 7 Days Work | 9204364 |

| ID | WBS | Task | Duration | Start | Finish | Predecessors | Constraint | Calendar | Unique_Task_ID |
| --- | --- | --- | --- | --- | --- | --- | --- | --- | --- |
| 5257 | 36900.37000.37100.37500.37900.46000.60300 | **Toilet** | 237d | 2026-10-01 | 2027-05-25 |  | start no earlier than 2026-10-01 | 7 Days Work | 9197204 |
| 5258 | 36900.37000.37100.37500.37900.46000.60300.897900 | Toilet_MEP Clearance -1 | 7d | 2026-10-01 | 2026-10-07 | 5221 |  | 7 Days Work | 9210044 |
| 5259 | 36900.37000.37100.37500.37900.46000.60300.898000 | Toilet_Level Marking | 1d | 2026-10-08 | 2026-10-08 | 5258 |  | 7 Days Work | 9210054 |
| 5260 | 36900.37000.37100.37500.37900.46000.60300.898100 | Toilet_Chasing work for Electrical conduit & concealed plumbing | 5d | 2026-10-09 | 2026-10-13 | 5259 |  | 7 Days Work | 9210064 |
| 5261 | 36900.37000.37100.37500.37900.46000.60300.898200 | Toilet_Plumbing work 1st fix | 5d | 2026-10-14 | 2026-10-18 | 5260 |  | 7 Days Work | 9210074 |
| 5262 | 36900.37000.37100.37500.37900.46000.60300.898300 | Toilet_Sleeve/Bore Packing | 5d | 2026-10-19 | 2026-10-23 | 5261 |  | 7 Days Work | 9210084 |
| 5263 | 36900.37000.37100.37500.37900.46000.60300.898400 | Toilet_Waterproofing | 10d | 2026-10-24 | 2026-11-02 | 5262 |  | 7 Days Work | 9210094 |
| 5264 | 36900.37000.37100.37500.37900.46000.60300.898500 | Toilet_Screed | 1d | 2026-11-03 | 2026-11-03 | 5263 |  | 7 Days Work | 9210104 |
| 5265 | 36900.37000.37100.37500.37900.46000.60300.898600 | Toilet_Plumbing 2nd fix | 5d | 2026-11-04 | 2026-11-08 | 5264 |  | 7 Days Work | 9210114 |
| 5266 | 36900.37000.37100.37500.37900.46000.60300.898700 | Toilet_Ledge wall | 5d | 2026-11-09 | 2026-11-13 | 5265 |  | 7 Days Work | 9210124 |
| 5267 | 36900.37000.37100.37500.37900.46000.60300.898800 | Toilet_Cement Plaster | 5d | 2026-11-14 | 2026-11-18 | 5266 |  | 7 Days Work | 9210134 |
| 5268 | 36900.37000.37100.37500.37900.46000.60300.898900 | Toilet_Door Frame | 1d | 2026-11-19 | 2026-11-19 | 5267 |  | 7 Days Work | 9210144 |
| 5269 | 36900.37000.37100.37500.37900.46000.60300.899000 | Toilet_Wash basin & Couter | 3d | 2026-11-20 | 2026-11-22 | 5268 |  | 7 Days Work | 9210154 |
| 5270 | 36900.37000.37100.37500.37900.46000.60300.899100 | Toilet_Wall dado | 20d | 2026-11-23 | 2026-12-12 | 5269 |  | 7 Days Work | 9210164 |
| 5271 | 36900.37000.37100.37500.37900.46000.60300.899200 | Toilet_Granite Work-Ledge wall top | 3d | 2026-12-13 | 2026-12-15 | 5270 |  | 7 Days Work | 9210174 |
| 5272 | 36900.37000.37100.37500.37900.46000.60300.899300 | Toilet_Floor Tilling work | 20d | 2026-12-16 | 2027-01-04 | 5271 |  | 7 Days Work | 9210184 |
| 5273 | 36900.37000.37100.37500.37900.46000.60300.899400 | Toilet_1st row of dado | 5d | 2027-01-05 | 2027-01-09 | 5272 |  | 7 Days Work | 9210194 |
| 5274 | 36900.37000.37100.37500.37900.46000.60300.899500 | Toilet_Window Fixing | 14d | 2027-01-10 | 2027-01-23 | 5273 |  | 7 Days Work | 9210204 |
| 5275 | 36900.37000.37100.37500.37900.46000.60300.899600 | Toilet_Services above False ceiling | 21d | 2027-01-24 | 2027-02-13 | 5274 |  | 7 Days Work | 9210214 |
| 5276 | 36900.37000.37100.37500.37900.46000.60300.899700 | Toilet_False Ceiling framing | 12d | 2027-02-14 | 2027-02-25 | 5275 |  | 7 Days Work | 9210224 |
| 5277 | 36900.37000.37100.37500.37900.46000.60300.899800 | Toilet_Door Frame | 5d | 2027-02-26 | 2027-03-02 | 5276 |  | 7 Days Work | 9210234 |
| 5278 | 36900.37000.37100.37500.37900.46000.60300.899900 | Toilet_Epoxy Tile Grouting | 7d | 2027-04-28 | 2027-05-04 | 5253SS |  | 7 Days Work | 9210244 |
| 5279 | 36900.37000.37100.37500.37900.46000.60300.900000 | Toilet_False ceiling board fixing, CP Sanitary Fixture, Electric Fixture | 21d | 2027-05-05 | 2027-05-25 | 5278 |  | 7 Days Work | 9210254 |
| 5280 | 36900.37000.37100.37500.37900.46100 | **19th Habitable/21st Floor** | 245d | 2026-10-06 | 2027-06-07 |  | start no earlier than 2026-10-06 | 7 Days Work | 9264674 |
| 5281 | 36900.37000.37100.37500.37900.46100.443300 | Post Pour | 7d | 2026-10-06 | 2026-10-12 | 4137FS+15d |  | 7 Days Work | 9264694 |
| 5282 | 36900.37000.37100.37500.37900.46100.443400 | MEP Clearance -1 | 5d | 2026-10-13 | 2026-10-17 | 5281 |  | 7 Days Work | 9264704 |
| 5283 | 36900.37000.37100.37500.37900.46100.443500 | Benchmark | 1d | 2026-10-18 | 2026-10-18 | 5282 |  | 7 Days Work | 9264714 |
| 5284 | 36900.37000.37100.37500.37900.46100.443600 | Temporary Railing | 3d | 2026-10-19 | 2026-10-21 | 5283 |  | 7 Days Work | 9264724 |
| 5285 | 36900.37000.37100.37500.37900.46100.443700 | Blockwork | 10d | 2026-10-22 | 2026-10-31 | 5284 |  | 7 Days Work | 9264734 |
| 5286 | 36900.37000.37100.37500.37900.46100.443800 | MEP Clearance -2 | 10d | 2026-11-01 | 2026-11-10 | 5285 |  | 7 Days Work | 9264744 |
| 5287 | 36900.37000.37100.37500.37900.46100.443900 | Gypsum Plaster | 14d | 2026-11-11 | 2026-11-24 | 5286 |  | 7 Days Work | 9044154 |
| 5288 | 36900.37000.37100.37500.37900.46100.444000 | Kitchen Platform | 3d | 2026-11-25 | 2026-11-27 | 5287 |  | 7 Days Work | 9264764 |
| 5289 | 36900.37000.37100.37500.37900.46100.444100 | Kitchen dado | 7d | 2026-11-28 | 2026-12-04 | 5288 |  | 7 Days Work | 9264774 |
| 5290 | 36900.37000.37100.37500.37900.46100.444200 | Fire Fighting | 5d | 2026-12-05 | 2026-12-09 | 5289 |  | 7 Days Work | 9264784 |
| 5291 | 36900.37000.37100.37500.37900.46100.444300 | Anticapilary | 5d | 2026-12-10 | 2026-12-14 | 5290 |  | 7 Days Work | 9264794 |
| 5292 | 36900.37000.37100.37500.37900.46100.444400 | Stone Laying | 10d | 2027-01-17 | 2027-01-26 | 5332 |  | 7 Days Work | 9264804 |
| 5293 | 36900.37000.37100.37500.37900.46100.444500 | Tiles Laying | 7d | 2027-01-17 | 2027-01-23 | 5332 |  | 7 Days Work | 9044164 |
| 5294 | 36900.37000.37100.37500.37900.46100.444600 | 1st cutting/polishing of stone flooring | 7d | 2027-01-24 | 2027-01-30 | 5293 |  | 7 Days Work | 9264824 |
| 5295 | 36900.37000.37100.37500.37900.46100.444700 | Tiles/Stone skirting | 5d | 2027-01-31 | 2027-02-04 | 5294 |  | 7 Days Work | 9264834 |
| 5296 | 36900.37000.37100.37500.37900.46100.444800 | Protechtion sheet | 1d | 2027-02-05 | 2027-02-05 | 5295 |  | 7 Days Work | 9264844 |
| 5297 | 36900.37000.37100.37500.37900.46100.444900 | Installation of Temporary Door | 1d | 2027-02-06 | 2027-02-06 | 5296 |  | 7 Days Work | 9264854 |
| 5298 | 36900.37000.37100.37500.37900.46100.445000 | Fixing of window tracks | 5d | 2027-02-07 | 2027-02-11 | 5297 |  | 7 Days Work | 9264864 |
| 5299 | 36900.37000.37100.37500.37900.46100.445100 | Wire Pulling | 7d | 2027-02-12 | 2027-02-18 | 5298 |  | 7 Days Work | 9264874 |
| 5300 | 36900.37000.37100.37500.37900.46100.445200 | Gypsum Remaining | 5d | 2027-02-19 | 2027-02-23 | 5299 |  | 7 Days Work | 9264884 |
| 5301 | 36900.37000.37100.37500.37900.46100.445300 | Fixing of windoow shutter | 5d | 2027-02-24 | 2027-02-28 | 5300 |  | 7 Days Work | 9264894 |
| 5302 | 36900.37000.37100.37500.37900.46100.445400 | Putty Works - walls & ceiling | 15d | 2027-03-01 | 2027-03-15 | 5301 |  | 7 Days Work | 9264904 |
| 5303 | 36900.37000.37100.37500.37900.46100.445500 | False Ceiling- Framing | 10d | 2027-03-16 | 2027-03-25 | 5302 |  | 7 Days Work | 9264914 |
| 5304 | 36900.37000.37100.37500.37900.46100.445600 | Pre Hung Door | 3d | 2027-03-26 | 2027-03-28 | 5303 |  | 7 Days Work | 9264924 |
| 5305 | 36900.37000.37100.37500.37900.46100.445700 | Protechtion sheet | 2d | 2027-03-29 | 2027-03-30 | 5304 |  | 7 Days Work | 9264934 |
| 5306 | 36900.37000.37100.37500.37900.46100.445800 | Skirting near door | 2d | 2027-03-31 | 2027-04-01 | 5305 |  | 7 Days Work | 9264944 |
| 5307 | 36900.37000.37100.37500.37900.46100.445900 | Electrical Switch box fixing | 14d | 2027-04-02 | 2027-04-15 | 5306 |  | 7 Days Work | 9264954 |
| 5308 | 36900.37000.37100.37500.37900.46100.446000 | Fire Fighting painting | 5d | 2027-04-16 | 2027-04-20 | 5307 |  | 7 Days Work | 9264964 |
| 5309 | 36900.37000.37100.37500.37900.46100.446100 | Protection of all flooring, door & window hardware | 5d | 2027-04-21 | 2027-04-25 | 5308 |  | 7 Days Work | 9264974 |
| 5310 | 36900.37000.37100.37500.37900.46100.446200 | 1st coat primer- ceiling 1st & walls | 14d | 2027-04-26 | 2027-05-09 | 5309 |  | 7 Days Work | 9264984 |
| 5311 | 36900.37000.37100.37500.37900.46100.446300 | Wooden Flooring | 5d | 2027-05-10 | 2027-05-14 | 5310 |  | 7 Days Work | 9264994 |
| 5312 | 36900.37000.37100.37500.37900.46100.446400 | Removing of Temporary Railing & installation of Glass Railing | 5d | 2027-05-10 | 2027-05-14 | 5310 |  | 7 Days Work | 9265004 |
| 5313 | 36900.37000.37100.37500.37900.46100.446500 | Tile Grouting | 7d | 2027-05-10 | 2027-05-16 | 5310 |  | 7 Days Work | 9265014 |
| 5314 | 36900.37000.37100.37500.37900.46100.446600 | False Ceiling | 5d | 2027-05-17 | 2027-05-21 | 5313 |  | 7 Days Work | 9265024 |
| 5315 | 36900.37000.37100.37500.37900.46100.446700 | 2nd coat of primer | 10d | 2027-05-22 | 2027-05-31 | 5314 |  | 7 Days Work | 9265034 |
| 5316 | 36900.37000.37100.37500.37900.46100.446800 | Final cutting/polishing of stone flooring | 7d | 2027-06-01 | 2027-06-07 | 5315 |  | 7 Days Work | 9265044 |

| ID | WBS | Task | Duration | Start | Finish | Predecessors | Constraint | Calendar | Unique_Task_ID |
| --- | --- | --- | --- | --- | --- | --- | --- | --- | --- |
| 5317 | 36900.37000.37100.37500.37900.46100.60400 | **Toilet** | 237d | 2026-10-13 | 2027-06-06 |  | start no earlier than 2026-10-13 | 7 Days Work | 9264684 |
| 5318 | 36900.37000.37100.37500.37900.46100.60400.900100 | Toilet_MEP Clearance -1 | 7d | 2026-10-13 | 2026-10-19 | 5281 |  | 7 Days Work | 9265054 |
| 5319 | 36900.37000.37100.37500.37900.46100.60400.900200 | Toilet_Level Marking | 1d | 2026-10-20 | 2026-10-20 | 5318 |  | 7 Days Work | 9265064 |
| 5320 | 36900.37000.37100.37500.37900.46100.60400.900300 | Toilet_Chasing work for Electrical conduit & concealed plumbing | 5d | 2026-10-21 | 2026-10-25 | 5319 |  | 7 Days Work | 9265074 |
| 5321 | 36900.37000.37100.37500.37900.46100.60400.900400 | Toilet_Plumbing work 1st fix | 5d | 2026-10-26 | 2026-10-30 | 5320 |  | 7 Days Work | 9265084 |
| 5322 | 36900.37000.37100.37500.37900.46100.60400.900500 | Toilet_Sleeve/Bore Packing | 5d | 2026-10-31 | 2026-11-04 | 5321 |  | 7 Days Work | 9265094 |
| 5323 | 36900.37000.37100.37500.37900.46100.60400.900600 | Toilet_Waterproofing | 10d | 2026-11-05 | 2026-11-14 | 5322 |  | 7 Days Work | 9265104 |
| 5324 | 36900.37000.37100.37500.37900.46100.60400.900700 | Toilet_Screed | 1d | 2026-11-15 | 2026-11-15 | 5323 |  | 7 Days Work | 9265114 |
| 5325 | 36900.37000.37100.37500.37900.46100.60400.900800 | Toilet_Plumbing 2nd fix | 5d | 2026-11-16 | 2026-11-20 | 5324 |  | 7 Days Work | 9265124 |
| 5326 | 36900.37000.37100.37500.37900.46100.60400.900900 | Toilet_Ledge wall | 5d | 2026-11-21 | 2026-11-25 | 5325 |  | 7 Days Work | 9265134 |
| 5327 | 36900.37000.37100.37500.37900.46100.60400.901000 | Toilet_Cement Plaster | 5d | 2026-11-26 | 2026-11-30 | 5326 |  | 7 Days Work | 9265144 |
| 5328 | 36900.37000.37100.37500.37900.46100.60400.901100 | Toilet_Door Frame | 1d | 2026-12-01 | 2026-12-01 | 5327 |  | 7 Days Work | 9265154 |
| 5329 | 36900.37000.37100.37500.37900.46100.60400.901200 | Toilet_Wash basin & Couter | 3d | 2026-12-02 | 2026-12-04 | 5328 |  | 7 Days Work | 9265164 |
| 5330 | 36900.37000.37100.37500.37900.46100.60400.901300 | Toilet_Wall dado | 20d | 2026-12-05 | 2026-12-24 | 5329 |  | 7 Days Work | 9265174 |
| 5331 | 36900.37000.37100.37500.37900.46100.60400.901400 | Toilet_Granite Work-Ledge wall top | 3d | 2026-12-25 | 2026-12-27 | 5330 |  | 7 Days Work | 9265184 |
| 5332 | 36900.37000.37100.37500.37900.46100.60400.901500 | Toilet_Floor Tilling work | 20d | 2026-12-28 | 2027-01-16 | 5331 |  | 7 Days Work | 9265194 |
| 5333 | 36900.37000.37100.37500.37900.46100.60400.901600 | Toilet_1st row of dado | 5d | 2027-01-17 | 2027-01-21 | 5332 |  | 7 Days Work | 9265204 |
| 5334 | 36900.37000.37100.37500.37900.46100.60400.901700 | Toilet_Window Fixing | 14d | 2027-01-22 | 2027-02-04 | 5333 |  | 7 Days Work | 9265214 |
| 5335 | 36900.37000.37100.37500.37900.46100.60400.901800 | Toilet_Services above False ceiling | 21d | 2027-02-05 | 2027-02-25 | 5334 |  | 7 Days Work | 9265224 |
| 5336 | 36900.37000.37100.37500.37900.46100.60400.901900 | Toilet_False Ceiling framing | 12d | 2027-02-26 | 2027-03-09 | 5335 |  | 7 Days Work | 9265234 |
| 5337 | 36900.37000.37100.37500.37900.46100.60400.902000 | Toilet_Door Frame | 5d | 2027-03-10 | 2027-03-14 | 5336 |  | 7 Days Work | 9265244 |
| 5338 | 36900.37000.37100.37500.37900.46100.60400.902100 | Toilet_Epoxy Tile Grouting | 7d | 2027-05-10 | 2027-05-16 | 5313SS |  | 7 Days Work | 9265254 |
| 5339 | 36900.37000.37100.37500.37900.46100.60400.902200 | Toilet_False ceiling board fixing, CP Sanitary Fixture, Electric Fixture | 21d | 2027-05-17 | 2027-06-06 | 5338 |  | 7 Days Work | 9265264 |
| 5340 | 36900.37000.37100.37500.52200 | **Common area Finishing** | 329d | 2026-12-07 | 2027-10-31 |  | start no earlier than 2026-12-07 | 7 Days Work | 9197014 |
| 5341 | 36900.37000.37100.37500.52200.73800 | **1st Habitable/2nd Floor** | 158d | 2026-12-07 | 2027-05-13 |  | start no earlier than 2026-12-07 | 7 Days Work | 9197404 |
| 5342 | 36900.37000.37100.37500.52200.73800.446900 | Side blockwork for lift shafts | 9d | 2026-12-07 | 2026-12-15 | 5547 |  | 7 Days Work | 9204374 |
| 5343 | 36900.37000.37100.37500.52200.73800.447000 | Door Threshold for lifts | 6d | 2026-12-16 | 2026-12-21 | 5342 |  | 7 Days Work | 9204384 |
| 5344 | 36900.37000.37100.37500.52200.73800.447100 | Granite Cladding | 10d | 2026-12-22 | 2026-12-31 | 5343 |  | 7 Days Work | 9204394 |
| 5345 | 36900.37000.37100.37500.52200.73800.447200 | MEP Services | 60d | 2027-01-01 | 2027-03-01 | 5344 |  | 7 Days Work | 9204404 |
| 5346 | 36900.37000.37100.37500.52200.73800.447300 | Flooring+Skirting | 20d | 2027-03-02 | 2027-03-21 | 5345 |  | 7 Days Work | 9204414 |
| 5347 | 36900.37000.37100.37500.52200.73800.447400 | Wall finishes | 21d | 2027-03-22 | 2027-04-11 | 5346 |  | 7 Days Work | 9204424 |
| 5348 | 36900.37000.37100.37500.52200.73800.447500 | False Ceiling | 10d | 2027-04-12 | 2027-04-21 | 5347 |  | 7 Days Work | 9204434 |
| 5349 | 36900.37000.37100.37500.52200.73800.447600 | Staircase | 15d | 2027-04-22 | 2027-05-06 | 5348 |  | 7 Days Work | 9204444 |
| 5350 | 36900.37000.37100.37500.52200.73800.447700 | Deep Cleaning | 7d | 2027-05-07 | 2027-05-13 | 5349 |  | 7 Days Work | 9204454 |

| ID | WBS | Task | Duration | Start | Finish | Predecessors | Constraint | Calendar | Unique_Task_ID |
| --- | --- | --- | --- | --- | --- | --- | --- | --- | --- |
| 5351 | 36900.37000.37100.37500.52200.73900 | **2nd Habitable/3rd Floor** | 158d | 2026-12-16 | 2027-05-22 |  | start no earlier than 2026-12-16 | 7 Days Work | 9197394 |
| 5352 | 36900.37000.37100.37500.52200.73900.447800 | Side blockwork for lift shafts | 9d | 2026-12-16 | 2026-12-24 | 5342 |  | 7 Days Work | 9204464 |
| 5353 | 36900.37000.37100.37500.52200.73900.447900 | Door Threshold for lifts | 6d | 2026-12-25 | 2026-12-30 | 5352 |  | 7 Days Work | 9204474 |
| 5354 | 36900.37000.37100.37500.52200.73900.448000 | Granite Cladding | 10d | 2026-12-31 | 2027-01-09 | 5353 |  | 7 Days Work | 9204484 |
| 5355 | 36900.37000.37100.37500.52200.73900.448100 | MEP Services | 60d | 2027-01-10 | 2027-03-10 | 5354 |  | 7 Days Work | 9204494 |
| 5356 | 36900.37000.37100.37500.52200.73900.448200 | Flooring+Skirting | 20d | 2027-03-11 | 2027-03-30 | 5355 |  | 7 Days Work | 9204504 |
| 5357 | 36900.37000.37100.37500.52200.73900.448300 | Wall finishes | 21d | 2027-03-31 | 2027-04-20 | 5356 |  | 7 Days Work | 9204514 |
| 5358 | 36900.37000.37100.37500.52200.73900.448400 | False Ceiling | 10d | 2027-04-21 | 2027-04-30 | 5357 |  | 7 Days Work | 9204524 |
| 5359 | 36900.37000.37100.37500.52200.73900.448500 | Staircase | 15d | 2027-05-01 | 2027-05-15 | 5358 |  | 7 Days Work | 9204534 |
| 5360 | 36900.37000.37100.37500.52200.73900.448600 | Deep Cleaning | 7d | 2027-05-16 | 2027-05-22 | 5359 |  | 7 Days Work | 9204544 |
| 5361 | 36900.37000.37100.37500.52200.74000 | **3rd Habitable/4th Floor** | 158d | 2026-12-25 | 2027-05-31 |  | start no earlier than 2026-12-25 | 7 Days Work | 9197384 |
| 5362 | 36900.37000.37100.37500.52200.74000.448700 | Side blockwork for lift shafts | 9d | 2026-12-25 | 2027-01-02 | 5352 |  | 7 Days Work | 9204554 |
| 5363 | 36900.37000.37100.37500.52200.74000.448800 | Door Threshold for lifts | 6d | 2027-01-03 | 2027-01-08 | 5362 |  | 7 Days Work | 9204564 |
| 5364 | 36900.37000.37100.37500.52200.74000.448900 | Granite Cladding | 10d | 2027-01-09 | 2027-01-18 | 5363 |  | 7 Days Work | 9204574 |
| 5365 | 36900.37000.37100.37500.52200.74000.449000 | MEP Services | 60d | 2027-01-19 | 2027-03-19 | 5364 |  | 7 Days Work | 9204584 |
| 5366 | 36900.37000.37100.37500.52200.74000.449100 | Flooring+Skirting | 20d | 2027-03-20 | 2027-04-08 | 5365 |  | 7 Days Work | 9204594 |
| 5367 | 36900.37000.37100.37500.52200.74000.449200 | Wall finishes | 21d | 2027-04-09 | 2027-04-29 | 5366 |  | 7 Days Work | 9204604 |
| 5368 | 36900.37000.37100.37500.52200.74000.449300 | False Ceiling | 10d | 2027-04-30 | 2027-05-09 | 5367 |  | 7 Days Work | 9204614 |
| 5369 | 36900.37000.37100.37500.52200.74000.449400 | Staircase | 15d | 2027-05-10 | 2027-05-24 | 5368 |  | 7 Days Work | 9204624 |
| 5370 | 36900.37000.37100.37500.52200.74000.449500 | Deep Cleaning | 7d | 2027-05-25 | 2027-05-31 | 5369 |  | 7 Days Work | 9204634 |
| 5371 | 36900.37000.37100.37500.52200.74100 | **4th Habitable/5th Floor** | 158d | 2027-01-03 | 2027-06-09 |  | start no earlier than 2027-01-03 | 7 Days Work | 9197344 |
| 5372 | 36900.37000.37100.37500.52200.74100.449600 | Side blockwork for lift shafts | 9d | 2027-01-03 | 2027-01-11 | 5362 |  | 7 Days Work | 9204644 |
| 5373 | 36900.37000.37100.37500.52200.74100.449700 | Door Threshold for lifts | 6d | 2027-01-12 | 2027-01-17 | 5372 |  | 7 Days Work | 9204654 |
| 5374 | 36900.37000.37100.37500.52200.74100.449800 | Granite Cladding | 10d | 2027-01-18 | 2027-01-27 | 5373 |  | 7 Days Work | 9204664 |
| 5375 | 36900.37000.37100.37500.52200.74100.449900 | MEP Services | 60d | 2027-01-28 | 2027-03-28 | 5374 |  | 7 Days Work | 9204674 |
| 5376 | 36900.37000.37100.37500.52200.74100.450000 | Flooring+Skirting | 20d | 2027-03-29 | 2027-04-17 | 5375 |  | 7 Days Work | 9204684 |
| 5377 | 36900.37000.37100.37500.52200.74100.450100 | Wall finishes | 21d | 2027-04-18 | 2027-05-08 | 5376 |  | 7 Days Work | 9204694 |
| 5378 | 36900.37000.37100.37500.52200.74100.450200 | False Ceiling | 10d | 2027-05-09 | 2027-05-18 | 5377 |  | 7 Days Work | 9204704 |
| 5379 | 36900.37000.37100.37500.52200.74100.450300 | Staircase | 15d | 2027-05-19 | 2027-06-02 | 5378 |  | 7 Days Work | 9204714 |
| 5380 | 36900.37000.37100.37500.52200.74100.450400 | Deep Cleaning | 7d | 2027-06-03 | 2027-06-09 | 5379 |  | 7 Days Work | 9204724 |

| ID | WBS | Task | Duration | Start | Finish | Predecessors | Constraint | Calendar | Unique_Task_ID |
| --- | --- | --- | --- | --- | --- | --- | --- | --- | --- |
| 5381 | 36900.37000.37100.37500.52200.74200 | **5th Habitable/6th Floor** | 158d | 2027-01-12 | 2027-06-18 |  | start no earlier than 2027-01-12 | 7 Days Work | 9197334 |
| 5382 | 36900.37000.37100.37500.52200.74200.450500 | Side blockwork for lift shafts | 9d | 2027-01-12 | 2027-01-20 | 5372 |  | 7 Days Work | 9204734 |
| 5383 | 36900.37000.37100.37500.52200.74200.450600 | Door Threshold for lifts | 6d | 2027-01-21 | 2027-01-26 | 5382 |  | 7 Days Work | 9204744 |
| 5384 | 36900.37000.37100.37500.52200.74200.450700 | Granite Cladding | 10d | 2027-01-27 | 2027-02-05 | 5383 |  | 7 Days Work | 9204754 |
| 5385 | 36900.37000.37100.37500.52200.74200.450800 | MEP Services | 60d | 2027-02-06 | 2027-04-06 | 5384 |  | 7 Days Work | 9204764 |
| 5386 | 36900.37000.37100.37500.52200.74200.450900 | Flooring+Skirting | 20d | 2027-04-07 | 2027-04-26 | 5385 |  | 7 Days Work | 9204774 |
| 5387 | 36900.37000.37100.37500.52200.74200.451000 | Wall finishes | 21d | 2027-04-27 | 2027-05-17 | 5386 |  | 7 Days Work | 9204784 |
| 5388 | 36900.37000.37100.37500.52200.74200.451100 | False Ceiling | 10d | 2027-05-18 | 2027-05-27 | 5387 |  | 7 Days Work | 9204794 |
| 5389 | 36900.37000.37100.37500.52200.74200.451200 | Staircase | 15d | 2027-05-28 | 2027-06-11 | 5388 |  | 7 Days Work | 9204804 |
| 5390 | 36900.37000.37100.37500.52200.74200.451300 | Deep Cleaning | 7d | 2027-06-12 | 2027-06-18 | 5389 |  | 7 Days Work | 9204814 |
| 5391 | 36900.37000.37100.37500.52200.74300 | **6th Habitable/7th Floor** | 158d | 2027-01-21 | 2027-06-27 |  | start no earlier than 2027-01-21 | 7 Days Work | 9197234 |
| 5392 | 36900.37000.37100.37500.52200.74300.451400 | Side blockwork for lift shafts | 9d | 2027-01-21 | 2027-01-29 | 5382 |  | 7 Days Work | 9204824 |
| 5393 | 36900.37000.37100.37500.52200.74300.451500 | Door Threshold for lifts | 6d | 2027-01-30 | 2027-02-04 | 5392 |  | 7 Days Work | 9204834 |
| 5394 | 36900.37000.37100.37500.52200.74300.451600 | Granite Cladding | 10d | 2027-02-05 | 2027-02-14 | 5393 |  | 7 Days Work | 9204844 |
| 5395 | 36900.37000.37100.37500.52200.74300.451700 | MEP Services | 60d | 2027-02-15 | 2027-04-15 | 5394 |  | 7 Days Work | 9204854 |
| 5396 | 36900.37000.37100.37500.52200.74300.451800 | Flooring+Skirting | 20d | 2027-04-16 | 2027-05-05 | 5395 |  | 7 Days Work | 9204864 |
| 5397 | 36900.37000.37100.37500.52200.74300.451900 | Wall finishes | 21d | 2027-05-06 | 2027-05-26 | 5396 |  | 7 Days Work | 9204874 |
| 5398 | 36900.37000.37100.37500.52200.74300.452000 | False Ceiling | 10d | 2027-05-27 | 2027-06-05 | 5397 |  | 7 Days Work | 9204884 |
| 5399 | 36900.37000.37100.37500.52200.74300.452100 | Staircase | 15d | 2027-06-06 | 2027-06-20 | 5398 |  | 7 Days Work | 9204894 |
| 5400 | 36900.37000.37100.37500.52200.74300.452200 | Deep Cleaning | 7d | 2027-06-21 | 2027-06-27 | 5399 |  | 7 Days Work | 9204904 |
| 5401 | 36900.37000.37100.37500.52200.74400 | **7th Habitable/8th Floor** | 158d | 2027-01-30 | 2027-07-06 |  | start no earlier than 2027-01-30 | 7 Days Work | 9197254 |
| 5402 | 36900.37000.37100.37500.52200.74400.452300 | Side blockwork for lift shafts | 9d | 2027-01-30 | 2027-02-07 | 5392 |  | 7 Days Work | 9204914 |
| 5403 | 36900.37000.37100.37500.52200.74400.452400 | Door Threshold for lifts | 6d | 2027-02-08 | 2027-02-13 | 5402 |  | 7 Days Work | 9204924 |
| 5404 | 36900.37000.37100.37500.52200.74400.452500 | Granite Cladding | 10d | 2027-02-14 | 2027-02-23 | 5403 |  | 7 Days Work | 9204934 |
| 5405 | 36900.37000.37100.37500.52200.74400.452600 | MEP Services | 60d | 2027-02-24 | 2027-04-24 | 5404 |  | 7 Days Work | 9204944 |
| 5406 | 36900.37000.37100.37500.52200.74400.452700 | Flooring+Skirting | 20d | 2027-04-25 | 2027-05-14 | 5405 |  | 7 Days Work | 9204954 |
| 5407 | 36900.37000.37100.37500.52200.74400.452800 | Wall finishes | 21d | 2027-05-15 | 2027-06-04 | 5406 |  | 7 Days Work | 9204964 |
| 5408 | 36900.37000.37100.37500.52200.74400.452900 | False Ceiling | 10d | 2027-06-05 | 2027-06-14 | 5407 |  | 7 Days Work | 9204974 |
| 5409 | 36900.37000.37100.37500.52200.74400.453000 | Staircase | 15d | 2027-06-15 | 2027-06-29 | 5408 |  | 7 Days Work | 9204984 |
| 5410 | 36900.37000.37100.37500.52200.74400.453100 | Deep Cleaning | 7d | 2027-06-30 | 2027-07-06 | 5409 |  | 7 Days Work | 9204994 |

| ID | WBS | Task | Duration | Start | Finish | Predecessors | Constraint | Calendar | Unique_Task_ID |
| --- | --- | --- | --- | --- | --- | --- | --- | --- | --- |
| 5411 | 36900.37000.37100.37500.52200.74500 | **8th Habitable/9th Floor** | 158d | 2027-02-08 | 2027-07-15 |  | start no earlier than 2027-02-08 | 7 Days Work | 9197264 |
| 5412 | 36900.37000.37100.37500.52200.74500.453200 | Side blockwork for lift shafts | 9d | 2027-02-08 | 2027-02-16 | 5402 |  | 7 Days Work | 9205004 |
| 5413 | 36900.37000.37100.37500.52200.74500.453300 | Door Threshold for lifts | 6d | 2027-02-17 | 2027-02-22 | 5412 |  | 7 Days Work | 9205014 |
| 5414 | 36900.37000.37100.37500.52200.74500.453400 | Granite Cladding | 10d | 2027-02-23 | 2027-03-04 | 5413 |  | 7 Days Work | 9205024 |
| 5415 | 36900.37000.37100.37500.52200.74500.453500 | MEP Services | 60d | 2027-03-05 | 2027-05-03 | 5414 |  | 7 Days Work | 9205034 |
| 5416 | 36900.37000.37100.37500.52200.74500.453600 | Flooring+Skirting | 20d | 2027-05-04 | 2027-05-23 | 5415 |  | 7 Days Work | 9205044 |
| 5417 | 36900.37000.37100.37500.52200.74500.453700 | Wall finishes | 21d | 2027-05-24 | 2027-06-13 | 5416 |  | 7 Days Work | 9205054 |
| 5418 | 36900.37000.37100.37500.52200.74500.453800 | False Ceiling | 10d | 2027-06-14 | 2027-06-23 | 5417 |  | 7 Days Work | 9205064 |
| 5419 | 36900.37000.37100.37500.52200.74500.453900 | Staircase | 15d | 2027-06-24 | 2027-07-08 | 5418 |  | 7 Days Work | 9205074 |
| 5420 | 36900.37000.37100.37500.52200.74500.454000 | Deep Cleaning | 7d | 2027-07-09 | 2027-07-15 | 5419 |  | 7 Days Work | 9205084 |
| 5421 | 36900.37000.37100.37500.52200.74600 | **9th Habitable/10th Floor** | 158d | 2027-02-17 | 2027-07-24 |  | start no earlier than 2027-02-17 | 7 Days Work | 9197274 |
| 5422 | 36900.37000.37100.37500.52200.74600.454100 | Side blockwork for lift shafts | 9d | 2027-02-17 | 2027-02-25 | 5412 |  | 7 Days Work | 9205094 |
| 5423 | 36900.37000.37100.37500.52200.74600.454200 | Door Threshold for lifts | 6d | 2027-02-26 | 2027-03-03 | 5422 |  | 7 Days Work | 9205104 |
| 5424 | 36900.37000.37100.37500.52200.74600.454300 | Granite Cladding | 10d | 2027-03-04 | 2027-03-13 | 5423 |  | 7 Days Work | 9205114 |
| 5425 | 36900.37000.37100.37500.52200.74600.454400 | MEP Services | 60d | 2027-03-14 | 2027-05-12 | 5424 |  | 7 Days Work | 9205124 |
| 5426 | 36900.37000.37100.37500.52200.74600.454500 | Flooring+Skirting | 20d | 2027-05-13 | 2027-06-01 | 5425 |  | 7 Days Work | 9205134 |
| 5427 | 36900.37000.37100.37500.52200.74600.454600 | Wall finishes | 21d | 2027-06-02 | 2027-06-22 | 5426 |  | 7 Days Work | 9205144 |
| 5428 | 36900.37000.37100.37500.52200.74600.454700 | False Ceiling | 10d | 2027-06-23 | 2027-07-02 | 5427 |  | 7 Days Work | 9205154 |
| 5429 | 36900.37000.37100.37500.52200.74600.454800 | Staircase | 15d | 2027-07-03 | 2027-07-17 | 5428 |  | 7 Days Work | 9205164 |
| 5430 | 36900.37000.37100.37500.52200.74600.454900 | Deep Cleaning | 7d | 2027-07-18 | 2027-07-24 | 5429 |  | 7 Days Work | 9205174 |
| 5431 | 36900.37000.37100.37500.52200.74700 | **10th Habitable/11th Floor** | 158d | 2027-02-26 | 2027-08-02 |  | start no earlier than 2027-02-26 | 7 Days Work | 9197244 |
| 5432 | 36900.37000.37100.37500.52200.74700.455000 | Side blockwork for lift shafts | 9d | 2027-02-26 | 2027-03-06 | 5422 |  | 7 Days Work | 9205184 |
| 5433 | 36900.37000.37100.37500.52200.74700.455100 | Door Threshold for lifts | 6d | 2027-03-07 | 2027-03-12 | 5432 |  | 7 Days Work | 9205194 |
| 5434 | 36900.37000.37100.37500.52200.74700.455200 | Granite Cladding | 10d | 2027-03-13 | 2027-03-22 | 5433 |  | 7 Days Work | 9205204 |
| 5435 | 36900.37000.37100.37500.52200.74700.455300 | MEP Services | 60d | 2027-03-23 | 2027-05-21 | 5434 |  | 7 Days Work | 9205214 |
| 5436 | 36900.37000.37100.37500.52200.74700.455400 | Flooring+Skirting | 20d | 2027-05-22 | 2027-06-10 | 5435 |  | 7 Days Work | 9205224 |
| 5437 | 36900.37000.37100.37500.52200.74700.455500 | Wall finishes | 21d | 2027-06-11 | 2027-07-01 | 5436 |  | 7 Days Work | 9205234 |
| 5438 | 36900.37000.37100.37500.52200.74700.455600 | False Ceiling | 10d | 2027-07-02 | 2027-07-11 | 5437 |  | 7 Days Work | 9205244 |
| 5439 | 36900.37000.37100.37500.52200.74700.455700 | Staircase | 15d | 2027-07-12 | 2027-07-26 | 5438 |  | 7 Days Work | 9205254 |
| 5440 | 36900.37000.37100.37500.52200.74700.455800 | Deep Cleaning | 7d | 2027-07-27 | 2027-08-02 | 5439 |  | 7 Days Work | 9205264 |

| ID | WBS | Task | Duration | Start | Finish | Predecessors | Constraint | Calendar | Unique_Task_ID |
| --- | --- | --- | --- | --- | --- | --- | --- | --- | --- |
| 5441 | 36900.37000.37100.37500.52200.74800 | **11th Habitable/12th Floor** | 158d | 2027-03-07 | 2027-08-11 |  | start no earlier than 2027-03-07 | 7 Days Work | 9197224 |
| 5442 | 36900.37000.37100.37500.52200.74800.455900 | Side blockwork for lift shafts | 9d | 2027-03-07 | 2027-03-15 | 5432 |  | 7 Days Work | 9205274 |
| 5443 | 36900.37000.37100.37500.52200.74800.456000 | Door Threshold for lifts | 6d | 2027-03-16 | 2027-03-21 | 5442 |  | 7 Days Work | 9205284 |
| 5444 | 36900.37000.37100.37500.52200.74800.456100 | Granite Cladding | 10d | 2027-03-22 | 2027-03-31 | 5443 |  | 7 Days Work | 9205294 |
| 5445 | 36900.37000.37100.37500.52200.74800.456200 | MEP Services | 60d | 2027-04-01 | 2027-05-30 | 5444 |  | 7 Days Work | 9205304 |
| 5446 | 36900.37000.37100.37500.52200.74800.456300 | Flooring+Skirting | 20d | 2027-05-31 | 2027-06-19 | 5445 |  | 7 Days Work | 9205314 |
| 5447 | 36900.37000.37100.37500.52200.74800.456400 | Wall finishes | 21d | 2027-06-20 | 2027-07-10 | 5446 |  | 7 Days Work | 9205324 |
| 5448 | 36900.37000.37100.37500.52200.74800.456500 | False Ceiling | 10d | 2027-07-11 | 2027-07-20 | 5447 |  | 7 Days Work | 9205334 |
| 5449 | 36900.37000.37100.37500.52200.74800.456600 | Staircase | 15d | 2027-07-21 | 2027-08-04 | 5448 |  | 7 Days Work | 9205344 |
| 5450 | 36900.37000.37100.37500.52200.74800.456700 | Deep Cleaning | 7d | 2027-08-05 | 2027-08-11 | 5449 |  | 7 Days Work | 9205354 |
| 5451 | 36900.37000.37100.37500.52200.74900 | **12th Habitable/13th Floor** | 158d | 2027-03-16 | 2027-08-20 |  | start no earlier than 2027-03-16 | 7 Days Work | 9197284 |
| 5452 | 36900.37000.37100.37500.52200.74900.456800 | Side blockwork for lift shafts | 9d | 2027-03-16 | 2027-03-24 | 5442 |  | 7 Days Work | 9205364 |
| 5453 | 36900.37000.37100.37500.52200.74900.456900 | Door Threshold for lifts | 6d | 2027-03-25 | 2027-03-30 | 5452 |  | 7 Days Work | 9205374 |
| 5454 | 36900.37000.37100.37500.52200.74900.457000 | Granite Cladding | 10d | 2027-03-31 | 2027-04-09 | 5453 |  | 7 Days Work | 9205384 |
| 5455 | 36900.37000.37100.37500.52200.74900.457100 | MEP Services | 60d | 2027-04-10 | 2027-06-08 | 5454 |  | 7 Days Work | 9205394 |
| 5456 | 36900.37000.37100.37500.52200.74900.457200 | Flooring+Skirting | 20d | 2027-06-09 | 2027-06-28 | 5455 |  | 7 Days Work | 9205404 |
| 5457 | 36900.37000.37100.37500.52200.74900.457300 | Wall finishes | 21d | 2027-06-29 | 2027-07-19 | 5456 |  | 7 Days Work | 9205414 |
| 5458 | 36900.37000.37100.37500.52200.74900.457400 | False Ceiling | 10d | 2027-07-20 | 2027-07-29 | 5457 |  | 7 Days Work | 9205424 |
| 5459 | 36900.37000.37100.37500.52200.74900.457500 | Staircase | 15d | 2027-07-30 | 2027-08-13 | 5458 |  | 7 Days Work | 9205434 |
| 5460 | 36900.37000.37100.37500.52200.74900.457600 | Deep Cleaning | 7d | 2027-08-14 | 2027-08-20 | 5459 |  | 7 Days Work | 9205444 |
| 5461 | 36900.37000.37100.37500.52200.75000 | **13th Habitable/14th Floor** | 158d | 2027-03-25 | 2027-08-29 |  | start no earlier than 2027-03-25 | 7 Days Work | 9197294 |
| 5462 | 36900.37000.37100.37500.52200.75000.457700 | Side blockwork for lift shafts | 9d | 2027-03-25 | 2027-04-02 | 5452 |  | 7 Days Work | 9205454 |
| 5463 | 36900.37000.37100.37500.52200.75000.457800 | Door Threshold for lifts | 6d | 2027-04-03 | 2027-04-08 | 5462 |  | 7 Days Work | 9205464 |
| 5464 | 36900.37000.37100.37500.52200.75000.457900 | Granite Cladding | 10d | 2027-04-09 | 2027-04-18 | 5463 |  | 7 Days Work | 9205474 |
| 5465 | 36900.37000.37100.37500.52200.75000.458000 | MEP Services | 60d | 2027-04-19 | 2027-06-17 | 5464 |  | 7 Days Work | 9205484 |
| 5466 | 36900.37000.37100.37500.52200.75000.458100 | Flooring+Skirting | 20d | 2027-06-18 | 2027-07-07 | 5465 |  | 7 Days Work | 9205494 |
| 5467 | 36900.37000.37100.37500.52200.75000.458200 | Wall finishes | 21d | 2027-07-08 | 2027-07-28 | 5466 |  | 7 Days Work | 9205504 |
| 5468 | 36900.37000.37100.37500.52200.75000.458300 | False Ceiling | 10d | 2027-07-29 | 2027-08-07 | 5467 |  | 7 Days Work | 9205514 |
| 5469 | 36900.37000.37100.37500.52200.75000.458400 | Staircase | 15d | 2027-08-08 | 2027-08-22 | 5468 |  | 7 Days Work | 9205524 |
| 5470 | 36900.37000.37100.37500.52200.75000.458500 | Deep Cleaning | 7d | 2027-08-23 | 2027-08-29 | 5469 |  | 7 Days Work | 9205534 |

| ID | WBS | Task | Duration | Start | Finish | Predecessors | Constraint | Calendar | Unique_Task_ID |
| --- | --- | --- | --- | --- | --- | --- | --- | --- | --- |
| 5471 | 36900.37000.37100.37500.52200.75100 | **14th Habitable/15th Floor** | 158d | 2027-04-03 | 2027-09-07 |  | start no earlier than 2027-04-03 | 7 Days Work | 9197304 |
| 5472 | 36900.37000.37100.37500.52200.75100.458600 | Side blockwork for lift shafts | 9d | 2027-04-03 | 2027-04-11 | 5462 |  | 7 Days Work | 9205544 |
| 5473 | 36900.37000.37100.37500.52200.75100.458700 | Door Threshold for lifts | 6d | 2027-04-12 | 2027-04-17 | 5472 |  | 7 Days Work | 9205554 |
| 5474 | 36900.37000.37100.37500.52200.75100.458800 | Granite Cladding | 10d | 2027-04-18 | 2027-04-27 | 5473 |  | 7 Days Work | 9205564 |
| 5475 | 36900.37000.37100.37500.52200.75100.458900 | MEP Services | 60d | 2027-04-28 | 2027-06-26 | 5474 |  | 7 Days Work | 9205574 |
| 5476 | 36900.37000.37100.37500.52200.75100.459000 | Flooring+Skirting | 20d | 2027-06-27 | 2027-07-16 | 5475 |  | 7 Days Work | 9205584 |
| 5477 | 36900.37000.37100.37500.52200.75100.459100 | Wall finishes | 21d | 2027-07-17 | 2027-08-06 | 5476 |  | 7 Days Work | 9205594 |
| 5478 | 36900.37000.37100.37500.52200.75100.459200 | False Ceiling | 10d | 2027-08-07 | 2027-08-16 | 5477 |  | 7 Days Work | 9205604 |
| 5479 | 36900.37000.37100.37500.52200.75100.459300 | Staircase | 15d | 2027-08-17 | 2027-08-31 | 5478 |  | 7 Days Work | 9205614 |
| 5480 | 36900.37000.37100.37500.52200.75100.459400 | Deep Cleaning | 7d | 2027-09-01 | 2027-09-07 | 5479 |  | 7 Days Work | 9205624 |
| 5481 | 36900.37000.37100.37500.52200.75200 | **15th Habitable/16th Floor** | 158d | 2027-04-12 | 2027-09-16 |  | start no earlier than 2027-04-12 | 7 Days Work | 9197314 |
| 5482 | 36900.37000.37100.37500.52200.75200.459500 | Side blockwork for lift shafts | 9d | 2027-04-12 | 2027-04-20 | 5472 |  | 7 Days Work | 9205634 |
| 5483 | 36900.37000.37100.37500.52200.75200.459600 | Door Threshold for lifts | 6d | 2027-04-21 | 2027-04-26 | 5482 |  | 7 Days Work | 9205644 |
| 5484 | 36900.37000.37100.37500.52200.75200.459700 | Granite Cladding | 10d | 2027-04-27 | 2027-05-06 | 5483 |  | 7 Days Work | 9205654 |
| 5485 | 36900.37000.37100.37500.52200.75200.459800 | MEP Services | 60d | 2027-05-07 | 2027-07-05 | 5484 |  | 7 Days Work | 9205664 |
| 5486 | 36900.37000.37100.37500.52200.75200.459900 | Flooring+Skirting | 20d | 2027-07-06 | 2027-07-25 | 5485 |  | 7 Days Work | 9205674 |
| 5487 | 36900.37000.37100.37500.52200.75200.460000 | Wall finishes | 21d | 2027-07-26 | 2027-08-15 | 5486 |  | 7 Days Work | 9205684 |
| 5488 | 36900.37000.37100.37500.52200.75200.460100 | False Ceiling | 10d | 2027-08-16 | 2027-08-25 | 5487 |  | 7 Days Work | 9205694 |
| 5489 | 36900.37000.37100.37500.52200.75200.460200 | Staircase | 15d | 2027-08-26 | 2027-09-09 | 5488 |  | 7 Days Work | 9205704 |
| 5490 | 36900.37000.37100.37500.52200.75200.460300 | Deep Cleaning | 7d | 2027-09-10 | 2027-09-16 | 5489 |  | 7 Days Work | 9205714 |
| 5491 | 36900.37000.37100.37500.52200.75300 | **16th Habitable/17th Floor** | 158d | 2027-04-21 | 2027-09-25 |  | start no earlier than 2027-04-21 | 7 Days Work | 9197324 |
| 5492 | 36900.37000.37100.37500.52200.75300.460400 | Side blockwork for lift shafts | 9d | 2027-04-21 | 2027-04-29 | 5482 |  | 7 Days Work | 9205724 |
| 5493 | 36900.37000.37100.37500.52200.75300.460500 | Door Threshold for lifts | 6d | 2027-04-30 | 2027-05-05 | 5492 |  | 7 Days Work | 9205734 |
| 5494 | 36900.37000.37100.37500.52200.75300.460600 | Granite Cladding | 10d | 2027-05-06 | 2027-05-15 | 5493 |  | 7 Days Work | 9205744 |
| 5495 | 36900.37000.37100.37500.52200.75300.460700 | MEP Services | 60d | 2027-05-16 | 2027-07-14 | 5494 |  | 7 Days Work | 9205754 |
| 5496 | 36900.37000.37100.37500.52200.75300.460800 | Flooring+Skirting | 20d | 2027-07-15 | 2027-08-03 | 5495 |  | 7 Days Work | 9205764 |
| 5497 | 36900.37000.37100.37500.52200.75300.460900 | Wall finishes | 21d | 2027-08-04 | 2027-08-24 | 5496 |  | 7 Days Work | 9205774 |
| 5498 | 36900.37000.37100.37500.52200.75300.461000 | False Ceiling | 10d | 2027-08-25 | 2027-09-03 | 5497 |  | 7 Days Work | 9205784 |
| 5499 | 36900.37000.37100.37500.52200.75300.461100 | Staircase | 15d | 2027-09-04 | 2027-09-18 | 5498 |  | 7 Days Work | 9205794 |
| 5500 | 36900.37000.37100.37500.52200.75300.461200 | Deep Cleaning | 7d | 2027-09-19 | 2027-09-25 | 5499 |  | 7 Days Work | 9205804 |

| ID | WBS | Task | Duration | Start | Finish | Predecessors | Constraint | Calendar | Unique_Task_ID |
| --- | --- | --- | --- | --- | --- | --- | --- | --- | --- |
| 5501 | 36900.37000.37100.37500.52200.75400 | **17th Habitable/18th Floor** | 158d | 2027-04-30 | 2027-10-04 |  | start no earlier than 2027-04-30 | 7 Days Work | 9197354 |
| 5502 | 36900.37000.37100.37500.52200.75400.461300 | Side blockwork for lift shafts | 9d | 2027-04-30 | 2027-05-08 | 5492 |  | 7 Days Work | 9205814 |
| 5503 | 36900.37000.37100.37500.52200.75400.461400 | Door Threshold for lifts | 6d | 2027-05-09 | 2027-05-14 | 5502 |  | 7 Days Work | 9205824 |
| 5504 | 36900.37000.37100.37500.52200.75400.461500 | Granite Cladding | 10d | 2027-05-15 | 2027-05-24 | 5503 |  | 7 Days Work | 9205834 |
| 5505 | 36900.37000.37100.37500.52200.75400.461600 | MEP Services | 60d | 2027-05-25 | 2027-07-23 | 5504 |  | 7 Days Work | 9205844 |
| 5506 | 36900.37000.37100.37500.52200.75400.461700 | Flooring+Skirting | 20d | 2027-07-24 | 2027-08-12 | 5505 |  | 7 Days Work | 9205854 |
| 5507 | 36900.37000.37100.37500.52200.75400.461800 | Wall finishes | 21d | 2027-08-13 | 2027-09-02 | 5506 |  | 7 Days Work | 9205864 |
| 5508 | 36900.37000.37100.37500.52200.75400.461900 | False Ceiling | 10d | 2027-09-03 | 2027-09-12 | 5507 |  | 7 Days Work | 9205874 |
| 5509 | 36900.37000.37100.37500.52200.75400.462000 | Staircase | 15d | 2027-09-13 | 2027-09-27 | 5508 |  | 7 Days Work | 9205884 |
| 5510 | 36900.37000.37100.37500.52200.75400.462100 | Deep Cleaning | 7d | 2027-09-28 | 2027-10-04 | 5509 |  | 7 Days Work | 9205894 |
| 5511 | 36900.37000.37100.37500.52200.75500 | **18th Habitable/19th Floor** | 158d | 2027-05-09 | 2027-10-13 |  | start no earlier than 2027-05-09 | 7 Days Work | 9197364 |
| 5512 | 36900.37000.37100.37500.52200.75500.462200 | Side blockwork for lift shafts | 9d | 2027-05-09 | 2027-05-17 | 5502 |  | 7 Days Work | 9205904 |
| 5513 | 36900.37000.37100.37500.52200.75500.462300 | Door Threshold for lifts | 6d | 2027-05-18 | 2027-05-23 | 5512 |  | 7 Days Work | 9205914 |
| 5514 | 36900.37000.37100.37500.52200.75500.462400 | Granite Cladding | 10d | 2027-05-24 | 2027-06-02 | 5513 |  | 7 Days Work | 9205924 |
| 5515 | 36900.37000.37100.37500.52200.75500.462500 | MEP Services | 60d | 2027-06-03 | 2027-08-01 | 5514 |  | 7 Days Work | 9205934 |
| 5516 | 36900.37000.37100.37500.52200.75500.462600 | Flooring+Skirting | 20d | 2027-08-02 | 2027-08-21 | 5515 |  | 7 Days Work | 9205944 |
| 5517 | 36900.37000.37100.37500.52200.75500.462700 | Wall finishes | 21d | 2027-08-22 | 2027-09-11 | 5516 |  | 7 Days Work | 9205954 |
| 5518 | 36900.37000.37100.37500.52200.75500.462800 | False Ceiling | 10d | 2027-09-12 | 2027-09-21 | 5517 |  | 7 Days Work | 9205964 |
| 5519 | 36900.37000.37100.37500.52200.75500.462900 | Staircase | 15d | 2027-09-22 | 2027-10-06 | 5518 |  | 7 Days Work | 9205974 |
| 5520 | 36900.37000.37100.37500.52200.75500.463000 | Deep Cleaning | 7d | 2027-10-07 | 2027-10-13 | 5519 |  | 7 Days Work | 9205984 |
| 5521 | 36900.37000.37100.37500.52200.75600 | **19th Habitable/20th Floor** | 158d | 2027-05-18 | 2027-10-22 |  | start no earlier than 2027-05-18 | 7 Days Work | 9197374 |
| 5522 | 36900.37000.37100.37500.52200.75600.463100 | Side blockwork for lift shafts | 9d | 2027-05-18 | 2027-05-26 | 5512 |  | 7 Days Work | 9205994 |
| 5523 | 36900.37000.37100.37500.52200.75600.463200 | Door Threshold for lifts | 6d | 2027-05-27 | 2027-06-01 | 5522 |  | 7 Days Work | 9206004 |
| 5524 | 36900.37000.37100.37500.52200.75600.463300 | Granite Cladding | 10d | 2027-06-02 | 2027-06-11 | 5523 |  | 7 Days Work | 9206014 |
| 5525 | 36900.37000.37100.37500.52200.75600.463400 | MEP Services | 60d | 2027-06-12 | 2027-08-10 | 5524 |  | 7 Days Work | 9206024 |
| 5526 | 36900.37000.37100.37500.52200.75600.463500 | Flooring+Skirting | 20d | 2027-08-11 | 2027-08-30 | 5525 |  | 7 Days Work | 9206034 |
| 5527 | 36900.37000.37100.37500.52200.75600.463600 | Wall finishes | 21d | 2027-08-31 | 2027-09-20 | 5526 |  | 7 Days Work | 9206044 |
| 5528 | 36900.37000.37100.37500.52200.75600.463700 | False Ceiling | 10d | 2027-09-21 | 2027-09-30 | 5527 |  | 7 Days Work | 9206054 |
| 5529 | 36900.37000.37100.37500.52200.75600.463800 | Staircase | 15d | 2027-10-01 | 2027-10-15 | 5528 |  | 7 Days Work | 9206064 |
| 5530 | 36900.37000.37100.37500.52200.75600.463900 | Deep Cleaning | 7d | 2027-10-16 | 2027-10-22 | 5529 |  | 7 Days Work | 9206074 |

| ID | WBS | Task | Duration | Start | Finish | Predecessors | Constraint | Calendar | Unique_Task_ID |
| --- | --- | --- | --- | --- | --- | --- | --- | --- | --- |
| 5531 | 36900.37000.37100.37500.52200.75700 | **20th Habitable/21st Floor** | 158d | 2027-05-27 | 2027-10-31 |  | start no earlier than 2027-05-27 | 7 Days Work | 9265274 |
| 5532 | 36900.37000.37100.37500.52200.75700.464000 | Side blockwork for lift shafts | 9d | 2027-05-27 | 2027-06-04 | 5522 |  | 7 Days Work | 9265284 |
| 5533 | 36900.37000.37100.37500.52200.75700.464100 | Door Threshold for lifts | 6d | 2027-06-05 | 2027-06-10 | 5532 |  | 7 Days Work | 9265294 |
| 5534 | 36900.37000.37100.37500.52200.75700.464200 | Granite Cladding | 10d | 2027-06-11 | 2027-06-20 | 5533 |  | 7 Days Work | 9265304 |
| 5535 | 36900.37000.37100.37500.52200.75700.464300 | MEP Services | 60d | 2027-06-21 | 2027-08-19 | 5534 |  | 7 Days Work | 9265314 |
| 5536 | 36900.37000.37100.37500.52200.75700.464400 | Flooring+Skirting | 20d | 2027-08-20 | 2027-09-08 | 5535 |  | 7 Days Work | 9265324 |
| 5537 | 36900.37000.37100.37500.52200.75700.464500 | Wall finishes | 21d | 2027-09-09 | 2027-09-29 | 5536 |  | 7 Days Work | 9265334 |
| 5538 | 36900.37000.37100.37500.52200.75700.464600 | False Ceiling | 10d | 2027-09-30 | 2027-10-09 | 5537 |  | 7 Days Work | 9265344 |
| 5539 | 36900.37000.37100.37500.52200.75700.464700 | Staircase | 15d | 2027-10-10 | 2027-10-24 | 5538 |  | 7 Days Work | 9265354 |
| 5540 | 36900.37000.37100.37500.52200.75700.464800 | Deep Cleaning | 7d | 2027-10-25 | 2027-10-31 | 5539 |  | 7 Days Work | 9044184 |
| 5541 | 36900.37000.37100.37500.67800 | **Lift** | 337d | 2026-02-18 | 2027-01-20 |  | start no earlier than 2026-02-18 | 7 Days Work | 9197214 |
| 5542 | 36900.37000.37100.37500.67800.118100 | Order Issue | 104d | 2026-02-18 | 2026-06-01 | 4128FS-125d |  | 7 Days Work | 9197414 |
| 5543 | 36900.37000.37100.37500.67800.118200 | Shop drawing approval | 30d | 2026-06-02 | 2026-07-01 | 5542 |  | 7 Days Work | 9197424 |
| 5544 | 36900.37000.37100.37500.67800.118300 | Material recipt | 90d | 2026-07-02 | 2026-09-29 | 5543 |  | 7 Days Work | 9197434 |
| 5545 | 36900.37000.37100.37500.67800.118400 | Lift Shaft Handover | 30d | 2026-10-26 | 2026-11-24 | 4138 |  | 7 Days Work | 9197444 |
| 5546 | 36900.37000.37100.37500.67800.118500 | Template fixing by lift contractor | 7d | 2026-11-25 | 2026-12-01 | 5545 |  | 7 Days Work | 9197454 |
| 5547 | 36900.37000.37100.37500.67800.118600 | Centre line marking for lift shafts | 5d | 2026-12-02 | 2026-12-06 | 5546 |  | 7 Days Work | 9197464 |
| 5548 | 36900.37000.37100.37500.67800.118700 | Rail & Bracket Fixing | 5d | 2026-12-07 | 2026-12-11 | 5547 |  | 7 Days Work | 9197474 |
| 5549 | 36900.37000.37100.37500.67800.118800 | Cage Installation | 5d | 2026-12-12 | 2026-12-16 | 5548 |  | 7 Days Work | 9197484 |
| 5550 | 36900.37000.37100.37500.67800.118900 | Slow Speed | 20d | 2026-12-17 | 2027-01-05 | 5549 |  | 7 Days Work | 9197494 |
| 5551 | 36900.37000.37100.37500.67800.119000 | High Spped | 5d | 2027-01-06 | 2027-01-10 | 5550 |  | 7 Days Work | 9197504 |
| 5552 | 36900.37000.37100.37500.67800.119100 | Commisioning | 7d | 2027-01-11 | 2027-01-17 | 5551 |  | 7 Days Work | 9197514 |
| 5553 | 36900.37000.37100.37500.67800.119200 | Handover | 3d | 2027-01-18 | 2027-01-20 | 5552 |  | 7 Days Work | 9044174 |
| 5554 | 36900.37000.37100.37500.105400 | External Paint | 90d | 2027-02-03 | 2027-05-03 | 4137FS+135d |  | 7 Days Work | 9146004 |

| ID | WBS | Task | Duration | Start | Finish | Predecessors | Complete | Constraint | Calendar | Unique_Task_ID |
| --- | --- | --- | --- | --- | --- | --- | --- | --- | --- | --- |
| 5555 | 36900.37000.37100.37300 | **Tower-5** | 981d | 2025-02-26 | 2027-11-03 |  | 3% | start no earlier than 2025-02-26 | 7 Days Work | 9042644 |
| 5556 | 36900.37000.37100.37300.88000 | Pilling | 112d | 2025-02-26 | 2025-07-01 | 2720SS | 100% | start no earlier than 2025-02-26 | 7 Days Work | 9044244 |
| 5557 | 36900.37000.37100.37300.87900 | SPT Test | 26d | 2025-05-20 | 2025-06-14 | 5556FF+15d | 100% | start no earlier than 2025-05-20 | 7 Days Work | 10343708 |
| 5558 | 36900.37000.37100.37300.87800 | Dynamic | 1d | 2025-06-27 | 2025-06-27 | 5556FS+28d | 100% | start no earlier than 2025-06-27 | 7 Days Work | 10343718 |
| 5559 | 36900.37000.37100.37300.87700 | Static Load Test | 8d | 2025-07-20 | 2025-08-01 | 5556FS+28d | 100% | start no earlier than 2025-07-20 | 7 Days Work | 10343728 |
| 5560 | 36900.37000.37100.37300.87600 | Excavation | 9d | 2025-08-05 | 2025-09-15 | 5559 | 100% | start no earlier than 2025-08-05 | 7 Days Work | 9044245 |
| 5561 | 36900.37000.37100.37300.87500 | Pile Breaking | 21d | 2025-08-09 | 2025-09-15 | 5560 | 100% | start no earlier than 2025-08-09 | 7 Days Work | 10419708 |
| 5562 | 36900.37000.37100.37300.87400 | ATT | 27d | 2025-07-29 | 2025-09-15 | 5561FS-47d | 100% | start no earlier than 2025-07-29 | 7 Days Work | 10419838 |
| 5563 | 36900.37000.37100.37300.87300 | LDPE Sheet | 27d | 2025-07-29 | 2025-09-15 | 5562FS-30d | 100% | start no earlier than 2025-07-29 | 7 Days Work | 10419848 |
| 5564 | 36900.37000.37100.37300.87200 | PCC | 25d | 2025-07-29 | 2025-09-15 | 5561 | 100% | start no earlier than 2025-07-29 | 7 Days Work | 10419728 |
| 5565 | 36900.37000.37100.37300.87100 | PIT | 7d | 2025-06-26 | 2025-09-15 | 5561 | 100% | start no earlier than 2025-06-26 | 7 Days Work | 10343798 |
| 5566 | 36900.37000.37100.37300.87000 | Raft-Reinforcement | 33d | 2025-08-01 | 2025-10-30 | 5565FS+0.25d | 100% | start no earlier than 2025-08-01 | 7 Days Work | 9044254 |
| 5567 | 36900.37000.37100.37300.86900 | Raft-Shuttering | 38d | 2025-09-02 | 2025-10-29 | 5566SS+102d | 100% | start no earlier than 2025-09-02 | 7 Days Work | 10430188 |
| 5568 | 36900.37000.37100.37300.86800 | Raft-Concreting | 44d | 2025-08-27 | 2025-10-30 | 5567SS+19d | 100% | start no earlier than 2025-08-27 | 7 Days Work | 10430198 |
| 5569 | 36900.37000.37100.37300.86700 | up to PL | 22d | 2025-10-14 | 2025-12-05 | 5566 | 86% | start no earlier than 2025-10-14 | 7 Days Work | 9044264 |
| 5570 | 36900.37000.37100.37300.86600 | 1st Floor Slab RCC | 27d | 2025-11-14 | 2025-12-20 | 5569 | 22% | start no earlier than 2025-11-14 | 7 Days Work | 9044274 |
| 5571 | 36900.37000.37100.37300.105500 | 2nd Floor Slab RCC | 25d | 2025-12-21 | 2026-01-14 | 5570 |  |  | 7 Days Work | 9044284 |
| 5572 | 36900.37000.37100.37300.105600 | 3rd Floor Slab RCC | 21d | 2026-01-15 | 2026-02-04 | 5571 |  |  | 7 Days Work | 9044294 |
| 5573 | 36900.37000.37100.37300.105700 | 4th Floor Slab RCC | 15d | 2026-02-05 | 2026-02-19 | 5572 |  |  | 7 Days Work | 9044304 |
| 5574 | 36900.37000.37100.37300.105800 | 5th Floor Slab RCC | 12d | 2026-02-20 | 2026-03-03 | 5573 |  |  | 7 Days Work | 9044314 |
| 5575 | 36900.37000.37100.37300.105900 | 6th Floor Slab RCC | 12d | 2026-03-04 | 2026-03-15 | 5574 |  |  | 7 Days Work | 9044324 |
| 5576 | 36900.37000.37100.37300.106000 | 7th Floor Slab RCC | 12d | 2026-03-16 | 2026-03-27 | 5575 |  |  | 7 Days Work | 9044334 |
| 5577 | 36900.37000.37100.37300.106100 | 8th Floor Slab RCC | 12d | 2026-03-28 | 2026-04-08 | 5576 |  |  | 7 Days Work | 9044344 |
| 5578 | 36900.37000.37100.37300.106200 | 9th Floor Slab RCC | 12d | 2026-04-09 | 2026-04-20 | 5577 |  |  | 7 Days Work | 9044354 |
| 5579 | 36900.37000.37100.37300.106300 | 10th Floor Slab RCC | 12d | 2026-04-21 | 2026-05-02 | 5578 |  |  | 7 Days Work | 9044364 |
| 5580 | 36900.37000.37100.37300.106400 | 11th Floor Slab RCC | 12d | 2026-05-03 | 2026-05-14 | 5579 |  |  | 7 Days Work | 9044374 |
| 5581 | 36900.37000.37100.37300.106500 | 12th Floor Slab RCC | 12d | 2026-05-15 | 2026-05-26 | 5580 |  |  | 7 Days Work | 9044384 |
| 5582 | 36900.37000.37100.37300.106600 | 13th Floor Slab RCC | 12d | 2026-05-27 | 2026-06-07 | 5581 |  |  | 7 Days Work | 9044394 |
| 5583 | 36900.37000.37100.37300.106700 | 14th Floor Slab RCC | 12d | 2026-06-08 | 2026-06-19 | 5582 |  |  | 7 Days Work | 9044404 |
| 5584 | 36900.37000.37100.37300.106800 | 15th Floor Slab RCC | 12d | 2026-06-20 | 2026-07-01 | 5583 |  |  | 7 Days Work | 9044414 |
| 5585 | 36900.37000.37100.37300.106900 | 16th Floor Slab RCC | 12d | 2026-07-02 | 2026-07-13 | 5584 |  |  | 7 Days Work | 9044424 |
| 5586 | 36900.37000.37100.37300.107000 | 17th Floor Slab RCC | 12d | 2026-07-14 | 2026-07-25 | 5585 |  |  | 7 Days Work | 9044434 |
| 5587 | 36900.37000.37100.37300.107100 | 18th Floor Slab RCC | 12d | 2026-07-26 | 2026-08-06 | 5586 |  |  | 7 Days Work | 9044444 |
| 5588 | 36900.37000.37100.37300.107200 | 19th Floor Slab RCC | 12d | 2026-08-07 | 2026-08-18 | 5587 |  |  | 7 Days Work | 9044454 |
| 5589 | 36900.37000.37100.37300.107300 | 20th Floor Slab RCC | 12d | 2026-08-19 | 2026-08-30 | 5588 |  |  | 7 Days Work | 9044464 |
| 5590 | 36900.37000.37100.37300.107400 | 21st Floor Slab RCC | 12d | 2026-08-31 | 2026-09-11 | 5589 |  |  | 7 Days Work | 9044474 |
| 5591 | 36900.37000.37100.37300.107500 | Terrace | 12d | 2026-09-12 | 2026-09-23 | 5590 |  |  | 7 Days Work | 9044484 |
| 5592 | 36900.37000.37100.37300.107600 | Above Terrace | 35d | 2026-09-24 | 2026-10-28 | 5591 |  |  | 7 Days Work | 9279524 |

| ID | WBS | Task | Duration | Start | Finish | Predecessors | Constraint | Calendar | Unique_Task_ID |
| --- | --- | --- | --- | --- | --- | --- | --- | --- | --- |
| 5593 | 36900.37000.37100.37300.38000 | **Flat Finishing** | 458d | 2026-03-16 | 2027-06-16 |  | start no earlier than 2026-03-16 | 7 Days Work | 9265374 |
| 5594 | 36900.37000.37100.37300.38000.46200 | **1st Habitable/2nd Floor** | 245d | 2026-03-16 | 2026-11-15 |  | start no earlier than 2026-03-16 | 7 Days Work | 9265384 |
| 5595 | 36900.37000.37100.37300.38000.46200.464900 | Post Pour | 7d | 2026-03-16 | 2026-03-22 | 5575 |  | 7 Days Work | 9266124 |
| 5596 | 36900.37000.37100.37300.38000.46200.465000 | MEP Clearance -1 | 5d | 2026-03-23 | 2026-03-27 | 5595 |  | 7 Days Work | 9266134 |
| 5597 | 36900.37000.37100.37300.38000.46200.465100 | Benchmark | 1d | 2026-03-28 | 2026-03-28 | 5596 |  | 7 Days Work | 9266144 |
| 5598 | 36900.37000.37100.37300.38000.46200.465200 | Temporary Railing | 3d | 2026-03-29 | 2026-03-31 | 5597 |  | 7 Days Work | 9266154 |
| 5599 | 36900.37000.37100.37300.38000.46200.465300 | Blockwork | 10d | 2026-04-01 | 2026-04-10 | 5598 |  | 7 Days Work | 9266164 |
| 5600 | 36900.37000.37100.37300.38000.46200.465400 | MEP Clearance -2 | 10d | 2026-04-11 | 2026-04-20 | 5599 |  | 7 Days Work | 9266174 |
| 5601 | 36900.37000.37100.37300.38000.46200.465500 | Gypsum Plaster | 14d | 2026-04-21 | 2026-05-04 | 5600 |  | 7 Days Work | 9266184 |
| 5602 | 36900.37000.37100.37300.38000.46200.465600 | Kitchen Platform | 3d | 2026-05-05 | 2026-05-07 | 5601 |  | 7 Days Work | 9266194 |
| 5603 | 36900.37000.37100.37300.38000.46200.465700 | Kitchen dado | 7d | 2026-05-08 | 2026-05-14 | 5602 |  | 7 Days Work | 9266204 |
| 5604 | 36900.37000.37100.37300.38000.46200.465800 | Fire Fighting | 5d | 2026-05-15 | 2026-05-19 | 5603 |  | 7 Days Work | 9266214 |
| 5605 | 36900.37000.37100.37300.38000.46200.465900 | Anticapilary | 5d | 2026-05-20 | 2026-05-24 | 5604 |  | 7 Days Work | 9266224 |
| 5606 | 36900.37000.37100.37300.38000.46200.466000 | Stone Laying | 10d | 2026-06-27 | 2026-07-06 | 5646 |  | 7 Days Work | 9266234 |
| 5607 | 36900.37000.37100.37300.38000.46200.466100 | Tiles Laying | 7d | 2026-06-27 | 2026-07-03 | 5646 |  | 7 Days Work | 9266244 |
| 5608 | 36900.37000.37100.37300.38000.46200.466200 | 1st cutting/polishing of stone flooring | 7d | 2026-07-04 | 2026-07-10 | 5607 |  | 7 Days Work | 9266254 |
| 5609 | 36900.37000.37100.37300.38000.46200.466300 | Tiles/Stone skirting | 5d | 2026-07-11 | 2026-07-15 | 5608 |  | 7 Days Work | 9266264 |
| 5610 | 36900.37000.37100.37300.38000.46200.466400 | Protechtion sheet | 1d | 2026-07-16 | 2026-07-16 | 5609 |  | 7 Days Work | 9266274 |
| 5611 | 36900.37000.37100.37300.38000.46200.466500 | Installation of Temporary Door | 1d | 2026-07-17 | 2026-07-17 | 5610 |  | 7 Days Work | 9266284 |
| 5612 | 36900.37000.37100.37300.38000.46200.466600 | Fixing of window tracks | 5d | 2026-07-18 | 2026-07-22 | 5611 |  | 7 Days Work | 9266294 |
| 5613 | 36900.37000.37100.37300.38000.46200.466700 | Wire Pulling | 7d | 2026-07-23 | 2026-07-29 | 5612 |  | 7 Days Work | 9266304 |
| 5614 | 36900.37000.37100.37300.38000.46200.466800 | Gypsum Remaining | 5d | 2026-07-30 | 2026-08-03 | 5613 |  | 7 Days Work | 9266314 |
| 5615 | 36900.37000.37100.37300.38000.46200.466900 | Fixing of windoow shutter | 5d | 2026-08-04 | 2026-08-08 | 5614 |  | 7 Days Work | 9266324 |
| 5616 | 36900.37000.37100.37300.38000.46200.467000 | Putty Works - walls & ceiling | 15d | 2026-08-09 | 2026-08-23 | 5615 |  | 7 Days Work | 9266334 |
| 5617 | 36900.37000.37100.37300.38000.46200.467100 | False Ceiling- Framing | 10d | 2026-08-24 | 2026-09-02 | 5616 |  | 7 Days Work | 9266344 |
| 5618 | 36900.37000.37100.37300.38000.46200.467200 | Pre Hung Door | 3d | 2026-09-03 | 2026-09-05 | 5617 |  | 7 Days Work | 9266354 |
| 5619 | 36900.37000.37100.37300.38000.46200.467300 | Protechtion sheet | 2d | 2026-09-06 | 2026-09-07 | 5618 |  | 7 Days Work | 9266364 |
| 5620 | 36900.37000.37100.37300.38000.46200.467400 | Skirting near door | 2d | 2026-09-08 | 2026-09-09 | 5619 |  | 7 Days Work | 9266374 |
| 5621 | 36900.37000.37100.37300.38000.46200.467500 | Electrical Switch box fixing | 14d | 2026-09-10 | 2026-09-23 | 5620 |  | 7 Days Work | 9266384 |
| 5622 | 36900.37000.37100.37300.38000.46200.467600 | Fire Fighting painting | 5d | 2026-09-24 | 2026-09-28 | 5621 |  | 7 Days Work | 9266394 |
| 5623 | 36900.37000.37100.37300.38000.46200.467700 | Protection of all flooring, door & window hardware | 5d | 2026-09-29 | 2026-10-03 | 5622 |  | 7 Days Work | 9266404 |
| 5624 | 36900.37000.37100.37300.38000.46200.467800 | 1st coat primer- ceiling 1st & walls | 14d | 2026-10-04 | 2026-10-17 | 5623 |  | 7 Days Work | 9266414 |
| 5625 | 36900.37000.37100.37300.38000.46200.467900 | Wooden Flooring | 5d | 2026-10-18 | 2026-10-22 | 5624 |  | 7 Days Work | 9266424 |
| 5626 | 36900.37000.37100.37300.38000.46200.468000 | Removing of Temporary Railing & installation of Glass Railing | 5d | 2026-10-18 | 2026-10-22 | 5624 |  | 7 Days Work | 9266434 |
| 5627 | 36900.37000.37100.37300.38000.46200.468100 | Tile Grouting | 7d | 2026-10-18 | 2026-10-24 | 5624 |  | 7 Days Work | 9266444 |
| 5628 | 36900.37000.37100.37300.38000.46200.468200 | False Ceiling | 5d | 2026-10-25 | 2026-10-29 | 5627 |  | 7 Days Work | 9266454 |
| 5629 | 36900.37000.37100.37300.38000.46200.468300 | 2nd coat of primer | 10d | 2026-10-30 | 2026-11-08 | 5628 |  | 7 Days Work | 9266464 |
| 5630 | 36900.37000.37100.37300.38000.46200.468400 | Final cutting/polishing of stone flooring | 7d | 2026-11-09 | 2026-11-15 | 5629 |  | 7 Days Work | 9266474 |

| ID | WBS | Task | Duration | Start | Finish | Predecessors | Constraint | Calendar | Unique_Task_ID |
| --- | --- | --- | --- | --- | --- | --- | --- | --- | --- |
| 5631 | 36900.37000.37100.37300.38000.46200.60500 | **Toilet** | 237d | 2026-03-23 | 2026-11-14 |  | start no earlier than 2026-03-23 | 7 Days Work | 9265594 |
| 5632 | 36900.37000.37100.37300.38000.46200.60500.902300 | Toilet_MEP Clearance -1 | 7d | 2026-03-23 | 2026-03-29 | 5595 |  | 7 Days Work | 9275124 |
| 5633 | 36900.37000.37100.37300.38000.46200.60500.902400 | Toilet_Level Marking | 1d | 2026-03-30 | 2026-03-30 | 5632 |  | 7 Days Work | 9275134 |
| 5634 | 36900.37000.37100.37300.38000.46200.60500.902500 | Toilet_Chasing work for Electrical conduit & concealed plumbing | 5d | 2026-03-31 | 2026-04-04 | 5633 |  | 7 Days Work | 9275144 |
| 5635 | 36900.37000.37100.37300.38000.46200.60500.902600 | Toilet_Plumbing work 1st fix | 5d | 2026-04-05 | 2026-04-09 | 5634 |  | 7 Days Work | 9275154 |
| 5636 | 36900.37000.37100.37300.38000.46200.60500.902700 | Toilet_Sleeve/Bore Packing | 5d | 2026-04-10 | 2026-04-14 | 5635 |  | 7 Days Work | 9275164 |
| 5637 | 36900.37000.37100.37300.38000.46200.60500.902800 | Toilet_Waterproofing | 10d | 2026-04-15 | 2026-04-24 | 5636 |  | 7 Days Work | 9275174 |
| 5638 | 36900.37000.37100.37300.38000.46200.60500.902900 | Toilet_Screed | 1d | 2026-04-25 | 2026-04-25 | 5637 |  | 7 Days Work | 9275184 |
| 5639 | 36900.37000.37100.37300.38000.46200.60500.903000 | Toilet_Plumbing 2nd fix | 5d | 2026-04-26 | 2026-04-30 | 5638 |  | 7 Days Work | 9275194 |
| 5640 | 36900.37000.37100.37300.38000.46200.60500.903100 | Toilet_Ledge wall | 5d | 2026-05-01 | 2026-05-05 | 5639 |  | 7 Days Work | 9275204 |
| 5641 | 36900.37000.37100.37300.38000.46200.60500.903200 | Toilet_Cement Plaster | 5d | 2026-05-06 | 2026-05-10 | 5640 |  | 7 Days Work | 9275214 |
| 5642 | 36900.37000.37100.37300.38000.46200.60500.903300 | Toilet_Door Frame | 1d | 2026-05-11 | 2026-05-11 | 5641 |  | 7 Days Work | 9275224 |
| 5643 | 36900.37000.37100.37300.38000.46200.60500.903400 | Toilet_Wash basin & Couter | 3d | 2026-05-12 | 2026-05-14 | 5642 |  | 7 Days Work | 9275234 |
| 5644 | 36900.37000.37100.37300.38000.46200.60500.903500 | Toilet_Wall dado | 20d | 2026-05-15 | 2026-06-03 | 5643 |  | 7 Days Work | 9275244 |
| 5645 | 36900.37000.37100.37300.38000.46200.60500.903600 | Toilet_Granite Work-Ledge wall top | 3d | 2026-06-04 | 2026-06-06 | 5644 |  | 7 Days Work | 9275254 |
| 5646 | 36900.37000.37100.37300.38000.46200.60500.903700 | Toilet_Floor Tilling work | 20d | 2026-06-07 | 2026-06-26 | 5645 |  | 7 Days Work | 9275264 |
| 5647 | 36900.37000.37100.37300.38000.46200.60500.903800 | Toilet_1st row of dado | 5d | 2026-06-27 | 2026-07-01 | 5646 |  | 7 Days Work | 9275274 |
| 5648 | 36900.37000.37100.37300.38000.46200.60500.903900 | Toilet_Window Fixing | 14d | 2026-07-02 | 2026-07-15 | 5647 |  | 7 Days Work | 9275284 |
| 5649 | 36900.37000.37100.37300.38000.46200.60500.904000 | Toilet_Services above False ceiling | 21d | 2026-07-16 | 2026-08-05 | 5648 |  | 7 Days Work | 9275294 |
| 5650 | 36900.37000.37100.37300.38000.46200.60500.904100 | Toilet_False Ceiling framing | 12d | 2026-08-06 | 2026-08-17 | 5649 |  | 7 Days Work | 9275304 |
| 5651 | 36900.37000.37100.37300.38000.46200.60500.904200 | Toilet_Door Frame | 5d | 2026-08-18 | 2026-08-22 | 5650 |  | 7 Days Work | 9275314 |
| 5652 | 36900.37000.37100.37300.38000.46200.60500.904300 | Toilet_Epoxy Tile Grouting | 7d | 2026-10-18 | 2026-10-24 | 5627SS |  | 7 Days Work | 9275324 |
| 5653 | 36900.37000.37100.37300.38000.46200.60500.904400 | Toilet_False ceiling board fixing, CP Sanitary Fixture, Electric Fixture | 21d | 2026-10-25 | 2026-11-14 | 5652 |  | 7 Days Work | 9275334 |
| 5654 | 36900.37000.37100.37300.38000.46300 | **2nd Habitable/3rd Floor** | 245d | 2026-03-28 | 2026-11-27 |  | start no earlier than 2026-03-28 | 7 Days Work | 9265394 |
| 5655 | 36900.37000.37100.37300.38000.46300.468500 | Post Pour | 7d | 2026-03-28 | 2026-04-03 | 5576 |  | 7 Days Work | 9266484 |
| 5656 | 36900.37000.37100.37300.38000.46300.468600 | MEP Clearance -1 | 5d | 2026-04-04 | 2026-04-08 | 5655 |  | 7 Days Work | 9266494 |
| 5657 | 36900.37000.37100.37300.38000.46300.468700 | Benchmark | 1d | 2026-04-09 | 2026-04-09 | 5656 |  | 7 Days Work | 9266504 |
| 5658 | 36900.37000.37100.37300.38000.46300.468800 | Temporary Railing | 3d | 2026-04-10 | 2026-04-12 | 5657 |  | 7 Days Work | 9266514 |
| 5659 | 36900.37000.37100.37300.38000.46300.468900 | Blockwork | 10d | 2026-04-13 | 2026-04-22 | 5658 |  | 7 Days Work | 9266524 |
| 5660 | 36900.37000.37100.37300.38000.46300.469000 | MEP Clearance -2 | 10d | 2026-04-23 | 2026-05-02 | 5659 |  | 7 Days Work | 9266534 |
| 5661 | 36900.37000.37100.37300.38000.46300.469100 | Gypsum Plaster | 14d | 2026-05-03 | 2026-05-16 | 5660 |  | 7 Days Work | 9266544 |
| 5662 | 36900.37000.37100.37300.38000.46300.469200 | Kitchen Platform | 3d | 2026-05-17 | 2026-05-19 | 5661 |  | 7 Days Work | 9266554 |
| 5663 | 36900.37000.37100.37300.38000.46300.469300 | Kitchen dado | 7d | 2026-05-20 | 2026-05-26 | 5662 |  | 7 Days Work | 9266564 |
| 5664 | 36900.37000.37100.37300.38000.46300.469400 | Fire Fighting | 5d | 2026-05-27 | 2026-05-31 | 5663 |  | 7 Days Work | 9266574 |
| 5665 | 36900.37000.37100.37300.38000.46300.469500 | Anticapilary | 5d | 2026-06-01 | 2026-06-05 | 5664 |  | 7 Days Work | 9266584 |
| 5666 | 36900.37000.37100.37300.38000.46300.469600 | Stone Laying | 10d | 2026-07-09 | 2026-07-18 | 5706 |  | 7 Days Work | 9266594 |
| 5667 | 36900.37000.37100.37300.38000.46300.469700 | Tiles Laying | 7d | 2026-07-09 | 2026-07-15 | 5706 |  | 7 Days Work | 9266604 |
| 5668 | 36900.37000.37100.37300.38000.46300.469800 | 1st cutting/polishing of stone flooring | 7d | 2026-07-16 | 2026-07-22 | 5667 |  | 7 Days Work | 9266614 |
| 5669 | 36900.37000.37100.37300.38000.46300.469900 | Tiles/Stone skirting | 5d | 2026-07-23 | 2026-07-27 | 5668 |  | 7 Days Work | 9266624 |
| 5670 | 36900.37000.37100.37300.38000.46300.470000 | Protechtion sheet | 1d | 2026-07-28 | 2026-07-28 | 5669 |  | 7 Days Work | 9266634 |
| 5671 | 36900.37000.37100.37300.38000.46300.470100 | Installation of Temporary Door | 1d | 2026-07-29 | 2026-07-29 | 5670 |  | 7 Days Work | 9266644 |
| 5672 | 36900.37000.37100.37300.38000.46300.470200 | Fixing of window tracks | 5d | 2026-07-30 | 2026-08-03 | 5671 |  | 7 Days Work | 9266654 |
| 5673 | 36900.37000.37100.37300.38000.46300.470300 | Wire Pulling | 7d | 2026-08-04 | 2026-08-10 | 5672 |  | 7 Days Work | 9266664 |
| 5674 | 36900.37000.37100.37300.38000.46300.470400 | Gypsum Remaining | 5d | 2026-08-11 | 2026-08-15 | 5673 |  | 7 Days Work | 9266674 |
| 5675 | 36900.37000.37100.37300.38000.46300.470500 | Fixing of windoow shutter | 5d | 2026-08-16 | 2026-08-20 | 5674 |  | 7 Days Work | 9266684 |
| 5676 | 36900.37000.37100.37300.38000.46300.470600 | Putty Works - walls & ceiling | 15d | 2026-08-21 | 2026-09-04 | 5675 |  | 7 Days Work | 9266694 |
| 5677 | 36900.37000.37100.37300.38000.46300.470700 | False Ceiling- Framing | 10d | 2026-09-05 | 2026-09-14 | 5676 |  | 7 Days Work | 9266704 |
| 5678 | 36900.37000.37100.37300.38000.46300.470800 | Pre Hung Door | 3d | 2026-09-15 | 2026-09-17 | 5677 |  | 7 Days Work | 9266714 |
| 5679 | 36900.37000.37100.37300.38000.46300.470900 | Protechtion sheet | 2d | 2026-09-18 | 2026-09-19 | 5678 |  | 7 Days Work | 9266724 |
| 5680 | 36900.37000.37100.37300.38000.46300.471000 | Skirting near door | 2d | 2026-09-20 | 2026-09-21 | 5679 |  | 7 Days Work | 9266734 |
| 5681 | 36900.37000.37100.37300.38000.46300.471100 | Electrical Switch box fixing | 14d | 2026-09-22 | 2026-10-05 | 5680 |  | 7 Days Work | 9266744 |
| 5682 | 36900.37000.37100.37300.38000.46300.471200 | Fire Fighting painting | 5d | 2026-10-06 | 2026-10-10 | 5681 |  | 7 Days Work | 9266754 |
| 5683 | 36900.37000.37100.37300.38000.46300.471300 | Protection of all flooring, door & window hardware | 5d | 2026-10-11 | 2026-10-15 | 5682 |  | 7 Days Work | 9266764 |
| 5684 | 36900.37000.37100.37300.38000.46300.471400 | 1st coat primer- ceiling 1st & walls | 14d | 2026-10-16 | 2026-10-29 | 5683 |  | 7 Days Work | 9266774 |
| 5685 | 36900.37000.37100.37300.38000.46300.471500 | Wooden Flooring | 5d | 2026-10-30 | 2026-11-03 | 5684 |  | 7 Days Work | 9266784 |
| 5686 | 36900.37000.37100.37300.38000.46300.471600 | Removing of Temporary Railing & installation of Glass Railing | 5d | 2026-10-30 | 2026-11-03 | 5684 |  | 7 Days Work | 9266794 |
| 5687 | 36900.37000.37100.37300.38000.46300.471700 | Tile Grouting | 7d | 2026-10-30 | 2026-11-05 | 5684 |  | 7 Days Work | 9266804 |
| 5688 | 36900.37000.37100.37300.38000.46300.471800 | False Ceiling | 5d | 2026-11-06 | 2026-11-10 | 5687 |  | 7 Days Work | 9266814 |
| 5689 | 36900.37000.37100.37300.38000.46300.471900 | 2nd coat of primer | 10d | 2026-11-11 | 2026-11-20 | 5688 |  | 7 Days Work | 9266824 |
| 5690 | 36900.37000.37100.37300.38000.46300.472000 | Final cutting/polishing of stone flooring | 7d | 2026-11-21 | 2026-11-27 | 5689 |  | 7 Days Work | 9266834 |

| ID | WBS | Task | Duration | Start | Finish | Predecessors | Constraint | Calendar | Unique_Task_ID |
| --- | --- | --- | --- | --- | --- | --- | --- | --- | --- |
| 5691 | 36900.37000.37100.37300.38000.46300.60600 | **Toilet** | 237d | 2026-04-04 | 2026-11-26 |  | start no earlier than 2026-04-04 | 7 Days Work | 9265604 |
| 5692 | 36900.37000.37100.37300.38000.46300.60600.904500 | Toilet_MEP Clearance -1 | 7d | 2026-04-04 | 2026-04-10 | 5655 |  | 7 Days Work | 9275344 |
| 5693 | 36900.37000.37100.37300.38000.46300.60600.904600 | Toilet_Level Marking | 1d | 2026-04-11 | 2026-04-11 | 5692 |  | 7 Days Work | 9275354 |
| 5694 | 36900.37000.37100.37300.38000.46300.60600.904700 | Toilet_Chasing work for Electrical conduit & concealed plumbing | 5d | 2026-04-12 | 2026-04-16 | 5693 |  | 7 Days Work | 9275364 |
| 5695 | 36900.37000.37100.37300.38000.46300.60600.904800 | Toilet_Plumbing work 1st fix | 5d | 2026-04-17 | 2026-04-21 | 5694 |  | 7 Days Work | 9275374 |
| 5696 | 36900.37000.37100.37300.38000.46300.60600.904900 | Toilet_Sleeve/Bore Packing | 5d | 2026-04-22 | 2026-04-26 | 5695 |  | 7 Days Work | 9275384 |
| 5697 | 36900.37000.37100.37300.38000.46300.60600.905000 | Toilet_Waterproofing | 10d | 2026-04-27 | 2026-05-06 | 5696 |  | 7 Days Work | 9275394 |
| 5698 | 36900.37000.37100.37300.38000.46300.60600.905100 | Toilet_Screed | 1d | 2026-05-07 | 2026-05-07 | 5697 |  | 7 Days Work | 9275404 |
| 5699 | 36900.37000.37100.37300.38000.46300.60600.905200 | Toilet_Plumbing 2nd fix | 5d | 2026-05-08 | 2026-05-12 | 5698 |  | 7 Days Work | 9275414 |
| 5700 | 36900.37000.37100.37300.38000.46300.60600.905300 | Toilet_Ledge wall | 5d | 2026-05-13 | 2026-05-17 | 5699 |  | 7 Days Work | 9275424 |
| 5701 | 36900.37000.37100.37300.38000.46300.60600.905400 | Toilet_Cement Plaster | 5d | 2026-05-18 | 2026-05-22 | 5700 |  | 7 Days Work | 9275434 |
| 5702 | 36900.37000.37100.37300.38000.46300.60600.905500 | Toilet_Door Frame | 1d | 2026-05-23 | 2026-05-23 | 5701 |  | 7 Days Work | 9275444 |
| 5703 | 36900.37000.37100.37300.38000.46300.60600.905600 | Toilet_Wash basin & Couter | 3d | 2026-05-24 | 2026-05-26 | 5702 |  | 7 Days Work | 9275454 |
| 5704 | 36900.37000.37100.37300.38000.46300.60600.905700 | Toilet_Wall dado | 20d | 2026-05-27 | 2026-06-15 | 5703 |  | 7 Days Work | 9275464 |
| 5705 | 36900.37000.37100.37300.38000.46300.60600.905800 | Toilet_Granite Work-Ledge wall top | 3d | 2026-06-16 | 2026-06-18 | 5704 |  | 7 Days Work | 9275474 |
| 5706 | 36900.37000.37100.37300.38000.46300.60600.905900 | Toilet_Floor Tilling work | 20d | 2026-06-19 | 2026-07-08 | 5705 |  | 7 Days Work | 9275484 |
| 5707 | 36900.37000.37100.37300.38000.46300.60600.906000 | Toilet_1st row of dado | 5d | 2026-07-09 | 2026-07-13 | 5706 |  | 7 Days Work | 9275494 |
| 5708 | 36900.37000.37100.37300.38000.46300.60600.906100 | Toilet_Window Fixing | 14d | 2026-07-14 | 2026-07-27 | 5707 |  | 7 Days Work | 9275504 |
| 5709 | 36900.37000.37100.37300.38000.46300.60600.906200 | Toilet_Services above False ceiling | 21d | 2026-07-28 | 2026-08-17 | 5708 |  | 7 Days Work | 9275514 |
| 5710 | 36900.37000.37100.37300.38000.46300.60600.906300 | Toilet_False Ceiling framing | 12d | 2026-08-18 | 2026-08-29 | 5709 |  | 7 Days Work | 9275524 |
| 5711 | 36900.37000.37100.37300.38000.46300.60600.906400 | Toilet_Door Frame | 5d | 2026-08-30 | 2026-09-03 | 5710 |  | 7 Days Work | 9275534 |
| 5712 | 36900.37000.37100.37300.38000.46300.60600.906500 | Toilet_Epoxy Tile Grouting | 7d | 2026-10-30 | 2026-11-05 | 5687SS |  | 7 Days Work | 9275544 |
| 5713 | 36900.37000.37100.37300.38000.46300.60600.906600 | Toilet_False ceiling board fixing, CP Sanitary Fixture, Electric Fixture | 21d | 2026-11-06 | 2026-11-26 | 5712 |  | 7 Days Work | 9275554 |
| 5714 | 36900.37000.37100.37300.38000.46400 | **3rd Habitable/4th Floor** | 245d | 2026-04-09 | 2026-12-09 |  | start no earlier than 2026-04-09 | 7 Days Work | 9265404 |
| 5715 | 36900.37000.37100.37300.38000.46400.472100 | Post Pour | 7d | 2026-04-09 | 2026-04-15 | 5577 |  | 7 Days Work | 9266844 |
| 5716 | 36900.37000.37100.37300.38000.46400.472200 | MEP Clearance -1 | 5d | 2026-04-16 | 2026-04-20 | 5715 |  | 7 Days Work | 9266854 |
| 5717 | 36900.37000.37100.37300.38000.46400.472300 | Benchmark | 1d | 2026-04-21 | 2026-04-21 | 5716 |  | 7 Days Work | 9266864 |
| 5718 | 36900.37000.37100.37300.38000.46400.472400 | Temporary Railing | 3d | 2026-04-22 | 2026-04-24 | 5717 |  | 7 Days Work | 9266874 |
| 5719 | 36900.37000.37100.37300.38000.46400.472500 | Blockwork | 10d | 2026-04-25 | 2026-05-04 | 5718 |  | 7 Days Work | 9266884 |
| 5720 | 36900.37000.37100.37300.38000.46400.472600 | MEP Clearance -2 | 10d | 2026-05-05 | 2026-05-14 | 5719 |  | 7 Days Work | 9266894 |
| 5721 | 36900.37000.37100.37300.38000.46400.472700 | Gypsum Plaster | 14d | 2026-05-15 | 2026-05-28 | 5720 |  | 7 Days Work | 9266904 |
| 5722 | 36900.37000.37100.37300.38000.46400.472800 | Kitchen Platform | 3d | 2026-05-29 | 2026-05-31 | 5721 |  | 7 Days Work | 9266914 |
| 5723 | 36900.37000.37100.37300.38000.46400.472900 | Kitchen dado | 7d | 2026-06-01 | 2026-06-07 | 5722 |  | 7 Days Work | 9266924 |
| 5724 | 36900.37000.37100.37300.38000.46400.473000 | Fire Fighting | 5d | 2026-06-08 | 2026-06-12 | 5723 |  | 7 Days Work | 9266934 |
| 5725 | 36900.37000.37100.37300.38000.46400.473100 | Anticapilary | 5d | 2026-06-13 | 2026-06-17 | 5724 |  | 7 Days Work | 9266944 |
| 5726 | 36900.37000.37100.37300.38000.46400.473200 | Stone Laying | 10d | 2026-07-21 | 2026-07-30 | 5766 |  | 7 Days Work | 9266954 |
| 5727 | 36900.37000.37100.37300.38000.46400.473300 | Tiles Laying | 7d | 2026-07-21 | 2026-07-27 | 5766 |  | 7 Days Work | 9266964 |
| 5728 | 36900.37000.37100.37300.38000.46400.473400 | 1st cutting/polishing of stone flooring | 7d | 2026-07-28 | 2026-08-03 | 5727 |  | 7 Days Work | 9266974 |
| 5729 | 36900.37000.37100.37300.38000.46400.473500 | Tiles/Stone skirting | 5d | 2026-08-04 | 2026-08-08 | 5728 |  | 7 Days Work | 9266984 |
| 5730 | 36900.37000.37100.37300.38000.46400.473600 | Protechtion sheet | 1d | 2026-08-09 | 2026-08-09 | 5729 |  | 7 Days Work | 9266994 |
| 5731 | 36900.37000.37100.37300.38000.46400.473700 | Installation of Temporary Door | 1d | 2026-08-10 | 2026-08-10 | 5730 |  | 7 Days Work | 9267004 |
| 5732 | 36900.37000.37100.37300.38000.46400.473800 | Fixing of window tracks | 5d | 2026-08-11 | 2026-08-15 | 5731 |  | 7 Days Work | 9267014 |
| 5733 | 36900.37000.37100.37300.38000.46400.473900 | Wire Pulling | 7d | 2026-08-16 | 2026-08-22 | 5732 |  | 7 Days Work | 9267024 |
| 5734 | 36900.37000.37100.37300.38000.46400.474000 | Gypsum Remaining | 5d | 2026-08-23 | 2026-08-27 | 5733 |  | 7 Days Work | 9267034 |
| 5735 | 36900.37000.37100.37300.38000.46400.474100 | Fixing of windoow shutter | 5d | 2026-08-28 | 2026-09-01 | 5734 |  | 7 Days Work | 9267044 |
| 5736 | 36900.37000.37100.37300.38000.46400.474200 | Putty Works - walls & ceiling | 15d | 2026-09-02 | 2026-09-16 | 5735 |  | 7 Days Work | 9267054 |
| 5737 | 36900.37000.37100.37300.38000.46400.474300 | False Ceiling- Framing | 10d | 2026-09-17 | 2026-09-26 | 5736 |  | 7 Days Work | 9267064 |
| 5738 | 36900.37000.37100.37300.38000.46400.474400 | Pre Hung Door | 3d | 2026-09-27 | 2026-09-29 | 5737 |  | 7 Days Work | 9267074 |
| 5739 | 36900.37000.37100.37300.38000.46400.474500 | Protechtion sheet | 2d | 2026-09-30 | 2026-10-01 | 5738 |  | 7 Days Work | 9267084 |
| 5740 | 36900.37000.37100.37300.38000.46400.474600 | Skirting near door | 2d | 2026-10-02 | 2026-10-03 | 5739 |  | 7 Days Work | 9267094 |
| 5741 | 36900.37000.37100.37300.38000.46400.474700 | Electrical Switch box fixing | 14d | 2026-10-04 | 2026-10-17 | 5740 |  | 7 Days Work | 9267104 |
| 5742 | 36900.37000.37100.37300.38000.46400.474800 | Fire Fighting painting | 5d | 2026-10-18 | 2026-10-22 | 5741 |  | 7 Days Work | 9267114 |
| 5743 | 36900.37000.37100.37300.38000.46400.474900 | Protection of all flooring, door & window hardware | 5d | 2026-10-23 | 2026-10-27 | 5742 |  | 7 Days Work | 9267124 |
| 5744 | 36900.37000.37100.37300.38000.46400.475000 | 1st coat primer- ceiling 1st & walls | 14d | 2026-10-28 | 2026-11-10 | 5743 |  | 7 Days Work | 9267134 |
| 5745 | 36900.37000.37100.37300.38000.46400.475100 | Wooden Flooring | 5d | 2026-11-11 | 2026-11-15 | 5744 |  | 7 Days Work | 9267144 |
| 5746 | 36900.37000.37100.37300.38000.46400.475200 | Removing of Temporary Railing & installation of Glass Railing | 5d | 2026-11-11 | 2026-11-15 | 5744 |  | 7 Days Work | 9267154 |
| 5747 | 36900.37000.37100.37300.38000.46400.475300 | Tile Grouting | 7d | 2026-11-11 | 2026-11-17 | 5744 |  | 7 Days Work | 9267164 |
| 5748 | 36900.37000.37100.37300.38000.46400.475400 | False Ceiling | 5d | 2026-11-18 | 2026-11-22 | 5747 |  | 7 Days Work | 9267174 |
| 5749 | 36900.37000.37100.37300.38000.46400.475500 | 2nd coat of primer | 10d | 2026-11-23 | 2026-12-02 | 5748 |  | 7 Days Work | 9267184 |
| 5750 | 36900.37000.37100.37300.38000.46400.475600 | Final cutting/polishing of stone flooring | 7d | 2026-12-03 | 2026-12-09 | 5749 |  | 7 Days Work | 9267194 |

| ID | WBS | Task | Duration | Start | Finish | Predecessors | Constraint | Calendar | Unique_Task_ID |
| --- | --- | --- | --- | --- | --- | --- | --- | --- | --- |
| 5751 | 36900.37000.37100.37300.38000.46400.60700 | **Toilet** | 237d | 2026-04-16 | 2026-12-08 |  | start no earlier than 2026-04-16 | 7 Days Work | 9265614 |
| 5752 | 36900.37000.37100.37300.38000.46400.60700.906700 | Toilet_MEP Clearance -1 | 7d | 2026-04-16 | 2026-04-22 | 5715 |  | 7 Days Work | 9275564 |
| 5753 | 36900.37000.37100.37300.38000.46400.60700.906800 | Toilet_Level Marking | 1d | 2026-04-23 | 2026-04-23 | 5752 |  | 7 Days Work | 9275574 |
| 5754 | 36900.37000.37100.37300.38000.46400.60700.906900 | Toilet_Chasing work for Electrical conduit & concealed plumbing | 5d | 2026-04-24 | 2026-04-28 | 5753 |  | 7 Days Work | 9275584 |
| 5755 | 36900.37000.37100.37300.38000.46400.60700.907000 | Toilet_Plumbing work 1st fix | 5d | 2026-04-29 | 2026-05-03 | 5754 |  | 7 Days Work | 9275594 |
| 5756 | 36900.37000.37100.37300.38000.46400.60700.907100 | Toilet_Sleeve/Bore Packing | 5d | 2026-05-04 | 2026-05-08 | 5755 |  | 7 Days Work | 9275604 |
| 5757 | 36900.37000.37100.37300.38000.46400.60700.907200 | Toilet_Waterproofing | 10d | 2026-05-09 | 2026-05-18 | 5756 |  | 7 Days Work | 9275614 |
| 5758 | 36900.37000.37100.37300.38000.46400.60700.907300 | Toilet_Screed | 1d | 2026-05-19 | 2026-05-19 | 5757 |  | 7 Days Work | 9275624 |
| 5759 | 36900.37000.37100.37300.38000.46400.60700.907400 | Toilet_Plumbing 2nd fix | 5d | 2026-05-20 | 2026-05-24 | 5758 |  | 7 Days Work | 9275634 |
| 5760 | 36900.37000.37100.37300.38000.46400.60700.907500 | Toilet_Ledge wall | 5d | 2026-05-25 | 2026-05-29 | 5759 |  | 7 Days Work | 9275644 |
| 5761 | 36900.37000.37100.37300.38000.46400.60700.907600 | Toilet_Cement Plaster | 5d | 2026-05-30 | 2026-06-03 | 5760 |  | 7 Days Work | 9275654 |
| 5762 | 36900.37000.37100.37300.38000.46400.60700.907700 | Toilet_Door Frame | 1d | 2026-06-04 | 2026-06-04 | 5761 |  | 7 Days Work | 9275664 |
| 5763 | 36900.37000.37100.37300.38000.46400.60700.907800 | Toilet_Wash basin & Couter | 3d | 2026-06-05 | 2026-06-07 | 5762 |  | 7 Days Work | 9275674 |
| 5764 | 36900.37000.37100.37300.38000.46400.60700.907900 | Toilet_Wall dado | 20d | 2026-06-08 | 2026-06-27 | 5763 |  | 7 Days Work | 9275684 |
| 5765 | 36900.37000.37100.37300.38000.46400.60700.908000 | Toilet_Granite Work-Ledge wall top | 3d | 2026-06-28 | 2026-06-30 | 5764 |  | 7 Days Work | 9275694 |
| 5766 | 36900.37000.37100.37300.38000.46400.60700.908100 | Toilet_Floor Tilling work | 20d | 2026-07-01 | 2026-07-20 | 5765 |  | 7 Days Work | 9275704 |
| 5767 | 36900.37000.37100.37300.38000.46400.60700.908200 | Toilet_1st row of dado | 5d | 2026-07-21 | 2026-07-25 | 5766 |  | 7 Days Work | 9275714 |
| 5768 | 36900.37000.37100.37300.38000.46400.60700.908300 | Toilet_Window Fixing | 14d | 2026-07-26 | 2026-08-08 | 5767 |  | 7 Days Work | 9275724 |
| 5769 | 36900.37000.37100.37300.38000.46400.60700.908400 | Toilet_Services above False ceiling | 21d | 2026-08-09 | 2026-08-29 | 5768 |  | 7 Days Work | 9275734 |
| 5770 | 36900.37000.37100.37300.38000.46400.60700.908500 | Toilet_False Ceiling framing | 12d | 2026-08-30 | 2026-09-10 | 5769 |  | 7 Days Work | 9275744 |
| 5771 | 36900.37000.37100.37300.38000.46400.60700.908600 | Toilet_Door Frame | 5d | 2026-09-11 | 2026-09-15 | 5770 |  | 7 Days Work | 9275754 |
| 5772 | 36900.37000.37100.37300.38000.46400.60700.908700 | Toilet_Epoxy Tile Grouting | 7d | 2026-11-11 | 2026-11-17 | 5747SS |  | 7 Days Work | 9275764 |
| 5773 | 36900.37000.37100.37300.38000.46400.60700.908800 | Toilet_False ceiling board fixing, CP Sanitary Fixture, Electric Fixture | 21d | 2026-11-18 | 2026-12-08 | 5772 |  | 7 Days Work | 9275774 |
| 5774 | 36900.37000.37100.37300.38000.46500 | **4th Habitable/5th Floor** | 245d | 2026-04-21 | 2026-12-21 |  | start no earlier than 2026-04-21 | 7 Days Work | 9265414 |
| 5775 | 36900.37000.37100.37300.38000.46500.475700 | Post Pour | 7d | 2026-04-21 | 2026-04-27 | 5578 |  | 7 Days Work | 9267204 |
| 5776 | 36900.37000.37100.37300.38000.46500.475800 | MEP Clearance -1 | 5d | 2026-04-28 | 2026-05-02 | 5775 |  | 7 Days Work | 9267214 |
| 5777 | 36900.37000.37100.37300.38000.46500.475900 | Benchmark | 1d | 2026-05-03 | 2026-05-03 | 5776 |  | 7 Days Work | 9267224 |
| 5778 | 36900.37000.37100.37300.38000.46500.476000 | Temporary Railing | 3d | 2026-05-04 | 2026-05-06 | 5777 |  | 7 Days Work | 9267234 |
| 5779 | 36900.37000.37100.37300.38000.46500.476100 | Blockwork | 10d | 2026-05-07 | 2026-05-16 | 5778 |  | 7 Days Work | 9267244 |
| 5780 | 36900.37000.37100.37300.38000.46500.476200 | MEP Clearance -2 | 10d | 2026-05-17 | 2026-05-26 | 5779 |  | 7 Days Work | 9267254 |
| 5781 | 36900.37000.37100.37300.38000.46500.476300 | Gypsum Plaster | 14d | 2026-05-27 | 2026-06-09 | 5780 |  | 7 Days Work | 9267264 |
| 5782 | 36900.37000.37100.37300.38000.46500.476400 | Kitchen Platform | 3d | 2026-06-10 | 2026-06-12 | 5781 |  | 7 Days Work | 9267274 |
| 5783 | 36900.37000.37100.37300.38000.46500.476500 | Kitchen dado | 7d | 2026-06-13 | 2026-06-19 | 5782 |  | 7 Days Work | 9267284 |
| 5784 | 36900.37000.37100.37300.38000.46500.476600 | Fire Fighting | 5d | 2026-06-20 | 2026-06-24 | 5783 |  | 7 Days Work | 9267294 |
| 5785 | 36900.37000.37100.37300.38000.46500.476700 | Anticapilary | 5d | 2026-06-25 | 2026-06-29 | 5784 |  | 7 Days Work | 9267304 |
| 5786 | 36900.37000.37100.37300.38000.46500.476800 | Stone Laying | 10d | 2026-08-02 | 2026-08-11 | 5826 |  | 7 Days Work | 9267314 |
| 5787 | 36900.37000.37100.37300.38000.46500.476900 | Tiles Laying | 7d | 2026-08-02 | 2026-08-08 | 5826 |  | 7 Days Work | 9267324 |
| 5788 | 36900.37000.37100.37300.38000.46500.477000 | 1st cutting/polishing of stone flooring | 7d | 2026-08-09 | 2026-08-15 | 5787 |  | 7 Days Work | 9267334 |
| 5789 | 36900.37000.37100.37300.38000.46500.477100 | Tiles/Stone skirting | 5d | 2026-08-16 | 2026-08-20 | 5788 |  | 7 Days Work | 9267344 |
| 5790 | 36900.37000.37100.37300.38000.46500.477200 | Protechtion sheet | 1d | 2026-08-21 | 2026-08-21 | 5789 |  | 7 Days Work | 9267354 |
| 5791 | 36900.37000.37100.37300.38000.46500.477300 | Installation of Temporary Door | 1d | 2026-08-22 | 2026-08-22 | 5790 |  | 7 Days Work | 9267364 |
| 5792 | 36900.37000.37100.37300.38000.46500.477400 | Fixing of window tracks | 5d | 2026-08-23 | 2026-08-27 | 5791 |  | 7 Days Work | 9267374 |
| 5793 | 36900.37000.37100.37300.38000.46500.477500 | Wire Pulling | 7d | 2026-08-28 | 2026-09-03 | 5792 |  | 7 Days Work | 9267384 |
| 5794 | 36900.37000.37100.37300.38000.46500.477600 | Gypsum Remaining | 5d | 2026-09-04 | 2026-09-08 | 5793 |  | 7 Days Work | 9267394 |
| 5795 | 36900.37000.37100.37300.38000.46500.477700 | Fixing of windoow shutter | 5d | 2026-09-09 | 2026-09-13 | 5794 |  | 7 Days Work | 9267404 |
| 5796 | 36900.37000.37100.37300.38000.46500.477800 | Putty Works - walls & ceiling | 15d | 2026-09-14 | 2026-09-28 | 5795 |  | 7 Days Work | 9267414 |
| 5797 | 36900.37000.37100.37300.38000.46500.477900 | False Ceiling- Framing | 10d | 2026-09-29 | 2026-10-08 | 5796 |  | 7 Days Work | 9267424 |
| 5798 | 36900.37000.37100.37300.38000.46500.478000 | Pre Hung Door | 3d | 2026-10-09 | 2026-10-11 | 5797 |  | 7 Days Work | 9267434 |
| 5799 | 36900.37000.37100.37300.38000.46500.478100 | Protechtion sheet | 2d | 2026-10-12 | 2026-10-13 | 5798 |  | 7 Days Work | 9267444 |
| 5800 | 36900.37000.37100.37300.38000.46500.478200 | Skirting near door | 2d | 2026-10-14 | 2026-10-15 | 5799 |  | 7 Days Work | 9267454 |
| 5801 | 36900.37000.37100.37300.38000.46500.478300 | Electrical Switch box fixing | 14d | 2026-10-16 | 2026-10-29 | 5800 |  | 7 Days Work | 9267464 |
| 5802 | 36900.37000.37100.37300.38000.46500.478400 | Fire Fighting painting | 5d | 2026-10-30 | 2026-11-03 | 5801 |  | 7 Days Work | 9267474 |
| 5803 | 36900.37000.37100.37300.38000.46500.478500 | Protection of all flooring, door & window hardware | 5d | 2026-11-04 | 2026-11-08 | 5802 |  | 7 Days Work | 9267484 |
| 5804 | 36900.37000.37100.37300.38000.46500.478600 | 1st coat primer- ceiling 1st & walls | 14d | 2026-11-09 | 2026-11-22 | 5803 |  | 7 Days Work | 9267494 |
| 5805 | 36900.37000.37100.37300.38000.46500.478700 | Wooden Flooring | 5d | 2026-11-23 | 2026-11-27 | 5804 |  | 7 Days Work | 9267504 |
| 5806 | 36900.37000.37100.37300.38000.46500.478800 | Removing of Temporary Railing & installation of Glass Railing | 5d | 2026-11-23 | 2026-11-27 | 5804 |  | 7 Days Work | 9267514 |
| 5807 | 36900.37000.37100.37300.38000.46500.478900 | Tile Grouting | 7d | 2026-11-23 | 2026-11-29 | 5804 |  | 7 Days Work | 9267524 |
| 5808 | 36900.37000.37100.37300.38000.46500.479000 | False Ceiling | 5d | 2026-11-30 | 2026-12-04 | 5807 |  | 7 Days Work | 9267534 |
| 5809 | 36900.37000.37100.37300.38000.46500.479100 | 2nd coat of primer | 10d | 2026-12-05 | 2026-12-14 | 5808 |  | 7 Days Work | 9267544 |
| 5810 | 36900.37000.37100.37300.38000.46500.479200 | Final cutting/polishing of stone flooring | 7d | 2026-12-15 | 2026-12-21 | 5809 |  | 7 Days Work | 9267554 |

| ID | WBS | Task | Duration | Start | Finish | Predecessors | Constraint | Calendar | Unique_Task_ID |
| --- | --- | --- | --- | --- | --- | --- | --- | --- | --- |
| 5811 | 36900.37000.37100.37300.38000.46500.60800 | **Toilet** | 237d | 2026-04-28 | 2026-12-20 |  | start no earlier than 2026-04-28 | 7 Days Work | 9265624 |
| 5812 | 36900.37000.37100.37300.38000.46500.60800.908900 | Toilet_MEP Clearance -1 | 7d | 2026-04-28 | 2026-05-04 | 5775 |  | 7 Days Work | 9275784 |
| 5813 | 36900.37000.37100.37300.38000.46500.60800.909000 | Toilet_Level Marking | 1d | 2026-05-05 | 2026-05-05 | 5812 |  | 7 Days Work | 9275794 |
| 5814 | 36900.37000.37100.37300.38000.46500.60800.909100 | Toilet_Chasing work for Electrical conduit & concealed plumbing | 5d | 2026-05-06 | 2026-05-10 | 5813 |  | 7 Days Work | 9275804 |
| 5815 | 36900.37000.37100.37300.38000.46500.60800.909200 | Toilet_Plumbing work 1st fix | 5d | 2026-05-11 | 2026-05-15 | 5814 |  | 7 Days Work | 9275814 |
| 5816 | 36900.37000.37100.37300.38000.46500.60800.909300 | Toilet_Sleeve/Bore Packing | 5d | 2026-05-16 | 2026-05-20 | 5815 |  | 7 Days Work | 9275824 |
| 5817 | 36900.37000.37100.37300.38000.46500.60800.909400 | Toilet_Waterproofing | 10d | 2026-05-21 | 2026-05-30 | 5816 |  | 7 Days Work | 9275834 |
| 5818 | 36900.37000.37100.37300.38000.46500.60800.909500 | Toilet_Screed | 1d | 2026-05-31 | 2026-05-31 | 5817 |  | 7 Days Work | 9275844 |
| 5819 | 36900.37000.37100.37300.38000.46500.60800.909600 | Toilet_Plumbing 2nd fix | 5d | 2026-06-01 | 2026-06-05 | 5818 |  | 7 Days Work | 9275854 |
| 5820 | 36900.37000.37100.37300.38000.46500.60800.909700 | Toilet_Ledge wall | 5d | 2026-06-06 | 2026-06-10 | 5819 |  | 7 Days Work | 9275864 |
| 5821 | 36900.37000.37100.37300.38000.46500.60800.909800 | Toilet_Cement Plaster | 5d | 2026-06-11 | 2026-06-15 | 5820 |  | 7 Days Work | 9275874 |
| 5822 | 36900.37000.37100.37300.38000.46500.60800.909900 | Toilet_Door Frame | 1d | 2026-06-16 | 2026-06-16 | 5821 |  | 7 Days Work | 9275884 |
| 5823 | 36900.37000.37100.37300.38000.46500.60800.910000 | Toilet_Wash basin & Couter | 3d | 2026-06-17 | 2026-06-19 | 5822 |  | 7 Days Work | 9275894 |
| 5824 | 36900.37000.37100.37300.38000.46500.60800.910100 | Toilet_Wall dado | 20d | 2026-06-20 | 2026-07-09 | 5823 |  | 7 Days Work | 9275904 |
| 5825 | 36900.37000.37100.37300.38000.46500.60800.910200 | Toilet_Granite Work-Ledge wall top | 3d | 2026-07-10 | 2026-07-12 | 5824 |  | 7 Days Work | 9275914 |
| 5826 | 36900.37000.37100.37300.38000.46500.60800.910300 | Toilet_Floor Tilling work | 20d | 2026-07-13 | 2026-08-01 | 5825 |  | 7 Days Work | 9275924 |
| 5827 | 36900.37000.37100.37300.38000.46500.60800.910400 | Toilet_1st row of dado | 5d | 2026-08-02 | 2026-08-06 | 5826 |  | 7 Days Work | 9275934 |
| 5828 | 36900.37000.37100.37300.38000.46500.60800.910500 | Toilet_Window Fixing | 14d | 2026-08-07 | 2026-08-20 | 5827 |  | 7 Days Work | 9275944 |
| 5829 | 36900.37000.37100.37300.38000.46500.60800.910600 | Toilet_Services above False ceiling | 21d | 2026-08-21 | 2026-09-10 | 5828 |  | 7 Days Work | 9275954 |
| 5830 | 36900.37000.37100.37300.38000.46500.60800.910700 | Toilet_False Ceiling framing | 12d | 2026-09-11 | 2026-09-22 | 5829 |  | 7 Days Work | 9275964 |
| 5831 | 36900.37000.37100.37300.38000.46500.60800.910800 | Toilet_Door Frame | 5d | 2026-09-23 | 2026-09-27 | 5830 |  | 7 Days Work | 9275974 |
| 5832 | 36900.37000.37100.37300.38000.46500.60800.910900 | Toilet_Epoxy Tile Grouting | 7d | 2026-11-23 | 2026-11-29 | 5807SS |  | 7 Days Work | 9275984 |
| 5833 | 36900.37000.37100.37300.38000.46500.60800.911000 | Toilet_False ceiling board fixing, CP Sanitary Fixture, Electric Fixture | 21d | 2026-11-30 | 2026-12-20 | 5832 |  | 7 Days Work | 9275994 |
| 5834 | 36900.37000.37100.37300.38000.46600 | **5th Habitable/6th Floor** | 245d | 2026-05-03 | 2027-01-02 |  | start no earlier than 2026-05-03 | 7 Days Work | 9265424 |
| 5835 | 36900.37000.37100.37300.38000.46600.479300 | Post Pour | 7d | 2026-05-03 | 2026-05-09 | 5579 |  | 7 Days Work | 9267564 |
| 5836 | 36900.37000.37100.37300.38000.46600.479400 | MEP Clearance -1 | 5d | 2026-05-10 | 2026-05-14 | 5835 |  | 7 Days Work | 9267574 |
| 5837 | 36900.37000.37100.37300.38000.46600.479500 | Benchmark | 1d | 2026-05-15 | 2026-05-15 | 5836 |  | 7 Days Work | 9267584 |
| 5838 | 36900.37000.37100.37300.38000.46600.479600 | Temporary Railing | 3d | 2026-05-16 | 2026-05-18 | 5837 |  | 7 Days Work | 9267594 |
| 5839 | 36900.37000.37100.37300.38000.46600.479700 | Blockwork | 10d | 2026-05-19 | 2026-05-28 | 5838 |  | 7 Days Work | 9267604 |
| 5840 | 36900.37000.37100.37300.38000.46600.479800 | MEP Clearance -2 | 10d | 2026-05-29 | 2026-06-07 | 5839 |  | 7 Days Work | 9267614 |
| 5841 | 36900.37000.37100.37300.38000.46600.479900 | Gypsum Plaster | 14d | 2026-06-08 | 2026-06-21 | 5840 |  | 7 Days Work | 9267624 |
| 5842 | 36900.37000.37100.37300.38000.46600.480000 | Kitchen Platform | 3d | 2026-06-22 | 2026-06-24 | 5841 |  | 7 Days Work | 9267634 |
| 5843 | 36900.37000.37100.37300.38000.46600.480100 | Kitchen dado | 7d | 2026-06-25 | 2026-07-01 | 5842 |  | 7 Days Work | 9267644 |
| 5844 | 36900.37000.37100.37300.38000.46600.480200 | Fire Fighting | 5d | 2026-07-02 | 2026-07-06 | 5843 |  | 7 Days Work | 9267654 |
| 5845 | 36900.37000.37100.37300.38000.46600.480300 | Anticapilary | 5d | 2026-07-07 | 2026-07-11 | 5844 |  | 7 Days Work | 9267664 |
| 5846 | 36900.37000.37100.37300.38000.46600.480400 | Stone Laying | 10d | 2026-08-14 | 2026-08-23 | 5886 |  | 7 Days Work | 9267674 |
| 5847 | 36900.37000.37100.37300.38000.46600.480500 | Tiles Laying | 7d | 2026-08-14 | 2026-08-20 | 5886 |  | 7 Days Work | 9267684 |
| 5848 | 36900.37000.37100.37300.38000.46600.480600 | 1st cutting/polishing of stone flooring | 7d | 2026-08-21 | 2026-08-27 | 5847 |  | 7 Days Work | 9267694 |
| 5849 | 36900.37000.37100.37300.38000.46600.480700 | Tiles/Stone skirting | 5d | 2026-08-28 | 2026-09-01 | 5848 |  | 7 Days Work | 9267704 |
| 5850 | 36900.37000.37100.37300.38000.46600.480800 | Protechtion sheet | 1d | 2026-09-02 | 2026-09-02 | 5849 |  | 7 Days Work | 9267714 |
| 5851 | 36900.37000.37100.37300.38000.46600.480900 | Installation of Temporary Door | 1d | 2026-09-03 | 2026-09-03 | 5850 |  | 7 Days Work | 9267724 |
| 5852 | 36900.37000.37100.37300.38000.46600.481000 | Fixing of window tracks | 5d | 2026-09-04 | 2026-09-08 | 5851 |  | 7 Days Work | 9267734 |
| 5853 | 36900.37000.37100.37300.38000.46600.481100 | Wire Pulling | 7d | 2026-09-09 | 2026-09-15 | 5852 |  | 7 Days Work | 9267744 |
| 5854 | 36900.37000.37100.37300.38000.46600.481200 | Gypsum Remaining | 5d | 2026-09-16 | 2026-09-20 | 5853 |  | 7 Days Work | 9267754 |
| 5855 | 36900.37000.37100.37300.38000.46600.481300 | Fixing of windoow shutter | 5d | 2026-09-21 | 2026-09-25 | 5854 |  | 7 Days Work | 9267764 |
| 5856 | 36900.37000.37100.37300.38000.46600.481400 | Putty Works - walls & ceiling | 15d | 2026-09-26 | 2026-10-10 | 5855 |  | 7 Days Work | 9267774 |
| 5857 | 36900.37000.37100.37300.38000.46600.481500 | False Ceiling- Framing | 10d | 2026-10-11 | 2026-10-20 | 5856 |  | 7 Days Work | 9267784 |
| 5858 | 36900.37000.37100.37300.38000.46600.481600 | Pre Hung Door | 3d | 2026-10-21 | 2026-10-23 | 5857 |  | 7 Days Work | 9267794 |
| 5859 | 36900.37000.37100.37300.38000.46600.481700 | Protechtion sheet | 2d | 2026-10-24 | 2026-10-25 | 5858 |  | 7 Days Work | 9267804 |
| 5860 | 36900.37000.37100.37300.38000.46600.481800 | Skirting near door | 2d | 2026-10-26 | 2026-10-27 | 5859 |  | 7 Days Work | 9267814 |
| 5861 | 36900.37000.37100.37300.38000.46600.481900 | Electrical Switch box fixing | 14d | 2026-10-28 | 2026-11-10 | 5860 |  | 7 Days Work | 9267824 |
| 5862 | 36900.37000.37100.37300.38000.46600.482000 | Fire Fighting painting | 5d | 2026-11-11 | 2026-11-15 | 5861 |  | 7 Days Work | 9267834 |
| 5863 | 36900.37000.37100.37300.38000.46600.482100 | Protection of all flooring, door & window hardware | 5d | 2026-11-16 | 2026-11-20 | 5862 |  | 7 Days Work | 9267844 |
| 5864 | 36900.37000.37100.37300.38000.46600.482200 | 1st coat primer- ceiling 1st & walls | 14d | 2026-11-21 | 2026-12-04 | 5863 |  | 7 Days Work | 9267854 |
| 5865 | 36900.37000.37100.37300.38000.46600.482300 | Wooden Flooring | 5d | 2026-12-05 | 2026-12-09 | 5864 |  | 7 Days Work | 9267864 |
| 5866 | 36900.37000.37100.37300.38000.46600.482400 | Removing of Temporary Railing & installation of Glass Railing | 5d | 2026-12-05 | 2026-12-09 | 5864 |  | 7 Days Work | 9267874 |
| 5867 | 36900.37000.37100.37300.38000.46600.482500 | Tile Grouting | 7d | 2026-12-05 | 2026-12-11 | 5864 |  | 7 Days Work | 9267884 |
| 5868 | 36900.37000.37100.37300.38000.46600.482600 | False Ceiling | 5d | 2026-12-12 | 2026-12-16 | 5867 |  | 7 Days Work | 9267894 |
| 5869 | 36900.37000.37100.37300.38000.46600.482700 | 2nd coat of primer | 10d | 2026-12-17 | 2026-12-26 | 5868 |  | 7 Days Work | 9267904 |
| 5870 | 36900.37000.37100.37300.38000.46600.482800 | Final cutting/polishing of stone flooring | 7d | 2026-12-27 | 2027-01-02 | 5869 |  | 7 Days Work | 9267914 |

| ID | WBS | Task | Duration | Start | Finish | Predecessors | Constraint | Calendar | Unique_Task_ID |
| --- | --- | --- | --- | --- | --- | --- | --- | --- | --- |
| 5871 | 36900.37000.37100.37300.38000.46600.60900 | **Toilet** | 237d | 2026-05-10 | 2027-01-01 |  | start no earlier than 2026-05-10 | 7 Days Work | 9265634 |
| 5872 | 36900.37000.37100.37300.38000.46600.60900.911100 | Toilet_MEP Clearance -1 | 7d | 2026-05-10 | 2026-05-16 | 5835 |  | 7 Days Work | 9276004 |
| 5873 | 36900.37000.37100.37300.38000.46600.60900.911200 | Toilet_Level Marking | 1d | 2026-05-17 | 2026-05-17 | 5872 |  | 7 Days Work | 9276014 |
| 5874 | 36900.37000.37100.37300.38000.46600.60900.911300 | Toilet_Chasing work for Electrical conduit & concealed plumbing | 5d | 2026-05-18 | 2026-05-22 | 5873 |  | 7 Days Work | 9276024 |
| 5875 | 36900.37000.37100.37300.38000.46600.60900.911400 | Toilet_Plumbing work 1st fix | 5d | 2026-05-23 | 2026-05-27 | 5874 |  | 7 Days Work | 9276034 |
| 5876 | 36900.37000.37100.37300.38000.46600.60900.911500 | Toilet_Sleeve/Bore Packing | 5d | 2026-05-28 | 2026-06-01 | 5875 |  | 7 Days Work | 9276044 |
| 5877 | 36900.37000.37100.37300.38000.46600.60900.911600 | Toilet_Waterproofing | 10d | 2026-06-02 | 2026-06-11 | 5876 |  | 7 Days Work | 9276054 |
| 5878 | 36900.37000.37100.37300.38000.46600.60900.911700 | Toilet_Screed | 1d | 2026-06-12 | 2026-06-12 | 5877 |  | 7 Days Work | 9276064 |
| 5879 | 36900.37000.37100.37300.38000.46600.60900.911800 | Toilet_Plumbing 2nd fix | 5d | 2026-06-13 | 2026-06-17 | 5878 |  | 7 Days Work | 9276074 |
| 5880 | 36900.37000.37100.37300.38000.46600.60900.911900 | Toilet_Ledge wall | 5d | 2026-06-18 | 2026-06-22 | 5879 |  | 7 Days Work | 9276084 |
| 5881 | 36900.37000.37100.37300.38000.46600.60900.912000 | Toilet_Cement Plaster | 5d | 2026-06-23 | 2026-06-27 | 5880 |  | 7 Days Work | 9276094 |
| 5882 | 36900.37000.37100.37300.38000.46600.60900.912100 | Toilet_Door Frame | 1d | 2026-06-28 | 2026-06-28 | 5881 |  | 7 Days Work | 9276104 |
| 5883 | 36900.37000.37100.37300.38000.46600.60900.912200 | Toilet_Wash basin & Couter | 3d | 2026-06-29 | 2026-07-01 | 5882 |  | 7 Days Work | 9276114 |
| 5884 | 36900.37000.37100.37300.38000.46600.60900.912300 | Toilet_Wall dado | 20d | 2026-07-02 | 2026-07-21 | 5883 |  | 7 Days Work | 9276124 |
| 5885 | 36900.37000.37100.37300.38000.46600.60900.912400 | Toilet_Granite Work-Ledge wall top | 3d | 2026-07-22 | 2026-07-24 | 5884 |  | 7 Days Work | 9276134 |
| 5886 | 36900.37000.37100.37300.38000.46600.60900.912500 | Toilet_Floor Tilling work | 20d | 2026-07-25 | 2026-08-13 | 5885 |  | 7 Days Work | 9276144 |
| 5887 | 36900.37000.37100.37300.38000.46600.60900.912600 | Toilet_1st row of dado | 5d | 2026-08-14 | 2026-08-18 | 5886 |  | 7 Days Work | 9276154 |
| 5888 | 36900.37000.37100.37300.38000.46600.60900.912700 | Toilet_Window Fixing | 14d | 2026-08-19 | 2026-09-01 | 5887 |  | 7 Days Work | 9276164 |
| 5889 | 36900.37000.37100.37300.38000.46600.60900.912800 | Toilet_Services above False ceiling | 21d | 2026-09-02 | 2026-09-22 | 5888 |  | 7 Days Work | 9276174 |
| 5890 | 36900.37000.37100.37300.38000.46600.60900.912900 | Toilet_False Ceiling framing | 12d | 2026-09-23 | 2026-10-04 | 5889 |  | 7 Days Work | 9276184 |
| 5891 | 36900.37000.37100.37300.38000.46600.60900.913000 | Toilet_Door Frame | 5d | 2026-10-05 | 2026-10-09 | 5890 |  | 7 Days Work | 9276194 |
| 5892 | 36900.37000.37100.37300.38000.46600.60900.913100 | Toilet_Epoxy Tile Grouting | 7d | 2026-12-05 | 2026-12-11 | 5867SS |  | 7 Days Work | 9276204 |
| 5893 | 36900.37000.37100.37300.38000.46600.60900.913200 | Toilet_False ceiling board fixing, CP Sanitary Fixture, Electric Fixture | 21d | 2026-12-12 | 2027-01-01 | 5892 |  | 7 Days Work | 9276214 |
| 5894 | 36900.37000.37100.37300.38000.46700 | **6th Habitable/7th Floor** | 245d | 2026-05-15 | 2027-01-14 |  | start no earlier than 2026-05-15 | 7 Days Work | 9265434 |
| 5895 | 36900.37000.37100.37300.38000.46700.482900 | Post Pour | 7d | 2026-05-15 | 2026-05-21 | 5580 |  | 7 Days Work | 9267924 |
| 5896 | 36900.37000.37100.37300.38000.46700.483000 | MEP Clearance -1 | 5d | 2026-05-22 | 2026-05-26 | 5895 |  | 7 Days Work | 9267934 |
| 5897 | 36900.37000.37100.37300.38000.46700.483100 | Benchmark | 1d | 2026-05-27 | 2026-05-27 | 5896 |  | 7 Days Work | 9267944 |
| 5898 | 36900.37000.37100.37300.38000.46700.483200 | Temporary Railing | 3d | 2026-05-28 | 2026-05-30 | 5897 |  | 7 Days Work | 9267954 |
| 5899 | 36900.37000.37100.37300.38000.46700.483300 | Blockwork | 10d | 2026-05-31 | 2026-06-09 | 5898 |  | 7 Days Work | 9267964 |
| 5900 | 36900.37000.37100.37300.38000.46700.483400 | MEP Clearance -2 | 10d | 2026-06-10 | 2026-06-19 | 5899 |  | 7 Days Work | 9267974 |
| 5901 | 36900.37000.37100.37300.38000.46700.483500 | Gypsum Plaster | 14d | 2026-06-20 | 2026-07-03 | 5900 |  | 7 Days Work | 9267984 |
| 5902 | 36900.37000.37100.37300.38000.46700.483600 | Kitchen Platform | 3d | 2026-07-04 | 2026-07-06 | 5901 |  | 7 Days Work | 9267994 |
| 5903 | 36900.37000.37100.37300.38000.46700.483700 | Kitchen dado | 7d | 2026-07-07 | 2026-07-13 | 5902 |  | 7 Days Work | 9268004 |
| 5904 | 36900.37000.37100.37300.38000.46700.483800 | Fire Fighting | 5d | 2026-07-14 | 2026-07-18 | 5903 |  | 7 Days Work | 9268014 |
| 5905 | 36900.37000.37100.37300.38000.46700.483900 | Anticapilary | 5d | 2026-07-19 | 2026-07-23 | 5904 |  | 7 Days Work | 9268024 |
| 5906 | 36900.37000.37100.37300.38000.46700.484000 | Stone Laying | 10d | 2026-08-26 | 2026-09-04 | 5946 |  | 7 Days Work | 9268034 |
| 5907 | 36900.37000.37100.37300.38000.46700.484100 | Tiles Laying | 7d | 2026-08-26 | 2026-09-01 | 5946 |  | 7 Days Work | 9268044 |
| 5908 | 36900.37000.37100.37300.38000.46700.484200 | 1st cutting/polishing of stone flooring | 7d | 2026-09-02 | 2026-09-08 | 5907 |  | 7 Days Work | 9268054 |
| 5909 | 36900.37000.37100.37300.38000.46700.484300 | Tiles/Stone skirting | 5d | 2026-09-09 | 2026-09-13 | 5908 |  | 7 Days Work | 9268064 |
| 5910 | 36900.37000.37100.37300.38000.46700.484400 | Protechtion sheet | 1d | 2026-09-14 | 2026-09-14 | 5909 |  | 7 Days Work | 9268074 |
| 5911 | 36900.37000.37100.37300.38000.46700.484500 | Installation of Temporary Door | 1d | 2026-09-15 | 2026-09-15 | 5910 |  | 7 Days Work | 9268084 |
| 5912 | 36900.37000.37100.37300.38000.46700.484600 | Fixing of window tracks | 5d | 2026-09-16 | 2026-09-20 | 5911 |  | 7 Days Work | 9268094 |
| 5913 | 36900.37000.37100.37300.38000.46700.484700 | Wire Pulling | 7d | 2026-09-21 | 2026-09-27 | 5912 |  | 7 Days Work | 9268104 |
| 5914 | 36900.37000.37100.37300.38000.46700.484800 | Gypsum Remaining | 5d | 2026-09-28 | 2026-10-02 | 5913 |  | 7 Days Work | 9268114 |
| 5915 | 36900.37000.37100.37300.38000.46700.484900 | Fixing of windoow shutter | 5d | 2026-10-03 | 2026-10-07 | 5914 |  | 7 Days Work | 9268124 |
| 5916 | 36900.37000.37100.37300.38000.46700.485000 | Putty Works - walls & ceiling | 15d | 2026-10-08 | 2026-10-22 | 5915 |  | 7 Days Work | 9268134 |
| 5917 | 36900.37000.37100.37300.38000.46700.485100 | False Ceiling- Framing | 10d | 2026-10-23 | 2026-11-01 | 5916 |  | 7 Days Work | 9268144 |
| 5918 | 36900.37000.37100.37300.38000.46700.485200 | Pre Hung Door | 3d | 2026-11-02 | 2026-11-04 | 5917 |  | 7 Days Work | 9268154 |
| 5919 | 36900.37000.37100.37300.38000.46700.485300 | Protechtion sheet | 2d | 2026-11-05 | 2026-11-06 | 5918 |  | 7 Days Work | 9268164 |
| 5920 | 36900.37000.37100.37300.38000.46700.485400 | Skirting near door | 2d | 2026-11-07 | 2026-11-08 | 5919 |  | 7 Days Work | 9268174 |
| 5921 | 36900.37000.37100.37300.38000.46700.485500 | Electrical Switch box fixing | 14d | 2026-11-09 | 2026-11-22 | 5920 |  | 7 Days Work | 9268184 |
| 5922 | 36900.37000.37100.37300.38000.46700.485600 | Fire Fighting painting | 5d | 2026-11-23 | 2026-11-27 | 5921 |  | 7 Days Work | 9268194 |
| 5923 | 36900.37000.37100.37300.38000.46700.485700 | Protection of all flooring, door & window hardware | 5d | 2026-11-28 | 2026-12-02 | 5922 |  | 7 Days Work | 9268204 |
| 5924 | 36900.37000.37100.37300.38000.46700.485800 | 1st coat primer- ceiling 1st & walls | 14d | 2026-12-03 | 2026-12-16 | 5923 |  | 7 Days Work | 9268214 |
| 5925 | 36900.37000.37100.37300.38000.46700.485900 | Wooden Flooring | 5d | 2026-12-17 | 2026-12-21 | 5924 |  | 7 Days Work | 9268224 |
| 5926 | 36900.37000.37100.37300.38000.46700.486000 | Removing of Temporary Railing & installation of Glass Railing | 5d | 2026-12-17 | 2026-12-21 | 5924 |  | 7 Days Work | 9268234 |
| 5927 | 36900.37000.37100.37300.38000.46700.486100 | Tile Grouting | 7d | 2026-12-17 | 2026-12-23 | 5924 |  | 7 Days Work | 9268244 |
| 5928 | 36900.37000.37100.37300.38000.46700.486200 | False Ceiling | 5d | 2026-12-24 | 2026-12-28 | 5927 |  | 7 Days Work | 9268254 |
| 5929 | 36900.37000.37100.37300.38000.46700.486300 | 2nd coat of primer | 10d | 2026-12-29 | 2027-01-07 | 5928 |  | 7 Days Work | 9268264 |
| 5930 | 36900.37000.37100.37300.38000.46700.486400 | Final cutting/polishing of stone flooring | 7d | 2027-01-08 | 2027-01-14 | 5929 |  | 7 Days Work | 9268274 |

| ID | WBS | Task | Duration | Start | Finish | Predecessors | Constraint | Calendar | Unique_Task_ID |
| --- | --- | --- | --- | --- | --- | --- | --- | --- | --- |
| 5931 | 36900.37000.37100.37300.38000.46700.61000 | **Toilet** | 237d | 2026-05-22 | 2027-01-13 |  | start no earlier than 2026-05-22 | 7 Days Work | 9265644 |
| 5932 | 36900.37000.37100.37300.38000.46700.61000.913300 | Toilet_MEP Clearance -1 | 7d | 2026-05-22 | 2026-05-28 | 5895 |  | 7 Days Work | 9276224 |
| 5933 | 36900.37000.37100.37300.38000.46700.61000.913400 | Toilet_Level Marking | 1d | 2026-05-29 | 2026-05-29 | 5932 |  | 7 Days Work | 9276234 |
| 5934 | 36900.37000.37100.37300.38000.46700.61000.913500 | Toilet_Chasing work for Electrical conduit & concealed plumbing | 5d | 2026-05-30 | 2026-06-03 | 5933 |  | 7 Days Work | 9276244 |
| 5935 | 36900.37000.37100.37300.38000.46700.61000.913600 | Toilet_Plumbing work 1st fix | 5d | 2026-06-04 | 2026-06-08 | 5934 |  | 7 Days Work | 9276254 |
| 5936 | 36900.37000.37100.37300.38000.46700.61000.913700 | Toilet_Sleeve/Bore Packing | 5d | 2026-06-09 | 2026-06-13 | 5935 |  | 7 Days Work | 9276264 |
| 5937 | 36900.37000.37100.37300.38000.46700.61000.913800 | Toilet_Waterproofing | 10d | 2026-06-14 | 2026-06-23 | 5936 |  | 7 Days Work | 9276274 |
| 5938 | 36900.37000.37100.37300.38000.46700.61000.913900 | Toilet_Screed | 1d | 2026-06-24 | 2026-06-24 | 5937 |  | 7 Days Work | 9276284 |
| 5939 | 36900.37000.37100.37300.38000.46700.61000.914000 | Toilet_Plumbing 2nd fix | 5d | 2026-06-25 | 2026-06-29 | 5938 |  | 7 Days Work | 9276294 |
| 5940 | 36900.37000.37100.37300.38000.46700.61000.914100 | Toilet_Ledge wall | 5d | 2026-06-30 | 2026-07-04 | 5939 |  | 7 Days Work | 9276304 |
| 5941 | 36900.37000.37100.37300.38000.46700.61000.914200 | Toilet_Cement Plaster | 5d | 2026-07-05 | 2026-07-09 | 5940 |  | 7 Days Work | 9276314 |
| 5942 | 36900.37000.37100.37300.38000.46700.61000.914300 | Toilet_Door Frame | 1d | 2026-07-10 | 2026-07-10 | 5941 |  | 7 Days Work | 9276324 |
| 5943 | 36900.37000.37100.37300.38000.46700.61000.914400 | Toilet_Wash basin & Couter | 3d | 2026-07-11 | 2026-07-13 | 5942 |  | 7 Days Work | 9276334 |
| 5944 | 36900.37000.37100.37300.38000.46700.61000.914500 | Toilet_Wall dado | 20d | 2026-07-14 | 2026-08-02 | 5943 |  | 7 Days Work | 9276344 |
| 5945 | 36900.37000.37100.37300.38000.46700.61000.914600 | Toilet_Granite Work-Ledge wall top | 3d | 2026-08-03 | 2026-08-05 | 5944 |  | 7 Days Work | 9276354 |
| 5946 | 36900.37000.37100.37300.38000.46700.61000.914700 | Toilet_Floor Tilling work | 20d | 2026-08-06 | 2026-08-25 | 5945 |  | 7 Days Work | 9276364 |
| 5947 | 36900.37000.37100.37300.38000.46700.61000.914800 | Toilet_1st row of dado | 5d | 2026-08-26 | 2026-08-30 | 5946 |  | 7 Days Work | 9276374 |
| 5948 | 36900.37000.37100.37300.38000.46700.61000.914900 | Toilet_Window Fixing | 14d | 2026-08-31 | 2026-09-13 | 5947 |  | 7 Days Work | 9276384 |
| 5949 | 36900.37000.37100.37300.38000.46700.61000.915000 | Toilet_Services above False ceiling | 21d | 2026-09-14 | 2026-10-04 | 5948 |  | 7 Days Work | 9276394 |
| 5950 | 36900.37000.37100.37300.38000.46700.61000.915100 | Toilet_False Ceiling framing | 12d | 2026-10-05 | 2026-10-16 | 5949 |  | 7 Days Work | 9276404 |
| 5951 | 36900.37000.37100.37300.38000.46700.61000.915200 | Toilet_Door Frame | 5d | 2026-10-17 | 2026-10-21 | 5950 |  | 7 Days Work | 9276414 |
| 5952 | 36900.37000.37100.37300.38000.46700.61000.915300 | Toilet_Epoxy Tile Grouting | 7d | 2026-12-17 | 2026-12-23 | 5927SS |  | 7 Days Work | 9276424 |
| 5953 | 36900.37000.37100.37300.38000.46700.61000.915400 | Toilet_False ceiling board fixing, CP Sanitary Fixture, Electric Fixture | 21d | 2026-12-24 | 2027-01-13 | 5952 |  | 7 Days Work | 9276434 |
| 5954 | 36900.37000.37100.37300.38000.46800 | **7th Habitable/8th Floor** | 245d | 2026-05-27 | 2027-01-26 |  | start no earlier than 2026-05-27 | 7 Days Work | 9265444 |
| 5955 | 36900.37000.37100.37300.38000.46800.486500 | Post Pour | 7d | 2026-05-27 | 2026-06-02 | 5581 |  | 7 Days Work | 9268284 |
| 5956 | 36900.37000.37100.37300.38000.46800.486600 | MEP Clearance -1 | 5d | 2026-06-03 | 2026-06-07 | 5955 |  | 7 Days Work | 9268294 |
| 5957 | 36900.37000.37100.37300.38000.46800.486700 | Benchmark | 1d | 2026-06-08 | 2026-06-08 | 5956 |  | 7 Days Work | 9268304 |
| 5958 | 36900.37000.37100.37300.38000.46800.486800 | Temporary Railing | 3d | 2026-06-09 | 2026-06-11 | 5957 |  | 7 Days Work | 9268314 |
| 5959 | 36900.37000.37100.37300.38000.46800.486900 | Blockwork | 10d | 2026-06-12 | 2026-06-21 | 5958 |  | 7 Days Work | 9268324 |
| 5960 | 36900.37000.37100.37300.38000.46800.487000 | MEP Clearance -2 | 10d | 2026-06-22 | 2026-07-01 | 5959 |  | 7 Days Work | 9268334 |
| 5961 | 36900.37000.37100.37300.38000.46800.487100 | Gypsum Plaster | 14d | 2026-07-02 | 2026-07-15 | 5960 |  | 7 Days Work | 9268344 |
| 5962 | 36900.37000.37100.37300.38000.46800.487200 | Kitchen Platform | 3d | 2026-07-16 | 2026-07-18 | 5961 |  | 7 Days Work | 9268354 |
| 5963 | 36900.37000.37100.37300.38000.46800.487300 | Kitchen dado | 7d | 2026-07-19 | 2026-07-25 | 5962 |  | 7 Days Work | 9268364 |
| 5964 | 36900.37000.37100.37300.38000.46800.487400 | Fire Fighting | 5d | 2026-07-26 | 2026-07-30 | 5963 |  | 7 Days Work | 9268374 |
| 5965 | 36900.37000.37100.37300.38000.46800.487500 | Anticapilary | 5d | 2026-07-31 | 2026-08-04 | 5964 |  | 7 Days Work | 9268384 |
| 5966 | 36900.37000.37100.37300.38000.46800.487600 | Stone Laying | 10d | 2026-09-07 | 2026-09-16 | 6006 |  | 7 Days Work | 9268394 |
| 5967 | 36900.37000.37100.37300.38000.46800.487700 | Tiles Laying | 7d | 2026-09-07 | 2026-09-13 | 6006 |  | 7 Days Work | 9268404 |
| 5968 | 36900.37000.37100.37300.38000.46800.487800 | 1st cutting/polishing of stone flooring | 7d | 2026-09-14 | 2026-09-20 | 5967 |  | 7 Days Work | 9268414 |
| 5969 | 36900.37000.37100.37300.38000.46800.487900 | Tiles/Stone skirting | 5d | 2026-09-21 | 2026-09-25 | 5968 |  | 7 Days Work | 9268424 |
| 5970 | 36900.37000.37100.37300.38000.46800.488000 | Protechtion sheet | 1d | 2026-09-26 | 2026-09-26 | 5969 |  | 7 Days Work | 9268434 |
| 5971 | 36900.37000.37100.37300.38000.46800.488100 | Installation of Temporary Door | 1d | 2026-09-27 | 2026-09-27 | 5970 |  | 7 Days Work | 9268444 |
| 5972 | 36900.37000.37100.37300.38000.46800.488200 | Fixing of window tracks | 5d | 2026-09-28 | 2026-10-02 | 5971 |  | 7 Days Work | 9268454 |
| 5973 | 36900.37000.37100.37300.38000.46800.488300 | Wire Pulling | 7d | 2026-10-03 | 2026-10-09 | 5972 |  | 7 Days Work | 9268464 |
| 5974 | 36900.37000.37100.37300.38000.46800.488400 | Gypsum Remaining | 5d | 2026-10-10 | 2026-10-14 | 5973 |  | 7 Days Work | 9268474 |
| 5975 | 36900.37000.37100.37300.38000.46800.488500 | Fixing of windoow shutter | 5d | 2026-10-15 | 2026-10-19 | 5974 |  | 7 Days Work | 9268484 |
| 5976 | 36900.37000.37100.37300.38000.46800.488600 | Putty Works - walls & ceiling | 15d | 2026-10-20 | 2026-11-03 | 5975 |  | 7 Days Work | 9268494 |
| 5977 | 36900.37000.37100.37300.38000.46800.488700 | False Ceiling- Framing | 10d | 2026-11-04 | 2026-11-13 | 5976 |  | 7 Days Work | 9268504 |
| 5978 | 36900.37000.37100.37300.38000.46800.488800 | Pre Hung Door | 3d | 2026-11-14 | 2026-11-16 | 5977 |  | 7 Days Work | 9268514 |
| 5979 | 36900.37000.37100.37300.38000.46800.488900 | Protechtion sheet | 2d | 2026-11-17 | 2026-11-18 | 5978 |  | 7 Days Work | 9268524 |
| 5980 | 36900.37000.37100.37300.38000.46800.489000 | Skirting near door | 2d | 2026-11-19 | 2026-11-20 | 5979 |  | 7 Days Work | 9268534 |
| 5981 | 36900.37000.37100.37300.38000.46800.489100 | Electrical Switch box fixing | 14d | 2026-11-21 | 2026-12-04 | 5980 |  | 7 Days Work | 9268544 |
| 5982 | 36900.37000.37100.37300.38000.46800.489200 | Fire Fighting painting | 5d | 2026-12-05 | 2026-12-09 | 5981 |  | 7 Days Work | 9268554 |
| 5983 | 36900.37000.37100.37300.38000.46800.489300 | Protection of all flooring, door & window hardware | 5d | 2026-12-10 | 2026-12-14 | 5982 |  | 7 Days Work | 9268564 |
| 5984 | 36900.37000.37100.37300.38000.46800.489400 | 1st coat primer- ceiling 1st & walls | 14d | 2026-12-15 | 2026-12-28 | 5983 |  | 7 Days Work | 9268574 |
| 5985 | 36900.37000.37100.37300.38000.46800.489500 | Wooden Flooring | 5d | 2026-12-29 | 2027-01-02 | 5984 |  | 7 Days Work | 9268584 |
| 5986 | 36900.37000.37100.37300.38000.46800.489600 | Removing of Temporary Railing & installation of Glass Railing | 5d | 2026-12-29 | 2027-01-02 | 5984 |  | 7 Days Work | 9268594 |
| 5987 | 36900.37000.37100.37300.38000.46800.489700 | Tile Grouting | 7d | 2026-12-29 | 2027-01-04 | 5984 |  | 7 Days Work | 9268604 |
| 5988 | 36900.37000.37100.37300.38000.46800.489800 | False Ceiling | 5d | 2027-01-05 | 2027-01-09 | 5987 |  | 7 Days Work | 9268614 |
| 5989 | 36900.37000.37100.37300.38000.46800.489900 | 2nd coat of primer | 10d | 2027-01-10 | 2027-01-19 | 5988 |  | 7 Days Work | 9268624 |
| 5990 | 36900.37000.37100.37300.38000.46800.490000 | Final cutting/polishing of stone flooring | 7d | 2027-01-20 | 2027-01-26 | 5989 |  | 7 Days Work | 9268634 |

| ID | WBS | Task | Duration | Start | Finish | Predecessors | Constraint | Calendar | Unique_Task_ID |
| --- | --- | --- | --- | --- | --- | --- | --- | --- | --- |
| 5991 | 36900.37000.37100.37300.38000.46800.61100 | **Toilet** | 237d | 2026-06-03 | 2027-01-25 |  | start no earlier than 2026-06-03 | 7 Days Work | 9265654 |
| 5992 | 36900.37000.37100.37300.38000.46800.61100.915500 | Toilet_MEP Clearance -1 | 7d | 2026-06-03 | 2026-06-09 | 5955 |  | 7 Days Work | 9276444 |
| 5993 | 36900.37000.37100.37300.38000.46800.61100.915600 | Toilet_Level Marking | 1d | 2026-06-10 | 2026-06-10 | 5992 |  | 7 Days Work | 9276454 |
| 5994 | 36900.37000.37100.37300.38000.46800.61100.915700 | Toilet_Chasing work for Electrical conduit & concealed plumbing | 5d | 2026-06-11 | 2026-06-15 | 5993 |  | 7 Days Work | 9276464 |
| 5995 | 36900.37000.37100.37300.38000.46800.61100.915800 | Toilet_Plumbing work 1st fix | 5d | 2026-06-16 | 2026-06-20 | 5994 |  | 7 Days Work | 9276474 |
| 5996 | 36900.37000.37100.37300.38000.46800.61100.915900 | Toilet_Sleeve/Bore Packing | 5d | 2026-06-21 | 2026-06-25 | 5995 |  | 7 Days Work | 9276484 |
| 5997 | 36900.37000.37100.37300.38000.46800.61100.916000 | Toilet_Waterproofing | 10d | 2026-06-26 | 2026-07-05 | 5996 |  | 7 Days Work | 9276494 |
| 5998 | 36900.37000.37100.37300.38000.46800.61100.916100 | Toilet_Screed | 1d | 2026-07-06 | 2026-07-06 | 5997 |  | 7 Days Work | 9276504 |
| 5999 | 36900.37000.37100.37300.38000.46800.61100.916200 | Toilet_Plumbing 2nd fix | 5d | 2026-07-07 | 2026-07-11 | 5998 |  | 7 Days Work | 9276514 |
| 6000 | 36900.37000.37100.37300.38000.46800.61100.916300 | Toilet_Ledge wall | 5d | 2026-07-12 | 2026-07-16 | 5999 |  | 7 Days Work | 9276524 |
| 6001 | 36900.37000.37100.37300.38000.46800.61100.916400 | Toilet_Cement Plaster | 5d | 2026-07-17 | 2026-07-21 | 6000 |  | 7 Days Work | 9276534 |
| 6002 | 36900.37000.37100.37300.38000.46800.61100.916500 | Toilet_Door Frame | 1d | 2026-07-22 | 2026-07-22 | 6001 |  | 7 Days Work | 9276544 |
| 6003 | 36900.37000.37100.37300.38000.46800.61100.916600 | Toilet_Wash basin & Couter | 3d | 2026-07-23 | 2026-07-25 | 6002 |  | 7 Days Work | 9276554 |
| 6004 | 36900.37000.37100.37300.38000.46800.61100.916700 | Toilet_Wall dado | 20d | 2026-07-26 | 2026-08-14 | 6003 |  | 7 Days Work | 9276564 |
| 6005 | 36900.37000.37100.37300.38000.46800.61100.916800 | Toilet_Granite Work-Ledge wall top | 3d | 2026-08-15 | 2026-08-17 | 6004 |  | 7 Days Work | 9276574 |
| 6006 | 36900.37000.37100.37300.38000.46800.61100.916900 | Toilet_Floor Tilling work | 20d | 2026-08-18 | 2026-09-06 | 6005 |  | 7 Days Work | 9276584 |
| 6007 | 36900.37000.37100.37300.38000.46800.61100.917000 | Toilet_1st row of dado | 5d | 2026-09-07 | 2026-09-11 | 6006 |  | 7 Days Work | 9276594 |
| 6008 | 36900.37000.37100.37300.38000.46800.61100.917100 | Toilet_Window Fixing | 14d | 2026-09-12 | 2026-09-25 | 6007 |  | 7 Days Work | 9276604 |
| 6009 | 36900.37000.37100.37300.38000.46800.61100.917200 | Toilet_Services above False ceiling | 21d | 2026-09-26 | 2026-10-16 | 6008 |  | 7 Days Work | 9276614 |
| 6010 | 36900.37000.37100.37300.38000.46800.61100.917300 | Toilet_False Ceiling framing | 12d | 2026-10-17 | 2026-10-28 | 6009 |  | 7 Days Work | 9276624 |
| 6011 | 36900.37000.37100.37300.38000.46800.61100.917400 | Toilet_Door Frame | 5d | 2026-10-29 | 2026-11-02 | 6010 |  | 7 Days Work | 9276634 |
| 6012 | 36900.37000.37100.37300.38000.46800.61100.917500 | Toilet_Epoxy Tile Grouting | 7d | 2026-12-29 | 2027-01-04 | 5987SS |  | 7 Days Work | 9276644 |
| 6013 | 36900.37000.37100.37300.38000.46800.61100.917600 | Toilet_False ceiling board fixing, CP Sanitary Fixture, Electric Fixture | 21d | 2027-01-05 | 2027-01-25 | 6012 |  | 7 Days Work | 9276654 |
| 6014 | 36900.37000.37100.37300.38000.46900 | **8th Habitable/9th Floor** | 245d | 2026-06-08 | 2027-02-07 |  | start no earlier than 2026-06-08 | 7 Days Work | 9265454 |
| 6015 | 36900.37000.37100.37300.38000.46900.490100 | Post Pour | 7d | 2026-06-08 | 2026-06-14 | 5582 |  | 7 Days Work | 9268644 |
| 6016 | 36900.37000.37100.37300.38000.46900.490200 | MEP Clearance -1 | 5d | 2026-06-15 | 2026-06-19 | 6015 |  | 7 Days Work | 9268654 |
| 6017 | 36900.37000.37100.37300.38000.46900.490300 | Benchmark | 1d | 2026-06-20 | 2026-06-20 | 6016 |  | 7 Days Work | 9268664 |
| 6018 | 36900.37000.37100.37300.38000.46900.490400 | Temporary Railing | 3d | 2026-06-21 | 2026-06-23 | 6017 |  | 7 Days Work | 9268674 |
| 6019 | 36900.37000.37100.37300.38000.46900.490500 | Blockwork | 10d | 2026-06-24 | 2026-07-03 | 6018 |  | 7 Days Work | 9268684 |
| 6020 | 36900.37000.37100.37300.38000.46900.490600 | MEP Clearance -2 | 10d | 2026-07-04 | 2026-07-13 | 6019 |  | 7 Days Work | 9268694 |
| 6021 | 36900.37000.37100.37300.38000.46900.490700 | Gypsum Plaster | 14d | 2026-07-14 | 2026-07-27 | 6020 |  | 7 Days Work | 9268704 |
| 6022 | 36900.37000.37100.37300.38000.46900.490800 | Kitchen Platform | 3d | 2026-07-28 | 2026-07-30 | 6021 |  | 7 Days Work | 9268714 |
| 6023 | 36900.37000.37100.37300.38000.46900.490900 | Kitchen dado | 7d | 2026-07-31 | 2026-08-06 | 6022 |  | 7 Days Work | 9268724 |
| 6024 | 36900.37000.37100.37300.38000.46900.491000 | Fire Fighting | 5d | 2026-08-07 | 2026-08-11 | 6023 |  | 7 Days Work | 9268734 |
| 6025 | 36900.37000.37100.37300.38000.46900.491100 | Anticapilary | 5d | 2026-08-12 | 2026-08-16 | 6024 |  | 7 Days Work | 9268744 |
| 6026 | 36900.37000.37100.37300.38000.46900.491200 | Stone Laying | 10d | 2026-09-19 | 2026-09-28 | 6066 |  | 7 Days Work | 9268754 |
| 6027 | 36900.37000.37100.37300.38000.46900.491300 | Tiles Laying | 7d | 2026-09-19 | 2026-09-25 | 6066 |  | 7 Days Work | 9268764 |
| 6028 | 36900.37000.37100.37300.38000.46900.491400 | 1st cutting/polishing of stone flooring | 7d | 2026-09-26 | 2026-10-02 | 6027 |  | 7 Days Work | 9268774 |
| 6029 | 36900.37000.37100.37300.38000.46900.491500 | Tiles/Stone skirting | 5d | 2026-10-03 | 2026-10-07 | 6028 |  | 7 Days Work | 9268784 |
| 6030 | 36900.37000.37100.37300.38000.46900.491600 | Protechtion sheet | 1d | 2026-10-08 | 2026-10-08 | 6029 |  | 7 Days Work | 9268794 |
| 6031 | 36900.37000.37100.37300.38000.46900.491700 | Installation of Temporary Door | 1d | 2026-10-09 | 2026-10-09 | 6030 |  | 7 Days Work | 9268804 |
| 6032 | 36900.37000.37100.37300.38000.46900.491800 | Fixing of window tracks | 5d | 2026-10-10 | 2026-10-14 | 6031 |  | 7 Days Work | 9268814 |
| 6033 | 36900.37000.37100.37300.38000.46900.491900 | Wire Pulling | 7d | 2026-10-15 | 2026-10-21 | 6032 |  | 7 Days Work | 9268824 |
| 6034 | 36900.37000.37100.37300.38000.46900.492000 | Gypsum Remaining | 5d | 2026-10-22 | 2026-10-26 | 6033 |  | 7 Days Work | 9268834 |
| 6035 | 36900.37000.37100.37300.38000.46900.492100 | Fixing of windoow shutter | 5d | 2026-10-27 | 2026-10-31 | 6034 |  | 7 Days Work | 9268844 |
| 6036 | 36900.37000.37100.37300.38000.46900.492200 | Putty Works - walls & ceiling | 15d | 2026-11-01 | 2026-11-15 | 6035 |  | 7 Days Work | 9268854 |
| 6037 | 36900.37000.37100.37300.38000.46900.492300 | False Ceiling- Framing | 10d | 2026-11-16 | 2026-11-25 | 6036 |  | 7 Days Work | 9268864 |
| 6038 | 36900.37000.37100.37300.38000.46900.492400 | Pre Hung Door | 3d | 2026-11-26 | 2026-11-28 | 6037 |  | 7 Days Work | 9268874 |
| 6039 | 36900.37000.37100.37300.38000.46900.492500 | Protechtion sheet | 2d | 2026-11-29 | 2026-11-30 | 6038 |  | 7 Days Work | 9268884 |
| 6040 | 36900.37000.37100.37300.38000.46900.492600 | Skirting near door | 2d | 2026-12-01 | 2026-12-02 | 6039 |  | 7 Days Work | 9268894 |
| 6041 | 36900.37000.37100.37300.38000.46900.492700 | Electrical Switch box fixing | 14d | 2026-12-03 | 2026-12-16 | 6040 |  | 7 Days Work | 9268904 |
| 6042 | 36900.37000.37100.37300.38000.46900.492800 | Fire Fighting painting | 5d | 2026-12-17 | 2026-12-21 | 6041 |  | 7 Days Work | 9268914 |
| 6043 | 36900.37000.37100.37300.38000.46900.492900 | Protection of all flooring, door & window hardware | 5d | 2026-12-22 | 2026-12-26 | 6042 |  | 7 Days Work | 9268924 |
| 6044 | 36900.37000.37100.37300.38000.46900.493000 | 1st coat primer- ceiling 1st & walls | 14d | 2026-12-27 | 2027-01-09 | 6043 |  | 7 Days Work | 9268934 |
| 6045 | 36900.37000.37100.37300.38000.46900.493100 | Wooden Flooring | 5d | 2027-01-10 | 2027-01-14 | 6044 |  | 7 Days Work | 9268944 |
| 6046 | 36900.37000.37100.37300.38000.46900.493200 | Removing of Temporary Railing & installation of Glass Railing | 5d | 2027-01-10 | 2027-01-14 | 6044 |  | 7 Days Work | 9268954 |
| 6047 | 36900.37000.37100.37300.38000.46900.493300 | Tile Grouting | 7d | 2027-01-10 | 2027-01-16 | 6044 |  | 7 Days Work | 9268964 |
| 6048 | 36900.37000.37100.37300.38000.46900.493400 | False Ceiling | 5d | 2027-01-17 | 2027-01-21 | 6047 |  | 7 Days Work | 9268974 |
| 6049 | 36900.37000.37100.37300.38000.46900.493500 | 2nd coat of primer | 10d | 2027-01-22 | 2027-01-31 | 6048 |  | 7 Days Work | 9268984 |
| 6050 | 36900.37000.37100.37300.38000.46900.493600 | Final cutting/polishing of stone flooring | 7d | 2027-02-01 | 2027-02-07 | 6049 |  | 7 Days Work | 9268994 |

| ID | WBS | Task | Duration | Start | Finish | Predecessors | Constraint | Calendar | Unique_Task_ID |
| --- | --- | --- | --- | --- | --- | --- | --- | --- | --- |
| 6051 | 36900.37000.37100.37300.38000.46900.61200 | **Toilet** | 237d | 2026-06-15 | 2027-02-06 |  | start no earlier than 2026-06-15 | 7 Days Work | 9265664 |
| 6052 | 36900.37000.37100.37300.38000.46900.61200.917700 | Toilet_MEP Clearance -1 | 7d | 2026-06-15 | 2026-06-21 | 6015 |  | 7 Days Work | 9276664 |
| 6053 | 36900.37000.37100.37300.38000.46900.61200.917800 | Toilet_Level Marking | 1d | 2026-06-22 | 2026-06-22 | 6052 |  | 7 Days Work | 9276674 |
| 6054 | 36900.37000.37100.37300.38000.46900.61200.917900 | Toilet_Chasing work for Electrical conduit & concealed plumbing | 5d | 2026-06-23 | 2026-06-27 | 6053 |  | 7 Days Work | 9276684 |
| 6055 | 36900.37000.37100.37300.38000.46900.61200.918000 | Toilet_Plumbing work 1st fix | 5d | 2026-06-28 | 2026-07-02 | 6054 |  | 7 Days Work | 9276694 |
| 6056 | 36900.37000.37100.37300.38000.46900.61200.918100 | Toilet_Sleeve/Bore Packing | 5d | 2026-07-03 | 2026-07-07 | 6055 |  | 7 Days Work | 9276704 |
| 6057 | 36900.37000.37100.37300.38000.46900.61200.918200 | Toilet_Waterproofing | 10d | 2026-07-08 | 2026-07-17 | 6056 |  | 7 Days Work | 9276714 |
| 6058 | 36900.37000.37100.37300.38000.46900.61200.918300 | Toilet_Screed | 1d | 2026-07-18 | 2026-07-18 | 6057 |  | 7 Days Work | 9276724 |
| 6059 | 36900.37000.37100.37300.38000.46900.61200.918400 | Toilet_Plumbing 2nd fix | 5d | 2026-07-19 | 2026-07-23 | 6058 |  | 7 Days Work | 9276734 |
| 6060 | 36900.37000.37100.37300.38000.46900.61200.918500 | Toilet_Ledge wall | 5d | 2026-07-24 | 2026-07-28 | 6059 |  | 7 Days Work | 9276744 |
| 6061 | 36900.37000.37100.37300.38000.46900.61200.918600 | Toilet_Cement Plaster | 5d | 2026-07-29 | 2026-08-02 | 6060 |  | 7 Days Work | 9276754 |
| 6062 | 36900.37000.37100.37300.38000.46900.61200.918700 | Toilet_Door Frame | 1d | 2026-08-03 | 2026-08-03 | 6061 |  | 7 Days Work | 9276764 |
| 6063 | 36900.37000.37100.37300.38000.46900.61200.918800 | Toilet_Wash basin & Couter | 3d | 2026-08-04 | 2026-08-06 | 6062 |  | 7 Days Work | 9276774 |
| 6064 | 36900.37000.37100.37300.38000.46900.61200.918900 | Toilet_Wall dado | 20d | 2026-08-07 | 2026-08-26 | 6063 |  | 7 Days Work | 9276784 |
| 6065 | 36900.37000.37100.37300.38000.46900.61200.919000 | Toilet_Granite Work-Ledge wall top | 3d | 2026-08-27 | 2026-08-29 | 6064 |  | 7 Days Work | 9276794 |
| 6066 | 36900.37000.37100.37300.38000.46900.61200.919100 | Toilet_Floor Tilling work | 20d | 2026-08-30 | 2026-09-18 | 6065 |  | 7 Days Work | 9276804 |
| 6067 | 36900.37000.37100.37300.38000.46900.61200.919200 | Toilet_1st row of dado | 5d | 2026-09-19 | 2026-09-23 | 6066 |  | 7 Days Work | 9276814 |
| 6068 | 36900.37000.37100.37300.38000.46900.61200.919300 | Toilet_Window Fixing | 14d | 2026-09-24 | 2026-10-07 | 6067 |  | 7 Days Work | 9276824 |
| 6069 | 36900.37000.37100.37300.38000.46900.61200.919400 | Toilet_Services above False ceiling | 21d | 2026-10-08 | 2026-10-28 | 6068 |  | 7 Days Work | 9276834 |
| 6070 | 36900.37000.37100.37300.38000.46900.61200.919500 | Toilet_False Ceiling framing | 12d | 2026-10-29 | 2026-11-09 | 6069 |  | 7 Days Work | 9276844 |
| 6071 | 36900.37000.37100.37300.38000.46900.61200.919600 | Toilet_Door Frame | 5d | 2026-11-10 | 2026-11-14 | 6070 |  | 7 Days Work | 9276854 |
| 6072 | 36900.37000.37100.37300.38000.46900.61200.919700 | Toilet_Epoxy Tile Grouting | 7d | 2027-01-10 | 2027-01-16 | 6047SS |  | 7 Days Work | 9276864 |
| 6073 | 36900.37000.37100.37300.38000.46900.61200.919800 | Toilet_False ceiling board fixing, CP Sanitary Fixture, Electric Fixture | 21d | 2027-01-17 | 2027-02-06 | 6072 |  | 7 Days Work | 9276874 |
| 6074 | 36900.37000.37100.37300.38000.47000 | **9th Habitable/10th Floor** | 245d | 2026-06-20 | 2027-02-19 |  | start no earlier than 2026-06-20 | 7 Days Work | 9265464 |
| 6075 | 36900.37000.37100.37300.38000.47000.493700 | Post Pour | 7d | 2026-06-20 | 2026-06-26 | 5583 |  | 7 Days Work | 9269004 |
| 6076 | 36900.37000.37100.37300.38000.47000.493800 | MEP Clearance -1 | 5d | 2026-06-27 | 2026-07-01 | 6075 |  | 7 Days Work | 9269014 |
| 6077 | 36900.37000.37100.37300.38000.47000.493900 | Benchmark | 1d | 2026-07-02 | 2026-07-02 | 6076 |  | 7 Days Work | 9269024 |
| 6078 | 36900.37000.37100.37300.38000.47000.494000 | Temporary Railing | 3d | 2026-07-03 | 2026-07-05 | 6077 |  | 7 Days Work | 9269034 |
| 6079 | 36900.37000.37100.37300.38000.47000.494100 | Blockwork | 10d | 2026-07-06 | 2026-07-15 | 6078 |  | 7 Days Work | 9269044 |
| 6080 | 36900.37000.37100.37300.38000.47000.494200 | MEP Clearance -2 | 10d | 2026-07-16 | 2026-07-25 | 6079 |  | 7 Days Work | 9269054 |
| 6081 | 36900.37000.37100.37300.38000.47000.494300 | Gypsum Plaster | 14d | 2026-07-26 | 2026-08-08 | 6080 |  | 7 Days Work | 9269064 |
| 6082 | 36900.37000.37100.37300.38000.47000.494400 | Kitchen Platform | 3d | 2026-08-09 | 2026-08-11 | 6081 |  | 7 Days Work | 9269074 |
| 6083 | 36900.37000.37100.37300.38000.47000.494500 | Kitchen dado | 7d | 2026-08-12 | 2026-08-18 | 6082 |  | 7 Days Work | 9269084 |
| 6084 | 36900.37000.37100.37300.38000.47000.494600 | Fire Fighting | 5d | 2026-08-19 | 2026-08-23 | 6083 |  | 7 Days Work | 9269094 |
| 6085 | 36900.37000.37100.37300.38000.47000.494700 | Anticapilary | 5d | 2026-08-24 | 2026-08-28 | 6084 |  | 7 Days Work | 9269104 |
| 6086 | 36900.37000.37100.37300.38000.47000.494800 | Stone Laying | 10d | 2026-10-01 | 2026-10-10 | 6126 |  | 7 Days Work | 9269114 |
| 6087 | 36900.37000.37100.37300.38000.47000.494900 | Tiles Laying | 7d | 2026-10-01 | 2026-10-07 | 6126 |  | 7 Days Work | 9269124 |
| 6088 | 36900.37000.37100.37300.38000.47000.495000 | 1st cutting/polishing of stone flooring | 7d | 2026-10-08 | 2026-10-14 | 6087 |  | 7 Days Work | 9269134 |
| 6089 | 36900.37000.37100.37300.38000.47000.495100 | Tiles/Stone skirting | 5d | 2026-10-15 | 2026-10-19 | 6088 |  | 7 Days Work | 9269144 |
| 6090 | 36900.37000.37100.37300.38000.47000.495200 | Protechtion sheet | 1d | 2026-10-20 | 2026-10-20 | 6089 |  | 7 Days Work | 9269154 |
| 6091 | 36900.37000.37100.37300.38000.47000.495300 | Installation of Temporary Door | 1d | 2026-10-21 | 2026-10-21 | 6090 |  | 7 Days Work | 9269164 |
| 6092 | 36900.37000.37100.37300.38000.47000.495400 | Fixing of window tracks | 5d | 2026-10-22 | 2026-10-26 | 6091 |  | 7 Days Work | 9269174 |
| 6093 | 36900.37000.37100.37300.38000.47000.495500 | Wire Pulling | 7d | 2026-10-27 | 2026-11-02 | 6092 |  | 7 Days Work | 9269184 |
| 6094 | 36900.37000.37100.37300.38000.47000.495600 | Gypsum Remaining | 5d | 2026-11-03 | 2026-11-07 | 6093 |  | 7 Days Work | 9269194 |
| 6095 | 36900.37000.37100.37300.38000.47000.495700 | Fixing of windoow shutter | 5d | 2026-11-08 | 2026-11-12 | 6094 |  | 7 Days Work | 9269204 |
| 6096 | 36900.37000.37100.37300.38000.47000.495800 | Putty Works - walls & ceiling | 15d | 2026-11-13 | 2026-11-27 | 6095 |  | 7 Days Work | 9269214 |
| 6097 | 36900.37000.37100.37300.38000.47000.495900 | False Ceiling- Framing | 10d | 2026-11-28 | 2026-12-07 | 6096 |  | 7 Days Work | 9269224 |
| 6098 | 36900.37000.37100.37300.38000.47000.496000 | Pre Hung Door | 3d | 2026-12-08 | 2026-12-10 | 6097 |  | 7 Days Work | 9269234 |
| 6099 | 36900.37000.37100.37300.38000.47000.496100 | Protechtion sheet | 2d | 2026-12-11 | 2026-12-12 | 6098 |  | 7 Days Work | 9269244 |
| 6100 | 36900.37000.37100.37300.38000.47000.496200 | Skirting near door | 2d | 2026-12-13 | 2026-12-14 | 6099 |  | 7 Days Work | 9269254 |
| 6101 | 36900.37000.37100.37300.38000.47000.496300 | Electrical Switch box fixing | 14d | 2026-12-15 | 2026-12-28 | 6100 |  | 7 Days Work | 9269264 |
| 6102 | 36900.37000.37100.37300.38000.47000.496400 | Fire Fighting painting | 5d | 2026-12-29 | 2027-01-02 | 6101 |  | 7 Days Work | 9269274 |
| 6103 | 36900.37000.37100.37300.38000.47000.496500 | Protection of all flooring, door & window hardware | 5d | 2027-01-03 | 2027-01-07 | 6102 |  | 7 Days Work | 9269284 |
| 6104 | 36900.37000.37100.37300.38000.47000.496600 | 1st coat primer- ceiling 1st & walls | 14d | 2027-01-08 | 2027-01-21 | 6103 |  | 7 Days Work | 9269294 |
| 6105 | 36900.37000.37100.37300.38000.47000.496700 | Wooden Flooring | 5d | 2027-01-22 | 2027-01-26 | 6104 |  | 7 Days Work | 9269304 |
| 6106 | 36900.37000.37100.37300.38000.47000.496800 | Removing of Temporary Railing & installation of Glass Railing | 5d | 2027-01-22 | 2027-01-26 | 6104 |  | 7 Days Work | 9269314 |
| 6107 | 36900.37000.37100.37300.38000.47000.496900 | Tile Grouting | 7d | 2027-01-22 | 2027-01-28 | 6104 |  | 7 Days Work | 9269324 |
| 6108 | 36900.37000.37100.37300.38000.47000.497000 | False Ceiling | 5d | 2027-01-29 | 2027-02-02 | 6107 |  | 7 Days Work | 9269334 |
| 6109 | 36900.37000.37100.37300.38000.47000.497100 | 2nd coat of primer | 10d | 2027-02-03 | 2027-02-12 | 6108 |  | 7 Days Work | 9269344 |
| 6110 | 36900.37000.37100.37300.38000.47000.497200 | Final cutting/polishing of stone flooring | 7d | 2027-02-13 | 2027-02-19 | 6109 |  | 7 Days Work | 9269354 |

| ID | WBS | Task | Duration | Start | Finish | Predecessors | Constraint | Calendar | Unique_Task_ID |
| --- | --- | --- | --- | --- | --- | --- | --- | --- | --- |
| 6111 | 36900.37000.37100.37300.38000.47000.61300 | **Toilet** | 237d | 2026-06-27 | 2027-02-18 |  | start no earlier than 2026-06-27 | 7 Days Work | 9265674 |
| 6112 | 36900.37000.37100.37300.38000.47000.61300.919900 | Toilet_MEP Clearance -1 | 7d | 2026-06-27 | 2026-07-03 | 6075 |  | 7 Days Work | 9276884 |
| 6113 | 36900.37000.37100.37300.38000.47000.61300.920000 | Toilet_Level Marking | 1d | 2026-07-04 | 2026-07-04 | 6112 |  | 7 Days Work | 9276894 |
| 6114 | 36900.37000.37100.37300.38000.47000.61300.920100 | Toilet_Chasing work for Electrical conduit & concealed plumbing | 5d | 2026-07-05 | 2026-07-09 | 6113 |  | 7 Days Work | 9276904 |
| 6115 | 36900.37000.37100.37300.38000.47000.61300.920200 | Toilet_Plumbing work 1st fix | 5d | 2026-07-10 | 2026-07-14 | 6114 |  | 7 Days Work | 9276914 |
| 6116 | 36900.37000.37100.37300.38000.47000.61300.920300 | Toilet_Sleeve/Bore Packing | 5d | 2026-07-15 | 2026-07-19 | 6115 |  | 7 Days Work | 9276924 |
| 6117 | 36900.37000.37100.37300.38000.47000.61300.920400 | Toilet_Waterproofing | 10d | 2026-07-20 | 2026-07-29 | 6116 |  | 7 Days Work | 9276934 |
| 6118 | 36900.37000.37100.37300.38000.47000.61300.920500 | Toilet_Screed | 1d | 2026-07-30 | 2026-07-30 | 6117 |  | 7 Days Work | 9276944 |
| 6119 | 36900.37000.37100.37300.38000.47000.61300.920600 | Toilet_Plumbing 2nd fix | 5d | 2026-07-31 | 2026-08-04 | 6118 |  | 7 Days Work | 9276954 |
| 6120 | 36900.37000.37100.37300.38000.47000.61300.920700 | Toilet_Ledge wall | 5d | 2026-08-05 | 2026-08-09 | 6119 |  | 7 Days Work | 9276964 |
| 6121 | 36900.37000.37100.37300.38000.47000.61300.920800 | Toilet_Cement Plaster | 5d | 2026-08-10 | 2026-08-14 | 6120 |  | 7 Days Work | 9276974 |
| 6122 | 36900.37000.37100.37300.38000.47000.61300.920900 | Toilet_Door Frame | 1d | 2026-08-15 | 2026-08-15 | 6121 |  | 7 Days Work | 9276984 |
| 6123 | 36900.37000.37100.37300.38000.47000.61300.921000 | Toilet_Wash basin & Couter | 3d | 2026-08-16 | 2026-08-18 | 6122 |  | 7 Days Work | 9276994 |
| 6124 | 36900.37000.37100.37300.38000.47000.61300.921100 | Toilet_Wall dado | 20d | 2026-08-19 | 2026-09-07 | 6123 |  | 7 Days Work | 9277004 |
| 6125 | 36900.37000.37100.37300.38000.47000.61300.921200 | Toilet_Granite Work-Ledge wall top | 3d | 2026-09-08 | 2026-09-10 | 6124 |  | 7 Days Work | 9277014 |
| 6126 | 36900.37000.37100.37300.38000.47000.61300.921300 | Toilet_Floor Tilling work | 20d | 2026-09-11 | 2026-09-30 | 6125 |  | 7 Days Work | 9277024 |
| 6127 | 36900.37000.37100.37300.38000.47000.61300.921400 | Toilet_1st row of dado | 5d | 2026-10-01 | 2026-10-05 | 6126 |  | 7 Days Work | 9277034 |
| 6128 | 36900.37000.37100.37300.38000.47000.61300.921500 | Toilet_Window Fixing | 14d | 2026-10-06 | 2026-10-19 | 6127 |  | 7 Days Work | 9277044 |
| 6129 | 36900.37000.37100.37300.38000.47000.61300.921600 | Toilet_Services above False ceiling | 21d | 2026-10-20 | 2026-11-09 | 6128 |  | 7 Days Work | 9277054 |
| 6130 | 36900.37000.37100.37300.38000.47000.61300.921700 | Toilet_False Ceiling framing | 12d | 2026-11-10 | 2026-11-21 | 6129 |  | 7 Days Work | 9277064 |
| 6131 | 36900.37000.37100.37300.38000.47000.61300.921800 | Toilet_Door Frame | 5d | 2026-11-22 | 2026-11-26 | 6130 |  | 7 Days Work | 9277074 |
| 6132 | 36900.37000.37100.37300.38000.47000.61300.921900 | Toilet_Epoxy Tile Grouting | 7d | 2027-01-22 | 2027-01-28 | 6107SS |  | 7 Days Work | 9277084 |
| 6133 | 36900.37000.37100.37300.38000.47000.61300.922000 | Toilet_False ceiling board fixing, CP Sanitary Fixture, Electric Fixture | 21d | 2027-01-29 | 2027-02-18 | 6132 |  | 7 Days Work | 9277094 |
| 6134 | 36900.37000.37100.37300.38000.47100 | **10th Habitable/11th Floor** | 245d | 2026-07-02 | 2027-03-03 |  | start no earlier than 2026-07-02 | 7 Days Work | 9265474 |
| 6135 | 36900.37000.37100.37300.38000.47100.497300 | Post Pour | 7d | 2026-07-02 | 2026-07-08 | 5584 |  | 7 Days Work | 9269364 |
| 6136 | 36900.37000.37100.37300.38000.47100.497400 | MEP Clearance -1 | 5d | 2026-07-09 | 2026-07-13 | 6135 |  | 7 Days Work | 9269374 |
| 6137 | 36900.37000.37100.37300.38000.47100.497500 | Benchmark | 1d | 2026-07-14 | 2026-07-14 | 6136 |  | 7 Days Work | 9269384 |
| 6138 | 36900.37000.37100.37300.38000.47100.497600 | Temporary Railing | 3d | 2026-07-15 | 2026-07-17 | 6137 |  | 7 Days Work | 9269394 |
| 6139 | 36900.37000.37100.37300.38000.47100.497700 | Blockwork | 10d | 2026-07-18 | 2026-07-27 | 6138 |  | 7 Days Work | 9269404 |
| 6140 | 36900.37000.37100.37300.38000.47100.497800 | MEP Clearance -2 | 10d | 2026-07-28 | 2026-08-06 | 6139 |  | 7 Days Work | 9269414 |
| 6141 | 36900.37000.37100.37300.38000.47100.497900 | Gypsum Plaster | 14d | 2026-08-07 | 2026-08-20 | 6140 |  | 7 Days Work | 9269424 |
| 6142 | 36900.37000.37100.37300.38000.47100.498000 | Kitchen Platform | 3d | 2026-08-21 | 2026-08-23 | 6141 |  | 7 Days Work | 9269434 |
| 6143 | 36900.37000.37100.37300.38000.47100.498100 | Kitchen dado | 7d | 2026-08-24 | 2026-08-30 | 6142 |  | 7 Days Work | 9269444 |
| 6144 | 36900.37000.37100.37300.38000.47100.498200 | Fire Fighting | 5d | 2026-08-31 | 2026-09-04 | 6143 |  | 7 Days Work | 9269454 |
| 6145 | 36900.37000.37100.37300.38000.47100.498300 | Anticapilary | 5d | 2026-09-05 | 2026-09-09 | 6144 |  | 7 Days Work | 9269464 |
| 6146 | 36900.37000.37100.37300.38000.47100.498400 | Stone Laying | 10d | 2026-10-13 | 2026-10-22 | 6186 |  | 7 Days Work | 9269474 |
| 6147 | 36900.37000.37100.37300.38000.47100.498500 | Tiles Laying | 7d | 2026-10-13 | 2026-10-19 | 6186 |  | 7 Days Work | 9269484 |
| 6148 | 36900.37000.37100.37300.38000.47100.498600 | 1st cutting/polishing of stone flooring | 7d | 2026-10-20 | 2026-10-26 | 6147 |  | 7 Days Work | 9269494 |
| 6149 | 36900.37000.37100.37300.38000.47100.498700 | Tiles/Stone skirting | 5d | 2026-10-27 | 2026-10-31 | 6148 |  | 7 Days Work | 9269504 |
| 6150 | 36900.37000.37100.37300.38000.47100.498800 | Protechtion sheet | 1d | 2026-11-01 | 2026-11-01 | 6149 |  | 7 Days Work | 9269514 |
| 6151 | 36900.37000.37100.37300.38000.47100.498900 | Installation of Temporary Door | 1d | 2026-11-02 | 2026-11-02 | 6150 |  | 7 Days Work | 9269524 |
| 6152 | 36900.37000.37100.37300.38000.47100.499000 | Fixing of window tracks | 5d | 2026-11-03 | 2026-11-07 | 6151 |  | 7 Days Work | 9269534 |
| 6153 | 36900.37000.37100.37300.38000.47100.499100 | Wire Pulling | 7d | 2026-11-08 | 2026-11-14 | 6152 |  | 7 Days Work | 9269544 |
| 6154 | 36900.37000.37100.37300.38000.47100.499200 | Gypsum Remaining | 5d | 2026-11-15 | 2026-11-19 | 6153 |  | 7 Days Work | 9269554 |
| 6155 | 36900.37000.37100.37300.38000.47100.499300 | Fixing of windoow shutter | 5d | 2026-11-20 | 2026-11-24 | 6154 |  | 7 Days Work | 9269564 |
| 6156 | 36900.37000.37100.37300.38000.47100.499400 | Putty Works - walls & ceiling | 15d | 2026-11-25 | 2026-12-09 | 6155 |  | 7 Days Work | 9269574 |
| 6157 | 36900.37000.37100.37300.38000.47100.499500 | False Ceiling- Framing | 10d | 2026-12-10 | 2026-12-19 | 6156 |  | 7 Days Work | 9269584 |
| 6158 | 36900.37000.37100.37300.38000.47100.499600 | Pre Hung Door | 3d | 2026-12-20 | 2026-12-22 | 6157 |  | 7 Days Work | 9269594 |
| 6159 | 36900.37000.37100.37300.38000.47100.499700 | Protechtion sheet | 2d | 2026-12-23 | 2026-12-24 | 6158 |  | 7 Days Work | 9269604 |
| 6160 | 36900.37000.37100.37300.38000.47100.499800 | Skirting near door | 2d | 2026-12-25 | 2026-12-26 | 6159 |  | 7 Days Work | 9269614 |
| 6161 | 36900.37000.37100.37300.38000.47100.499900 | Electrical Switch box fixing | 14d | 2026-12-27 | 2027-01-09 | 6160 |  | 7 Days Work | 9269624 |
| 6162 | 36900.37000.37100.37300.38000.47100.500000 | Fire Fighting painting | 5d | 2027-01-10 | 2027-01-14 | 6161 |  | 7 Days Work | 9269634 |
| 6163 | 36900.37000.37100.37300.38000.47100.500100 | Protection of all flooring, door & window hardware | 5d | 2027-01-15 | 2027-01-19 | 6162 |  | 7 Days Work | 9269644 |
| 6164 | 36900.37000.37100.37300.38000.47100.500200 | 1st coat primer- ceiling 1st & walls | 14d | 2027-01-20 | 2027-02-02 | 6163 |  | 7 Days Work | 9269654 |
| 6165 | 36900.37000.37100.37300.38000.47100.500300 | Wooden Flooring | 5d | 2027-02-03 | 2027-02-07 | 6164 |  | 7 Days Work | 9269664 |
| 6166 | 36900.37000.37100.37300.38000.47100.500400 | Removing of Temporary Railing & installation of Glass Railing | 5d | 2027-02-03 | 2027-02-07 | 6164 |  | 7 Days Work | 9269674 |
| 6167 | 36900.37000.37100.37300.38000.47100.500500 | Tile Grouting | 7d | 2027-02-03 | 2027-02-09 | 6164 |  | 7 Days Work | 9269684 |
| 6168 | 36900.37000.37100.37300.38000.47100.500600 | False Ceiling | 5d | 2027-02-10 | 2027-02-14 | 6167 |  | 7 Days Work | 9269694 |
| 6169 | 36900.37000.37100.37300.38000.47100.500700 | 2nd coat of primer | 10d | 2027-02-15 | 2027-02-24 | 6168 |  | 7 Days Work | 9269704 |
| 6170 | 36900.37000.37100.37300.38000.47100.500800 | Final cutting/polishing of stone flooring | 7d | 2027-02-25 | 2027-03-03 | 6169 |  | 7 Days Work | 9269714 |

| ID | WBS | Task | Duration | Start | Finish | Predecessors | Constraint | Calendar | Unique_Task_ID |
| --- | --- | --- | --- | --- | --- | --- | --- | --- | --- |
| 6171 | 36900.37000.37100.37300.38000.47100.61400 | **Toilet** | 237d | 2026-07-09 | 2027-03-02 |  | start no earlier than 2026-07-09 | 7 Days Work | 9265684 |
| 6172 | 36900.37000.37100.37300.38000.47100.61400.922100 | Toilet_MEP Clearance -1 | 7d | 2026-07-09 | 2026-07-15 | 6135 |  | 7 Days Work | 9277104 |
| 6173 | 36900.37000.37100.37300.38000.47100.61400.922200 | Toilet_Level Marking | 1d | 2026-07-16 | 2026-07-16 | 6172 |  | 7 Days Work | 9277114 |
| 6174 | 36900.37000.37100.37300.38000.47100.61400.922300 | Toilet_Chasing work for Electrical conduit & concealed plumbing | 5d | 2026-07-17 | 2026-07-21 | 6173 |  | 7 Days Work | 9277124 |
| 6175 | 36900.37000.37100.37300.38000.47100.61400.922400 | Toilet_Plumbing work 1st fix | 5d | 2026-07-22 | 2026-07-26 | 6174 |  | 7 Days Work | 9277134 |
| 6176 | 36900.37000.37100.37300.38000.47100.61400.922500 | Toilet_Sleeve/Bore Packing | 5d | 2026-07-27 | 2026-07-31 | 6175 |  | 7 Days Work | 9277144 |
| 6177 | 36900.37000.37100.37300.38000.47100.61400.922600 | Toilet_Waterproofing | 10d | 2026-08-01 | 2026-08-10 | 6176 |  | 7 Days Work | 9277154 |
| 6178 | 36900.37000.37100.37300.38000.47100.61400.922700 | Toilet_Screed | 1d | 2026-08-11 | 2026-08-11 | 6177 |  | 7 Days Work | 9277164 |
| 6179 | 36900.37000.37100.37300.38000.47100.61400.922800 | Toilet_Plumbing 2nd fix | 5d | 2026-08-12 | 2026-08-16 | 6178 |  | 7 Days Work | 9277174 |
| 6180 | 36900.37000.37100.37300.38000.47100.61400.922900 | Toilet_Ledge wall | 5d | 2026-08-17 | 2026-08-21 | 6179 |  | 7 Days Work | 9277184 |
| 6181 | 36900.37000.37100.37300.38000.47100.61400.923000 | Toilet_Cement Plaster | 5d | 2026-08-22 | 2026-08-26 | 6180 |  | 7 Days Work | 9277194 |
| 6182 | 36900.37000.37100.37300.38000.47100.61400.923100 | Toilet_Door Frame | 1d | 2026-08-27 | 2026-08-27 | 6181 |  | 7 Days Work | 9277204 |
| 6183 | 36900.37000.37100.37300.38000.47100.61400.923200 | Toilet_Wash basin & Couter | 3d | 2026-08-28 | 2026-08-30 | 6182 |  | 7 Days Work | 9277214 |
| 6184 | 36900.37000.37100.37300.38000.47100.61400.923300 | Toilet_Wall dado | 20d | 2026-08-31 | 2026-09-19 | 6183 |  | 7 Days Work | 9277224 |
| 6185 | 36900.37000.37100.37300.38000.47100.61400.923400 | Toilet_Granite Work-Ledge wall top | 3d | 2026-09-20 | 2026-09-22 | 6184 |  | 7 Days Work | 9277234 |
| 6186 | 36900.37000.37100.37300.38000.47100.61400.923500 | Toilet_Floor Tilling work | 20d | 2026-09-23 | 2026-10-12 | 6185 |  | 7 Days Work | 9277244 |
| 6187 | 36900.37000.37100.37300.38000.47100.61400.923600 | Toilet_1st row of dado | 5d | 2026-10-13 | 2026-10-17 | 6186 |  | 7 Days Work | 9277254 |
| 6188 | 36900.37000.37100.37300.38000.47100.61400.923700 | Toilet_Window Fixing | 14d | 2026-10-18 | 2026-10-31 | 6187 |  | 7 Days Work | 9277264 |
| 6189 | 36900.37000.37100.37300.38000.47100.61400.923800 | Toilet_Services above False ceiling | 21d | 2026-11-01 | 2026-11-21 | 6188 |  | 7 Days Work | 9277274 |
| 6190 | 36900.37000.37100.37300.38000.47100.61400.923900 | Toilet_False Ceiling framing | 12d | 2026-11-22 | 2026-12-03 | 6189 |  | 7 Days Work | 9277284 |
| 6191 | 36900.37000.37100.37300.38000.47100.61400.924000 | Toilet_Door Frame | 5d | 2026-12-04 | 2026-12-08 | 6190 |  | 7 Days Work | 9277294 |
| 6192 | 36900.37000.37100.37300.38000.47100.61400.924100 | Toilet_Epoxy Tile Grouting | 7d | 2027-02-03 | 2027-02-09 | 6167SS |  | 7 Days Work | 9277304 |
| 6193 | 36900.37000.37100.37300.38000.47100.61400.924200 | Toilet_False ceiling board fixing, CP Sanitary Fixture, Electric Fixture | 21d | 2027-02-10 | 2027-03-02 | 6192 |  | 7 Days Work | 9277314 |
| 6194 | 36900.37000.37100.37300.38000.47200 | **11th Habitable/12th Floor** | 245d | 2026-07-14 | 2027-03-15 |  | start no earlier than 2026-07-14 | 7 Days Work | 9265484 |
| 6195 | 36900.37000.37100.37300.38000.47200.500900 | Post Pour | 7d | 2026-07-14 | 2026-07-20 | 5585 |  | 7 Days Work | 9269724 |
| 6196 | 36900.37000.37100.37300.38000.47200.501000 | MEP Clearance -1 | 5d | 2026-07-21 | 2026-07-25 | 6195 |  | 7 Days Work | 9269734 |
| 6197 | 36900.37000.37100.37300.38000.47200.501100 | Benchmark | 1d | 2026-07-26 | 2026-07-26 | 6196 |  | 7 Days Work | 9269744 |
| 6198 | 36900.37000.37100.37300.38000.47200.501200 | Temporary Railing | 3d | 2026-07-27 | 2026-07-29 | 6197 |  | 7 Days Work | 9269754 |
| 6199 | 36900.37000.37100.37300.38000.47200.501300 | Blockwork | 10d | 2026-07-30 | 2026-08-08 | 6198 |  | 7 Days Work | 9269764 |
| 6200 | 36900.37000.37100.37300.38000.47200.501400 | MEP Clearance -2 | 10d | 2026-08-09 | 2026-08-18 | 6199 |  | 7 Days Work | 9269774 |
| 6201 | 36900.37000.37100.37300.38000.47200.501500 | Gypsum Plaster | 14d | 2026-08-19 | 2026-09-01 | 6200 |  | 7 Days Work | 9269784 |
| 6202 | 36900.37000.37100.37300.38000.47200.501600 | Kitchen Platform | 3d | 2026-09-02 | 2026-09-04 | 6201 |  | 7 Days Work | 9269794 |
| 6203 | 36900.37000.37100.37300.38000.47200.501700 | Kitchen dado | 7d | 2026-09-05 | 2026-09-11 | 6202 |  | 7 Days Work | 9269804 |
| 6204 | 36900.37000.37100.37300.38000.47200.501800 | Fire Fighting | 5d | 2026-09-12 | 2026-09-16 | 6203 |  | 7 Days Work | 9269814 |
| 6205 | 36900.37000.37100.37300.38000.47200.501900 | Anticapilary | 5d | 2026-09-17 | 2026-09-21 | 6204 |  | 7 Days Work | 9269824 |
| 6206 | 36900.37000.37100.37300.38000.47200.502000 | Stone Laying | 10d | 2026-10-25 | 2026-11-03 | 6246 |  | 7 Days Work | 9269834 |
| 6207 | 36900.37000.37100.37300.38000.47200.502100 | Tiles Laying | 7d | 2026-10-25 | 2026-10-31 | 6246 |  | 7 Days Work | 9269844 |
| 6208 | 36900.37000.37100.37300.38000.47200.502200 | 1st cutting/polishing of stone flooring | 7d | 2026-11-01 | 2026-11-07 | 6207 |  | 7 Days Work | 9269854 |
| 6209 | 36900.37000.37100.37300.38000.47200.502300 | Tiles/Stone skirting | 5d | 2026-11-08 | 2026-11-12 | 6208 |  | 7 Days Work | 9269864 |
| 6210 | 36900.37000.37100.37300.38000.47200.502400 | Protechtion sheet | 1d | 2026-11-13 | 2026-11-13 | 6209 |  | 7 Days Work | 9269874 |
| 6211 | 36900.37000.37100.37300.38000.47200.502500 | Installation of Temporary Door | 1d | 2026-11-14 | 2026-11-14 | 6210 |  | 7 Days Work | 9269884 |
| 6212 | 36900.37000.37100.37300.38000.47200.502600 | Fixing of window tracks | 5d | 2026-11-15 | 2026-11-19 | 6211 |  | 7 Days Work | 9269894 |
| 6213 | 36900.37000.37100.37300.38000.47200.502700 | Wire Pulling | 7d | 2026-11-20 | 2026-11-26 | 6212 |  | 7 Days Work | 9269904 |
| 6214 | 36900.37000.37100.37300.38000.47200.502800 | Gypsum Remaining | 5d | 2026-11-27 | 2026-12-01 | 6213 |  | 7 Days Work | 9269914 |
| 6215 | 36900.37000.37100.37300.38000.47200.502900 | Fixing of windoow shutter | 5d | 2026-12-02 | 2026-12-06 | 6214 |  | 7 Days Work | 9269924 |
| 6216 | 36900.37000.37100.37300.38000.47200.503000 | Putty Works - walls & ceiling | 15d | 2026-12-07 | 2026-12-21 | 6215 |  | 7 Days Work | 9269934 |
| 6217 | 36900.37000.37100.37300.38000.47200.503100 | False Ceiling- Framing | 10d | 2026-12-22 | 2026-12-31 | 6216 |  | 7 Days Work | 9269944 |
| 6218 | 36900.37000.37100.37300.38000.47200.503200 | Pre Hung Door | 3d | 2027-01-01 | 2027-01-03 | 6217 |  | 7 Days Work | 9269954 |
| 6219 | 36900.37000.37100.37300.38000.47200.503300 | Protechtion sheet | 2d | 2027-01-04 | 2027-01-05 | 6218 |  | 7 Days Work | 9269964 |
| 6220 | 36900.37000.37100.37300.38000.47200.503400 | Skirting near door | 2d | 2027-01-06 | 2027-01-07 | 6219 |  | 7 Days Work | 9269974 |
| 6221 | 36900.37000.37100.37300.38000.47200.503500 | Electrical Switch box fixing | 14d | 2027-01-08 | 2027-01-21 | 6220 |  | 7 Days Work | 9269984 |
| 6222 | 36900.37000.37100.37300.38000.47200.503600 | Fire Fighting painting | 5d | 2027-01-22 | 2027-01-26 | 6221 |  | 7 Days Work | 9269994 |
| 6223 | 36900.37000.37100.37300.38000.47200.503700 | Protection of all flooring, door & window hardware | 5d | 2027-01-27 | 2027-01-31 | 6222 |  | 7 Days Work | 9270004 |
| 6224 | 36900.37000.37100.37300.38000.47200.503800 | 1st coat primer- ceiling 1st & walls | 14d | 2027-02-01 | 2027-02-14 | 6223 |  | 7 Days Work | 9270014 |
| 6225 | 36900.37000.37100.37300.38000.47200.503900 | Wooden Flooring | 5d | 2027-02-15 | 2027-02-19 | 6224 |  | 7 Days Work | 9270024 |
| 6226 | 36900.37000.37100.37300.38000.47200.504000 | Removing of Temporary Railing & installation of Glass Railing | 5d | 2027-02-15 | 2027-02-19 | 6224 |  | 7 Days Work | 9270034 |
| 6227 | 36900.37000.37100.37300.38000.47200.504100 | Tile Grouting | 7d | 2027-02-15 | 2027-02-21 | 6224 |  | 7 Days Work | 9270044 |
| 6228 | 36900.37000.37100.37300.38000.47200.504200 | False Ceiling | 5d | 2027-02-22 | 2027-02-26 | 6227 |  | 7 Days Work | 9270054 |
| 6229 | 36900.37000.37100.37300.38000.47200.504300 | 2nd coat of primer | 10d | 2027-02-27 | 2027-03-08 | 6228 |  | 7 Days Work | 9270064 |
| 6230 | 36900.37000.37100.37300.38000.47200.504400 | Final cutting/polishing of stone flooring | 7d | 2027-03-09 | 2027-03-15 | 6229 |  | 7 Days Work | 9270074 |

| ID | WBS | Task | Duration | Start | Finish | Predecessors | Constraint | Calendar | Unique_Task_ID |
| --- | --- | --- | --- | --- | --- | --- | --- | --- | --- |
| 6231 | 36900.37000.37100.37300.38000.47200.61500 | **Toilet** | 237d | 2026-07-21 | 2027-03-14 |  | start no earlier than 2026-07-21 | 7 Days Work | 9265694 |
| 6232 | 36900.37000.37100.37300.38000.47200.61500.924300 | Toilet_MEP Clearance -1 | 7d | 2026-07-21 | 2026-07-27 | 6195 |  | 7 Days Work | 9277324 |
| 6233 | 36900.37000.37100.37300.38000.47200.61500.924400 | Toilet_Level Marking | 1d | 2026-07-28 | 2026-07-28 | 6232 |  | 7 Days Work | 9277334 |
| 6234 | 36900.37000.37100.37300.38000.47200.61500.924500 | Toilet_Chasing work for Electrical conduit & concealed plumbing | 5d | 2026-07-29 | 2026-08-02 | 6233 |  | 7 Days Work | 9277344 |
| 6235 | 36900.37000.37100.37300.38000.47200.61500.924600 | Toilet_Plumbing work 1st fix | 5d | 2026-08-03 | 2026-08-07 | 6234 |  | 7 Days Work | 9277354 |
| 6236 | 36900.37000.37100.37300.38000.47200.61500.924700 | Toilet_Sleeve/Bore Packing | 5d | 2026-08-08 | 2026-08-12 | 6235 |  | 7 Days Work | 9277364 |
| 6237 | 36900.37000.37100.37300.38000.47200.61500.924800 | Toilet_Waterproofing | 10d | 2026-08-13 | 2026-08-22 | 6236 |  | 7 Days Work | 9277374 |
| 6238 | 36900.37000.37100.37300.38000.47200.61500.924900 | Toilet_Screed | 1d | 2026-08-23 | 2026-08-23 | 6237 |  | 7 Days Work | 9277384 |
| 6239 | 36900.37000.37100.37300.38000.47200.61500.925000 | Toilet_Plumbing 2nd fix | 5d | 2026-08-24 | 2026-08-28 | 6238 |  | 7 Days Work | 9277394 |
| 6240 | 36900.37000.37100.37300.38000.47200.61500.925100 | Toilet_Ledge wall | 5d | 2026-08-29 | 2026-09-02 | 6239 |  | 7 Days Work | 9277404 |
| 6241 | 36900.37000.37100.37300.38000.47200.61500.925200 | Toilet_Cement Plaster | 5d | 2026-09-03 | 2026-09-07 | 6240 |  | 7 Days Work | 9277414 |
| 6242 | 36900.37000.37100.37300.38000.47200.61500.925300 | Toilet_Door Frame | 1d | 2026-09-08 | 2026-09-08 | 6241 |  | 7 Days Work | 9277424 |
| 6243 | 36900.37000.37100.37300.38000.47200.61500.925400 | Toilet_Wash basin & Couter | 3d | 2026-09-09 | 2026-09-11 | 6242 |  | 7 Days Work | 9277434 |
| 6244 | 36900.37000.37100.37300.38000.47200.61500.925500 | Toilet_Wall dado | 20d | 2026-09-12 | 2026-10-01 | 6243 |  | 7 Days Work | 9277444 |
| 6245 | 36900.37000.37100.37300.38000.47200.61500.925600 | Toilet_Granite Work-Ledge wall top | 3d | 2026-10-02 | 2026-10-04 | 6244 |  | 7 Days Work | 9277454 |
| 6246 | 36900.37000.37100.37300.38000.47200.61500.925700 | Toilet_Floor Tilling work | 20d | 2026-10-05 | 2026-10-24 | 6245 |  | 7 Days Work | 9277464 |
| 6247 | 36900.37000.37100.37300.38000.47200.61500.925800 | Toilet_1st row of dado | 5d | 2026-10-25 | 2026-10-29 | 6246 |  | 7 Days Work | 9277474 |
| 6248 | 36900.37000.37100.37300.38000.47200.61500.925900 | Toilet_Window Fixing | 14d | 2026-10-30 | 2026-11-12 | 6247 |  | 7 Days Work | 9277484 |
| 6249 | 36900.37000.37100.37300.38000.47200.61500.926000 | Toilet_Services above False ceiling | 21d | 2026-11-13 | 2026-12-03 | 6248 |  | 7 Days Work | 9277494 |
| 6250 | 36900.37000.37100.37300.38000.47200.61500.926100 | Toilet_False Ceiling framing | 12d | 2026-12-04 | 2026-12-15 | 6249 |  | 7 Days Work | 9277504 |
| 6251 | 36900.37000.37100.37300.38000.47200.61500.926200 | Toilet_Door Frame | 5d | 2026-12-16 | 2026-12-20 | 6250 |  | 7 Days Work | 9277514 |
| 6252 | 36900.37000.37100.37300.38000.47200.61500.926300 | Toilet_Epoxy Tile Grouting | 7d | 2027-02-15 | 2027-02-21 | 6227SS |  | 7 Days Work | 9277524 |
| 6253 | 36900.37000.37100.37300.38000.47200.61500.926400 | Toilet_False ceiling board fixing, CP Sanitary Fixture, Electric Fixture | 21d | 2027-02-22 | 2027-03-14 | 6252 |  | 7 Days Work | 9277534 |
| 6254 | 36900.37000.37100.37300.38000.47300 | **12th Habitable/13th Floor** | 245d | 2026-07-26 | 2027-03-27 |  | start no earlier than 2026-07-26 | 7 Days Work | 9265494 |
| 6255 | 36900.37000.37100.37300.38000.47300.504500 | Post Pour | 7d | 2026-07-26 | 2026-08-01 | 5586 |  | 7 Days Work | 9270084 |
| 6256 | 36900.37000.37100.37300.38000.47300.504600 | MEP Clearance -1 | 5d | 2026-08-02 | 2026-08-06 | 6255 |  | 7 Days Work | 9270094 |
| 6257 | 36900.37000.37100.37300.38000.47300.504700 | Benchmark | 1d | 2026-08-07 | 2026-08-07 | 6256 |  | 7 Days Work | 9270104 |
| 6258 | 36900.37000.37100.37300.38000.47300.504800 | Temporary Railing | 3d | 2026-08-08 | 2026-08-10 | 6257 |  | 7 Days Work | 9270114 |
| 6259 | 36900.37000.37100.37300.38000.47300.504900 | Blockwork | 10d | 2026-08-11 | 2026-08-20 | 6258 |  | 7 Days Work | 9270124 |
| 6260 | 36900.37000.37100.37300.38000.47300.505000 | MEP Clearance -2 | 10d | 2026-08-21 | 2026-08-30 | 6259 |  | 7 Days Work | 9270134 |
| 6261 | 36900.37000.37100.37300.38000.47300.505100 | Gypsum Plaster | 14d | 2026-08-31 | 2026-09-13 | 6260 |  | 7 Days Work | 9270144 |
| 6262 | 36900.37000.37100.37300.38000.47300.505200 | Kitchen Platform | 3d | 2026-09-14 | 2026-09-16 | 6261 |  | 7 Days Work | 9270154 |
| 6263 | 36900.37000.37100.37300.38000.47300.505300 | Kitchen dado | 7d | 2026-09-17 | 2026-09-23 | 6262 |  | 7 Days Work | 9270164 |
| 6264 | 36900.37000.37100.37300.38000.47300.505400 | Fire Fighting | 5d | 2026-09-24 | 2026-09-28 | 6263 |  | 7 Days Work | 9270174 |
| 6265 | 36900.37000.37100.37300.38000.47300.505500 | Anticapilary | 5d | 2026-09-29 | 2026-10-03 | 6264 |  | 7 Days Work | 9270184 |
| 6266 | 36900.37000.37100.37300.38000.47300.505600 | Stone Laying | 10d | 2026-11-06 | 2026-11-15 | 6306 |  | 7 Days Work | 9270194 |
| 6267 | 36900.37000.37100.37300.38000.47300.505700 | Tiles Laying | 7d | 2026-11-06 | 2026-11-12 | 6306 |  | 7 Days Work | 9270204 |
| 6268 | 36900.37000.37100.37300.38000.47300.505800 | 1st cutting/polishing of stone flooring | 7d | 2026-11-13 | 2026-11-19 | 6267 |  | 7 Days Work | 9270214 |
| 6269 | 36900.37000.37100.37300.38000.47300.505900 | Tiles/Stone skirting | 5d | 2026-11-20 | 2026-11-24 | 6268 |  | 7 Days Work | 9270224 |
| 6270 | 36900.37000.37100.37300.38000.47300.506000 | Protechtion sheet | 1d | 2026-11-25 | 2026-11-25 | 6269 |  | 7 Days Work | 9270234 |
| 6271 | 36900.37000.37100.37300.38000.47300.506100 | Installation of Temporary Door | 1d | 2026-11-26 | 2026-11-26 | 6270 |  | 7 Days Work | 9270244 |
| 6272 | 36900.37000.37100.37300.38000.47300.506200 | Fixing of window tracks | 5d | 2026-11-27 | 2026-12-01 | 6271 |  | 7 Days Work | 9270254 |
| 6273 | 36900.37000.37100.37300.38000.47300.506300 | Wire Pulling | 7d | 2026-12-02 | 2026-12-08 | 6272 |  | 7 Days Work | 9270264 |
| 6274 | 36900.37000.37100.37300.38000.47300.506400 | Gypsum Remaining | 5d | 2026-12-09 | 2026-12-13 | 6273 |  | 7 Days Work | 9270274 |
| 6275 | 36900.37000.37100.37300.38000.47300.506500 | Fixing of windoow shutter | 5d | 2026-12-14 | 2026-12-18 | 6274 |  | 7 Days Work | 9270284 |
| 6276 | 36900.37000.37100.37300.38000.47300.506600 | Putty Works - walls & ceiling | 15d | 2026-12-19 | 2027-01-02 | 6275 |  | 7 Days Work | 9270294 |
| 6277 | 36900.37000.37100.37300.38000.47300.506700 | False Ceiling- Framing | 10d | 2027-01-03 | 2027-01-12 | 6276 |  | 7 Days Work | 9270304 |
| 6278 | 36900.37000.37100.37300.38000.47300.506800 | Pre Hung Door | 3d | 2027-01-13 | 2027-01-15 | 6277 |  | 7 Days Work | 9270314 |
| 6279 | 36900.37000.37100.37300.38000.47300.506900 | Protechtion sheet | 2d | 2027-01-16 | 2027-01-17 | 6278 |  | 7 Days Work | 9270324 |
| 6280 | 36900.37000.37100.37300.38000.47300.507000 | Skirting near door | 2d | 2027-01-18 | 2027-01-19 | 6279 |  | 7 Days Work | 9270334 |
| 6281 | 36900.37000.37100.37300.38000.47300.507100 | Electrical Switch box fixing | 14d | 2027-01-20 | 2027-02-02 | 6280 |  | 7 Days Work | 9270344 |
| 6282 | 36900.37000.37100.37300.38000.47300.507200 | Fire Fighting painting | 5d | 2027-02-03 | 2027-02-07 | 6281 |  | 7 Days Work | 9270354 |
| 6283 | 36900.37000.37100.37300.38000.47300.507300 | Protection of all flooring, door & window hardware | 5d | 2027-02-08 | 2027-02-12 | 6282 |  | 7 Days Work | 9270364 |
| 6284 | 36900.37000.37100.37300.38000.47300.507400 | 1st coat primer- ceiling 1st & walls | 14d | 2027-02-13 | 2027-02-26 | 6283 |  | 7 Days Work | 9270374 |
| 6285 | 36900.37000.37100.37300.38000.47300.507500 | Wooden Flooring | 5d | 2027-02-27 | 2027-03-03 | 6284 |  | 7 Days Work | 9270384 |
| 6286 | 36900.37000.37100.37300.38000.47300.507600 | Removing of Temporary Railing & installation of Glass Railing | 5d | 2027-02-27 | 2027-03-03 | 6284 |  | 7 Days Work | 9270394 |
| 6287 | 36900.37000.37100.37300.38000.47300.507700 | Tile Grouting | 7d | 2027-02-27 | 2027-03-05 | 6284 |  | 7 Days Work | 9270404 |
| 6288 | 36900.37000.37100.37300.38000.47300.507800 | False Ceiling | 5d | 2027-03-06 | 2027-03-10 | 6287 |  | 7 Days Work | 9270414 |
| 6289 | 36900.37000.37100.37300.38000.47300.507900 | 2nd coat of primer | 10d | 2027-03-11 | 2027-03-20 | 6288 |  | 7 Days Work | 9270424 |
| 6290 | 36900.37000.37100.37300.38000.47300.508000 | Final cutting/polishing of stone flooring | 7d | 2027-03-21 | 2027-03-27 | 6289 |  | 7 Days Work | 9270434 |

| ID | WBS | Task | Duration | Start | Finish | Predecessors | Constraint | Calendar | Unique_Task_ID |
| --- | --- | --- | --- | --- | --- | --- | --- | --- | --- |
| 6291 | 36900.37000.37100.37300.38000.47300.61600 | **Toilet** | 237d | 2026-08-02 | 2027-03-26 |  | start no earlier than 2026-08-02 | 7 Days Work | 9265704 |
| 6292 | 36900.37000.37100.37300.38000.47300.61600.926500 | Toilet_MEP Clearance -1 | 7d | 2026-08-02 | 2026-08-08 | 6255 |  | 7 Days Work | 9277544 |
| 6293 | 36900.37000.37100.37300.38000.47300.61600.926600 | Toilet_Level Marking | 1d | 2026-08-09 | 2026-08-09 | 6292 |  | 7 Days Work | 9277554 |
| 6294 | 36900.37000.37100.37300.38000.47300.61600.926700 | Toilet_Chasing work for Electrical conduit & concealed plumbing | 5d | 2026-08-10 | 2026-08-14 | 6293 |  | 7 Days Work | 9277564 |
| 6295 | 36900.37000.37100.37300.38000.47300.61600.926800 | Toilet_Plumbing work 1st fix | 5d | 2026-08-15 | 2026-08-19 | 6294 |  | 7 Days Work | 9277574 |
| 6296 | 36900.37000.37100.37300.38000.47300.61600.926900 | Toilet_Sleeve/Bore Packing | 5d | 2026-08-20 | 2026-08-24 | 6295 |  | 7 Days Work | 9277584 |
| 6297 | 36900.37000.37100.37300.38000.47300.61600.927000 | Toilet_Waterproofing | 10d | 2026-08-25 | 2026-09-03 | 6296 |  | 7 Days Work | 9277594 |
| 6298 | 36900.37000.37100.37300.38000.47300.61600.927100 | Toilet_Screed | 1d | 2026-09-04 | 2026-09-04 | 6297 |  | 7 Days Work | 9277604 |
| 6299 | 36900.37000.37100.37300.38000.47300.61600.927200 | Toilet_Plumbing 2nd fix | 5d | 2026-09-05 | 2026-09-09 | 6298 |  | 7 Days Work | 9277614 |
| 6300 | 36900.37000.37100.37300.38000.47300.61600.927300 | Toilet_Ledge wall | 5d | 2026-09-10 | 2026-09-14 | 6299 |  | 7 Days Work | 9277624 |
| 6301 | 36900.37000.37100.37300.38000.47300.61600.927400 | Toilet_Cement Plaster | 5d | 2026-09-15 | 2026-09-19 | 6300 |  | 7 Days Work | 9277634 |
| 6302 | 36900.37000.37100.37300.38000.47300.61600.927500 | Toilet_Door Frame | 1d | 2026-09-20 | 2026-09-20 | 6301 |  | 7 Days Work | 9277644 |
| 6303 | 36900.37000.37100.37300.38000.47300.61600.927600 | Toilet_Wash basin & Couter | 3d | 2026-09-21 | 2026-09-23 | 6302 |  | 7 Days Work | 9277654 |
| 6304 | 36900.37000.37100.37300.38000.47300.61600.927700 | Toilet_Wall dado | 20d | 2026-09-24 | 2026-10-13 | 6303 |  | 7 Days Work | 9277664 |
| 6305 | 36900.37000.37100.37300.38000.47300.61600.927800 | Toilet_Granite Work-Ledge wall top | 3d | 2026-10-14 | 2026-10-16 | 6304 |  | 7 Days Work | 9277674 |
| 6306 | 36900.37000.37100.37300.38000.47300.61600.927900 | Toilet_Floor Tilling work | 20d | 2026-10-17 | 2026-11-05 | 6305 |  | 7 Days Work | 9277684 |
| 6307 | 36900.37000.37100.37300.38000.47300.61600.928000 | Toilet_1st row of dado | 5d | 2026-11-06 | 2026-11-10 | 6306 |  | 7 Days Work | 9277694 |
| 6308 | 36900.37000.37100.37300.38000.47300.61600.928100 | Toilet_Window Fixing | 14d | 2026-11-11 | 2026-11-24 | 6307 |  | 7 Days Work | 9277704 |
| 6309 | 36900.37000.37100.37300.38000.47300.61600.928200 | Toilet_Services above False ceiling | 21d | 2026-11-25 | 2026-12-15 | 6308 |  | 7 Days Work | 9277714 |
| 6310 | 36900.37000.37100.37300.38000.47300.61600.928300 | Toilet_False Ceiling framing | 12d | 2026-12-16 | 2026-12-27 | 6309 |  | 7 Days Work | 9277724 |
| 6311 | 36900.37000.37100.37300.38000.47300.61600.928400 | Toilet_Door Frame | 5d | 2026-12-28 | 2027-01-01 | 6310 |  | 7 Days Work | 9277734 |
| 6312 | 36900.37000.37100.37300.38000.47300.61600.928500 | Toilet_Epoxy Tile Grouting | 7d | 2027-02-27 | 2027-03-05 | 6287SS |  | 7 Days Work | 9277744 |
| 6313 | 36900.37000.37100.37300.38000.47300.61600.928600 | Toilet_False ceiling board fixing, CP Sanitary Fixture, Electric Fixture | 21d | 2027-03-06 | 2027-03-26 | 6312 |  | 7 Days Work | 9277754 |
| 6314 | 36900.37000.37100.37300.38000.47400 | **13th Habitable/14th Floor** | 245d | 2026-08-07 | 2027-04-08 |  | start no earlier than 2026-08-07 | 7 Days Work | 9265504 |
| 6315 | 36900.37000.37100.37300.38000.47400.508100 | Post Pour | 7d | 2026-08-07 | 2026-08-13 | 5587 |  | 7 Days Work | 9270444 |
| 6316 | 36900.37000.37100.37300.38000.47400.508200 | MEP Clearance -1 | 5d | 2026-08-14 | 2026-08-18 | 6315 |  | 7 Days Work | 9270454 |
| 6317 | 36900.37000.37100.37300.38000.47400.508300 | Benchmark | 1d | 2026-08-19 | 2026-08-19 | 6316 |  | 7 Days Work | 9270464 |
| 6318 | 36900.37000.37100.37300.38000.47400.508400 | Temporary Railing | 3d | 2026-08-20 | 2026-08-22 | 6317 |  | 7 Days Work | 9270474 |
| 6319 | 36900.37000.37100.37300.38000.47400.508500 | Blockwork | 10d | 2026-08-23 | 2026-09-01 | 6318 |  | 7 Days Work | 9270484 |
| 6320 | 36900.37000.37100.37300.38000.47400.508600 | MEP Clearance -2 | 10d | 2026-09-02 | 2026-09-11 | 6319 |  | 7 Days Work | 9270494 |
| 6321 | 36900.37000.37100.37300.38000.47400.508700 | Gypsum Plaster | 14d | 2026-09-12 | 2026-09-25 | 6320 |  | 7 Days Work | 9270504 |
| 6322 | 36900.37000.37100.37300.38000.47400.508800 | Kitchen Platform | 3d | 2026-09-26 | 2026-09-28 | 6321 |  | 7 Days Work | 9270514 |
| 6323 | 36900.37000.37100.37300.38000.47400.508900 | Kitchen dado | 7d | 2026-09-29 | 2026-10-05 | 6322 |  | 7 Days Work | 9270524 |
| 6324 | 36900.37000.37100.37300.38000.47400.509000 | Fire Fighting | 5d | 2026-10-06 | 2026-10-10 | 6323 |  | 7 Days Work | 9270534 |
| 6325 | 36900.37000.37100.37300.38000.47400.509100 | Anticapilary | 5d | 2026-10-11 | 2026-10-15 | 6324 |  | 7 Days Work | 9270544 |
| 6326 | 36900.37000.37100.37300.38000.47400.509200 | Stone Laying | 10d | 2026-11-18 | 2026-11-27 | 6366 |  | 7 Days Work | 9270554 |
| 6327 | 36900.37000.37100.37300.38000.47400.509300 | Tiles Laying | 7d | 2026-11-18 | 2026-11-24 | 6366 |  | 7 Days Work | 9270564 |
| 6328 | 36900.37000.37100.37300.38000.47400.509400 | 1st cutting/polishing of stone flooring | 7d | 2026-11-25 | 2026-12-01 | 6327 |  | 7 Days Work | 9270574 |
| 6329 | 36900.37000.37100.37300.38000.47400.509500 | Tiles/Stone skirting | 5d | 2026-12-02 | 2026-12-06 | 6328 |  | 7 Days Work | 9270584 |
| 6330 | 36900.37000.37100.37300.38000.47400.509600 | Protechtion sheet | 1d | 2026-12-07 | 2026-12-07 | 6329 |  | 7 Days Work | 9270594 |
| 6331 | 36900.37000.37100.37300.38000.47400.509700 | Installation of Temporary Door | 1d | 2026-12-08 | 2026-12-08 | 6330 |  | 7 Days Work | 9270604 |
| 6332 | 36900.37000.37100.37300.38000.47400.509800 | Fixing of window tracks | 5d | 2026-12-09 | 2026-12-13 | 6331 |  | 7 Days Work | 9270614 |
| 6333 | 36900.37000.37100.37300.38000.47400.509900 | Wire Pulling | 7d | 2026-12-14 | 2026-12-20 | 6332 |  | 7 Days Work | 9270624 |
| 6334 | 36900.37000.37100.37300.38000.47400.510000 | Gypsum Remaining | 5d | 2026-12-21 | 2026-12-25 | 6333 |  | 7 Days Work | 9270634 |
| 6335 | 36900.37000.37100.37300.38000.47400.510100 | Fixing of windoow shutter | 5d | 2026-12-26 | 2026-12-30 | 6334 |  | 7 Days Work | 9270644 |
| 6336 | 36900.37000.37100.37300.38000.47400.510200 | Putty Works - walls & ceiling | 15d | 2026-12-31 | 2027-01-14 | 6335 |  | 7 Days Work | 9270654 |
| 6337 | 36900.37000.37100.37300.38000.47400.510300 | False Ceiling- Framing | 10d | 2027-01-15 | 2027-01-24 | 6336 |  | 7 Days Work | 9270664 |
| 6338 | 36900.37000.37100.37300.38000.47400.510400 | Pre Hung Door | 3d | 2027-01-25 | 2027-01-27 | 6337 |  | 7 Days Work | 9270674 |
| 6339 | 36900.37000.37100.37300.38000.47400.510500 | Protechtion sheet | 2d | 2027-01-28 | 2027-01-29 | 6338 |  | 7 Days Work | 9270684 |
| 6340 | 36900.37000.37100.37300.38000.47400.510600 | Skirting near door | 2d | 2027-01-30 | 2027-01-31 | 6339 |  | 7 Days Work | 9270694 |
| 6341 | 36900.37000.37100.37300.38000.47400.510700 | Electrical Switch box fixing | 14d | 2027-02-01 | 2027-02-14 | 6340 |  | 7 Days Work | 9270704 |
| 6342 | 36900.37000.37100.37300.38000.47400.510800 | Fire Fighting painting | 5d | 2027-02-15 | 2027-02-19 | 6341 |  | 7 Days Work | 9270714 |
| 6343 | 36900.37000.37100.37300.38000.47400.510900 | Protection of all flooring, door & window hardware | 5d | 2027-02-20 | 2027-02-24 | 6342 |  | 7 Days Work | 9270724 |
| 6344 | 36900.37000.37100.37300.38000.47400.511000 | 1st coat primer- ceiling 1st & walls | 14d | 2027-02-25 | 2027-03-10 | 6343 |  | 7 Days Work | 9270734 |
| 6345 | 36900.37000.37100.37300.38000.47400.511100 | Wooden Flooring | 5d | 2027-03-11 | 2027-03-15 | 6344 |  | 7 Days Work | 9270744 |
| 6346 | 36900.37000.37100.37300.38000.47400.511200 | Removing of Temporary Railing & installation of Glass Railing | 5d | 2027-03-11 | 2027-03-15 | 6344 |  | 7 Days Work | 9270754 |
| 6347 | 36900.37000.37100.37300.38000.47400.511300 | Tile Grouting | 7d | 2027-03-11 | 2027-03-17 | 6344 |  | 7 Days Work | 9270764 |
| 6348 | 36900.37000.37100.37300.38000.47400.511400 | False Ceiling | 5d | 2027-03-18 | 2027-03-22 | 6347 |  | 7 Days Work | 9270774 |
| 6349 | 36900.37000.37100.37300.38000.47400.511500 | 2nd coat of primer | 10d | 2027-03-23 | 2027-04-01 | 6348 |  | 7 Days Work | 9270784 |
| 6350 | 36900.37000.37100.37300.38000.47400.511600 | Final cutting/polishing of stone flooring | 7d | 2027-04-02 | 2027-04-08 | 6349 |  | 7 Days Work | 9270794 |

| ID | WBS | Task | Duration | Start | Finish | Predecessors | Constraint | Calendar | Unique_Task_ID |
| --- | --- | --- | --- | --- | --- | --- | --- | --- | --- |
| 6351 | 36900.37000.37100.37300.38000.47400.61700 | **Toilet** | 237d | 2026-08-14 | 2027-04-07 |  | start no earlier than 2026-08-14 | 7 Days Work | 9265714 |
| 6352 | 36900.37000.37100.37300.38000.47400.61700.928700 | Toilet_MEP Clearance -1 | 7d | 2026-08-14 | 2026-08-20 | 6315 |  | 7 Days Work | 9277764 |
| 6353 | 36900.37000.37100.37300.38000.47400.61700.928800 | Toilet_Level Marking | 1d | 2026-08-21 | 2026-08-21 | 6352 |  | 7 Days Work | 9277774 |
| 6354 | 36900.37000.37100.37300.38000.47400.61700.928900 | Toilet_Chasing work for Electrical conduit & concealed plumbing | 5d | 2026-08-22 | 2026-08-26 | 6353 |  | 7 Days Work | 9277784 |
| 6355 | 36900.37000.37100.37300.38000.47400.61700.929000 | Toilet_Plumbing work 1st fix | 5d | 2026-08-27 | 2026-08-31 | 6354 |  | 7 Days Work | 9277794 |
| 6356 | 36900.37000.37100.37300.38000.47400.61700.929100 | Toilet_Sleeve/Bore Packing | 5d | 2026-09-01 | 2026-09-05 | 6355 |  | 7 Days Work | 9277804 |
| 6357 | 36900.37000.37100.37300.38000.47400.61700.929200 | Toilet_Waterproofing | 10d | 2026-09-06 | 2026-09-15 | 6356 |  | 7 Days Work | 9277814 |
| 6358 | 36900.37000.37100.37300.38000.47400.61700.929300 | Toilet_Screed | 1d | 2026-09-16 | 2026-09-16 | 6357 |  | 7 Days Work | 9277824 |
| 6359 | 36900.37000.37100.37300.38000.47400.61700.929400 | Toilet_Plumbing 2nd fix | 5d | 2026-09-17 | 2026-09-21 | 6358 |  | 7 Days Work | 9277834 |
| 6360 | 36900.37000.37100.37300.38000.47400.61700.929500 | Toilet_Ledge wall | 5d | 2026-09-22 | 2026-09-26 | 6359 |  | 7 Days Work | 9277844 |
| 6361 | 36900.37000.37100.37300.38000.47400.61700.929600 | Toilet_Cement Plaster | 5d | 2026-09-27 | 2026-10-01 | 6360 |  | 7 Days Work | 9277854 |
| 6362 | 36900.37000.37100.37300.38000.47400.61700.929700 | Toilet_Door Frame | 1d | 2026-10-02 | 2026-10-02 | 6361 |  | 7 Days Work | 9277864 |
| 6363 | 36900.37000.37100.37300.38000.47400.61700.929800 | Toilet_Wash basin & Couter | 3d | 2026-10-03 | 2026-10-05 | 6362 |  | 7 Days Work | 9277874 |
| 6364 | 36900.37000.37100.37300.38000.47400.61700.929900 | Toilet_Wall dado | 20d | 2026-10-06 | 2026-10-25 | 6363 |  | 7 Days Work | 9277884 |
| 6365 | 36900.37000.37100.37300.38000.47400.61700.930000 | Toilet_Granite Work-Ledge wall top | 3d | 2026-10-26 | 2026-10-28 | 6364 |  | 7 Days Work | 9277894 |
| 6366 | 36900.37000.37100.37300.38000.47400.61700.930100 | Toilet_Floor Tilling work | 20d | 2026-10-29 | 2026-11-17 | 6365 |  | 7 Days Work | 9277904 |
| 6367 | 36900.37000.37100.37300.38000.47400.61700.930200 | Toilet_1st row of dado | 5d | 2026-11-18 | 2026-11-22 | 6366 |  | 7 Days Work | 9277914 |
| 6368 | 36900.37000.37100.37300.38000.47400.61700.930300 | Toilet_Window Fixing | 14d | 2026-11-23 | 2026-12-06 | 6367 |  | 7 Days Work | 9277924 |
| 6369 | 36900.37000.37100.37300.38000.47400.61700.930400 | Toilet_Services above False ceiling | 21d | 2026-12-07 | 2026-12-27 | 6368 |  | 7 Days Work | 9277934 |
| 6370 | 36900.37000.37100.37300.38000.47400.61700.930500 | Toilet_False Ceiling framing | 12d | 2026-12-28 | 2027-01-08 | 6369 |  | 7 Days Work | 9277944 |
| 6371 | 36900.37000.37100.37300.38000.47400.61700.930600 | Toilet_Door Frame | 5d | 2027-01-09 | 2027-01-13 | 6370 |  | 7 Days Work | 9277954 |
| 6372 | 36900.37000.37100.37300.38000.47400.61700.930700 | Toilet_Epoxy Tile Grouting | 7d | 2027-03-11 | 2027-03-17 | 6347SS |  | 7 Days Work | 9277964 |
| 6373 | 36900.37000.37100.37300.38000.47400.61700.930800 | Toilet_False ceiling board fixing, CP Sanitary Fixture, Electric Fixture | 21d | 2027-03-18 | 2027-04-07 | 6372 |  | 7 Days Work | 9277974 |
| 6374 | 36900.37000.37100.37300.38000.47500 | **14th Habitable/15th Floor** | 245d | 2026-08-19 | 2027-04-20 |  | start no earlier than 2026-08-19 | 7 Days Work | 9265514 |
| 6375 | 36900.37000.37100.37300.38000.47500.511700 | Post Pour | 7d | 2026-08-19 | 2026-08-25 | 5588 |  | 7 Days Work | 9270804 |
| 6376 | 36900.37000.37100.37300.38000.47500.511800 | MEP Clearance -1 | 5d | 2026-08-26 | 2026-08-30 | 6375 |  | 7 Days Work | 9270814 |
| 6377 | 36900.37000.37100.37300.38000.47500.511900 | Benchmark | 1d | 2026-08-31 | 2026-08-31 | 6376 |  | 7 Days Work | 9270824 |
| 6378 | 36900.37000.37100.37300.38000.47500.512000 | Temporary Railing | 3d | 2026-09-01 | 2026-09-03 | 6377 |  | 7 Days Work | 9270834 |
| 6379 | 36900.37000.37100.37300.38000.47500.512100 | Blockwork | 10d | 2026-09-04 | 2026-09-13 | 6378 |  | 7 Days Work | 9270844 |
| 6380 | 36900.37000.37100.37300.38000.47500.512200 | MEP Clearance -2 | 10d | 2026-09-14 | 2026-09-23 | 6379 |  | 7 Days Work | 9270854 |
| 6381 | 36900.37000.37100.37300.38000.47500.512300 | Gypsum Plaster | 14d | 2026-09-24 | 2026-10-07 | 6380 |  | 7 Days Work | 9270864 |
| 6382 | 36900.37000.37100.37300.38000.47500.512400 | Kitchen Platform | 3d | 2026-10-08 | 2026-10-10 | 6381 |  | 7 Days Work | 9270874 |
| 6383 | 36900.37000.37100.37300.38000.47500.512500 | Kitchen dado | 7d | 2026-10-11 | 2026-10-17 | 6382 |  | 7 Days Work | 9270884 |
| 6384 | 36900.37000.37100.37300.38000.47500.512600 | Fire Fighting | 5d | 2026-10-18 | 2026-10-22 | 6383 |  | 7 Days Work | 9270894 |
| 6385 | 36900.37000.37100.37300.38000.47500.512700 | Anticapilary | 5d | 2026-10-23 | 2026-10-27 | 6384 |  | 7 Days Work | 9270904 |
| 6386 | 36900.37000.37100.37300.38000.47500.512800 | Stone Laying | 10d | 2026-11-30 | 2026-12-09 | 6426 |  | 7 Days Work | 9270914 |
| 6387 | 36900.37000.37100.37300.38000.47500.512900 | Tiles Laying | 7d | 2026-11-30 | 2026-12-06 | 6426 |  | 7 Days Work | 9270924 |
| 6388 | 36900.37000.37100.37300.38000.47500.513000 | 1st cutting/polishing of stone flooring | 7d | 2026-12-07 | 2026-12-13 | 6387 |  | 7 Days Work | 9270934 |
| 6389 | 36900.37000.37100.37300.38000.47500.513100 | Tiles/Stone skirting | 5d | 2026-12-14 | 2026-12-18 | 6388 |  | 7 Days Work | 9270944 |
| 6390 | 36900.37000.37100.37300.38000.47500.513200 | Protechtion sheet | 1d | 2026-12-19 | 2026-12-19 | 6389 |  | 7 Days Work | 9270954 |
| 6391 | 36900.37000.37100.37300.38000.47500.513300 | Installation of Temporary Door | 1d | 2026-12-20 | 2026-12-20 | 6390 |  | 7 Days Work | 9270964 |
| 6392 | 36900.37000.37100.37300.38000.47500.513400 | Fixing of window tracks | 5d | 2026-12-21 | 2026-12-25 | 6391 |  | 7 Days Work | 9270974 |
| 6393 | 36900.37000.37100.37300.38000.47500.513500 | Wire Pulling | 7d | 2026-12-26 | 2027-01-01 | 6392 |  | 7 Days Work | 9270984 |
| 6394 | 36900.37000.37100.37300.38000.47500.513600 | Gypsum Remaining | 5d | 2027-01-02 | 2027-01-06 | 6393 |  | 7 Days Work | 9270994 |
| 6395 | 36900.37000.37100.37300.38000.47500.513700 | Fixing of windoow shutter | 5d | 2027-01-07 | 2027-01-11 | 6394 |  | 7 Days Work | 9271004 |
| 6396 | 36900.37000.37100.37300.38000.47500.513800 | Putty Works - walls & ceiling | 15d | 2027-01-12 | 2027-01-26 | 6395 |  | 7 Days Work | 9271014 |
| 6397 | 36900.37000.37100.37300.38000.47500.513900 | False Ceiling- Framing | 10d | 2027-01-27 | 2027-02-05 | 6396 |  | 7 Days Work | 9271024 |
| 6398 | 36900.37000.37100.37300.38000.47500.514000 | Pre Hung Door | 3d | 2027-02-06 | 2027-02-08 | 6397 |  | 7 Days Work | 9271034 |
| 6399 | 36900.37000.37100.37300.38000.47500.514100 | Protechtion sheet | 2d | 2027-02-09 | 2027-02-10 | 6398 |  | 7 Days Work | 9271044 |
| 6400 | 36900.37000.37100.37300.38000.47500.514200 | Skirting near door | 2d | 2027-02-11 | 2027-02-12 | 6399 |  | 7 Days Work | 9271054 |
| 6401 | 36900.37000.37100.37300.38000.47500.514300 | Electrical Switch box fixing | 14d | 2027-02-13 | 2027-02-26 | 6400 |  | 7 Days Work | 9271064 |
| 6402 | 36900.37000.37100.37300.38000.47500.514400 | Fire Fighting painting | 5d | 2027-02-27 | 2027-03-03 | 6401 |  | 7 Days Work | 9271074 |
| 6403 | 36900.37000.37100.37300.38000.47500.514500 | Protection of all flooring, door & window hardware | 5d | 2027-03-04 | 2027-03-08 | 6402 |  | 7 Days Work | 9271084 |
| 6404 | 36900.37000.37100.37300.38000.47500.514600 | 1st coat primer- ceiling 1st & walls | 14d | 2027-03-09 | 2027-03-22 | 6403 |  | 7 Days Work | 9271094 |
| 6405 | 36900.37000.37100.37300.38000.47500.514700 | Wooden Flooring | 5d | 2027-03-23 | 2027-03-27 | 6404 |  | 7 Days Work | 9271104 |
| 6406 | 36900.37000.37100.37300.38000.47500.514800 | Removing of Temporary Railing & installation of Glass Railing | 5d | 2027-03-23 | 2027-03-27 | 6404 |  | 7 Days Work | 9271114 |
| 6407 | 36900.37000.37100.37300.38000.47500.514900 | Tile Grouting | 7d | 2027-03-23 | 2027-03-29 | 6404 |  | 7 Days Work | 9271124 |
| 6408 | 36900.37000.37100.37300.38000.47500.515000 | False Ceiling | 5d | 2027-03-30 | 2027-04-03 | 6407 |  | 7 Days Work | 9271134 |
| 6409 | 36900.37000.37100.37300.38000.47500.515100 | 2nd coat of primer | 10d | 2027-04-04 | 2027-04-13 | 6408 |  | 7 Days Work | 9271144 |
| 6410 | 36900.37000.37100.37300.38000.47500.515200 | Final cutting/polishing of stone flooring | 7d | 2027-04-14 | 2027-04-20 | 6409 |  | 7 Days Work | 9271154 |

| ID | WBS | Task | Duration | Start | Finish | Predecessors | Constraint | Calendar | Unique_Task_ID |
| --- | --- | --- | --- | --- | --- | --- | --- | --- | --- |
| 6411 | 36900.37000.37100.37300.38000.47500.61800 | **Toilet** | 237d | 2026-08-26 | 2027-04-19 |  | start no earlier than 2026-08-26 | 7 Days Work | 9265724 |
| 6412 | 36900.37000.37100.37300.38000.47500.61800.930900 | Toilet_MEP Clearance -1 | 7d | 2026-08-26 | 2026-09-01 | 6375 |  | 7 Days Work | 9277984 |
| 6413 | 36900.37000.37100.37300.38000.47500.61800.931000 | Toilet_Level Marking | 1d | 2026-09-02 | 2026-09-02 | 6412 |  | 7 Days Work | 9277994 |
| 6414 | 36900.37000.37100.37300.38000.47500.61800.931100 | Toilet_Chasing work for Electrical conduit & concealed plumbing | 5d | 2026-09-03 | 2026-09-07 | 6413 |  | 7 Days Work | 9278004 |
| 6415 | 36900.37000.37100.37300.38000.47500.61800.931200 | Toilet_Plumbing work 1st fix | 5d | 2026-09-08 | 2026-09-12 | 6414 |  | 7 Days Work | 9278014 |
| 6416 | 36900.37000.37100.37300.38000.47500.61800.931300 | Toilet_Sleeve/Bore Packing | 5d | 2026-09-13 | 2026-09-17 | 6415 |  | 7 Days Work | 9278024 |
| 6417 | 36900.37000.37100.37300.38000.47500.61800.931400 | Toilet_Waterproofing | 10d | 2026-09-18 | 2026-09-27 | 6416 |  | 7 Days Work | 9278034 |
| 6418 | 36900.37000.37100.37300.38000.47500.61800.931500 | Toilet_Screed | 1d | 2026-09-28 | 2026-09-28 | 6417 |  | 7 Days Work | 9278044 |
| 6419 | 36900.37000.37100.37300.38000.47500.61800.931600 | Toilet_Plumbing 2nd fix | 5d | 2026-09-29 | 2026-10-03 | 6418 |  | 7 Days Work | 9278054 |
| 6420 | 36900.37000.37100.37300.38000.47500.61800.931700 | Toilet_Ledge wall | 5d | 2026-10-04 | 2026-10-08 | 6419 |  | 7 Days Work | 9278064 |
| 6421 | 36900.37000.37100.37300.38000.47500.61800.931800 | Toilet_Cement Plaster | 5d | 2026-10-09 | 2026-10-13 | 6420 |  | 7 Days Work | 9278074 |
| 6422 | 36900.37000.37100.37300.38000.47500.61800.931900 | Toilet_Door Frame | 1d | 2026-10-14 | 2026-10-14 | 6421 |  | 7 Days Work | 9278084 |
| 6423 | 36900.37000.37100.37300.38000.47500.61800.932000 | Toilet_Wash basin & Couter | 3d | 2026-10-15 | 2026-10-17 | 6422 |  | 7 Days Work | 9278094 |
| 6424 | 36900.37000.37100.37300.38000.47500.61800.932100 | Toilet_Wall dado | 20d | 2026-10-18 | 2026-11-06 | 6423 |  | 7 Days Work | 9278104 |
| 6425 | 36900.37000.37100.37300.38000.47500.61800.932200 | Toilet_Granite Work-Ledge wall top | 3d | 2026-11-07 | 2026-11-09 | 6424 |  | 7 Days Work | 9278114 |
| 6426 | 36900.37000.37100.37300.38000.47500.61800.932300 | Toilet_Floor Tilling work | 20d | 2026-11-10 | 2026-11-29 | 6425 |  | 7 Days Work | 9278124 |
| 6427 | 36900.37000.37100.37300.38000.47500.61800.932400 | Toilet_1st row of dado | 5d | 2026-11-30 | 2026-12-04 | 6426 |  | 7 Days Work | 9278134 |
| 6428 | 36900.37000.37100.37300.38000.47500.61800.932500 | Toilet_Window Fixing | 14d | 2026-12-05 | 2026-12-18 | 6427 |  | 7 Days Work | 9278144 |
| 6429 | 36900.37000.37100.37300.38000.47500.61800.932600 | Toilet_Services above False ceiling | 21d | 2026-12-19 | 2027-01-08 | 6428 |  | 7 Days Work | 9278154 |
| 6430 | 36900.37000.37100.37300.38000.47500.61800.932700 | Toilet_False Ceiling framing | 12d | 2027-01-09 | 2027-01-20 | 6429 |  | 7 Days Work | 9278164 |
| 6431 | 36900.37000.37100.37300.38000.47500.61800.932800 | Toilet_Door Frame | 5d | 2027-01-21 | 2027-01-25 | 6430 |  | 7 Days Work | 9278174 |
| 6432 | 36900.37000.37100.37300.38000.47500.61800.932900 | Toilet_Epoxy Tile Grouting | 7d | 2027-03-23 | 2027-03-29 | 6407SS |  | 7 Days Work | 9278184 |
| 6433 | 36900.37000.37100.37300.38000.47500.61800.933000 | Toilet_False ceiling board fixing, CP Sanitary Fixture, Electric Fixture | 21d | 2027-03-30 | 2027-04-19 | 6432 |  | 7 Days Work | 9278194 |
| 6434 | 36900.37000.37100.37300.38000.47600 | **15th Habitable/16th Floor** | 245d | 2026-08-31 | 2027-05-02 |  | start no earlier than 2026-08-31 | 7 Days Work | 9265524 |
| 6435 | 36900.37000.37100.37300.38000.47600.515300 | Post Pour | 7d | 2026-08-31 | 2026-09-06 | 5589 |  | 7 Days Work | 9271164 |
| 6436 | 36900.37000.37100.37300.38000.47600.515400 | MEP Clearance -1 | 5d | 2026-09-07 | 2026-09-11 | 6435 |  | 7 Days Work | 9271174 |
| 6437 | 36900.37000.37100.37300.38000.47600.515500 | Benchmark | 1d | 2026-09-12 | 2026-09-12 | 6436 |  | 7 Days Work | 9271184 |
| 6438 | 36900.37000.37100.37300.38000.47600.515600 | Temporary Railing | 3d | 2026-09-13 | 2026-09-15 | 6437 |  | 7 Days Work | 9271194 |
| 6439 | 36900.37000.37100.37300.38000.47600.515700 | Blockwork | 10d | 2026-09-16 | 2026-09-25 | 6438 |  | 7 Days Work | 9271204 |
| 6440 | 36900.37000.37100.37300.38000.47600.515800 | MEP Clearance -2 | 10d | 2026-09-26 | 2026-10-05 | 6439 |  | 7 Days Work | 9271214 |
| 6441 | 36900.37000.37100.37300.38000.47600.515900 | Gypsum Plaster | 14d | 2026-10-06 | 2026-10-19 | 6440 |  | 7 Days Work | 9271224 |
| 6442 | 36900.37000.37100.37300.38000.47600.516000 | Kitchen Platform | 3d | 2026-10-20 | 2026-10-22 | 6441 |  | 7 Days Work | 9271234 |
| 6443 | 36900.37000.37100.37300.38000.47600.516100 | Kitchen dado | 7d | 2026-10-23 | 2026-10-29 | 6442 |  | 7 Days Work | 9271244 |
| 6444 | 36900.37000.37100.37300.38000.47600.516200 | Fire Fighting | 5d | 2026-10-30 | 2026-11-03 | 6443 |  | 7 Days Work | 9271254 |
| 6445 | 36900.37000.37100.37300.38000.47600.516300 | Anticapilary | 5d | 2026-11-04 | 2026-11-08 | 6444 |  | 7 Days Work | 9271264 |
| 6446 | 36900.37000.37100.37300.38000.47600.516400 | Stone Laying | 10d | 2026-12-12 | 2026-12-21 | 6486 |  | 7 Days Work | 9271274 |
| 6447 | 36900.37000.37100.37300.38000.47600.516500 | Tiles Laying | 7d | 2026-12-12 | 2026-12-18 | 6486 |  | 7 Days Work | 9271284 |
| 6448 | 36900.37000.37100.37300.38000.47600.516600 | 1st cutting/polishing of stone flooring | 7d | 2026-12-19 | 2026-12-25 | 6447 |  | 7 Days Work | 9271294 |
| 6449 | 36900.37000.37100.37300.38000.47600.516700 | Tiles/Stone skirting | 5d | 2026-12-26 | 2026-12-30 | 6448 |  | 7 Days Work | 9271304 |
| 6450 | 36900.37000.37100.37300.38000.47600.516800 | Protechtion sheet | 1d | 2026-12-31 | 2026-12-31 | 6449 |  | 7 Days Work | 9271314 |
| 6451 | 36900.37000.37100.37300.38000.47600.516900 | Installation of Temporary Door | 1d | 2027-01-01 | 2027-01-01 | 6450 |  | 7 Days Work | 9271324 |
| 6452 | 36900.37000.37100.37300.38000.47600.517000 | Fixing of window tracks | 5d | 2027-01-02 | 2027-01-06 | 6451 |  | 7 Days Work | 9271334 |
| 6453 | 36900.37000.37100.37300.38000.47600.517100 | Wire Pulling | 7d | 2027-01-07 | 2027-01-13 | 6452 |  | 7 Days Work | 9271344 |
| 6454 | 36900.37000.37100.37300.38000.47600.517200 | Gypsum Remaining | 5d | 2027-01-14 | 2027-01-18 | 6453 |  | 7 Days Work | 9271354 |
| 6455 | 36900.37000.37100.37300.38000.47600.517300 | Fixing of windoow shutter | 5d | 2027-01-19 | 2027-01-23 | 6454 |  | 7 Days Work | 9271364 |
| 6456 | 36900.37000.37100.37300.38000.47600.517400 | Putty Works - walls & ceiling | 15d | 2027-01-24 | 2027-02-07 | 6455 |  | 7 Days Work | 9271374 |
| 6457 | 36900.37000.37100.37300.38000.47600.517500 | False Ceiling- Framing | 10d | 2027-02-08 | 2027-02-17 | 6456 |  | 7 Days Work | 9271384 |
| 6458 | 36900.37000.37100.37300.38000.47600.517600 | Pre Hung Door | 3d | 2027-02-18 | 2027-02-20 | 6457 |  | 7 Days Work | 9271394 |
| 6459 | 36900.37000.37100.37300.38000.47600.517700 | Protechtion sheet | 2d | 2027-02-21 | 2027-02-22 | 6458 |  | 7 Days Work | 9271404 |
| 6460 | 36900.37000.37100.37300.38000.47600.517800 | Skirting near door | 2d | 2027-02-23 | 2027-02-24 | 6459 |  | 7 Days Work | 9271414 |
| 6461 | 36900.37000.37100.37300.38000.47600.517900 | Electrical Switch box fixing | 14d | 2027-02-25 | 2027-03-10 | 6460 |  | 7 Days Work | 9271424 |
| 6462 | 36900.37000.37100.37300.38000.47600.518000 | Fire Fighting painting | 5d | 2027-03-11 | 2027-03-15 | 6461 |  | 7 Days Work | 9271434 |
| 6463 | 36900.37000.37100.37300.38000.47600.518100 | Protection of all flooring, door & window hardware | 5d | 2027-03-16 | 2027-03-20 | 6462 |  | 7 Days Work | 9271444 |
| 6464 | 36900.37000.37100.37300.38000.47600.518200 | 1st coat primer- ceiling 1st & walls | 14d | 2027-03-21 | 2027-04-03 | 6463 |  | 7 Days Work | 9271454 |
| 6465 | 36900.37000.37100.37300.38000.47600.518300 | Wooden Flooring | 5d | 2027-04-04 | 2027-04-08 | 6464 |  | 7 Days Work | 9271464 |
| 6466 | 36900.37000.37100.37300.38000.47600.518400 | Removing of Temporary Railing & installation of Glass Railing | 5d | 2027-04-04 | 2027-04-08 | 6464 |  | 7 Days Work | 9271474 |
| 6467 | 36900.37000.37100.37300.38000.47600.518500 | Tile Grouting | 7d | 2027-04-04 | 2027-04-10 | 6464 |  | 7 Days Work | 9271484 |
| 6468 | 36900.37000.37100.37300.38000.47600.518600 | False Ceiling | 5d | 2027-04-11 | 2027-04-15 | 6467 |  | 7 Days Work | 9271494 |
| 6469 | 36900.37000.37100.37300.38000.47600.518700 | 2nd coat of primer | 10d | 2027-04-16 | 2027-04-25 | 6468 |  | 7 Days Work | 9271504 |
| 6470 | 36900.37000.37100.37300.38000.47600.518800 | Final cutting/polishing of stone flooring | 7d | 2027-04-26 | 2027-05-02 | 6469 |  | 7 Days Work | 9271514 |

| ID | WBS | Task | Duration | Start | Finish | Predecessors | Constraint | Calendar | Unique_Task_ID |
| --- | --- | --- | --- | --- | --- | --- | --- | --- | --- |
| 6471 | 36900.37000.37100.37300.38000.47600.61900 | **Toilet** | 237d | 2026-09-07 | 2027-05-01 |  | start no earlier than 2026-09-07 | 7 Days Work | 9265734 |
| 6472 | 36900.37000.37100.37300.38000.47600.61900.933100 | Toilet_MEP Clearance -1 | 7d | 2026-09-07 | 2026-09-13 | 6435 |  | 7 Days Work | 9278204 |
| 6473 | 36900.37000.37100.37300.38000.47600.61900.933200 | Toilet_Level Marking | 1d | 2026-09-14 | 2026-09-14 | 6472 |  | 7 Days Work | 9278214 |
| 6474 | 36900.37000.37100.37300.38000.47600.61900.933300 | Toilet_Chasing work for Electrical conduit & concealed plumbing | 5d | 2026-09-15 | 2026-09-19 | 6473 |  | 7 Days Work | 9278224 |
| 6475 | 36900.37000.37100.37300.38000.47600.61900.933400 | Toilet_Plumbing work 1st fix | 5d | 2026-09-20 | 2026-09-24 | 6474 |  | 7 Days Work | 9278234 |
| 6476 | 36900.37000.37100.37300.38000.47600.61900.933500 | Toilet_Sleeve/Bore Packing | 5d | 2026-09-25 | 2026-09-29 | 6475 |  | 7 Days Work | 9278244 |
| 6477 | 36900.37000.37100.37300.38000.47600.61900.933600 | Toilet_Waterproofing | 10d | 2026-09-30 | 2026-10-09 | 6476 |  | 7 Days Work | 9278254 |
| 6478 | 36900.37000.37100.37300.38000.47600.61900.933700 | Toilet_Screed | 1d | 2026-10-10 | 2026-10-10 | 6477 |  | 7 Days Work | 9278264 |
| 6479 | 36900.37000.37100.37300.38000.47600.61900.933800 | Toilet_Plumbing 2nd fix | 5d | 2026-10-11 | 2026-10-15 | 6478 |  | 7 Days Work | 9278274 |
| 6480 | 36900.37000.37100.37300.38000.47600.61900.933900 | Toilet_Ledge wall | 5d | 2026-10-16 | 2026-10-20 | 6479 |  | 7 Days Work | 9278284 |
| 6481 | 36900.37000.37100.37300.38000.47600.61900.934000 | Toilet_Cement Plaster | 5d | 2026-10-21 | 2026-10-25 | 6480 |  | 7 Days Work | 9278294 |
| 6482 | 36900.37000.37100.37300.38000.47600.61900.934100 | Toilet_Door Frame | 1d | 2026-10-26 | 2026-10-26 | 6481 |  | 7 Days Work | 9278304 |
| 6483 | 36900.37000.37100.37300.38000.47600.61900.934200 | Toilet_Wash basin & Couter | 3d | 2026-10-27 | 2026-10-29 | 6482 |  | 7 Days Work | 9278314 |
| 6484 | 36900.37000.37100.37300.38000.47600.61900.934300 | Toilet_Wall dado | 20d | 2026-10-30 | 2026-11-18 | 6483 |  | 7 Days Work | 9278324 |
| 6485 | 36900.37000.37100.37300.38000.47600.61900.934400 | Toilet_Granite Work-Ledge wall top | 3d | 2026-11-19 | 2026-11-21 | 6484 |  | 7 Days Work | 9278334 |
| 6486 | 36900.37000.37100.37300.38000.47600.61900.934500 | Toilet_Floor Tilling work | 20d | 2026-11-22 | 2026-12-11 | 6485 |  | 7 Days Work | 9278344 |
| 6487 | 36900.37000.37100.37300.38000.47600.61900.934600 | Toilet_1st row of dado | 5d | 2026-12-12 | 2026-12-16 | 6486 |  | 7 Days Work | 9278354 |
| 6488 | 36900.37000.37100.37300.38000.47600.61900.934700 | Toilet_Window Fixing | 14d | 2026-12-17 | 2026-12-30 | 6487 |  | 7 Days Work | 9278364 |
| 6489 | 36900.37000.37100.37300.38000.47600.61900.934800 | Toilet_Services above False ceiling | 21d | 2026-12-31 | 2027-01-20 | 6488 |  | 7 Days Work | 9278374 |
| 6490 | 36900.37000.37100.37300.38000.47600.61900.934900 | Toilet_False Ceiling framing | 12d | 2027-01-21 | 2027-02-01 | 6489 |  | 7 Days Work | 9278384 |
| 6491 | 36900.37000.37100.37300.38000.47600.61900.935000 | Toilet_Door Frame | 5d | 2027-02-02 | 2027-02-06 | 6490 |  | 7 Days Work | 9278394 |
| 6492 | 36900.37000.37100.37300.38000.47600.61900.935100 | Toilet_Epoxy Tile Grouting | 7d | 2027-04-04 | 2027-04-10 | 6467SS |  | 7 Days Work | 9278404 |
| 6493 | 36900.37000.37100.37300.38000.47600.61900.935200 | Toilet_False ceiling board fixing, CP Sanitary Fixture, Electric Fixture | 21d | 2027-04-11 | 2027-05-01 | 6492 |  | 7 Days Work | 9278414 |
| 6494 | 36900.37000.37100.37300.38000.47700 | **16th Habitable/17th Floor** | 245d | 2026-09-12 | 2027-05-14 |  | start no earlier than 2026-09-12 | 7 Days Work | 9265534 |
| 6495 | 36900.37000.37100.37300.38000.47700.518900 | Post Pour | 7d | 2026-09-12 | 2026-09-18 | 5590 |  | 7 Days Work | 9271524 |
| 6496 | 36900.37000.37100.37300.38000.47700.519000 | MEP Clearance -1 | 5d | 2026-09-19 | 2026-09-23 | 6495 |  | 7 Days Work | 9271534 |
| 6497 | 36900.37000.37100.37300.38000.47700.519100 | Benchmark | 1d | 2026-09-24 | 2026-09-24 | 6496 |  | 7 Days Work | 9271544 |
| 6498 | 36900.37000.37100.37300.38000.47700.519200 | Temporary Railing | 3d | 2026-09-25 | 2026-09-27 | 6497 |  | 7 Days Work | 9271554 |
| 6499 | 36900.37000.37100.37300.38000.47700.519300 | Blockwork | 10d | 2026-09-28 | 2026-10-07 | 6498 |  | 7 Days Work | 9271564 |
| 6500 | 36900.37000.37100.37300.38000.47700.519400 | MEP Clearance -2 | 10d | 2026-10-08 | 2026-10-17 | 6499 |  | 7 Days Work | 9271574 |
| 6501 | 36900.37000.37100.37300.38000.47700.519500 | Gypsum Plaster | 14d | 2026-10-18 | 2026-10-31 | 6500 |  | 7 Days Work | 9271584 |
| 6502 | 36900.37000.37100.37300.38000.47700.519600 | Kitchen Platform | 3d | 2026-11-01 | 2026-11-03 | 6501 |  | 7 Days Work | 9271594 |
| 6503 | 36900.37000.37100.37300.38000.47700.519700 | Kitchen dado | 7d | 2026-11-04 | 2026-11-10 | 6502 |  | 7 Days Work | 9271604 |
| 6504 | 36900.37000.37100.37300.38000.47700.519800 | Fire Fighting | 5d | 2026-11-11 | 2026-11-15 | 6503 |  | 7 Days Work | 9271614 |
| 6505 | 36900.37000.37100.37300.38000.47700.519900 | Anticapilary | 5d | 2026-11-16 | 2026-11-20 | 6504 |  | 7 Days Work | 9271624 |
| 6506 | 36900.37000.37100.37300.38000.47700.520000 | Stone Laying | 10d | 2026-12-24 | 2027-01-02 | 6546 |  | 7 Days Work | 9271634 |
| 6507 | 36900.37000.37100.37300.38000.47700.520100 | Tiles Laying | 7d | 2026-12-24 | 2026-12-30 | 6546 |  | 7 Days Work | 9271644 |
| 6508 | 36900.37000.37100.37300.38000.47700.520200 | 1st cutting/polishing of stone flooring | 7d | 2026-12-31 | 2027-01-06 | 6507 |  | 7 Days Work | 9271654 |
| 6509 | 36900.37000.37100.37300.38000.47700.520300 | Tiles/Stone skirting | 5d | 2027-01-07 | 2027-01-11 | 6508 |  | 7 Days Work | 9271664 |
| 6510 | 36900.37000.37100.37300.38000.47700.520400 | Protechtion sheet | 1d | 2027-01-12 | 2027-01-12 | 6509 |  | 7 Days Work | 9271674 |
| 6511 | 36900.37000.37100.37300.38000.47700.520500 | Installation of Temporary Door | 1d | 2027-01-13 | 2027-01-13 | 6510 |  | 7 Days Work | 9271684 |
| 6512 | 36900.37000.37100.37300.38000.47700.520600 | Fixing of window tracks | 5d | 2027-01-14 | 2027-01-18 | 6511 |  | 7 Days Work | 9271694 |
| 6513 | 36900.37000.37100.37300.38000.47700.520700 | Wire Pulling | 7d | 2027-01-19 | 2027-01-25 | 6512 |  | 7 Days Work | 9271704 |
| 6514 | 36900.37000.37100.37300.38000.47700.520800 | Gypsum Remaining | 5d | 2027-01-26 | 2027-01-30 | 6513 |  | 7 Days Work | 9271714 |
| 6515 | 36900.37000.37100.37300.38000.47700.520900 | Fixing of windoow shutter | 5d | 2027-01-31 | 2027-02-04 | 6514 |  | 7 Days Work | 9271724 |
| 6516 | 36900.37000.37100.37300.38000.47700.521000 | Putty Works - walls & ceiling | 15d | 2027-02-05 | 2027-02-19 | 6515 |  | 7 Days Work | 9271734 |
| 6517 | 36900.37000.37100.37300.38000.47700.521100 | False Ceiling- Framing | 10d | 2027-02-20 | 2027-03-01 | 6516 |  | 7 Days Work | 9271744 |
| 6518 | 36900.37000.37100.37300.38000.47700.521200 | Pre Hung Door | 3d | 2027-03-02 | 2027-03-04 | 6517 |  | 7 Days Work | 9271754 |
| 6519 | 36900.37000.37100.37300.38000.47700.521300 | Protechtion sheet | 2d | 2027-03-05 | 2027-03-06 | 6518 |  | 7 Days Work | 9271764 |
| 6520 | 36900.37000.37100.37300.38000.47700.521400 | Skirting near door | 2d | 2027-03-07 | 2027-03-08 | 6519 |  | 7 Days Work | 9271774 |
| 6521 | 36900.37000.37100.37300.38000.47700.521500 | Electrical Switch box fixing | 14d | 2027-03-09 | 2027-03-22 | 6520 |  | 7 Days Work | 9271784 |
| 6522 | 36900.37000.37100.37300.38000.47700.521600 | Fire Fighting painting | 5d | 2027-03-23 | 2027-03-27 | 6521 |  | 7 Days Work | 9271794 |
| 6523 | 36900.37000.37100.37300.38000.47700.521700 | Protection of all flooring, door & window hardware | 5d | 2027-03-28 | 2027-04-01 | 6522 |  | 7 Days Work | 9271804 |
| 6524 | 36900.37000.37100.37300.38000.47700.521800 | 1st coat primer- ceiling 1st & walls | 14d | 2027-04-02 | 2027-04-15 | 6523 |  | 7 Days Work | 9271814 |
| 6525 | 36900.37000.37100.37300.38000.47700.521900 | Wooden Flooring | 5d | 2027-04-16 | 2027-04-20 | 6524 |  | 7 Days Work | 9271824 |
| 6526 | 36900.37000.37100.37300.38000.47700.522000 | Removing of Temporary Railing & installation of Glass Railing | 5d | 2027-04-16 | 2027-04-20 | 6524 |  | 7 Days Work | 9271834 |
| 6527 | 36900.37000.37100.37300.38000.47700.522100 | Tile Grouting | 7d | 2027-04-16 | 2027-04-22 | 6524 |  | 7 Days Work | 9271844 |
| 6528 | 36900.37000.37100.37300.38000.47700.522200 | False Ceiling | 5d | 2027-04-23 | 2027-04-27 | 6527 |  | 7 Days Work | 9271854 |
| 6529 | 36900.37000.37100.37300.38000.47700.522300 | 2nd coat of primer | 10d | 2027-04-28 | 2027-05-07 | 6528 |  | 7 Days Work | 9271864 |
| 6530 | 36900.37000.37100.37300.38000.47700.522400 | Final cutting/polishing of stone flooring | 7d | 2027-05-08 | 2027-05-14 | 6529 |  | 7 Days Work | 9271874 |

| ID | WBS | Task | Duration | Start | Finish | Predecessors | Constraint | Calendar | Unique_Task_ID |
| --- | --- | --- | --- | --- | --- | --- | --- | --- | --- |
| 6531 | 36900.37000.37100.37300.38000.47700.62000 | **Toilet** | 237d | 2026-09-19 | 2027-05-13 |  | start no earlier than 2026-09-19 | 7 Days Work | 9265744 |
| 6532 | 36900.37000.37100.37300.38000.47700.62000.935300 | Toilet_MEP Clearance -1 | 7d | 2026-09-19 | 2026-09-25 | 6495 |  | 7 Days Work | 9278424 |
| 6533 | 36900.37000.37100.37300.38000.47700.62000.935400 | Toilet_Level Marking | 1d | 2026-09-26 | 2026-09-26 | 6532 |  | 7 Days Work | 9278434 |
| 6534 | 36900.37000.37100.37300.38000.47700.62000.935500 | Toilet_Chasing work for Electrical conduit & concealed plumbing | 5d | 2026-09-27 | 2026-10-01 | 6533 |  | 7 Days Work | 9278444 |
| 6535 | 36900.37000.37100.37300.38000.47700.62000.935600 | Toilet_Plumbing work 1st fix | 5d | 2026-10-02 | 2026-10-06 | 6534 |  | 7 Days Work | 9278454 |
| 6536 | 36900.37000.37100.37300.38000.47700.62000.935700 | Toilet_Sleeve/Bore Packing | 5d | 2026-10-07 | 2026-10-11 | 6535 |  | 7 Days Work | 9278464 |
| 6537 | 36900.37000.37100.37300.38000.47700.62000.935800 | Toilet_Waterproofing | 10d | 2026-10-12 | 2026-10-21 | 6536 |  | 7 Days Work | 9278474 |
| 6538 | 36900.37000.37100.37300.38000.47700.62000.935900 | Toilet_Screed | 1d | 2026-10-22 | 2026-10-22 | 6537 |  | 7 Days Work | 9278484 |
| 6539 | 36900.37000.37100.37300.38000.47700.62000.936000 | Toilet_Plumbing 2nd fix | 5d | 2026-10-23 | 2026-10-27 | 6538 |  | 7 Days Work | 9278494 |
| 6540 | 36900.37000.37100.37300.38000.47700.62000.936100 | Toilet_Ledge wall | 5d | 2026-10-28 | 2026-11-01 | 6539 |  | 7 Days Work | 9278504 |
| 6541 | 36900.37000.37100.37300.38000.47700.62000.936200 | Toilet_Cement Plaster | 5d | 2026-11-02 | 2026-11-06 | 6540 |  | 7 Days Work | 9278514 |
| 6542 | 36900.37000.37100.37300.38000.47700.62000.936300 | Toilet_Door Frame | 1d | 2026-11-07 | 2026-11-07 | 6541 |  | 7 Days Work | 9278524 |
| 6543 | 36900.37000.37100.37300.38000.47700.62000.936400 | Toilet_Wash basin & Couter | 3d | 2026-11-08 | 2026-11-10 | 6542 |  | 7 Days Work | 9278534 |
| 6544 | 36900.37000.37100.37300.38000.47700.62000.936500 | Toilet_Wall dado | 20d | 2026-11-11 | 2026-11-30 | 6543 |  | 7 Days Work | 9278544 |
| 6545 | 36900.37000.37100.37300.38000.47700.62000.936600 | Toilet_Granite Work-Ledge wall top | 3d | 2026-12-01 | 2026-12-03 | 6544 |  | 7 Days Work | 9278554 |
| 6546 | 36900.37000.37100.37300.38000.47700.62000.936700 | Toilet_Floor Tilling work | 20d | 2026-12-04 | 2026-12-23 | 6545 |  | 7 Days Work | 9278564 |
| 6547 | 36900.37000.37100.37300.38000.47700.62000.936800 | Toilet_1st row of dado | 5d | 2026-12-24 | 2026-12-28 | 6546 |  | 7 Days Work | 9278574 |
| 6548 | 36900.37000.37100.37300.38000.47700.62000.936900 | Toilet_Window Fixing | 14d | 2026-12-29 | 2027-01-11 | 6547 |  | 7 Days Work | 9278584 |
| 6549 | 36900.37000.37100.37300.38000.47700.62000.937000 | Toilet_Services above False ceiling | 21d | 2027-01-12 | 2027-02-01 | 6548 |  | 7 Days Work | 9278594 |
| 6550 | 36900.37000.37100.37300.38000.47700.62000.937100 | Toilet_False Ceiling framing | 12d | 2027-02-02 | 2027-02-13 | 6549 |  | 7 Days Work | 9278604 |
| 6551 | 36900.37000.37100.37300.38000.47700.62000.937200 | Toilet_Door Frame | 5d | 2027-02-14 | 2027-02-18 | 6550 |  | 7 Days Work | 9278614 |
| 6552 | 36900.37000.37100.37300.38000.47700.62000.937300 | Toilet_Epoxy Tile Grouting | 7d | 2027-04-16 | 2027-04-22 | 6527SS |  | 7 Days Work | 9278624 |
| 6553 | 36900.37000.37100.37300.38000.47700.62000.937400 | Toilet_False ceiling board fixing, CP Sanitary Fixture, Electric Fixture | 21d | 2027-04-23 | 2027-05-13 | 6552 |  | 7 Days Work | 9278634 |
| 6554 | 36900.37000.37100.37300.38000.47800 | **17th Habitable/18th Floor** | 245d | 2026-09-24 | 2027-05-26 |  | start no earlier than 2026-09-24 | 7 Days Work | 9265544 |
| 6555 | 36900.37000.37100.37300.38000.47800.522500 | Post Pour | 7d | 2026-09-24 | 2026-09-30 | 5591 |  | 7 Days Work | 9271884 |
| 6556 | 36900.37000.37100.37300.38000.47800.522600 | MEP Clearance -1 | 5d | 2026-10-01 | 2026-10-05 | 6555 |  | 7 Days Work | 9271894 |
| 6557 | 36900.37000.37100.37300.38000.47800.522700 | Benchmark | 1d | 2026-10-06 | 2026-10-06 | 6556 |  | 7 Days Work | 9271904 |
| 6558 | 36900.37000.37100.37300.38000.47800.522800 | Temporary Railing | 3d | 2026-10-07 | 2026-10-09 | 6557 |  | 7 Days Work | 9271914 |
| 6559 | 36900.37000.37100.37300.38000.47800.522900 | Blockwork | 10d | 2026-10-10 | 2026-10-19 | 6558 |  | 7 Days Work | 9271924 |
| 6560 | 36900.37000.37100.37300.38000.47800.523000 | MEP Clearance -2 | 10d | 2026-10-20 | 2026-10-29 | 6559 |  | 7 Days Work | 9271934 |
| 6561 | 36900.37000.37100.37300.38000.47800.523100 | Gypsum Plaster | 14d | 2026-10-30 | 2026-11-12 | 6560 |  | 7 Days Work | 9271944 |
| 6562 | 36900.37000.37100.37300.38000.47800.523200 | Kitchen Platform | 3d | 2026-11-13 | 2026-11-15 | 6561 |  | 7 Days Work | 9271954 |
| 6563 | 36900.37000.37100.37300.38000.47800.523300 | Kitchen dado | 7d | 2026-11-16 | 2026-11-22 | 6562 |  | 7 Days Work | 9271964 |
| 6564 | 36900.37000.37100.37300.38000.47800.523400 | Fire Fighting | 5d | 2026-11-23 | 2026-11-27 | 6563 |  | 7 Days Work | 9271974 |
| 6565 | 36900.37000.37100.37300.38000.47800.523500 | Anticapilary | 5d | 2026-11-28 | 2026-12-02 | 6564 |  | 7 Days Work | 9271984 |
| 6566 | 36900.37000.37100.37300.38000.47800.523600 | Stone Laying | 10d | 2027-01-05 | 2027-01-14 | 6606 |  | 7 Days Work | 9271994 |
| 6567 | 36900.37000.37100.37300.38000.47800.523700 | Tiles Laying | 7d | 2027-01-05 | 2027-01-11 | 6606 |  | 7 Days Work | 9272004 |
| 6568 | 36900.37000.37100.37300.38000.47800.523800 | 1st cutting/polishing of stone flooring | 7d | 2027-01-12 | 2027-01-18 | 6567 |  | 7 Days Work | 9272014 |
| 6569 | 36900.37000.37100.37300.38000.47800.523900 | Tiles/Stone skirting | 5d | 2027-01-19 | 2027-01-23 | 6568 |  | 7 Days Work | 9272024 |
| 6570 | 36900.37000.37100.37300.38000.47800.524000 | Protechtion sheet | 1d | 2027-01-24 | 2027-01-24 | 6569 |  | 7 Days Work | 9272034 |
| 6571 | 36900.37000.37100.37300.38000.47800.524100 | Installation of Temporary Door | 1d | 2027-01-25 | 2027-01-25 | 6570 |  | 7 Days Work | 9272044 |
| 6572 | 36900.37000.37100.37300.38000.47800.524200 | Fixing of window tracks | 5d | 2027-01-26 | 2027-01-30 | 6571 |  | 7 Days Work | 9272054 |
| 6573 | 36900.37000.37100.37300.38000.47800.524300 | Wire Pulling | 7d | 2027-01-31 | 2027-02-06 | 6572 |  | 7 Days Work | 9272064 |
| 6574 | 36900.37000.37100.37300.38000.47800.524400 | Gypsum Remaining | 5d | 2027-02-07 | 2027-02-11 | 6573 |  | 7 Days Work | 9272074 |
| 6575 | 36900.37000.37100.37300.38000.47800.524500 | Fixing of windoow shutter | 5d | 2027-02-12 | 2027-02-16 | 6574 |  | 7 Days Work | 9272084 |
| 6576 | 36900.37000.37100.37300.38000.47800.524600 | Putty Works - walls & ceiling | 15d | 2027-02-17 | 2027-03-03 | 6575 |  | 7 Days Work | 9272094 |
| 6577 | 36900.37000.37100.37300.38000.47800.524700 | False Ceiling- Framing | 10d | 2027-03-04 | 2027-03-13 | 6576 |  | 7 Days Work | 9272104 |
| 6578 | 36900.37000.37100.37300.38000.47800.524800 | Pre Hung Door | 3d | 2027-03-14 | 2027-03-16 | 6577 |  | 7 Days Work | 9272114 |
| 6579 | 36900.37000.37100.37300.38000.47800.524900 | Protechtion sheet | 2d | 2027-03-17 | 2027-03-18 | 6578 |  | 7 Days Work | 9272124 |
| 6580 | 36900.37000.37100.37300.38000.47800.525000 | Skirting near door | 2d | 2027-03-19 | 2027-03-20 | 6579 |  | 7 Days Work | 9272134 |
| 6581 | 36900.37000.37100.37300.38000.47800.525100 | Electrical Switch box fixing | 14d | 2027-03-21 | 2027-04-03 | 6580 |  | 7 Days Work | 9272144 |
| 6582 | 36900.37000.37100.37300.38000.47800.525200 | Fire Fighting painting | 5d | 2027-04-04 | 2027-04-08 | 6581 |  | 7 Days Work | 9272154 |
| 6583 | 36900.37000.37100.37300.38000.47800.525300 | Protection of all flooring, door & window hardware | 5d | 2027-04-09 | 2027-04-13 | 6582 |  | 7 Days Work | 9272164 |
| 6584 | 36900.37000.37100.37300.38000.47800.525400 | 1st coat primer- ceiling 1st & walls | 14d | 2027-04-14 | 2027-04-27 | 6583 |  | 7 Days Work | 9272174 |
| 6585 | 36900.37000.37100.37300.38000.47800.525500 | Wooden Flooring | 5d | 2027-04-28 | 2027-05-02 | 6584 |  | 7 Days Work | 9272184 |
| 6586 | 36900.37000.37100.37300.38000.47800.525600 | Removing of Temporary Railing & installation of Glass Railing | 5d | 2027-04-28 | 2027-05-02 | 6584 |  | 7 Days Work | 9272194 |
| 6587 | 36900.37000.37100.37300.38000.47800.525700 | Tile Grouting | 7d | 2027-04-28 | 2027-05-04 | 6584 |  | 7 Days Work | 9272204 |
| 6588 | 36900.37000.37100.37300.38000.47800.525800 | False Ceiling | 5d | 2027-05-05 | 2027-05-09 | 6587 |  | 7 Days Work | 9272214 |
| 6589 | 36900.37000.37100.37300.38000.47800.525900 | 2nd coat of primer | 10d | 2027-05-10 | 2027-05-19 | 6588 |  | 7 Days Work | 9272224 |
| 6590 | 36900.37000.37100.37300.38000.47800.526000 | Final cutting/polishing of stone flooring | 7d | 2027-05-20 | 2027-05-26 | 6589 |  | 7 Days Work | 9272234 |

| ID | WBS | Task | Duration | Start | Finish | Predecessors | Constraint | Calendar | Unique_Task_ID |
| --- | --- | --- | --- | --- | --- | --- | --- | --- | --- |
| 6591 | 36900.37000.37100.37300.38000.47800.62100 | **Toilet** | 237d | 2026-10-01 | 2027-05-25 |  | start no earlier than 2026-10-01 | 7 Days Work | 9265754 |
| 6592 | 36900.37000.37100.37300.38000.47800.62100.937500 | Toilet_MEP Clearance -1 | 7d | 2026-10-01 | 2026-10-07 | 6555 |  | 7 Days Work | 9278644 |
| 6593 | 36900.37000.37100.37300.38000.47800.62100.937600 | Toilet_Level Marking | 1d | 2026-10-08 | 2026-10-08 | 6592 |  | 7 Days Work | 9278654 |
| 6594 | 36900.37000.37100.37300.38000.47800.62100.937700 | Toilet_Chasing work for Electrical conduit & concealed plumbing | 5d | 2026-10-09 | 2026-10-13 | 6593 |  | 7 Days Work | 9278664 |
| 6595 | 36900.37000.37100.37300.38000.47800.62100.937800 | Toilet_Plumbing work 1st fix | 5d | 2026-10-14 | 2026-10-18 | 6594 |  | 7 Days Work | 9278674 |
| 6596 | 36900.37000.37100.37300.38000.47800.62100.937900 | Toilet_Sleeve/Bore Packing | 5d | 2026-10-19 | 2026-10-23 | 6595 |  | 7 Days Work | 9278684 |
| 6597 | 36900.37000.37100.37300.38000.47800.62100.938000 | Toilet_Waterproofing | 10d | 2026-10-24 | 2026-11-02 | 6596 |  | 7 Days Work | 9278694 |
| 6598 | 36900.37000.37100.37300.38000.47800.62100.938100 | Toilet_Screed | 1d | 2026-11-03 | 2026-11-03 | 6597 |  | 7 Days Work | 9278704 |
| 6599 | 36900.37000.37100.37300.38000.47800.62100.938200 | Toilet_Plumbing 2nd fix | 5d | 2026-11-04 | 2026-11-08 | 6598 |  | 7 Days Work | 9278714 |
| 6600 | 36900.37000.37100.37300.38000.47800.62100.938300 | Toilet_Ledge wall | 5d | 2026-11-09 | 2026-11-13 | 6599 |  | 7 Days Work | 9278724 |
| 6601 | 36900.37000.37100.37300.38000.47800.62100.938400 | Toilet_Cement Plaster | 5d | 2026-11-14 | 2026-11-18 | 6600 |  | 7 Days Work | 9278734 |
| 6602 | 36900.37000.37100.37300.38000.47800.62100.938500 | Toilet_Door Frame | 1d | 2026-11-19 | 2026-11-19 | 6601 |  | 7 Days Work | 9278744 |
| 6603 | 36900.37000.37100.37300.38000.47800.62100.938600 | Toilet_Wash basin & Couter | 3d | 2026-11-20 | 2026-11-22 | 6602 |  | 7 Days Work | 9278754 |
| 6604 | 36900.37000.37100.37300.38000.47800.62100.938700 | Toilet_Wall dado | 20d | 2026-11-23 | 2026-12-12 | 6603 |  | 7 Days Work | 9278764 |
| 6605 | 36900.37000.37100.37300.38000.47800.62100.938800 | Toilet_Granite Work-Ledge wall top | 3d | 2026-12-13 | 2026-12-15 | 6604 |  | 7 Days Work | 9278774 |
| 6606 | 36900.37000.37100.37300.38000.47800.62100.938900 | Toilet_Floor Tilling work | 20d | 2026-12-16 | 2027-01-04 | 6605 |  | 7 Days Work | 9278784 |
| 6607 | 36900.37000.37100.37300.38000.47800.62100.939000 | Toilet_1st row of dado | 5d | 2027-01-05 | 2027-01-09 | 6606 |  | 7 Days Work | 9278794 |
| 6608 | 36900.37000.37100.37300.38000.47800.62100.939100 | Toilet_Window Fixing | 14d | 2027-01-10 | 2027-01-23 | 6607 |  | 7 Days Work | 9278804 |
| 6609 | 36900.37000.37100.37300.38000.47800.62100.939200 | Toilet_Services above False ceiling | 21d | 2027-01-24 | 2027-02-13 | 6608 |  | 7 Days Work | 9278814 |
| 6610 | 36900.37000.37100.37300.38000.47800.62100.939300 | Toilet_False Ceiling framing | 12d | 2027-02-14 | 2027-02-25 | 6609 |  | 7 Days Work | 9278824 |
| 6611 | 36900.37000.37100.37300.38000.47800.62100.939400 | Toilet_Door Frame | 5d | 2027-02-26 | 2027-03-02 | 6610 |  | 7 Days Work | 9278834 |
| 6612 | 36900.37000.37100.37300.38000.47800.62100.939500 | Toilet_Epoxy Tile Grouting | 7d | 2027-04-28 | 2027-05-04 | 6587SS |  | 7 Days Work | 9278844 |
| 6613 | 36900.37000.37100.37300.38000.47800.62100.939600 | Toilet_False ceiling board fixing, CP Sanitary Fixture, Electric Fixture | 21d | 2027-05-05 | 2027-05-25 | 6612 |  | 7 Days Work | 9278854 |
| 6614 | 36900.37000.37100.37300.38000.47900 | **18th Habitable/19th Floor** | 245d | 2026-10-01 | 2027-06-02 |  | start no earlier than 2026-10-01 | 7 Days Work | 9265554 |
| 6615 | 36900.37000.37100.37300.38000.47900.526100 | Post Pour | 7d | 2026-10-01 | 2026-10-07 | 6555 |  | 7 Days Work | 9272244 |
| 6616 | 36900.37000.37100.37300.38000.47900.526200 | MEP Clearance -1 | 5d | 2026-10-08 | 2026-10-12 | 6615 |  | 7 Days Work | 9272254 |
| 6617 | 36900.37000.37100.37300.38000.47900.526300 | Benchmark | 1d | 2026-10-13 | 2026-10-13 | 6616 |  | 7 Days Work | 9272264 |
| 6618 | 36900.37000.37100.37300.38000.47900.526400 | Temporary Railing | 3d | 2026-10-14 | 2026-10-16 | 6617 |  | 7 Days Work | 9272274 |
| 6619 | 36900.37000.37100.37300.38000.47900.526500 | Blockwork | 10d | 2026-10-17 | 2026-10-26 | 6618 |  | 7 Days Work | 9272284 |
| 6620 | 36900.37000.37100.37300.38000.47900.526600 | MEP Clearance -2 | 10d | 2026-10-27 | 2026-11-05 | 6619 |  | 7 Days Work | 9272294 |
| 6621 | 36900.37000.37100.37300.38000.47900.526700 | Gypsum Plaster | 14d | 2026-11-06 | 2026-11-19 | 6620 |  | 7 Days Work | 9272304 |
| 6622 | 36900.37000.37100.37300.38000.47900.526800 | Kitchen Platform | 3d | 2026-11-20 | 2026-11-22 | 6621 |  | 7 Days Work | 9272314 |
| 6623 | 36900.37000.37100.37300.38000.47900.526900 | Kitchen dado | 7d | 2026-11-23 | 2026-11-29 | 6622 |  | 7 Days Work | 9272324 |
| 6624 | 36900.37000.37100.37300.38000.47900.527000 | Fire Fighting | 5d | 2026-11-30 | 2026-12-04 | 6623 |  | 7 Days Work | 9272334 |
| 6625 | 36900.37000.37100.37300.38000.47900.527100 | Anticapilary | 5d | 2026-12-05 | 2026-12-09 | 6624 |  | 7 Days Work | 9272344 |
| 6626 | 36900.37000.37100.37300.38000.47900.527200 | Stone Laying | 10d | 2027-01-12 | 2027-01-21 | 6666 |  | 7 Days Work | 9272354 |
| 6627 | 36900.37000.37100.37300.38000.47900.527300 | Tiles Laying | 7d | 2027-01-12 | 2027-01-18 | 6666 |  | 7 Days Work | 9272364 |
| 6628 | 36900.37000.37100.37300.38000.47900.527400 | 1st cutting/polishing of stone flooring | 7d | 2027-01-19 | 2027-01-25 | 6627 |  | 7 Days Work | 9272374 |
| 6629 | 36900.37000.37100.37300.38000.47900.527500 | Tiles/Stone skirting | 5d | 2027-01-26 | 2027-01-30 | 6628 |  | 7 Days Work | 9272384 |
| 6630 | 36900.37000.37100.37300.38000.47900.527600 | Protechtion sheet | 1d | 2027-01-31 | 2027-01-31 | 6629 |  | 7 Days Work | 9272394 |
| 6631 | 36900.37000.37100.37300.38000.47900.527700 | Installation of Temporary Door | 1d | 2027-02-01 | 2027-02-01 | 6630 |  | 7 Days Work | 9272404 |
| 6632 | 36900.37000.37100.37300.38000.47900.527800 | Fixing of window tracks | 5d | 2027-02-02 | 2027-02-06 | 6631 |  | 7 Days Work | 9272414 |
| 6633 | 36900.37000.37100.37300.38000.47900.527900 | Wire Pulling | 7d | 2027-02-07 | 2027-02-13 | 6632 |  | 7 Days Work | 9272424 |
| 6634 | 36900.37000.37100.37300.38000.47900.528000 | Gypsum Remaining | 5d | 2027-02-14 | 2027-02-18 | 6633 |  | 7 Days Work | 9272434 |
| 6635 | 36900.37000.37100.37300.38000.47900.528100 | Fixing of windoow shutter | 5d | 2027-02-19 | 2027-02-23 | 6634 |  | 7 Days Work | 9272444 |
| 6636 | 36900.37000.37100.37300.38000.47900.528200 | Putty Works - walls & ceiling | 15d | 2027-02-24 | 2027-03-10 | 6635 |  | 7 Days Work | 9272454 |
| 6637 | 36900.37000.37100.37300.38000.47900.528300 | False Ceiling- Framing | 10d | 2027-03-11 | 2027-03-20 | 6636 |  | 7 Days Work | 9272464 |
| 6638 | 36900.37000.37100.37300.38000.47900.528400 | Pre Hung Door | 3d | 2027-03-21 | 2027-03-23 | 6637 |  | 7 Days Work | 9272474 |
| 6639 | 36900.37000.37100.37300.38000.47900.528500 | Protechtion sheet | 2d | 2027-03-24 | 2027-03-25 | 6638 |  | 7 Days Work | 9272484 |
| 6640 | 36900.37000.37100.37300.38000.47900.528600 | Skirting near door | 2d | 2027-03-26 | 2027-03-27 | 6639 |  | 7 Days Work | 9272494 |
| 6641 | 36900.37000.37100.37300.38000.47900.528700 | Electrical Switch box fixing | 14d | 2027-03-28 | 2027-04-10 | 6640 |  | 7 Days Work | 9272504 |
| 6642 | 36900.37000.37100.37300.38000.47900.528800 | Fire Fighting painting | 5d | 2027-04-11 | 2027-04-15 | 6641 |  | 7 Days Work | 9272514 |
| 6643 | 36900.37000.37100.37300.38000.47900.528900 | Protection of all flooring, door & window hardware | 5d | 2027-04-16 | 2027-04-20 | 6642 |  | 7 Days Work | 9272524 |
| 6644 | 36900.37000.37100.37300.38000.47900.529000 | 1st coat primer- ceiling 1st & walls | 14d | 2027-04-21 | 2027-05-04 | 6643 |  | 7 Days Work | 9272534 |
| 6645 | 36900.37000.37100.37300.38000.47900.529100 | Wooden Flooring | 5d | 2027-05-05 | 2027-05-09 | 6644 |  | 7 Days Work | 9272544 |
| 6646 | 36900.37000.37100.37300.38000.47900.529200 | Removing of Temporary Railing & installation of Glass Railing | 5d | 2027-05-05 | 2027-05-09 | 6644 |  | 7 Days Work | 9272554 |
| 6647 | 36900.37000.37100.37300.38000.47900.529300 | Tile Grouting | 7d | 2027-05-05 | 2027-05-11 | 6644 |  | 7 Days Work | 9272564 |
| 6648 | 36900.37000.37100.37300.38000.47900.529400 | False Ceiling | 5d | 2027-05-12 | 2027-05-16 | 6647 |  | 7 Days Work | 9272574 |
| 6649 | 36900.37000.37100.37300.38000.47900.529500 | 2nd coat of primer | 10d | 2027-05-17 | 2027-05-26 | 6648 |  | 7 Days Work | 9272584 |
| 6650 | 36900.37000.37100.37300.38000.47900.529600 | Final cutting/polishing of stone flooring | 7d | 2027-05-27 | 2027-06-02 | 6649 |  | 7 Days Work | 9272594 |

| ID | WBS | Task | Duration | Start | Finish | Predecessors | Constraint | Calendar | Unique_Task_ID |
| --- | --- | --- | --- | --- | --- | --- | --- | --- | --- |
| 6651 | 36900.37000.37100.37300.38000.47900.62200 | **Toilet** | 237d | 2026-10-08 | 2027-06-01 |  | start no earlier than 2026-10-08 | 7 Days Work | 9265764 |
| 6652 | 36900.37000.37100.37300.38000.47900.62200.939700 | Toilet_MEP Clearance -1 | 7d | 2026-10-08 | 2026-10-14 | 6615 |  | 7 Days Work | 9278864 |
| 6653 | 36900.37000.37100.37300.38000.47900.62200.939800 | Toilet_Level Marking | 1d | 2026-10-15 | 2026-10-15 | 6652 |  | 7 Days Work | 9278874 |
| 6654 | 36900.37000.37100.37300.38000.47900.62200.939900 | Toilet_Chasing work for Electrical conduit & concealed plumbing | 5d | 2026-10-16 | 2026-10-20 | 6653 |  | 7 Days Work | 9278884 |
| 6655 | 36900.37000.37100.37300.38000.47900.62200.940000 | Toilet_Plumbing work 1st fix | 5d | 2026-10-21 | 2026-10-25 | 6654 |  | 7 Days Work | 9278894 |
| 6656 | 36900.37000.37100.37300.38000.47900.62200.940100 | Toilet_Sleeve/Bore Packing | 5d | 2026-10-26 | 2026-10-30 | 6655 |  | 7 Days Work | 9278904 |
| 6657 | 36900.37000.37100.37300.38000.47900.62200.940200 | Toilet_Waterproofing | 10d | 2026-10-31 | 2026-11-09 | 6656 |  | 7 Days Work | 9278914 |
| 6658 | 36900.37000.37100.37300.38000.47900.62200.940300 | Toilet_Screed | 1d | 2026-11-10 | 2026-11-10 | 6657 |  | 7 Days Work | 9278924 |
| 6659 | 36900.37000.37100.37300.38000.47900.62200.940400 | Toilet_Plumbing 2nd fix | 5d | 2026-11-11 | 2026-11-15 | 6658 |  | 7 Days Work | 9278934 |
| 6660 | 36900.37000.37100.37300.38000.47900.62200.940500 | Toilet_Ledge wall | 5d | 2026-11-16 | 2026-11-20 | 6659 |  | 7 Days Work | 9278944 |
| 6661 | 36900.37000.37100.37300.38000.47900.62200.940600 | Toilet_Cement Plaster | 5d | 2026-11-21 | 2026-11-25 | 6660 |  | 7 Days Work | 9278954 |
| 6662 | 36900.37000.37100.37300.38000.47900.62200.940700 | Toilet_Door Frame | 1d | 2026-11-26 | 2026-11-26 | 6661 |  | 7 Days Work | 9278964 |
| 6663 | 36900.37000.37100.37300.38000.47900.62200.940800 | Toilet_Wash basin & Couter | 3d | 2026-11-27 | 2026-11-29 | 6662 |  | 7 Days Work | 9278974 |
| 6664 | 36900.37000.37100.37300.38000.47900.62200.940900 | Toilet_Wall dado | 20d | 2026-11-30 | 2026-12-19 | 6663 |  | 7 Days Work | 9278984 |
| 6665 | 36900.37000.37100.37300.38000.47900.62200.941000 | Toilet_Granite Work-Ledge wall top | 3d | 2026-12-20 | 2026-12-22 | 6664 |  | 7 Days Work | 9278994 |
| 6666 | 36900.37000.37100.37300.38000.47900.62200.941100 | Toilet_Floor Tilling work | 20d | 2026-12-23 | 2027-01-11 | 6665 |  | 7 Days Work | 9279004 |
| 6667 | 36900.37000.37100.37300.38000.47900.62200.941200 | Toilet_1st row of dado | 5d | 2027-01-12 | 2027-01-16 | 6666 |  | 7 Days Work | 9279014 |
| 6668 | 36900.37000.37100.37300.38000.47900.62200.941300 | Toilet_Window Fixing | 14d | 2027-01-17 | 2027-01-30 | 6667 |  | 7 Days Work | 9279024 |
| 6669 | 36900.37000.37100.37300.38000.47900.62200.941400 | Toilet_Services above False ceiling | 21d | 2027-01-31 | 2027-02-20 | 6668 |  | 7 Days Work | 9279034 |
| 6670 | 36900.37000.37100.37300.38000.47900.62200.941500 | Toilet_False Ceiling framing | 12d | 2027-02-21 | 2027-03-04 | 6669 |  | 7 Days Work | 9279044 |
| 6671 | 36900.37000.37100.37300.38000.47900.62200.941600 | Toilet_Door Frame | 5d | 2027-03-05 | 2027-03-09 | 6670 |  | 7 Days Work | 9279054 |
| 6672 | 36900.37000.37100.37300.38000.47900.62200.941700 | Toilet_Epoxy Tile Grouting | 7d | 2027-05-05 | 2027-05-11 | 6647SS |  | 7 Days Work | 9279064 |
| 6673 | 36900.37000.37100.37300.38000.47900.62200.941800 | Toilet_False ceiling board fixing, CP Sanitary Fixture, Electric Fixture | 21d | 2027-05-12 | 2027-06-01 | 6672 |  | 7 Days Work | 9279074 |
| 6674 | 36900.37000.37100.37300.38000.48000 | **19th Habitable/20th Floor** | 245d | 2026-10-08 | 2027-06-09 |  | start no earlier than 2026-10-08 | 7 Days Work | 9265564 |
| 6675 | 36900.37000.37100.37300.38000.48000.529700 | Post Pour | 7d | 2026-10-08 | 2026-10-14 | 6615 |  | 7 Days Work | 9272604 |
| 6676 | 36900.37000.37100.37300.38000.48000.529800 | MEP Clearance -1 | 5d | 2026-10-15 | 2026-10-19 | 6675 |  | 7 Days Work | 9272614 |
| 6677 | 36900.37000.37100.37300.38000.48000.529900 | Benchmark | 1d | 2026-10-20 | 2026-10-20 | 6676 |  | 7 Days Work | 9272624 |
| 6678 | 36900.37000.37100.37300.38000.48000.530000 | Temporary Railing | 3d | 2026-10-21 | 2026-10-23 | 6677 |  | 7 Days Work | 9272634 |
| 6679 | 36900.37000.37100.37300.38000.48000.530100 | Blockwork | 10d | 2026-10-24 | 2026-11-02 | 6678 |  | 7 Days Work | 9272644 |
| 6680 | 36900.37000.37100.37300.38000.48000.530200 | MEP Clearance -2 | 10d | 2026-11-03 | 2026-11-12 | 6679 |  | 7 Days Work | 9272654 |
| 6681 | 36900.37000.37100.37300.38000.48000.530300 | Gypsum Plaster | 14d | 2026-11-13 | 2026-11-26 | 6680 |  | 7 Days Work | 9272664 |
| 6682 | 36900.37000.37100.37300.38000.48000.530400 | Kitchen Platform | 3d | 2026-11-27 | 2026-11-29 | 6681 |  | 7 Days Work | 9272674 |
| 6683 | 36900.37000.37100.37300.38000.48000.530500 | Kitchen dado | 7d | 2026-11-30 | 2026-12-06 | 6682 |  | 7 Days Work | 9272684 |
| 6684 | 36900.37000.37100.37300.38000.48000.530600 | Fire Fighting | 5d | 2026-12-07 | 2026-12-11 | 6683 |  | 7 Days Work | 9272694 |
| 6685 | 36900.37000.37100.37300.38000.48000.530700 | Anticapilary | 5d | 2026-12-12 | 2026-12-16 | 6684 |  | 7 Days Work | 9272704 |
| 6686 | 36900.37000.37100.37300.38000.48000.530800 | Stone Laying | 10d | 2027-01-19 | 2027-01-28 | 6726 |  | 7 Days Work | 9272714 |
| 6687 | 36900.37000.37100.37300.38000.48000.530900 | Tiles Laying | 7d | 2027-01-19 | 2027-01-25 | 6726 |  | 7 Days Work | 9272724 |
| 6688 | 36900.37000.37100.37300.38000.48000.531000 | 1st cutting/polishing of stone flooring | 7d | 2027-01-26 | 2027-02-01 | 6687 |  | 7 Days Work | 9272734 |
| 6689 | 36900.37000.37100.37300.38000.48000.531100 | Tiles/Stone skirting | 5d | 2027-02-02 | 2027-02-06 | 6688 |  | 7 Days Work | 9272744 |
| 6690 | 36900.37000.37100.37300.38000.48000.531200 | Protechtion sheet | 1d | 2027-02-07 | 2027-02-07 | 6689 |  | 7 Days Work | 9272754 |
| 6691 | 36900.37000.37100.37300.38000.48000.531300 | Installation of Temporary Door | 1d | 2027-02-08 | 2027-02-08 | 6690 |  | 7 Days Work | 9272764 |
| 6692 | 36900.37000.37100.37300.38000.48000.531400 | Fixing of window tracks | 5d | 2027-02-09 | 2027-02-13 | 6691 |  | 7 Days Work | 9272774 |
| 6693 | 36900.37000.37100.37300.38000.48000.531500 | Wire Pulling | 7d | 2027-02-14 | 2027-02-20 | 6692 |  | 7 Days Work | 9272784 |
| 6694 | 36900.37000.37100.37300.38000.48000.531600 | Gypsum Remaining | 5d | 2027-02-21 | 2027-02-25 | 6693 |  | 7 Days Work | 9272794 |
| 6695 | 36900.37000.37100.37300.38000.48000.531700 | Fixing of windoow shutter | 5d | 2027-02-26 | 2027-03-02 | 6694 |  | 7 Days Work | 9272804 |
| 6696 | 36900.37000.37100.37300.38000.48000.531800 | Putty Works - walls & ceiling | 15d | 2027-03-03 | 2027-03-17 | 6695 |  | 7 Days Work | 9272814 |
| 6697 | 36900.37000.37100.37300.38000.48000.531900 | False Ceiling- Framing | 10d | 2027-03-18 | 2027-03-27 | 6696 |  | 7 Days Work | 9272824 |
| 6698 | 36900.37000.37100.37300.38000.48000.532000 | Pre Hung Door | 3d | 2027-03-28 | 2027-03-30 | 6697 |  | 7 Days Work | 9272834 |
| 6699 | 36900.37000.37100.37300.38000.48000.532100 | Protechtion sheet | 2d | 2027-03-31 | 2027-04-01 | 6698 |  | 7 Days Work | 9272844 |
| 6700 | 36900.37000.37100.37300.38000.48000.532200 | Skirting near door | 2d | 2027-04-02 | 2027-04-03 | 6699 |  | 7 Days Work | 9272854 |
| 6701 | 36900.37000.37100.37300.38000.48000.532300 | Electrical Switch box fixing | 14d | 2027-04-04 | 2027-04-17 | 6700 |  | 7 Days Work | 9272864 |
| 6702 | 36900.37000.37100.37300.38000.48000.532400 | Fire Fighting painting | 5d | 2027-04-18 | 2027-04-22 | 6701 |  | 7 Days Work | 9272874 |
| 6703 | 36900.37000.37100.37300.38000.48000.532500 | Protection of all flooring, door & window hardware | 5d | 2027-04-23 | 2027-04-27 | 6702 |  | 7 Days Work | 9272884 |
| 6704 | 36900.37000.37100.37300.38000.48000.532600 | 1st coat primer- ceiling 1st & walls | 14d | 2027-04-28 | 2027-05-11 | 6703 |  | 7 Days Work | 9272894 |
| 6705 | 36900.37000.37100.37300.38000.48000.532700 | Wooden Flooring | 5d | 2027-05-12 | 2027-05-16 | 6704 |  | 7 Days Work | 9272904 |
| 6706 | 36900.37000.37100.37300.38000.48000.532800 | Removing of Temporary Railing & installation of Glass Railing | 5d | 2027-05-12 | 2027-05-16 | 6704 |  | 7 Days Work | 9272914 |
| 6707 | 36900.37000.37100.37300.38000.48000.532900 | Tile Grouting | 7d | 2027-05-12 | 2027-05-18 | 6704 |  | 7 Days Work | 9272924 |
| 6708 | 36900.37000.37100.37300.38000.48000.533000 | False Ceiling | 5d | 2027-05-19 | 2027-05-23 | 6707 |  | 7 Days Work | 9272934 |
| 6709 | 36900.37000.37100.37300.38000.48000.533100 | 2nd coat of primer | 10d | 2027-05-24 | 2027-06-02 | 6708 |  | 7 Days Work | 9272944 |
| 6710 | 36900.37000.37100.37300.38000.48000.533200 | Final cutting/polishing of stone flooring | 7d | 2027-06-03 | 2027-06-09 | 6709 |  | 7 Days Work | 9272954 |

| ID | WBS | Task | Duration | Start | Finish | Predecessors | Constraint | Calendar | Unique_Task_ID |
| --- | --- | --- | --- | --- | --- | --- | --- | --- | --- |
| 6711 | 36900.37000.37100.37300.38000.48000.62300 | **Toilet** | 237d | 2026-10-15 | 2027-06-08 |  | start no earlier than 2026-10-15 | 7 Days Work | 9265774 |
| 6712 | 36900.37000.37100.37300.38000.48000.62300.941900 | Toilet_MEP Clearance -1 | 7d | 2026-10-15 | 2026-10-21 | 6675 |  | 7 Days Work | 9279084 |
| 6713 | 36900.37000.37100.37300.38000.48000.62300.942000 | Toilet_Level Marking | 1d | 2026-10-22 | 2026-10-22 | 6712 |  | 7 Days Work | 9279094 |
| 6714 | 36900.37000.37100.37300.38000.48000.62300.942100 | Toilet_Chasing work for Electrical conduit & concealed plumbing | 5d | 2026-10-23 | 2026-10-27 | 6713 |  | 7 Days Work | 9279104 |
| 6715 | 36900.37000.37100.37300.38000.48000.62300.942200 | Toilet_Plumbing work 1st fix | 5d | 2026-10-28 | 2026-11-01 | 6714 |  | 7 Days Work | 9279114 |
| 6716 | 36900.37000.37100.37300.38000.48000.62300.942300 | Toilet_Sleeve/Bore Packing | 5d | 2026-11-02 | 2026-11-06 | 6715 |  | 7 Days Work | 9279124 |
| 6717 | 36900.37000.37100.37300.38000.48000.62300.942400 | Toilet_Waterproofing | 10d | 2026-11-07 | 2026-11-16 | 6716 |  | 7 Days Work | 9279134 |
| 6718 | 36900.37000.37100.37300.38000.48000.62300.942500 | Toilet_Screed | 1d | 2026-11-17 | 2026-11-17 | 6717 |  | 7 Days Work | 9279144 |
| 6719 | 36900.37000.37100.37300.38000.48000.62300.942600 | Toilet_Plumbing 2nd fix | 5d | 2026-11-18 | 2026-11-22 | 6718 |  | 7 Days Work | 9279154 |
| 6720 | 36900.37000.37100.37300.38000.48000.62300.942700 | Toilet_Ledge wall | 5d | 2026-11-23 | 2026-11-27 | 6719 |  | 7 Days Work | 9279164 |
| 6721 | 36900.37000.37100.37300.38000.48000.62300.942800 | Toilet_Cement Plaster | 5d | 2026-11-28 | 2026-12-02 | 6720 |  | 7 Days Work | 9279174 |
| 6722 | 36900.37000.37100.37300.38000.48000.62300.942900 | Toilet_Door Frame | 1d | 2026-12-03 | 2026-12-03 | 6721 |  | 7 Days Work | 9279184 |
| 6723 | 36900.37000.37100.37300.38000.48000.62300.943000 | Toilet_Wash basin & Couter | 3d | 2026-12-04 | 2026-12-06 | 6722 |  | 7 Days Work | 9279194 |
| 6724 | 36900.37000.37100.37300.38000.48000.62300.943100 | Toilet_Wall dado | 20d | 2026-12-07 | 2026-12-26 | 6723 |  | 7 Days Work | 9279204 |
| 6725 | 36900.37000.37100.37300.38000.48000.62300.943200 | Toilet_Granite Work-Ledge wall top | 3d | 2026-12-27 | 2026-12-29 | 6724 |  | 7 Days Work | 9279214 |
| 6726 | 36900.37000.37100.37300.38000.48000.62300.943300 | Toilet_Floor Tilling work | 20d | 2026-12-30 | 2027-01-18 | 6725 |  | 7 Days Work | 9279224 |
| 6727 | 36900.37000.37100.37300.38000.48000.62300.943400 | Toilet_1st row of dado | 5d | 2027-01-19 | 2027-01-23 | 6726 |  | 7 Days Work | 9279234 |
| 6728 | 36900.37000.37100.37300.38000.48000.62300.943500 | Toilet_Window Fixing | 14d | 2027-01-24 | 2027-02-06 | 6727 |  | 7 Days Work | 9279244 |
| 6729 | 36900.37000.37100.37300.38000.48000.62300.943600 | Toilet_Services above False ceiling | 21d | 2027-02-07 | 2027-02-27 | 6728 |  | 7 Days Work | 9279254 |
| 6730 | 36900.37000.37100.37300.38000.48000.62300.943700 | Toilet_False Ceiling framing | 12d | 2027-02-28 | 2027-03-11 | 6729 |  | 7 Days Work | 9279264 |
| 6731 | 36900.37000.37100.37300.38000.48000.62300.943800 | Toilet_Door Frame | 5d | 2027-03-12 | 2027-03-16 | 6730 |  | 7 Days Work | 9279274 |
| 6732 | 36900.37000.37100.37300.38000.48000.62300.943900 | Toilet_Epoxy Tile Grouting | 7d | 2027-05-12 | 2027-05-18 | 6707SS |  | 7 Days Work | 9279284 |
| 6733 | 36900.37000.37100.37300.38000.48000.62300.944000 | Toilet_False ceiling board fixing, CP Sanitary Fixture, Electric Fixture | 21d | 2027-05-19 | 2027-06-08 | 6732 |  | 7 Days Work | 9279294 |
| 6734 | 36900.37000.37100.37300.38000.48100 | **19th Habitable/21st Floor** | 245d | 2026-10-15 | 2027-06-16 |  | start no earlier than 2026-10-15 | 7 Days Work | 9265574 |
| 6735 | 36900.37000.37100.37300.38000.48100.533300 | Post Pour | 7d | 2026-10-15 | 2026-10-21 | 6675 |  | 7 Days Work | 9272964 |
| 6736 | 36900.37000.37100.37300.38000.48100.533400 | MEP Clearance -1 | 5d | 2026-10-22 | 2026-10-26 | 6735 |  | 7 Days Work | 9272974 |
| 6737 | 36900.37000.37100.37300.38000.48100.533500 | Benchmark | 1d | 2026-10-27 | 2026-10-27 | 6736 |  | 7 Days Work | 9272984 |
| 6738 | 36900.37000.37100.37300.38000.48100.533600 | Temporary Railing | 3d | 2026-10-28 | 2026-10-30 | 6737 |  | 7 Days Work | 9272994 |
| 6739 | 36900.37000.37100.37300.38000.48100.533700 | Blockwork | 10d | 2026-10-31 | 2026-11-09 | 6738 |  | 7 Days Work | 9273004 |
| 6740 | 36900.37000.37100.37300.38000.48100.533800 | MEP Clearance -2 | 10d | 2026-11-10 | 2026-11-19 | 6739 |  | 7 Days Work | 9273014 |
| 6741 | 36900.37000.37100.37300.38000.48100.533900 | Gypsum Plaster | 14d | 2026-11-20 | 2026-12-03 | 6740 |  | 7 Days Work | 9044494 |
| 6742 | 36900.37000.37100.37300.38000.48100.534000 | Kitchen Platform | 3d | 2026-12-04 | 2026-12-06 | 6741 |  | 7 Days Work | 9273034 |
| 6743 | 36900.37000.37100.37300.38000.48100.534100 | Kitchen dado | 7d | 2026-12-07 | 2026-12-13 | 6742 |  | 7 Days Work | 9273044 |
| 6744 | 36900.37000.37100.37300.38000.48100.534200 | Fire Fighting | 5d | 2026-12-14 | 2026-12-18 | 6743 |  | 7 Days Work | 9273054 |
| 6745 | 36900.37000.37100.37300.38000.48100.534300 | Anticapilary | 5d | 2026-12-19 | 2026-12-23 | 6744 |  | 7 Days Work | 9273064 |
| 6746 | 36900.37000.37100.37300.38000.48100.534400 | Stone Laying | 10d | 2027-01-26 | 2027-02-04 | 6786 |  | 7 Days Work | 9273074 |
| 6747 | 36900.37000.37100.37300.38000.48100.534500 | Tiles Laying | 7d | 2027-01-26 | 2027-02-01 | 6746SS |  | 7 Days Work | 9044504 |
| 6748 | 36900.37000.37100.37300.38000.48100.534600 | 1st cutting/polishing of stone flooring | 7d | 2027-02-02 | 2027-02-08 | 6747 |  | 7 Days Work | 9273094 |
| 6749 | 36900.37000.37100.37300.38000.48100.534700 | Tiles/Stone skirting | 5d | 2027-02-09 | 2027-02-13 | 6748 |  | 7 Days Work | 9273104 |
| 6750 | 36900.37000.37100.37300.38000.48100.534800 | Protechtion sheet | 1d | 2027-02-14 | 2027-02-14 | 6749 |  | 7 Days Work | 9273114 |
| 6751 | 36900.37000.37100.37300.38000.48100.534900 | Installation of Temporary Door | 1d | 2027-02-15 | 2027-02-15 | 6750 |  | 7 Days Work | 9273124 |
| 6752 | 36900.37000.37100.37300.38000.48100.535000 | Fixing of window tracks | 5d | 2027-02-16 | 2027-02-20 | 6751 |  | 7 Days Work | 9273134 |
| 6753 | 36900.37000.37100.37300.38000.48100.535100 | Wire Pulling | 7d | 2027-02-21 | 2027-02-27 | 6752 |  | 7 Days Work | 9273144 |
| 6754 | 36900.37000.37100.37300.38000.48100.535200 | Gypsum Remaining | 5d | 2027-02-28 | 2027-03-04 | 6753 |  | 7 Days Work | 9273154 |
| 6755 | 36900.37000.37100.37300.38000.48100.535300 | Fixing of windoow shutter | 5d | 2027-03-05 | 2027-03-09 | 6754 |  | 7 Days Work | 9273164 |
| 6756 | 36900.37000.37100.37300.38000.48100.535400 | Putty Works - walls & ceiling | 15d | 2027-03-10 | 2027-03-24 | 6755 |  | 7 Days Work | 9273174 |
| 6757 | 36900.37000.37100.37300.38000.48100.535500 | False Ceiling- Framing | 10d | 2027-03-25 | 2027-04-03 | 6756 |  | 7 Days Work | 9273184 |
| 6758 | 36900.37000.37100.37300.38000.48100.535600 | Pre Hung Door | 3d | 2027-04-04 | 2027-04-06 | 6757 |  | 7 Days Work | 9273194 |
| 6759 | 36900.37000.37100.37300.38000.48100.535700 | Protechtion sheet | 2d | 2027-04-07 | 2027-04-08 | 6758 |  | 7 Days Work | 9273204 |
| 6760 | 36900.37000.37100.37300.38000.48100.535800 | Skirting near door | 2d | 2027-04-09 | 2027-04-10 | 6759 |  | 7 Days Work | 9273214 |
| 6761 | 36900.37000.37100.37300.38000.48100.535900 | Electrical Switch box fixing | 14d | 2027-04-11 | 2027-04-24 | 6760 |  | 7 Days Work | 9273224 |
| 6762 | 36900.37000.37100.37300.38000.48100.536000 | Fire Fighting painting | 5d | 2027-04-25 | 2027-04-29 | 6761 |  | 7 Days Work | 9273234 |
| 6763 | 36900.37000.37100.37300.38000.48100.536100 | Protection of all flooring, door & window hardware | 5d | 2027-04-30 | 2027-05-04 | 6762 |  | 7 Days Work | 9273244 |
| 6764 | 36900.37000.37100.37300.38000.48100.536200 | 1st coat primer- ceiling 1st & walls | 14d | 2027-05-05 | 2027-05-18 | 6763 |  | 7 Days Work | 9273254 |
| 6765 | 36900.37000.37100.37300.38000.48100.536300 | Wooden Flooring | 5d | 2027-05-19 | 2027-05-23 | 6764 |  | 7 Days Work | 9273264 |
| 6766 | 36900.37000.37100.37300.38000.48100.536400 | Removing of Temporary Railing & installation of Glass Railing | 5d | 2027-05-19 | 2027-05-23 | 6764 |  | 7 Days Work | 9273274 |
| 6767 | 36900.37000.37100.37300.38000.48100.536500 | Tile Grouting | 7d | 2027-05-19 | 2027-05-25 | 6764 |  | 7 Days Work | 9273284 |
| 6768 | 36900.37000.37100.37300.38000.48100.536600 | False Ceiling | 5d | 2027-05-26 | 2027-05-30 | 6767 |  | 7 Days Work | 9273294 |
| 6769 | 36900.37000.37100.37300.38000.48100.536700 | 2nd coat of primer | 10d | 2027-05-31 | 2027-06-09 | 6768 |  | 7 Days Work | 9273304 |
| 6770 | 36900.37000.37100.37300.38000.48100.536800 | Final cutting/polishing of stone flooring | 7d | 2027-06-10 | 2027-06-16 | 6769 |  | 7 Days Work | 9273314 |

| ID | WBS | Task | Duration | Start | Finish | Predecessors | Constraint | Calendar | Unique_Task_ID |
| --- | --- | --- | --- | --- | --- | --- | --- | --- | --- |
| 6771 | 36900.37000.37100.37300.38000.48100.62400 | **Toilet** | 237d | 2026-10-22 | 2027-06-15 |  | start no earlier than 2026-10-22 | 7 Days Work | 9265784 |
| 6772 | 36900.37000.37100.37300.38000.48100.62400.944100 | Toilet_MEP Clearance -1 | 7d | 2026-10-22 | 2026-10-28 | 6735 |  | 7 Days Work | 9279304 |
| 6773 | 36900.37000.37100.37300.38000.48100.62400.944200 | Toilet_Level Marking | 1d | 2026-10-29 | 2026-10-29 | 6772 |  | 7 Days Work | 9279314 |
| 6774 | 36900.37000.37100.37300.38000.48100.62400.944300 | Toilet_Chasing work for Electrical conduit & concealed plumbing | 5d | 2026-10-30 | 2026-11-03 | 6773 |  | 7 Days Work | 9279324 |
| 6775 | 36900.37000.37100.37300.38000.48100.62400.944400 | Toilet_Plumbing work 1st fix | 5d | 2026-11-04 | 2026-11-08 | 6774 |  | 7 Days Work | 9279334 |
| 6776 | 36900.37000.37100.37300.38000.48100.62400.944500 | Toilet_Sleeve/Bore Packing | 5d | 2026-11-09 | 2026-11-13 | 6775 |  | 7 Days Work | 9279344 |
| 6777 | 36900.37000.37100.37300.38000.48100.62400.944600 | Toilet_Waterproofing | 10d | 2026-11-14 | 2026-11-23 | 6776 |  | 7 Days Work | 9279354 |
| 6778 | 36900.37000.37100.37300.38000.48100.62400.944700 | Toilet_Screed | 1d | 2026-11-24 | 2026-11-24 | 6777 |  | 7 Days Work | 9279364 |
| 6779 | 36900.37000.37100.37300.38000.48100.62400.944800 | Toilet_Plumbing 2nd fix | 5d | 2026-11-25 | 2026-11-29 | 6778 |  | 7 Days Work | 9279374 |
| 6780 | 36900.37000.37100.37300.38000.48100.62400.944900 | Toilet_Ledge wall | 5d | 2026-11-30 | 2026-12-04 | 6779 |  | 7 Days Work | 9279384 |
| 6781 | 36900.37000.37100.37300.38000.48100.62400.945000 | Toilet_Cement Plaster | 5d | 2026-12-05 | 2026-12-09 | 6780 |  | 7 Days Work | 9279394 |
| 6782 | 36900.37000.37100.37300.38000.48100.62400.945100 | Toilet_Door Frame | 1d | 2026-12-10 | 2026-12-10 | 6781 |  | 7 Days Work | 9279404 |
| 6783 | 36900.37000.37100.37300.38000.48100.62400.945200 | Toilet_Wash basin & Couter | 3d | 2026-12-11 | 2026-12-13 | 6782 |  | 7 Days Work | 9279414 |
| 6784 | 36900.37000.37100.37300.38000.48100.62400.945300 | Toilet_Wall dado | 20d | 2026-12-14 | 2027-01-02 | 6783 |  | 7 Days Work | 9279424 |
| 6785 | 36900.37000.37100.37300.38000.48100.62400.945400 | Toilet_Granite Work-Ledge wall top | 3d | 2027-01-03 | 2027-01-05 | 6784 |  | 7 Days Work | 9279434 |
| 6786 | 36900.37000.37100.37300.38000.48100.62400.945500 | Toilet_Floor Tilling work | 20d | 2027-01-06 | 2027-01-25 | 6785 |  | 7 Days Work | 9279444 |
| 6787 | 36900.37000.37100.37300.38000.48100.62400.945600 | Toilet_1st row of dado | 5d | 2027-01-26 | 2027-01-30 | 6786 |  | 7 Days Work | 9279454 |
| 6788 | 36900.37000.37100.37300.38000.48100.62400.945700 | Toilet_Window Fixing | 14d | 2027-01-31 | 2027-02-13 | 6787 |  | 7 Days Work | 9279464 |
| 6789 | 36900.37000.37100.37300.38000.48100.62400.945800 | Toilet_Services above False ceiling | 21d | 2027-02-14 | 2027-03-06 | 6788 |  | 7 Days Work | 9279474 |
| 6790 | 36900.37000.37100.37300.38000.48100.62400.945900 | Toilet_False Ceiling framing | 12d | 2027-03-07 | 2027-03-18 | 6789 |  | 7 Days Work | 9279484 |
| 6791 | 36900.37000.37100.37300.38000.48100.62400.946000 | Toilet_Door Frame | 5d | 2027-03-19 | 2027-03-23 | 6790 |  | 7 Days Work | 9279494 |
| 6792 | 36900.37000.37100.37300.38000.48100.62400.946100 | Toilet_Epoxy Tile Grouting | 7d | 2027-05-19 | 2027-05-25 | 6767SS |  | 7 Days Work | 9279504 |
| 6793 | 36900.37000.37100.37300.38000.48100.62400.946200 | Toilet_False ceiling board fixing, CP Sanitary Fixture, Electric Fixture | 21d | 2027-05-26 | 2027-06-15 | 6792 |  | 7 Days Work | 9279514 |
| 6794 | 36900.37000.37100.37300.52300 | **Common area Finishing** | 329d | 2026-12-10 | 2027-11-03 |  | start no earlier than 2026-12-10 | 7 Days Work | 9265584 |
| 6795 | 36900.37000.37100.37300.52300.75800 | **1st Habitable/2nd Floor** | 158d | 2026-12-10 | 2027-05-16 |  | start no earlier than 2026-12-10 | 7 Days Work | 9265804 |
| 6796 | 36900.37000.37100.37300.52300.75800.536900 | Side blockwork for lift shafts | 9d | 2026-12-10 | 2026-12-18 | 7001 |  | 7 Days Work | 9273324 |
| 6797 | 36900.37000.37100.37300.52300.75800.537000 | Door Threshold for lifts | 6d | 2026-12-19 | 2026-12-24 | 6796 |  | 7 Days Work | 9273334 |
| 6798 | 36900.37000.37100.37300.52300.75800.537100 | Granite Cladding | 10d | 2026-12-25 | 2027-01-03 | 6797 |  | 7 Days Work | 9273344 |
| 6799 | 36900.37000.37100.37300.52300.75800.537200 | MEP Services | 60d | 2027-01-04 | 2027-03-04 | 6798 |  | 7 Days Work | 9273354 |
| 6800 | 36900.37000.37100.37300.52300.75800.537300 | Flooring+Skirting | 20d | 2027-03-05 | 2027-03-24 | 6799 |  | 7 Days Work | 9273364 |
| 6801 | 36900.37000.37100.37300.52300.75800.537400 | Wall finishes | 21d | 2027-03-25 | 2027-04-14 | 6800 |  | 7 Days Work | 9273374 |
| 6802 | 36900.37000.37100.37300.52300.75800.537500 | False Ceiling | 10d | 2027-04-15 | 2027-04-24 | 6801 |  | 7 Days Work | 9273384 |
| 6803 | 36900.37000.37100.37300.52300.75800.537600 | Staircase | 15d | 2027-04-25 | 2027-05-09 | 6802 |  | 7 Days Work | 9273394 |
| 6804 | 36900.37000.37100.37300.52300.75800.537700 | Deep Cleaning | 7d | 2027-05-10 | 2027-05-16 | 6803 |  | 7 Days Work | 9273404 |

| ID | WBS | Task | Duration | Start | Finish | Predecessors | Constraint | Calendar | Unique_Task_ID |
| --- | --- | --- | --- | --- | --- | --- | --- | --- | --- |
| 6805 | 36900.37000.37100.37300.52300.75900 | **2nd Habitable/3rd Floor** | 158d | 2026-12-19 | 2027-05-25 |  | start no earlier than 2026-12-19 | 7 Days Work | 9265814 |
| 6806 | 36900.37000.37100.37300.52300.75900.537800 | Side blockwork for lift shafts | 9d | 2026-12-19 | 2026-12-27 | 6796 |  | 7 Days Work | 9273414 |
| 6807 | 36900.37000.37100.37300.52300.75900.537900 | Door Threshold for lifts | 6d | 2026-12-28 | 2027-01-02 | 6806 |  | 7 Days Work | 9273424 |
| 6808 | 36900.37000.37100.37300.52300.75900.538000 | Granite Cladding | 10d | 2027-01-03 | 2027-01-12 | 6807 |  | 7 Days Work | 9273434 |
| 6809 | 36900.37000.37100.37300.52300.75900.538100 | MEP Services | 60d | 2027-01-13 | 2027-03-13 | 6808 |  | 7 Days Work | 9273444 |
| 6810 | 36900.37000.37100.37300.52300.75900.538200 | Flooring+Skirting | 20d | 2027-03-14 | 2027-04-02 | 6809 |  | 7 Days Work | 9273454 |
| 6811 | 36900.37000.37100.37300.52300.75900.538300 | Wall finishes | 21d | 2027-04-03 | 2027-04-23 | 6810 |  | 7 Days Work | 9273464 |
| 6812 | 36900.37000.37100.37300.52300.75900.538400 | False Ceiling | 10d | 2027-04-24 | 2027-05-03 | 6811 |  | 7 Days Work | 9273474 |
| 6813 | 36900.37000.37100.37300.52300.75900.538500 | Staircase | 15d | 2027-05-04 | 2027-05-18 | 6812 |  | 7 Days Work | 9273484 |
| 6814 | 36900.37000.37100.37300.52300.75900.538600 | Deep Cleaning | 7d | 2027-05-19 | 2027-05-25 | 6813 |  | 7 Days Work | 9273494 |
| 6815 | 36900.37000.37100.37300.52300.76000 | **3rd Habitable/4th Floor** | 158d | 2026-12-28 | 2027-06-03 |  | start no earlier than 2026-12-28 | 7 Days Work | 9265824 |
| 6816 | 36900.37000.37100.37300.52300.76000.538700 | Side blockwork for lift shafts | 9d | 2026-12-28 | 2027-01-05 | 6806 |  | 7 Days Work | 9273504 |
| 6817 | 36900.37000.37100.37300.52300.76000.538800 | Door Threshold for lifts | 6d | 2027-01-06 | 2027-01-11 | 6816 |  | 7 Days Work | 9273514 |
| 6818 | 36900.37000.37100.37300.52300.76000.538900 | Granite Cladding | 10d | 2027-01-12 | 2027-01-21 | 6817 |  | 7 Days Work | 9273524 |
| 6819 | 36900.37000.37100.37300.52300.76000.539000 | MEP Services | 60d | 2027-01-22 | 2027-03-22 | 6818 |  | 7 Days Work | 9273534 |
| 6820 | 36900.37000.37100.37300.52300.76000.539100 | Flooring+Skirting | 20d | 2027-03-23 | 2027-04-11 | 6819 |  | 7 Days Work | 9273544 |
| 6821 | 36900.37000.37100.37300.52300.76000.539200 | Wall finishes | 21d | 2027-04-12 | 2027-05-02 | 6820 |  | 7 Days Work | 9273554 |
| 6822 | 36900.37000.37100.37300.52300.76000.539300 | False Ceiling | 10d | 2027-05-03 | 2027-05-12 | 6821 |  | 7 Days Work | 9273564 |
| 6823 | 36900.37000.37100.37300.52300.76000.539400 | Staircase | 15d | 2027-05-13 | 2027-05-27 | 6822 |  | 7 Days Work | 9273574 |
| 6824 | 36900.37000.37100.37300.52300.76000.539500 | Deep Cleaning | 7d | 2027-05-28 | 2027-06-03 | 6823 |  | 7 Days Work | 9273584 |
| 6825 | 36900.37000.37100.37300.52300.76100 | **4th Habitable/5th Floor** | 158d | 2027-01-06 | 2027-06-12 |  | start no earlier than 2027-01-06 | 7 Days Work | 9265834 |
| 6826 | 36900.37000.37100.37300.52300.76100.539600 | Side blockwork for lift shafts | 9d | 2027-01-06 | 2027-01-14 | 6816 |  | 7 Days Work | 9273594 |
| 6827 | 36900.37000.37100.37300.52300.76100.539700 | Door Threshold for lifts | 6d | 2027-01-15 | 2027-01-20 | 6826 |  | 7 Days Work | 9273604 |
| 6828 | 36900.37000.37100.37300.52300.76100.539800 | Granite Cladding | 10d | 2027-01-21 | 2027-01-30 | 6827 |  | 7 Days Work | 9273614 |
| 6829 | 36900.37000.37100.37300.52300.76100.539900 | MEP Services | 60d | 2027-01-31 | 2027-03-31 | 6828 |  | 7 Days Work | 9273624 |
| 6830 | 36900.37000.37100.37300.52300.76100.540000 | Flooring+Skirting | 20d | 2027-04-01 | 2027-04-20 | 6829 |  | 7 Days Work | 9273634 |
| 6831 | 36900.37000.37100.37300.52300.76100.540100 | Wall finishes | 21d | 2027-04-21 | 2027-05-11 | 6830 |  | 7 Days Work | 9273644 |
| 6832 | 36900.37000.37100.37300.52300.76100.540200 | False Ceiling | 10d | 2027-05-12 | 2027-05-21 | 6831 |  | 7 Days Work | 9273654 |
| 6833 | 36900.37000.37100.37300.52300.76100.540300 | Staircase | 15d | 2027-05-22 | 2027-06-05 | 6832 |  | 7 Days Work | 9273664 |
| 6834 | 36900.37000.37100.37300.52300.76100.540400 | Deep Cleaning | 7d | 2027-06-06 | 2027-06-12 | 6833 |  | 7 Days Work | 9273674 |

| ID | WBS | Task | Duration | Start | Finish | Predecessors | Constraint | Calendar | Unique_Task_ID |
| --- | --- | --- | --- | --- | --- | --- | --- | --- | --- |
| 6835 | 36900.37000.37100.37300.52300.76200 | **5th Habitable/6th Floor** | 158d | 2027-01-15 | 2027-06-21 |  | start no earlier than 2027-01-15 | 7 Days Work | 9265844 |
| 6836 | 36900.37000.37100.37300.52300.76200.540500 | Side blockwork for lift shafts | 9d | 2027-01-15 | 2027-01-23 | 6826 |  | 7 Days Work | 9273684 |
| 6837 | 36900.37000.37100.37300.52300.76200.540600 | Door Threshold for lifts | 6d | 2027-01-24 | 2027-01-29 | 6836 |  | 7 Days Work | 9273694 |
| 6838 | 36900.37000.37100.37300.52300.76200.540700 | Granite Cladding | 10d | 2027-01-30 | 2027-02-08 | 6837 |  | 7 Days Work | 9273704 |
| 6839 | 36900.37000.37100.37300.52300.76200.540800 | MEP Services | 60d | 2027-02-09 | 2027-04-09 | 6838 |  | 7 Days Work | 9273714 |
| 6840 | 36900.37000.37100.37300.52300.76200.540900 | Flooring+Skirting | 20d | 2027-04-10 | 2027-04-29 | 6839 |  | 7 Days Work | 9273724 |
| 6841 | 36900.37000.37100.37300.52300.76200.541000 | Wall finishes | 21d | 2027-04-30 | 2027-05-20 | 6840 |  | 7 Days Work | 9273734 |
| 6842 | 36900.37000.37100.37300.52300.76200.541100 | False Ceiling | 10d | 2027-05-21 | 2027-05-30 | 6841 |  | 7 Days Work | 9273744 |
| 6843 | 36900.37000.37100.37300.52300.76200.541200 | Staircase | 15d | 2027-05-31 | 2027-06-14 | 6842 |  | 7 Days Work | 9273754 |
| 6844 | 36900.37000.37100.37300.52300.76200.541300 | Deep Cleaning | 7d | 2027-06-15 | 2027-06-21 | 6843 |  | 7 Days Work | 9273764 |
| 6845 | 36900.37000.37100.37300.52300.76300 | **6th Habitable/7th Floor** | 158d | 2027-01-24 | 2027-06-30 |  | start no earlier than 2027-01-24 | 7 Days Work | 9265854 |
| 6846 | 36900.37000.37100.37300.52300.76300.541400 | Side blockwork for lift shafts | 9d | 2027-01-24 | 2027-02-01 | 6836 |  | 7 Days Work | 9273774 |
| 6847 | 36900.37000.37100.37300.52300.76300.541500 | Door Threshold for lifts | 6d | 2027-02-02 | 2027-02-07 | 6846 |  | 7 Days Work | 9273784 |
| 6848 | 36900.37000.37100.37300.52300.76300.541600 | Granite Cladding | 10d | 2027-02-08 | 2027-02-17 | 6847 |  | 7 Days Work | 9273794 |
| 6849 | 36900.37000.37100.37300.52300.76300.541700 | MEP Services | 60d | 2027-02-18 | 2027-04-18 | 6848 |  | 7 Days Work | 9273804 |
| 6850 | 36900.37000.37100.37300.52300.76300.541800 | Flooring+Skirting | 20d | 2027-04-19 | 2027-05-08 | 6849 |  | 7 Days Work | 9273814 |
| 6851 | 36900.37000.37100.37300.52300.76300.541900 | Wall finishes | 21d | 2027-05-09 | 2027-05-29 | 6850 |  | 7 Days Work | 9273824 |
| 6852 | 36900.37000.37100.37300.52300.76300.542000 | False Ceiling | 10d | 2027-05-30 | 2027-06-08 | 6851 |  | 7 Days Work | 9273834 |
| 6853 | 36900.37000.37100.37300.52300.76300.542100 | Staircase | 15d | 2027-06-09 | 2027-06-23 | 6852 |  | 7 Days Work | 9273844 |
| 6854 | 36900.37000.37100.37300.52300.76300.542200 | Deep Cleaning | 7d | 2027-06-24 | 2027-06-30 | 6853 |  | 7 Days Work | 9273854 |
| 6855 | 36900.37000.37100.37300.52300.76400 | **7th Habitable/8th Floor** | 158d | 2027-02-02 | 2027-07-09 |  | start no earlier than 2027-02-02 | 7 Days Work | 9265864 |
| 6856 | 36900.37000.37100.37300.52300.76400.542300 | Side blockwork for lift shafts | 9d | 2027-02-02 | 2027-02-10 | 6846 |  | 7 Days Work | 9273864 |
| 6857 | 36900.37000.37100.37300.52300.76400.542400 | Door Threshold for lifts | 6d | 2027-02-11 | 2027-02-16 | 6856 |  | 7 Days Work | 9273874 |
| 6858 | 36900.37000.37100.37300.52300.76400.542500 | Granite Cladding | 10d | 2027-02-17 | 2027-02-26 | 6857 |  | 7 Days Work | 9273884 |
| 6859 | 36900.37000.37100.37300.52300.76400.542600 | MEP Services | 60d | 2027-02-27 | 2027-04-27 | 6858 |  | 7 Days Work | 9273894 |
| 6860 | 36900.37000.37100.37300.52300.76400.542700 | Flooring+Skirting | 20d | 2027-04-28 | 2027-05-17 | 6859 |  | 7 Days Work | 9273904 |
| 6861 | 36900.37000.37100.37300.52300.76400.542800 | Wall finishes | 21d | 2027-05-18 | 2027-06-07 | 6860 |  | 7 Days Work | 9273914 |
| 6862 | 36900.37000.37100.37300.52300.76400.542900 | False Ceiling | 10d | 2027-06-08 | 2027-06-17 | 6861 |  | 7 Days Work | 9273924 |
| 6863 | 36900.37000.37100.37300.52300.76400.543000 | Staircase | 15d | 2027-06-18 | 2027-07-02 | 6862 |  | 7 Days Work | 9273934 |
| 6864 | 36900.37000.37100.37300.52300.76400.543100 | Deep Cleaning | 7d | 2027-07-03 | 2027-07-09 | 6863 |  | 7 Days Work | 9273944 |

| ID | WBS | Task | Duration | Start | Finish | Predecessors | Constraint | Calendar | Unique_Task_ID |
| --- | --- | --- | --- | --- | --- | --- | --- | --- | --- |
| 6865 | 36900.37000.37100.37300.52300.76500 | **8th Habitable/9th Floor** | 158d | 2027-02-11 | 2027-07-18 |  | start no earlier than 2027-02-11 | 7 Days Work | 9265874 |
| 6866 | 36900.37000.37100.37300.52300.76500.543200 | Side blockwork for lift shafts | 9d | 2027-02-11 | 2027-02-19 | 6856 |  | 7 Days Work | 9273954 |
| 6867 | 36900.37000.37100.37300.52300.76500.543300 | Door Threshold for lifts | 6d | 2027-02-20 | 2027-02-25 | 6866 |  | 7 Days Work | 9273964 |
| 6868 | 36900.37000.37100.37300.52300.76500.543400 | Granite Cladding | 10d | 2027-02-26 | 2027-03-07 | 6867 |  | 7 Days Work | 9273974 |
| 6869 | 36900.37000.37100.37300.52300.76500.543500 | MEP Services | 60d | 2027-03-08 | 2027-05-06 | 6868 |  | 7 Days Work | 9273984 |
| 6870 | 36900.37000.37100.37300.52300.76500.543600 | Flooring+Skirting | 20d | 2027-05-07 | 2027-05-26 | 6869 |  | 7 Days Work | 9273994 |
| 6871 | 36900.37000.37100.37300.52300.76500.543700 | Wall finishes | 21d | 2027-05-27 | 2027-06-16 | 6870 |  | 7 Days Work | 9274004 |
| 6872 | 36900.37000.37100.37300.52300.76500.543800 | False Ceiling | 10d | 2027-06-17 | 2027-06-26 | 6871 |  | 7 Days Work | 9274014 |
| 6873 | 36900.37000.37100.37300.52300.76500.543900 | Staircase | 15d | 2027-06-27 | 2027-07-11 | 6872 |  | 7 Days Work | 9274024 |
| 6874 | 36900.37000.37100.37300.52300.76500.544000 | Deep Cleaning | 7d | 2027-07-12 | 2027-07-18 | 6873 |  | 7 Days Work | 9274034 |
| 6875 | 36900.37000.37100.37300.52300.76600 | **9th Habitable/10th Floor** | 158d | 2027-02-20 | 2027-07-27 |  | start no earlier than 2027-02-20 | 7 Days Work | 9265884 |
| 6876 | 36900.37000.37100.37300.52300.76600.544100 | Side blockwork for lift shafts | 9d | 2027-02-20 | 2027-02-28 | 6866 |  | 7 Days Work | 9274044 |
| 6877 | 36900.37000.37100.37300.52300.76600.544200 | Door Threshold for lifts | 6d | 2027-03-01 | 2027-03-06 | 6876 |  | 7 Days Work | 9274054 |
| 6878 | 36900.37000.37100.37300.52300.76600.544300 | Granite Cladding | 10d | 2027-03-07 | 2027-03-16 | 6877 |  | 7 Days Work | 9274064 |
| 6879 | 36900.37000.37100.37300.52300.76600.544400 | MEP Services | 60d | 2027-03-17 | 2027-05-15 | 6878 |  | 7 Days Work | 9274074 |
| 6880 | 36900.37000.37100.37300.52300.76600.544500 | Flooring+Skirting | 20d | 2027-05-16 | 2027-06-04 | 6879 |  | 7 Days Work | 9274084 |
| 6881 | 36900.37000.37100.37300.52300.76600.544600 | Wall finishes | 21d | 2027-06-05 | 2027-06-25 | 6880 |  | 7 Days Work | 9274094 |
| 6882 | 36900.37000.37100.37300.52300.76600.544700 | False Ceiling | 10d | 2027-06-26 | 2027-07-05 | 6881 |  | 7 Days Work | 9274104 |
| 6883 | 36900.37000.37100.37300.52300.76600.544800 | Staircase | 15d | 2027-07-06 | 2027-07-20 | 6882 |  | 7 Days Work | 9274114 |
| 6884 | 36900.37000.37100.37300.52300.76600.544900 | Deep Cleaning | 7d | 2027-07-21 | 2027-07-27 | 6883 |  | 7 Days Work | 9274124 |
| 6885 | 36900.37000.37100.37300.52300.76700 | **10th Habitable/11th Floor** | 158d | 2027-03-01 | 2027-08-05 |  | start no earlier than 2027-03-01 | 7 Days Work | 9265894 |
| 6886 | 36900.37000.37100.37300.52300.76700.545000 | Side blockwork for lift shafts | 9d | 2027-03-01 | 2027-03-09 | 6876 |  | 7 Days Work | 9274134 |
| 6887 | 36900.37000.37100.37300.52300.76700.545100 | Door Threshold for lifts | 6d | 2027-03-10 | 2027-03-15 | 6886 |  | 7 Days Work | 9274144 |
| 6888 | 36900.37000.37100.37300.52300.76700.545200 | Granite Cladding | 10d | 2027-03-16 | 2027-03-25 | 6887 |  | 7 Days Work | 9274154 |
| 6889 | 36900.37000.37100.37300.52300.76700.545300 | MEP Services | 60d | 2027-03-26 | 2027-05-24 | 6888 |  | 7 Days Work | 9274164 |
| 6890 | 36900.37000.37100.37300.52300.76700.545400 | Flooring+Skirting | 20d | 2027-05-25 | 2027-06-13 | 6889 |  | 7 Days Work | 9274174 |
| 6891 | 36900.37000.37100.37300.52300.76700.545500 | Wall finishes | 21d | 2027-06-14 | 2027-07-04 | 6890 |  | 7 Days Work | 9274184 |
| 6892 | 36900.37000.37100.37300.52300.76700.545600 | False Ceiling | 10d | 2027-07-05 | 2027-07-14 | 6891 |  | 7 Days Work | 9274194 |
| 6893 | 36900.37000.37100.37300.52300.76700.545700 | Staircase | 15d | 2027-07-15 | 2027-07-29 | 6892 |  | 7 Days Work | 9274204 |
| 6894 | 36900.37000.37100.37300.52300.76700.545800 | Deep Cleaning | 7d | 2027-07-30 | 2027-08-05 | 6893 |  | 7 Days Work | 9274214 |

| ID | WBS | Task | Duration | Start | Finish | Predecessors | Constraint | Calendar | Unique_Task_ID |
| --- | --- | --- | --- | --- | --- | --- | --- | --- | --- |
| 6895 | 36900.37000.37100.37300.52300.76800 | **11th Habitable/12th Floor** | 158d | 2027-03-10 | 2027-08-14 |  | start no earlier than 2027-03-10 | 7 Days Work | 9265904 |
| 6896 | 36900.37000.37100.37300.52300.76800.545900 | Side blockwork for lift shafts | 9d | 2027-03-10 | 2027-03-18 | 6886 |  | 7 Days Work | 9274224 |
| 6897 | 36900.37000.37100.37300.52300.76800.546000 | Door Threshold for lifts | 6d | 2027-03-19 | 2027-03-24 | 6896 |  | 7 Days Work | 9274234 |
| 6898 | 36900.37000.37100.37300.52300.76800.546100 | Granite Cladding | 10d | 2027-03-25 | 2027-04-03 | 6897 |  | 7 Days Work | 9274244 |
| 6899 | 36900.37000.37100.37300.52300.76800.546200 | MEP Services | 60d | 2027-04-04 | 2027-06-02 | 6898 |  | 7 Days Work | 9274254 |
| 6900 | 36900.37000.37100.37300.52300.76800.546300 | Flooring+Skirting | 20d | 2027-06-03 | 2027-06-22 | 6899 |  | 7 Days Work | 9274264 |
| 6901 | 36900.37000.37100.37300.52300.76800.546400 | Wall finishes | 21d | 2027-06-23 | 2027-07-13 | 6900 |  | 7 Days Work | 9274274 |
| 6902 | 36900.37000.37100.37300.52300.76800.546500 | False Ceiling | 10d | 2027-07-14 | 2027-07-23 | 6901 |  | 7 Days Work | 9274284 |
| 6903 | 36900.37000.37100.37300.52300.76800.546600 | Staircase | 15d | 2027-07-24 | 2027-08-07 | 6902 |  | 7 Days Work | 9274294 |
| 6904 | 36900.37000.37100.37300.52300.76800.546700 | Deep Cleaning | 7d | 2027-08-08 | 2027-08-14 | 6903 |  | 7 Days Work | 9274304 |
| 6905 | 36900.37000.37100.37300.52300.76900 | **12th Habitable/13th Floor** | 158d | 2027-03-19 | 2027-08-23 |  | start no earlier than 2027-03-19 | 7 Days Work | 9265914 |
| 6906 | 36900.37000.37100.37300.52300.76900.546800 | Side blockwork for lift shafts | 9d | 2027-03-19 | 2027-03-27 | 6896 |  | 7 Days Work | 9274314 |
| 6907 | 36900.37000.37100.37300.52300.76900.546900 | Door Threshold for lifts | 6d | 2027-03-28 | 2027-04-02 | 6906 |  | 7 Days Work | 9274324 |
| 6908 | 36900.37000.37100.37300.52300.76900.547000 | Granite Cladding | 10d | 2027-04-03 | 2027-04-12 | 6907 |  | 7 Days Work | 9274334 |
| 6909 | 36900.37000.37100.37300.52300.76900.547100 | MEP Services | 60d | 2027-04-13 | 2027-06-11 | 6908 |  | 7 Days Work | 9274344 |
| 6910 | 36900.37000.37100.37300.52300.76900.547200 | Flooring+Skirting | 20d | 2027-06-12 | 2027-07-01 | 6909 |  | 7 Days Work | 9274354 |
| 6911 | 36900.37000.37100.37300.52300.76900.547300 | Wall finishes | 21d | 2027-07-02 | 2027-07-22 | 6910 |  | 7 Days Work | 9274364 |
| 6912 | 36900.37000.37100.37300.52300.76900.547400 | False Ceiling | 10d | 2027-07-23 | 2027-08-01 | 6911 |  | 7 Days Work | 9274374 |
| 6913 | 36900.37000.37100.37300.52300.76900.547500 | Staircase | 15d | 2027-08-02 | 2027-08-16 | 6912 |  | 7 Days Work | 9274384 |
| 6914 | 36900.37000.37100.37300.52300.76900.547600 | Deep Cleaning | 7d | 2027-08-17 | 2027-08-23 | 6913 |  | 7 Days Work | 9274394 |
| 6915 | 36900.37000.37100.37300.52300.77000 | **13th Habitable/14th Floor** | 158d | 2027-03-28 | 2027-09-01 |  | start no earlier than 2027-03-28 | 7 Days Work | 9265924 |
| 6916 | 36900.37000.37100.37300.52300.77000.547700 | Side blockwork for lift shafts | 9d | 2027-03-28 | 2027-04-05 | 6906 |  | 7 Days Work | 9274404 |
| 6917 | 36900.37000.37100.37300.52300.77000.547800 | Door Threshold for lifts | 6d | 2027-04-06 | 2027-04-11 | 6916 |  | 7 Days Work | 9274414 |
| 6918 | 36900.37000.37100.37300.52300.77000.547900 | Granite Cladding | 10d | 2027-04-12 | 2027-04-21 | 6917 |  | 7 Days Work | 9274424 |
| 6919 | 36900.37000.37100.37300.52300.77000.548000 | MEP Services | 60d | 2027-04-22 | 2027-06-20 | 6918 |  | 7 Days Work | 9274434 |
| 6920 | 36900.37000.37100.37300.52300.77000.548100 | Flooring+Skirting | 20d | 2027-06-21 | 2027-07-10 | 6919 |  | 7 Days Work | 9274444 |
| 6921 | 36900.37000.37100.37300.52300.77000.548200 | Wall finishes | 21d | 2027-07-11 | 2027-07-31 | 6920 |  | 7 Days Work | 9274454 |
| 6922 | 36900.37000.37100.37300.52300.77000.548300 | False Ceiling | 10d | 2027-08-01 | 2027-08-10 | 6921 |  | 7 Days Work | 9274464 |
| 6923 | 36900.37000.37100.37300.52300.77000.548400 | Staircase | 15d | 2027-08-11 | 2027-08-25 | 6922 |  | 7 Days Work | 9274474 |
| 6924 | 36900.37000.37100.37300.52300.77000.548500 | Deep Cleaning | 7d | 2027-08-26 | 2027-09-01 | 6923 |  | 7 Days Work | 9274484 |

| ID | WBS | Task | Duration | Start | Finish | Predecessors | Constraint | Calendar | Unique_Task_ID |
| --- | --- | --- | --- | --- | --- | --- | --- | --- | --- |
| 6925 | 36900.37000.37100.37300.52300.77100 | **14th Habitable/15th Floor** | 158d | 2027-04-06 | 2027-09-10 |  | start no earlier than 2027-04-06 | 7 Days Work | 9265934 |
| 6926 | 36900.37000.37100.37300.52300.77100.548600 | Side blockwork for lift shafts | 9d | 2027-04-06 | 2027-04-14 | 6916 |  | 7 Days Work | 9274494 |
| 6927 | 36900.37000.37100.37300.52300.77100.548700 | Door Threshold for lifts | 6d | 2027-04-15 | 2027-04-20 | 6926 |  | 7 Days Work | 9274504 |
| 6928 | 36900.37000.37100.37300.52300.77100.548800 | Granite Cladding | 10d | 2027-04-21 | 2027-04-30 | 6927 |  | 7 Days Work | 9274514 |
| 6929 | 36900.37000.37100.37300.52300.77100.548900 | MEP Services | 60d | 2027-05-01 | 2027-06-29 | 6928 |  | 7 Days Work | 9274524 |
| 6930 | 36900.37000.37100.37300.52300.77100.549000 | Flooring+Skirting | 20d | 2027-06-30 | 2027-07-19 | 6929 |  | 7 Days Work | 9274534 |
| 6931 | 36900.37000.37100.37300.52300.77100.549100 | Wall finishes | 21d | 2027-07-20 | 2027-08-09 | 6930 |  | 7 Days Work | 9274544 |
| 6932 | 36900.37000.37100.37300.52300.77100.549200 | False Ceiling | 10d | 2027-08-10 | 2027-08-19 | 6931 |  | 7 Days Work | 9274554 |
| 6933 | 36900.37000.37100.37300.52300.77100.549300 | Staircase | 15d | 2027-08-20 | 2027-09-03 | 6932 |  | 7 Days Work | 9274564 |
| 6934 | 36900.37000.37100.37300.52300.77100.549400 | Deep Cleaning | 7d | 2027-09-04 | 2027-09-10 | 6933 |  | 7 Days Work | 9274574 |
| 6935 | 36900.37000.37100.37300.52300.77200 | **15th Habitable/16th Floor** | 158d | 2027-04-15 | 2027-09-19 |  | start no earlier than 2027-04-15 | 7 Days Work | 9265944 |
| 6936 | 36900.37000.37100.37300.52300.77200.549500 | Side blockwork for lift shafts | 9d | 2027-04-15 | 2027-04-23 | 6926 |  | 7 Days Work | 9274584 |
| 6937 | 36900.37000.37100.37300.52300.77200.549600 | Door Threshold for lifts | 6d | 2027-04-24 | 2027-04-29 | 6936 |  | 7 Days Work | 9274594 |
| 6938 | 36900.37000.37100.37300.52300.77200.549700 | Granite Cladding | 10d | 2027-04-30 | 2027-05-09 | 6937 |  | 7 Days Work | 9274604 |
| 6939 | 36900.37000.37100.37300.52300.77200.549800 | MEP Services | 60d | 2027-05-10 | 2027-07-08 | 6938 |  | 7 Days Work | 9274614 |
| 6940 | 36900.37000.37100.37300.52300.77200.549900 | Flooring+Skirting | 20d | 2027-07-09 | 2027-07-28 | 6939 |  | 7 Days Work | 9274624 |
| 6941 | 36900.37000.37100.37300.52300.77200.550000 | Wall finishes | 21d | 2027-07-29 | 2027-08-18 | 6940 |  | 7 Days Work | 9274634 |
| 6942 | 36900.37000.37100.37300.52300.77200.550100 | False Ceiling | 10d | 2027-08-19 | 2027-08-28 | 6941 |  | 7 Days Work | 9274644 |
| 6943 | 36900.37000.37100.37300.52300.77200.550200 | Staircase | 15d | 2027-08-29 | 2027-09-12 | 6942 |  | 7 Days Work | 9274654 |
| 6944 | 36900.37000.37100.37300.52300.77200.550300 | Deep Cleaning | 7d | 2027-09-13 | 2027-09-19 | 6943 |  | 7 Days Work | 9274664 |
| 6945 | 36900.37000.37100.37300.52300.77300 | **16th Habitable/17th Floor** | 158d | 2027-04-24 | 2027-09-28 |  | start no earlier than 2027-04-24 | 7 Days Work | 9265954 |
| 6946 | 36900.37000.37100.37300.52300.77300.550400 | Side blockwork for lift shafts | 9d | 2027-04-24 | 2027-05-02 | 6936 |  | 7 Days Work | 9274674 |
| 6947 | 36900.37000.37100.37300.52300.77300.550500 | Door Threshold for lifts | 6d | 2027-05-03 | 2027-05-08 | 6946 |  | 7 Days Work | 9274684 |
| 6948 | 36900.37000.37100.37300.52300.77300.550600 | Granite Cladding | 10d | 2027-05-09 | 2027-05-18 | 6947 |  | 7 Days Work | 9274694 |
| 6949 | 36900.37000.37100.37300.52300.77300.550700 | MEP Services | 60d | 2027-05-19 | 2027-07-17 | 6948 |  | 7 Days Work | 9274704 |
| 6950 | 36900.37000.37100.37300.52300.77300.550800 | Flooring+Skirting | 20d | 2027-07-18 | 2027-08-06 | 6949 |  | 7 Days Work | 9274714 |
| 6951 | 36900.37000.37100.37300.52300.77300.550900 | Wall finishes | 21d | 2027-08-07 | 2027-08-27 | 6950 |  | 7 Days Work | 9274724 |
| 6952 | 36900.37000.37100.37300.52300.77300.551000 | False Ceiling | 10d | 2027-08-28 | 2027-09-06 | 6951 |  | 7 Days Work | 9274734 |
| 6953 | 36900.37000.37100.37300.52300.77300.551100 | Staircase | 15d | 2027-09-07 | 2027-09-21 | 6952 |  | 7 Days Work | 9274744 |
| 6954 | 36900.37000.37100.37300.52300.77300.551200 | Deep Cleaning | 7d | 2027-09-22 | 2027-09-28 | 6953 |  | 7 Days Work | 9274754 |

| ID | WBS | Task | Duration | Start | Finish | Predecessors | Constraint | Calendar | Unique_Task_ID |
| --- | --- | --- | --- | --- | --- | --- | --- | --- | --- |
| 6955 | 36900.37000.37100.37300.52300.77400 | **17th Habitable/18th Floor** | 158d | 2027-05-03 | 2027-10-07 |  | start no earlier than 2027-05-03 | 7 Days Work | 9265964 |
| 6956 | 36900.37000.37100.37300.52300.77400.551300 | Side blockwork for lift shafts | 9d | 2027-05-03 | 2027-05-11 | 6946 |  | 7 Days Work | 9274764 |
| 6957 | 36900.37000.37100.37300.52300.77400.551400 | Door Threshold for lifts | 6d | 2027-05-12 | 2027-05-17 | 6956 |  | 7 Days Work | 9274774 |
| 6958 | 36900.37000.37100.37300.52300.77400.551500 | Granite Cladding | 10d | 2027-05-18 | 2027-05-27 | 6957 |  | 7 Days Work | 9274784 |
| 6959 | 36900.37000.37100.37300.52300.77400.551600 | MEP Services | 60d | 2027-05-28 | 2027-07-26 | 6958 |  | 7 Days Work | 9274794 |
| 6960 | 36900.37000.37100.37300.52300.77400.551700 | Flooring+Skirting | 20d | 2027-07-27 | 2027-08-15 | 6959 |  | 7 Days Work | 9274804 |
| 6961 | 36900.37000.37100.37300.52300.77400.551800 | Wall finishes | 21d | 2027-08-16 | 2027-09-05 | 6960 |  | 7 Days Work | 9274814 |
| 6962 | 36900.37000.37100.37300.52300.77400.551900 | False Ceiling | 10d | 2027-09-06 | 2027-09-15 | 6961 |  | 7 Days Work | 9274824 |
| 6963 | 36900.37000.37100.37300.52300.77400.552000 | Staircase | 15d | 2027-09-16 | 2027-09-30 | 6962 |  | 7 Days Work | 9274834 |
| 6964 | 36900.37000.37100.37300.52300.77400.552100 | Deep Cleaning | 7d | 2027-10-01 | 2027-10-07 | 6963 |  | 7 Days Work | 9274844 |
| 6965 | 36900.37000.37100.37300.52300.77500 | **18th Habitable/19th Floor** | 158d | 2027-05-12 | 2027-10-16 |  | start no earlier than 2027-05-12 | 7 Days Work | 9265974 |
| 6966 | 36900.37000.37100.37300.52300.77500.552200 | Side blockwork for lift shafts | 9d | 2027-05-12 | 2027-05-20 | 6956 |  | 7 Days Work | 9274854 |
| 6967 | 36900.37000.37100.37300.52300.77500.552300 | Door Threshold for lifts | 6d | 2027-05-21 | 2027-05-26 | 6966 |  | 7 Days Work | 9274864 |
| 6968 | 36900.37000.37100.37300.52300.77500.552400 | Granite Cladding | 10d | 2027-05-27 | 2027-06-05 | 6967 |  | 7 Days Work | 9274874 |
| 6969 | 36900.37000.37100.37300.52300.77500.552500 | MEP Services | 60d | 2027-06-06 | 2027-08-04 | 6968 |  | 7 Days Work | 9274884 |
| 6970 | 36900.37000.37100.37300.52300.77500.552600 | Flooring+Skirting | 20d | 2027-08-05 | 2027-08-24 | 6969 |  | 7 Days Work | 9274894 |
| 6971 | 36900.37000.37100.37300.52300.77500.552700 | Wall finishes | 21d | 2027-08-25 | 2027-09-14 | 6970 |  | 7 Days Work | 9274904 |
| 6972 | 36900.37000.37100.37300.52300.77500.552800 | False Ceiling | 10d | 2027-09-15 | 2027-09-24 | 6971 |  | 7 Days Work | 9274914 |
| 6973 | 36900.37000.37100.37300.52300.77500.552900 | Staircase | 15d | 2027-09-25 | 2027-10-09 | 6972 |  | 7 Days Work | 9274924 |
| 6974 | 36900.37000.37100.37300.52300.77500.553000 | Deep Cleaning | 7d | 2027-10-10 | 2027-10-16 | 6973 |  | 7 Days Work | 9274934 |
| 6975 | 36900.37000.37100.37300.52300.77600 | **19th Habitable/20th Floor** | 158d | 2027-05-21 | 2027-10-25 |  | start no earlier than 2027-05-21 | 7 Days Work | 9265984 |
| 6976 | 36900.37000.37100.37300.52300.77600.553100 | Side blockwork for lift shafts | 9d | 2027-05-21 | 2027-05-29 | 6966 |  | 7 Days Work | 9274944 |
| 6977 | 36900.37000.37100.37300.52300.77600.553200 | Door Threshold for lifts | 6d | 2027-05-30 | 2027-06-04 | 6976 |  | 7 Days Work | 9274954 |
| 6978 | 36900.37000.37100.37300.52300.77600.553300 | Granite Cladding | 10d | 2027-06-05 | 2027-06-14 | 6977 |  | 7 Days Work | 9274964 |
| 6979 | 36900.37000.37100.37300.52300.77600.553400 | MEP Services | 60d | 2027-06-15 | 2027-08-13 | 6978 |  | 7 Days Work | 9274974 |
| 6980 | 36900.37000.37100.37300.52300.77600.553500 | Flooring+Skirting | 20d | 2027-08-14 | 2027-09-02 | 6979 |  | 7 Days Work | 9274984 |
| 6981 | 36900.37000.37100.37300.52300.77600.553600 | Wall finishes | 21d | 2027-09-03 | 2027-09-23 | 6980 |  | 7 Days Work | 9274994 |
| 6982 | 36900.37000.37100.37300.52300.77600.553700 | False Ceiling | 10d | 2027-09-24 | 2027-10-03 | 6981 |  | 7 Days Work | 9275004 |
| 6983 | 36900.37000.37100.37300.52300.77600.553800 | Staircase | 15d | 2027-10-04 | 2027-10-18 | 6982 |  | 7 Days Work | 9275014 |
| 6984 | 36900.37000.37100.37300.52300.77600.553900 | Deep Cleaning | 7d | 2027-10-19 | 2027-10-25 | 6983 |  | 7 Days Work | 9275024 |

| ID | WBS | Task | Duration | Start | Finish | Predecessors | Constraint | Calendar | Unique_Task_ID |
| --- | --- | --- | --- | --- | --- | --- | --- | --- | --- |
| 6985 | 36900.37000.37100.37300.52300.77700 | **20th Habitable/21st Floor** | 158d | 2027-05-30 | 2027-11-03 |  | start no earlier than 2027-05-30 | 7 Days Work | 9265994 |
| 6986 | 36900.37000.37100.37300.52300.77700.554000 | Side blockwork for lift shafts | 9d | 2027-05-30 | 2027-06-07 | 6976 |  | 7 Days Work | 9275034 |
| 6987 | 36900.37000.37100.37300.52300.77700.554100 | Door Threshold for lifts | 6d | 2027-06-08 | 2027-06-13 | 6986 |  | 7 Days Work | 9275044 |
| 6988 | 36900.37000.37100.37300.52300.77700.554200 | Granite Cladding | 10d | 2027-06-14 | 2027-06-23 | 6987 |  | 7 Days Work | 9275054 |
| 6989 | 36900.37000.37100.37300.52300.77700.554300 | MEP Services | 60d | 2027-06-24 | 2027-08-22 | 6988 |  | 7 Days Work | 9275064 |
| 6990 | 36900.37000.37100.37300.52300.77700.554400 | Flooring+Skirting | 20d | 2027-08-23 | 2027-09-11 | 6989 |  | 7 Days Work | 9275074 |
| 6991 | 36900.37000.37100.37300.52300.77700.554500 | Wall finishes | 21d | 2027-09-12 | 2027-10-02 | 6990 |  | 7 Days Work | 9275084 |
| 6992 | 36900.37000.37100.37300.52300.77700.554600 | False Ceiling | 10d | 2027-10-03 | 2027-10-12 | 6991 |  | 7 Days Work | 9275094 |
| 6993 | 36900.37000.37100.37300.52300.77700.554700 | Staircase | 15d | 2027-10-13 | 2027-10-27 | 6992 |  | 7 Days Work | 9275104 |
| 6994 | 36900.37000.37100.37300.52300.77700.554800 | Deep Cleaning | 7d | 2027-10-28 | 2027-11-03 | 6993 |  | 7 Days Work | 9044524 |
| 6995 | 36900.37000.37100.37300.67900 | **Lift** | 350d | 2026-02-08 | 2027-01-23 |  | start no earlier than 2026-02-08 | 7 Days Work | 9265794 |
| 6996 | 36900.37000.37100.37300.67900.119300 | Order Issue | 104d | 2026-02-08 | 2026-05-22 | 5582FS-120d |  | 7 Days Work | 9266004 |
| 6997 | 36900.37000.37100.37300.67900.119400 | Shop drawing approval | 30d | 2026-05-23 | 2026-06-21 | 6996 |  | 7 Days Work | 9266014 |
| 6998 | 36900.37000.37100.37300.67900.119500 | Material recipt | 90d | 2026-06-22 | 2026-09-19 | 6997 |  | 7 Days Work | 9266024 |
| 6999 | 36900.37000.37100.37300.67900.119600 | Lift Shaft Handover | 30d | 2026-10-29 | 2026-11-27 | 5592 |  | 7 Days Work | 9266034 |
| 7000 | 36900.37000.37100.37300.67900.119700 | Template fixing by lift contractor | 7d | 2026-11-28 | 2026-12-04 | 6999 |  | 7 Days Work | 9266044 |
| 7001 | 36900.37000.37100.37300.67900.119800 | Centre line marking for lift shafts | 5d | 2026-12-05 | 2026-12-09 | 7000 |  | 7 Days Work | 9266054 |
| 7002 | 36900.37000.37100.37300.67900.119900 | Rail & Bracket Fixing | 5d | 2026-12-10 | 2026-12-14 | 7001 |  | 7 Days Work | 9266064 |
| 7003 | 36900.37000.37100.37300.67900.120000 | Cage Installation | 5d | 2026-12-15 | 2026-12-19 | 7002 |  | 7 Days Work | 9266074 |
| 7004 | 36900.37000.37100.37300.67900.120100 | Slow Speed | 20d | 2026-12-20 | 2027-01-08 | 7003 |  | 7 Days Work | 9266084 |
| 7005 | 36900.37000.37100.37300.67900.120200 | High Spped | 5d | 2027-01-09 | 2027-01-13 | 7004 |  | 7 Days Work | 9266094 |
| 7006 | 36900.37000.37100.37300.67900.120300 | Commisioning | 7d | 2027-01-14 | 2027-01-20 | 7005 |  | 7 Days Work | 9266104 |
| 7007 | 36900.37000.37100.37300.67900.120400 | Handover | 3d | 2027-01-21 | 2027-01-23 | 7006 |  | 7 Days Work | 9044514 |
| 7008 | 36900.37000.37100.37300.107700 | External Paint | 90d | 2027-02-06 | 2027-05-06 | 5591FS+135d |  | 7 Days Work | 9146054 |

| ID | WBS | Task | Duration | Start | Finish | Predecessors | Complete | Constraint | Calendar | Unique_Task_ID |
| --- | --- | --- | --- | --- | --- | --- | --- | --- | --- | --- |
| 7009 | 36900.37000.37100.37400 | **Tower-6** | 976d | 2025-03-04 | 2027-11-04 |  | 2% | start no earlier than 2025-03-04 | 7 Days Work | 9042654 |
| 7010 | 36900.37000.37100.37400.86500 | Pilling | 114d | 2025-03-04 | 2025-07-01 | 5556SS+1d | 100% | start no earlier than 2025-03-04 | 7 Days Work | 9044534 |
| 7011 | 36900.37000.37100.37400.86400 | SPT Test | 30d | 2025-05-21 | 2025-06-29 | 7010FS+15d | 100% | start no earlier than 2025-05-21 | 7 Days Work | 10343738 |
| 7012 | 36900.37000.37100.37400.86300 | Dynamic | 1d | 2025-06-27 | 2025-06-27 | 7010FS+28d | 100% | start no earlier than 2025-06-27 | 7 Days Work | 10343748 |
| 7013 | 36900.37000.37100.37400.86200 | Static Load Test | 5d | 2025-08-18 | 2025-08-22 | 7010FS+28d | 100% | start no earlier than 2025-08-18 | 7 Days Work | 10343758 |
| 7014 | 36900.37000.37100.37400.86100 | Excavation | 8d | 2025-08-25 | 2025-10-20 | 7013 | 100% | start no earlier than 2025-08-25 | 7 Days Work | 9044535 |
| 7015 | 36900.37000.37100.37400.86000 | Pile Breaking | 14d | 2025-08-27 | 2025-10-22 | 7014 | 100% | start no earlier than 2025-08-27 | 7 Days Work | 10419738 |
| 7016 | 36900.37000.37100.37400.85900 | ATT | 26d | 2025-08-08 | 2025-10-21 | 7015 | 100% | start no earlier than 2025-08-08 | 7 Days Work | 10419748 |
| 7017 | 36900.37000.37100.37400.85800 | LDPE Sheet | 14d | 2025-08-27 | 2025-10-22 | 7015SS | 100% | start no earlier than 2025-08-27 | 7 Days Work | 10430378 |
| 7018 | 36900.37000.37100.37400.85700 | PCC | 6d | 2025-08-27 | 2025-10-20 | 7017 | 100% | start no earlier than 2025-08-27 | 7 Days Work | 10430388 |
| 7019 | 36900.37000.37100.37400.85600 | PIT | 7d | 2025-06-26 | 2025-10-27 | 7015 | 100% | start no earlier than 2025-06-26 | 7 Days Work | 10343808 |
| 7020 | 36900.37000.37100.37400.85500 | Raft-Reinforcement | 28d | 2025-09-25 | 2025-11-19 | 7019 | 100% | start no earlier than 2025-09-25 | 7 Days Work | 9044544 |
| 7021 | 36900.37000.37100.37400.85400 | Raft-Shuttering | 8d | 2025-10-27 | 2025-11-20 | 7020SS+24d | 100% | start no earlier than 2025-10-27 | 7 Days Work | 9044545 |
| 7022 | 36900.37000.37100.37400.85300 | Raft-Concreting | 11d | 2025-10-27 | 2025-11-23 | 7021SS+2d | 100% | start no earlier than 2025-10-27 | 7 Days Work | 9044546 |
| 7023 | 36900.37000.37100.37400.85200 | up to PL | 22d | 2025-11-18 | 2025-12-09 | 7022 | 54% | start no earlier than 2025-11-18 | 7 Days Work | 9044554 |
| 7024 | 36900.37000.37100.37400.85100 | 1st Floor Slab RCC | 25d | 2025-11-27 | 2025-12-21 | 7023 | 12% | start no earlier than 2025-11-27 | 7 Days Work | 9044564 |
| 7025 | 36900.37000.37100.37400.107800 | 2nd Floor Slab RCC | 25d | 2025-12-22 | 2026-01-15 | 7024 |  |  | 7 Days Work | 9044574 |
| 7026 | 36900.37000.37100.37400.107900 | 3rd Floor Slab RCC | 21d | 2026-01-16 | 2026-02-05 | 7025 |  |  | 7 Days Work | 9044584 |
| 7027 | 36900.37000.37100.37400.108000 | 4th Floor Slab RCC | 15d | 2026-02-06 | 2026-02-20 | 7026 |  |  | 7 Days Work | 9044594 |
| 7028 | 36900.37000.37100.37400.108100 | 5th Floor Slab RCC | 12d | 2026-02-21 | 2026-03-04 | 7027 |  |  | 7 Days Work | 9044604 |
| 7029 | 36900.37000.37100.37400.108200 | 6th Floor Slab RCC | 12d | 2026-03-05 | 2026-03-16 | 7028 |  |  | 7 Days Work | 9044614 |
| 7030 | 36900.37000.37100.37400.108300 | 7th Floor Slab RCC | 12d | 2026-03-17 | 2026-03-28 | 7029 |  |  | 7 Days Work | 9044624 |
| 7031 | 36900.37000.37100.37400.108400 | 8th Floor Slab RCC | 12d | 2026-03-29 | 2026-04-09 | 7030 |  |  | 7 Days Work | 9044634 |
| 7032 | 36900.37000.37100.37400.108500 | 9th Floor Slab RCC | 12d | 2026-04-10 | 2026-04-21 | 7031 |  |  | 7 Days Work | 9044644 |
| 7033 | 36900.37000.37100.37400.108600 | 10th Floor Slab RCC | 12d | 2026-04-22 | 2026-05-03 | 7032 |  |  | 7 Days Work | 9044654 |
| 7034 | 36900.37000.37100.37400.108700 | 11th Floor Slab RCC | 12d | 2026-05-04 | 2026-05-15 | 7033 |  |  | 7 Days Work | 9044664 |
| 7035 | 36900.37000.37100.37400.108800 | 12th Floor Slab RCC | 12d | 2026-05-16 | 2026-05-27 | 7034 |  |  | 7 Days Work | 9044674 |
| 7036 | 36900.37000.37100.37400.108900 | 13th Floor Slab RCC | 12d | 2026-05-28 | 2026-06-08 | 7035 |  |  | 7 Days Work | 9044684 |
| 7037 | 36900.37000.37100.37400.109000 | 14th Floor Slab RCC | 12d | 2026-06-09 | 2026-06-20 | 7036 |  |  | 7 Days Work | 9044694 |
| 7038 | 36900.37000.37100.37400.109100 | 15th Floor Slab RCC | 12d | 2026-06-21 | 2026-07-02 | 7037 |  |  | 7 Days Work | 9044704 |
| 7039 | 36900.37000.37100.37400.109200 | 16th Floor Slab RCC | 12d | 2026-07-03 | 2026-07-14 | 7038 |  |  | 7 Days Work | 9044714 |
| 7040 | 36900.37000.37100.37400.109300 | 17th Floor Slab RCC | 12d | 2026-07-15 | 2026-07-26 | 7039 |  |  | 7 Days Work | 9044724 |
| 7041 | 36900.37000.37100.37400.109400 | 18th Floor Slab RCC | 12d | 2026-07-27 | 2026-08-07 | 7040 |  |  | 7 Days Work | 9044734 |
| 7042 | 36900.37000.37100.37400.109500 | 19th Floor Slab RCC | 12d | 2026-08-08 | 2026-08-19 | 7041 |  |  | 7 Days Work | 9044744 |
| 7043 | 36900.37000.37100.37400.109600 | 20th Floor Slab RCC | 12d | 2026-08-20 | 2026-08-31 | 7042 |  |  | 7 Days Work | 9044754 |
| 7044 | 36900.37000.37100.37400.109700 | 21st Floor Slab RCC | 12d | 2026-09-01 | 2026-09-12 | 7043 |  |  | 7 Days Work | 9044764 |
| 7045 | 36900.37000.37100.37400.109800 | Terrace | 12d | 2026-09-13 | 2026-09-24 | 7044 |  |  | 7 Days Work | 9044774 |
| 7046 | 36900.37000.37100.37400.109900 | Above Terrace | 35d | 2026-09-25 | 2026-10-29 | 7045 |  |  | 7 Days Work | 9293684 |

| ID | WBS | Task | Duration | Start | Finish | Predecessors | Constraint | Calendar | Unique_Task_ID |
| --- | --- | --- | --- | --- | --- | --- | --- | --- | --- |
| 7047 | 36900.37000.37100.37400.38100 | **Flat Finishing** | 570d | 2025-11-30 | 2027-06-22 |  | start no earlier than 2025-11-30 | 7 Days Work | 9279534 |
| 7048 | 36900.37000.37100.37400.38100.48200 | **1st Habitable/2nd Floor** | 245d | 2026-03-17 | 2026-11-16 |  | start no earlier than 2026-03-17 | 7 Days Work | 9279544 |
| 7049 | 36900.37000.37100.37400.38100.48200.554900 | Post Pour | 7d | 2026-03-17 | 2026-03-23 | 7029 |  | 7 Days Work | 9280284 |
| 7050 | 36900.37000.37100.37400.38100.48200.555000 | MEP Clearance -1 | 5d | 2026-03-24 | 2026-03-28 | 7049 |  | 7 Days Work | 9280294 |
| 7051 | 36900.37000.37100.37400.38100.48200.555100 | Benchmark | 1d | 2026-03-29 | 2026-03-29 | 7050 |  | 7 Days Work | 9280304 |
| 7052 | 36900.37000.37100.37400.38100.48200.555200 | Temporary Railing | 3d | 2026-03-30 | 2026-04-01 | 7051 |  | 7 Days Work | 9280314 |
| 7053 | 36900.37000.37100.37400.38100.48200.555300 | Blockwork | 10d | 2026-04-02 | 2026-04-11 | 7052 |  | 7 Days Work | 9280324 |
| 7054 | 36900.37000.37100.37400.38100.48200.555400 | MEP Clearance -2 | 10d | 2026-04-12 | 2026-04-21 | 7053 |  | 7 Days Work | 9280334 |
| 7055 | 36900.37000.37100.37400.38100.48200.555500 | Gypsum Plaster | 14d | 2026-04-22 | 2026-05-05 | 7054 |  | 7 Days Work | 9280344 |
| 7056 | 36900.37000.37100.37400.38100.48200.555600 | Kitchen Platform | 3d | 2026-05-06 | 2026-05-08 | 7055 |  | 7 Days Work | 9280354 |
| 7057 | 36900.37000.37100.37400.38100.48200.555700 | Kitchen dado | 7d | 2026-05-09 | 2026-05-15 | 7056 |  | 7 Days Work | 9280364 |
| 7058 | 36900.37000.37100.37400.38100.48200.555800 | Fire Fighting | 5d | 2026-05-16 | 2026-05-20 | 7057 |  | 7 Days Work | 9280374 |
| 7059 | 36900.37000.37100.37400.38100.48200.555900 | Anticapilary | 5d | 2026-05-21 | 2026-05-25 | 7058 |  | 7 Days Work | 9280384 |
| 7060 | 36900.37000.37100.37400.38100.48200.556000 | Stone Laying | 10d | 2026-06-28 | 2026-07-07 | 7100 |  | 7 Days Work | 9280394 |
| 7061 | 36900.37000.37100.37400.38100.48200.556100 | Tiles Laying | 7d | 2026-06-28 | 2026-07-04 | 7100 |  | 7 Days Work | 9280404 |
| 7062 | 36900.37000.37100.37400.38100.48200.556200 | 1st cutting/polishing of stone flooring | 7d | 2026-07-05 | 2026-07-11 | 7061 |  | 7 Days Work | 9280414 |
| 7063 | 36900.37000.37100.37400.38100.48200.556300 | Tiles/Stone skirting | 5d | 2026-07-12 | 2026-07-16 | 7062 |  | 7 Days Work | 9280424 |
| 7064 | 36900.37000.37100.37400.38100.48200.556400 | Protechtion sheet | 1d | 2026-07-17 | 2026-07-17 | 7063 |  | 7 Days Work | 9280434 |
| 7065 | 36900.37000.37100.37400.38100.48200.556500 | Installation of Temporary Door | 1d | 2026-07-18 | 2026-07-18 | 7064 |  | 7 Days Work | 9280444 |
| 7066 | 36900.37000.37100.37400.38100.48200.556600 | Fixing of window tracks | 5d | 2026-07-19 | 2026-07-23 | 7065 |  | 7 Days Work | 9280454 |
| 7067 | 36900.37000.37100.37400.38100.48200.556700 | Wire Pulling | 7d | 2026-07-24 | 2026-07-30 | 7066 |  | 7 Days Work | 9280464 |
| 7068 | 36900.37000.37100.37400.38100.48200.556800 | Gypsum Remaining | 5d | 2026-07-31 | 2026-08-04 | 7067 |  | 7 Days Work | 9280474 |
| 7069 | 36900.37000.37100.37400.38100.48200.556900 | Fixing of windoow shutter | 5d | 2026-08-05 | 2026-08-09 | 7068 |  | 7 Days Work | 9280484 |
| 7070 | 36900.37000.37100.37400.38100.48200.557000 | Putty Works - walls & ceiling | 15d | 2026-08-10 | 2026-08-24 | 7069 |  | 7 Days Work | 9280494 |
| 7071 | 36900.37000.37100.37400.38100.48200.557100 | False Ceiling- Framing | 10d | 2026-08-25 | 2026-09-03 | 7070 |  | 7 Days Work | 9280504 |
| 7072 | 36900.37000.37100.37400.38100.48200.557200 | Pre Hung Door | 3d | 2026-09-04 | 2026-09-06 | 7071 |  | 7 Days Work | 9280514 |
| 7073 | 36900.37000.37100.37400.38100.48200.557300 | Protechtion sheet | 2d | 2026-09-07 | 2026-09-08 | 7072 |  | 7 Days Work | 9280524 |
| 7074 | 36900.37000.37100.37400.38100.48200.557400 | Skirting near door | 2d | 2026-09-09 | 2026-09-10 | 7073 |  | 7 Days Work | 9280534 |
| 7075 | 36900.37000.37100.37400.38100.48200.557500 | Electrical Switch box fixing | 14d | 2026-09-11 | 2026-09-24 | 7074 |  | 7 Days Work | 9280544 |
| 7076 | 36900.37000.37100.37400.38100.48200.557600 | Fire Fighting painting | 5d | 2026-09-25 | 2026-09-29 | 7075 |  | 7 Days Work | 9280554 |
| 7077 | 36900.37000.37100.37400.38100.48200.557700 | Protection of all flooring, door & window hardware | 5d | 2026-09-30 | 2026-10-04 | 7076 |  | 7 Days Work | 9280564 |
| 7078 | 36900.37000.37100.37400.38100.48200.557800 | 1st coat primer- ceiling 1st & walls | 14d | 2026-10-05 | 2026-10-18 | 7077 |  | 7 Days Work | 9280574 |
| 7079 | 36900.37000.37100.37400.38100.48200.557900 | Wooden Flooring | 5d | 2026-10-19 | 2026-10-23 | 7078 |  | 7 Days Work | 9280584 |
| 7080 | 36900.37000.37100.37400.38100.48200.558000 | Removing of Temporary Railing & installation of Glass Railing | 5d | 2026-10-19 | 2026-10-23 | 7078 |  | 7 Days Work | 9280594 |
| 7081 | 36900.37000.37100.37400.38100.48200.558100 | Tile Grouting | 7d | 2026-10-19 | 2026-10-25 | 7078 |  | 7 Days Work | 9280604 |
| 7082 | 36900.37000.37100.37400.38100.48200.558200 | False Ceiling | 5d | 2026-10-26 | 2026-10-30 | 7081 |  | 7 Days Work | 9280614 |
| 7083 | 36900.37000.37100.37400.38100.48200.558300 | 2nd coat of primer | 10d | 2026-10-31 | 2026-11-09 | 7082 |  | 7 Days Work | 9280624 |
| 7084 | 36900.37000.37100.37400.38100.48200.558400 | Final cutting/polishing of stone flooring | 7d | 2026-11-10 | 2026-11-16 | 7083 |  | 7 Days Work | 9280634 |

| ID | WBS | Task | Duration | Start | Finish | Predecessors | Constraint | Calendar | Unique_Task_ID |
| --- | --- | --- | --- | --- | --- | --- | --- | --- | --- |
| 7085 | 36900.37000.37100.37400.38100.48200.62500 | **Toilet** | 237d | 2026-03-24 | 2026-11-15 |  | start no earlier than 2026-03-24 | 7 Days Work | 9279754 |
| 7086 | 36900.37000.37100.37400.38100.48200.62500.946300 | Toilet_MEP Clearance -1 | 7d | 2026-03-24 | 2026-03-30 | 7049 |  | 7 Days Work | 9289284 |
| 7087 | 36900.37000.37100.37400.38100.48200.62500.946400 | Toilet_Level Marking | 1d | 2026-03-31 | 2026-03-31 | 7086 |  | 7 Days Work | 9289294 |
| 7088 | 36900.37000.37100.37400.38100.48200.62500.946500 | Toilet_Chasing work for Electrical conduit & concealed plumbing | 5d | 2026-04-01 | 2026-04-05 | 7087 |  | 7 Days Work | 9289304 |
| 7089 | 36900.37000.37100.37400.38100.48200.62500.946600 | Toilet_Plumbing work 1st fix | 5d | 2026-04-06 | 2026-04-10 | 7088 |  | 7 Days Work | 9289314 |
| 7090 | 36900.37000.37100.37400.38100.48200.62500.946700 | Toilet_Sleeve/Bore Packing | 5d | 2026-04-11 | 2026-04-15 | 7089 |  | 7 Days Work | 9289324 |
| 7091 | 36900.37000.37100.37400.38100.48200.62500.946800 | Toilet_Waterproofing | 10d | 2026-04-16 | 2026-04-25 | 7090 |  | 7 Days Work | 9289334 |
| 7092 | 36900.37000.37100.37400.38100.48200.62500.946900 | Toilet_Screed | 1d | 2026-04-26 | 2026-04-26 | 7091 |  | 7 Days Work | 9289344 |
| 7093 | 36900.37000.37100.37400.38100.48200.62500.947000 | Toilet_Plumbing 2nd fix | 5d | 2026-04-27 | 2026-05-01 | 7092 |  | 7 Days Work | 9289354 |
| 7094 | 36900.37000.37100.37400.38100.48200.62500.947100 | Toilet_Ledge wall | 5d | 2026-05-02 | 2026-05-06 | 7093 |  | 7 Days Work | 9289364 |
| 7095 | 36900.37000.37100.37400.38100.48200.62500.947200 | Toilet_Cement Plaster | 5d | 2026-05-07 | 2026-05-11 | 7094 |  | 7 Days Work | 9289374 |
| 7096 | 36900.37000.37100.37400.38100.48200.62500.947300 | Toilet_Door Frame | 1d | 2026-05-12 | 2026-05-12 | 7095 |  | 7 Days Work | 9289384 |
| 7097 | 36900.37000.37100.37400.38100.48200.62500.947400 | Toilet_Wash basin & Couter | 3d | 2026-05-13 | 2026-05-15 | 7096 |  | 7 Days Work | 9289394 |
| 7098 | 36900.37000.37100.37400.38100.48200.62500.947500 | Toilet_Wall dado | 20d | 2026-05-16 | 2026-06-04 | 7097 |  | 7 Days Work | 9289404 |
| 7099 | 36900.37000.37100.37400.38100.48200.62500.947600 | Toilet_Granite Work-Ledge wall top | 3d | 2026-06-05 | 2026-06-07 | 7098 |  | 7 Days Work | 9289414 |
| 7100 | 36900.37000.37100.37400.38100.48200.62500.947700 | Toilet_Floor Tilling work | 20d | 2026-06-08 | 2026-06-27 | 7099 |  | 7 Days Work | 9289424 |
| 7101 | 36900.37000.37100.37400.38100.48200.62500.947800 | Toilet_1st row of dado | 5d | 2026-06-28 | 2026-07-02 | 7100 |  | 7 Days Work | 9289434 |
| 7102 | 36900.37000.37100.37400.38100.48200.62500.947900 | Toilet_Window Fixing | 14d | 2026-07-03 | 2026-07-16 | 7101 |  | 7 Days Work | 9289444 |
| 7103 | 36900.37000.37100.37400.38100.48200.62500.948000 | Toilet_Services above False ceiling | 21d | 2026-07-17 | 2026-08-06 | 7102 |  | 7 Days Work | 9289454 |
| 7104 | 36900.37000.37100.37400.38100.48200.62500.948100 | Toilet_False Ceiling framing | 12d | 2026-08-07 | 2026-08-18 | 7103 |  | 7 Days Work | 9289464 |
| 7105 | 36900.37000.37100.37400.38100.48200.62500.948200 | Toilet_Door Frame | 5d | 2026-08-19 | 2026-08-23 | 7104 |  | 7 Days Work | 9289474 |
| 7106 | 36900.37000.37100.37400.38100.48200.62500.948300 | Toilet_Epoxy Tile Grouting | 7d | 2026-10-19 | 2026-10-25 | 7081SS |  | 7 Days Work | 9289484 |
| 7107 | 36900.37000.37100.37400.38100.48200.62500.948400 | Toilet_False ceiling board fixing, CP Sanitary Fixture, Electric Fixture | 21d | 2026-10-26 | 2026-11-15 | 7106 |  | 7 Days Work | 9289494 |
| 7108 | 36900.37000.37100.37400.38100.48300 | **2nd Habitable/3rd Floor** | 245d | 2026-03-29 | 2026-11-28 |  | start no earlier than 2026-03-29 | 7 Days Work | 9279554 |
| 7109 | 36900.37000.37100.37400.38100.48300.558500 | Post Pour | 7d | 2026-03-29 | 2026-04-04 | 7030 |  | 7 Days Work | 9280644 |
| 7110 | 36900.37000.37100.37400.38100.48300.558600 | MEP Clearance -1 | 5d | 2026-04-05 | 2026-04-09 | 7109 |  | 7 Days Work | 9280654 |
| 7111 | 36900.37000.37100.37400.38100.48300.558700 | Benchmark | 1d | 2026-04-10 | 2026-04-10 | 7110 |  | 7 Days Work | 9280664 |
| 7112 | 36900.37000.37100.37400.38100.48300.558800 | Temporary Railing | 3d | 2026-04-11 | 2026-04-13 | 7111 |  | 7 Days Work | 9280674 |
| 7113 | 36900.37000.37100.37400.38100.48300.558900 | Blockwork | 10d | 2026-04-14 | 2026-04-23 | 7112 |  | 7 Days Work | 9280684 |
| 7114 | 36900.37000.37100.37400.38100.48300.559000 | MEP Clearance -2 | 10d | 2026-04-24 | 2026-05-03 | 7113 |  | 7 Days Work | 9280694 |
| 7115 | 36900.37000.37100.37400.38100.48300.559100 | Gypsum Plaster | 14d | 2026-05-04 | 2026-05-17 | 7114 |  | 7 Days Work | 9280704 |
| 7116 | 36900.37000.37100.37400.38100.48300.559200 | Kitchen Platform | 3d | 2026-05-18 | 2026-05-20 | 7115 |  | 7 Days Work | 9280714 |
| 7117 | 36900.37000.37100.37400.38100.48300.559300 | Kitchen dado | 7d | 2026-05-21 | 2026-05-27 | 7116 |  | 7 Days Work | 9280724 |
| 7118 | 36900.37000.37100.37400.38100.48300.559400 | Fire Fighting | 5d | 2026-05-28 | 2026-06-01 | 7117 |  | 7 Days Work | 9280734 |
| 7119 | 36900.37000.37100.37400.38100.48300.559500 | Anticapilary | 5d | 2026-06-02 | 2026-06-06 | 7118 |  | 7 Days Work | 9280744 |
| 7120 | 36900.37000.37100.37400.38100.48300.559600 | Stone Laying | 10d | 2026-07-10 | 2026-07-19 | 7160 |  | 7 Days Work | 9280754 |
| 7121 | 36900.37000.37100.37400.38100.48300.559700 | Tiles Laying | 7d | 2026-07-10 | 2026-07-16 | 7160 |  | 7 Days Work | 9280764 |
| 7122 | 36900.37000.37100.37400.38100.48300.559800 | 1st cutting/polishing of stone flooring | 7d | 2026-07-17 | 2026-07-23 | 7121 |  | 7 Days Work | 9280774 |
| 7123 | 36900.37000.37100.37400.38100.48300.559900 | Tiles/Stone skirting | 5d | 2026-07-24 | 2026-07-28 | 7122 |  | 7 Days Work | 9280784 |
| 7124 | 36900.37000.37100.37400.38100.48300.560000 | Protechtion sheet | 1d | 2026-07-29 | 2026-07-29 | 7123 |  | 7 Days Work | 9280794 |
| 7125 | 36900.37000.37100.37400.38100.48300.560100 | Installation of Temporary Door | 1d | 2026-07-30 | 2026-07-30 | 7124 |  | 7 Days Work | 9280804 |
| 7126 | 36900.37000.37100.37400.38100.48300.560200 | Fixing of window tracks | 5d | 2026-07-31 | 2026-08-04 | 7125 |  | 7 Days Work | 9280814 |
| 7127 | 36900.37000.37100.37400.38100.48300.560300 | Wire Pulling | 7d | 2026-08-05 | 2026-08-11 | 7126 |  | 7 Days Work | 9280824 |
| 7128 | 36900.37000.37100.37400.38100.48300.560400 | Gypsum Remaining | 5d | 2026-08-12 | 2026-08-16 | 7127 |  | 7 Days Work | 9280834 |
| 7129 | 36900.37000.37100.37400.38100.48300.560500 | Fixing of windoow shutter | 5d | 2026-08-17 | 2026-08-21 | 7128 |  | 7 Days Work | 9280844 |
| 7130 | 36900.37000.37100.37400.38100.48300.560600 | Putty Works - walls & ceiling | 15d | 2026-08-22 | 2026-09-05 | 7129 |  | 7 Days Work | 9280854 |
| 7131 | 36900.37000.37100.37400.38100.48300.560700 | False Ceiling- Framing | 10d | 2026-09-06 | 2026-09-15 | 7130 |  | 7 Days Work | 9280864 |
| 7132 | 36900.37000.37100.37400.38100.48300.560800 | Pre Hung Door | 3d | 2026-09-16 | 2026-09-18 | 7131 |  | 7 Days Work | 9280874 |
| 7133 | 36900.37000.37100.37400.38100.48300.560900 | Protechtion sheet | 2d | 2026-09-19 | 2026-09-20 | 7132 |  | 7 Days Work | 9280884 |
| 7134 | 36900.37000.37100.37400.38100.48300.561000 | Skirting near door | 2d | 2026-09-21 | 2026-09-22 | 7133 |  | 7 Days Work | 9280894 |
| 7135 | 36900.37000.37100.37400.38100.48300.561100 | Electrical Switch box fixing | 14d | 2026-09-23 | 2026-10-06 | 7134 |  | 7 Days Work | 9280904 |
| 7136 | 36900.37000.37100.37400.38100.48300.561200 | Fire Fighting painting | 5d | 2026-10-07 | 2026-10-11 | 7135 |  | 7 Days Work | 9280914 |
| 7137 | 36900.37000.37100.37400.38100.48300.561300 | Protection of all flooring, door & window hardware | 5d | 2026-10-12 | 2026-10-16 | 7136 |  | 7 Days Work | 9280924 |
| 7138 | 36900.37000.37100.37400.38100.48300.561400 | 1st coat primer- ceiling 1st & walls | 14d | 2026-10-17 | 2026-10-30 | 7137 |  | 7 Days Work | 9280934 |
| 7139 | 36900.37000.37100.37400.38100.48300.561500 | Wooden Flooring | 5d | 2026-10-31 | 2026-11-04 | 7138 |  | 7 Days Work | 9280944 |
| 7140 | 36900.37000.37100.37400.38100.48300.561600 | Removing of Temporary Railing & installation of Glass Railing | 5d | 2026-10-31 | 2026-11-04 | 7138 |  | 7 Days Work | 9280954 |
| 7141 | 36900.37000.37100.37400.38100.48300.561700 | Tile Grouting | 7d | 2026-10-31 | 2026-11-06 | 7138 |  | 7 Days Work | 9280964 |
| 7142 | 36900.37000.37100.37400.38100.48300.561800 | False Ceiling | 5d | 2026-11-07 | 2026-11-11 | 7141 |  | 7 Days Work | 9280974 |
| 7143 | 36900.37000.37100.37400.38100.48300.561900 | 2nd coat of primer | 10d | 2026-11-12 | 2026-11-21 | 7142 |  | 7 Days Work | 9280984 |
| 7144 | 36900.37000.37100.37400.38100.48300.562000 | Final cutting/polishing of stone flooring | 7d | 2026-11-22 | 2026-11-28 | 7143 |  | 7 Days Work | 9280994 |

| ID | WBS | Task | Duration | Start | Finish | Predecessors | Constraint | Calendar | Unique_Task_ID |
| --- | --- | --- | --- | --- | --- | --- | --- | --- | --- |
| 7145 | 36900.37000.37100.37400.38100.48300.62600 | **Toilet** | 237d | 2026-04-05 | 2026-11-27 |  | start no earlier than 2026-04-05 | 7 Days Work | 9279764 |
| 7146 | 36900.37000.37100.37400.38100.48300.62600.948500 | Toilet_MEP Clearance -1 | 7d | 2026-04-05 | 2026-04-11 | 7109 |  | 7 Days Work | 9289504 |
| 7147 | 36900.37000.37100.37400.38100.48300.62600.948600 | Toilet_Level Marking | 1d | 2026-04-12 | 2026-04-12 | 7146 |  | 7 Days Work | 9289514 |
| 7148 | 36900.37000.37100.37400.38100.48300.62600.948700 | Toilet_Chasing work for Electrical conduit & concealed plumbing | 5d | 2026-04-13 | 2026-04-17 | 7147 |  | 7 Days Work | 9289524 |
| 7149 | 36900.37000.37100.37400.38100.48300.62600.948800 | Toilet_Plumbing work 1st fix | 5d | 2026-04-18 | 2026-04-22 | 7148 |  | 7 Days Work | 9289534 |
| 7150 | 36900.37000.37100.37400.38100.48300.62600.948900 | Toilet_Sleeve/Bore Packing | 5d | 2026-04-23 | 2026-04-27 | 7149 |  | 7 Days Work | 9289544 |
| 7151 | 36900.37000.37100.37400.38100.48300.62600.949000 | Toilet_Waterproofing | 10d | 2026-04-28 | 2026-05-07 | 7150 |  | 7 Days Work | 9289554 |
| 7152 | 36900.37000.37100.37400.38100.48300.62600.949100 | Toilet_Screed | 1d | 2026-05-08 | 2026-05-08 | 7151 |  | 7 Days Work | 9289564 |
| 7153 | 36900.37000.37100.37400.38100.48300.62600.949200 | Toilet_Plumbing 2nd fix | 5d | 2026-05-09 | 2026-05-13 | 7152 |  | 7 Days Work | 9289574 |
| 7154 | 36900.37000.37100.37400.38100.48300.62600.949300 | Toilet_Ledge wall | 5d | 2026-05-14 | 2026-05-18 | 7153 |  | 7 Days Work | 9289584 |
| 7155 | 36900.37000.37100.37400.38100.48300.62600.949400 | Toilet_Cement Plaster | 5d | 2026-05-19 | 2026-05-23 | 7154 |  | 7 Days Work | 9289594 |
| 7156 | 36900.37000.37100.37400.38100.48300.62600.949500 | Toilet_Door Frame | 1d | 2026-05-24 | 2026-05-24 | 7155 |  | 7 Days Work | 9289604 |
| 7157 | 36900.37000.37100.37400.38100.48300.62600.949600 | Toilet_Wash basin & Couter | 3d | 2026-05-25 | 2026-05-27 | 7156 |  | 7 Days Work | 9289614 |
| 7158 | 36900.37000.37100.37400.38100.48300.62600.949700 | Toilet_Wall dado | 20d | 2026-05-28 | 2026-06-16 | 7157 |  | 7 Days Work | 9289624 |
| 7159 | 36900.37000.37100.37400.38100.48300.62600.949800 | Toilet_Granite Work-Ledge wall top | 3d | 2026-06-17 | 2026-06-19 | 7158 |  | 7 Days Work | 9289634 |
| 7160 | 36900.37000.37100.37400.38100.48300.62600.949900 | Toilet_Floor Tilling work | 20d | 2026-06-20 | 2026-07-09 | 7159 |  | 7 Days Work | 9289644 |
| 7161 | 36900.37000.37100.37400.38100.48300.62600.950000 | Toilet_1st row of dado | 5d | 2026-07-10 | 2026-07-14 | 7160 |  | 7 Days Work | 9289654 |
| 7162 | 36900.37000.37100.37400.38100.48300.62600.950100 | Toilet_Window Fixing | 14d | 2026-07-15 | 2026-07-28 | 7161 |  | 7 Days Work | 9289664 |
| 7163 | 36900.37000.37100.37400.38100.48300.62600.950200 | Toilet_Services above False ceiling | 21d | 2026-07-29 | 2026-08-18 | 7162 |  | 7 Days Work | 9289674 |
| 7164 | 36900.37000.37100.37400.38100.48300.62600.950300 | Toilet_False Ceiling framing | 12d | 2026-08-19 | 2026-08-30 | 7163 |  | 7 Days Work | 9289684 |
| 7165 | 36900.37000.37100.37400.38100.48300.62600.950400 | Toilet_Door Frame | 5d | 2026-08-31 | 2026-09-04 | 7164 |  | 7 Days Work | 9289694 |
| 7166 | 36900.37000.37100.37400.38100.48300.62600.950500 | Toilet_Epoxy Tile Grouting | 7d | 2026-10-31 | 2026-11-06 | 7141SS |  | 7 Days Work | 9289704 |
| 7167 | 36900.37000.37100.37400.38100.48300.62600.950600 | Toilet_False ceiling board fixing, CP Sanitary Fixture, Electric Fixture | 21d | 2026-11-07 | 2026-11-27 | 7166 |  | 7 Days Work | 9289714 |
| 7168 | 36900.37000.37100.37400.38100.48400 | **3rd Habitable/4th Floor** | 245d | 2026-04-10 | 2026-12-10 |  | start no earlier than 2026-04-10 | 7 Days Work | 9279564 |
| 7169 | 36900.37000.37100.37400.38100.48400.562100 | Post Pour | 7d | 2026-04-10 | 2026-04-16 | 7031 |  | 7 Days Work | 9281004 |
| 7170 | 36900.37000.37100.37400.38100.48400.562200 | MEP Clearance -1 | 5d | 2026-04-17 | 2026-04-21 | 7169 |  | 7 Days Work | 9281014 |
| 7171 | 36900.37000.37100.37400.38100.48400.562300 | Benchmark | 1d | 2026-04-22 | 2026-04-22 | 7170 |  | 7 Days Work | 9281024 |
| 7172 | 36900.37000.37100.37400.38100.48400.562400 | Temporary Railing | 3d | 2026-04-23 | 2026-04-25 | 7171 |  | 7 Days Work | 9281034 |
| 7173 | 36900.37000.37100.37400.38100.48400.562500 | Blockwork | 10d | 2026-04-26 | 2026-05-05 | 7172 |  | 7 Days Work | 9281044 |
| 7174 | 36900.37000.37100.37400.38100.48400.562600 | MEP Clearance -2 | 10d | 2026-05-06 | 2026-05-15 | 7173 |  | 7 Days Work | 9281054 |
| 7175 | 36900.37000.37100.37400.38100.48400.562700 | Gypsum Plaster | 14d | 2026-05-16 | 2026-05-29 | 7174 |  | 7 Days Work | 9281064 |
| 7176 | 36900.37000.37100.37400.38100.48400.562800 | Kitchen Platform | 3d | 2026-05-30 | 2026-06-01 | 7175 |  | 7 Days Work | 9281074 |
| 7177 | 36900.37000.37100.37400.38100.48400.562900 | Kitchen dado | 7d | 2026-06-02 | 2026-06-08 | 7176 |  | 7 Days Work | 9281084 |
| 7178 | 36900.37000.37100.37400.38100.48400.563000 | Fire Fighting | 5d | 2026-06-09 | 2026-06-13 | 7177 |  | 7 Days Work | 9281094 |
| 7179 | 36900.37000.37100.37400.38100.48400.563100 | Anticapilary | 5d | 2026-06-14 | 2026-06-18 | 7178 |  | 7 Days Work | 9281104 |
| 7180 | 36900.37000.37100.37400.38100.48400.563200 | Stone Laying | 10d | 2026-07-22 | 2026-07-31 | 7220 |  | 7 Days Work | 9281114 |
| 7181 | 36900.37000.37100.37400.38100.48400.563300 | Tiles Laying | 7d | 2026-07-22 | 2026-07-28 | 7220 |  | 7 Days Work | 9281124 |
| 7182 | 36900.37000.37100.37400.38100.48400.563400 | 1st cutting/polishing of stone flooring | 7d | 2026-07-29 | 2026-08-04 | 7181 |  | 7 Days Work | 9281134 |
| 7183 | 36900.37000.37100.37400.38100.48400.563500 | Tiles/Stone skirting | 5d | 2026-08-05 | 2026-08-09 | 7182 |  | 7 Days Work | 9281144 |
| 7184 | 36900.37000.37100.37400.38100.48400.563600 | Protechtion sheet | 1d | 2026-08-10 | 2026-08-10 | 7183 |  | 7 Days Work | 9281154 |
| 7185 | 36900.37000.37100.37400.38100.48400.563700 | Installation of Temporary Door | 1d | 2026-08-11 | 2026-08-11 | 7184 |  | 7 Days Work | 9281164 |
| 7186 | 36900.37000.37100.37400.38100.48400.563800 | Fixing of window tracks | 5d | 2026-08-12 | 2026-08-16 | 7185 |  | 7 Days Work | 9281174 |
| 7187 | 36900.37000.37100.37400.38100.48400.563900 | Wire Pulling | 7d | 2026-08-17 | 2026-08-23 | 7186 |  | 7 Days Work | 9281184 |
| 7188 | 36900.37000.37100.37400.38100.48400.564000 | Gypsum Remaining | 5d | 2026-08-24 | 2026-08-28 | 7187 |  | 7 Days Work | 9281194 |
| 7189 | 36900.37000.37100.37400.38100.48400.564100 | Fixing of windoow shutter | 5d | 2026-08-29 | 2026-09-02 | 7188 |  | 7 Days Work | 9281204 |
| 7190 | 36900.37000.37100.37400.38100.48400.564200 | Putty Works - walls & ceiling | 15d | 2026-09-03 | 2026-09-17 | 7189 |  | 7 Days Work | 9281214 |
| 7191 | 36900.37000.37100.37400.38100.48400.564300 | False Ceiling- Framing | 10d | 2026-09-18 | 2026-09-27 | 7190 |  | 7 Days Work | 9281224 |
| 7192 | 36900.37000.37100.37400.38100.48400.564400 | Pre Hung Door | 3d | 2026-09-28 | 2026-09-30 | 7191 |  | 7 Days Work | 9281234 |
| 7193 | 36900.37000.37100.37400.38100.48400.564500 | Protechtion sheet | 2d | 2026-10-01 | 2026-10-02 | 7192 |  | 7 Days Work | 9281244 |
| 7194 | 36900.37000.37100.37400.38100.48400.564600 | Skirting near door | 2d | 2026-10-03 | 2026-10-04 | 7193 |  | 7 Days Work | 9281254 |
| 7195 | 36900.37000.37100.37400.38100.48400.564700 | Electrical Switch box fixing | 14d | 2026-10-05 | 2026-10-18 | 7194 |  | 7 Days Work | 9281264 |
| 7196 | 36900.37000.37100.37400.38100.48400.564800 | Fire Fighting painting | 5d | 2026-10-19 | 2026-10-23 | 7195 |  | 7 Days Work | 9281274 |
| 7197 | 36900.37000.37100.37400.38100.48400.564900 | Protection of all flooring, door & window hardware | 5d | 2026-10-24 | 2026-10-28 | 7196 |  | 7 Days Work | 9281284 |
| 7198 | 36900.37000.37100.37400.38100.48400.565000 | 1st coat primer- ceiling 1st & walls | 14d | 2026-10-29 | 2026-11-11 | 7197 |  | 7 Days Work | 9281294 |
| 7199 | 36900.37000.37100.37400.38100.48400.565100 | Wooden Flooring | 5d | 2026-11-12 | 2026-11-16 | 7198 |  | 7 Days Work | 9281304 |
| 7200 | 36900.37000.37100.37400.38100.48400.565200 | Removing of Temporary Railing & installation of Glass Railing | 5d | 2026-11-12 | 2026-11-16 | 7198 |  | 7 Days Work | 9281314 |
| 7201 | 36900.37000.37100.37400.38100.48400.565300 | Tile Grouting | 7d | 2026-11-12 | 2026-11-18 | 7198 |  | 7 Days Work | 9281324 |
| 7202 | 36900.37000.37100.37400.38100.48400.565400 | False Ceiling | 5d | 2026-11-19 | 2026-11-23 | 7201 |  | 7 Days Work | 9281334 |
| 7203 | 36900.37000.37100.37400.38100.48400.565500 | 2nd coat of primer | 10d | 2026-11-24 | 2026-12-03 | 7202 |  | 7 Days Work | 9281344 |
| 7204 | 36900.37000.37100.37400.38100.48400.565600 | Final cutting/polishing of stone flooring | 7d | 2026-12-04 | 2026-12-10 | 7203 |  | 7 Days Work | 9281354 |

| ID | WBS | Task | Duration | Start | Finish | Predecessors | Constraint | Calendar | Unique_Task_ID |
| --- | --- | --- | --- | --- | --- | --- | --- | --- | --- |
| 7205 | 36900.37000.37100.37400.38100.48400.62700 | **Toilet** | 237d | 2026-04-17 | 2026-12-09 |  | start no earlier than 2026-04-17 | 7 Days Work | 9279774 |
| 7206 | 36900.37000.37100.37400.38100.48400.62700.950700 | Toilet_MEP Clearance -1 | 7d | 2026-04-17 | 2026-04-23 | 7169 |  | 7 Days Work | 9289724 |
| 7207 | 36900.37000.37100.37400.38100.48400.62700.950800 | Toilet_Level Marking | 1d | 2026-04-24 | 2026-04-24 | 7206 |  | 7 Days Work | 9289734 |
| 7208 | 36900.37000.37100.37400.38100.48400.62700.950900 | Toilet_Chasing work for Electrical conduit & concealed plumbing | 5d | 2026-04-25 | 2026-04-29 | 7207 |  | 7 Days Work | 9289744 |
| 7209 | 36900.37000.37100.37400.38100.48400.62700.951000 | Toilet_Plumbing work 1st fix | 5d | 2026-04-30 | 2026-05-04 | 7208 |  | 7 Days Work | 9289754 |
| 7210 | 36900.37000.37100.37400.38100.48400.62700.951100 | Toilet_Sleeve/Bore Packing | 5d | 2026-05-05 | 2026-05-09 | 7209 |  | 7 Days Work | 9289764 |
| 7211 | 36900.37000.37100.37400.38100.48400.62700.951200 | Toilet_Waterproofing | 10d | 2026-05-10 | 2026-05-19 | 7210 |  | 7 Days Work | 9289774 |
| 7212 | 36900.37000.37100.37400.38100.48400.62700.951300 | Toilet_Screed | 1d | 2026-05-20 | 2026-05-20 | 7211 |  | 7 Days Work | 9289784 |
| 7213 | 36900.37000.37100.37400.38100.48400.62700.951400 | Toilet_Plumbing 2nd fix | 5d | 2026-05-21 | 2026-05-25 | 7212 |  | 7 Days Work | 9289794 |
| 7214 | 36900.37000.37100.37400.38100.48400.62700.951500 | Toilet_Ledge wall | 5d | 2026-05-26 | 2026-05-30 | 7213 |  | 7 Days Work | 9289804 |
| 7215 | 36900.37000.37100.37400.38100.48400.62700.951600 | Toilet_Cement Plaster | 5d | 2026-05-31 | 2026-06-04 | 7214 |  | 7 Days Work | 9289814 |
| 7216 | 36900.37000.37100.37400.38100.48400.62700.951700 | Toilet_Door Frame | 1d | 2026-06-05 | 2026-06-05 | 7215 |  | 7 Days Work | 9289824 |
| 7217 | 36900.37000.37100.37400.38100.48400.62700.951800 | Toilet_Wash basin & Couter | 3d | 2026-06-06 | 2026-06-08 | 7216 |  | 7 Days Work | 9289834 |
| 7218 | 36900.37000.37100.37400.38100.48400.62700.951900 | Toilet_Wall dado | 20d | 2026-06-09 | 2026-06-28 | 7217 |  | 7 Days Work | 9289844 |
| 7219 | 36900.37000.37100.37400.38100.48400.62700.952000 | Toilet_Granite Work-Ledge wall top | 3d | 2026-06-29 | 2026-07-01 | 7218 |  | 7 Days Work | 9289854 |
| 7220 | 36900.37000.37100.37400.38100.48400.62700.952100 | Toilet_Floor Tilling work | 20d | 2026-07-02 | 2026-07-21 | 7219 |  | 7 Days Work | 9289864 |
| 7221 | 36900.37000.37100.37400.38100.48400.62700.952200 | Toilet_1st row of dado | 5d | 2026-07-22 | 2026-07-26 | 7220 |  | 7 Days Work | 9289874 |
| 7222 | 36900.37000.37100.37400.38100.48400.62700.952300 | Toilet_Window Fixing | 14d | 2026-07-27 | 2026-08-09 | 7221 |  | 7 Days Work | 9289884 |
| 7223 | 36900.37000.37100.37400.38100.48400.62700.952400 | Toilet_Services above False ceiling | 21d | 2026-08-10 | 2026-08-30 | 7222 |  | 7 Days Work | 9289894 |
| 7224 | 36900.37000.37100.37400.38100.48400.62700.952500 | Toilet_False Ceiling framing | 12d | 2026-08-31 | 2026-09-11 | 7223 |  | 7 Days Work | 9289904 |
| 7225 | 36900.37000.37100.37400.38100.48400.62700.952600 | Toilet_Door Frame | 5d | 2026-09-12 | 2026-09-16 | 7224 |  | 7 Days Work | 9289914 |
| 7226 | 36900.37000.37100.37400.38100.48400.62700.952700 | Toilet_Epoxy Tile Grouting | 7d | 2026-11-12 | 2026-11-18 | 7201SS |  | 7 Days Work | 9289924 |
| 7227 | 36900.37000.37100.37400.38100.48400.62700.952800 | Toilet_False ceiling board fixing, CP Sanitary Fixture, Electric Fixture | 21d | 2026-11-19 | 2026-12-09 | 7226 |  | 7 Days Work | 9289934 |
| 7228 | 36900.37000.37100.37400.38100.48500 | **4th Habitable/5th Floor** | 245d | 2026-04-22 | 2026-12-22 |  | start no earlier than 2026-04-22 | 7 Days Work | 9279574 |
| 7229 | 36900.37000.37100.37400.38100.48500.565700 | Post Pour | 7d | 2026-04-22 | 2026-04-28 | 7032 |  | 7 Days Work | 9281364 |
| 7230 | 36900.37000.37100.37400.38100.48500.565800 | MEP Clearance -1 | 5d | 2026-04-29 | 2026-05-03 | 7229 |  | 7 Days Work | 9281374 |
| 7231 | 36900.37000.37100.37400.38100.48500.565900 | Benchmark | 1d | 2026-05-04 | 2026-05-04 | 7230 |  | 7 Days Work | 9281384 |
| 7232 | 36900.37000.37100.37400.38100.48500.566000 | Temporary Railing | 3d | 2026-05-05 | 2026-05-07 | 7231 |  | 7 Days Work | 9281394 |
| 7233 | 36900.37000.37100.37400.38100.48500.566100 | Blockwork | 10d | 2026-05-08 | 2026-05-17 | 7232 |  | 7 Days Work | 9281404 |
| 7234 | 36900.37000.37100.37400.38100.48500.566200 | MEP Clearance -2 | 10d | 2026-05-18 | 2026-05-27 | 7233 |  | 7 Days Work | 9281414 |
| 7235 | 36900.37000.37100.37400.38100.48500.566300 | Gypsum Plaster | 14d | 2026-05-28 | 2026-06-10 | 7234 |  | 7 Days Work | 9281424 |
| 7236 | 36900.37000.37100.37400.38100.48500.566400 | Kitchen Platform | 3d | 2026-06-11 | 2026-06-13 | 7235 |  | 7 Days Work | 9281434 |
| 7237 | 36900.37000.37100.37400.38100.48500.566500 | Kitchen dado | 7d | 2026-06-14 | 2026-06-20 | 7236 |  | 7 Days Work | 9281444 |
| 7238 | 36900.37000.37100.37400.38100.48500.566600 | Fire Fighting | 5d | 2026-06-21 | 2026-06-25 | 7237 |  | 7 Days Work | 9281454 |
| 7239 | 36900.37000.37100.37400.38100.48500.566700 | Anticapilary | 5d | 2026-06-26 | 2026-06-30 | 7238 |  | 7 Days Work | 9281464 |
| 7240 | 36900.37000.37100.37400.38100.48500.566800 | Stone Laying | 10d | 2026-08-03 | 2026-08-12 | 7280 |  | 7 Days Work | 9281474 |
| 7241 | 36900.37000.37100.37400.38100.48500.566900 | Tiles Laying | 7d | 2026-08-03 | 2026-08-09 | 7280 |  | 7 Days Work | 9281484 |
| 7242 | 36900.37000.37100.37400.38100.48500.567000 | 1st cutting/polishing of stone flooring | 7d | 2026-08-10 | 2026-08-16 | 7241 |  | 7 Days Work | 9281494 |
| 7243 | 36900.37000.37100.37400.38100.48500.567100 | Tiles/Stone skirting | 5d | 2026-08-17 | 2026-08-21 | 7242 |  | 7 Days Work | 9281504 |
| 7244 | 36900.37000.37100.37400.38100.48500.567200 | Protechtion sheet | 1d | 2026-08-22 | 2026-08-22 | 7243 |  | 7 Days Work | 9281514 |
| 7245 | 36900.37000.37100.37400.38100.48500.567300 | Installation of Temporary Door | 1d | 2026-08-23 | 2026-08-23 | 7244 |  | 7 Days Work | 9281524 |
| 7246 | 36900.37000.37100.37400.38100.48500.567400 | Fixing of window tracks | 5d | 2026-08-24 | 2026-08-28 | 7245 |  | 7 Days Work | 9281534 |
| 7247 | 36900.37000.37100.37400.38100.48500.567500 | Wire Pulling | 7d | 2026-08-29 | 2026-09-04 | 7246 |  | 7 Days Work | 9281544 |
| 7248 | 36900.37000.37100.37400.38100.48500.567600 | Gypsum Remaining | 5d | 2026-09-05 | 2026-09-09 | 7247 |  | 7 Days Work | 9281554 |
| 7249 | 36900.37000.37100.37400.38100.48500.567700 | Fixing of windoow shutter | 5d | 2026-09-10 | 2026-09-14 | 7248 |  | 7 Days Work | 9281564 |
| 7250 | 36900.37000.37100.37400.38100.48500.567800 | Putty Works - walls & ceiling | 15d | 2026-09-15 | 2026-09-29 | 7249 |  | 7 Days Work | 9281574 |
| 7251 | 36900.37000.37100.37400.38100.48500.567900 | False Ceiling- Framing | 10d | 2026-09-30 | 2026-10-09 | 7250 |  | 7 Days Work | 9281584 |
| 7252 | 36900.37000.37100.37400.38100.48500.568000 | Pre Hung Door | 3d | 2026-10-10 | 2026-10-12 | 7251 |  | 7 Days Work | 9281594 |
| 7253 | 36900.37000.37100.37400.38100.48500.568100 | Protechtion sheet | 2d | 2026-10-13 | 2026-10-14 | 7252 |  | 7 Days Work | 9281604 |
| 7254 | 36900.37000.37100.37400.38100.48500.568200 | Skirting near door | 2d | 2026-10-15 | 2026-10-16 | 7253 |  | 7 Days Work | 9281614 |
| 7255 | 36900.37000.37100.37400.38100.48500.568300 | Electrical Switch box fixing | 14d | 2026-10-17 | 2026-10-30 | 7254 |  | 7 Days Work | 9281624 |
| 7256 | 36900.37000.37100.37400.38100.48500.568400 | Fire Fighting painting | 5d | 2026-10-31 | 2026-11-04 | 7255 |  | 7 Days Work | 9281634 |
| 7257 | 36900.37000.37100.37400.38100.48500.568500 | Protection of all flooring, door & window hardware | 5d | 2026-11-05 | 2026-11-09 | 7256 |  | 7 Days Work | 9281644 |
| 7258 | 36900.37000.37100.37400.38100.48500.568600 | 1st coat primer- ceiling 1st & walls | 14d | 2026-11-10 | 2026-11-23 | 7257 |  | 7 Days Work | 9281654 |
| 7259 | 36900.37000.37100.37400.38100.48500.568700 | Wooden Flooring | 5d | 2026-11-24 | 2026-11-28 | 7258 |  | 7 Days Work | 9281664 |
| 7260 | 36900.37000.37100.37400.38100.48500.568800 | Removing of Temporary Railing & installation of Glass Railing | 5d | 2026-11-24 | 2026-11-28 | 7258 |  | 7 Days Work | 9281674 |
| 7261 | 36900.37000.37100.37400.38100.48500.568900 | Tile Grouting | 7d | 2026-11-24 | 2026-11-30 | 7258 |  | 7 Days Work | 9281684 |
| 7262 | 36900.37000.37100.37400.38100.48500.569000 | False Ceiling | 5d | 2026-12-01 | 2026-12-05 | 7261 |  | 7 Days Work | 9281694 |
| 7263 | 36900.37000.37100.37400.38100.48500.569100 | 2nd coat of primer | 10d | 2026-12-06 | 2026-12-15 | 7262 |  | 7 Days Work | 9281704 |
| 7264 | 36900.37000.37100.37400.38100.48500.569200 | Final cutting/polishing of stone flooring | 7d | 2026-12-16 | 2026-12-22 | 7263 |  | 7 Days Work | 9281714 |

| ID | WBS | Task | Duration | Start | Finish | Predecessors | Constraint | Calendar | Unique_Task_ID |
| --- | --- | --- | --- | --- | --- | --- | --- | --- | --- |
| 7265 | 36900.37000.37100.37400.38100.48500.62800 | **Toilet** | 237d | 2026-04-29 | 2026-12-21 |  | start no earlier than 2026-04-29 | 7 Days Work | 9279784 |
| 7266 | 36900.37000.37100.37400.38100.48500.62800.952900 | Toilet_MEP Clearance -1 | 7d | 2026-04-29 | 2026-05-05 | 7229 |  | 7 Days Work | 9289944 |
| 7267 | 36900.37000.37100.37400.38100.48500.62800.953000 | Toilet_Level Marking | 1d | 2026-05-06 | 2026-05-06 | 7266 |  | 7 Days Work | 9289954 |
| 7268 | 36900.37000.37100.37400.38100.48500.62800.953100 | Toilet_Chasing work for Electrical conduit & concealed plumbing | 5d | 2026-05-07 | 2026-05-11 | 7267 |  | 7 Days Work | 9289964 |
| 7269 | 36900.37000.37100.37400.38100.48500.62800.953200 | Toilet_Plumbing work 1st fix | 5d | 2026-05-12 | 2026-05-16 | 7268 |  | 7 Days Work | 9289974 |
| 7270 | 36900.37000.37100.37400.38100.48500.62800.953300 | Toilet_Sleeve/Bore Packing | 5d | 2026-05-17 | 2026-05-21 | 7269 |  | 7 Days Work | 9289984 |
| 7271 | 36900.37000.37100.37400.38100.48500.62800.953400 | Toilet_Waterproofing | 10d | 2026-05-22 | 2026-05-31 | 7270 |  | 7 Days Work | 9289994 |
| 7272 | 36900.37000.37100.37400.38100.48500.62800.953500 | Toilet_Screed | 1d | 2026-06-01 | 2026-06-01 | 7271 |  | 7 Days Work | 9290004 |
| 7273 | 36900.37000.37100.37400.38100.48500.62800.953600 | Toilet_Plumbing 2nd fix | 5d | 2026-06-02 | 2026-06-06 | 7272 |  | 7 Days Work | 9290014 |
| 7274 | 36900.37000.37100.37400.38100.48500.62800.953700 | Toilet_Ledge wall | 5d | 2026-06-07 | 2026-06-11 | 7273 |  | 7 Days Work | 9290024 |
| 7275 | 36900.37000.37100.37400.38100.48500.62800.953800 | Toilet_Cement Plaster | 5d | 2026-06-12 | 2026-06-16 | 7274 |  | 7 Days Work | 9290034 |
| 7276 | 36900.37000.37100.37400.38100.48500.62800.953900 | Toilet_Door Frame | 1d | 2026-06-17 | 2026-06-17 | 7275 |  | 7 Days Work | 9290044 |
| 7277 | 36900.37000.37100.37400.38100.48500.62800.954000 | Toilet_Wash basin & Couter | 3d | 2026-06-18 | 2026-06-20 | 7276 |  | 7 Days Work | 9290054 |
| 7278 | 36900.37000.37100.37400.38100.48500.62800.954100 | Toilet_Wall dado | 20d | 2026-06-21 | 2026-07-10 | 7277 |  | 7 Days Work | 9290064 |
| 7279 | 36900.37000.37100.37400.38100.48500.62800.954200 | Toilet_Granite Work-Ledge wall top | 3d | 2026-07-11 | 2026-07-13 | 7278 |  | 7 Days Work | 9290074 |
| 7280 | 36900.37000.37100.37400.38100.48500.62800.954300 | Toilet_Floor Tilling work | 20d | 2026-07-14 | 2026-08-02 | 7279 |  | 7 Days Work | 9290084 |
| 7281 | 36900.37000.37100.37400.38100.48500.62800.954400 | Toilet_1st row of dado | 5d | 2026-08-03 | 2026-08-07 | 7280 |  | 7 Days Work | 9290094 |
| 7282 | 36900.37000.37100.37400.38100.48500.62800.954500 | Toilet_Window Fixing | 14d | 2026-08-08 | 2026-08-21 | 7281 |  | 7 Days Work | 9290104 |
| 7283 | 36900.37000.37100.37400.38100.48500.62800.954600 | Toilet_Services above False ceiling | 21d | 2026-08-22 | 2026-09-11 | 7282 |  | 7 Days Work | 9290114 |
| 7284 | 36900.37000.37100.37400.38100.48500.62800.954700 | Toilet_False Ceiling framing | 12d | 2026-09-12 | 2026-09-23 | 7283 |  | 7 Days Work | 9290124 |
| 7285 | 36900.37000.37100.37400.38100.48500.62800.954800 | Toilet_Door Frame | 5d | 2026-09-24 | 2026-09-28 | 7284 |  | 7 Days Work | 9290134 |
| 7286 | 36900.37000.37100.37400.38100.48500.62800.954900 | Toilet_Epoxy Tile Grouting | 7d | 2026-11-24 | 2026-11-30 | 7261SS |  | 7 Days Work | 9290144 |
| 7287 | 36900.37000.37100.37400.38100.48500.62800.955000 | Toilet_False ceiling board fixing, CP Sanitary Fixture, Electric Fixture | 21d | 2026-12-01 | 2026-12-21 | 7286 |  | 7 Days Work | 9290154 |
| 7288 | 36900.37000.37100.37400.38100.48600 | **5th Habitable/6th Floor** | 245d | 2026-05-04 | 2027-01-03 |  | start no earlier than 2026-05-04 | 7 Days Work | 9279584 |
| 7289 | 36900.37000.37100.37400.38100.48600.569300 | Post Pour | 7d | 2026-05-04 | 2026-05-10 | 7033 |  | 7 Days Work | 9281724 |
| 7290 | 36900.37000.37100.37400.38100.48600.569400 | MEP Clearance -1 | 5d | 2026-05-11 | 2026-05-15 | 7289 |  | 7 Days Work | 9281734 |
| 7291 | 36900.37000.37100.37400.38100.48600.569500 | Benchmark | 1d | 2026-05-16 | 2026-05-16 | 7290 |  | 7 Days Work | 9281744 |
| 7292 | 36900.37000.37100.37400.38100.48600.569600 | Temporary Railing | 3d | 2026-05-17 | 2026-05-19 | 7291 |  | 7 Days Work | 9281754 |
| 7293 | 36900.37000.37100.37400.38100.48600.569700 | Blockwork | 10d | 2026-05-20 | 2026-05-29 | 7292 |  | 7 Days Work | 9281764 |
| 7294 | 36900.37000.37100.37400.38100.48600.569800 | MEP Clearance -2 | 10d | 2026-05-30 | 2026-06-08 | 7293 |  | 7 Days Work | 9281774 |
| 7295 | 36900.37000.37100.37400.38100.48600.569900 | Gypsum Plaster | 14d | 2026-06-09 | 2026-06-22 | 7294 |  | 7 Days Work | 9281784 |
| 7296 | 36900.37000.37100.37400.38100.48600.570000 | Kitchen Platform | 3d | 2026-06-23 | 2026-06-25 | 7295 |  | 7 Days Work | 9281794 |
| 7297 | 36900.37000.37100.37400.38100.48600.570100 | Kitchen dado | 7d | 2026-06-26 | 2026-07-02 | 7296 |  | 7 Days Work | 9281804 |
| 7298 | 36900.37000.37100.37400.38100.48600.570200 | Fire Fighting | 5d | 2026-07-03 | 2026-07-07 | 7297 |  | 7 Days Work | 9281814 |
| 7299 | 36900.37000.37100.37400.38100.48600.570300 | Anticapilary | 5d | 2026-07-08 | 2026-07-12 | 7298 |  | 7 Days Work | 9281824 |
| 7300 | 36900.37000.37100.37400.38100.48600.570400 | Stone Laying | 10d | 2026-08-15 | 2026-08-24 | 7340 |  | 7 Days Work | 9281834 |
| 7301 | 36900.37000.37100.37400.38100.48600.570500 | Tiles Laying | 7d | 2026-08-15 | 2026-08-21 | 7340 |  | 7 Days Work | 9281844 |
| 7302 | 36900.37000.37100.37400.38100.48600.570600 | 1st cutting/polishing of stone flooring | 7d | 2026-08-22 | 2026-08-28 | 7301 |  | 7 Days Work | 9281854 |
| 7303 | 36900.37000.37100.37400.38100.48600.570700 | Tiles/Stone skirting | 5d | 2026-08-29 | 2026-09-02 | 7302 |  | 7 Days Work | 9281864 |
| 7304 | 36900.37000.37100.37400.38100.48600.570800 | Protechtion sheet | 1d | 2026-09-03 | 2026-09-03 | 7303 |  | 7 Days Work | 9281874 |
| 7305 | 36900.37000.37100.37400.38100.48600.570900 | Installation of Temporary Door | 1d | 2026-09-04 | 2026-09-04 | 7304 |  | 7 Days Work | 9281884 |
| 7306 | 36900.37000.37100.37400.38100.48600.571000 | Fixing of window tracks | 5d | 2026-09-05 | 2026-09-09 | 7305 |  | 7 Days Work | 9281894 |
| 7307 | 36900.37000.37100.37400.38100.48600.571100 | Wire Pulling | 7d | 2026-09-10 | 2026-09-16 | 7306 |  | 7 Days Work | 9281904 |
| 7308 | 36900.37000.37100.37400.38100.48600.571200 | Gypsum Remaining | 5d | 2026-09-17 | 2026-09-21 | 7307 |  | 7 Days Work | 9281914 |
| 7309 | 36900.37000.37100.37400.38100.48600.571300 | Fixing of windoow shutter | 5d | 2026-09-22 | 2026-09-26 | 7308 |  | 7 Days Work | 9281924 |
| 7310 | 36900.37000.37100.37400.38100.48600.571400 | Putty Works - walls & ceiling | 15d | 2026-09-27 | 2026-10-11 | 7309 |  | 7 Days Work | 9281934 |
| 7311 | 36900.37000.37100.37400.38100.48600.571500 | False Ceiling- Framing | 10d | 2026-10-12 | 2026-10-21 | 7310 |  | 7 Days Work | 9281944 |
| 7312 | 36900.37000.37100.37400.38100.48600.571600 | Pre Hung Door | 3d | 2026-10-22 | 2026-10-24 | 7311 |  | 7 Days Work | 9281954 |
| 7313 | 36900.37000.37100.37400.38100.48600.571700 | Protechtion sheet | 2d | 2026-10-25 | 2026-10-26 | 7312 |  | 7 Days Work | 9281964 |
| 7314 | 36900.37000.37100.37400.38100.48600.571800 | Skirting near door | 2d | 2026-10-27 | 2026-10-28 | 7313 |  | 7 Days Work | 9281974 |
| 7315 | 36900.37000.37100.37400.38100.48600.571900 | Electrical Switch box fixing | 14d | 2026-10-29 | 2026-11-11 | 7314 |  | 7 Days Work | 9281984 |
| 7316 | 36900.37000.37100.37400.38100.48600.572000 | Fire Fighting painting | 5d | 2026-11-12 | 2026-11-16 | 7315 |  | 7 Days Work | 9281994 |
| 7317 | 36900.37000.37100.37400.38100.48600.572100 | Protection of all flooring, door & window hardware | 5d | 2026-11-17 | 2026-11-21 | 7316 |  | 7 Days Work | 9282004 |
| 7318 | 36900.37000.37100.37400.38100.48600.572200 | 1st coat primer- ceiling 1st & walls | 14d | 2026-11-22 | 2026-12-05 | 7317 |  | 7 Days Work | 9282014 |
| 7319 | 36900.37000.37100.37400.38100.48600.572300 | Wooden Flooring | 5d | 2026-12-06 | 2026-12-10 | 7318 |  | 7 Days Work | 9282024 |
| 7320 | 36900.37000.37100.37400.38100.48600.572400 | Removing of Temporary Railing & installation of Glass Railing | 5d | 2026-12-06 | 2026-12-10 | 7318 |  | 7 Days Work | 9282034 |
| 7321 | 36900.37000.37100.37400.38100.48600.572500 | Tile Grouting | 7d | 2026-12-06 | 2026-12-12 | 7318 |  | 7 Days Work | 9282044 |
| 7322 | 36900.37000.37100.37400.38100.48600.572600 | False Ceiling | 5d | 2026-12-13 | 2026-12-17 | 7321 |  | 7 Days Work | 9282054 |
| 7323 | 36900.37000.37100.37400.38100.48600.572700 | 2nd coat of primer | 10d | 2026-12-18 | 2026-12-27 | 7322 |  | 7 Days Work | 9282064 |
| 7324 | 36900.37000.37100.37400.38100.48600.572800 | Final cutting/polishing of stone flooring | 7d | 2026-12-28 | 2027-01-03 | 7323 |  | 7 Days Work | 9282074 |

| ID | WBS | Task | Duration | Start | Finish | Predecessors | Constraint | Calendar | Unique_Task_ID |
| --- | --- | --- | --- | --- | --- | --- | --- | --- | --- |
| 7325 | 36900.37000.37100.37400.38100.48600.62900 | **Toilet** | 237d | 2026-05-11 | 2027-01-02 |  | start no earlier than 2026-05-11 | 7 Days Work | 9279794 |
| 7326 | 36900.37000.37100.37400.38100.48600.62900.955100 | Toilet_MEP Clearance -1 | 7d | 2026-05-11 | 2026-05-17 | 7289 |  | 7 Days Work | 9290164 |
| 7327 | 36900.37000.37100.37400.38100.48600.62900.955200 | Toilet_Level Marking | 1d | 2026-05-18 | 2026-05-18 | 7326 |  | 7 Days Work | 9290174 |
| 7328 | 36900.37000.37100.37400.38100.48600.62900.955300 | Toilet_Chasing work for Electrical conduit & concealed plumbing | 5d | 2026-05-19 | 2026-05-23 | 7327 |  | 7 Days Work | 9290184 |
| 7329 | 36900.37000.37100.37400.38100.48600.62900.955400 | Toilet_Plumbing work 1st fix | 5d | 2026-05-24 | 2026-05-28 | 7328 |  | 7 Days Work | 9290194 |
| 7330 | 36900.37000.37100.37400.38100.48600.62900.955500 | Toilet_Sleeve/Bore Packing | 5d | 2026-05-29 | 2026-06-02 | 7329 |  | 7 Days Work | 9290204 |
| 7331 | 36900.37000.37100.37400.38100.48600.62900.955600 | Toilet_Waterproofing | 10d | 2026-06-03 | 2026-06-12 | 7330 |  | 7 Days Work | 9290214 |
| 7332 | 36900.37000.37100.37400.38100.48600.62900.955700 | Toilet_Screed | 1d | 2026-06-13 | 2026-06-13 | 7331 |  | 7 Days Work | 9290224 |
| 7333 | 36900.37000.37100.37400.38100.48600.62900.955800 | Toilet_Plumbing 2nd fix | 5d | 2026-06-14 | 2026-06-18 | 7332 |  | 7 Days Work | 9290234 |
| 7334 | 36900.37000.37100.37400.38100.48600.62900.955900 | Toilet_Ledge wall | 5d | 2026-06-19 | 2026-06-23 | 7333 |  | 7 Days Work | 9290244 |
| 7335 | 36900.37000.37100.37400.38100.48600.62900.956000 | Toilet_Cement Plaster | 5d | 2026-06-24 | 2026-06-28 | 7334 |  | 7 Days Work | 9290254 |
| 7336 | 36900.37000.37100.37400.38100.48600.62900.956100 | Toilet_Door Frame | 1d | 2026-06-29 | 2026-06-29 | 7335 |  | 7 Days Work | 9290264 |
| 7337 | 36900.37000.37100.37400.38100.48600.62900.956200 | Toilet_Wash basin & Couter | 3d | 2026-06-30 | 2026-07-02 | 7336 |  | 7 Days Work | 9290274 |
| 7338 | 36900.37000.37100.37400.38100.48600.62900.956300 | Toilet_Wall dado | 20d | 2026-07-03 | 2026-07-22 | 7337 |  | 7 Days Work | 9290284 |
| 7339 | 36900.37000.37100.37400.38100.48600.62900.956400 | Toilet_Granite Work-Ledge wall top | 3d | 2026-07-23 | 2026-07-25 | 7338 |  | 7 Days Work | 9290294 |
| 7340 | 36900.37000.37100.37400.38100.48600.62900.956500 | Toilet_Floor Tilling work | 20d | 2026-07-26 | 2026-08-14 | 7339 |  | 7 Days Work | 9290304 |
| 7341 | 36900.37000.37100.37400.38100.48600.62900.956600 | Toilet_1st row of dado | 5d | 2026-08-15 | 2026-08-19 | 7340 |  | 7 Days Work | 9290314 |
| 7342 | 36900.37000.37100.37400.38100.48600.62900.956700 | Toilet_Window Fixing | 14d | 2026-08-20 | 2026-09-02 | 7341 |  | 7 Days Work | 9290324 |
| 7343 | 36900.37000.37100.37400.38100.48600.62900.956800 | Toilet_Services above False ceiling | 21d | 2026-09-03 | 2026-09-23 | 7342 |  | 7 Days Work | 9290334 |
| 7344 | 36900.37000.37100.37400.38100.48600.62900.956900 | Toilet_False Ceiling framing | 12d | 2026-09-24 | 2026-10-05 | 7343 |  | 7 Days Work | 9290344 |
| 7345 | 36900.37000.37100.37400.38100.48600.62900.957000 | Toilet_Door Frame | 5d | 2026-10-06 | 2026-10-10 | 7344 |  | 7 Days Work | 9290354 |
| 7346 | 36900.37000.37100.37400.38100.48600.62900.957100 | Toilet_Epoxy Tile Grouting | 7d | 2026-12-06 | 2026-12-12 | 7321SS |  | 7 Days Work | 9290364 |
| 7347 | 36900.37000.37100.37400.38100.48600.62900.957200 | Toilet_False ceiling board fixing, CP Sanitary Fixture, Electric Fixture | 21d | 2026-12-13 | 2027-01-02 | 7346 |  | 7 Days Work | 9290374 |
| 7348 | 36900.37000.37100.37400.38100.48700 | **6th Habitable/7th Floor** | 245d | 2026-05-16 | 2027-01-15 |  | start no earlier than 2026-05-16 | 7 Days Work | 9279594 |
| 7349 | 36900.37000.37100.37400.38100.48700.572900 | Post Pour | 7d | 2026-05-16 | 2026-05-22 | 7034 |  | 7 Days Work | 9282084 |
| 7350 | 36900.37000.37100.37400.38100.48700.573000 | MEP Clearance -1 | 5d | 2026-05-23 | 2026-05-27 | 7349 |  | 7 Days Work | 9282094 |
| 7351 | 36900.37000.37100.37400.38100.48700.573100 | Benchmark | 1d | 2026-05-28 | 2026-05-28 | 7350 |  | 7 Days Work | 9282104 |
| 7352 | 36900.37000.37100.37400.38100.48700.573200 | Temporary Railing | 3d | 2026-05-29 | 2026-05-31 | 7351 |  | 7 Days Work | 9282114 |
| 7353 | 36900.37000.37100.37400.38100.48700.573300 | Blockwork | 10d | 2026-06-01 | 2026-06-10 | 7352 |  | 7 Days Work | 9282124 |
| 7354 | 36900.37000.37100.37400.38100.48700.573400 | MEP Clearance -2 | 10d | 2026-06-11 | 2026-06-20 | 7353 |  | 7 Days Work | 9282134 |
| 7355 | 36900.37000.37100.37400.38100.48700.573500 | Gypsum Plaster | 14d | 2026-06-21 | 2026-07-04 | 7354 |  | 7 Days Work | 9282144 |
| 7356 | 36900.37000.37100.37400.38100.48700.573600 | Kitchen Platform | 3d | 2026-07-05 | 2026-07-07 | 7355 |  | 7 Days Work | 9282154 |
| 7357 | 36900.37000.37100.37400.38100.48700.573700 | Kitchen dado | 7d | 2026-07-08 | 2026-07-14 | 7356 |  | 7 Days Work | 9282164 |
| 7358 | 36900.37000.37100.37400.38100.48700.573800 | Fire Fighting | 5d | 2026-07-15 | 2026-07-19 | 7357 |  | 7 Days Work | 9282174 |
| 7359 | 36900.37000.37100.37400.38100.48700.573900 | Anticapilary | 5d | 2026-07-20 | 2026-07-24 | 7358 |  | 7 Days Work | 9282184 |
| 7360 | 36900.37000.37100.37400.38100.48700.574000 | Stone Laying | 10d | 2026-08-27 | 2026-09-05 | 7400 |  | 7 Days Work | 9282194 |
| 7361 | 36900.37000.37100.37400.38100.48700.574100 | Tiles Laying | 7d | 2026-08-27 | 2026-09-02 | 7400 |  | 7 Days Work | 9282204 |
| 7362 | 36900.37000.37100.37400.38100.48700.574200 | 1st cutting/polishing of stone flooring | 7d | 2026-09-03 | 2026-09-09 | 7361 |  | 7 Days Work | 9282214 |
| 7363 | 36900.37000.37100.37400.38100.48700.574300 | Tiles/Stone skirting | 5d | 2026-09-10 | 2026-09-14 | 7362 |  | 7 Days Work | 9282224 |
| 7364 | 36900.37000.37100.37400.38100.48700.574400 | Protechtion sheet | 1d | 2026-09-15 | 2026-09-15 | 7363 |  | 7 Days Work | 9282234 |
| 7365 | 36900.37000.37100.37400.38100.48700.574500 | Installation of Temporary Door | 1d | 2026-09-16 | 2026-09-16 | 7364 |  | 7 Days Work | 9282244 |
| 7366 | 36900.37000.37100.37400.38100.48700.574600 | Fixing of window tracks | 5d | 2026-09-17 | 2026-09-21 | 7365 |  | 7 Days Work | 9282254 |
| 7367 | 36900.37000.37100.37400.38100.48700.574700 | Wire Pulling | 7d | 2026-09-22 | 2026-09-28 | 7366 |  | 7 Days Work | 9282264 |
| 7368 | 36900.37000.37100.37400.38100.48700.574800 | Gypsum Remaining | 5d | 2026-09-29 | 2026-10-03 | 7367 |  | 7 Days Work | 9282274 |
| 7369 | 36900.37000.37100.37400.38100.48700.574900 | Fixing of windoow shutter | 5d | 2026-10-04 | 2026-10-08 | 7368 |  | 7 Days Work | 9282284 |
| 7370 | 36900.37000.37100.37400.38100.48700.575000 | Putty Works - walls & ceiling | 15d | 2026-10-09 | 2026-10-23 | 7369 |  | 7 Days Work | 9282294 |
| 7371 | 36900.37000.37100.37400.38100.48700.575100 | False Ceiling- Framing | 10d | 2026-10-24 | 2026-11-02 | 7370 |  | 7 Days Work | 9282304 |
| 7372 | 36900.37000.37100.37400.38100.48700.575200 | Pre Hung Door | 3d | 2026-11-03 | 2026-11-05 | 7371 |  | 7 Days Work | 9282314 |
| 7373 | 36900.37000.37100.37400.38100.48700.575300 | Protechtion sheet | 2d | 2026-11-06 | 2026-11-07 | 7372 |  | 7 Days Work | 9282324 |
| 7374 | 36900.37000.37100.37400.38100.48700.575400 | Skirting near door | 2d | 2026-11-08 | 2026-11-09 | 7373 |  | 7 Days Work | 9282334 |
| 7375 | 36900.37000.37100.37400.38100.48700.575500 | Electrical Switch box fixing | 14d | 2026-11-10 | 2026-11-23 | 7374 |  | 7 Days Work | 9282344 |
| 7376 | 36900.37000.37100.37400.38100.48700.575600 | Fire Fighting painting | 5d | 2026-11-24 | 2026-11-28 | 7375 |  | 7 Days Work | 9282354 |
| 7377 | 36900.37000.37100.37400.38100.48700.575700 | Protection of all flooring, door & window hardware | 5d | 2026-11-29 | 2026-12-03 | 7376 |  | 7 Days Work | 9282364 |
| 7378 | 36900.37000.37100.37400.38100.48700.575800 | 1st coat primer- ceiling 1st & walls | 14d | 2026-12-04 | 2026-12-17 | 7377 |  | 7 Days Work | 9282374 |
| 7379 | 36900.37000.37100.37400.38100.48700.575900 | Wooden Flooring | 5d | 2026-12-18 | 2026-12-22 | 7378 |  | 7 Days Work | 9282384 |
| 7380 | 36900.37000.37100.37400.38100.48700.576000 | Removing of Temporary Railing & installation of Glass Railing | 5d | 2026-12-18 | 2026-12-22 | 7378 |  | 7 Days Work | 9282394 |
| 7381 | 36900.37000.37100.37400.38100.48700.576100 | Tile Grouting | 7d | 2026-12-18 | 2026-12-24 | 7378 |  | 7 Days Work | 9282404 |
| 7382 | 36900.37000.37100.37400.38100.48700.576200 | False Ceiling | 5d | 2026-12-25 | 2026-12-29 | 7381 |  | 7 Days Work | 9282414 |
| 7383 | 36900.37000.37100.37400.38100.48700.576300 | 2nd coat of primer | 10d | 2026-12-30 | 2027-01-08 | 7382 |  | 7 Days Work | 9282424 |
| 7384 | 36900.37000.37100.37400.38100.48700.576400 | Final cutting/polishing of stone flooring | 7d | 2027-01-09 | 2027-01-15 | 7383 |  | 7 Days Work | 9282434 |

| ID | WBS | Task | Duration | Start | Finish | Predecessors | Constraint | Calendar | Unique_Task_ID |
| --- | --- | --- | --- | --- | --- | --- | --- | --- | --- |
| 7385 | 36900.37000.37100.37400.38100.48700.63000 | **Toilet** | 237d | 2026-05-23 | 2027-01-14 |  | start no earlier than 2026-05-23 | 7 Days Work | 9279804 |
| 7386 | 36900.37000.37100.37400.38100.48700.63000.957300 | Toilet_MEP Clearance -1 | 7d | 2026-05-23 | 2026-05-29 | 7349 |  | 7 Days Work | 9290384 |
| 7387 | 36900.37000.37100.37400.38100.48700.63000.957400 | Toilet_Level Marking | 1d | 2026-05-30 | 2026-05-30 | 7386 |  | 7 Days Work | 9290394 |
| 7388 | 36900.37000.37100.37400.38100.48700.63000.957500 | Toilet_Chasing work for Electrical conduit & concealed plumbing | 5d | 2026-05-31 | 2026-06-04 | 7387 |  | 7 Days Work | 9290404 |
| 7389 | 36900.37000.37100.37400.38100.48700.63000.957600 | Toilet_Plumbing work 1st fix | 5d | 2026-06-05 | 2026-06-09 | 7388 |  | 7 Days Work | 9290414 |
| 7390 | 36900.37000.37100.37400.38100.48700.63000.957700 | Toilet_Sleeve/Bore Packing | 5d | 2026-06-10 | 2026-06-14 | 7389 |  | 7 Days Work | 9290424 |
| 7391 | 36900.37000.37100.37400.38100.48700.63000.957800 | Toilet_Waterproofing | 10d | 2026-06-15 | 2026-06-24 | 7390 |  | 7 Days Work | 9290434 |
| 7392 | 36900.37000.37100.37400.38100.48700.63000.957900 | Toilet_Screed | 1d | 2026-06-25 | 2026-06-25 | 7391 |  | 7 Days Work | 9290444 |
| 7393 | 36900.37000.37100.37400.38100.48700.63000.958000 | Toilet_Plumbing 2nd fix | 5d | 2026-06-26 | 2026-06-30 | 7392 |  | 7 Days Work | 9290454 |
| 7394 | 36900.37000.37100.37400.38100.48700.63000.958100 | Toilet_Ledge wall | 5d | 2026-07-01 | 2026-07-05 | 7393 |  | 7 Days Work | 9290464 |
| 7395 | 36900.37000.37100.37400.38100.48700.63000.958200 | Toilet_Cement Plaster | 5d | 2026-07-06 | 2026-07-10 | 7394 |  | 7 Days Work | 9290474 |
| 7396 | 36900.37000.37100.37400.38100.48700.63000.958300 | Toilet_Door Frame | 1d | 2026-07-11 | 2026-07-11 | 7395 |  | 7 Days Work | 9290484 |
| 7397 | 36900.37000.37100.37400.38100.48700.63000.958400 | Toilet_Wash basin & Couter | 3d | 2026-07-12 | 2026-07-14 | 7396 |  | 7 Days Work | 9290494 |
| 7398 | 36900.37000.37100.37400.38100.48700.63000.958500 | Toilet_Wall dado | 20d | 2026-07-15 | 2026-08-03 | 7397 |  | 7 Days Work | 9290504 |
| 7399 | 36900.37000.37100.37400.38100.48700.63000.958600 | Toilet_Granite Work-Ledge wall top | 3d | 2026-08-04 | 2026-08-06 | 7398 |  | 7 Days Work | 9290514 |
| 7400 | 36900.37000.37100.37400.38100.48700.63000.958700 | Toilet_Floor Tilling work | 20d | 2026-08-07 | 2026-08-26 | 7399 |  | 7 Days Work | 9290524 |
| 7401 | 36900.37000.37100.37400.38100.48700.63000.958800 | Toilet_1st row of dado | 5d | 2026-08-27 | 2026-08-31 | 7400 |  | 7 Days Work | 9290534 |
| 7402 | 36900.37000.37100.37400.38100.48700.63000.958900 | Toilet_Window Fixing | 14d | 2026-09-01 | 2026-09-14 | 7401 |  | 7 Days Work | 9290544 |
| 7403 | 36900.37000.37100.37400.38100.48700.63000.959000 | Toilet_Services above False ceiling | 21d | 2026-09-15 | 2026-10-05 | 7402 |  | 7 Days Work | 9290554 |
| 7404 | 36900.37000.37100.37400.38100.48700.63000.959100 | Toilet_False Ceiling framing | 12d | 2026-10-06 | 2026-10-17 | 7403 |  | 7 Days Work | 9290564 |
| 7405 | 36900.37000.37100.37400.38100.48700.63000.959200 | Toilet_Door Frame | 5d | 2026-10-18 | 2026-10-22 | 7404 |  | 7 Days Work | 9290574 |
| 7406 | 36900.37000.37100.37400.38100.48700.63000.959300 | Toilet_Epoxy Tile Grouting | 7d | 2026-12-18 | 2026-12-24 | 7381SS |  | 7 Days Work | 9290584 |
| 7407 | 36900.37000.37100.37400.38100.48700.63000.959400 | Toilet_False ceiling board fixing, CP Sanitary Fixture, Electric Fixture | 21d | 2026-12-25 | 2027-01-14 | 7406 |  | 7 Days Work | 9290594 |
| 7408 | 36900.37000.37100.37400.38100.48800 | **7th Habitable/8th Floor** | 245d | 2026-05-28 | 2027-01-27 |  | start no earlier than 2026-05-28 | 7 Days Work | 9279604 |
| 7409 | 36900.37000.37100.37400.38100.48800.576500 | Post Pour | 7d | 2026-05-28 | 2026-06-03 | 7035 |  | 7 Days Work | 9282444 |
| 7410 | 36900.37000.37100.37400.38100.48800.576600 | MEP Clearance -1 | 5d | 2026-06-04 | 2026-06-08 | 7409 |  | 7 Days Work | 9282454 |
| 7411 | 36900.37000.37100.37400.38100.48800.576700 | Benchmark | 1d | 2026-06-09 | 2026-06-09 | 7410 |  | 7 Days Work | 9282464 |
| 7412 | 36900.37000.37100.37400.38100.48800.576800 | Temporary Railing | 3d | 2026-06-10 | 2026-06-12 | 7411 |  | 7 Days Work | 9282474 |
| 7413 | 36900.37000.37100.37400.38100.48800.576900 | Blockwork | 10d | 2026-06-13 | 2026-06-22 | 7412 |  | 7 Days Work | 9282484 |
| 7414 | 36900.37000.37100.37400.38100.48800.577000 | MEP Clearance -2 | 10d | 2026-06-23 | 2026-07-02 | 7413 |  | 7 Days Work | 9282494 |
| 7415 | 36900.37000.37100.37400.38100.48800.577100 | Gypsum Plaster | 14d | 2026-07-03 | 2026-07-16 | 7414 |  | 7 Days Work | 9282504 |
| 7416 | 36900.37000.37100.37400.38100.48800.577200 | Kitchen Platform | 3d | 2026-07-17 | 2026-07-19 | 7415 |  | 7 Days Work | 9282514 |
| 7417 | 36900.37000.37100.37400.38100.48800.577300 | Kitchen dado | 7d | 2026-07-20 | 2026-07-26 | 7416 |  | 7 Days Work | 9282524 |
| 7418 | 36900.37000.37100.37400.38100.48800.577400 | Fire Fighting | 5d | 2026-07-27 | 2026-07-31 | 7417 |  | 7 Days Work | 9282534 |
| 7419 | 36900.37000.37100.37400.38100.48800.577500 | Anticapilary | 5d | 2026-08-01 | 2026-08-05 | 7418 |  | 7 Days Work | 9282544 |
| 7420 | 36900.37000.37100.37400.38100.48800.577600 | Stone Laying | 10d | 2026-09-08 | 2026-09-17 | 7460 |  | 7 Days Work | 9282554 |
| 7421 | 36900.37000.37100.37400.38100.48800.577700 | Tiles Laying | 7d | 2026-09-08 | 2026-09-14 | 7460 |  | 7 Days Work | 9282564 |
| 7422 | 36900.37000.37100.37400.38100.48800.577800 | 1st cutting/polishing of stone flooring | 7d | 2026-09-15 | 2026-09-21 | 7421 |  | 7 Days Work | 9282574 |
| 7423 | 36900.37000.37100.37400.38100.48800.577900 | Tiles/Stone skirting | 5d | 2026-09-22 | 2026-09-26 | 7422 |  | 7 Days Work | 9282584 |
| 7424 | 36900.37000.37100.37400.38100.48800.578000 | Protechtion sheet | 1d | 2026-09-27 | 2026-09-27 | 7423 |  | 7 Days Work | 9282594 |
| 7425 | 36900.37000.37100.37400.38100.48800.578100 | Installation of Temporary Door | 1d | 2026-09-28 | 2026-09-28 | 7424 |  | 7 Days Work | 9282604 |
| 7426 | 36900.37000.37100.37400.38100.48800.578200 | Fixing of window tracks | 5d | 2026-09-29 | 2026-10-03 | 7425 |  | 7 Days Work | 9282614 |
| 7427 | 36900.37000.37100.37400.38100.48800.578300 | Wire Pulling | 7d | 2026-10-04 | 2026-10-10 | 7426 |  | 7 Days Work | 9282624 |
| 7428 | 36900.37000.37100.37400.38100.48800.578400 | Gypsum Remaining | 5d | 2026-10-11 | 2026-10-15 | 7427 |  | 7 Days Work | 9282634 |
| 7429 | 36900.37000.37100.37400.38100.48800.578500 | Fixing of windoow shutter | 5d | 2026-10-16 | 2026-10-20 | 7428 |  | 7 Days Work | 9282644 |
| 7430 | 36900.37000.37100.37400.38100.48800.578600 | Putty Works - walls & ceiling | 15d | 2026-10-21 | 2026-11-04 | 7429 |  | 7 Days Work | 9282654 |
| 7431 | 36900.37000.37100.37400.38100.48800.578700 | False Ceiling- Framing | 10d | 2026-11-05 | 2026-11-14 | 7430 |  | 7 Days Work | 9282664 |
| 7432 | 36900.37000.37100.37400.38100.48800.578800 | Pre Hung Door | 3d | 2026-11-15 | 2026-11-17 | 7431 |  | 7 Days Work | 9282674 |
| 7433 | 36900.37000.37100.37400.38100.48800.578900 | Protechtion sheet | 2d | 2026-11-18 | 2026-11-19 | 7432 |  | 7 Days Work | 9282684 |
| 7434 | 36900.37000.37100.37400.38100.48800.579000 | Skirting near door | 2d | 2026-11-20 | 2026-11-21 | 7433 |  | 7 Days Work | 9282694 |
| 7435 | 36900.37000.37100.37400.38100.48800.579100 | Electrical Switch box fixing | 14d | 2026-11-22 | 2026-12-05 | 7434 |  | 7 Days Work | 9282704 |
| 7436 | 36900.37000.37100.37400.38100.48800.579200 | Fire Fighting painting | 5d | 2026-12-06 | 2026-12-10 | 7435 |  | 7 Days Work | 9282714 |
| 7437 | 36900.37000.37100.37400.38100.48800.579300 | Protection of all flooring, door & window hardware | 5d | 2026-12-11 | 2026-12-15 | 7436 |  | 7 Days Work | 9282724 |
| 7438 | 36900.37000.37100.37400.38100.48800.579400 | 1st coat primer- ceiling 1st & walls | 14d | 2026-12-16 | 2026-12-29 | 7437 |  | 7 Days Work | 9282734 |
| 7439 | 36900.37000.37100.37400.38100.48800.579500 | Wooden Flooring | 5d | 2026-12-30 | 2027-01-03 | 7438 |  | 7 Days Work | 9282744 |
| 7440 | 36900.37000.37100.37400.38100.48800.579600 | Removing of Temporary Railing & installation of Glass Railing | 5d | 2026-12-30 | 2027-01-03 | 7438 |  | 7 Days Work | 9282754 |
| 7441 | 36900.37000.37100.37400.38100.48800.579700 | Tile Grouting | 7d | 2026-12-30 | 2027-01-05 | 7438 |  | 7 Days Work | 9282764 |
| 7442 | 36900.37000.37100.37400.38100.48800.579800 | False Ceiling | 5d | 2027-01-06 | 2027-01-10 | 7441 |  | 7 Days Work | 9282774 |
| 7443 | 36900.37000.37100.37400.38100.48800.579900 | 2nd coat of primer | 10d | 2027-01-11 | 2027-01-20 | 7442 |  | 7 Days Work | 9282784 |
| 7444 | 36900.37000.37100.37400.38100.48800.580000 | Final cutting/polishing of stone flooring | 7d | 2027-01-21 | 2027-01-27 | 7443 |  | 7 Days Work | 9282794 |

| ID | WBS | Task | Duration | Start | Finish | Predecessors | Constraint | Calendar | Unique_Task_ID |
| --- | --- | --- | --- | --- | --- | --- | --- | --- | --- |
| 7445 | 36900.37000.37100.37400.38100.48800.63100 | **Toilet** | 237d | 2026-06-04 | 2027-01-26 |  | start no earlier than 2026-06-04 | 7 Days Work | 9279814 |
| 7446 | 36900.37000.37100.37400.38100.48800.63100.959500 | Toilet_MEP Clearance -1 | 7d | 2026-06-04 | 2026-06-10 | 7409 |  | 7 Days Work | 9290604 |
| 7447 | 36900.37000.37100.37400.38100.48800.63100.959600 | Toilet_Level Marking | 1d | 2026-06-11 | 2026-06-11 | 7446 |  | 7 Days Work | 9290614 |
| 7448 | 36900.37000.37100.37400.38100.48800.63100.959700 | Toilet_Chasing work for Electrical conduit & concealed plumbing | 5d | 2026-06-12 | 2026-06-16 | 7447 |  | 7 Days Work | 9290624 |
| 7449 | 36900.37000.37100.37400.38100.48800.63100.959800 | Toilet_Plumbing work 1st fix | 5d | 2026-06-17 | 2026-06-21 | 7448 |  | 7 Days Work | 9290634 |
| 7450 | 36900.37000.37100.37400.38100.48800.63100.959900 | Toilet_Sleeve/Bore Packing | 5d | 2026-06-22 | 2026-06-26 | 7449 |  | 7 Days Work | 9290644 |
| 7451 | 36900.37000.37100.37400.38100.48800.63100.960000 | Toilet_Waterproofing | 10d | 2026-06-27 | 2026-07-06 | 7450 |  | 7 Days Work | 9290654 |
| 7452 | 36900.37000.37100.37400.38100.48800.63100.960100 | Toilet_Screed | 1d | 2026-07-07 | 2026-07-07 | 7451 |  | 7 Days Work | 9290664 |
| 7453 | 36900.37000.37100.37400.38100.48800.63100.960200 | Toilet_Plumbing 2nd fix | 5d | 2026-07-08 | 2026-07-12 | 7452 |  | 7 Days Work | 9290674 |
| 7454 | 36900.37000.37100.37400.38100.48800.63100.960300 | Toilet_Ledge wall | 5d | 2026-07-13 | 2026-07-17 | 7453 |  | 7 Days Work | 9290684 |
| 7455 | 36900.37000.37100.37400.38100.48800.63100.960400 | Toilet_Cement Plaster | 5d | 2026-07-18 | 2026-07-22 | 7454 |  | 7 Days Work | 9290694 |
| 7456 | 36900.37000.37100.37400.38100.48800.63100.960500 | Toilet_Door Frame | 1d | 2026-07-23 | 2026-07-23 | 7455 |  | 7 Days Work | 9290704 |
| 7457 | 36900.37000.37100.37400.38100.48800.63100.960600 | Toilet_Wash basin & Couter | 3d | 2026-07-24 | 2026-07-26 | 7456 |  | 7 Days Work | 9290714 |
| 7458 | 36900.37000.37100.37400.38100.48800.63100.960700 | Toilet_Wall dado | 20d | 2026-07-27 | 2026-08-15 | 7457 |  | 7 Days Work | 9290724 |
| 7459 | 36900.37000.37100.37400.38100.48800.63100.960800 | Toilet_Granite Work-Ledge wall top | 3d | 2026-08-16 | 2026-08-18 | 7458 |  | 7 Days Work | 9290734 |
| 7460 | 36900.37000.37100.37400.38100.48800.63100.960900 | Toilet_Floor Tilling work | 20d | 2026-08-19 | 2026-09-07 | 7459 |  | 7 Days Work | 9290744 |
| 7461 | 36900.37000.37100.37400.38100.48800.63100.961000 | Toilet_1st row of dado | 5d | 2026-09-08 | 2026-09-12 | 7460 |  | 7 Days Work | 9290754 |
| 7462 | 36900.37000.37100.37400.38100.48800.63100.961100 | Toilet_Window Fixing | 14d | 2026-09-13 | 2026-09-26 | 7461 |  | 7 Days Work | 9290764 |
| 7463 | 36900.37000.37100.37400.38100.48800.63100.961200 | Toilet_Services above False ceiling | 21d | 2026-09-27 | 2026-10-17 | 7462 |  | 7 Days Work | 9290774 |
| 7464 | 36900.37000.37100.37400.38100.48800.63100.961300 | Toilet_False Ceiling framing | 12d | 2026-10-18 | 2026-10-29 | 7463 |  | 7 Days Work | 9290784 |
| 7465 | 36900.37000.37100.37400.38100.48800.63100.961400 | Toilet_Door Frame | 5d | 2026-10-30 | 2026-11-03 | 7464 |  | 7 Days Work | 9290794 |
| 7466 | 36900.37000.37100.37400.38100.48800.63100.961500 | Toilet_Epoxy Tile Grouting | 7d | 2026-12-30 | 2027-01-05 | 7441SS |  | 7 Days Work | 9290804 |
| 7467 | 36900.37000.37100.37400.38100.48800.63100.961600 | Toilet_False ceiling board fixing, CP Sanitary Fixture, Electric Fixture | 21d | 2027-01-06 | 2027-01-26 | 7466 |  | 7 Days Work | 9290814 |
| 7468 | 36900.37000.37100.37400.38100.48900 | **8th Habitable/9th Floor** | 245d | 2026-06-09 | 2027-02-08 |  | start no earlier than 2026-06-09 | 7 Days Work | 9279614 |
| 7469 | 36900.37000.37100.37400.38100.48900.580100 | Post Pour | 7d | 2026-06-09 | 2026-06-15 | 7036 |  | 7 Days Work | 9282804 |
| 7470 | 36900.37000.37100.37400.38100.48900.580200 | MEP Clearance -1 | 5d | 2026-06-16 | 2026-06-20 | 7469 |  | 7 Days Work | 9282814 |
| 7471 | 36900.37000.37100.37400.38100.48900.580300 | Benchmark | 1d | 2026-06-21 | 2026-06-21 | 7470 |  | 7 Days Work | 9282824 |
| 7472 | 36900.37000.37100.37400.38100.48900.580400 | Temporary Railing | 3d | 2026-06-22 | 2026-06-24 | 7471 |  | 7 Days Work | 9282834 |
| 7473 | 36900.37000.37100.37400.38100.48900.580500 | Blockwork | 10d | 2026-06-25 | 2026-07-04 | 7472 |  | 7 Days Work | 9282844 |
| 7474 | 36900.37000.37100.37400.38100.48900.580600 | MEP Clearance -2 | 10d | 2026-07-05 | 2026-07-14 | 7473 |  | 7 Days Work | 9282854 |
| 7475 | 36900.37000.37100.37400.38100.48900.580700 | Gypsum Plaster | 14d | 2026-07-15 | 2026-07-28 | 7474 |  | 7 Days Work | 9282864 |
| 7476 | 36900.37000.37100.37400.38100.48900.580800 | Kitchen Platform | 3d | 2026-07-29 | 2026-07-31 | 7475 |  | 7 Days Work | 9282874 |
| 7477 | 36900.37000.37100.37400.38100.48900.580900 | Kitchen dado | 7d | 2026-08-01 | 2026-08-07 | 7476 |  | 7 Days Work | 9282884 |
| 7478 | 36900.37000.37100.37400.38100.48900.581000 | Fire Fighting | 5d | 2026-08-08 | 2026-08-12 | 7477 |  | 7 Days Work | 9282894 |
| 7479 | 36900.37000.37100.37400.38100.48900.581100 | Anticapilary | 5d | 2026-08-13 | 2026-08-17 | 7478 |  | 7 Days Work | 9282904 |
| 7480 | 36900.37000.37100.37400.38100.48900.581200 | Stone Laying | 10d | 2026-09-20 | 2026-09-29 | 7520 |  | 7 Days Work | 9282914 |
| 7481 | 36900.37000.37100.37400.38100.48900.581300 | Tiles Laying | 7d | 2026-09-20 | 2026-09-26 | 7520 |  | 7 Days Work | 9282924 |
| 7482 | 36900.37000.37100.37400.38100.48900.581400 | 1st cutting/polishing of stone flooring | 7d | 2026-09-27 | 2026-10-03 | 7481 |  | 7 Days Work | 9282934 |
| 7483 | 36900.37000.37100.37400.38100.48900.581500 | Tiles/Stone skirting | 5d | 2026-10-04 | 2026-10-08 | 7482 |  | 7 Days Work | 9282944 |
| 7484 | 36900.37000.37100.37400.38100.48900.581600 | Protechtion sheet | 1d | 2026-10-09 | 2026-10-09 | 7483 |  | 7 Days Work | 9282954 |
| 7485 | 36900.37000.37100.37400.38100.48900.581700 | Installation of Temporary Door | 1d | 2026-10-10 | 2026-10-10 | 7484 |  | 7 Days Work | 9282964 |
| 7486 | 36900.37000.37100.37400.38100.48900.581800 | Fixing of window tracks | 5d | 2026-10-11 | 2026-10-15 | 7485 |  | 7 Days Work | 9282974 |
| 7487 | 36900.37000.37100.37400.38100.48900.581900 | Wire Pulling | 7d | 2026-10-16 | 2026-10-22 | 7486 |  | 7 Days Work | 9282984 |
| 7488 | 36900.37000.37100.37400.38100.48900.582000 | Gypsum Remaining | 5d | 2026-10-23 | 2026-10-27 | 7487 |  | 7 Days Work | 9282994 |
| 7489 | 36900.37000.37100.37400.38100.48900.582100 | Fixing of windoow shutter | 5d | 2026-10-28 | 2026-11-01 | 7488 |  | 7 Days Work | 9283004 |
| 7490 | 36900.37000.37100.37400.38100.48900.582200 | Putty Works - walls & ceiling | 15d | 2026-11-02 | 2026-11-16 | 7489 |  | 7 Days Work | 9283014 |
| 7491 | 36900.37000.37100.37400.38100.48900.582300 | False Ceiling- Framing | 10d | 2026-11-17 | 2026-11-26 | 7490 |  | 7 Days Work | 9283024 |
| 7492 | 36900.37000.37100.37400.38100.48900.582400 | Pre Hung Door | 3d | 2026-11-27 | 2026-11-29 | 7491 |  | 7 Days Work | 9283034 |
| 7493 | 36900.37000.37100.37400.38100.48900.582500 | Protechtion sheet | 2d | 2026-11-30 | 2026-12-01 | 7492 |  | 7 Days Work | 9283044 |
| 7494 | 36900.37000.37100.37400.38100.48900.582600 | Skirting near door | 2d | 2026-12-02 | 2026-12-03 | 7493 |  | 7 Days Work | 9283054 |
| 7495 | 36900.37000.37100.37400.38100.48900.582700 | Electrical Switch box fixing | 14d | 2026-12-04 | 2026-12-17 | 7494 |  | 7 Days Work | 9283064 |
| 7496 | 36900.37000.37100.37400.38100.48900.582800 | Fire Fighting painting | 5d | 2026-12-18 | 2026-12-22 | 7495 |  | 7 Days Work | 9283074 |
| 7497 | 36900.37000.37100.37400.38100.48900.582900 | Protection of all flooring, door & window hardware | 5d | 2026-12-23 | 2026-12-27 | 7496 |  | 7 Days Work | 9283084 |
| 7498 | 36900.37000.37100.37400.38100.48900.583000 | 1st coat primer- ceiling 1st & walls | 14d | 2026-12-28 | 2027-01-10 | 7497 |  | 7 Days Work | 9283094 |
| 7499 | 36900.37000.37100.37400.38100.48900.583100 | Wooden Flooring | 5d | 2027-01-11 | 2027-01-15 | 7498 |  | 7 Days Work | 9283104 |
| 7500 | 36900.37000.37100.37400.38100.48900.583200 | Removing of Temporary Railing & installation of Glass Railing | 5d | 2027-01-11 | 2027-01-15 | 7498 |  | 7 Days Work | 9283114 |
| 7501 | 36900.37000.37100.37400.38100.48900.583300 | Tile Grouting | 7d | 2027-01-11 | 2027-01-17 | 7498 |  | 7 Days Work | 9283124 |
| 7502 | 36900.37000.37100.37400.38100.48900.583400 | False Ceiling | 5d | 2027-01-18 | 2027-01-22 | 7501 |  | 7 Days Work | 9283134 |
| 7503 | 36900.37000.37100.37400.38100.48900.583500 | 2nd coat of primer | 10d | 2027-01-23 | 2027-02-01 | 7502 |  | 7 Days Work | 9283144 |
| 7504 | 36900.37000.37100.37400.38100.48900.583600 | Final cutting/polishing of stone flooring | 7d | 2027-02-02 | 2027-02-08 | 7503 |  | 7 Days Work | 9283154 |

| ID | WBS | Task | Duration | Start | Finish | Predecessors | Constraint | Calendar | Unique_Task_ID |
| --- | --- | --- | --- | --- | --- | --- | --- | --- | --- |
| 7505 | 36900.37000.37100.37400.38100.48900.63200 | **Toilet** | 237d | 2026-06-16 | 2027-02-07 |  | start no earlier than 2026-06-16 | 7 Days Work | 9279824 |
| 7506 | 36900.37000.37100.37400.38100.48900.63200.961700 | Toilet_MEP Clearance -1 | 7d | 2026-06-16 | 2026-06-22 | 7469 |  | 7 Days Work | 9290824 |
| 7507 | 36900.37000.37100.37400.38100.48900.63200.961800 | Toilet_Level Marking | 1d | 2026-06-23 | 2026-06-23 | 7506 |  | 7 Days Work | 9290834 |
| 7508 | 36900.37000.37100.37400.38100.48900.63200.961900 | Toilet_Chasing work for Electrical conduit & concealed plumbing | 5d | 2026-06-24 | 2026-06-28 | 7507 |  | 7 Days Work | 9290844 |
| 7509 | 36900.37000.37100.37400.38100.48900.63200.962000 | Toilet_Plumbing work 1st fix | 5d | 2026-06-29 | 2026-07-03 | 7508 |  | 7 Days Work | 9290854 |
| 7510 | 36900.37000.37100.37400.38100.48900.63200.962100 | Toilet_Sleeve/Bore Packing | 5d | 2026-07-04 | 2026-07-08 | 7509 |  | 7 Days Work | 9290864 |
| 7511 | 36900.37000.37100.37400.38100.48900.63200.962200 | Toilet_Waterproofing | 10d | 2026-07-09 | 2026-07-18 | 7510 |  | 7 Days Work | 9290874 |
| 7512 | 36900.37000.37100.37400.38100.48900.63200.962300 | Toilet_Screed | 1d | 2026-07-19 | 2026-07-19 | 7511 |  | 7 Days Work | 9290884 |
| 7513 | 36900.37000.37100.37400.38100.48900.63200.962400 | Toilet_Plumbing 2nd fix | 5d | 2026-07-20 | 2026-07-24 | 7512 |  | 7 Days Work | 9290894 |
| 7514 | 36900.37000.37100.37400.38100.48900.63200.962500 | Toilet_Ledge wall | 5d | 2026-07-25 | 2026-07-29 | 7513 |  | 7 Days Work | 9290904 |
| 7515 | 36900.37000.37100.37400.38100.48900.63200.962600 | Toilet_Cement Plaster | 5d | 2026-07-30 | 2026-08-03 | 7514 |  | 7 Days Work | 9290914 |
| 7516 | 36900.37000.37100.37400.38100.48900.63200.962700 | Toilet_Door Frame | 1d | 2026-08-04 | 2026-08-04 | 7515 |  | 7 Days Work | 9290924 |
| 7517 | 36900.37000.37100.37400.38100.48900.63200.962800 | Toilet_Wash basin & Couter | 3d | 2026-08-05 | 2026-08-07 | 7516 |  | 7 Days Work | 9290934 |
| 7518 | 36900.37000.37100.37400.38100.48900.63200.962900 | Toilet_Wall dado | 20d | 2026-08-08 | 2026-08-27 | 7517 |  | 7 Days Work | 9290944 |
| 7519 | 36900.37000.37100.37400.38100.48900.63200.963000 | Toilet_Granite Work-Ledge wall top | 3d | 2026-08-28 | 2026-08-30 | 7518 |  | 7 Days Work | 9290954 |
| 7520 | 36900.37000.37100.37400.38100.48900.63200.963100 | Toilet_Floor Tilling work | 20d | 2026-08-31 | 2026-09-19 | 7519 |  | 7 Days Work | 9290964 |
| 7521 | 36900.37000.37100.37400.38100.48900.63200.963200 | Toilet_1st row of dado | 5d | 2026-09-20 | 2026-09-24 | 7520 |  | 7 Days Work | 9290974 |
| 7522 | 36900.37000.37100.37400.38100.48900.63200.963300 | Toilet_Window Fixing | 14d | 2026-09-25 | 2026-10-08 | 7521 |  | 7 Days Work | 9290984 |
| 7523 | 36900.37000.37100.37400.38100.48900.63200.963400 | Toilet_Services above False ceiling | 21d | 2026-10-09 | 2026-10-29 | 7522 |  | 7 Days Work | 9290994 |
| 7524 | 36900.37000.37100.37400.38100.48900.63200.963500 | Toilet_False Ceiling framing | 12d | 2026-10-30 | 2026-11-10 | 7523 |  | 7 Days Work | 9291004 |
| 7525 | 36900.37000.37100.37400.38100.48900.63200.963600 | Toilet_Door Frame | 5d | 2026-11-11 | 2026-11-15 | 7524 |  | 7 Days Work | 9291014 |
| 7526 | 36900.37000.37100.37400.38100.48900.63200.963700 | Toilet_Epoxy Tile Grouting | 7d | 2027-01-11 | 2027-01-17 | 7501SS |  | 7 Days Work | 9291024 |
| 7527 | 36900.37000.37100.37400.38100.48900.63200.963800 | Toilet_False ceiling board fixing, CP Sanitary Fixture, Electric Fixture | 21d | 2027-01-18 | 2027-02-07 | 7526 |  | 7 Days Work | 9291034 |
| 7528 | 36900.37000.37100.37400.38100.49000 | **9th Habitable/10th Floor** | 245d | 2026-06-21 | 2027-02-20 |  | start no earlier than 2026-06-21 | 7 Days Work | 9279624 |
| 7529 | 36900.37000.37100.37400.38100.49000.583700 | Post Pour | 7d | 2026-06-21 | 2026-06-27 | 7037 |  | 7 Days Work | 9283164 |
| 7530 | 36900.37000.37100.37400.38100.49000.583800 | MEP Clearance -1 | 5d | 2026-06-28 | 2026-07-02 | 7529 |  | 7 Days Work | 9283174 |
| 7531 | 36900.37000.37100.37400.38100.49000.583900 | Benchmark | 1d | 2026-07-03 | 2026-07-03 | 7530 |  | 7 Days Work | 9283184 |
| 7532 | 36900.37000.37100.37400.38100.49000.584000 | Temporary Railing | 3d | 2026-07-04 | 2026-07-06 | 7531 |  | 7 Days Work | 9283194 |
| 7533 | 36900.37000.37100.37400.38100.49000.584100 | Blockwork | 10d | 2026-07-07 | 2026-07-16 | 7532 |  | 7 Days Work | 9283204 |
| 7534 | 36900.37000.37100.37400.38100.49000.584200 | MEP Clearance -2 | 10d | 2026-07-17 | 2026-07-26 | 7533 |  | 7 Days Work | 9283214 |
| 7535 | 36900.37000.37100.37400.38100.49000.584300 | Gypsum Plaster | 14d | 2026-07-27 | 2026-08-09 | 7534 |  | 7 Days Work | 9283224 |
| 7536 | 36900.37000.37100.37400.38100.49000.584400 | Kitchen Platform | 3d | 2026-08-10 | 2026-08-12 | 7535 |  | 7 Days Work | 9283234 |
| 7537 | 36900.37000.37100.37400.38100.49000.584500 | Kitchen dado | 7d | 2026-08-13 | 2026-08-19 | 7536 |  | 7 Days Work | 9283244 |
| 7538 | 36900.37000.37100.37400.38100.49000.584600 | Fire Fighting | 5d | 2026-08-20 | 2026-08-24 | 7537 |  | 7 Days Work | 9283254 |
| 7539 | 36900.37000.37100.37400.38100.49000.584700 | Anticapilary | 5d | 2026-08-25 | 2026-08-29 | 7538 |  | 7 Days Work | 9283264 |
| 7540 | 36900.37000.37100.37400.38100.49000.584800 | Stone Laying | 10d | 2026-10-02 | 2026-10-11 | 7580 |  | 7 Days Work | 9283274 |
| 7541 | 36900.37000.37100.37400.38100.49000.584900 | Tiles Laying | 7d | 2026-10-02 | 2026-10-08 | 7580 |  | 7 Days Work | 9283284 |
| 7542 | 36900.37000.37100.37400.38100.49000.585000 | 1st cutting/polishing of stone flooring | 7d | 2026-10-09 | 2026-10-15 | 7541 |  | 7 Days Work | 9283294 |
| 7543 | 36900.37000.37100.37400.38100.49000.585100 | Tiles/Stone skirting | 5d | 2026-10-16 | 2026-10-20 | 7542 |  | 7 Days Work | 9283304 |
| 7544 | 36900.37000.37100.37400.38100.49000.585200 | Protechtion sheet | 1d | 2026-10-21 | 2026-10-21 | 7543 |  | 7 Days Work | 9283314 |
| 7545 | 36900.37000.37100.37400.38100.49000.585300 | Installation of Temporary Door | 1d | 2026-10-22 | 2026-10-22 | 7544 |  | 7 Days Work | 9283324 |
| 7546 | 36900.37000.37100.37400.38100.49000.585400 | Fixing of window tracks | 5d | 2026-10-23 | 2026-10-27 | 7545 |  | 7 Days Work | 9283334 |
| 7547 | 36900.37000.37100.37400.38100.49000.585500 | Wire Pulling | 7d | 2026-10-28 | 2026-11-03 | 7546 |  | 7 Days Work | 9283344 |
| 7548 | 36900.37000.37100.37400.38100.49000.585600 | Gypsum Remaining | 5d | 2026-11-04 | 2026-11-08 | 7547 |  | 7 Days Work | 9283354 |
| 7549 | 36900.37000.37100.37400.38100.49000.585700 | Fixing of windoow shutter | 5d | 2026-11-09 | 2026-11-13 | 7548 |  | 7 Days Work | 9283364 |
| 7550 | 36900.37000.37100.37400.38100.49000.585800 | Putty Works - walls & ceiling | 15d | 2026-11-14 | 2026-11-28 | 7549 |  | 7 Days Work | 9283374 |
| 7551 | 36900.37000.37100.37400.38100.49000.585900 | False Ceiling- Framing | 10d | 2026-11-29 | 2026-12-08 | 7550 |  | 7 Days Work | 9283384 |
| 7552 | 36900.37000.37100.37400.38100.49000.586000 | Pre Hung Door | 3d | 2026-12-09 | 2026-12-11 | 7551 |  | 7 Days Work | 9283394 |
| 7553 | 36900.37000.37100.37400.38100.49000.586100 | Protechtion sheet | 2d | 2026-12-12 | 2026-12-13 | 7552 |  | 7 Days Work | 9283404 |
| 7554 | 36900.37000.37100.37400.38100.49000.586200 | Skirting near door | 2d | 2026-12-14 | 2026-12-15 | 7553 |  | 7 Days Work | 9283414 |
| 7555 | 36900.37000.37100.37400.38100.49000.586300 | Electrical Switch box fixing | 14d | 2026-12-16 | 2026-12-29 | 7554 |  | 7 Days Work | 9283424 |
| 7556 | 36900.37000.37100.37400.38100.49000.586400 | Fire Fighting painting | 5d | 2026-12-30 | 2027-01-03 | 7555 |  | 7 Days Work | 9283434 |
| 7557 | 36900.37000.37100.37400.38100.49000.586500 | Protection of all flooring, door & window hardware | 5d | 2027-01-04 | 2027-01-08 | 7556 |  | 7 Days Work | 9283444 |
| 7558 | 36900.37000.37100.37400.38100.49000.586600 | 1st coat primer- ceiling 1st & walls | 14d | 2027-01-09 | 2027-01-22 | 7557 |  | 7 Days Work | 9283454 |
| 7559 | 36900.37000.37100.37400.38100.49000.586700 | Wooden Flooring | 5d | 2027-01-23 | 2027-01-27 | 7558 |  | 7 Days Work | 9283464 |
| 7560 | 36900.37000.37100.37400.38100.49000.586800 | Removing of Temporary Railing & installation of Glass Railing | 5d | 2027-01-23 | 2027-01-27 | 7558 |  | 7 Days Work | 9283474 |
| 7561 | 36900.37000.37100.37400.38100.49000.586900 | Tile Grouting | 7d | 2027-01-23 | 2027-01-29 | 7558 |  | 7 Days Work | 9283484 |
| 7562 | 36900.37000.37100.37400.38100.49000.587000 | False Ceiling | 5d | 2027-01-30 | 2027-02-03 | 7561 |  | 7 Days Work | 9283494 |
| 7563 | 36900.37000.37100.37400.38100.49000.587100 | 2nd coat of primer | 10d | 2027-02-04 | 2027-02-13 | 7562 |  | 7 Days Work | 9283504 |
| 7564 | 36900.37000.37100.37400.38100.49000.587200 | Final cutting/polishing of stone flooring | 7d | 2027-02-14 | 2027-02-20 | 7563 |  | 7 Days Work | 9283514 |

| ID | WBS | Task | Duration | Start | Finish | Predecessors | Constraint | Calendar | Unique_Task_ID |
| --- | --- | --- | --- | --- | --- | --- | --- | --- | --- |
| 7565 | 36900.37000.37100.37400.38100.49000.63300 | **Toilet** | 237d | 2026-06-28 | 2027-02-19 |  | start no earlier than 2026-06-28 | 7 Days Work | 9279834 |
| 7566 | 36900.37000.37100.37400.38100.49000.63300.963900 | Toilet_MEP Clearance -1 | 7d | 2026-06-28 | 2026-07-04 | 7529 |  | 7 Days Work | 9291044 |
| 7567 | 36900.37000.37100.37400.38100.49000.63300.964000 | Toilet_Level Marking | 1d | 2026-07-05 | 2026-07-05 | 7566 |  | 7 Days Work | 9291054 |
| 7568 | 36900.37000.37100.37400.38100.49000.63300.964100 | Toilet_Chasing work for Electrical conduit & concealed plumbing | 5d | 2026-07-06 | 2026-07-10 | 7567 |  | 7 Days Work | 9291064 |
| 7569 | 36900.37000.37100.37400.38100.49000.63300.964200 | Toilet_Plumbing work 1st fix | 5d | 2026-07-11 | 2026-07-15 | 7568 |  | 7 Days Work | 9291074 |
| 7570 | 36900.37000.37100.37400.38100.49000.63300.964300 | Toilet_Sleeve/Bore Packing | 5d | 2026-07-16 | 2026-07-20 | 7569 |  | 7 Days Work | 9291084 |
| 7571 | 36900.37000.37100.37400.38100.49000.63300.964400 | Toilet_Waterproofing | 10d | 2026-07-21 | 2026-07-30 | 7570 |  | 7 Days Work | 9291094 |
| 7572 | 36900.37000.37100.37400.38100.49000.63300.964500 | Toilet_Screed | 1d | 2026-07-31 | 2026-07-31 | 7571 |  | 7 Days Work | 9291104 |
| 7573 | 36900.37000.37100.37400.38100.49000.63300.964600 | Toilet_Plumbing 2nd fix | 5d | 2026-08-01 | 2026-08-05 | 7572 |  | 7 Days Work | 9291114 |
| 7574 | 36900.37000.37100.37400.38100.49000.63300.964700 | Toilet_Ledge wall | 5d | 2026-08-06 | 2026-08-10 | 7573 |  | 7 Days Work | 9291124 |
| 7575 | 36900.37000.37100.37400.38100.49000.63300.964800 | Toilet_Cement Plaster | 5d | 2026-08-11 | 2026-08-15 | 7574 |  | 7 Days Work | 9291134 |
| 7576 | 36900.37000.37100.37400.38100.49000.63300.964900 | Toilet_Door Frame | 1d | 2026-08-16 | 2026-08-16 | 7575 |  | 7 Days Work | 9291144 |
| 7577 | 36900.37000.37100.37400.38100.49000.63300.965000 | Toilet_Wash basin & Couter | 3d | 2026-08-17 | 2026-08-19 | 7576 |  | 7 Days Work | 9291154 |
| 7578 | 36900.37000.37100.37400.38100.49000.63300.965100 | Toilet_Wall dado | 20d | 2026-08-20 | 2026-09-08 | 7577 |  | 7 Days Work | 9291164 |
| 7579 | 36900.37000.37100.37400.38100.49000.63300.965200 | Toilet_Granite Work-Ledge wall top | 3d | 2026-09-09 | 2026-09-11 | 7578 |  | 7 Days Work | 9291174 |
| 7580 | 36900.37000.37100.37400.38100.49000.63300.965300 | Toilet_Floor Tilling work | 20d | 2026-09-12 | 2026-10-01 | 7579 |  | 7 Days Work | 9291184 |
| 7581 | 36900.37000.37100.37400.38100.49000.63300.965400 | Toilet_1st row of dado | 5d | 2026-10-02 | 2026-10-06 | 7580 |  | 7 Days Work | 9291194 |
| 7582 | 36900.37000.37100.37400.38100.49000.63300.965500 | Toilet_Window Fixing | 14d | 2026-10-07 | 2026-10-20 | 7581 |  | 7 Days Work | 9291204 |
| 7583 | 36900.37000.37100.37400.38100.49000.63300.965600 | Toilet_Services above False ceiling | 21d | 2026-10-21 | 2026-11-10 | 7582 |  | 7 Days Work | 9291214 |
| 7584 | 36900.37000.37100.37400.38100.49000.63300.965700 | Toilet_False Ceiling framing | 12d | 2026-11-11 | 2026-11-22 | 7583 |  | 7 Days Work | 9291224 |
| 7585 | 36900.37000.37100.37400.38100.49000.63300.965800 | Toilet_Door Frame | 5d | 2026-11-23 | 2026-11-27 | 7584 |  | 7 Days Work | 9291234 |
| 7586 | 36900.37000.37100.37400.38100.49000.63300.965900 | Toilet_Epoxy Tile Grouting | 7d | 2027-01-23 | 2027-01-29 | 7561SS |  | 7 Days Work | 9291244 |
| 7587 | 36900.37000.37100.37400.38100.49000.63300.966000 | Toilet_False ceiling board fixing, CP Sanitary Fixture, Electric Fixture | 21d | 2027-01-30 | 2027-02-19 | 7586 |  | 7 Days Work | 9291254 |
| 7588 | 36900.37000.37100.37400.38100.49100 | **10th Habitable/11th Floor** | 245d | 2026-07-03 | 2027-03-04 |  | start no earlier than 2026-07-03 | 7 Days Work | 9279634 |
| 7589 | 36900.37000.37100.37400.38100.49100.587300 | Post Pour | 7d | 2026-07-03 | 2026-07-09 | 7038 |  | 7 Days Work | 9283524 |
| 7590 | 36900.37000.37100.37400.38100.49100.587400 | MEP Clearance -1 | 5d | 2026-07-10 | 2026-07-14 | 7589 |  | 7 Days Work | 9283534 |
| 7591 | 36900.37000.37100.37400.38100.49100.587500 | Benchmark | 1d | 2026-07-15 | 2026-07-15 | 7590 |  | 7 Days Work | 9283544 |
| 7592 | 36900.37000.37100.37400.38100.49100.587600 | Temporary Railing | 3d | 2026-07-16 | 2026-07-18 | 7591 |  | 7 Days Work | 9283554 |
| 7593 | 36900.37000.37100.37400.38100.49100.587700 | Blockwork | 10d | 2026-07-19 | 2026-07-28 | 7592 |  | 7 Days Work | 9283564 |
| 7594 | 36900.37000.37100.37400.38100.49100.587800 | MEP Clearance -2 | 10d | 2026-07-29 | 2026-08-07 | 7593 |  | 7 Days Work | 9283574 |
| 7595 | 36900.37000.37100.37400.38100.49100.587900 | Gypsum Plaster | 14d | 2026-08-08 | 2026-08-21 | 7594 |  | 7 Days Work | 9283584 |
| 7596 | 36900.37000.37100.37400.38100.49100.588000 | Kitchen Platform | 3d | 2026-08-22 | 2026-08-24 | 7595 |  | 7 Days Work | 9283594 |
| 7597 | 36900.37000.37100.37400.38100.49100.588100 | Kitchen dado | 7d | 2026-08-25 | 2026-08-31 | 7596 |  | 7 Days Work | 9283604 |
| 7598 | 36900.37000.37100.37400.38100.49100.588200 | Fire Fighting | 5d | 2026-09-01 | 2026-09-05 | 7597 |  | 7 Days Work | 9283614 |
| 7599 | 36900.37000.37100.37400.38100.49100.588300 | Anticapilary | 5d | 2026-09-06 | 2026-09-10 | 7598 |  | 7 Days Work | 9283624 |
| 7600 | 36900.37000.37100.37400.38100.49100.588400 | Stone Laying | 10d | 2026-10-14 | 2026-10-23 | 7640 |  | 7 Days Work | 9283634 |
| 7601 | 36900.37000.37100.37400.38100.49100.588500 | Tiles Laying | 7d | 2026-10-14 | 2026-10-20 | 7640 |  | 7 Days Work | 9283644 |
| 7602 | 36900.37000.37100.37400.38100.49100.588600 | 1st cutting/polishing of stone flooring | 7d | 2026-10-21 | 2026-10-27 | 7601 |  | 7 Days Work | 9283654 |
| 7603 | 36900.37000.37100.37400.38100.49100.588700 | Tiles/Stone skirting | 5d | 2026-10-28 | 2026-11-01 | 7602 |  | 7 Days Work | 9283664 |
| 7604 | 36900.37000.37100.37400.38100.49100.588800 | Protechtion sheet | 1d | 2026-11-02 | 2026-11-02 | 7603 |  | 7 Days Work | 9283674 |
| 7605 | 36900.37000.37100.37400.38100.49100.588900 | Installation of Temporary Door | 1d | 2026-11-03 | 2026-11-03 | 7604 |  | 7 Days Work | 9283684 |
| 7606 | 36900.37000.37100.37400.38100.49100.589000 | Fixing of window tracks | 5d | 2026-11-04 | 2026-11-08 | 7605 |  | 7 Days Work | 9283694 |
| 7607 | 36900.37000.37100.37400.38100.49100.589100 | Wire Pulling | 7d | 2026-11-09 | 2026-11-15 | 7606 |  | 7 Days Work | 9283704 |
| 7608 | 36900.37000.37100.37400.38100.49100.589200 | Gypsum Remaining | 5d | 2026-11-16 | 2026-11-20 | 7607 |  | 7 Days Work | 9283714 |
| 7609 | 36900.37000.37100.37400.38100.49100.589300 | Fixing of windoow shutter | 5d | 2026-11-21 | 2026-11-25 | 7608 |  | 7 Days Work | 9283724 |
| 7610 | 36900.37000.37100.37400.38100.49100.589400 | Putty Works - walls & ceiling | 15d | 2026-11-26 | 2026-12-10 | 7609 |  | 7 Days Work | 9283734 |
| 7611 | 36900.37000.37100.37400.38100.49100.589500 | False Ceiling- Framing | 10d | 2026-12-11 | 2026-12-20 | 7610 |  | 7 Days Work | 9283744 |
| 7612 | 36900.37000.37100.37400.38100.49100.589600 | Pre Hung Door | 3d | 2026-12-21 | 2026-12-23 | 7611 |  | 7 Days Work | 9283754 |
| 7613 | 36900.37000.37100.37400.38100.49100.589700 | Protechtion sheet | 2d | 2026-12-24 | 2026-12-25 | 7612 |  | 7 Days Work | 9283764 |
| 7614 | 36900.37000.37100.37400.38100.49100.589800 | Skirting near door | 2d | 2026-12-26 | 2026-12-27 | 7613 |  | 7 Days Work | 9283774 |
| 7615 | 36900.37000.37100.37400.38100.49100.589900 | Electrical Switch box fixing | 14d | 2026-12-28 | 2027-01-10 | 7614 |  | 7 Days Work | 9283784 |
| 7616 | 36900.37000.37100.37400.38100.49100.590000 | Fire Fighting painting | 5d | 2027-01-11 | 2027-01-15 | 7615 |  | 7 Days Work | 9283794 |
| 7617 | 36900.37000.37100.37400.38100.49100.590100 | Protection of all flooring, door & window hardware | 5d | 2027-01-16 | 2027-01-20 | 7616 |  | 7 Days Work | 9283804 |
| 7618 | 36900.37000.37100.37400.38100.49100.590200 | 1st coat primer- ceiling 1st & walls | 14d | 2027-01-21 | 2027-02-03 | 7617 |  | 7 Days Work | 9283814 |
| 7619 | 36900.37000.37100.37400.38100.49100.590300 | Wooden Flooring | 5d | 2027-02-04 | 2027-02-08 | 7618 |  | 7 Days Work | 9283824 |
| 7620 | 36900.37000.37100.37400.38100.49100.590400 | Removing of Temporary Railing & installation of Glass Railing | 5d | 2027-02-04 | 2027-02-08 | 7618 |  | 7 Days Work | 9283834 |
| 7621 | 36900.37000.37100.37400.38100.49100.590500 | Tile Grouting | 7d | 2027-02-04 | 2027-02-10 | 7618 |  | 7 Days Work | 9283844 |
| 7622 | 36900.37000.37100.37400.38100.49100.590600 | False Ceiling | 5d | 2027-02-11 | 2027-02-15 | 7621 |  | 7 Days Work | 9283854 |
| 7623 | 36900.37000.37100.37400.38100.49100.590700 | 2nd coat of primer | 10d | 2027-02-16 | 2027-02-25 | 7622 |  | 7 Days Work | 9283864 |
| 7624 | 36900.37000.37100.37400.38100.49100.590800 | Final cutting/polishing of stone flooring | 7d | 2027-02-26 | 2027-03-04 | 7623 |  | 7 Days Work | 9283874 |

| ID | WBS | Task | Duration | Start | Finish | Predecessors | Constraint | Calendar | Unique_Task_ID |
| --- | --- | --- | --- | --- | --- | --- | --- | --- | --- |
| 7625 | 36900.37000.37100.37400.38100.49100.63400 | **Toilet** | 237d | 2026-07-10 | 2027-03-03 |  | start no earlier than 2026-07-10 | 7 Days Work | 9279844 |
| 7626 | 36900.37000.37100.37400.38100.49100.63400.966100 | Toilet_MEP Clearance -1 | 7d | 2026-07-10 | 2026-07-16 | 7589 |  | 7 Days Work | 9291264 |
| 7627 | 36900.37000.37100.37400.38100.49100.63400.966200 | Toilet_Level Marking | 1d | 2026-07-17 | 2026-07-17 | 7626 |  | 7 Days Work | 9291274 |
| 7628 | 36900.37000.37100.37400.38100.49100.63400.966300 | Toilet_Chasing work for Electrical conduit & concealed plumbing | 5d | 2026-07-18 | 2026-07-22 | 7627 |  | 7 Days Work | 9291284 |
| 7629 | 36900.37000.37100.37400.38100.49100.63400.966400 | Toilet_Plumbing work 1st fix | 5d | 2026-07-23 | 2026-07-27 | 7628 |  | 7 Days Work | 9291294 |
| 7630 | 36900.37000.37100.37400.38100.49100.63400.966500 | Toilet_Sleeve/Bore Packing | 5d | 2026-07-28 | 2026-08-01 | 7629 |  | 7 Days Work | 9291304 |
| 7631 | 36900.37000.37100.37400.38100.49100.63400.966600 | Toilet_Waterproofing | 10d | 2026-08-02 | 2026-08-11 | 7630 |  | 7 Days Work | 9291314 |
| 7632 | 36900.37000.37100.37400.38100.49100.63400.966700 | Toilet_Screed | 1d | 2026-08-12 | 2026-08-12 | 7631 |  | 7 Days Work | 9291324 |
| 7633 | 36900.37000.37100.37400.38100.49100.63400.966800 | Toilet_Plumbing 2nd fix | 5d | 2026-08-13 | 2026-08-17 | 7632 |  | 7 Days Work | 9291334 |
| 7634 | 36900.37000.37100.37400.38100.49100.63400.966900 | Toilet_Ledge wall | 5d | 2026-08-18 | 2026-08-22 | 7633 |  | 7 Days Work | 9291344 |
| 7635 | 36900.37000.37100.37400.38100.49100.63400.967000 | Toilet_Cement Plaster | 5d | 2026-08-23 | 2026-08-27 | 7634 |  | 7 Days Work | 9291354 |
| 7636 | 36900.37000.37100.37400.38100.49100.63400.967100 | Toilet_Door Frame | 1d | 2026-08-28 | 2026-08-28 | 7635 |  | 7 Days Work | 9291364 |
| 7637 | 36900.37000.37100.37400.38100.49100.63400.967200 | Toilet_Wash basin & Couter | 3d | 2026-08-29 | 2026-08-31 | 7636 |  | 7 Days Work | 9291374 |
| 7638 | 36900.37000.37100.37400.38100.49100.63400.967300 | Toilet_Wall dado | 20d | 2026-09-01 | 2026-09-20 | 7637 |  | 7 Days Work | 9291384 |
| 7639 | 36900.37000.37100.37400.38100.49100.63400.967400 | Toilet_Granite Work-Ledge wall top | 3d | 2026-09-21 | 2026-09-23 | 7638 |  | 7 Days Work | 9291394 |
| 7640 | 36900.37000.37100.37400.38100.49100.63400.967500 | Toilet_Floor Tilling work | 20d | 2026-09-24 | 2026-10-13 | 7639 |  | 7 Days Work | 9291404 |
| 7641 | 36900.37000.37100.37400.38100.49100.63400.967600 | Toilet_1st row of dado | 5d | 2026-10-14 | 2026-10-18 | 7640 |  | 7 Days Work | 9291414 |
| 7642 | 36900.37000.37100.37400.38100.49100.63400.967700 | Toilet_Window Fixing | 14d | 2026-10-19 | 2026-11-01 | 7641 |  | 7 Days Work | 9291424 |
| 7643 | 36900.37000.37100.37400.38100.49100.63400.967800 | Toilet_Services above False ceiling | 21d | 2026-11-02 | 2026-11-22 | 7642 |  | 7 Days Work | 9291434 |
| 7644 | 36900.37000.37100.37400.38100.49100.63400.967900 | Toilet_False Ceiling framing | 12d | 2026-11-23 | 2026-12-04 | 7643 |  | 7 Days Work | 9291444 |
| 7645 | 36900.37000.37100.37400.38100.49100.63400.968000 | Toilet_Door Frame | 5d | 2026-12-05 | 2026-12-09 | 7644 |  | 7 Days Work | 9291454 |
| 7646 | 36900.37000.37100.37400.38100.49100.63400.968100 | Toilet_Epoxy Tile Grouting | 7d | 2027-02-04 | 2027-02-10 | 7621SS |  | 7 Days Work | 9291464 |
| 7647 | 36900.37000.37100.37400.38100.49100.63400.968200 | Toilet_False ceiling board fixing, CP Sanitary Fixture, Electric Fixture | 21d | 2027-02-11 | 2027-03-03 | 7646 |  | 7 Days Work | 9291474 |
| 7648 | 36900.37000.37100.37400.38100.49200 | **11th Habitable/12th Floor** | 472d | 2025-11-30 | 2027-03-16 |  | start no earlier than 2025-11-30 | 7 Days Work | 9279644 |
| 7649 | 36900.37000.37100.37400.38100.49200.590900 | Post Pour | 7d | 2026-07-15 | 2026-07-21 | 7039 |  | 7 Days Work | 9283884 |
| 7650 | 36900.37000.37100.37400.38100.49200.591000 | MEP Clearance -1 | 5d | 2026-07-22 | 2026-07-26 | 7649 |  | 7 Days Work | 9283894 |
| 7651 | 36900.37000.37100.37400.38100.49200.591100 | Benchmark | 1d | 2026-07-27 | 2026-07-27 | 7650 |  | 7 Days Work | 9283904 |
| 7652 | 36900.37000.37100.37400.38100.49200.591200 | Temporary Railing | 3d | 2026-07-28 | 2026-07-30 | 7651 |  | 7 Days Work | 9283914 |
| 7653 | 36900.37000.37100.37400.38100.49200.591300 | Blockwork | 10d | 2026-07-31 | 2026-08-09 | 7652 |  | 7 Days Work | 9283924 |
| 7654 | 36900.37000.37100.37400.38100.49200.591400 | MEP Clearance -2 | 10d | 2026-08-10 | 2026-08-19 | 7653 |  | 7 Days Work | 9283934 |
| 7655 | 36900.37000.37100.37400.38100.49200.591500 | Gypsum Plaster | 5d | 2025-11-30 | 2025-12-04 |  | start no earlier than 2025-11-30 | 7 Days Work | 9283585 |
| 7656 | 36900.37000.37100.37400.38100.49200.591600 | Gypsum Plaster | 14d | 2026-08-20 | 2026-09-02 | 7654, 7655 |  | 7 Days Work | 9283944 |
| 7657 | 36900.37000.37100.37400.38100.49200.591700 | Kitchen Platform | 3d | 2026-09-03 | 2026-09-05 | 7656 |  | 7 Days Work | 9283954 |
| 7658 | 36900.37000.37100.37400.38100.49200.591800 | Kitchen dado | 7d | 2026-09-06 | 2026-09-12 | 7657 |  | 7 Days Work | 9283964 |
| 7659 | 36900.37000.37100.37400.38100.49200.591900 | Fire Fighting | 5d | 2026-09-13 | 2026-09-17 | 7658 |  | 7 Days Work | 9283974 |
| 7660 | 36900.37000.37100.37400.38100.49200.592000 | Anticapilary | 5d | 2026-09-18 | 2026-09-22 | 7659 |  | 7 Days Work | 9283984 |
| 7661 | 36900.37000.37100.37400.38100.49200.592100 | Stone Laying | 10d | 2026-10-26 | 2026-11-04 | 7701 |  | 7 Days Work | 9283994 |
| 7662 | 36900.37000.37100.37400.38100.49200.592200 | Tiles Laying | 7d | 2026-10-26 | 2026-11-01 | 7701 |  | 7 Days Work | 9284004 |
| 7663 | 36900.37000.37100.37400.38100.49200.592300 | 1st cutting/polishing of stone flooring | 7d | 2026-11-02 | 2026-11-08 | 7662 |  | 7 Days Work | 9284014 |
| 7664 | 36900.37000.37100.37400.38100.49200.592400 | Tiles/Stone skirting | 5d | 2026-11-09 | 2026-11-13 | 7663 |  | 7 Days Work | 9284024 |
| 7665 | 36900.37000.37100.37400.38100.49200.592500 | Protechtion sheet | 1d | 2026-11-14 | 2026-11-14 | 7664 |  | 7 Days Work | 9284034 |
| 7666 | 36900.37000.37100.37400.38100.49200.592600 | Installation of Temporary Door | 1d | 2026-11-15 | 2026-11-15 | 7665 |  | 7 Days Work | 9284044 |
| 7667 | 36900.37000.37100.37400.38100.49200.592700 | Fixing of window tracks | 5d | 2026-11-16 | 2026-11-20 | 7666 |  | 7 Days Work | 9284054 |
| 7668 | 36900.37000.37100.37400.38100.49200.592800 | Wire Pulling | 7d | 2026-11-21 | 2026-11-27 | 7667 |  | 7 Days Work | 9284064 |
| 7669 | 36900.37000.37100.37400.38100.49200.592900 | Gypsum Remaining | 5d | 2026-11-28 | 2026-12-02 | 7668 |  | 7 Days Work | 9284074 |
| 7670 | 36900.37000.37100.37400.38100.49200.593000 | Fixing of windoow shutter | 5d | 2026-12-03 | 2026-12-07 | 7669 |  | 7 Days Work | 9284084 |
| 7671 | 36900.37000.37100.37400.38100.49200.593100 | Putty Works - walls & ceiling | 15d | 2026-12-08 | 2026-12-22 | 7670 |  | 7 Days Work | 9284094 |
| 7672 | 36900.37000.37100.37400.38100.49200.593200 | False Ceiling- Framing | 10d | 2026-12-23 | 2027-01-01 | 7671 |  | 7 Days Work | 9284104 |
| 7673 | 36900.37000.37100.37400.38100.49200.593300 | Pre Hung Door | 3d | 2027-01-02 | 2027-01-04 | 7672 |  | 7 Days Work | 9284114 |
| 7674 | 36900.37000.37100.37400.38100.49200.593400 | Protechtion sheet | 2d | 2027-01-05 | 2027-01-06 | 7673 |  | 7 Days Work | 9284124 |
| 7675 | 36900.37000.37100.37400.38100.49200.593500 | Skirting near door | 2d | 2027-01-07 | 2027-01-08 | 7674 |  | 7 Days Work | 9284134 |
| 7676 | 36900.37000.37100.37400.38100.49200.593600 | Electrical Switch box fixing | 14d | 2027-01-09 | 2027-01-22 | 7675 |  | 7 Days Work | 9284144 |
| 7677 | 36900.37000.37100.37400.38100.49200.593700 | Fire Fighting painting | 5d | 2027-01-23 | 2027-01-27 | 7676 |  | 7 Days Work | 9284154 |
| 7678 | 36900.37000.37100.37400.38100.49200.593800 | Protection of all flooring, door & window hardware | 5d | 2027-01-28 | 2027-02-01 | 7677 |  | 7 Days Work | 9284164 |
| 7679 | 36900.37000.37100.37400.38100.49200.593900 | 1st coat primer- ceiling 1st & walls | 14d | 2027-02-02 | 2027-02-15 | 7678 |  | 7 Days Work | 9284174 |
| 7680 | 36900.37000.37100.37400.38100.49200.594000 | Wooden Flooring | 5d | 2027-02-16 | 2027-02-20 | 7679 |  | 7 Days Work | 9284184 |
| 7681 | 36900.37000.37100.37400.38100.49200.594100 | Removing of Temporary Railing & installation of Glass Railing | 5d | 2027-02-16 | 2027-02-20 | 7679 |  | 7 Days Work | 9284194 |
| 7682 | 36900.37000.37100.37400.38100.49200.594200 | Tile Grouting | 7d | 2027-02-16 | 2027-02-22 | 7679 |  | 7 Days Work | 9284204 |
| 7683 | 36900.37000.37100.37400.38100.49200.594300 | False Ceiling | 5d | 2027-02-23 | 2027-02-27 | 7682 |  | 7 Days Work | 9284214 |
| 7684 | 36900.37000.37100.37400.38100.49200.594400 | 2nd coat of primer | 10d | 2027-02-28 | 2027-03-09 | 7683 |  | 7 Days Work | 9284224 |
| 7685 | 36900.37000.37100.37400.38100.49200.594500 | Final cutting/polishing of stone flooring | 7d | 2027-03-10 | 2027-03-16 | 7684 |  | 7 Days Work | 9284234 |

| ID | WBS | Task | Duration | Start | Finish | Predecessors | Constraint | Calendar | Unique_Task_ID |
| --- | --- | --- | --- | --- | --- | --- | --- | --- | --- |
| 7686 | 36900.37000.37100.37400.38100.49200.63500 | **Toilet** | 237d | 2026-07-22 | 2027-03-15 |  | start no earlier than 2026-07-22 | 7 Days Work | 9279854 |
| 7687 | 36900.37000.37100.37400.38100.49200.63500.968300 | Toilet_MEP Clearance -1 | 7d | 2026-07-22 | 2026-07-28 | 7649 |  | 7 Days Work | 9291484 |
| 7688 | 36900.37000.37100.37400.38100.49200.63500.968400 | Toilet_Level Marking | 1d | 2026-07-29 | 2026-07-29 | 7687 |  | 7 Days Work | 9291494 |
| 7689 | 36900.37000.37100.37400.38100.49200.63500.968500 | Toilet_Chasing work for Electrical conduit & concealed plumbing | 5d | 2026-07-30 | 2026-08-03 | 7688 |  | 7 Days Work | 9291504 |
| 7690 | 36900.37000.37100.37400.38100.49200.63500.968600 | Toilet_Plumbing work 1st fix | 5d | 2026-08-04 | 2026-08-08 | 7689 |  | 7 Days Work | 9291514 |
| 7691 | 36900.37000.37100.37400.38100.49200.63500.968700 | Toilet_Sleeve/Bore Packing | 5d | 2026-08-09 | 2026-08-13 | 7690 |  | 7 Days Work | 9291524 |
| 7692 | 36900.37000.37100.37400.38100.49200.63500.968800 | Toilet_Waterproofing | 10d | 2026-08-14 | 2026-08-23 | 7691 |  | 7 Days Work | 9291534 |
| 7693 | 36900.37000.37100.37400.38100.49200.63500.968900 | Toilet_Screed | 1d | 2026-08-24 | 2026-08-24 | 7692 |  | 7 Days Work | 9291544 |
| 7694 | 36900.37000.37100.37400.38100.49200.63500.969000 | Toilet_Plumbing 2nd fix | 5d | 2026-08-25 | 2026-08-29 | 7693 |  | 7 Days Work | 9291554 |
| 7695 | 36900.37000.37100.37400.38100.49200.63500.969100 | Toilet_Ledge wall | 5d | 2026-08-30 | 2026-09-03 | 7694 |  | 7 Days Work | 9291564 |
| 7696 | 36900.37000.37100.37400.38100.49200.63500.969200 | Toilet_Cement Plaster | 5d | 2026-09-04 | 2026-09-08 | 7695 |  | 7 Days Work | 9291574 |
| 7697 | 36900.37000.37100.37400.38100.49200.63500.969300 | Toilet_Door Frame | 1d | 2026-09-09 | 2026-09-09 | 7696 |  | 7 Days Work | 9291584 |
| 7698 | 36900.37000.37100.37400.38100.49200.63500.969400 | Toilet_Wash basin & Couter | 3d | 2026-09-10 | 2026-09-12 | 7697 |  | 7 Days Work | 9291594 |
| 7699 | 36900.37000.37100.37400.38100.49200.63500.969500 | Toilet_Wall dado | 20d | 2026-09-13 | 2026-10-02 | 7698 |  | 7 Days Work | 9291604 |
| 7700 | 36900.37000.37100.37400.38100.49200.63500.969600 | Toilet_Granite Work-Ledge wall top | 3d | 2026-10-03 | 2026-10-05 | 7699 |  | 7 Days Work | 9291614 |
| 7701 | 36900.37000.37100.37400.38100.49200.63500.969700 | Toilet_Floor Tilling work | 20d | 2026-10-06 | 2026-10-25 | 7700 |  | 7 Days Work | 9291624 |
| 7702 | 36900.37000.37100.37400.38100.49200.63500.969800 | Toilet_1st row of dado | 5d | 2026-10-26 | 2026-10-30 | 7701 |  | 7 Days Work | 9291634 |
| 7703 | 36900.37000.37100.37400.38100.49200.63500.969900 | Toilet_Window Fixing | 14d | 2026-10-31 | 2026-11-13 | 7702 |  | 7 Days Work | 9291644 |
| 7704 | 36900.37000.37100.37400.38100.49200.63500.970000 | Toilet_Services above False ceiling | 21d | 2026-11-14 | 2026-12-04 | 7703 |  | 7 Days Work | 9291654 |
| 7705 | 36900.37000.37100.37400.38100.49200.63500.970100 | Toilet_False Ceiling framing | 12d | 2026-12-05 | 2026-12-16 | 7704 |  | 7 Days Work | 9291664 |
| 7706 | 36900.37000.37100.37400.38100.49200.63500.970200 | Toilet_Door Frame | 5d | 2026-12-17 | 2026-12-21 | 7705 |  | 7 Days Work | 9291674 |
| 7707 | 36900.37000.37100.37400.38100.49200.63500.970300 | Toilet_Epoxy Tile Grouting | 7d | 2027-02-16 | 2027-02-22 | 7682SS |  | 7 Days Work | 9291684 |
| 7708 | 36900.37000.37100.37400.38100.49200.63500.970400 | Toilet_False ceiling board fixing, CP Sanitary Fixture, Electric Fixture | 21d | 2027-02-23 | 2027-03-15 | 7707 |  | 7 Days Work | 9291694 |
| 7709 | 36900.37000.37100.37400.38100.49300 | **12th Habitable/13th Floor** | 245d | 2026-07-27 | 2027-03-28 |  | start no earlier than 2026-07-27 | 7 Days Work | 9279654 |
| 7710 | 36900.37000.37100.37400.38100.49300.594600 | Post Pour | 7d | 2026-07-27 | 2026-08-02 | 7040 |  | 7 Days Work | 9284244 |
| 7711 | 36900.37000.37100.37400.38100.49300.594700 | MEP Clearance -1 | 5d | 2026-08-03 | 2026-08-07 | 7710 |  | 7 Days Work | 9284254 |
| 7712 | 36900.37000.37100.37400.38100.49300.594800 | Benchmark | 1d | 2026-08-08 | 2026-08-08 | 7711 |  | 7 Days Work | 9284264 |
| 7713 | 36900.37000.37100.37400.38100.49300.594900 | Temporary Railing | 3d | 2026-08-09 | 2026-08-11 | 7712 |  | 7 Days Work | 9284274 |
| 7714 | 36900.37000.37100.37400.38100.49300.595000 | Blockwork | 10d | 2026-08-12 | 2026-08-21 | 7713 |  | 7 Days Work | 9284284 |
| 7715 | 36900.37000.37100.37400.38100.49300.595100 | MEP Clearance -2 | 10d | 2026-08-22 | 2026-08-31 | 7714 |  | 7 Days Work | 9284294 |
| 7716 | 36900.37000.37100.37400.38100.49300.595200 | Gypsum Plaster | 14d | 2026-09-01 | 2026-09-14 | 7715 |  | 7 Days Work | 9284304 |
| 7717 | 36900.37000.37100.37400.38100.49300.595300 | Kitchen Platform | 3d | 2026-09-15 | 2026-09-17 | 7716 |  | 7 Days Work | 9284314 |
| 7718 | 36900.37000.37100.37400.38100.49300.595400 | Kitchen dado | 7d | 2026-09-18 | 2026-09-24 | 7717 |  | 7 Days Work | 9284324 |
| 7719 | 36900.37000.37100.37400.38100.49300.595500 | Fire Fighting | 5d | 2026-09-25 | 2026-09-29 | 7718 |  | 7 Days Work | 9284334 |
| 7720 | 36900.37000.37100.37400.38100.49300.595600 | Anticapilary | 5d | 2026-09-30 | 2026-10-04 | 7719 |  | 7 Days Work | 9284344 |
| 7721 | 36900.37000.37100.37400.38100.49300.595700 | Stone Laying | 10d | 2026-11-07 | 2026-11-16 | 7761 |  | 7 Days Work | 9284354 |
| 7722 | 36900.37000.37100.37400.38100.49300.595800 | Tiles Laying | 7d | 2026-11-07 | 2026-11-13 | 7761 |  | 7 Days Work | 9284364 |
| 7723 | 36900.37000.37100.37400.38100.49300.595900 | 1st cutting/polishing of stone flooring | 7d | 2026-11-14 | 2026-11-20 | 7722 |  | 7 Days Work | 9284374 |
| 7724 | 36900.37000.37100.37400.38100.49300.596000 | Tiles/Stone skirting | 5d | 2026-11-21 | 2026-11-25 | 7723 |  | 7 Days Work | 9284384 |
| 7725 | 36900.37000.37100.37400.38100.49300.596100 | Protechtion sheet | 1d | 2026-11-26 | 2026-11-26 | 7724 |  | 7 Days Work | 9284394 |
| 7726 | 36900.37000.37100.37400.38100.49300.596200 | Installation of Temporary Door | 1d | 2026-11-27 | 2026-11-27 | 7725 |  | 7 Days Work | 9284404 |
| 7727 | 36900.37000.37100.37400.38100.49300.596300 | Fixing of window tracks | 5d | 2026-11-28 | 2026-12-02 | 7726 |  | 7 Days Work | 9284414 |
| 7728 | 36900.37000.37100.37400.38100.49300.596400 | Wire Pulling | 7d | 2026-12-03 | 2026-12-09 | 7727 |  | 7 Days Work | 9284424 |
| 7729 | 36900.37000.37100.37400.38100.49300.596500 | Gypsum Remaining | 5d | 2026-12-10 | 2026-12-14 | 7728 |  | 7 Days Work | 9284434 |
| 7730 | 36900.37000.37100.37400.38100.49300.596600 | Fixing of windoow shutter | 5d | 2026-12-15 | 2026-12-19 | 7729 |  | 7 Days Work | 9284444 |
| 7731 | 36900.37000.37100.37400.38100.49300.596700 | Putty Works - walls & ceiling | 15d | 2026-12-20 | 2027-01-03 | 7730 |  | 7 Days Work | 9284454 |
| 7732 | 36900.37000.37100.37400.38100.49300.596800 | False Ceiling- Framing | 10d | 2027-01-04 | 2027-01-13 | 7731 |  | 7 Days Work | 9284464 |
| 7733 | 36900.37000.37100.37400.38100.49300.596900 | Pre Hung Door | 3d | 2027-01-14 | 2027-01-16 | 7732 |  | 7 Days Work | 9284474 |
| 7734 | 36900.37000.37100.37400.38100.49300.597000 | Protechtion sheet | 2d | 2027-01-17 | 2027-01-18 | 7733 |  | 7 Days Work | 9284484 |
| 7735 | 36900.37000.37100.37400.38100.49300.597100 | Skirting near door | 2d | 2027-01-19 | 2027-01-20 | 7734 |  | 7 Days Work | 9284494 |
| 7736 | 36900.37000.37100.37400.38100.49300.597200 | Electrical Switch box fixing | 14d | 2027-01-21 | 2027-02-03 | 7735 |  | 7 Days Work | 9284504 |
| 7737 | 36900.37000.37100.37400.38100.49300.597300 | Fire Fighting painting | 5d | 2027-02-04 | 2027-02-08 | 7736 |  | 7 Days Work | 9284514 |
| 7738 | 36900.37000.37100.37400.38100.49300.597400 | Protection of all flooring, door & window hardware | 5d | 2027-02-09 | 2027-02-13 | 7737 |  | 7 Days Work | 9284524 |
| 7739 | 36900.37000.37100.37400.38100.49300.597500 | 1st coat primer- ceiling 1st & walls | 14d | 2027-02-14 | 2027-02-27 | 7738 |  | 7 Days Work | 9284534 |
| 7740 | 36900.37000.37100.37400.38100.49300.597600 | Wooden Flooring | 5d | 2027-02-28 | 2027-03-04 | 7739 |  | 7 Days Work | 9284544 |
| 7741 | 36900.37000.37100.37400.38100.49300.597700 | Removing of Temporary Railing & installation of Glass Railing | 5d | 2027-02-28 | 2027-03-04 | 7739 |  | 7 Days Work | 9284554 |
| 7742 | 36900.37000.37100.37400.38100.49300.597800 | Tile Grouting | 7d | 2027-02-28 | 2027-03-06 | 7739 |  | 7 Days Work | 9284564 |
| 7743 | 36900.37000.37100.37400.38100.49300.597900 | False Ceiling | 5d | 2027-03-07 | 2027-03-11 | 7742 |  | 7 Days Work | 9284574 |
| 7744 | 36900.37000.37100.37400.38100.49300.598000 | 2nd coat of primer | 10d | 2027-03-12 | 2027-03-21 | 7743 |  | 7 Days Work | 9284584 |
| 7745 | 36900.37000.37100.37400.38100.49300.598100 | Final cutting/polishing of stone flooring | 7d | 2027-03-22 | 2027-03-28 | 7744 |  | 7 Days Work | 9284594 |

| ID | WBS | Task | Duration | Start | Finish | Predecessors | Constraint | Calendar | Unique_Task_ID |
| --- | --- | --- | --- | --- | --- | --- | --- | --- | --- |
| 7746 | 36900.37000.37100.37400.38100.49300.63600 | **Toilet** | 237d | 2026-08-03 | 2027-03-27 |  | start no earlier than 2026-08-03 | 7 Days Work | 9279864 |
| 7747 | 36900.37000.37100.37400.38100.49300.63600.970500 | Toilet_MEP Clearance -1 | 7d | 2026-08-03 | 2026-08-09 | 7710 |  | 7 Days Work | 9291704 |
| 7748 | 36900.37000.37100.37400.38100.49300.63600.970600 | Toilet_Level Marking | 1d | 2026-08-10 | 2026-08-10 | 7747 |  | 7 Days Work | 9291714 |
| 7749 | 36900.37000.37100.37400.38100.49300.63600.970700 | Toilet_Chasing work for Electrical conduit & concealed plumbing | 5d | 2026-08-11 | 2026-08-15 | 7748 |  | 7 Days Work | 9291724 |
| 7750 | 36900.37000.37100.37400.38100.49300.63600.970800 | Toilet_Plumbing work 1st fix | 5d | 2026-08-16 | 2026-08-20 | 7749 |  | 7 Days Work | 9291734 |
| 7751 | 36900.37000.37100.37400.38100.49300.63600.970900 | Toilet_Sleeve/Bore Packing | 5d | 2026-08-21 | 2026-08-25 | 7750 |  | 7 Days Work | 9291744 |
| 7752 | 36900.37000.37100.37400.38100.49300.63600.971000 | Toilet_Waterproofing | 10d | 2026-08-26 | 2026-09-04 | 7751 |  | 7 Days Work | 9291754 |
| 7753 | 36900.37000.37100.37400.38100.49300.63600.971100 | Toilet_Screed | 1d | 2026-09-05 | 2026-09-05 | 7752 |  | 7 Days Work | 9291764 |
| 7754 | 36900.37000.37100.37400.38100.49300.63600.971200 | Toilet_Plumbing 2nd fix | 5d | 2026-09-06 | 2026-09-10 | 7753 |  | 7 Days Work | 9291774 |
| 7755 | 36900.37000.37100.37400.38100.49300.63600.971300 | Toilet_Ledge wall | 5d | 2026-09-11 | 2026-09-15 | 7754 |  | 7 Days Work | 9291784 |
| 7756 | 36900.37000.37100.37400.38100.49300.63600.971400 | Toilet_Cement Plaster | 5d | 2026-09-16 | 2026-09-20 | 7755 |  | 7 Days Work | 9291794 |
| 7757 | 36900.37000.37100.37400.38100.49300.63600.971500 | Toilet_Door Frame | 1d | 2026-09-21 | 2026-09-21 | 7756 |  | 7 Days Work | 9291804 |
| 7758 | 36900.37000.37100.37400.38100.49300.63600.971600 | Toilet_Wash basin & Couter | 3d | 2026-09-22 | 2026-09-24 | 7757 |  | 7 Days Work | 9291814 |
| 7759 | 36900.37000.37100.37400.38100.49300.63600.971700 | Toilet_Wall dado | 20d | 2026-09-25 | 2026-10-14 | 7758 |  | 7 Days Work | 9291824 |
| 7760 | 36900.37000.37100.37400.38100.49300.63600.971800 | Toilet_Granite Work-Ledge wall top | 3d | 2026-10-15 | 2026-10-17 | 7759 |  | 7 Days Work | 9291834 |
| 7761 | 36900.37000.37100.37400.38100.49300.63600.971900 | Toilet_Floor Tilling work | 20d | 2026-10-18 | 2026-11-06 | 7760 |  | 7 Days Work | 9291844 |
| 7762 | 36900.37000.37100.37400.38100.49300.63600.972000 | Toilet_1st row of dado | 5d | 2026-11-07 | 2026-11-11 | 7761 |  | 7 Days Work | 9291854 |
| 7763 | 36900.37000.37100.37400.38100.49300.63600.972100 | Toilet_Window Fixing | 14d | 2026-11-12 | 2026-11-25 | 7762 |  | 7 Days Work | 9291864 |
| 7764 | 36900.37000.37100.37400.38100.49300.63600.972200 | Toilet_Services above False ceiling | 21d | 2026-11-26 | 2026-12-16 | 7763 |  | 7 Days Work | 9291874 |
| 7765 | 36900.37000.37100.37400.38100.49300.63600.972300 | Toilet_False Ceiling framing | 12d | 2026-12-17 | 2026-12-28 | 7764 |  | 7 Days Work | 9291884 |
| 7766 | 36900.37000.37100.37400.38100.49300.63600.972400 | Toilet_Door Frame | 5d | 2026-12-29 | 2027-01-02 | 7765 |  | 7 Days Work | 9291894 |
| 7767 | 36900.37000.37100.37400.38100.49300.63600.972500 | Toilet_Epoxy Tile Grouting | 7d | 2027-02-28 | 2027-03-06 | 7742SS |  | 7 Days Work | 9291904 |
| 7768 | 36900.37000.37100.37400.38100.49300.63600.972600 | Toilet_False ceiling board fixing, CP Sanitary Fixture, Electric Fixture | 21d | 2027-03-07 | 2027-03-27 | 7767 |  | 7 Days Work | 9291914 |
| 7769 | 36900.37000.37100.37400.38100.49400 | **13th Habitable/14th Floor** | 245d | 2026-08-08 | 2027-04-09 |  | start no earlier than 2026-08-08 | 7 Days Work | 9279664 |
| 7770 | 36900.37000.37100.37400.38100.49400.598200 | Post Pour | 7d | 2026-08-08 | 2026-08-14 | 7041 |  | 7 Days Work | 9284604 |
| 7771 | 36900.37000.37100.37400.38100.49400.598300 | MEP Clearance -1 | 5d | 2026-08-15 | 2026-08-19 | 7770 |  | 7 Days Work | 9284614 |
| 7772 | 36900.37000.37100.37400.38100.49400.598400 | Benchmark | 1d | 2026-08-20 | 2026-08-20 | 7771 |  | 7 Days Work | 9284624 |
| 7773 | 36900.37000.37100.37400.38100.49400.598500 | Temporary Railing | 3d | 2026-08-21 | 2026-08-23 | 7772 |  | 7 Days Work | 9284634 |
| 7774 | 36900.37000.37100.37400.38100.49400.598600 | Blockwork | 10d | 2026-08-24 | 2026-09-02 | 7773 |  | 7 Days Work | 9284644 |
| 7775 | 36900.37000.37100.37400.38100.49400.598700 | MEP Clearance -2 | 10d | 2026-09-03 | 2026-09-12 | 7774 |  | 7 Days Work | 9284654 |
| 7776 | 36900.37000.37100.37400.38100.49400.598800 | Gypsum Plaster | 14d | 2026-09-13 | 2026-09-26 | 7775 |  | 7 Days Work | 9284664 |
| 7777 | 36900.37000.37100.37400.38100.49400.598900 | Kitchen Platform | 3d | 2026-09-27 | 2026-09-29 | 7776 |  | 7 Days Work | 9284674 |
| 7778 | 36900.37000.37100.37400.38100.49400.599000 | Kitchen dado | 7d | 2026-09-30 | 2026-10-06 | 7777 |  | 7 Days Work | 9284684 |
| 7779 | 36900.37000.37100.37400.38100.49400.599100 | Fire Fighting | 5d | 2026-10-07 | 2026-10-11 | 7778 |  | 7 Days Work | 9284694 |
| 7780 | 36900.37000.37100.37400.38100.49400.599200 | Anticapilary | 5d | 2026-10-12 | 2026-10-16 | 7779 |  | 7 Days Work | 9284704 |
| 7781 | 36900.37000.37100.37400.38100.49400.599300 | Stone Laying | 10d | 2026-11-19 | 2026-11-28 | 7821 |  | 7 Days Work | 9284714 |
| 7782 | 36900.37000.37100.37400.38100.49400.599400 | Tiles Laying | 7d | 2026-11-19 | 2026-11-25 | 7821 |  | 7 Days Work | 9284724 |
| 7783 | 36900.37000.37100.37400.38100.49400.599500 | 1st cutting/polishing of stone flooring | 7d | 2026-11-26 | 2026-12-02 | 7782 |  | 7 Days Work | 9284734 |
| 7784 | 36900.37000.37100.37400.38100.49400.599600 | Tiles/Stone skirting | 5d | 2026-12-03 | 2026-12-07 | 7783 |  | 7 Days Work | 9284744 |
| 7785 | 36900.37000.37100.37400.38100.49400.599700 | Protechtion sheet | 1d | 2026-12-08 | 2026-12-08 | 7784 |  | 7 Days Work | 9284754 |
| 7786 | 36900.37000.37100.37400.38100.49400.599800 | Installation of Temporary Door | 1d | 2026-12-09 | 2026-12-09 | 7785 |  | 7 Days Work | 9284764 |
| 7787 | 36900.37000.37100.37400.38100.49400.599900 | Fixing of window tracks | 5d | 2026-12-10 | 2026-12-14 | 7786 |  | 7 Days Work | 9284774 |
| 7788 | 36900.37000.37100.37400.38100.49400.600000 | Wire Pulling | 7d | 2026-12-15 | 2026-12-21 | 7787 |  | 7 Days Work | 9284784 |
| 7789 | 36900.37000.37100.37400.38100.49400.600100 | Gypsum Remaining | 5d | 2026-12-22 | 2026-12-26 | 7788 |  | 7 Days Work | 9284794 |
| 7790 | 36900.37000.37100.37400.38100.49400.600200 | Fixing of windoow shutter | 5d | 2026-12-27 | 2026-12-31 | 7789 |  | 7 Days Work | 9284804 |
| 7791 | 36900.37000.37100.37400.38100.49400.600300 | Putty Works - walls & ceiling | 15d | 2027-01-01 | 2027-01-15 | 7790 |  | 7 Days Work | 9284814 |
| 7792 | 36900.37000.37100.37400.38100.49400.600400 | False Ceiling- Framing | 10d | 2027-01-16 | 2027-01-25 | 7791 |  | 7 Days Work | 9284824 |
| 7793 | 36900.37000.37100.37400.38100.49400.600500 | Pre Hung Door | 3d | 2027-01-26 | 2027-01-28 | 7792 |  | 7 Days Work | 9284834 |
| 7794 | 36900.37000.37100.37400.38100.49400.600600 | Protechtion sheet | 2d | 2027-01-29 | 2027-01-30 | 7793 |  | 7 Days Work | 9284844 |
| 7795 | 36900.37000.37100.37400.38100.49400.600700 | Skirting near door | 2d | 2027-01-31 | 2027-02-01 | 7794 |  | 7 Days Work | 9284854 |
| 7796 | 36900.37000.37100.37400.38100.49400.600800 | Electrical Switch box fixing | 14d | 2027-02-02 | 2027-02-15 | 7795 |  | 7 Days Work | 9284864 |
| 7797 | 36900.37000.37100.37400.38100.49400.600900 | Fire Fighting painting | 5d | 2027-02-16 | 2027-02-20 | 7796 |  | 7 Days Work | 9284874 |
| 7798 | 36900.37000.37100.37400.38100.49400.601000 | Protection of all flooring, door & window hardware | 5d | 2027-02-21 | 2027-02-25 | 7797 |  | 7 Days Work | 9284884 |
| 7799 | 36900.37000.37100.37400.38100.49400.601100 | 1st coat primer- ceiling 1st & walls | 14d | 2027-02-26 | 2027-03-11 | 7798 |  | 7 Days Work | 9284894 |
| 7800 | 36900.37000.37100.37400.38100.49400.601200 | Wooden Flooring | 5d | 2027-03-12 | 2027-03-16 | 7799 |  | 7 Days Work | 9284904 |
| 7801 | 36900.37000.37100.37400.38100.49400.601300 | Removing of Temporary Railing & installation of Glass Railing | 5d | 2027-03-12 | 2027-03-16 | 7799 |  | 7 Days Work | 9284914 |
| 7802 | 36900.37000.37100.37400.38100.49400.601400 | Tile Grouting | 7d | 2027-03-12 | 2027-03-18 | 7799 |  | 7 Days Work | 9284924 |
| 7803 | 36900.37000.37100.37400.38100.49400.601500 | False Ceiling | 5d | 2027-03-19 | 2027-03-23 | 7802 |  | 7 Days Work | 9284934 |
| 7804 | 36900.37000.37100.37400.38100.49400.601600 | 2nd coat of primer | 10d | 2027-03-24 | 2027-04-02 | 7803 |  | 7 Days Work | 9284944 |
| 7805 | 36900.37000.37100.37400.38100.49400.601700 | Final cutting/polishing of stone flooring | 7d | 2027-04-03 | 2027-04-09 | 7804 |  | 7 Days Work | 9284954 |

| ID | WBS | Task | Duration | Start | Finish | Predecessors | Constraint | Calendar | Unique_Task_ID |
| --- | --- | --- | --- | --- | --- | --- | --- | --- | --- |
| 7806 | 36900.37000.37100.37400.38100.49400.63700 | **Toilet** | 237d | 2026-08-15 | 2027-04-08 |  | start no earlier than 2026-08-15 | 7 Days Work | 9279874 |
| 7807 | 36900.37000.37100.37400.38100.49400.63700.972700 | Toilet_MEP Clearance -1 | 7d | 2026-08-15 | 2026-08-21 | 7770 |  | 7 Days Work | 9291924 |
| 7808 | 36900.37000.37100.37400.38100.49400.63700.972800 | Toilet_Level Marking | 1d | 2026-08-22 | 2026-08-22 | 7807 |  | 7 Days Work | 9291934 |
| 7809 | 36900.37000.37100.37400.38100.49400.63700.972900 | Toilet_Chasing work for Electrical conduit & concealed plumbing | 5d | 2026-08-23 | 2026-08-27 | 7808 |  | 7 Days Work | 9291944 |
| 7810 | 36900.37000.37100.37400.38100.49400.63700.973000 | Toilet_Plumbing work 1st fix | 5d | 2026-08-28 | 2026-09-01 | 7809 |  | 7 Days Work | 9291954 |
| 7811 | 36900.37000.37100.37400.38100.49400.63700.973100 | Toilet_Sleeve/Bore Packing | 5d | 2026-09-02 | 2026-09-06 | 7810 |  | 7 Days Work | 9291964 |
| 7812 | 36900.37000.37100.37400.38100.49400.63700.973200 | Toilet_Waterproofing | 10d | 2026-09-07 | 2026-09-16 | 7811 |  | 7 Days Work | 9291974 |
| 7813 | 36900.37000.37100.37400.38100.49400.63700.973300 | Toilet_Screed | 1d | 2026-09-17 | 2026-09-17 | 7812 |  | 7 Days Work | 9291984 |
| 7814 | 36900.37000.37100.37400.38100.49400.63700.973400 | Toilet_Plumbing 2nd fix | 5d | 2026-09-18 | 2026-09-22 | 7813 |  | 7 Days Work | 9291994 |
| 7815 | 36900.37000.37100.37400.38100.49400.63700.973500 | Toilet_Ledge wall | 5d | 2026-09-23 | 2026-09-27 | 7814 |  | 7 Days Work | 9292004 |
| 7816 | 36900.37000.37100.37400.38100.49400.63700.973600 | Toilet_Cement Plaster | 5d | 2026-09-28 | 2026-10-02 | 7815 |  | 7 Days Work | 9292014 |
| 7817 | 36900.37000.37100.37400.38100.49400.63700.973700 | Toilet_Door Frame | 1d | 2026-10-03 | 2026-10-03 | 7816 |  | 7 Days Work | 9292024 |
| 7818 | 36900.37000.37100.37400.38100.49400.63700.973800 | Toilet_Wash basin & Couter | 3d | 2026-10-04 | 2026-10-06 | 7817 |  | 7 Days Work | 9292034 |
| 7819 | 36900.37000.37100.37400.38100.49400.63700.973900 | Toilet_Wall dado | 20d | 2026-10-07 | 2026-10-26 | 7818 |  | 7 Days Work | 9292044 |
| 7820 | 36900.37000.37100.37400.38100.49400.63700.974000 | Toilet_Granite Work-Ledge wall top | 3d | 2026-10-27 | 2026-10-29 | 7819 |  | 7 Days Work | 9292054 |
| 7821 | 36900.37000.37100.37400.38100.49400.63700.974100 | Toilet_Floor Tilling work | 20d | 2026-10-30 | 2026-11-18 | 7820 |  | 7 Days Work | 9292064 |
| 7822 | 36900.37000.37100.37400.38100.49400.63700.974200 | Toilet_1st row of dado | 5d | 2026-11-19 | 2026-11-23 | 7821 |  | 7 Days Work | 9292074 |
| 7823 | 36900.37000.37100.37400.38100.49400.63700.974300 | Toilet_Window Fixing | 14d | 2026-11-24 | 2026-12-07 | 7822 |  | 7 Days Work | 9292084 |
| 7824 | 36900.37000.37100.37400.38100.49400.63700.974400 | Toilet_Services above False ceiling | 21d | 2026-12-08 | 2026-12-28 | 7823 |  | 7 Days Work | 9292094 |
| 7825 | 36900.37000.37100.37400.38100.49400.63700.974500 | Toilet_False Ceiling framing | 12d | 2026-12-29 | 2027-01-09 | 7824 |  | 7 Days Work | 9292104 |
| 7826 | 36900.37000.37100.37400.38100.49400.63700.974600 | Toilet_Door Frame | 5d | 2027-01-10 | 2027-01-14 | 7825 |  | 7 Days Work | 9292114 |
| 7827 | 36900.37000.37100.37400.38100.49400.63700.974700 | Toilet_Epoxy Tile Grouting | 7d | 2027-03-12 | 2027-03-18 | 7802SS |  | 7 Days Work | 9292124 |
| 7828 | 36900.37000.37100.37400.38100.49400.63700.974800 | Toilet_False ceiling board fixing, CP Sanitary Fixture, Electric Fixture | 21d | 2027-03-19 | 2027-04-08 | 7827 |  | 7 Days Work | 9292134 |
| 7829 | 36900.37000.37100.37400.38100.49500 | **14th Habitable/15th Floor** | 245d | 2026-08-20 | 2027-04-21 |  | start no earlier than 2026-08-20 | 7 Days Work | 9279674 |
| 7830 | 36900.37000.37100.37400.38100.49500.601800 | Post Pour | 7d | 2026-08-20 | 2026-08-26 | 7042 |  | 7 Days Work | 9284964 |
| 7831 | 36900.37000.37100.37400.38100.49500.601900 | MEP Clearance -1 | 5d | 2026-08-27 | 2026-08-31 | 7830 |  | 7 Days Work | 9284974 |
| 7832 | 36900.37000.37100.37400.38100.49500.602000 | Benchmark | 1d | 2026-09-01 | 2026-09-01 | 7831 |  | 7 Days Work | 9284984 |
| 7833 | 36900.37000.37100.37400.38100.49500.602100 | Temporary Railing | 3d | 2026-09-02 | 2026-09-04 | 7832 |  | 7 Days Work | 9284994 |
| 7834 | 36900.37000.37100.37400.38100.49500.602200 | Blockwork | 10d | 2026-09-05 | 2026-09-14 | 7833 |  | 7 Days Work | 9285004 |
| 7835 | 36900.37000.37100.37400.38100.49500.602300 | MEP Clearance -2 | 10d | 2026-09-15 | 2026-09-24 | 7834 |  | 7 Days Work | 9285014 |
| 7836 | 36900.37000.37100.37400.38100.49500.602400 | Gypsum Plaster | 14d | 2026-09-25 | 2026-10-08 | 7835 |  | 7 Days Work | 9285024 |
| 7837 | 36900.37000.37100.37400.38100.49500.602500 | Kitchen Platform | 3d | 2026-10-09 | 2026-10-11 | 7836 |  | 7 Days Work | 9285034 |
| 7838 | 36900.37000.37100.37400.38100.49500.602600 | Kitchen dado | 7d | 2026-10-12 | 2026-10-18 | 7837 |  | 7 Days Work | 9285044 |
| 7839 | 36900.37000.37100.37400.38100.49500.602700 | Fire Fighting | 5d | 2026-10-19 | 2026-10-23 | 7838 |  | 7 Days Work | 9285054 |
| 7840 | 36900.37000.37100.37400.38100.49500.602800 | Anticapilary | 5d | 2026-10-24 | 2026-10-28 | 7839 |  | 7 Days Work | 9285064 |
| 7841 | 36900.37000.37100.37400.38100.49500.602900 | Stone Laying | 10d | 2026-12-01 | 2026-12-10 | 7881 |  | 7 Days Work | 9285074 |
| 7842 | 36900.37000.37100.37400.38100.49500.603000 | Tiles Laying | 7d | 2026-12-01 | 2026-12-07 | 7881 |  | 7 Days Work | 9285084 |
| 7843 | 36900.37000.37100.37400.38100.49500.603100 | 1st cutting/polishing of stone flooring | 7d | 2026-12-08 | 2026-12-14 | 7842 |  | 7 Days Work | 9285094 |
| 7844 | 36900.37000.37100.37400.38100.49500.603200 | Tiles/Stone skirting | 5d | 2026-12-15 | 2026-12-19 | 7843 |  | 7 Days Work | 9285104 |
| 7845 | 36900.37000.37100.37400.38100.49500.603300 | Protechtion sheet | 1d | 2026-12-20 | 2026-12-20 | 7844 |  | 7 Days Work | 9285114 |
| 7846 | 36900.37000.37100.37400.38100.49500.603400 | Installation of Temporary Door | 1d | 2026-12-21 | 2026-12-21 | 7845 |  | 7 Days Work | 9285124 |
| 7847 | 36900.37000.37100.37400.38100.49500.603500 | Fixing of window tracks | 5d | 2026-12-22 | 2026-12-26 | 7846 |  | 7 Days Work | 9285134 |
| 7848 | 36900.37000.37100.37400.38100.49500.603600 | Wire Pulling | 7d | 2026-12-27 | 2027-01-02 | 7847 |  | 7 Days Work | 9285144 |
| 7849 | 36900.37000.37100.37400.38100.49500.603700 | Gypsum Remaining | 5d | 2027-01-03 | 2027-01-07 | 7848 |  | 7 Days Work | 9285154 |
| 7850 | 36900.37000.37100.37400.38100.49500.603800 | Fixing of windoow shutter | 5d | 2027-01-08 | 2027-01-12 | 7849 |  | 7 Days Work | 9285164 |
| 7851 | 36900.37000.37100.37400.38100.49500.603900 | Putty Works - walls & ceiling | 15d | 2027-01-13 | 2027-01-27 | 7850 |  | 7 Days Work | 9285174 |
| 7852 | 36900.37000.37100.37400.38100.49500.604000 | False Ceiling- Framing | 10d | 2027-01-28 | 2027-02-06 | 7851 |  | 7 Days Work | 9285184 |
| 7853 | 36900.37000.37100.37400.38100.49500.604100 | Pre Hung Door | 3d | 2027-02-07 | 2027-02-09 | 7852 |  | 7 Days Work | 9285194 |
| 7854 | 36900.37000.37100.37400.38100.49500.604200 | Protechtion sheet | 2d | 2027-02-10 | 2027-02-11 | 7853 |  | 7 Days Work | 9285204 |
| 7855 | 36900.37000.37100.37400.38100.49500.604300 | Skirting near door | 2d | 2027-02-12 | 2027-02-13 | 7854 |  | 7 Days Work | 9285214 |
| 7856 | 36900.37000.37100.37400.38100.49500.604400 | Electrical Switch box fixing | 14d | 2027-02-14 | 2027-02-27 | 7855 |  | 7 Days Work | 9285224 |
| 7857 | 36900.37000.37100.37400.38100.49500.604500 | Fire Fighting painting | 5d | 2027-02-28 | 2027-03-04 | 7856 |  | 7 Days Work | 9285234 |
| 7858 | 36900.37000.37100.37400.38100.49500.604600 | Protection of all flooring, door & window hardware | 5d | 2027-03-05 | 2027-03-09 | 7857 |  | 7 Days Work | 9285244 |
| 7859 | 36900.37000.37100.37400.38100.49500.604700 | 1st coat primer- ceiling 1st & walls | 14d | 2027-03-10 | 2027-03-23 | 7858 |  | 7 Days Work | 9285254 |
| 7860 | 36900.37000.37100.37400.38100.49500.604800 | Wooden Flooring | 5d | 2027-03-24 | 2027-03-28 | 7859 |  | 7 Days Work | 9285264 |
| 7861 | 36900.37000.37100.37400.38100.49500.604900 | Removing of Temporary Railing & installation of Glass Railing | 5d | 2027-03-24 | 2027-03-28 | 7859 |  | 7 Days Work | 9285274 |
| 7862 | 36900.37000.37100.37400.38100.49500.605000 | Tile Grouting | 7d | 2027-03-24 | 2027-03-30 | 7859 |  | 7 Days Work | 9285284 |
| 7863 | 36900.37000.37100.37400.38100.49500.605100 | False Ceiling | 5d | 2027-03-31 | 2027-04-04 | 7862 |  | 7 Days Work | 9285294 |
| 7864 | 36900.37000.37100.37400.38100.49500.605200 | 2nd coat of primer | 10d | 2027-04-05 | 2027-04-14 | 7863 |  | 7 Days Work | 9285304 |
| 7865 | 36900.37000.37100.37400.38100.49500.605300 | Final cutting/polishing of stone flooring | 7d | 2027-04-15 | 2027-04-21 | 7864 |  | 7 Days Work | 9285314 |

| ID | WBS | Task | Duration | Start | Finish | Predecessors | Constraint | Calendar | Unique_Task_ID |
| --- | --- | --- | --- | --- | --- | --- | --- | --- | --- |
| 7866 | 36900.37000.37100.37400.38100.49500.63800 | **Toilet** | 237d | 2026-08-27 | 2027-04-20 |  | start no earlier than 2026-08-27 | 7 Days Work | 9279884 |
| 7867 | 36900.37000.37100.37400.38100.49500.63800.974900 | Toilet_MEP Clearance -1 | 7d | 2026-08-27 | 2026-09-02 | 7830 |  | 7 Days Work | 9292144 |
| 7868 | 36900.37000.37100.37400.38100.49500.63800.975000 | Toilet_Level Marking | 1d | 2026-09-03 | 2026-09-03 | 7867 |  | 7 Days Work | 9292154 |
| 7869 | 36900.37000.37100.37400.38100.49500.63800.975100 | Toilet_Chasing work for Electrical conduit & concealed plumbing | 5d | 2026-09-04 | 2026-09-08 | 7868 |  | 7 Days Work | 9292164 |
| 7870 | 36900.37000.37100.37400.38100.49500.63800.975200 | Toilet_Plumbing work 1st fix | 5d | 2026-09-09 | 2026-09-13 | 7869 |  | 7 Days Work | 9292174 |
| 7871 | 36900.37000.37100.37400.38100.49500.63800.975300 | Toilet_Sleeve/Bore Packing | 5d | 2026-09-14 | 2026-09-18 | 7870 |  | 7 Days Work | 9292184 |
| 7872 | 36900.37000.37100.37400.38100.49500.63800.975400 | Toilet_Waterproofing | 10d | 2026-09-19 | 2026-09-28 | 7871 |  | 7 Days Work | 9292194 |
| 7873 | 36900.37000.37100.37400.38100.49500.63800.975500 | Toilet_Screed | 1d | 2026-09-29 | 2026-09-29 | 7872 |  | 7 Days Work | 9292204 |
| 7874 | 36900.37000.37100.37400.38100.49500.63800.975600 | Toilet_Plumbing 2nd fix | 5d | 2026-09-30 | 2026-10-04 | 7873 |  | 7 Days Work | 9292214 |
| 7875 | 36900.37000.37100.37400.38100.49500.63800.975700 | Toilet_Ledge wall | 5d | 2026-10-05 | 2026-10-09 | 7874 |  | 7 Days Work | 9292224 |
| 7876 | 36900.37000.37100.37400.38100.49500.63800.975800 | Toilet_Cement Plaster | 5d | 2026-10-10 | 2026-10-14 | 7875 |  | 7 Days Work | 9292234 |
| 7877 | 36900.37000.37100.37400.38100.49500.63800.975900 | Toilet_Door Frame | 1d | 2026-10-15 | 2026-10-15 | 7876 |  | 7 Days Work | 9292244 |
| 7878 | 36900.37000.37100.37400.38100.49500.63800.976000 | Toilet_Wash basin & Couter | 3d | 2026-10-16 | 2026-10-18 | 7877 |  | 7 Days Work | 9292254 |
| 7879 | 36900.37000.37100.37400.38100.49500.63800.976100 | Toilet_Wall dado | 20d | 2026-10-19 | 2026-11-07 | 7878 |  | 7 Days Work | 9292264 |
| 7880 | 36900.37000.37100.37400.38100.49500.63800.976200 | Toilet_Granite Work-Ledge wall top | 3d | 2026-11-08 | 2026-11-10 | 7879 |  | 7 Days Work | 9292274 |
| 7881 | 36900.37000.37100.37400.38100.49500.63800.976300 | Toilet_Floor Tilling work | 20d | 2026-11-11 | 2026-11-30 | 7880 |  | 7 Days Work | 9292284 |
| 7882 | 36900.37000.37100.37400.38100.49500.63800.976400 | Toilet_1st row of dado | 5d | 2026-12-01 | 2026-12-05 | 7881 |  | 7 Days Work | 9292294 |
| 7883 | 36900.37000.37100.37400.38100.49500.63800.976500 | Toilet_Window Fixing | 14d | 2026-12-06 | 2026-12-19 | 7882 |  | 7 Days Work | 9292304 |
| 7884 | 36900.37000.37100.37400.38100.49500.63800.976600 | Toilet_Services above False ceiling | 21d | 2026-12-20 | 2027-01-09 | 7883 |  | 7 Days Work | 9292314 |
| 7885 | 36900.37000.37100.37400.38100.49500.63800.976700 | Toilet_False Ceiling framing | 12d | 2027-01-10 | 2027-01-21 | 7884 |  | 7 Days Work | 9292324 |
| 7886 | 36900.37000.37100.37400.38100.49500.63800.976800 | Toilet_Door Frame | 5d | 2027-01-22 | 2027-01-26 | 7885 |  | 7 Days Work | 9292334 |
| 7887 | 36900.37000.37100.37400.38100.49500.63800.976900 | Toilet_Epoxy Tile Grouting | 7d | 2027-03-24 | 2027-03-30 | 7862SS |  | 7 Days Work | 9292344 |
| 7888 | 36900.37000.37100.37400.38100.49500.63800.977000 | Toilet_False ceiling board fixing, CP Sanitary Fixture, Electric Fixture | 21d | 2027-03-31 | 2027-04-20 | 7887 |  | 7 Days Work | 9292354 |
| 7889 | 36900.37000.37100.37400.38100.49600 | **15th Habitable/16th Floor** | 245d | 2026-09-01 | 2027-05-03 |  | start no earlier than 2026-09-01 | 7 Days Work | 9279684 |
| 7890 | 36900.37000.37100.37400.38100.49600.605400 | Post Pour | 7d | 2026-09-01 | 2026-09-07 | 7043 |  | 7 Days Work | 9285324 |
| 7891 | 36900.37000.37100.37400.38100.49600.605500 | MEP Clearance -1 | 5d | 2026-09-08 | 2026-09-12 | 7890 |  | 7 Days Work | 9285334 |
| 7892 | 36900.37000.37100.37400.38100.49600.605600 | Benchmark | 1d | 2026-09-13 | 2026-09-13 | 7891 |  | 7 Days Work | 9285344 |
| 7893 | 36900.37000.37100.37400.38100.49600.605700 | Temporary Railing | 3d | 2026-09-14 | 2026-09-16 | 7892 |  | 7 Days Work | 9285354 |
| 7894 | 36900.37000.37100.37400.38100.49600.605800 | Blockwork | 10d | 2026-09-17 | 2026-09-26 | 7893 |  | 7 Days Work | 9285364 |
| 7895 | 36900.37000.37100.37400.38100.49600.605900 | MEP Clearance -2 | 10d | 2026-09-27 | 2026-10-06 | 7894 |  | 7 Days Work | 9285374 |
| 7896 | 36900.37000.37100.37400.38100.49600.606000 | Gypsum Plaster | 14d | 2026-10-07 | 2026-10-20 | 7895 |  | 7 Days Work | 9285384 |
| 7897 | 36900.37000.37100.37400.38100.49600.606100 | Kitchen Platform | 3d | 2026-10-21 | 2026-10-23 | 7896 |  | 7 Days Work | 9285394 |
| 7898 | 36900.37000.37100.37400.38100.49600.606200 | Kitchen dado | 7d | 2026-10-24 | 2026-10-30 | 7897 |  | 7 Days Work | 9285404 |
| 7899 | 36900.37000.37100.37400.38100.49600.606300 | Fire Fighting | 5d | 2026-10-31 | 2026-11-04 | 7898 |  | 7 Days Work | 9285414 |
| 7900 | 36900.37000.37100.37400.38100.49600.606400 | Anticapilary | 5d | 2026-11-05 | 2026-11-09 | 7899 |  | 7 Days Work | 9285424 |
| 7901 | 36900.37000.37100.37400.38100.49600.606500 | Stone Laying | 10d | 2026-12-13 | 2026-12-22 | 7941 |  | 7 Days Work | 9285434 |
| 7902 | 36900.37000.37100.37400.38100.49600.606600 | Tiles Laying | 7d | 2026-12-13 | 2026-12-19 | 7941 |  | 7 Days Work | 9285444 |
| 7903 | 36900.37000.37100.37400.38100.49600.606700 | 1st cutting/polishing of stone flooring | 7d | 2026-12-20 | 2026-12-26 | 7902 |  | 7 Days Work | 9285454 |
| 7904 | 36900.37000.37100.37400.38100.49600.606800 | Tiles/Stone skirting | 5d | 2026-12-27 | 2026-12-31 | 7903 |  | 7 Days Work | 9285464 |
| 7905 | 36900.37000.37100.37400.38100.49600.606900 | Protechtion sheet | 1d | 2027-01-01 | 2027-01-01 | 7904 |  | 7 Days Work | 9285474 |
| 7906 | 36900.37000.37100.37400.38100.49600.607000 | Installation of Temporary Door | 1d | 2027-01-02 | 2027-01-02 | 7905 |  | 7 Days Work | 9285484 |
| 7907 | 36900.37000.37100.37400.38100.49600.607100 | Fixing of window tracks | 5d | 2027-01-03 | 2027-01-07 | 7906 |  | 7 Days Work | 9285494 |
| 7908 | 36900.37000.37100.37400.38100.49600.607200 | Wire Pulling | 7d | 2027-01-08 | 2027-01-14 | 7907 |  | 7 Days Work | 9285504 |
| 7909 | 36900.37000.37100.37400.38100.49600.607300 | Gypsum Remaining | 5d | 2027-01-15 | 2027-01-19 | 7908 |  | 7 Days Work | 9285514 |
| 7910 | 36900.37000.37100.37400.38100.49600.607400 | Fixing of windoow shutter | 5d | 2027-01-20 | 2027-01-24 | 7909 |  | 7 Days Work | 9285524 |
| 7911 | 36900.37000.37100.37400.38100.49600.607500 | Putty Works - walls & ceiling | 15d | 2027-01-25 | 2027-02-08 | 7910 |  | 7 Days Work | 9285534 |
| 7912 | 36900.37000.37100.37400.38100.49600.607600 | False Ceiling- Framing | 10d | 2027-02-09 | 2027-02-18 | 7911 |  | 7 Days Work | 9285544 |
| 7913 | 36900.37000.37100.37400.38100.49600.607700 | Pre Hung Door | 3d | 2027-02-19 | 2027-02-21 | 7912 |  | 7 Days Work | 9285554 |
| 7914 | 36900.37000.37100.37400.38100.49600.607800 | Protechtion sheet | 2d | 2027-02-22 | 2027-02-23 | 7913 |  | 7 Days Work | 9285564 |
| 7915 | 36900.37000.37100.37400.38100.49600.607900 | Skirting near door | 2d | 2027-02-24 | 2027-02-25 | 7914 |  | 7 Days Work | 9285574 |
| 7916 | 36900.37000.37100.37400.38100.49600.608000 | Electrical Switch box fixing | 14d | 2027-02-26 | 2027-03-11 | 7915 |  | 7 Days Work | 9285584 |
| 7917 | 36900.37000.37100.37400.38100.49600.608100 | Fire Fighting painting | 5d | 2027-03-12 | 2027-03-16 | 7916 |  | 7 Days Work | 9285594 |
| 7918 | 36900.37000.37100.37400.38100.49600.608200 | Protection of all flooring, door & window hardware | 5d | 2027-03-17 | 2027-03-21 | 7917 |  | 7 Days Work | 9285604 |
| 7919 | 36900.37000.37100.37400.38100.49600.608300 | 1st coat primer- ceiling 1st & walls | 14d | 2027-03-22 | 2027-04-04 | 7918 |  | 7 Days Work | 9285614 |
| 7920 | 36900.37000.37100.37400.38100.49600.608400 | Wooden Flooring | 5d | 2027-04-05 | 2027-04-09 | 7919 |  | 7 Days Work | 9285624 |
| 7921 | 36900.37000.37100.37400.38100.49600.608500 | Removing of Temporary Railing & installation of Glass Railing | 5d | 2027-04-05 | 2027-04-09 | 7919 |  | 7 Days Work | 9285634 |
| 7922 | 36900.37000.37100.37400.38100.49600.608600 | Tile Grouting | 7d | 2027-04-05 | 2027-04-11 | 7919 |  | 7 Days Work | 9285644 |
| 7923 | 36900.37000.37100.37400.38100.49600.608700 | False Ceiling | 5d | 2027-04-12 | 2027-04-16 | 7922 |  | 7 Days Work | 9285654 |
| 7924 | 36900.37000.37100.37400.38100.49600.608800 | 2nd coat of primer | 10d | 2027-04-17 | 2027-04-26 | 7923 |  | 7 Days Work | 9285664 |
| 7925 | 36900.37000.37100.37400.38100.49600.608900 | Final cutting/polishing of stone flooring | 7d | 2027-04-27 | 2027-05-03 | 7924 |  | 7 Days Work | 9285674 |

| ID | WBS | Task | Duration | Start | Finish | Predecessors | Constraint | Calendar | Unique_Task_ID |
| --- | --- | --- | --- | --- | --- | --- | --- | --- | --- |
| 7926 | 36900.37000.37100.37400.38100.49600.63900 | **Toilet** | 237d | 2026-09-08 | 2027-05-02 |  | start no earlier than 2026-09-08 | 7 Days Work | 9279894 |
| 7927 | 36900.37000.37100.37400.38100.49600.63900.977100 | Toilet_MEP Clearance -1 | 7d | 2026-09-08 | 2026-09-14 | 7890 |  | 7 Days Work | 9292364 |
| 7928 | 36900.37000.37100.37400.38100.49600.63900.977200 | Toilet_Level Marking | 1d | 2026-09-15 | 2026-09-15 | 7927 |  | 7 Days Work | 9292374 |
| 7929 | 36900.37000.37100.37400.38100.49600.63900.977300 | Toilet_Chasing work for Electrical conduit & concealed plumbing | 5d | 2026-09-16 | 2026-09-20 | 7928 |  | 7 Days Work | 9292384 |
| 7930 | 36900.37000.37100.37400.38100.49600.63900.977400 | Toilet_Plumbing work 1st fix | 5d | 2026-09-21 | 2026-09-25 | 7929 |  | 7 Days Work | 9292394 |
| 7931 | 36900.37000.37100.37400.38100.49600.63900.977500 | Toilet_Sleeve/Bore Packing | 5d | 2026-09-26 | 2026-09-30 | 7930 |  | 7 Days Work | 9292404 |
| 7932 | 36900.37000.37100.37400.38100.49600.63900.977600 | Toilet_Waterproofing | 10d | 2026-10-01 | 2026-10-10 | 7931 |  | 7 Days Work | 9292414 |
| 7933 | 36900.37000.37100.37400.38100.49600.63900.977700 | Toilet_Screed | 1d | 2026-10-11 | 2026-10-11 | 7932 |  | 7 Days Work | 9292424 |
| 7934 | 36900.37000.37100.37400.38100.49600.63900.977800 | Toilet_Plumbing 2nd fix | 5d | 2026-10-12 | 2026-10-16 | 7933 |  | 7 Days Work | 9292434 |
| 7935 | 36900.37000.37100.37400.38100.49600.63900.977900 | Toilet_Ledge wall | 5d | 2026-10-17 | 2026-10-21 | 7934 |  | 7 Days Work | 9292444 |
| 7936 | 36900.37000.37100.37400.38100.49600.63900.978000 | Toilet_Cement Plaster | 5d | 2026-10-22 | 2026-10-26 | 7935 |  | 7 Days Work | 9292454 |
| 7937 | 36900.37000.37100.37400.38100.49600.63900.978100 | Toilet_Door Frame | 1d | 2026-10-27 | 2026-10-27 | 7936 |  | 7 Days Work | 9292464 |
| 7938 | 36900.37000.37100.37400.38100.49600.63900.978200 | Toilet_Wash basin & Couter | 3d | 2026-10-28 | 2026-10-30 | 7937 |  | 7 Days Work | 9292474 |
| 7939 | 36900.37000.37100.37400.38100.49600.63900.978300 | Toilet_Wall dado | 20d | 2026-10-31 | 2026-11-19 | 7938 |  | 7 Days Work | 9292484 |
| 7940 | 36900.37000.37100.37400.38100.49600.63900.978400 | Toilet_Granite Work-Ledge wall top | 3d | 2026-11-20 | 2026-11-22 | 7939 |  | 7 Days Work | 9292494 |
| 7941 | 36900.37000.37100.37400.38100.49600.63900.978500 | Toilet_Floor Tilling work | 20d | 2026-11-23 | 2026-12-12 | 7940 |  | 7 Days Work | 9292504 |
| 7942 | 36900.37000.37100.37400.38100.49600.63900.978600 | Toilet_1st row of dado | 5d | 2026-12-13 | 2026-12-17 | 7941 |  | 7 Days Work | 9292514 |
| 7943 | 36900.37000.37100.37400.38100.49600.63900.978700 | Toilet_Window Fixing | 14d | 2026-12-18 | 2026-12-31 | 7942 |  | 7 Days Work | 9292524 |
| 7944 | 36900.37000.37100.37400.38100.49600.63900.978800 | Toilet_Services above False ceiling | 21d | 2027-01-01 | 2027-01-21 | 7943 |  | 7 Days Work | 9292534 |
| 7945 | 36900.37000.37100.37400.38100.49600.63900.978900 | Toilet_False Ceiling framing | 12d | 2027-01-22 | 2027-02-02 | 7944 |  | 7 Days Work | 9292544 |
| 7946 | 36900.37000.37100.37400.38100.49600.63900.979000 | Toilet_Door Frame | 5d | 2027-02-03 | 2027-02-07 | 7945 |  | 7 Days Work | 9292554 |
| 7947 | 36900.37000.37100.37400.38100.49600.63900.979100 | Toilet_Epoxy Tile Grouting | 7d | 2027-04-05 | 2027-04-11 | 7922SS |  | 7 Days Work | 9292564 |
| 7948 | 36900.37000.37100.37400.38100.49600.63900.979200 | Toilet_False ceiling board fixing, CP Sanitary Fixture, Electric Fixture | 21d | 2027-04-12 | 2027-05-02 | 7947 |  | 7 Days Work | 9292574 |
| 7949 | 36900.37000.37100.37400.38100.49700 | **16th Habitable/17th Floor** | 245d | 2026-09-13 | 2027-05-15 |  | start no earlier than 2026-09-13 | 7 Days Work | 9279694 |
| 7950 | 36900.37000.37100.37400.38100.49700.609000 | Post Pour | 7d | 2026-09-13 | 2026-09-19 | 7044 |  | 7 Days Work | 9285684 |
| 7951 | 36900.37000.37100.37400.38100.49700.609100 | MEP Clearance -1 | 5d | 2026-09-20 | 2026-09-24 | 7950 |  | 7 Days Work | 9285694 |
| 7952 | 36900.37000.37100.37400.38100.49700.609200 | Benchmark | 1d | 2026-09-25 | 2026-09-25 | 7951 |  | 7 Days Work | 9285704 |
| 7953 | 36900.37000.37100.37400.38100.49700.609300 | Temporary Railing | 3d | 2026-09-26 | 2026-09-28 | 7952 |  | 7 Days Work | 9285714 |
| 7954 | 36900.37000.37100.37400.38100.49700.609400 | Blockwork | 10d | 2026-09-29 | 2026-10-08 | 7953 |  | 7 Days Work | 9285724 |
| 7955 | 36900.37000.37100.37400.38100.49700.609500 | MEP Clearance -2 | 10d | 2026-10-09 | 2026-10-18 | 7954 |  | 7 Days Work | 9285734 |
| 7956 | 36900.37000.37100.37400.38100.49700.609600 | Gypsum Plaster | 14d | 2026-10-19 | 2026-11-01 | 7955 |  | 7 Days Work | 9285744 |
| 7957 | 36900.37000.37100.37400.38100.49700.609700 | Kitchen Platform | 3d | 2026-11-02 | 2026-11-04 | 7956 |  | 7 Days Work | 9285754 |
| 7958 | 36900.37000.37100.37400.38100.49700.609800 | Kitchen dado | 7d | 2026-11-05 | 2026-11-11 | 7957 |  | 7 Days Work | 9285764 |
| 7959 | 36900.37000.37100.37400.38100.49700.609900 | Fire Fighting | 5d | 2026-11-12 | 2026-11-16 | 7958 |  | 7 Days Work | 9285774 |
| 7960 | 36900.37000.37100.37400.38100.49700.610000 | Anticapilary | 5d | 2026-11-17 | 2026-11-21 | 7959 |  | 7 Days Work | 9285784 |
| 7961 | 36900.37000.37100.37400.38100.49700.610100 | Stone Laying | 10d | 2026-12-25 | 2027-01-03 | 8001 |  | 7 Days Work | 9285794 |
| 7962 | 36900.37000.37100.37400.38100.49700.610200 | Tiles Laying | 7d | 2026-12-25 | 2026-12-31 | 8001 |  | 7 Days Work | 9285804 |
| 7963 | 36900.37000.37100.37400.38100.49700.610300 | 1st cutting/polishing of stone flooring | 7d | 2027-01-01 | 2027-01-07 | 7962 |  | 7 Days Work | 9285814 |
| 7964 | 36900.37000.37100.37400.38100.49700.610400 | Tiles/Stone skirting | 5d | 2027-01-08 | 2027-01-12 | 7963 |  | 7 Days Work | 9285824 |
| 7965 | 36900.37000.37100.37400.38100.49700.610500 | Protechtion sheet | 1d | 2027-01-13 | 2027-01-13 | 7964 |  | 7 Days Work | 9285834 |
| 7966 | 36900.37000.37100.37400.38100.49700.610600 | Installation of Temporary Door | 1d | 2027-01-14 | 2027-01-14 | 7965 |  | 7 Days Work | 9285844 |
| 7967 | 36900.37000.37100.37400.38100.49700.610700 | Fixing of window tracks | 5d | 2027-01-15 | 2027-01-19 | 7966 |  | 7 Days Work | 9285854 |
| 7968 | 36900.37000.37100.37400.38100.49700.610800 | Wire Pulling | 7d | 2027-01-20 | 2027-01-26 | 7967 |  | 7 Days Work | 9285864 |
| 7969 | 36900.37000.37100.37400.38100.49700.610900 | Gypsum Remaining | 5d | 2027-01-27 | 2027-01-31 | 7968 |  | 7 Days Work | 9285874 |
| 7970 | 36900.37000.37100.37400.38100.49700.611000 | Fixing of windoow shutter | 5d | 2027-02-01 | 2027-02-05 | 7969 |  | 7 Days Work | 9285884 |
| 7971 | 36900.37000.37100.37400.38100.49700.611100 | Putty Works - walls & ceiling | 15d | 2027-02-06 | 2027-02-20 | 7970 |  | 7 Days Work | 9285894 |
| 7972 | 36900.37000.37100.37400.38100.49700.611200 | False Ceiling- Framing | 10d | 2027-02-21 | 2027-03-02 | 7971 |  | 7 Days Work | 9285904 |
| 7973 | 36900.37000.37100.37400.38100.49700.611300 | Pre Hung Door | 3d | 2027-03-03 | 2027-03-05 | 7972 |  | 7 Days Work | 9285914 |
| 7974 | 36900.37000.37100.37400.38100.49700.611400 | Protechtion sheet | 2d | 2027-03-06 | 2027-03-07 | 7973 |  | 7 Days Work | 9285924 |
| 7975 | 36900.37000.37100.37400.38100.49700.611500 | Skirting near door | 2d | 2027-03-08 | 2027-03-09 | 7974 |  | 7 Days Work | 9285934 |
| 7976 | 36900.37000.37100.37400.38100.49700.611600 | Electrical Switch box fixing | 14d | 2027-03-10 | 2027-03-23 | 7975 |  | 7 Days Work | 9285944 |
| 7977 | 36900.37000.37100.37400.38100.49700.611700 | Fire Fighting painting | 5d | 2027-03-24 | 2027-03-28 | 7976 |  | 7 Days Work | 9285954 |
| 7978 | 36900.37000.37100.37400.38100.49700.611800 | Protection of all flooring, door & window hardware | 5d | 2027-03-29 | 2027-04-02 | 7977 |  | 7 Days Work | 9285964 |
| 7979 | 36900.37000.37100.37400.38100.49700.611900 | 1st coat primer- ceiling 1st & walls | 14d | 2027-04-03 | 2027-04-16 | 7978 |  | 7 Days Work | 9285974 |
| 7980 | 36900.37000.37100.37400.38100.49700.612000 | Wooden Flooring | 5d | 2027-04-17 | 2027-04-21 | 7979 |  | 7 Days Work | 9285984 |
| 7981 | 36900.37000.37100.37400.38100.49700.612100 | Removing of Temporary Railing & installation of Glass Railing | 5d | 2027-04-17 | 2027-04-21 | 7979 |  | 7 Days Work | 9285994 |
| 7982 | 36900.37000.37100.37400.38100.49700.612200 | Tile Grouting | 7d | 2027-04-17 | 2027-04-23 | 7979 |  | 7 Days Work | 9286004 |
| 7983 | 36900.37000.37100.37400.38100.49700.612300 | False Ceiling | 5d | 2027-04-24 | 2027-04-28 | 7982 |  | 7 Days Work | 9286014 |
| 7984 | 36900.37000.37100.37400.38100.49700.612400 | 2nd coat of primer | 10d | 2027-04-29 | 2027-05-08 | 7983 |  | 7 Days Work | 9286024 |
| 7985 | 36900.37000.37100.37400.38100.49700.612500 | Final cutting/polishing of stone flooring | 7d | 2027-05-09 | 2027-05-15 | 7984 |  | 7 Days Work | 9286034 |

| ID | WBS | Task | Duration | Start | Finish | Predecessors | Constraint | Calendar | Unique_Task_ID |
| --- | --- | --- | --- | --- | --- | --- | --- | --- | --- |
| 7986 | 36900.37000.37100.37400.38100.49700.64000 | **Toilet** | 237d | 2026-09-20 | 2027-05-14 |  | start no earlier than 2026-09-20 | 7 Days Work | 9279904 |
| 7987 | 36900.37000.37100.37400.38100.49700.64000.979300 | Toilet_MEP Clearance -1 | 7d | 2026-09-20 | 2026-09-26 | 7950 |  | 7 Days Work | 9292584 |
| 7988 | 36900.37000.37100.37400.38100.49700.64000.979400 | Toilet_Level Marking | 1d | 2026-09-27 | 2026-09-27 | 7987 |  | 7 Days Work | 9292594 |
| 7989 | 36900.37000.37100.37400.38100.49700.64000.979500 | Toilet_Chasing work for Electrical conduit & concealed plumbing | 5d | 2026-09-28 | 2026-10-02 | 7988 |  | 7 Days Work | 9292604 |
| 7990 | 36900.37000.37100.37400.38100.49700.64000.979600 | Toilet_Plumbing work 1st fix | 5d | 2026-10-03 | 2026-10-07 | 7989 |  | 7 Days Work | 9292614 |
| 7991 | 36900.37000.37100.37400.38100.49700.64000.979700 | Toilet_Sleeve/Bore Packing | 5d | 2026-10-08 | 2026-10-12 | 7990 |  | 7 Days Work | 9292624 |
| 7992 | 36900.37000.37100.37400.38100.49700.64000.979800 | Toilet_Waterproofing | 10d | 2026-10-13 | 2026-10-22 | 7991 |  | 7 Days Work | 9292634 |
| 7993 | 36900.37000.37100.37400.38100.49700.64000.979900 | Toilet_Screed | 1d | 2026-10-23 | 2026-10-23 | 7992 |  | 7 Days Work | 9292644 |
| 7994 | 36900.37000.37100.37400.38100.49700.64000.980000 | Toilet_Plumbing 2nd fix | 5d | 2026-10-24 | 2026-10-28 | 7993 |  | 7 Days Work | 9292654 |
| 7995 | 36900.37000.37100.37400.38100.49700.64000.980100 | Toilet_Ledge wall | 5d | 2026-10-29 | 2026-11-02 | 7994 |  | 7 Days Work | 9292664 |
| 7996 | 36900.37000.37100.37400.38100.49700.64000.980200 | Toilet_Cement Plaster | 5d | 2026-11-03 | 2026-11-07 | 7995 |  | 7 Days Work | 9292674 |
| 7997 | 36900.37000.37100.37400.38100.49700.64000.980300 | Toilet_Door Frame | 1d | 2026-11-08 | 2026-11-08 | 7996 |  | 7 Days Work | 9292684 |
| 7998 | 36900.37000.37100.37400.38100.49700.64000.980400 | Toilet_Wash basin & Couter | 3d | 2026-11-09 | 2026-11-11 | 7997 |  | 7 Days Work | 9292694 |
| 7999 | 36900.37000.37100.37400.38100.49700.64000.980500 | Toilet_Wall dado | 20d | 2026-11-12 | 2026-12-01 | 7998 |  | 7 Days Work | 9292704 |
| 8000 | 36900.37000.37100.37400.38100.49700.64000.980600 | Toilet_Granite Work-Ledge wall top | 3d | 2026-12-02 | 2026-12-04 | 7999 |  | 7 Days Work | 9292714 |
| 8001 | 36900.37000.37100.37400.38100.49700.64000.980700 | Toilet_Floor Tilling work | 20d | 2026-12-05 | 2026-12-24 | 8000 |  | 7 Days Work | 9292724 |
| 8002 | 36900.37000.37100.37400.38100.49700.64000.980800 | Toilet_1st row of dado | 5d | 2026-12-25 | 2026-12-29 | 8001 |  | 7 Days Work | 9292734 |
| 8003 | 36900.37000.37100.37400.38100.49700.64000.980900 | Toilet_Window Fixing | 14d | 2026-12-30 | 2027-01-12 | 8002 |  | 7 Days Work | 9292744 |
| 8004 | 36900.37000.37100.37400.38100.49700.64000.981000 | Toilet_Services above False ceiling | 21d | 2027-01-13 | 2027-02-02 | 8003 |  | 7 Days Work | 9292754 |
| 8005 | 36900.37000.37100.37400.38100.49700.64000.981100 | Toilet_False Ceiling framing | 12d | 2027-02-03 | 2027-02-14 | 8004 |  | 7 Days Work | 9292764 |
| 8006 | 36900.37000.37100.37400.38100.49700.64000.981200 | Toilet_Door Frame | 5d | 2027-02-15 | 2027-02-19 | 8005 |  | 7 Days Work | 9292774 |
| 8007 | 36900.37000.37100.37400.38100.49700.64000.981300 | Toilet_Epoxy Tile Grouting | 7d | 2027-04-17 | 2027-04-23 | 7982SS |  | 7 Days Work | 9292784 |
| 8008 | 36900.37000.37100.37400.38100.49700.64000.981400 | Toilet_False ceiling board fixing, CP Sanitary Fixture, Electric Fixture | 21d | 2027-04-24 | 2027-05-14 | 8007 |  | 7 Days Work | 9292794 |
| 8009 | 36900.37000.37100.37400.38100.49800 | **17th Habitable/18th Floor** | 245d | 2026-09-20 | 2027-05-22 |  | start no earlier than 2026-09-20 | 7 Days Work | 9279704 |
| 8010 | 36900.37000.37100.37400.38100.49800.612600 | Post Pour | 7d | 2026-09-20 | 2026-09-26 | 7950 |  | 7 Days Work | 9286044 |
| 8011 | 36900.37000.37100.37400.38100.49800.612700 | MEP Clearance -1 | 5d | 2026-09-27 | 2026-10-01 | 8010 |  | 7 Days Work | 9286054 |
| 8012 | 36900.37000.37100.37400.38100.49800.612800 | Benchmark | 1d | 2026-10-02 | 2026-10-02 | 8011 |  | 7 Days Work | 9286064 |
| 8013 | 36900.37000.37100.37400.38100.49800.612900 | Temporary Railing | 3d | 2026-10-03 | 2026-10-05 | 8012 |  | 7 Days Work | 9286074 |
| 8014 | 36900.37000.37100.37400.38100.49800.613000 | Blockwork | 10d | 2026-10-06 | 2026-10-15 | 8013 |  | 7 Days Work | 9286084 |
| 8015 | 36900.37000.37100.37400.38100.49800.613100 | MEP Clearance -2 | 10d | 2026-10-16 | 2026-10-25 | 8014 |  | 7 Days Work | 9286094 |
| 8016 | 36900.37000.37100.37400.38100.49800.613200 | Gypsum Plaster | 14d | 2026-10-26 | 2026-11-08 | 8015 |  | 7 Days Work | 9286104 |
| 8017 | 36900.37000.37100.37400.38100.49800.613300 | Kitchen Platform | 3d | 2026-11-09 | 2026-11-11 | 8016 |  | 7 Days Work | 9286114 |
| 8018 | 36900.37000.37100.37400.38100.49800.613400 | Kitchen dado | 7d | 2026-11-12 | 2026-11-18 | 8017 |  | 7 Days Work | 9286124 |
| 8019 | 36900.37000.37100.37400.38100.49800.613500 | Fire Fighting | 5d | 2026-11-19 | 2026-11-23 | 8018 |  | 7 Days Work | 9286134 |
| 8020 | 36900.37000.37100.37400.38100.49800.613600 | Anticapilary | 5d | 2026-11-24 | 2026-11-28 | 8019 |  | 7 Days Work | 9286144 |
| 8021 | 36900.37000.37100.37400.38100.49800.613700 | Stone Laying | 10d | 2027-01-01 | 2027-01-10 | 8061 |  | 7 Days Work | 9286154 |
| 8022 | 36900.37000.37100.37400.38100.49800.613800 | Tiles Laying | 7d | 2027-01-01 | 2027-01-07 | 8061 |  | 7 Days Work | 9286164 |
| 8023 | 36900.37000.37100.37400.38100.49800.613900 | 1st cutting/polishing of stone flooring | 7d | 2027-01-08 | 2027-01-14 | 8022 |  | 7 Days Work | 9286174 |
| 8024 | 36900.37000.37100.37400.38100.49800.614000 | Tiles/Stone skirting | 5d | 2027-01-15 | 2027-01-19 | 8023 |  | 7 Days Work | 9286184 |
| 8025 | 36900.37000.37100.37400.38100.49800.614100 | Protechtion sheet | 1d | 2027-01-20 | 2027-01-20 | 8024 |  | 7 Days Work | 9286194 |
| 8026 | 36900.37000.37100.37400.38100.49800.614200 | Installation of Temporary Door | 1d | 2027-01-21 | 2027-01-21 | 8025 |  | 7 Days Work | 9286204 |
| 8027 | 36900.37000.37100.37400.38100.49800.614300 | Fixing of window tracks | 5d | 2027-01-22 | 2027-01-26 | 8026 |  | 7 Days Work | 9286214 |
| 8028 | 36900.37000.37100.37400.38100.49800.614400 | Wire Pulling | 7d | 2027-01-27 | 2027-02-02 | 8027 |  | 7 Days Work | 9286224 |
| 8029 | 36900.37000.37100.37400.38100.49800.614500 | Gypsum Remaining | 5d | 2027-02-03 | 2027-02-07 | 8028 |  | 7 Days Work | 9286234 |
| 8030 | 36900.37000.37100.37400.38100.49800.614600 | Fixing of windoow shutter | 5d | 2027-02-08 | 2027-02-12 | 8029 |  | 7 Days Work | 9286244 |
| 8031 | 36900.37000.37100.37400.38100.49800.614700 | Putty Works - walls & ceiling | 15d | 2027-02-13 | 2027-02-27 | 8030 |  | 7 Days Work | 9286254 |
| 8032 | 36900.37000.37100.37400.38100.49800.614800 | False Ceiling- Framing | 10d | 2027-02-28 | 2027-03-09 | 8031 |  | 7 Days Work | 9286264 |
| 8033 | 36900.37000.37100.37400.38100.49800.614900 | Pre Hung Door | 3d | 2027-03-10 | 2027-03-12 | 8032 |  | 7 Days Work | 9286274 |
| 8034 | 36900.37000.37100.37400.38100.49800.615000 | Protechtion sheet | 2d | 2027-03-13 | 2027-03-14 | 8033 |  | 7 Days Work | 9286284 |
| 8035 | 36900.37000.37100.37400.38100.49800.615100 | Skirting near door | 2d | 2027-03-15 | 2027-03-16 | 8034 |  | 7 Days Work | 9286294 |
| 8036 | 36900.37000.37100.37400.38100.49800.615200 | Electrical Switch box fixing | 14d | 2027-03-17 | 2027-03-30 | 8035 |  | 7 Days Work | 9286304 |
| 8037 | 36900.37000.37100.37400.38100.49800.615300 | Fire Fighting painting | 5d | 2027-03-31 | 2027-04-04 | 8036 |  | 7 Days Work | 9286314 |
| 8038 | 36900.37000.37100.37400.38100.49800.615400 | Protection of all flooring, door & window hardware | 5d | 2027-04-05 | 2027-04-09 | 8037 |  | 7 Days Work | 9286324 |
| 8039 | 36900.37000.37100.37400.38100.49800.615500 | 1st coat primer- ceiling 1st & walls | 14d | 2027-04-10 | 2027-04-23 | 8038 |  | 7 Days Work | 9286334 |
| 8040 | 36900.37000.37100.37400.38100.49800.615600 | Wooden Flooring | 5d | 2027-04-24 | 2027-04-28 | 8039 |  | 7 Days Work | 9286344 |
| 8041 | 36900.37000.37100.37400.38100.49800.615700 | Removing of Temporary Railing & installation of Glass Railing | 5d | 2027-04-24 | 2027-04-28 | 8039 |  | 7 Days Work | 9286354 |
| 8042 | 36900.37000.37100.37400.38100.49800.615800 | Tile Grouting | 7d | 2027-04-24 | 2027-04-30 | 8039 |  | 7 Days Work | 9286364 |
| 8043 | 36900.37000.37100.37400.38100.49800.615900 | False Ceiling | 5d | 2027-05-01 | 2027-05-05 | 8042 |  | 7 Days Work | 9286374 |
| 8044 | 36900.37000.37100.37400.38100.49800.616000 | 2nd coat of primer | 10d | 2027-05-06 | 2027-05-15 | 8043 |  | 7 Days Work | 9286384 |
| 8045 | 36900.37000.37100.37400.38100.49800.616100 | Final cutting/polishing of stone flooring | 7d | 2027-05-16 | 2027-05-22 | 8044 |  | 7 Days Work | 9286394 |

| ID | WBS | Task | Duration | Start | Finish | Predecessors | Constraint | Calendar | Unique_Task_ID |
| --- | --- | --- | --- | --- | --- | --- | --- | --- | --- |
| 8046 | 36900.37000.37100.37400.38100.49800.64100 | **Toilet** | 237d | 2026-09-27 | 2027-05-21 |  | start no earlier than 2026-09-27 | 7 Days Work | 9279914 |
| 8047 | 36900.37000.37100.37400.38100.49800.64100.981500 | Toilet_MEP Clearance -1 | 7d | 2026-09-27 | 2026-10-03 | 8010 |  | 7 Days Work | 9292804 |
| 8048 | 36900.37000.37100.37400.38100.49800.64100.981600 | Toilet_Level Marking | 1d | 2026-10-04 | 2026-10-04 | 8047 |  | 7 Days Work | 9292814 |
| 8049 | 36900.37000.37100.37400.38100.49800.64100.981700 | Toilet_Chasing work for Electrical conduit & concealed plumbing | 5d | 2026-10-05 | 2026-10-09 | 8048 |  | 7 Days Work | 9292824 |
| 8050 | 36900.37000.37100.37400.38100.49800.64100.981800 | Toilet_Plumbing work 1st fix | 5d | 2026-10-10 | 2026-10-14 | 8049 |  | 7 Days Work | 9292834 |
| 8051 | 36900.37000.37100.37400.38100.49800.64100.981900 | Toilet_Sleeve/Bore Packing | 5d | 2026-10-15 | 2026-10-19 | 8050 |  | 7 Days Work | 9292844 |
| 8052 | 36900.37000.37100.37400.38100.49800.64100.982000 | Toilet_Waterproofing | 10d | 2026-10-20 | 2026-10-29 | 8051 |  | 7 Days Work | 9292854 |
| 8053 | 36900.37000.37100.37400.38100.49800.64100.982100 | Toilet_Screed | 1d | 2026-10-30 | 2026-10-30 | 8052 |  | 7 Days Work | 9292864 |
| 8054 | 36900.37000.37100.37400.38100.49800.64100.982200 | Toilet_Plumbing 2nd fix | 5d | 2026-10-31 | 2026-11-04 | 8053 |  | 7 Days Work | 9292874 |
| 8055 | 36900.37000.37100.37400.38100.49800.64100.982300 | Toilet_Ledge wall | 5d | 2026-11-05 | 2026-11-09 | 8054 |  | 7 Days Work | 9292884 |
| 8056 | 36900.37000.37100.37400.38100.49800.64100.982400 | Toilet_Cement Plaster | 5d | 2026-11-10 | 2026-11-14 | 8055 |  | 7 Days Work | 9292894 |
| 8057 | 36900.37000.37100.37400.38100.49800.64100.982500 | Toilet_Door Frame | 1d | 2026-11-15 | 2026-11-15 | 8056 |  | 7 Days Work | 9292904 |
| 8058 | 36900.37000.37100.37400.38100.49800.64100.982600 | Toilet_Wash basin & Couter | 3d | 2026-11-16 | 2026-11-18 | 8057 |  | 7 Days Work | 9292914 |
| 8059 | 36900.37000.37100.37400.38100.49800.64100.982700 | Toilet_Wall dado | 20d | 2026-11-19 | 2026-12-08 | 8058 |  | 7 Days Work | 9292924 |
| 8060 | 36900.37000.37100.37400.38100.49800.64100.982800 | Toilet_Granite Work-Ledge wall top | 3d | 2026-12-09 | 2026-12-11 | 8059 |  | 7 Days Work | 9292934 |
| 8061 | 36900.37000.37100.37400.38100.49800.64100.982900 | Toilet_Floor Tilling work | 20d | 2026-12-12 | 2026-12-31 | 8060 |  | 7 Days Work | 9292944 |
| 8062 | 36900.37000.37100.37400.38100.49800.64100.983000 | Toilet_1st row of dado | 5d | 2027-01-01 | 2027-01-05 | 8061 |  | 7 Days Work | 9292954 |
| 8063 | 36900.37000.37100.37400.38100.49800.64100.983100 | Toilet_Window Fixing | 14d | 2027-01-06 | 2027-01-19 | 8062 |  | 7 Days Work | 9292964 |
| 8064 | 36900.37000.37100.37400.38100.49800.64100.983200 | Toilet_Services above False ceiling | 21d | 2027-01-20 | 2027-02-09 | 8063 |  | 7 Days Work | 9292974 |
| 8065 | 36900.37000.37100.37400.38100.49800.64100.983300 | Toilet_False Ceiling framing | 12d | 2027-02-10 | 2027-02-21 | 8064 |  | 7 Days Work | 9292984 |
| 8066 | 36900.37000.37100.37400.38100.49800.64100.983400 | Toilet_Door Frame | 5d | 2027-02-22 | 2027-02-26 | 8065 |  | 7 Days Work | 9292994 |
| 8067 | 36900.37000.37100.37400.38100.49800.64100.983500 | Toilet_Epoxy Tile Grouting | 7d | 2027-04-24 | 2027-04-30 | 8042SS |  | 7 Days Work | 9293004 |
| 8068 | 36900.37000.37100.37400.38100.49800.64100.983600 | Toilet_False ceiling board fixing, CP Sanitary Fixture, Electric Fixture | 21d | 2027-05-01 | 2027-05-21 | 8067 |  | 7 Days Work | 9293014 |
| 8069 | 36900.37000.37100.37400.38100.49900 | **18th Habitable/19th Floor** | 245d | 2026-09-27 | 2027-05-29 |  | start no earlier than 2026-09-27 | 7 Days Work | 9279714 |
| 8070 | 36900.37000.37100.37400.38100.49900.616200 | Post Pour | 7d | 2026-09-27 | 2026-10-03 | 8010 |  | 7 Days Work | 9286404 |
| 8071 | 36900.37000.37100.37400.38100.49900.616300 | MEP Clearance -1 | 5d | 2026-10-04 | 2026-10-08 | 8070 |  | 7 Days Work | 9286414 |
| 8072 | 36900.37000.37100.37400.38100.49900.616400 | Benchmark | 1d | 2026-10-09 | 2026-10-09 | 8071 |  | 7 Days Work | 9286424 |
| 8073 | 36900.37000.37100.37400.38100.49900.616500 | Temporary Railing | 3d | 2026-10-10 | 2026-10-12 | 8072 |  | 7 Days Work | 9286434 |
| 8074 | 36900.37000.37100.37400.38100.49900.616600 | Blockwork | 10d | 2026-10-13 | 2026-10-22 | 8073 |  | 7 Days Work | 9286444 |
| 8075 | 36900.37000.37100.37400.38100.49900.616700 | MEP Clearance -2 | 10d | 2026-10-23 | 2026-11-01 | 8074 |  | 7 Days Work | 9286454 |
| 8076 | 36900.37000.37100.37400.38100.49900.616800 | Gypsum Plaster | 14d | 2026-11-02 | 2026-11-15 | 8075 |  | 7 Days Work | 9286464 |
| 8077 | 36900.37000.37100.37400.38100.49900.616900 | Kitchen Platform | 3d | 2026-11-16 | 2026-11-18 | 8076 |  | 7 Days Work | 9286474 |
| 8078 | 36900.37000.37100.37400.38100.49900.617000 | Kitchen dado | 7d | 2026-11-19 | 2026-11-25 | 8077 |  | 7 Days Work | 9286484 |
| 8079 | 36900.37000.37100.37400.38100.49900.617100 | Fire Fighting | 5d | 2026-11-26 | 2026-11-30 | 8078 |  | 7 Days Work | 9286494 |
| 8080 | 36900.37000.37100.37400.38100.49900.617200 | Anticapilary | 5d | 2026-12-01 | 2026-12-05 | 8079 |  | 7 Days Work | 9286504 |
| 8081 | 36900.37000.37100.37400.38100.49900.617300 | Stone Laying | 10d | 2027-01-08 | 2027-01-17 | 8121 |  | 7 Days Work | 9286514 |
| 8082 | 36900.37000.37100.37400.38100.49900.617400 | Tiles Laying | 7d | 2027-01-08 | 2027-01-14 | 8121 |  | 7 Days Work | 9286524 |
| 8083 | 36900.37000.37100.37400.38100.49900.617500 | 1st cutting/polishing of stone flooring | 7d | 2027-01-15 | 2027-01-21 | 8082 |  | 7 Days Work | 9286534 |
| 8084 | 36900.37000.37100.37400.38100.49900.617600 | Tiles/Stone skirting | 5d | 2027-01-22 | 2027-01-26 | 8083 |  | 7 Days Work | 9286544 |
| 8085 | 36900.37000.37100.37400.38100.49900.617700 | Protechtion sheet | 1d | 2027-01-27 | 2027-01-27 | 8084 |  | 7 Days Work | 9286554 |
| 8086 | 36900.37000.37100.37400.38100.49900.617800 | Installation of Temporary Door | 1d | 2027-01-28 | 2027-01-28 | 8085 |  | 7 Days Work | 9286564 |
| 8087 | 36900.37000.37100.37400.38100.49900.617900 | Fixing of window tracks | 5d | 2027-01-29 | 2027-02-02 | 8086 |  | 7 Days Work | 9286574 |
| 8088 | 36900.37000.37100.37400.38100.49900.618000 | Wire Pulling | 7d | 2027-02-03 | 2027-02-09 | 8087 |  | 7 Days Work | 9286584 |
| 8089 | 36900.37000.37100.37400.38100.49900.618100 | Gypsum Remaining | 5d | 2027-02-10 | 2027-02-14 | 8088 |  | 7 Days Work | 9286594 |
| 8090 | 36900.37000.37100.37400.38100.49900.618200 | Fixing of windoow shutter | 5d | 2027-02-15 | 2027-02-19 | 8089 |  | 7 Days Work | 9286604 |
| 8091 | 36900.37000.37100.37400.38100.49900.618300 | Putty Works - walls & ceiling | 15d | 2027-02-20 | 2027-03-06 | 8090 |  | 7 Days Work | 9286614 |
| 8092 | 36900.37000.37100.37400.38100.49900.618400 | False Ceiling- Framing | 10d | 2027-03-07 | 2027-03-16 | 8091 |  | 7 Days Work | 9286624 |
| 8093 | 36900.37000.37100.37400.38100.49900.618500 | Pre Hung Door | 3d | 2027-03-17 | 2027-03-19 | 8092 |  | 7 Days Work | 9286634 |
| 8094 | 36900.37000.37100.37400.38100.49900.618600 | Protechtion sheet | 2d | 2027-03-20 | 2027-03-21 | 8093 |  | 7 Days Work | 9286644 |
| 8095 | 36900.37000.37100.37400.38100.49900.618700 | Skirting near door | 2d | 2027-03-22 | 2027-03-23 | 8094 |  | 7 Days Work | 9286654 |
| 8096 | 36900.37000.37100.37400.38100.49900.618800 | Electrical Switch box fixing | 14d | 2027-03-24 | 2027-04-06 | 8095 |  | 7 Days Work | 9286664 |
| 8097 | 36900.37000.37100.37400.38100.49900.618900 | Fire Fighting painting | 5d | 2027-04-07 | 2027-04-11 | 8096 |  | 7 Days Work | 9286674 |
| 8098 | 36900.37000.37100.37400.38100.49900.619000 | Protection of all flooring, door & window hardware | 5d | 2027-04-12 | 2027-04-16 | 8097 |  | 7 Days Work | 9286684 |
| 8099 | 36900.37000.37100.37400.38100.49900.619100 | 1st coat primer- ceiling 1st & walls | 14d | 2027-04-17 | 2027-04-30 | 8098 |  | 7 Days Work | 9286694 |
| 8100 | 36900.37000.37100.37400.38100.49900.619200 | Wooden Flooring | 5d | 2027-05-01 | 2027-05-05 | 8099 |  | 7 Days Work | 9286704 |
| 8101 | 36900.37000.37100.37400.38100.49900.619300 | Removing of Temporary Railing & installation of Glass Railing | 5d | 2027-05-01 | 2027-05-05 | 8099 |  | 7 Days Work | 9286714 |
| 8102 | 36900.37000.37100.37400.38100.49900.619400 | Tile Grouting | 7d | 2027-05-01 | 2027-05-07 | 8099 |  | 7 Days Work | 9286724 |
| 8103 | 36900.37000.37100.37400.38100.49900.619500 | False Ceiling | 5d | 2027-05-08 | 2027-05-12 | 8102 |  | 7 Days Work | 9286734 |
| 8104 | 36900.37000.37100.37400.38100.49900.619600 | 2nd coat of primer | 10d | 2027-05-13 | 2027-05-22 | 8103 |  | 7 Days Work | 9286744 |
| 8105 | 36900.37000.37100.37400.38100.49900.619700 | Final cutting/polishing of stone flooring | 7d | 2027-05-23 | 2027-05-29 | 8104 |  | 7 Days Work | 9286754 |

| ID | WBS | Task | Duration | Start | Finish | Predecessors | Constraint | Calendar | Unique_Task_ID |
| --- | --- | --- | --- | --- | --- | --- | --- | --- | --- |
| 8106 | 36900.37000.37100.37400.38100.49900.64200 | **Toilet** | 237d | 2026-10-04 | 2027-05-28 |  | start no earlier than 2026-10-04 | 7 Days Work | 9279924 |
| 8107 | 36900.37000.37100.37400.38100.49900.64200.983700 | Toilet_MEP Clearance -1 | 7d | 2026-10-04 | 2026-10-10 | 8070 |  | 7 Days Work | 9293024 |
| 8108 | 36900.37000.37100.37400.38100.49900.64200.983800 | Toilet_Level Marking | 1d | 2026-10-11 | 2026-10-11 | 8107 |  | 7 Days Work | 9293034 |
| 8109 | 36900.37000.37100.37400.38100.49900.64200.983900 | Toilet_Chasing work for Electrical conduit & concealed plumbing | 5d | 2026-10-12 | 2026-10-16 | 8108 |  | 7 Days Work | 9293044 |
| 8110 | 36900.37000.37100.37400.38100.49900.64200.984000 | Toilet_Plumbing work 1st fix | 5d | 2026-10-17 | 2026-10-21 | 8109 |  | 7 Days Work | 9293054 |
| 8111 | 36900.37000.37100.37400.38100.49900.64200.984100 | Toilet_Sleeve/Bore Packing | 5d | 2026-10-22 | 2026-10-26 | 8110 |  | 7 Days Work | 9293064 |
| 8112 | 36900.37000.37100.37400.38100.49900.64200.984200 | Toilet_Waterproofing | 10d | 2026-10-27 | 2026-11-05 | 8111 |  | 7 Days Work | 9293074 |
| 8113 | 36900.37000.37100.37400.38100.49900.64200.984300 | Toilet_Screed | 1d | 2026-11-06 | 2026-11-06 | 8112 |  | 7 Days Work | 9293084 |
| 8114 | 36900.37000.37100.37400.38100.49900.64200.984400 | Toilet_Plumbing 2nd fix | 5d | 2026-11-07 | 2026-11-11 | 8113 |  | 7 Days Work | 9293094 |
| 8115 | 36900.37000.37100.37400.38100.49900.64200.984500 | Toilet_Ledge wall | 5d | 2026-11-12 | 2026-11-16 | 8114 |  | 7 Days Work | 9293104 |
| 8116 | 36900.37000.37100.37400.38100.49900.64200.984600 | Toilet_Cement Plaster | 5d | 2026-11-17 | 2026-11-21 | 8115 |  | 7 Days Work | 9293114 |
| 8117 | 36900.37000.37100.37400.38100.49900.64200.984700 | Toilet_Door Frame | 1d | 2026-11-22 | 2026-11-22 | 8116 |  | 7 Days Work | 9293124 |
| 8118 | 36900.37000.37100.37400.38100.49900.64200.984800 | Toilet_Wash basin & Couter | 3d | 2026-11-23 | 2026-11-25 | 8117 |  | 7 Days Work | 9293134 |
| 8119 | 36900.37000.37100.37400.38100.49900.64200.984900 | Toilet_Wall dado | 20d | 2026-11-26 | 2026-12-15 | 8118 |  | 7 Days Work | 9293144 |
| 8120 | 36900.37000.37100.37400.38100.49900.64200.985000 | Toilet_Granite Work-Ledge wall top | 3d | 2026-12-16 | 2026-12-18 | 8119 |  | 7 Days Work | 9293154 |
| 8121 | 36900.37000.37100.37400.38100.49900.64200.985100 | Toilet_Floor Tilling work | 20d | 2026-12-19 | 2027-01-07 | 8120 |  | 7 Days Work | 9293164 |
| 8122 | 36900.37000.37100.37400.38100.49900.64200.985200 | Toilet_1st row of dado | 5d | 2027-01-08 | 2027-01-12 | 8121 |  | 7 Days Work | 9293174 |
| 8123 | 36900.37000.37100.37400.38100.49900.64200.985300 | Toilet_Window Fixing | 14d | 2027-01-13 | 2027-01-26 | 8122 |  | 7 Days Work | 9293184 |
| 8124 | 36900.37000.37100.37400.38100.49900.64200.985400 | Toilet_Services above False ceiling | 21d | 2027-01-27 | 2027-02-16 | 8123 |  | 7 Days Work | 9293194 |
| 8125 | 36900.37000.37100.37400.38100.49900.64200.985500 | Toilet_False Ceiling framing | 12d | 2027-02-17 | 2027-02-28 | 8124 |  | 7 Days Work | 9293204 |
| 8126 | 36900.37000.37100.37400.38100.49900.64200.985600 | Toilet_Door Frame | 5d | 2027-03-01 | 2027-03-05 | 8125 |  | 7 Days Work | 9293214 |
| 8127 | 36900.37000.37100.37400.38100.49900.64200.985700 | Toilet_Epoxy Tile Grouting | 7d | 2027-05-01 | 2027-05-07 | 8102SS |  | 7 Days Work | 9293224 |
| 8128 | 36900.37000.37100.37400.38100.49900.64200.985800 | Toilet_False ceiling board fixing, CP Sanitary Fixture, Electric Fixture | 21d | 2027-05-08 | 2027-05-28 | 8127 |  | 7 Days Work | 9293234 |
| 8129 | 36900.37000.37100.37400.38100.50000 | **19th Habitable/20th Floor** | 245d | 2026-10-04 | 2027-06-05 |  | start no earlier than 2026-10-04 | 7 Days Work | 9279724 |
| 8130 | 36900.37000.37100.37400.38100.50000.619800 | Post Pour | 7d | 2026-10-04 | 2026-10-10 | 8070 |  | 7 Days Work | 9286764 |
| 8131 | 36900.37000.37100.37400.38100.50000.619900 | MEP Clearance -1 | 5d | 2026-10-11 | 2026-10-15 | 8130 |  | 7 Days Work | 9286774 |
| 8132 | 36900.37000.37100.37400.38100.50000.620000 | Benchmark | 1d | 2026-10-16 | 2026-10-16 | 8131 |  | 7 Days Work | 9286784 |
| 8133 | 36900.37000.37100.37400.38100.50000.620100 | Temporary Railing | 3d | 2026-10-17 | 2026-10-19 | 8132 |  | 7 Days Work | 9286794 |
| 8134 | 36900.37000.37100.37400.38100.50000.620200 | Blockwork | 10d | 2026-10-20 | 2026-10-29 | 8133 |  | 7 Days Work | 9286804 |
| 8135 | 36900.37000.37100.37400.38100.50000.620300 | MEP Clearance -2 | 10d | 2026-10-30 | 2026-11-08 | 8134 |  | 7 Days Work | 9286814 |
| 8136 | 36900.37000.37100.37400.38100.50000.620400 | Gypsum Plaster | 14d | 2026-11-09 | 2026-11-22 | 8135 |  | 7 Days Work | 9286824 |
| 8137 | 36900.37000.37100.37400.38100.50000.620500 | Kitchen Platform | 3d | 2026-11-23 | 2026-11-25 | 8136 |  | 7 Days Work | 9286834 |
| 8138 | 36900.37000.37100.37400.38100.50000.620600 | Kitchen dado | 7d | 2026-11-26 | 2026-12-02 | 8137 |  | 7 Days Work | 9286844 |
| 8139 | 36900.37000.37100.37400.38100.50000.620700 | Fire Fighting | 5d | 2026-12-03 | 2026-12-07 | 8138 |  | 7 Days Work | 9286854 |
| 8140 | 36900.37000.37100.37400.38100.50000.620800 | Anticapilary | 5d | 2026-12-08 | 2026-12-12 | 8139 |  | 7 Days Work | 9286864 |
| 8141 | 36900.37000.37100.37400.38100.50000.620900 | Stone Laying | 10d | 2027-01-15 | 2027-01-24 | 8181 |  | 7 Days Work | 9286874 |
| 8142 | 36900.37000.37100.37400.38100.50000.621000 | Tiles Laying | 7d | 2027-01-15 | 2027-01-21 | 8181 |  | 7 Days Work | 9286884 |
| 8143 | 36900.37000.37100.37400.38100.50000.621100 | 1st cutting/polishing of stone flooring | 7d | 2027-01-22 | 2027-01-28 | 8142 |  | 7 Days Work | 9286894 |
| 8144 | 36900.37000.37100.37400.38100.50000.621200 | Tiles/Stone skirting | 5d | 2027-01-29 | 2027-02-02 | 8143 |  | 7 Days Work | 9286904 |
| 8145 | 36900.37000.37100.37400.38100.50000.621300 | Protechtion sheet | 1d | 2027-02-03 | 2027-02-03 | 8144 |  | 7 Days Work | 9286914 |
| 8146 | 36900.37000.37100.37400.38100.50000.621400 | Installation of Temporary Door | 1d | 2027-02-04 | 2027-02-04 | 8145 |  | 7 Days Work | 9286924 |
| 8147 | 36900.37000.37100.37400.38100.50000.621500 | Fixing of window tracks | 5d | 2027-02-05 | 2027-02-09 | 8146 |  | 7 Days Work | 9286934 |
| 8148 | 36900.37000.37100.37400.38100.50000.621600 | Wire Pulling | 7d | 2027-02-10 | 2027-02-16 | 8147 |  | 7 Days Work | 9286944 |
| 8149 | 36900.37000.37100.37400.38100.50000.621700 | Gypsum Remaining | 5d | 2027-02-17 | 2027-02-21 | 8148 |  | 7 Days Work | 9286954 |
| 8150 | 36900.37000.37100.37400.38100.50000.621800 | Fixing of windoow shutter | 5d | 2027-02-22 | 2027-02-26 | 8149 |  | 7 Days Work | 9286964 |
| 8151 | 36900.37000.37100.37400.38100.50000.621900 | Putty Works - walls & ceiling | 15d | 2027-02-27 | 2027-03-13 | 8150 |  | 7 Days Work | 9286974 |
| 8152 | 36900.37000.37100.37400.38100.50000.622000 | False Ceiling- Framing | 10d | 2027-03-14 | 2027-03-23 | 8151 |  | 7 Days Work | 9286984 |
| 8153 | 36900.37000.37100.37400.38100.50000.622100 | Pre Hung Door | 3d | 2027-03-24 | 2027-03-26 | 8152 |  | 7 Days Work | 9286994 |
| 8154 | 36900.37000.37100.37400.38100.50000.622200 | Protechtion sheet | 2d | 2027-03-27 | 2027-03-28 | 8153 |  | 7 Days Work | 9287004 |
| 8155 | 36900.37000.37100.37400.38100.50000.622300 | Skirting near door | 2d | 2027-03-29 | 2027-03-30 | 8154 |  | 7 Days Work | 9287014 |
| 8156 | 36900.37000.37100.37400.38100.50000.622400 | Electrical Switch box fixing | 14d | 2027-03-31 | 2027-04-13 | 8155 |  | 7 Days Work | 9287024 |
| 8157 | 36900.37000.37100.37400.38100.50000.622500 | Fire Fighting painting | 5d | 2027-04-14 | 2027-04-18 | 8156 |  | 7 Days Work | 9287034 |
| 8158 | 36900.37000.37100.37400.38100.50000.622600 | Protection of all flooring, door & window hardware | 5d | 2027-04-19 | 2027-04-23 | 8157 |  | 7 Days Work | 9287044 |
| 8159 | 36900.37000.37100.37400.38100.50000.622700 | 1st coat primer- ceiling 1st & walls | 14d | 2027-04-24 | 2027-05-07 | 8158 |  | 7 Days Work | 9287054 |
| 8160 | 36900.37000.37100.37400.38100.50000.622800 | Wooden Flooring | 5d | 2027-05-08 | 2027-05-12 | 8159 |  | 7 Days Work | 9287064 |
| 8161 | 36900.37000.37100.37400.38100.50000.622900 | Removing of Temporary Railing & installation of Glass Railing | 5d | 2027-05-08 | 2027-05-12 | 8159 |  | 7 Days Work | 9287074 |
| 8162 | 36900.37000.37100.37400.38100.50000.623000 | Tile Grouting | 7d | 2027-05-08 | 2027-05-14 | 8159 |  | 7 Days Work | 9287084 |
| 8163 | 36900.37000.37100.37400.38100.50000.623100 | False Ceiling | 5d | 2027-05-15 | 2027-05-19 | 8162 |  | 7 Days Work | 9287094 |
| 8164 | 36900.37000.37100.37400.38100.50000.623200 | 2nd coat of primer | 10d | 2027-05-20 | 2027-05-29 | 8163 |  | 7 Days Work | 9287104 |
| 8165 | 36900.37000.37100.37400.38100.50000.623300 | Final cutting/polishing of stone flooring | 7d | 2027-05-30 | 2027-06-05 | 8164 |  | 7 Days Work | 9287114 |

| ID | WBS | Task | Duration | Start | Finish | Predecessors | Constraint | Calendar | Unique_Task_ID |
| --- | --- | --- | --- | --- | --- | --- | --- | --- | --- |
| 8166 | 36900.37000.37100.37400.38100.50000.64300 | **Toilet** | 237d | 2026-10-11 | 2027-06-04 |  | start no earlier than 2026-10-11 | 7 Days Work | 9279934 |
| 8167 | 36900.37000.37100.37400.38100.50000.64300.985900 | Toilet_MEP Clearance -1 | 7d | 2026-10-11 | 2026-10-17 | 8130 |  | 7 Days Work | 9293244 |
| 8168 | 36900.37000.37100.37400.38100.50000.64300.986000 | Toilet_Level Marking | 1d | 2026-10-18 | 2026-10-18 | 8167 |  | 7 Days Work | 9293254 |
| 8169 | 36900.37000.37100.37400.38100.50000.64300.986100 | Toilet_Chasing work for Electrical conduit & concealed plumbing | 5d | 2026-10-19 | 2026-10-23 | 8168 |  | 7 Days Work | 9293264 |
| 8170 | 36900.37000.37100.37400.38100.50000.64300.986200 | Toilet_Plumbing work 1st fix | 5d | 2026-10-24 | 2026-10-28 | 8169 |  | 7 Days Work | 9293274 |
| 8171 | 36900.37000.37100.37400.38100.50000.64300.986300 | Toilet_Sleeve/Bore Packing | 5d | 2026-10-29 | 2026-11-02 | 8170 |  | 7 Days Work | 9293284 |
| 8172 | 36900.37000.37100.37400.38100.50000.64300.986400 | Toilet_Waterproofing | 10d | 2026-11-03 | 2026-11-12 | 8171 |  | 7 Days Work | 9293294 |
| 8173 | 36900.37000.37100.37400.38100.50000.64300.986500 | Toilet_Screed | 1d | 2026-11-13 | 2026-11-13 | 8172 |  | 7 Days Work | 9293304 |
| 8174 | 36900.37000.37100.37400.38100.50000.64300.986600 | Toilet_Plumbing 2nd fix | 5d | 2026-11-14 | 2026-11-18 | 8173 |  | 7 Days Work | 9293314 |
| 8175 | 36900.37000.37100.37400.38100.50000.64300.986700 | Toilet_Ledge wall | 5d | 2026-11-19 | 2026-11-23 | 8174 |  | 7 Days Work | 9293324 |
| 8176 | 36900.37000.37100.37400.38100.50000.64300.986800 | Toilet_Cement Plaster | 5d | 2026-11-24 | 2026-11-28 | 8175 |  | 7 Days Work | 9293334 |
| 8177 | 36900.37000.37100.37400.38100.50000.64300.986900 | Toilet_Door Frame | 1d | 2026-11-29 | 2026-11-29 | 8176 |  | 7 Days Work | 9293344 |
| 8178 | 36900.37000.37100.37400.38100.50000.64300.987000 | Toilet_Wash basin & Couter | 3d | 2026-11-30 | 2026-12-02 | 8177 |  | 7 Days Work | 9293354 |
| 8179 | 36900.37000.37100.37400.38100.50000.64300.987100 | Toilet_Wall dado | 20d | 2026-12-03 | 2026-12-22 | 8178 |  | 7 Days Work | 9293364 |
| 8180 | 36900.37000.37100.37400.38100.50000.64300.987200 | Toilet_Granite Work-Ledge wall top | 3d | 2026-12-23 | 2026-12-25 | 8179 |  | 7 Days Work | 9293374 |
| 8181 | 36900.37000.37100.37400.38100.50000.64300.987300 | Toilet_Floor Tilling work | 20d | 2026-12-26 | 2027-01-14 | 8180 |  | 7 Days Work | 9293384 |
| 8182 | 36900.37000.37100.37400.38100.50000.64300.987400 | Toilet_1st row of dado | 5d | 2027-01-15 | 2027-01-19 | 8181 |  | 7 Days Work | 9293394 |
| 8183 | 36900.37000.37100.37400.38100.50000.64300.987500 | Toilet_Window Fixing | 14d | 2027-01-20 | 2027-02-02 | 8182 |  | 7 Days Work | 9293404 |
| 8184 | 36900.37000.37100.37400.38100.50000.64300.987600 | Toilet_Services above False ceiling | 21d | 2027-02-03 | 2027-02-23 | 8183 |  | 7 Days Work | 9293414 |
| 8185 | 36900.37000.37100.37400.38100.50000.64300.987700 | Toilet_False Ceiling framing | 12d | 2027-02-24 | 2027-03-07 | 8184 |  | 7 Days Work | 9293424 |
| 8186 | 36900.37000.37100.37400.38100.50000.64300.987800 | Toilet_Door Frame | 5d | 2027-03-08 | 2027-03-12 | 8185 |  | 7 Days Work | 9293434 |
| 8187 | 36900.37000.37100.37400.38100.50000.64300.987900 | Toilet_Epoxy Tile Grouting | 7d | 2027-05-08 | 2027-05-14 | 8162SS |  | 7 Days Work | 9293444 |
| 8188 | 36900.37000.37100.37400.38100.50000.64300.988000 | Toilet_False ceiling board fixing, CP Sanitary Fixture, Electric Fixture | 21d | 2027-05-15 | 2027-06-04 | 8187 |  | 7 Days Work | 9293454 |
| 8189 | 36900.37000.37100.37400.38100.50100 | **19th Habitable/21st Floor** | 255d | 2026-10-11 | 2027-06-22 |  | start no earlier than 2026-10-11 | 7 Days Work | 9279734 |
| 8190 | 36900.37000.37100.37400.38100.50100.623400 | Post Pour | 7d | 2026-10-11 | 2026-10-17 | 8130 |  | 7 Days Work | 9287124 |
| 8191 | 36900.37000.37100.37400.38100.50100.623500 | MEP Clearance -1 | 5d | 2026-10-18 | 2026-10-22 | 8190 |  | 7 Days Work | 9287134 |
| 8192 | 36900.37000.37100.37400.38100.50100.623600 | Benchmark | 1d | 2026-10-23 | 2026-10-23 | 8191 |  | 7 Days Work | 9287144 |
| 8193 | 36900.37000.37100.37400.38100.50100.623700 | Temporary Railing | 3d | 2026-10-24 | 2026-10-26 | 8192 |  | 7 Days Work | 9287154 |
| 8194 | 36900.37000.37100.37400.38100.50100.623800 | Blockwork | 10d | 2026-10-27 | 2026-11-05 | 8193 |  | 7 Days Work | 9287164 |
| 8195 | 36900.37000.37100.37400.38100.50100.623900 | MEP Clearance -2 | 10d | 2026-11-06 | 2026-11-15 | 8194 |  | 7 Days Work | 9287174 |
| 8196 | 36900.37000.37100.37400.38100.50100.624000 | Gypsum Plaster | 14d | 2026-11-16 | 2026-11-29 | 8195 |  | 7 Days Work | 9044784 |
| 8197 | 36900.37000.37100.37400.38100.50100.624100 | Kitchen Platform | 3d | 2026-11-30 | 2026-12-02 | 8196 |  | 7 Days Work | 9287194 |
| 8198 | 36900.37000.37100.37400.38100.50100.624200 | Kitchen dado | 7d | 2026-12-03 | 2026-12-09 | 8197 |  | 7 Days Work | 9287204 |
| 8199 | 36900.37000.37100.37400.38100.50100.624300 | Fire Fighting | 5d | 2026-12-10 | 2026-12-14 | 8198 |  | 7 Days Work | 9287214 |
| 8200 | 36900.37000.37100.37400.38100.50100.624400 | Anticapilary | 5d | 2026-12-15 | 2026-12-19 | 8199 |  | 7 Days Work | 9287224 |
| 8201 | 36900.37000.37100.37400.38100.50100.624500 | Stone Laying | 10d | 2027-01-22 | 2027-01-31 | 8241 |  | 7 Days Work | 9287234 |
| 8202 | 36900.37000.37100.37400.38100.50100.624600 | Tiles Laying | 7d | 2027-02-01 | 2027-02-07 | 8201 |  | 7 Days Work | 9044794 |
| 8203 | 36900.37000.37100.37400.38100.50100.624700 | 1st cutting/polishing of stone flooring | 7d | 2027-02-08 | 2027-02-14 | 8202 |  | 7 Days Work | 9287254 |
| 8204 | 36900.37000.37100.37400.38100.50100.624800 | Tiles/Stone skirting | 5d | 2027-02-15 | 2027-02-19 | 8203 |  | 7 Days Work | 9287264 |
| 8205 | 36900.37000.37100.37400.38100.50100.624900 | Protechtion sheet | 1d | 2027-02-20 | 2027-02-20 | 8204 |  | 7 Days Work | 9287274 |
| 8206 | 36900.37000.37100.37400.38100.50100.625000 | Installation of Temporary Door | 1d | 2027-02-21 | 2027-02-21 | 8205 |  | 7 Days Work | 9287284 |
| 8207 | 36900.37000.37100.37400.38100.50100.625100 | Fixing of window tracks | 5d | 2027-02-22 | 2027-02-26 | 8206 |  | 7 Days Work | 9287294 |
| 8208 | 36900.37000.37100.37400.38100.50100.625200 | Wire Pulling | 7d | 2027-02-27 | 2027-03-05 | 8207 |  | 7 Days Work | 9287304 |
| 8209 | 36900.37000.37100.37400.38100.50100.625300 | Gypsum Remaining | 5d | 2027-03-06 | 2027-03-10 | 8208 |  | 7 Days Work | 9287314 |
| 8210 | 36900.37000.37100.37400.38100.50100.625400 | Fixing of windoow shutter | 5d | 2027-03-11 | 2027-03-15 | 8209 |  | 7 Days Work | 9287324 |
| 8211 | 36900.37000.37100.37400.38100.50100.625500 | Putty Works - walls & ceiling | 15d | 2027-03-16 | 2027-03-30 | 8210 |  | 7 Days Work | 9287334 |
| 8212 | 36900.37000.37100.37400.38100.50100.625600 | False Ceiling- Framing | 10d | 2027-03-31 | 2027-04-09 | 8211 |  | 7 Days Work | 9287344 |
| 8213 | 36900.37000.37100.37400.38100.50100.625700 | Pre Hung Door | 3d | 2027-04-10 | 2027-04-12 | 8212 |  | 7 Days Work | 9287354 |
| 8214 | 36900.37000.37100.37400.38100.50100.625800 | Protechtion sheet | 2d | 2027-04-13 | 2027-04-14 | 8213 |  | 7 Days Work | 9287364 |
| 8215 | 36900.37000.37100.37400.38100.50100.625900 | Skirting near door | 2d | 2027-04-15 | 2027-04-16 | 8214 |  | 7 Days Work | 9287374 |
| 8216 | 36900.37000.37100.37400.38100.50100.626000 | Electrical Switch box fixing | 14d | 2027-04-17 | 2027-04-30 | 8215 |  | 7 Days Work | 9287384 |
| 8217 | 36900.37000.37100.37400.38100.50100.626100 | Fire Fighting painting | 5d | 2027-05-01 | 2027-05-05 | 8216 |  | 7 Days Work | 9287394 |
| 8218 | 36900.37000.37100.37400.38100.50100.626200 | Protection of all flooring, door & window hardware | 5d | 2027-05-06 | 2027-05-10 | 8217 |  | 7 Days Work | 9287404 |
| 8219 | 36900.37000.37100.37400.38100.50100.626300 | 1st coat primer- ceiling 1st & walls | 14d | 2027-05-11 | 2027-05-24 | 8218 |  | 7 Days Work | 9287414 |
| 8220 | 36900.37000.37100.37400.38100.50100.626400 | Wooden Flooring | 5d | 2027-05-25 | 2027-05-29 | 8219 |  | 7 Days Work | 9287424 |
| 8221 | 36900.37000.37100.37400.38100.50100.626500 | Removing of Temporary Railing & installation of Glass Railing | 5d | 2027-05-25 | 2027-05-29 | 8219 |  | 7 Days Work | 9287434 |
| 8222 | 36900.37000.37100.37400.38100.50100.626600 | Tile Grouting | 7d | 2027-05-25 | 2027-05-31 | 8219 |  | 7 Days Work | 9287444 |
| 8223 | 36900.37000.37100.37400.38100.50100.626700 | False Ceiling | 5d | 2027-06-01 | 2027-06-05 | 8222 |  | 7 Days Work | 9287454 |
| 8224 | 36900.37000.37100.37400.38100.50100.626800 | 2nd coat of primer | 10d | 2027-06-06 | 2027-06-15 | 8223 |  | 7 Days Work | 9287464 |
| 8225 | 36900.37000.37100.37400.38100.50100.626900 | Final cutting/polishing of stone flooring | 7d | 2027-06-16 | 2027-06-22 | 8224 |  | 7 Days Work | 9287474 |

| ID | WBS | Task | Duration | Start | Finish | Predecessors | Constraint | Calendar | Unique_Task_ID |
| --- | --- | --- | --- | --- | --- | --- | --- | --- | --- |
| 8226 | 36900.37000.37100.37400.38100.50100.64400 | **Toilet** | 247d | 2026-10-18 | 2027-06-21 |  | start no earlier than 2026-10-18 | 7 Days Work | 9279944 |
| 8227 | 36900.37000.37100.37400.38100.50100.64400.988100 | Toilet_MEP Clearance -1 | 7d | 2026-10-18 | 2026-10-24 | 8190 |  | 7 Days Work | 9293464 |
| 8228 | 36900.37000.37100.37400.38100.50100.64400.988200 | Toilet_Level Marking | 1d | 2026-10-25 | 2026-10-25 | 8227 |  | 7 Days Work | 9293474 |
| 8229 | 36900.37000.37100.37400.38100.50100.64400.988300 | Toilet_Chasing work for Electrical conduit & concealed plumbing | 5d | 2026-10-26 | 2026-10-30 | 8228 |  | 7 Days Work | 9293484 |
| 8230 | 36900.37000.37100.37400.38100.50100.64400.988400 | Toilet_Plumbing work 1st fix | 5d | 2026-10-31 | 2026-11-04 | 8229 |  | 7 Days Work | 9293494 |
| 8231 | 36900.37000.37100.37400.38100.50100.64400.988500 | Toilet_Sleeve/Bore Packing | 5d | 2026-11-05 | 2026-11-09 | 8230 |  | 7 Days Work | 9293504 |
| 8232 | 36900.37000.37100.37400.38100.50100.64400.988600 | Toilet_Waterproofing | 10d | 2026-11-10 | 2026-11-19 | 8231 |  | 7 Days Work | 9293514 |
| 8233 | 36900.37000.37100.37400.38100.50100.64400.988700 | Toilet_Screed | 1d | 2026-11-20 | 2026-11-20 | 8232 |  | 7 Days Work | 9293524 |
| 8234 | 36900.37000.37100.37400.38100.50100.64400.988800 | Toilet_Plumbing 2nd fix | 5d | 2026-11-21 | 2026-11-25 | 8233 |  | 7 Days Work | 9293534 |
| 8235 | 36900.37000.37100.37400.38100.50100.64400.988900 | Toilet_Ledge wall | 5d | 2026-11-26 | 2026-11-30 | 8234 |  | 7 Days Work | 9293544 |
| 8236 | 36900.37000.37100.37400.38100.50100.64400.989000 | Toilet_Cement Plaster | 5d | 2026-12-01 | 2026-12-05 | 8235 |  | 7 Days Work | 9293554 |
| 8237 | 36900.37000.37100.37400.38100.50100.64400.989100 | Toilet_Door Frame | 1d | 2026-12-06 | 2026-12-06 | 8236 |  | 7 Days Work | 9293564 |
| 8238 | 36900.37000.37100.37400.38100.50100.64400.989200 | Toilet_Wash basin & Couter | 3d | 2026-12-07 | 2026-12-09 | 8237 |  | 7 Days Work | 9293574 |
| 8239 | 36900.37000.37100.37400.38100.50100.64400.989300 | Toilet_Wall dado | 20d | 2026-12-10 | 2026-12-29 | 8238 |  | 7 Days Work | 9293584 |
| 8240 | 36900.37000.37100.37400.38100.50100.64400.989400 | Toilet_Granite Work-Ledge wall top | 3d | 2026-12-30 | 2027-01-01 | 8239 |  | 7 Days Work | 9293594 |
| 8241 | 36900.37000.37100.37400.38100.50100.64400.989500 | Toilet_Floor Tilling work | 20d | 2027-01-02 | 2027-01-21 | 8240 |  | 7 Days Work | 9293604 |
| 8242 | 36900.37000.37100.37400.38100.50100.64400.989600 | Toilet_1st row of dado | 5d | 2027-01-22 | 2027-01-26 | 8241 |  | 7 Days Work | 9293614 |
| 8243 | 36900.37000.37100.37400.38100.50100.64400.989700 | Toilet_Window Fixing | 14d | 2027-01-27 | 2027-02-09 | 8242 |  | 7 Days Work | 9293624 |
| 8244 | 36900.37000.37100.37400.38100.50100.64400.989800 | Toilet_Services above False ceiling | 21d | 2027-02-10 | 2027-03-02 | 8243 |  | 7 Days Work | 9293634 |
| 8245 | 36900.37000.37100.37400.38100.50100.64400.989900 | Toilet_False Ceiling framing | 12d | 2027-03-03 | 2027-03-14 | 8244 |  | 7 Days Work | 9293644 |
| 8246 | 36900.37000.37100.37400.38100.50100.64400.990000 | Toilet_Door Frame | 5d | 2027-03-15 | 2027-03-19 | 8245 |  | 7 Days Work | 9293654 |
| 8247 | 36900.37000.37100.37400.38100.50100.64400.990100 | Toilet_Epoxy Tile Grouting | 7d | 2027-05-25 | 2027-05-31 | 8222SS |  | 7 Days Work | 9293664 |
| 8248 | 36900.37000.37100.37400.38100.50100.64400.990200 | Toilet_False ceiling board fixing, CP Sanitary Fixture, Electric Fixture | 21d | 2027-06-01 | 2027-06-21 | 8247 |  | 7 Days Work | 9293674 |
| 8249 | 36900.37000.37100.37400.52400 | **Common area Finishing** | 329d | 2026-12-11 | 2027-11-04 |  | start no earlier than 2026-12-11 | 7 Days Work | 9279744 |
| 8250 | 36900.37000.37100.37400.52400.77800 | **1st Habitable/2nd Floor** | 158d | 2026-12-11 | 2027-05-17 |  | start no earlier than 2026-12-11 | 7 Days Work | 9279964 |
| 8251 | 36900.37000.37100.37400.52400.77800.627000 | Side blockwork for lift shafts | 9d | 2026-12-11 | 2026-12-19 | 8456 |  | 7 Days Work | 9287484 |
| 8252 | 36900.37000.37100.37400.52400.77800.627100 | Door Threshold for lifts | 6d | 2026-12-20 | 2026-12-25 | 8251 |  | 7 Days Work | 9287494 |
| 8253 | 36900.37000.37100.37400.52400.77800.627200 | Granite Cladding | 10d | 2026-12-26 | 2027-01-04 | 8252 |  | 7 Days Work | 9287504 |
| 8254 | 36900.37000.37100.37400.52400.77800.627300 | MEP Services | 60d | 2027-01-05 | 2027-03-05 | 8253 |  | 7 Days Work | 9287514 |
| 8255 | 36900.37000.37100.37400.52400.77800.627400 | Flooring+Skirting | 20d | 2027-03-06 | 2027-03-25 | 8254 |  | 7 Days Work | 9287524 |
| 8256 | 36900.37000.37100.37400.52400.77800.627500 | Wall finishes | 21d | 2027-03-26 | 2027-04-15 | 8255 |  | 7 Days Work | 9287534 |
| 8257 | 36900.37000.37100.37400.52400.77800.627600 | False Ceiling | 10d | 2027-04-16 | 2027-04-25 | 8256 |  | 7 Days Work | 9287544 |
| 8258 | 36900.37000.37100.37400.52400.77800.627700 | Staircase | 15d | 2027-04-26 | 2027-05-10 | 8257 |  | 7 Days Work | 9287554 |
| 8259 | 36900.37000.37100.37400.52400.77800.627800 | Deep Cleaning | 7d | 2027-05-11 | 2027-05-17 | 8258 |  | 7 Days Work | 9287564 |

| ID | WBS | Task | Duration | Start | Finish | Predecessors | Constraint | Calendar | Unique_Task_ID |
| --- | --- | --- | --- | --- | --- | --- | --- | --- | --- |
| 8260 | 36900.37000.37100.37400.52400.77900 | **2nd Habitable/3rd Floor** | 158d | 2026-12-20 | 2027-05-26 |  | start no earlier than 2026-12-20 | 7 Days Work | 9279974 |
| 8261 | 36900.37000.37100.37400.52400.77900.627900 | Side blockwork for lift shafts | 9d | 2026-12-20 | 2026-12-28 | 8251 |  | 7 Days Work | 9287574 |
| 8262 | 36900.37000.37100.37400.52400.77900.628000 | Door Threshold for lifts | 6d | 2026-12-29 | 2027-01-03 | 8261 |  | 7 Days Work | 9287584 |
| 8263 | 36900.37000.37100.37400.52400.77900.628100 | Granite Cladding | 10d | 2027-01-04 | 2027-01-13 | 8262 |  | 7 Days Work | 9287594 |
| 8264 | 36900.37000.37100.37400.52400.77900.628200 | MEP Services | 60d | 2027-01-14 | 2027-03-14 | 8263 |  | 7 Days Work | 9287604 |
| 8265 | 36900.37000.37100.37400.52400.77900.628300 | Flooring+Skirting | 20d | 2027-03-15 | 2027-04-03 | 8264 |  | 7 Days Work | 9287614 |
| 8266 | 36900.37000.37100.37400.52400.77900.628400 | Wall finishes | 21d | 2027-04-04 | 2027-04-24 | 8265 |  | 7 Days Work | 9287624 |
| 8267 | 36900.37000.37100.37400.52400.77900.628500 | False Ceiling | 10d | 2027-04-25 | 2027-05-04 | 8266 |  | 7 Days Work | 9287634 |
| 8268 | 36900.37000.37100.37400.52400.77900.628600 | Staircase | 15d | 2027-05-05 | 2027-05-19 | 8267 |  | 7 Days Work | 9287644 |
| 8269 | 36900.37000.37100.37400.52400.77900.628700 | Deep Cleaning | 7d | 2027-05-20 | 2027-05-26 | 8268 |  | 7 Days Work | 9287654 |
| 8270 | 36900.37000.37100.37400.52400.78000 | **3rd Habitable/4th Floor** | 158d | 2026-12-29 | 2027-06-04 |  | start no earlier than 2026-12-29 | 7 Days Work | 9279984 |
| 8271 | 36900.37000.37100.37400.52400.78000.628800 | Side blockwork for lift shafts | 9d | 2026-12-29 | 2027-01-06 | 8261 |  | 7 Days Work | 9287664 |
| 8272 | 36900.37000.37100.37400.52400.78000.628900 | Door Threshold for lifts | 6d | 2027-01-07 | 2027-01-12 | 8271 |  | 7 Days Work | 9287674 |
| 8273 | 36900.37000.37100.37400.52400.78000.629000 | Granite Cladding | 10d | 2027-01-13 | 2027-01-22 | 8272 |  | 7 Days Work | 9287684 |
| 8274 | 36900.37000.37100.37400.52400.78000.629100 | MEP Services | 60d | 2027-01-23 | 2027-03-23 | 8273 |  | 7 Days Work | 9287694 |
| 8275 | 36900.37000.37100.37400.52400.78000.629200 | Flooring+Skirting | 20d | 2027-03-24 | 2027-04-12 | 8274 |  | 7 Days Work | 9287704 |
| 8276 | 36900.37000.37100.37400.52400.78000.629300 | Wall finishes | 21d | 2027-04-13 | 2027-05-03 | 8275 |  | 7 Days Work | 9287714 |
| 8277 | 36900.37000.37100.37400.52400.78000.629400 | False Ceiling | 10d | 2027-05-04 | 2027-05-13 | 8276 |  | 7 Days Work | 9287724 |
| 8278 | 36900.37000.37100.37400.52400.78000.629500 | Staircase | 15d | 2027-05-14 | 2027-05-28 | 8277 |  | 7 Days Work | 9287734 |
| 8279 | 36900.37000.37100.37400.52400.78000.629600 | Deep Cleaning | 7d | 2027-05-29 | 2027-06-04 | 8278 |  | 7 Days Work | 9287744 |
| 8280 | 36900.37000.37100.37400.52400.78100 | **4th Habitable/5th Floor** | 158d | 2027-01-07 | 2027-06-13 |  | start no earlier than 2027-01-07 | 7 Days Work | 9279994 |
| 8281 | 36900.37000.37100.37400.52400.78100.629700 | Side blockwork for lift shafts | 9d | 2027-01-07 | 2027-01-15 | 8271 |  | 7 Days Work | 9287754 |
| 8282 | 36900.37000.37100.37400.52400.78100.629800 | Door Threshold for lifts | 6d | 2027-01-16 | 2027-01-21 | 8281 |  | 7 Days Work | 9287764 |
| 8283 | 36900.37000.37100.37400.52400.78100.629900 | Granite Cladding | 10d | 2027-01-22 | 2027-01-31 | 8282 |  | 7 Days Work | 9287774 |
| 8284 | 36900.37000.37100.37400.52400.78100.630000 | MEP Services | 60d | 2027-02-01 | 2027-04-01 | 8283 |  | 7 Days Work | 9287784 |
| 8285 | 36900.37000.37100.37400.52400.78100.630100 | Flooring+Skirting | 20d | 2027-04-02 | 2027-04-21 | 8284 |  | 7 Days Work | 9287794 |
| 8286 | 36900.37000.37100.37400.52400.78100.630200 | Wall finishes | 21d | 2027-04-22 | 2027-05-12 | 8285 |  | 7 Days Work | 9287804 |
| 8287 | 36900.37000.37100.37400.52400.78100.630300 | False Ceiling | 10d | 2027-05-13 | 2027-05-22 | 8286 |  | 7 Days Work | 9287814 |
| 8288 | 36900.37000.37100.37400.52400.78100.630400 | Staircase | 15d | 2027-05-23 | 2027-06-06 | 8287 |  | 7 Days Work | 9287824 |
| 8289 | 36900.37000.37100.37400.52400.78100.630500 | Deep Cleaning | 7d | 2027-06-07 | 2027-06-13 | 8288 |  | 7 Days Work | 9287834 |

| ID | WBS | Task | Duration | Start | Finish | Predecessors | Constraint | Calendar | Unique_Task_ID |
| --- | --- | --- | --- | --- | --- | --- | --- | --- | --- |
| 8290 | 36900.37000.37100.37400.52400.78200 | **5th Habitable/6th Floor** | 158d | 2027-01-16 | 2027-06-22 |  | start no earlier than 2027-01-16 | 7 Days Work | 9280004 |
| 8291 | 36900.37000.37100.37400.52400.78200.630600 | Side blockwork for lift shafts | 9d | 2027-01-16 | 2027-01-24 | 8281 |  | 7 Days Work | 9287844 |
| 8292 | 36900.37000.37100.37400.52400.78200.630700 | Door Threshold for lifts | 6d | 2027-01-25 | 2027-01-30 | 8291 |  | 7 Days Work | 9287854 |
| 8293 | 36900.37000.37100.37400.52400.78200.630800 | Granite Cladding | 10d | 2027-01-31 | 2027-02-09 | 8292 |  | 7 Days Work | 9287864 |
| 8294 | 36900.37000.37100.37400.52400.78200.630900 | MEP Services | 60d | 2027-02-10 | 2027-04-10 | 8293 |  | 7 Days Work | 9287874 |
| 8295 | 36900.37000.37100.37400.52400.78200.631000 | Flooring+Skirting | 20d | 2027-04-11 | 2027-04-30 | 8294 |  | 7 Days Work | 9287884 |
| 8296 | 36900.37000.37100.37400.52400.78200.631100 | Wall finishes | 21d | 2027-05-01 | 2027-05-21 | 8295 |  | 7 Days Work | 9287894 |
| 8297 | 36900.37000.37100.37400.52400.78200.631200 | False Ceiling | 10d | 2027-05-22 | 2027-05-31 | 8296 |  | 7 Days Work | 9287904 |
| 8298 | 36900.37000.37100.37400.52400.78200.631300 | Staircase | 15d | 2027-06-01 | 2027-06-15 | 8297 |  | 7 Days Work | 9287914 |
| 8299 | 36900.37000.37100.37400.52400.78200.631400 | Deep Cleaning | 7d | 2027-06-16 | 2027-06-22 | 8298 |  | 7 Days Work | 9287924 |
| 8300 | 36900.37000.37100.37400.52400.78300 | **6th Habitable/7th Floor** | 158d | 2027-01-25 | 2027-07-01 |  | start no earlier than 2027-01-25 | 7 Days Work | 9280014 |
| 8301 | 36900.37000.37100.37400.52400.78300.631500 | Side blockwork for lift shafts | 9d | 2027-01-25 | 2027-02-02 | 8291 |  | 7 Days Work | 9287934 |
| 8302 | 36900.37000.37100.37400.52400.78300.631600 | Door Threshold for lifts | 6d | 2027-02-03 | 2027-02-08 | 8301 |  | 7 Days Work | 9287944 |
| 8303 | 36900.37000.37100.37400.52400.78300.631700 | Granite Cladding | 10d | 2027-02-09 | 2027-02-18 | 8302 |  | 7 Days Work | 9287954 |
| 8304 | 36900.37000.37100.37400.52400.78300.631800 | MEP Services | 60d | 2027-02-19 | 2027-04-19 | 8303 |  | 7 Days Work | 9287964 |
| 8305 | 36900.37000.37100.37400.52400.78300.631900 | Flooring+Skirting | 20d | 2027-04-20 | 2027-05-09 | 8304 |  | 7 Days Work | 9287974 |
| 8306 | 36900.37000.37100.37400.52400.78300.632000 | Wall finishes | 21d | 2027-05-10 | 2027-05-30 | 8305 |  | 7 Days Work | 9287984 |
| 8307 | 36900.37000.37100.37400.52400.78300.632100 | False Ceiling | 10d | 2027-05-31 | 2027-06-09 | 8306 |  | 7 Days Work | 9287994 |
| 8308 | 36900.37000.37100.37400.52400.78300.632200 | Staircase | 15d | 2027-06-10 | 2027-06-24 | 8307 |  | 7 Days Work | 9288004 |
| 8309 | 36900.37000.37100.37400.52400.78300.632300 | Deep Cleaning | 7d | 2027-06-25 | 2027-07-01 | 8308 |  | 7 Days Work | 9288014 |
| 8310 | 36900.37000.37100.37400.52400.78400 | **7th Habitable/8th Floor** | 158d | 2027-02-03 | 2027-07-10 |  | start no earlier than 2027-02-03 | 7 Days Work | 9280024 |
| 8311 | 36900.37000.37100.37400.52400.78400.632400 | Side blockwork for lift shafts | 9d | 2027-02-03 | 2027-02-11 | 8301 |  | 7 Days Work | 9288024 |
| 8312 | 36900.37000.37100.37400.52400.78400.632500 | Door Threshold for lifts | 6d | 2027-02-12 | 2027-02-17 | 8311 |  | 7 Days Work | 9288034 |
| 8313 | 36900.37000.37100.37400.52400.78400.632600 | Granite Cladding | 10d | 2027-02-18 | 2027-02-27 | 8312 |  | 7 Days Work | 9288044 |
| 8314 | 36900.37000.37100.37400.52400.78400.632700 | MEP Services | 60d | 2027-02-28 | 2027-04-28 | 8313 |  | 7 Days Work | 9288054 |
| 8315 | 36900.37000.37100.37400.52400.78400.632800 | Flooring+Skirting | 20d | 2027-04-29 | 2027-05-18 | 8314 |  | 7 Days Work | 9288064 |
| 8316 | 36900.37000.37100.37400.52400.78400.632900 | Wall finishes | 21d | 2027-05-19 | 2027-06-08 | 8315 |  | 7 Days Work | 9288074 |
| 8317 | 36900.37000.37100.37400.52400.78400.633000 | False Ceiling | 10d | 2027-06-09 | 2027-06-18 | 8316 |  | 7 Days Work | 9288084 |
| 8318 | 36900.37000.37100.37400.52400.78400.633100 | Staircase | 15d | 2027-06-19 | 2027-07-03 | 8317 |  | 7 Days Work | 9288094 |
| 8319 | 36900.37000.37100.37400.52400.78400.633200 | Deep Cleaning | 7d | 2027-07-04 | 2027-07-10 | 8318 |  | 7 Days Work | 9288104 |

| ID | WBS | Task | Duration | Start | Finish | Predecessors | Constraint | Calendar | Unique_Task_ID |
| --- | --- | --- | --- | --- | --- | --- | --- | --- | --- |
| 8320 | 36900.37000.37100.37400.52400.78500 | **8th Habitable/9th Floor** | 158d | 2027-02-12 | 2027-07-19 |  | start no earlier than 2027-02-12 | 7 Days Work | 9280034 |
| 8321 | 36900.37000.37100.37400.52400.78500.633300 | Side blockwork for lift shafts | 9d | 2027-02-12 | 2027-02-20 | 8311 |  | 7 Days Work | 9288114 |
| 8322 | 36900.37000.37100.37400.52400.78500.633400 | Door Threshold for lifts | 6d | 2027-02-21 | 2027-02-26 | 8321 |  | 7 Days Work | 9288124 |
| 8323 | 36900.37000.37100.37400.52400.78500.633500 | Granite Cladding | 10d | 2027-02-27 | 2027-03-08 | 8322 |  | 7 Days Work | 9288134 |
| 8324 | 36900.37000.37100.37400.52400.78500.633600 | MEP Services | 60d | 2027-03-09 | 2027-05-07 | 8323 |  | 7 Days Work | 9288144 |
| 8325 | 36900.37000.37100.37400.52400.78500.633700 | Flooring+Skirting | 20d | 2027-05-08 | 2027-05-27 | 8324 |  | 7 Days Work | 9288154 |
| 8326 | 36900.37000.37100.37400.52400.78500.633800 | Wall finishes | 21d | 2027-05-28 | 2027-06-17 | 8325 |  | 7 Days Work | 9288164 |
| 8327 | 36900.37000.37100.37400.52400.78500.633900 | False Ceiling | 10d | 2027-06-18 | 2027-06-27 | 8326 |  | 7 Days Work | 9288174 |
| 8328 | 36900.37000.37100.37400.52400.78500.634000 | Staircase | 15d | 2027-06-28 | 2027-07-12 | 8327 |  | 7 Days Work | 9288184 |
| 8329 | 36900.37000.37100.37400.52400.78500.634100 | Deep Cleaning | 7d | 2027-07-13 | 2027-07-19 | 8328 |  | 7 Days Work | 9288194 |
| 8330 | 36900.37000.37100.37400.52400.78600 | **9th Habitable/10th Floor** | 158d | 2027-02-21 | 2027-07-28 |  | start no earlier than 2027-02-21 | 7 Days Work | 9280044 |
| 8331 | 36900.37000.37100.37400.52400.78600.634200 | Side blockwork for lift shafts | 9d | 2027-02-21 | 2027-03-01 | 8321 |  | 7 Days Work | 9288204 |
| 8332 | 36900.37000.37100.37400.52400.78600.634300 | Door Threshold for lifts | 6d | 2027-03-02 | 2027-03-07 | 8331 |  | 7 Days Work | 9288214 |
| 8333 | 36900.37000.37100.37400.52400.78600.634400 | Granite Cladding | 10d | 2027-03-08 | 2027-03-17 | 8332 |  | 7 Days Work | 9288224 |
| 8334 | 36900.37000.37100.37400.52400.78600.634500 | MEP Services | 60d | 2027-03-18 | 2027-05-16 | 8333 |  | 7 Days Work | 9288234 |
| 8335 | 36900.37000.37100.37400.52400.78600.634600 | Flooring+Skirting | 20d | 2027-05-17 | 2027-06-05 | 8334 |  | 7 Days Work | 9288244 |
| 8336 | 36900.37000.37100.37400.52400.78600.634700 | Wall finishes | 21d | 2027-06-06 | 2027-06-26 | 8335 |  | 7 Days Work | 9288254 |
| 8337 | 36900.37000.37100.37400.52400.78600.634800 | False Ceiling | 10d | 2027-06-27 | 2027-07-06 | 8336 |  | 7 Days Work | 9288264 |
| 8338 | 36900.37000.37100.37400.52400.78600.634900 | Staircase | 15d | 2027-07-07 | 2027-07-21 | 8337 |  | 7 Days Work | 9288274 |
| 8339 | 36900.37000.37100.37400.52400.78600.635000 | Deep Cleaning | 7d | 2027-07-22 | 2027-07-28 | 8338 |  | 7 Days Work | 9288284 |
| 8340 | 36900.37000.37100.37400.52400.78700 | **10th Habitable/11th Floor** | 158d | 2027-03-02 | 2027-08-06 |  | start no earlier than 2027-03-02 | 7 Days Work | 9280054 |
| 8341 | 36900.37000.37100.37400.52400.78700.635100 | Side blockwork for lift shafts | 9d | 2027-03-02 | 2027-03-10 | 8331 |  | 7 Days Work | 9288294 |
| 8342 | 36900.37000.37100.37400.52400.78700.635200 | Door Threshold for lifts | 6d | 2027-03-11 | 2027-03-16 | 8341 |  | 7 Days Work | 9288304 |
| 8343 | 36900.37000.37100.37400.52400.78700.635300 | Granite Cladding | 10d | 2027-03-17 | 2027-03-26 | 8342 |  | 7 Days Work | 9288314 |
| 8344 | 36900.37000.37100.37400.52400.78700.635400 | MEP Services | 60d | 2027-03-27 | 2027-05-25 | 8343 |  | 7 Days Work | 9288324 |
| 8345 | 36900.37000.37100.37400.52400.78700.635500 | Flooring+Skirting | 20d | 2027-05-26 | 2027-06-14 | 8344 |  | 7 Days Work | 9288334 |
| 8346 | 36900.37000.37100.37400.52400.78700.635600 | Wall finishes | 21d | 2027-06-15 | 2027-07-05 | 8345 |  | 7 Days Work | 9288344 |
| 8347 | 36900.37000.37100.37400.52400.78700.635700 | False Ceiling | 10d | 2027-07-06 | 2027-07-15 | 8346 |  | 7 Days Work | 9288354 |
| 8348 | 36900.37000.37100.37400.52400.78700.635800 | Staircase | 15d | 2027-07-16 | 2027-07-30 | 8347 |  | 7 Days Work | 9288364 |
| 8349 | 36900.37000.37100.37400.52400.78700.635900 | Deep Cleaning | 7d | 2027-07-31 | 2027-08-06 | 8348 |  | 7 Days Work | 9288374 |

| ID | WBS | Task | Duration | Start | Finish | Predecessors | Constraint | Calendar | Unique_Task_ID |
| --- | --- | --- | --- | --- | --- | --- | --- | --- | --- |
| 8350 | 36900.37000.37100.37400.52400.78800 | **11th Habitable/12th Floor** | 158d | 2027-03-11 | 2027-08-15 |  | start no earlier than 2027-03-11 | 7 Days Work | 9280064 |
| 8351 | 36900.37000.37100.37400.52400.78800.636000 | Side blockwork for lift shafts | 9d | 2027-03-11 | 2027-03-19 | 8341 |  | 7 Days Work | 9288384 |
| 8352 | 36900.37000.37100.37400.52400.78800.636100 | Door Threshold for lifts | 6d | 2027-03-20 | 2027-03-25 | 8351 |  | 7 Days Work | 9288394 |
| 8353 | 36900.37000.37100.37400.52400.78800.636200 | Granite Cladding | 10d | 2027-03-26 | 2027-04-04 | 8352 |  | 7 Days Work | 9288404 |
| 8354 | 36900.37000.37100.37400.52400.78800.636300 | MEP Services | 60d | 2027-04-05 | 2027-06-03 | 8353 |  | 7 Days Work | 9288414 |
| 8355 | 36900.37000.37100.37400.52400.78800.636400 | Flooring+Skirting | 20d | 2027-06-04 | 2027-06-23 | 8354 |  | 7 Days Work | 9288424 |
| 8356 | 36900.37000.37100.37400.52400.78800.636500 | Wall finishes | 21d | 2027-06-24 | 2027-07-14 | 8355 |  | 7 Days Work | 9288434 |
| 8357 | 36900.37000.37100.37400.52400.78800.636600 | False Ceiling | 10d | 2027-07-15 | 2027-07-24 | 8356 |  | 7 Days Work | 9288444 |
| 8358 | 36900.37000.37100.37400.52400.78800.636700 | Staircase | 15d | 2027-07-25 | 2027-08-08 | 8357 |  | 7 Days Work | 9288454 |
| 8359 | 36900.37000.37100.37400.52400.78800.636800 | Deep Cleaning | 7d | 2027-08-09 | 2027-08-15 | 8358 |  | 7 Days Work | 9288464 |
| 8360 | 36900.37000.37100.37400.52400.78900 | **12th Habitable/13th Floor** | 158d | 2027-03-20 | 2027-08-24 |  | start no earlier than 2027-03-20 | 7 Days Work | 9280074 |
| 8361 | 36900.37000.37100.37400.52400.78900.636900 | Side blockwork for lift shafts | 9d | 2027-03-20 | 2027-03-28 | 8351 |  | 7 Days Work | 9288474 |
| 8362 | 36900.37000.37100.37400.52400.78900.637000 | Door Threshold for lifts | 6d | 2027-03-29 | 2027-04-03 | 8361 |  | 7 Days Work | 9288484 |
| 8363 | 36900.37000.37100.37400.52400.78900.637100 | Granite Cladding | 10d | 2027-04-04 | 2027-04-13 | 8362 |  | 7 Days Work | 9288494 |
| 8364 | 36900.37000.37100.37400.52400.78900.637200 | MEP Services | 60d | 2027-04-14 | 2027-06-12 | 8363 |  | 7 Days Work | 9288504 |
| 8365 | 36900.37000.37100.37400.52400.78900.637300 | Flooring+Skirting | 20d | 2027-06-13 | 2027-07-02 | 8364 |  | 7 Days Work | 9288514 |
| 8366 | 36900.37000.37100.37400.52400.78900.637400 | Wall finishes | 21d | 2027-07-03 | 2027-07-23 | 8365 |  | 7 Days Work | 9288524 |
| 8367 | 36900.37000.37100.37400.52400.78900.637500 | False Ceiling | 10d | 2027-07-24 | 2027-08-02 | 8366 |  | 7 Days Work | 9288534 |
| 8368 | 36900.37000.37100.37400.52400.78900.637600 | Staircase | 15d | 2027-08-03 | 2027-08-17 | 8367 |  | 7 Days Work | 9288544 |
| 8369 | 36900.37000.37100.37400.52400.78900.637700 | Deep Cleaning | 7d | 2027-08-18 | 2027-08-24 | 8368 |  | 7 Days Work | 9288554 |
| 8370 | 36900.37000.37100.37400.52400.79000 | **13th Habitable/14th Floor** | 158d | 2027-03-29 | 2027-09-02 |  | start no earlier than 2027-03-29 | 7 Days Work | 9280084 |
| 8371 | 36900.37000.37100.37400.52400.79000.637800 | Side blockwork for lift shafts | 9d | 2027-03-29 | 2027-04-06 | 8361 |  | 7 Days Work | 9288564 |
| 8372 | 36900.37000.37100.37400.52400.79000.637900 | Door Threshold for lifts | 6d | 2027-04-07 | 2027-04-12 | 8371 |  | 7 Days Work | 9288574 |
| 8373 | 36900.37000.37100.37400.52400.79000.638000 | Granite Cladding | 10d | 2027-04-13 | 2027-04-22 | 8372 |  | 7 Days Work | 9288584 |
| 8374 | 36900.37000.37100.37400.52400.79000.638100 | MEP Services | 60d | 2027-04-23 | 2027-06-21 | 8373 |  | 7 Days Work | 9288594 |
| 8375 | 36900.37000.37100.37400.52400.79000.638200 | Flooring+Skirting | 20d | 2027-06-22 | 2027-07-11 | 8374 |  | 7 Days Work | 9288604 |
| 8376 | 36900.37000.37100.37400.52400.79000.638300 | Wall finishes | 21d | 2027-07-12 | 2027-08-01 | 8375 |  | 7 Days Work | 9288614 |
| 8377 | 36900.37000.37100.37400.52400.79000.638400 | False Ceiling | 10d | 2027-08-02 | 2027-08-11 | 8376 |  | 7 Days Work | 9288624 |
| 8378 | 36900.37000.37100.37400.52400.79000.638500 | Staircase | 15d | 2027-08-12 | 2027-08-26 | 8377 |  | 7 Days Work | 9288634 |
| 8379 | 36900.37000.37100.37400.52400.79000.638600 | Deep Cleaning | 7d | 2027-08-27 | 2027-09-02 | 8378 |  | 7 Days Work | 9288644 |

| ID | WBS | Task | Duration | Start | Finish | Predecessors | Constraint | Calendar | Unique_Task_ID |
| --- | --- | --- | --- | --- | --- | --- | --- | --- | --- |
| 8380 | 36900.37000.37100.37400.52400.79100 | **14th Habitable/15th Floor** | 158d | 2027-04-07 | 2027-09-11 |  | start no earlier than 2027-04-07 | 7 Days Work | 9280094 |
| 8381 | 36900.37000.37100.37400.52400.79100.638700 | Side blockwork for lift shafts | 9d | 2027-04-07 | 2027-04-15 | 8371 |  | 7 Days Work | 9288654 |
| 8382 | 36900.37000.37100.37400.52400.79100.638800 | Door Threshold for lifts | 6d | 2027-04-16 | 2027-04-21 | 8381 |  | 7 Days Work | 9288664 |
| 8383 | 36900.37000.37100.37400.52400.79100.638900 | Granite Cladding | 10d | 2027-04-22 | 2027-05-01 | 8382 |  | 7 Days Work | 9288674 |
| 8384 | 36900.37000.37100.37400.52400.79100.639000 | MEP Services | 60d | 2027-05-02 | 2027-06-30 | 8383 |  | 7 Days Work | 9288684 |
| 8385 | 36900.37000.37100.37400.52400.79100.639100 | Flooring+Skirting | 20d | 2027-07-01 | 2027-07-20 | 8384 |  | 7 Days Work | 9288694 |
| 8386 | 36900.37000.37100.37400.52400.79100.639200 | Wall finishes | 21d | 2027-07-21 | 2027-08-10 | 8385 |  | 7 Days Work | 9288704 |
| 8387 | 36900.37000.37100.37400.52400.79100.639300 | False Ceiling | 10d | 2027-08-11 | 2027-08-20 | 8386 |  | 7 Days Work | 9288714 |
| 8388 | 36900.37000.37100.37400.52400.79100.639400 | Staircase | 15d | 2027-08-21 | 2027-09-04 | 8387 |  | 7 Days Work | 9288724 |
| 8389 | 36900.37000.37100.37400.52400.79100.639500 | Deep Cleaning | 7d | 2027-09-05 | 2027-09-11 | 8388 |  | 7 Days Work | 9288734 |
| 8390 | 36900.37000.37100.37400.52400.79200 | **15th Habitable/16th Floor** | 158d | 2027-04-16 | 2027-09-20 |  | start no earlier than 2027-04-16 | 7 Days Work | 9280104 |
| 8391 | 36900.37000.37100.37400.52400.79200.639600 | Side blockwork for lift shafts | 9d | 2027-04-16 | 2027-04-24 | 8381 |  | 7 Days Work | 9288744 |
| 8392 | 36900.37000.37100.37400.52400.79200.639700 | Door Threshold for lifts | 6d | 2027-04-25 | 2027-04-30 | 8391 |  | 7 Days Work | 9288754 |
| 8393 | 36900.37000.37100.37400.52400.79200.639800 | Granite Cladding | 10d | 2027-05-01 | 2027-05-10 | 8392 |  | 7 Days Work | 9288764 |
| 8394 | 36900.37000.37100.37400.52400.79200.639900 | MEP Services | 60d | 2027-05-11 | 2027-07-09 | 8393 |  | 7 Days Work | 9288774 |
| 8395 | 36900.37000.37100.37400.52400.79200.640000 | Flooring+Skirting | 20d | 2027-07-10 | 2027-07-29 | 8394 |  | 7 Days Work | 9288784 |
| 8396 | 36900.37000.37100.37400.52400.79200.640100 | Wall finishes | 21d | 2027-07-30 | 2027-08-19 | 8395 |  | 7 Days Work | 9288794 |
| 8397 | 36900.37000.37100.37400.52400.79200.640200 | False Ceiling | 10d | 2027-08-20 | 2027-08-29 | 8396 |  | 7 Days Work | 9288804 |
| 8398 | 36900.37000.37100.37400.52400.79200.640300 | Staircase | 15d | 2027-08-30 | 2027-09-13 | 8397 |  | 7 Days Work | 9288814 |
| 8399 | 36900.37000.37100.37400.52400.79200.640400 | Deep Cleaning | 7d | 2027-09-14 | 2027-09-20 | 8398 |  | 7 Days Work | 9288824 |
| 8400 | 36900.37000.37100.37400.52400.79300 | **16th Habitable/17th Floor** | 158d | 2027-04-25 | 2027-09-29 |  | start no earlier than 2027-04-25 | 7 Days Work | 9280114 |
| 8401 | 36900.37000.37100.37400.52400.79300.640500 | Side blockwork for lift shafts | 9d | 2027-04-25 | 2027-05-03 | 8391 |  | 7 Days Work | 9288834 |
| 8402 | 36900.37000.37100.37400.52400.79300.640600 | Door Threshold for lifts | 6d | 2027-05-04 | 2027-05-09 | 8401 |  | 7 Days Work | 9288844 |
| 8403 | 36900.37000.37100.37400.52400.79300.640700 | Granite Cladding | 10d | 2027-05-10 | 2027-05-19 | 8402 |  | 7 Days Work | 9288854 |
| 8404 | 36900.37000.37100.37400.52400.79300.640800 | MEP Services | 60d | 2027-05-20 | 2027-07-18 | 8403 |  | 7 Days Work | 9288864 |
| 8405 | 36900.37000.37100.37400.52400.79300.640900 | Flooring+Skirting | 20d | 2027-07-19 | 2027-08-07 | 8404 |  | 7 Days Work | 9288874 |
| 8406 | 36900.37000.37100.37400.52400.79300.641000 | Wall finishes | 21d | 2027-08-08 | 2027-08-28 | 8405 |  | 7 Days Work | 9288884 |
| 8407 | 36900.37000.37100.37400.52400.79300.641100 | False Ceiling | 10d | 2027-08-29 | 2027-09-07 | 8406 |  | 7 Days Work | 9288894 |
| 8408 | 36900.37000.37100.37400.52400.79300.641200 | Staircase | 15d | 2027-09-08 | 2027-09-22 | 8407 |  | 7 Days Work | 9288904 |
| 8409 | 36900.37000.37100.37400.52400.79300.641300 | Deep Cleaning | 7d | 2027-09-23 | 2027-09-29 | 8408 |  | 7 Days Work | 9288914 |

| ID | WBS | Task | Duration | Start | Finish | Predecessors | Constraint | Calendar | Unique_Task_ID |
| --- | --- | --- | --- | --- | --- | --- | --- | --- | --- |
| 8410 | 36900.37000.37100.37400.52400.79400 | **17th Habitable/18th Floor** | 158d | 2027-05-04 | 2027-10-08 |  | start no earlier than 2027-05-04 | 7 Days Work | 9280124 |
| 8411 | 36900.37000.37100.37400.52400.79400.641400 | Side blockwork for lift shafts | 9d | 2027-05-04 | 2027-05-12 | 8401 |  | 7 Days Work | 9288924 |
| 8412 | 36900.37000.37100.37400.52400.79400.641500 | Door Threshold for lifts | 6d | 2027-05-13 | 2027-05-18 | 8411 |  | 7 Days Work | 9288934 |
| 8413 | 36900.37000.37100.37400.52400.79400.641600 | Granite Cladding | 10d | 2027-05-19 | 2027-05-28 | 8412 |  | 7 Days Work | 9288944 |
| 8414 | 36900.37000.37100.37400.52400.79400.641700 | MEP Services | 60d | 2027-05-29 | 2027-07-27 | 8413 |  | 7 Days Work | 9288954 |
| 8415 | 36900.37000.37100.37400.52400.79400.641800 | Flooring+Skirting | 20d | 2027-07-28 | 2027-08-16 | 8414 |  | 7 Days Work | 9288964 |
| 8416 | 36900.37000.37100.37400.52400.79400.641900 | Wall finishes | 21d | 2027-08-17 | 2027-09-06 | 8415 |  | 7 Days Work | 9288974 |
| 8417 | 36900.37000.37100.37400.52400.79400.642000 | False Ceiling | 10d | 2027-09-07 | 2027-09-16 | 8416 |  | 7 Days Work | 9288984 |
| 8418 | 36900.37000.37100.37400.52400.79400.642100 | Staircase | 15d | 2027-09-17 | 2027-10-01 | 8417 |  | 7 Days Work | 9288994 |
| 8419 | 36900.37000.37100.37400.52400.79400.642200 | Deep Cleaning | 7d | 2027-10-02 | 2027-10-08 | 8418 |  | 7 Days Work | 9289004 |
| 8420 | 36900.37000.37100.37400.52400.79500 | **18th Habitable/19th Floor** | 158d | 2027-05-13 | 2027-10-17 |  | start no earlier than 2027-05-13 | 7 Days Work | 9280134 |
| 8421 | 36900.37000.37100.37400.52400.79500.642300 | Side blockwork for lift shafts | 9d | 2027-05-13 | 2027-05-21 | 8411 |  | 7 Days Work | 9289014 |
| 8422 | 36900.37000.37100.37400.52400.79500.642400 | Door Threshold for lifts | 6d | 2027-05-22 | 2027-05-27 | 8421 |  | 7 Days Work | 9289024 |
| 8423 | 36900.37000.37100.37400.52400.79500.642500 | Granite Cladding | 10d | 2027-05-28 | 2027-06-06 | 8422 |  | 7 Days Work | 9289034 |
| 8424 | 36900.37000.37100.37400.52400.79500.642600 | MEP Services | 60d | 2027-06-07 | 2027-08-05 | 8423 |  | 7 Days Work | 9289044 |
| 8425 | 36900.37000.37100.37400.52400.79500.642700 | Flooring+Skirting | 20d | 2027-08-06 | 2027-08-25 | 8424 |  | 7 Days Work | 9289054 |
| 8426 | 36900.37000.37100.37400.52400.79500.642800 | Wall finishes | 21d | 2027-08-26 | 2027-09-15 | 8425 |  | 7 Days Work | 9289064 |
| 8427 | 36900.37000.37100.37400.52400.79500.642900 | False Ceiling | 10d | 2027-09-16 | 2027-09-25 | 8426 |  | 7 Days Work | 9289074 |
| 8428 | 36900.37000.37100.37400.52400.79500.643000 | Staircase | 15d | 2027-09-26 | 2027-10-10 | 8427 |  | 7 Days Work | 9289084 |
| 8429 | 36900.37000.37100.37400.52400.79500.643100 | Deep Cleaning | 7d | 2027-10-11 | 2027-10-17 | 8428 |  | 7 Days Work | 9289094 |
| 8430 | 36900.37000.37100.37400.52400.79600 | **19th Habitable/20th Floor** | 158d | 2027-05-22 | 2027-10-26 |  | start no earlier than 2027-05-22 | 7 Days Work | 9280144 |
| 8431 | 36900.37000.37100.37400.52400.79600.643200 | Side blockwork for lift shafts | 9d | 2027-05-22 | 2027-05-30 | 8421 |  | 7 Days Work | 9289104 |
| 8432 | 36900.37000.37100.37400.52400.79600.643300 | Door Threshold for lifts | 6d | 2027-05-31 | 2027-06-05 | 8431 |  | 7 Days Work | 9289114 |
| 8433 | 36900.37000.37100.37400.52400.79600.643400 | Granite Cladding | 10d | 2027-06-06 | 2027-06-15 | 8432 |  | 7 Days Work | 9289124 |
| 8434 | 36900.37000.37100.37400.52400.79600.643500 | MEP Services | 60d | 2027-06-16 | 2027-08-14 | 8433 |  | 7 Days Work | 9289134 |
| 8435 | 36900.37000.37100.37400.52400.79600.643600 | Flooring+Skirting | 20d | 2027-08-15 | 2027-09-03 | 8434 |  | 7 Days Work | 9289144 |
| 8436 | 36900.37000.37100.37400.52400.79600.643700 | Wall finishes | 21d | 2027-09-04 | 2027-09-24 | 8435 |  | 7 Days Work | 9289154 |
| 8437 | 36900.37000.37100.37400.52400.79600.643800 | False Ceiling | 10d | 2027-09-25 | 2027-10-04 | 8436 |  | 7 Days Work | 9289164 |
| 8438 | 36900.37000.37100.37400.52400.79600.643900 | Staircase | 15d | 2027-10-05 | 2027-10-19 | 8437 |  | 7 Days Work | 9289174 |
| 8439 | 36900.37000.37100.37400.52400.79600.644000 | Deep Cleaning | 7d | 2027-10-20 | 2027-10-26 | 8438 |  | 7 Days Work | 9289184 |

| ID | WBS | Task | Duration | Start | Finish | Predecessors | Constraint | Calendar | Unique_Task_ID |
| --- | --- | --- | --- | --- | --- | --- | --- | --- | --- |
| 8440 | 36900.37000.37100.37400.52400.79700 | **20th Habitable/21st Floor** | 158d | 2027-05-31 | 2027-11-04 |  | start no earlier than 2027-05-31 | 7 Days Work | 9280154 |
| 8441 | 36900.37000.37100.37400.52400.79700.644100 | Side blockwork for lift shafts | 9d | 2027-05-31 | 2027-06-08 | 8431 |  | 7 Days Work | 9289194 |
| 8442 | 36900.37000.37100.37400.52400.79700.644200 | Door Threshold for lifts | 6d | 2027-06-09 | 2027-06-14 | 8441 |  | 7 Days Work | 9289204 |
| 8443 | 36900.37000.37100.37400.52400.79700.644300 | Granite Cladding | 10d | 2027-06-15 | 2027-06-24 | 8442 |  | 7 Days Work | 9289214 |
| 8444 | 36900.37000.37100.37400.52400.79700.644400 | MEP Services | 60d | 2027-06-25 | 2027-08-23 | 8443 |  | 7 Days Work | 9289224 |
| 8445 | 36900.37000.37100.37400.52400.79700.644500 | Flooring+Skirting | 20d | 2027-08-24 | 2027-09-12 | 8444 |  | 7 Days Work | 9289234 |
| 8446 | 36900.37000.37100.37400.52400.79700.644600 | Wall finishes | 21d | 2027-09-13 | 2027-10-03 | 8445 |  | 7 Days Work | 9289244 |
| 8447 | 36900.37000.37100.37400.52400.79700.644700 | False Ceiling | 10d | 2027-10-04 | 2027-10-13 | 8446 |  | 7 Days Work | 9289254 |
| 8448 | 36900.37000.37100.37400.52400.79700.644800 | Staircase | 15d | 2027-10-14 | 2027-10-28 | 8447 |  | 7 Days Work | 9289264 |
| 8449 | 36900.37000.37100.37400.52400.79700.644900 | Deep Cleaning | 7d | 2027-10-29 | 2027-11-04 | 8448 |  | 7 Days Work | 9044814 |
| 8450 | 36900.37000.37100.37400.68000 | **Lift** | 350d | 2026-02-09 | 2027-01-24 |  | start no earlier than 2026-02-09 | 7 Days Work | 9279954 |
| 8451 | 36900.37000.37100.37400.68000.120500 | Order Issue | 104d | 2026-02-09 | 2026-05-23 | 7036FS-120d |  | 7 Days Work | 9280164 |
| 8452 | 36900.37000.37100.37400.68000.120600 | Shop drawing approval | 30d | 2026-05-24 | 2026-06-22 | 8451 |  | 7 Days Work | 9280174 |
| 8453 | 36900.37000.37100.37400.68000.120700 | Material recipt | 90d | 2026-06-23 | 2026-09-20 | 8452 |  | 7 Days Work | 9280184 |
| 8454 | 36900.37000.37100.37400.68000.120800 | Lift Shaft Handover | 30d | 2026-10-30 | 2026-11-28 | 7046 |  | 7 Days Work | 9280194 |
| 8455 | 36900.37000.37100.37400.68000.120900 | Template fixing by lift contractor | 7d | 2026-11-29 | 2026-12-05 | 8454 |  | 7 Days Work | 9280204 |
| 8456 | 36900.37000.37100.37400.68000.121000 | Centre line marking for lift shafts | 5d | 2026-12-06 | 2026-12-10 | 8455 |  | 7 Days Work | 9280214 |
| 8457 | 36900.37000.37100.37400.68000.121100 | Rail & Bracket Fixing | 5d | 2026-12-11 | 2026-12-15 | 8456 |  | 7 Days Work | 9280224 |
| 8458 | 36900.37000.37100.37400.68000.121200 | Cage Installation | 5d | 2026-12-16 | 2026-12-20 | 8457 |  | 7 Days Work | 9280234 |
| 8459 | 36900.37000.37100.37400.68000.121300 | Slow Speed | 20d | 2026-12-21 | 2027-01-09 | 8458 |  | 7 Days Work | 9280244 |
| 8460 | 36900.37000.37100.37400.68000.121400 | High Spped | 5d | 2027-01-10 | 2027-01-14 | 8459 |  | 7 Days Work | 9280254 |
| 8461 | 36900.37000.37100.37400.68000.121500 | Commisioning | 7d | 2027-01-15 | 2027-01-21 | 8460 |  | 7 Days Work | 9280264 |
| 8462 | 36900.37000.37100.37400.68000.121600 | Handover | 3d | 2027-01-22 | 2027-01-24 | 8461 |  | 7 Days Work | 9044804 |
| 8463 | 36900.37000.37100.37400.110000 | External Paint | 90d | 2027-02-07 | 2027-05-07 | 7045FS+135d |  | 7 Days Work | 9146064 |

| ID | WBS | Task | Duration | Start | Finish | Predecessors | Complete | Constraint | Calendar | Unique_Task_ID |
| --- | --- | --- | --- | --- | --- | --- | --- | --- | --- | --- |
| 8464 | 36900.37000.37100.37200 | **Tower-7** | 983d | 2025-02-22 | 2027-11-01 |  | 2% | start no earlier than 2025-02-22 | 7 Days Work | 9042664 |
| 8465 | 36900.37000.37100.37200.85000 | Pilling | 89d | 2025-02-22 | 2025-05-23 | 2720SS | 100% | start no earlier than 2025-02-22 | 7 Days Work | 9044824 |
| 8466 | 36900.37000.37100.37200.84900 | SPT Test | 14d | 2025-05-30 | 2025-09-18 | 8465 | 100% | start no earlier than 2025-05-30 | 7 Days Work | 10343768 |
| 8467 | 36900.37000.37100.37200.84800 | Dynamic | 13d | 2025-06-17 | 2025-06-29 | 8465FS+28d | 100% | start no earlier than 2025-06-17 | 7 Days Work | 10343778 |
| 8468 | 36900.37000.37100.37200.84700 | Static Load Test | 15d | 2025-07-07 | 2025-08-08 | 8465FS+28d | 100% | start no earlier than 2025-07-07 | 7 Days Work | 10343788 |
| 8469 | 36900.37000.37100.37200.84600 | Testing | 40d | 2025-08-10 | 2025-09-18 | 8465 | 100% | start no earlier than 2025-08-10 | 7 Days Work | 10341228 |
| 8470 | 36900.37000.37100.37200.84500 | Excavation | 14d | 2025-08-04 | 2025-09-15 | 8468 | 100% | start no earlier than 2025-08-04 | 7 Days Work | 9044825 |
| 8471 | 36900.37000.37100.37200.84400 | Pile Breaking | 18d | 2025-08-13 | 2025-09-15 | 8470 | 100% | start no earlier than 2025-08-13 | 7 Days Work | 10419758 |
| 8472 | 36900.37000.37100.37200.84300 | ATT | 14d | 2025-08-04 | 2025-09-15 | 8470FS-24d | 100% | start no earlier than 2025-08-04 | 7 Days Work | 10419858 |
| 8473 | 36900.37000.37100.37200.84200 | LDPE Sheet | 14d | 2025-08-04 | 2025-09-15 | 8472SS | 100% | start no earlier than 2025-08-04 | 7 Days Work | 10419868 |
| 8474 | 36900.37000.37100.37200.84100 | PCC | 6d | 2025-08-20 | 2025-09-15 | 8473SS+24d | 100% | start no earlier than 2025-08-20 | 7 Days Work | 10419768 |
| 8475 | 36900.37000.37100.37200.84000 | PCC | 11d | 2025-08-20 | 2025-09-21 | 8474 | 100% | start no earlier than 2025-08-20 | 7 Days Work | 10430228 |
| 8476 | 36900.37000.37100.37200.83900 | PIT | 7d | 2025-05-26 | 2025-09-24 | 8471 | 100% | start no earlier than 2025-05-26 | 7 Days Work | 10343818 |
| 8477 | 36900.37000.37100.37200.83800 | Raft-reinforcement | 26d | 2025-08-11 | 2025-09-20 | 8476FS+0.25d | 100% | start no earlier than 2025-08-11 | 7 Days Work | 9044834 |
| 8478 | 36900.37000.37100.37200.83700 | Raft-Shuttering | 26d | 2025-09-07 | 2025-10-10 | 8477SS+14d | 100% | start no earlier than 2025-09-07 | 7 Days Work | 10430208 |
| 8479 | 36900.37000.37100.37200.83600 | Raft-concreting | 29d | 2025-09-05 | 2025-10-12 | 8478SS+7d | 100% | start no earlier than 2025-09-05 | 7 Days Work | 10430218 |
| 8480 | 36900.37000.37100.37200.83500 | up to PL | 22d | 2025-10-13 | 2025-11-28 | 8477 | 100% | start no earlier than 2025-10-13 | 7 Days Work | 9044844 |
| 8481 | 36900.37000.37100.37200.83400 | 1st Floor Slab RCC | 27d | 2025-11-08 | 2025-12-18 | 8480 | 29% | start no earlier than 2025-11-08 | 7 Days Work | 9044854 |
| 8482 | 36900.37000.37100.37200.110100 | 2nd Floor Slab RCC | 25d | 2025-12-19 | 2026-01-12 | 8481 |  |  | 7 Days Work | 9044864 |
| 8483 | 36900.37000.37100.37200.110200 | 3rd Floor Slab RCC | 21d | 2026-01-13 | 2026-02-02 | 8482 |  |  | 7 Days Work | 9044874 |
| 8484 | 36900.37000.37100.37200.110300 | 4th Floor Slab RCC | 15d | 2026-02-03 | 2026-02-17 | 8483 |  |  | 7 Days Work | 9044884 |
| 8485 | 36900.37000.37100.37200.110400 | 5th Floor Slab RCC | 12d | 2026-02-18 | 2026-03-01 | 8484 |  |  | 7 Days Work | 9044894 |
| 8486 | 36900.37000.37100.37200.110500 | 6th Floor Slab RCC | 12d | 2026-03-02 | 2026-03-13 | 8485 |  |  | 7 Days Work | 9044904 |
| 8487 | 36900.37000.37100.37200.110600 | 7th Floor Slab RCC | 12d | 2026-03-14 | 2026-03-25 | 8486 |  |  | 7 Days Work | 9044914 |
| 8488 | 36900.37000.37100.37200.110700 | 8th Floor Slab RCC | 12d | 2026-03-26 | 2026-04-06 | 8487 |  |  | 7 Days Work | 9044924 |
| 8489 | 36900.37000.37100.37200.110800 | 9th Floor Slab RCC | 12d | 2026-04-07 | 2026-04-18 | 8488 |  |  | 7 Days Work | 9044934 |
| 8490 | 36900.37000.37100.37200.110900 | 10th Floor Slab RCC | 12d | 2026-04-19 | 2026-04-30 | 8489 |  |  | 7 Days Work | 9044944 |
| 8491 | 36900.37000.37100.37200.111000 | 11th Floor Slab RCC | 12d | 2026-05-01 | 2026-05-12 | 8490 |  |  | 7 Days Work | 9044954 |
| 8492 | 36900.37000.37100.37200.111100 | 12th Floor Slab RCC | 12d | 2026-05-13 | 2026-05-24 | 8491 |  |  | 7 Days Work | 9044964 |
| 8493 | 36900.37000.37100.37200.111200 | 13th Floor Slab RCC | 12d | 2026-05-25 | 2026-06-05 | 8492 |  |  | 7 Days Work | 9044974 |
| 8494 | 36900.37000.37100.37200.111300 | 14th Floor Slab RCC | 12d | 2026-06-06 | 2026-06-17 | 8493 |  |  | 7 Days Work | 9044984 |
| 8495 | 36900.37000.37100.37200.111400 | 15th Floor Slab RCC | 12d | 2026-06-18 | 2026-06-29 | 8494 |  |  | 7 Days Work | 9044994 |
| 8496 | 36900.37000.37100.37200.111500 | 16th Floor Slab RCC | 12d | 2026-06-30 | 2026-07-11 | 8495 |  |  | 7 Days Work | 9045004 |
| 8497 | 36900.37000.37100.37200.111600 | 17th Floor Slab RCC | 12d | 2026-07-12 | 2026-07-23 | 8496 |  |  | 7 Days Work | 9045014 |
| 8498 | 36900.37000.37100.37200.111700 | 18th Floor Slab RCC | 12d | 2026-07-24 | 2026-08-04 | 8497 |  |  | 7 Days Work | 9045024 |
| 8499 | 36900.37000.37100.37200.111800 | 19th Floor Slab RCC | 12d | 2026-08-05 | 2026-08-16 | 8498 |  |  | 7 Days Work | 9045034 |
| 8500 | 36900.37000.37100.37200.111900 | 20th Floor Slab RCC | 12d | 2026-08-17 | 2026-08-28 | 8499 |  |  | 7 Days Work | 9045044 |
| 8501 | 36900.37000.37100.37200.112000 | 21st Floor Slab RCC | 12d | 2026-08-29 | 2026-09-09 | 8500 |  |  | 7 Days Work | 9045054 |
| 8502 | 36900.37000.37100.37200.112100 | Terrace | 12d | 2026-09-10 | 2026-09-21 | 8501 |  |  | 7 Days Work | 9045064 |
| 8503 | 36900.37000.37100.37200.112200 | Above Terrace | 35d | 2026-09-22 | 2026-10-26 | 8502 |  |  | 7 Days Work | 9307844 |

| ID | WBS | Task | Duration | Start | Finish | Predecessors | Constraint | Calendar | Unique_Task_ID |
| --- | --- | --- | --- | --- | --- | --- | --- | --- | --- |
| 8504 | 36900.37000.37100.37200.38200 | **Flat Finishing** | 562d | 2025-11-30 | 2027-06-14 |  | start no earlier than 2025-11-30 | 7 Days Work | 9293694 |
| 8505 | 36900.37000.37100.37200.38200.50200 | **1st Habitable/2nd Floor** | 245d | 2026-03-14 | 2026-11-13 |  | start no earlier than 2026-03-14 | 7 Days Work | 9293704 |
| 8506 | 36900.37000.37100.37200.38200.50200.645000 | Post Pour | 7d | 2026-03-14 | 2026-03-20 | 8486 |  | 7 Days Work | 9294444 |
| 8507 | 36900.37000.37100.37200.38200.50200.645100 | MEP Clearance -1 | 5d | 2026-03-21 | 2026-03-25 | 8506 |  | 7 Days Work | 9294454 |
| 8508 | 36900.37000.37100.37200.38200.50200.645200 | Benchmark | 1d | 2026-03-26 | 2026-03-26 | 8507 |  | 7 Days Work | 9294464 |
| 8509 | 36900.37000.37100.37200.38200.50200.645300 | Temporary Railing | 3d | 2026-03-27 | 2026-03-29 | 8508 |  | 7 Days Work | 9294474 |
| 8510 | 36900.37000.37100.37200.38200.50200.645400 | Blockwork | 10d | 2026-03-30 | 2026-04-08 | 8509 |  | 7 Days Work | 9294484 |
| 8511 | 36900.37000.37100.37200.38200.50200.645500 | MEP Clearance -2 | 10d | 2026-04-09 | 2026-04-18 | 8510 |  | 7 Days Work | 9294494 |
| 8512 | 36900.37000.37100.37200.38200.50200.645600 | Gypsum Plaster | 14d | 2026-04-19 | 2026-05-02 | 8511 |  | 7 Days Work | 9294504 |
| 8513 | 36900.37000.37100.37200.38200.50200.645700 | Kitchen Platform | 3d | 2026-05-03 | 2026-05-05 | 8512 |  | 7 Days Work | 9294514 |
| 8514 | 36900.37000.37100.37200.38200.50200.645800 | Kitchen dado | 7d | 2026-05-06 | 2026-05-12 | 8513 |  | 7 Days Work | 9294524 |
| 8515 | 36900.37000.37100.37200.38200.50200.645900 | Fire Fighting | 5d | 2026-05-13 | 2026-05-17 | 8514 |  | 7 Days Work | 9294534 |
| 8516 | 36900.37000.37100.37200.38200.50200.646000 | Anticapilary | 5d | 2026-05-18 | 2026-05-22 | 8515 |  | 7 Days Work | 9294544 |
| 8517 | 36900.37000.37100.37200.38200.50200.646100 | Stone Laying | 10d | 2026-06-25 | 2026-07-04 | 8557 |  | 7 Days Work | 9294554 |
| 8518 | 36900.37000.37100.37200.38200.50200.646200 | Tiles Laying | 7d | 2026-06-25 | 2026-07-01 | 8557 |  | 7 Days Work | 9294564 |
| 8519 | 36900.37000.37100.37200.38200.50200.646300 | 1st cutting/polishing of stone flooring | 7d | 2026-07-02 | 2026-07-08 | 8518 |  | 7 Days Work | 9294574 |
| 8520 | 36900.37000.37100.37200.38200.50200.646400 | Tiles/Stone skirting | 5d | 2026-07-09 | 2026-07-13 | 8519 |  | 7 Days Work | 9294584 |
| 8521 | 36900.37000.37100.37200.38200.50200.646500 | Protechtion sheet | 1d | 2026-07-14 | 2026-07-14 | 8520 |  | 7 Days Work | 9294594 |
| 8522 | 36900.37000.37100.37200.38200.50200.646600 | Installation of Temporary Door | 1d | 2026-07-15 | 2026-07-15 | 8521 |  | 7 Days Work | 9294604 |
| 8523 | 36900.37000.37100.37200.38200.50200.646700 | Fixing of window tracks | 5d | 2026-07-16 | 2026-07-20 | 8522 |  | 7 Days Work | 9294614 |
| 8524 | 36900.37000.37100.37200.38200.50200.646800 | Wire Pulling | 7d | 2026-07-21 | 2026-07-27 | 8523 |  | 7 Days Work | 9294624 |
| 8525 | 36900.37000.37100.37200.38200.50200.646900 | Gypsum Remaining | 5d | 2026-07-28 | 2026-08-01 | 8524 |  | 7 Days Work | 9294634 |
| 8526 | 36900.37000.37100.37200.38200.50200.647000 | Fixing of windoow shutter | 5d | 2026-08-02 | 2026-08-06 | 8525 |  | 7 Days Work | 9294644 |
| 8527 | 36900.37000.37100.37200.38200.50200.647100 | Putty Works - walls & ceiling | 15d | 2026-08-07 | 2026-08-21 | 8526 |  | 7 Days Work | 9294654 |
| 8528 | 36900.37000.37100.37200.38200.50200.647200 | False Ceiling- Framing | 10d | 2026-08-22 | 2026-08-31 | 8527 |  | 7 Days Work | 9294664 |
| 8529 | 36900.37000.37100.37200.38200.50200.647300 | Pre Hung Door | 3d | 2026-09-01 | 2026-09-03 | 8528 |  | 7 Days Work | 9294674 |
| 8530 | 36900.37000.37100.37200.38200.50200.647400 | Protechtion sheet | 2d | 2026-09-04 | 2026-09-05 | 8529 |  | 7 Days Work | 9294684 |
| 8531 | 36900.37000.37100.37200.38200.50200.647500 | Skirting near door | 2d | 2026-09-06 | 2026-09-07 | 8530 |  | 7 Days Work | 9294694 |
| 8532 | 36900.37000.37100.37200.38200.50200.647600 | Electrical Switch box fixing | 14d | 2026-09-08 | 2026-09-21 | 8531 |  | 7 Days Work | 9294704 |
| 8533 | 36900.37000.37100.37200.38200.50200.647700 | Fire Fighting painting | 5d | 2026-09-22 | 2026-09-26 | 8532 |  | 7 Days Work | 9294714 |
| 8534 | 36900.37000.37100.37200.38200.50200.647800 | Protection of all flooring, door & window hardware | 5d | 2026-09-27 | 2026-10-01 | 8533 |  | 7 Days Work | 9294724 |
| 8535 | 36900.37000.37100.37200.38200.50200.647900 | 1st coat primer- ceiling 1st & walls | 14d | 2026-10-02 | 2026-10-15 | 8534 |  | 7 Days Work | 9294734 |
| 8536 | 36900.37000.37100.37200.38200.50200.648000 | Wooden Flooring | 5d | 2026-10-16 | 2026-10-20 | 8535 |  | 7 Days Work | 9294744 |
| 8537 | 36900.37000.37100.37200.38200.50200.648100 | Removing of Temporary Railing & installation of Glass Railing | 5d | 2026-10-16 | 2026-10-20 | 8535 |  | 7 Days Work | 9294754 |
| 8538 | 36900.37000.37100.37200.38200.50200.648200 | Tile Grouting | 7d | 2026-10-16 | 2026-10-22 | 8535 |  | 7 Days Work | 9294764 |
| 8539 | 36900.37000.37100.37200.38200.50200.648300 | False Ceiling | 5d | 2026-10-23 | 2026-10-27 | 8538 |  | 7 Days Work | 9294774 |
| 8540 | 36900.37000.37100.37200.38200.50200.648400 | 2nd coat of primer | 10d | 2026-10-28 | 2026-11-06 | 8539 |  | 7 Days Work | 9294784 |
| 8541 | 36900.37000.37100.37200.38200.50200.648500 | Final cutting/polishing of stone flooring | 7d | 2026-11-07 | 2026-11-13 | 8540 |  | 7 Days Work | 9294794 |

| ID | WBS | Task | Duration | Start | Finish | Predecessors | Constraint | Calendar | Unique_Task_ID |
| --- | --- | --- | --- | --- | --- | --- | --- | --- | --- |
| 8542 | 36900.37000.37100.37200.38200.50200.64500 | **Toilet** | 237d | 2026-03-21 | 2026-11-12 |  | start no earlier than 2026-03-21 | 7 Days Work | 9293914 |
| 8543 | 36900.37000.37100.37200.38200.50200.64500.990300 | Toilet_MEP Clearance -1 | 7d | 2026-03-21 | 2026-03-27 | 8506 |  | 7 Days Work | 9303444 |
| 8544 | 36900.37000.37100.37200.38200.50200.64500.990400 | Toilet_Level Marking | 1d | 2026-03-28 | 2026-03-28 | 8543 |  | 7 Days Work | 9303454 |
| 8545 | 36900.37000.37100.37200.38200.50200.64500.990500 | Toilet_Chasing work for Electrical conduit & concealed plumbing | 5d | 2026-03-29 | 2026-04-02 | 8544 |  | 7 Days Work | 9303464 |
| 8546 | 36900.37000.37100.37200.38200.50200.64500.990600 | Toilet_Plumbing work 1st fix | 5d | 2026-04-03 | 2026-04-07 | 8545 |  | 7 Days Work | 9303474 |
| 8547 | 36900.37000.37100.37200.38200.50200.64500.990700 | Toilet_Sleeve/Bore Packing | 5d | 2026-04-08 | 2026-04-12 | 8546 |  | 7 Days Work | 9303484 |
| 8548 | 36900.37000.37100.37200.38200.50200.64500.990800 | Toilet_Waterproofing | 10d | 2026-04-13 | 2026-04-22 | 8547 |  | 7 Days Work | 9303494 |
| 8549 | 36900.37000.37100.37200.38200.50200.64500.990900 | Toilet_Screed | 1d | 2026-04-23 | 2026-04-23 | 8548 |  | 7 Days Work | 9303504 |
| 8550 | 36900.37000.37100.37200.38200.50200.64500.991000 | Toilet_Plumbing 2nd fix | 5d | 2026-04-24 | 2026-04-28 | 8549 |  | 7 Days Work | 9303514 |
| 8551 | 36900.37000.37100.37200.38200.50200.64500.991100 | Toilet_Ledge wall | 5d | 2026-04-29 | 2026-05-03 | 8550 |  | 7 Days Work | 9303524 |
| 8552 | 36900.37000.37100.37200.38200.50200.64500.991200 | Toilet_Cement Plaster | 5d | 2026-05-04 | 2026-05-08 | 8551 |  | 7 Days Work | 9303534 |
| 8553 | 36900.37000.37100.37200.38200.50200.64500.991300 | Toilet_Door Frame | 1d | 2026-05-09 | 2026-05-09 | 8552 |  | 7 Days Work | 9303544 |
| 8554 | 36900.37000.37100.37200.38200.50200.64500.991400 | Toilet_Wash basin & Couter | 3d | 2026-05-10 | 2026-05-12 | 8553 |  | 7 Days Work | 9303554 |
| 8555 | 36900.37000.37100.37200.38200.50200.64500.991500 | Toilet_Wall dado | 20d | 2026-05-13 | 2026-06-01 | 8554 |  | 7 Days Work | 9303564 |
| 8556 | 36900.37000.37100.37200.38200.50200.64500.991600 | Toilet_Granite Work-Ledge wall top | 3d | 2026-06-02 | 2026-06-04 | 8555 |  | 7 Days Work | 9303574 |
| 8557 | 36900.37000.37100.37200.38200.50200.64500.991700 | Toilet_Floor Tilling work | 20d | 2026-06-05 | 2026-06-24 | 8556 |  | 7 Days Work | 9303584 |
| 8558 | 36900.37000.37100.37200.38200.50200.64500.991800 | Toilet_1st row of dado | 5d | 2026-06-25 | 2026-06-29 | 8557 |  | 7 Days Work | 9303594 |
| 8559 | 36900.37000.37100.37200.38200.50200.64500.991900 | Toilet_Window Fixing | 14d | 2026-06-30 | 2026-07-13 | 8558 |  | 7 Days Work | 9303604 |
| 8560 | 36900.37000.37100.37200.38200.50200.64500.992000 | Toilet_Services above False ceiling | 21d | 2026-07-14 | 2026-08-03 | 8559 |  | 7 Days Work | 9303614 |
| 8561 | 36900.37000.37100.37200.38200.50200.64500.992100 | Toilet_False Ceiling framing | 12d | 2026-08-04 | 2026-08-15 | 8560 |  | 7 Days Work | 9303624 |
| 8562 | 36900.37000.37100.37200.38200.50200.64500.992200 | Toilet_Door Frame | 5d | 2026-08-16 | 2026-08-20 | 8561 |  | 7 Days Work | 9303634 |
| 8563 | 36900.37000.37100.37200.38200.50200.64500.992300 | Toilet_Epoxy Tile Grouting | 7d | 2026-10-16 | 2026-10-22 | 8538SS |  | 7 Days Work | 9303644 |
| 8564 | 36900.37000.37100.37200.38200.50200.64500.992400 | Toilet_False ceiling board fixing, CP Sanitary Fixture, Electric Fixture | 21d | 2026-10-23 | 2026-11-12 | 8563 |  | 7 Days Work | 9303654 |
| 8565 | 36900.37000.37100.37200.38200.50300 | **2nd Habitable/3rd Floor** | 245d | 2026-03-26 | 2026-11-25 |  | start no earlier than 2026-03-26 | 7 Days Work | 9293714 |
| 8566 | 36900.37000.37100.37200.38200.50300.648600 | Post Pour | 7d | 2026-03-26 | 2026-04-01 | 8487 |  | 7 Days Work | 9294804 |
| 8567 | 36900.37000.37100.37200.38200.50300.648700 | MEP Clearance -1 | 5d | 2026-04-02 | 2026-04-06 | 8566 |  | 7 Days Work | 9294814 |
| 8568 | 36900.37000.37100.37200.38200.50300.648800 | Benchmark | 1d | 2026-04-07 | 2026-04-07 | 8567 |  | 7 Days Work | 9294824 |
| 8569 | 36900.37000.37100.37200.38200.50300.648900 | Temporary Railing | 3d | 2026-04-08 | 2026-04-10 | 8568 |  | 7 Days Work | 9294834 |
| 8570 | 36900.37000.37100.37200.38200.50300.649000 | Blockwork | 10d | 2026-04-11 | 2026-04-20 | 8569 |  | 7 Days Work | 9294844 |
| 8571 | 36900.37000.37100.37200.38200.50300.649100 | MEP Clearance -2 | 10d | 2026-04-21 | 2026-04-30 | 8570 |  | 7 Days Work | 9294854 |
| 8572 | 36900.37000.37100.37200.38200.50300.649200 | Gypsum Plaster | 14d | 2026-05-01 | 2026-05-14 | 8571 |  | 7 Days Work | 9294864 |
| 8573 | 36900.37000.37100.37200.38200.50300.649300 | Kitchen Platform | 3d | 2026-05-15 | 2026-05-17 | 8572 |  | 7 Days Work | 9294874 |
| 8574 | 36900.37000.37100.37200.38200.50300.649400 | Kitchen dado | 7d | 2026-05-18 | 2026-05-24 | 8573 |  | 7 Days Work | 9294884 |
| 8575 | 36900.37000.37100.37200.38200.50300.649500 | Fire Fighting | 5d | 2026-05-25 | 2026-05-29 | 8574 |  | 7 Days Work | 9294894 |
| 8576 | 36900.37000.37100.37200.38200.50300.649600 | Anticapilary | 5d | 2026-05-30 | 2026-06-03 | 8575 |  | 7 Days Work | 9294904 |
| 8577 | 36900.37000.37100.37200.38200.50300.649700 | Stone Laying | 10d | 2026-07-07 | 2026-07-16 | 8617 |  | 7 Days Work | 9294914 |
| 8578 | 36900.37000.37100.37200.38200.50300.649800 | Tiles Laying | 7d | 2026-07-07 | 2026-07-13 | 8617 |  | 7 Days Work | 9294924 |
| 8579 | 36900.37000.37100.37200.38200.50300.649900 | 1st cutting/polishing of stone flooring | 7d | 2026-07-14 | 2026-07-20 | 8578 |  | 7 Days Work | 9294934 |
| 8580 | 36900.37000.37100.37200.38200.50300.650000 | Tiles/Stone skirting | 5d | 2026-07-21 | 2026-07-25 | 8579 |  | 7 Days Work | 9294944 |
| 8581 | 36900.37000.37100.37200.38200.50300.650100 | Protechtion sheet | 1d | 2026-07-26 | 2026-07-26 | 8580 |  | 7 Days Work | 9294954 |
| 8582 | 36900.37000.37100.37200.38200.50300.650200 | Installation of Temporary Door | 1d | 2026-07-27 | 2026-07-27 | 8581 |  | 7 Days Work | 9294964 |
| 8583 | 36900.37000.37100.37200.38200.50300.650300 | Fixing of window tracks | 5d | 2026-07-28 | 2026-08-01 | 8582 |  | 7 Days Work | 9294974 |
| 8584 | 36900.37000.37100.37200.38200.50300.650400 | Wire Pulling | 7d | 2026-08-02 | 2026-08-08 | 8583 |  | 7 Days Work | 9294984 |
| 8585 | 36900.37000.37100.37200.38200.50300.650500 | Gypsum Remaining | 5d | 2026-08-09 | 2026-08-13 | 8584 |  | 7 Days Work | 9294994 |
| 8586 | 36900.37000.37100.37200.38200.50300.650600 | Fixing of windoow shutter | 5d | 2026-08-14 | 2026-08-18 | 8585 |  | 7 Days Work | 9295004 |
| 8587 | 36900.37000.37100.37200.38200.50300.650700 | Putty Works - walls & ceiling | 15d | 2026-08-19 | 2026-09-02 | 8586 |  | 7 Days Work | 9295014 |
| 8588 | 36900.37000.37100.37200.38200.50300.650800 | False Ceiling- Framing | 10d | 2026-09-03 | 2026-09-12 | 8587 |  | 7 Days Work | 9295024 |
| 8589 | 36900.37000.37100.37200.38200.50300.650900 | Pre Hung Door | 3d | 2026-09-13 | 2026-09-15 | 8588 |  | 7 Days Work | 9295034 |
| 8590 | 36900.37000.37100.37200.38200.50300.651000 | Protechtion sheet | 2d | 2026-09-16 | 2026-09-17 | 8589 |  | 7 Days Work | 9295044 |
| 8591 | 36900.37000.37100.37200.38200.50300.651100 | Skirting near door | 2d | 2026-09-18 | 2026-09-19 | 8590 |  | 7 Days Work | 9295054 |
| 8592 | 36900.37000.37100.37200.38200.50300.651200 | Electrical Switch box fixing | 14d | 2026-09-20 | 2026-10-03 | 8591 |  | 7 Days Work | 9295064 |
| 8593 | 36900.37000.37100.37200.38200.50300.651300 | Fire Fighting painting | 5d | 2026-10-04 | 2026-10-08 | 8592 |  | 7 Days Work | 9295074 |
| 8594 | 36900.37000.37100.37200.38200.50300.651400 | Protection of all flooring, door & window hardware | 5d | 2026-10-09 | 2026-10-13 | 8593 |  | 7 Days Work | 9295084 |
| 8595 | 36900.37000.37100.37200.38200.50300.651500 | 1st coat primer- ceiling 1st & walls | 14d | 2026-10-14 | 2026-10-27 | 8594 |  | 7 Days Work | 9295094 |
| 8596 | 36900.37000.37100.37200.38200.50300.651600 | Wooden Flooring | 5d | 2026-10-28 | 2026-11-01 | 8595 |  | 7 Days Work | 9295104 |
| 8597 | 36900.37000.37100.37200.38200.50300.651700 | Removing of Temporary Railing & installation of Glass Railing | 5d | 2026-10-28 | 2026-11-01 | 8595 |  | 7 Days Work | 9295114 |
| 8598 | 36900.37000.37100.37200.38200.50300.651800 | Tile Grouting | 7d | 2026-10-28 | 2026-11-03 | 8595 |  | 7 Days Work | 9295124 |
| 8599 | 36900.37000.37100.37200.38200.50300.651900 | False Ceiling | 5d | 2026-11-04 | 2026-11-08 | 8598 |  | 7 Days Work | 9295134 |
| 8600 | 36900.37000.37100.37200.38200.50300.652000 | 2nd coat of primer | 10d | 2026-11-09 | 2026-11-18 | 8599 |  | 7 Days Work | 9295144 |
| 8601 | 36900.37000.37100.37200.38200.50300.652100 | Final cutting/polishing of stone flooring | 7d | 2026-11-19 | 2026-11-25 | 8600 |  | 7 Days Work | 9295154 |

| ID | WBS | Task | Duration | Start | Finish | Predecessors | Constraint | Calendar | Unique_Task_ID |
| --- | --- | --- | --- | --- | --- | --- | --- | --- | --- |
| 8602 | 36900.37000.37100.37200.38200.50300.64600 | **Toilet** | 237d | 2026-04-02 | 2026-11-24 |  | start no earlier than 2026-04-02 | 7 Days Work | 9293924 |
| 8603 | 36900.37000.37100.37200.38200.50300.64600.992500 | Toilet_MEP Clearance -1 | 7d | 2026-04-02 | 2026-04-08 | 8566 |  | 7 Days Work | 9303664 |
| 8604 | 36900.37000.37100.37200.38200.50300.64600.992600 | Toilet_Level Marking | 1d | 2026-04-09 | 2026-04-09 | 8603 |  | 7 Days Work | 9303674 |
| 8605 | 36900.37000.37100.37200.38200.50300.64600.992700 | Toilet_Chasing work for Electrical conduit & concealed plumbing | 5d | 2026-04-10 | 2026-04-14 | 8604 |  | 7 Days Work | 9303684 |
| 8606 | 36900.37000.37100.37200.38200.50300.64600.992800 | Toilet_Plumbing work 1st fix | 5d | 2026-04-15 | 2026-04-19 | 8605 |  | 7 Days Work | 9303694 |
| 8607 | 36900.37000.37100.37200.38200.50300.64600.992900 | Toilet_Sleeve/Bore Packing | 5d | 2026-04-20 | 2026-04-24 | 8606 |  | 7 Days Work | 9303704 |
| 8608 | 36900.37000.37100.37200.38200.50300.64600.993000 | Toilet_Waterproofing | 10d | 2026-04-25 | 2026-05-04 | 8607 |  | 7 Days Work | 9303714 |
| 8609 | 36900.37000.37100.37200.38200.50300.64600.993100 | Toilet_Screed | 1d | 2026-05-05 | 2026-05-05 | 8608 |  | 7 Days Work | 9303724 |
| 8610 | 36900.37000.37100.37200.38200.50300.64600.993200 | Toilet_Plumbing 2nd fix | 5d | 2026-05-06 | 2026-05-10 | 8609 |  | 7 Days Work | 9303734 |
| 8611 | 36900.37000.37100.37200.38200.50300.64600.993300 | Toilet_Ledge wall | 5d | 2026-05-11 | 2026-05-15 | 8610 |  | 7 Days Work | 9303744 |
| 8612 | 36900.37000.37100.37200.38200.50300.64600.993400 | Toilet_Cement Plaster | 5d | 2026-05-16 | 2026-05-20 | 8611 |  | 7 Days Work | 9303754 |
| 8613 | 36900.37000.37100.37200.38200.50300.64600.993500 | Toilet_Door Frame | 1d | 2026-05-21 | 2026-05-21 | 8612 |  | 7 Days Work | 9303764 |
| 8614 | 36900.37000.37100.37200.38200.50300.64600.993600 | Toilet_Wash basin & Couter | 3d | 2026-05-22 | 2026-05-24 | 8613 |  | 7 Days Work | 9303774 |
| 8615 | 36900.37000.37100.37200.38200.50300.64600.993700 | Toilet_Wall dado | 20d | 2026-05-25 | 2026-06-13 | 8614 |  | 7 Days Work | 9303784 |
| 8616 | 36900.37000.37100.37200.38200.50300.64600.993800 | Toilet_Granite Work-Ledge wall top | 3d | 2026-06-14 | 2026-06-16 | 8615 |  | 7 Days Work | 9303794 |
| 8617 | 36900.37000.37100.37200.38200.50300.64600.993900 | Toilet_Floor Tilling work | 20d | 2026-06-17 | 2026-07-06 | 8616 |  | 7 Days Work | 9303804 |
| 8618 | 36900.37000.37100.37200.38200.50300.64600.994000 | Toilet_1st row of dado | 5d | 2026-07-07 | 2026-07-11 | 8617 |  | 7 Days Work | 9303814 |
| 8619 | 36900.37000.37100.37200.38200.50300.64600.994100 | Toilet_Window Fixing | 14d | 2026-07-12 | 2026-07-25 | 8618 |  | 7 Days Work | 9303824 |
| 8620 | 36900.37000.37100.37200.38200.50300.64600.994200 | Toilet_Services above False ceiling | 21d | 2026-07-26 | 2026-08-15 | 8619 |  | 7 Days Work | 9303834 |
| 8621 | 36900.37000.37100.37200.38200.50300.64600.994300 | Toilet_False Ceiling framing | 12d | 2026-08-16 | 2026-08-27 | 8620 |  | 7 Days Work | 9303844 |
| 8622 | 36900.37000.37100.37200.38200.50300.64600.994400 | Toilet_Door Frame | 5d | 2026-08-28 | 2026-09-01 | 8621 |  | 7 Days Work | 9303854 |
| 8623 | 36900.37000.37100.37200.38200.50300.64600.994500 | Toilet_Epoxy Tile Grouting | 7d | 2026-10-28 | 2026-11-03 | 8598SS |  | 7 Days Work | 9303864 |
| 8624 | 36900.37000.37100.37200.38200.50300.64600.994600 | Toilet_False ceiling board fixing, CP Sanitary Fixture, Electric Fixture | 21d | 2026-11-04 | 2026-11-24 | 8623 |  | 7 Days Work | 9303874 |
| 8625 | 36900.37000.37100.37200.38200.50400 | **3rd Habitable/4th Floor** | 245d | 2026-04-07 | 2026-12-07 |  | start no earlier than 2026-04-07 | 7 Days Work | 9293724 |
| 8626 | 36900.37000.37100.37200.38200.50400.652200 | Post Pour | 7d | 2026-04-07 | 2026-04-13 | 8488 |  | 7 Days Work | 9295164 |
| 8627 | 36900.37000.37100.37200.38200.50400.652300 | MEP Clearance -1 | 5d | 2026-04-14 | 2026-04-18 | 8626 |  | 7 Days Work | 9295174 |
| 8628 | 36900.37000.37100.37200.38200.50400.652400 | Benchmark | 1d | 2026-04-19 | 2026-04-19 | 8627 |  | 7 Days Work | 9295184 |
| 8629 | 36900.37000.37100.37200.38200.50400.652500 | Temporary Railing | 3d | 2026-04-20 | 2026-04-22 | 8628 |  | 7 Days Work | 9295194 |
| 8630 | 36900.37000.37100.37200.38200.50400.652600 | Blockwork | 10d | 2026-04-23 | 2026-05-02 | 8629 |  | 7 Days Work | 9295204 |
| 8631 | 36900.37000.37100.37200.38200.50400.652700 | MEP Clearance -2 | 10d | 2026-05-03 | 2026-05-12 | 8630 |  | 7 Days Work | 9295214 |
| 8632 | 36900.37000.37100.37200.38200.50400.652800 | Gypsum Plaster | 14d | 2026-05-13 | 2026-05-26 | 8631 |  | 7 Days Work | 9295224 |
| 8633 | 36900.37000.37100.37200.38200.50400.652900 | Kitchen Platform | 3d | 2026-05-27 | 2026-05-29 | 8632 |  | 7 Days Work | 9295234 |
| 8634 | 36900.37000.37100.37200.38200.50400.653000 | Kitchen dado | 7d | 2026-05-30 | 2026-06-05 | 8633 |  | 7 Days Work | 9295244 |
| 8635 | 36900.37000.37100.37200.38200.50400.653100 | Fire Fighting | 5d | 2026-06-06 | 2026-06-10 | 8634 |  | 7 Days Work | 9295254 |
| 8636 | 36900.37000.37100.37200.38200.50400.653200 | Anticapilary | 5d | 2026-06-11 | 2026-06-15 | 8635 |  | 7 Days Work | 9295264 |
| 8637 | 36900.37000.37100.37200.38200.50400.653300 | Stone Laying | 10d | 2026-07-19 | 2026-07-28 | 8677 |  | 7 Days Work | 9295274 |
| 8638 | 36900.37000.37100.37200.38200.50400.653400 | Tiles Laying | 7d | 2026-07-19 | 2026-07-25 | 8677 |  | 7 Days Work | 9295284 |
| 8639 | 36900.37000.37100.37200.38200.50400.653500 | 1st cutting/polishing of stone flooring | 7d | 2026-07-26 | 2026-08-01 | 8638 |  | 7 Days Work | 9295294 |
| 8640 | 36900.37000.37100.37200.38200.50400.653600 | Tiles/Stone skirting | 5d | 2026-08-02 | 2026-08-06 | 8639 |  | 7 Days Work | 9295304 |
| 8641 | 36900.37000.37100.37200.38200.50400.653700 | Protechtion sheet | 1d | 2026-08-07 | 2026-08-07 | 8640 |  | 7 Days Work | 9295314 |
| 8642 | 36900.37000.37100.37200.38200.50400.653800 | Installation of Temporary Door | 1d | 2026-08-08 | 2026-08-08 | 8641 |  | 7 Days Work | 9295324 |
| 8643 | 36900.37000.37100.37200.38200.50400.653900 | Fixing of window tracks | 5d | 2026-08-09 | 2026-08-13 | 8642 |  | 7 Days Work | 9295334 |
| 8644 | 36900.37000.37100.37200.38200.50400.654000 | Wire Pulling | 7d | 2026-08-14 | 2026-08-20 | 8643 |  | 7 Days Work | 9295344 |
| 8645 | 36900.37000.37100.37200.38200.50400.654100 | Gypsum Remaining | 5d | 2026-08-21 | 2026-08-25 | 8644 |  | 7 Days Work | 9295354 |
| 8646 | 36900.37000.37100.37200.38200.50400.654200 | Fixing of windoow shutter | 5d | 2026-08-26 | 2026-08-30 | 8645 |  | 7 Days Work | 9295364 |
| 8647 | 36900.37000.37100.37200.38200.50400.654300 | Putty Works - walls & ceiling | 15d | 2026-08-31 | 2026-09-14 | 8646 |  | 7 Days Work | 9295374 |
| 8648 | 36900.37000.37100.37200.38200.50400.654400 | False Ceiling- Framing | 10d | 2026-09-15 | 2026-09-24 | 8647 |  | 7 Days Work | 9295384 |
| 8649 | 36900.37000.37100.37200.38200.50400.654500 | Pre Hung Door | 3d | 2026-09-25 | 2026-09-27 | 8648 |  | 7 Days Work | 9295394 |
| 8650 | 36900.37000.37100.37200.38200.50400.654600 | Protechtion sheet | 2d | 2026-09-28 | 2026-09-29 | 8649 |  | 7 Days Work | 9295404 |
| 8651 | 36900.37000.37100.37200.38200.50400.654700 | Skirting near door | 2d | 2026-09-30 | 2026-10-01 | 8650 |  | 7 Days Work | 9295414 |
| 8652 | 36900.37000.37100.37200.38200.50400.654800 | Electrical Switch box fixing | 14d | 2026-10-02 | 2026-10-15 | 8651 |  | 7 Days Work | 9295424 |
| 8653 | 36900.37000.37100.37200.38200.50400.654900 | Fire Fighting painting | 5d | 2026-10-16 | 2026-10-20 | 8652 |  | 7 Days Work | 9295434 |
| 8654 | 36900.37000.37100.37200.38200.50400.655000 | Protection of all flooring, door & window hardware | 5d | 2026-10-21 | 2026-10-25 | 8653 |  | 7 Days Work | 9295444 |
| 8655 | 36900.37000.37100.37200.38200.50400.655100 | 1st coat primer- ceiling 1st & walls | 14d | 2026-10-26 | 2026-11-08 | 8654 |  | 7 Days Work | 9295454 |
| 8656 | 36900.37000.37100.37200.38200.50400.655200 | Wooden Flooring | 5d | 2026-11-09 | 2026-11-13 | 8655 |  | 7 Days Work | 9295464 |
| 8657 | 36900.37000.37100.37200.38200.50400.655300 | Removing of Temporary Railing & installation of Glass Railing | 5d | 2026-11-09 | 2026-11-13 | 8655 |  | 7 Days Work | 9295474 |
| 8658 | 36900.37000.37100.37200.38200.50400.655400 | Tile Grouting | 7d | 2026-11-09 | 2026-11-15 | 8655 |  | 7 Days Work | 9295484 |
| 8659 | 36900.37000.37100.37200.38200.50400.655500 | False Ceiling | 5d | 2026-11-16 | 2026-11-20 | 8658 |  | 7 Days Work | 9295494 |
| 8660 | 36900.37000.37100.37200.38200.50400.655600 | 2nd coat of primer | 10d | 2026-11-21 | 2026-11-30 | 8659 |  | 7 Days Work | 9295504 |
| 8661 | 36900.37000.37100.37200.38200.50400.655700 | Final cutting/polishing of stone flooring | 7d | 2026-12-01 | 2026-12-07 | 8660 |  | 7 Days Work | 9295514 |

| ID | WBS | Task | Duration | Start | Finish | Predecessors | Constraint | Calendar | Unique_Task_ID |
| --- | --- | --- | --- | --- | --- | --- | --- | --- | --- |
| 8662 | 36900.37000.37100.37200.38200.50400.64700 | **Toilet** | 237d | 2026-04-14 | 2026-12-06 |  | start no earlier than 2026-04-14 | 7 Days Work | 9293934 |
| 8663 | 36900.37000.37100.37200.38200.50400.64700.994700 | Toilet_MEP Clearance -1 | 7d | 2026-04-14 | 2026-04-20 | 8626 |  | 7 Days Work | 9303884 |
| 8664 | 36900.37000.37100.37200.38200.50400.64700.994800 | Toilet_Level Marking | 1d | 2026-04-21 | 2026-04-21 | 8663 |  | 7 Days Work | 9303894 |
| 8665 | 36900.37000.37100.37200.38200.50400.64700.994900 | Toilet_Chasing work for Electrical conduit & concealed plumbing | 5d | 2026-04-22 | 2026-04-26 | 8664 |  | 7 Days Work | 9303904 |
| 8666 | 36900.37000.37100.37200.38200.50400.64700.995000 | Toilet_Plumbing work 1st fix | 5d | 2026-04-27 | 2026-05-01 | 8665 |  | 7 Days Work | 9303914 |
| 8667 | 36900.37000.37100.37200.38200.50400.64700.995100 | Toilet_Sleeve/Bore Packing | 5d | 2026-05-02 | 2026-05-06 | 8666 |  | 7 Days Work | 9303924 |
| 8668 | 36900.37000.37100.37200.38200.50400.64700.995200 | Toilet_Waterproofing | 10d | 2026-05-07 | 2026-05-16 | 8667 |  | 7 Days Work | 9303934 |
| 8669 | 36900.37000.37100.37200.38200.50400.64700.995300 | Toilet_Screed | 1d | 2026-05-17 | 2026-05-17 | 8668 |  | 7 Days Work | 9303944 |
| 8670 | 36900.37000.37100.37200.38200.50400.64700.995400 | Toilet_Plumbing 2nd fix | 5d | 2026-05-18 | 2026-05-22 | 8669 |  | 7 Days Work | 9303954 |
| 8671 | 36900.37000.37100.37200.38200.50400.64700.995500 | Toilet_Ledge wall | 5d | 2026-05-23 | 2026-05-27 | 8670 |  | 7 Days Work | 9303964 |
| 8672 | 36900.37000.37100.37200.38200.50400.64700.995600 | Toilet_Cement Plaster | 5d | 2026-05-28 | 2026-06-01 | 8671 |  | 7 Days Work | 9303974 |
| 8673 | 36900.37000.37100.37200.38200.50400.64700.995700 | Toilet_Door Frame | 1d | 2026-06-02 | 2026-06-02 | 8672 |  | 7 Days Work | 9303984 |
| 8674 | 36900.37000.37100.37200.38200.50400.64700.995800 | Toilet_Wash basin & Couter | 3d | 2026-06-03 | 2026-06-05 | 8673 |  | 7 Days Work | 9303994 |
| 8675 | 36900.37000.37100.37200.38200.50400.64700.995900 | Toilet_Wall dado | 20d | 2026-06-06 | 2026-06-25 | 8674 |  | 7 Days Work | 9304004 |
| 8676 | 36900.37000.37100.37200.38200.50400.64700.996000 | Toilet_Granite Work-Ledge wall top | 3d | 2026-06-26 | 2026-06-28 | 8675 |  | 7 Days Work | 9304014 |
| 8677 | 36900.37000.37100.37200.38200.50400.64700.996100 | Toilet_Floor Tilling work | 20d | 2026-06-29 | 2026-07-18 | 8676 |  | 7 Days Work | 9304024 |
| 8678 | 36900.37000.37100.37200.38200.50400.64700.996200 | Toilet_1st row of dado | 5d | 2026-07-19 | 2026-07-23 | 8677 |  | 7 Days Work | 9304034 |
| 8679 | 36900.37000.37100.37200.38200.50400.64700.996300 | Toilet_Window Fixing | 14d | 2026-07-24 | 2026-08-06 | 8678 |  | 7 Days Work | 9304044 |
| 8680 | 36900.37000.37100.37200.38200.50400.64700.996400 | Toilet_Services above False ceiling | 21d | 2026-08-07 | 2026-08-27 | 8679 |  | 7 Days Work | 9304054 |
| 8681 | 36900.37000.37100.37200.38200.50400.64700.996500 | Toilet_False Ceiling framing | 12d | 2026-08-28 | 2026-09-08 | 8680 |  | 7 Days Work | 9304064 |
| 8682 | 36900.37000.37100.37200.38200.50400.64700.996600 | Toilet_Door Frame | 5d | 2026-09-09 | 2026-09-13 | 8681 |  | 7 Days Work | 9304074 |
| 8683 | 36900.37000.37100.37200.38200.50400.64700.996700 | Toilet_Epoxy Tile Grouting | 7d | 2026-11-09 | 2026-11-15 | 8658SS |  | 7 Days Work | 9304084 |
| 8684 | 36900.37000.37100.37200.38200.50400.64700.996800 | Toilet_False ceiling board fixing, CP Sanitary Fixture, Electric Fixture | 21d | 2026-11-16 | 2026-12-06 | 8683 |  | 7 Days Work | 9304094 |
| 8685 | 36900.37000.37100.37200.38200.50500 | **4th Habitable/5th Floor** | 245d | 2026-04-19 | 2026-12-19 |  | start no earlier than 2026-04-19 | 7 Days Work | 9293734 |
| 8686 | 36900.37000.37100.37200.38200.50500.655800 | Post Pour | 7d | 2026-04-19 | 2026-04-25 | 8489 |  | 7 Days Work | 9295524 |
| 8687 | 36900.37000.37100.37200.38200.50500.655900 | MEP Clearance -1 | 5d | 2026-04-26 | 2026-04-30 | 8686 |  | 7 Days Work | 9295534 |
| 8688 | 36900.37000.37100.37200.38200.50500.656000 | Benchmark | 1d | 2026-05-01 | 2026-05-01 | 8687 |  | 7 Days Work | 9295544 |
| 8689 | 36900.37000.37100.37200.38200.50500.656100 | Temporary Railing | 3d | 2026-05-02 | 2026-05-04 | 8688 |  | 7 Days Work | 9295554 |
| 8690 | 36900.37000.37100.37200.38200.50500.656200 | Blockwork | 10d | 2026-05-05 | 2026-05-14 | 8689 |  | 7 Days Work | 9295564 |
| 8691 | 36900.37000.37100.37200.38200.50500.656300 | MEP Clearance -2 | 10d | 2026-05-15 | 2026-05-24 | 8690 |  | 7 Days Work | 9295574 |
| 8692 | 36900.37000.37100.37200.38200.50500.656400 | Gypsum Plaster | 14d | 2026-05-25 | 2026-06-07 | 8691 |  | 7 Days Work | 9295584 |
| 8693 | 36900.37000.37100.37200.38200.50500.656500 | Kitchen Platform | 3d | 2026-06-08 | 2026-06-10 | 8692 |  | 7 Days Work | 9295594 |
| 8694 | 36900.37000.37100.37200.38200.50500.656600 | Kitchen dado | 7d | 2026-06-11 | 2026-06-17 | 8693 |  | 7 Days Work | 9295604 |
| 8695 | 36900.37000.37100.37200.38200.50500.656700 | Fire Fighting | 5d | 2026-06-18 | 2026-06-22 | 8694 |  | 7 Days Work | 9295614 |
| 8696 | 36900.37000.37100.37200.38200.50500.656800 | Anticapilary | 5d | 2026-06-23 | 2026-06-27 | 8695 |  | 7 Days Work | 9295624 |
| 8697 | 36900.37000.37100.37200.38200.50500.656900 | Stone Laying | 10d | 2026-07-31 | 2026-08-09 | 8737 |  | 7 Days Work | 9295634 |
| 8698 | 36900.37000.37100.37200.38200.50500.657000 | Tiles Laying | 7d | 2026-07-31 | 2026-08-06 | 8737 |  | 7 Days Work | 9295644 |
| 8699 | 36900.37000.37100.37200.38200.50500.657100 | 1st cutting/polishing of stone flooring | 7d | 2026-08-07 | 2026-08-13 | 8698 |  | 7 Days Work | 9295654 |
| 8700 | 36900.37000.37100.37200.38200.50500.657200 | Tiles/Stone skirting | 5d | 2026-08-14 | 2026-08-18 | 8699 |  | 7 Days Work | 9295664 |
| 8701 | 36900.37000.37100.37200.38200.50500.657300 | Protechtion sheet | 1d | 2026-08-19 | 2026-08-19 | 8700 |  | 7 Days Work | 9295674 |
| 8702 | 36900.37000.37100.37200.38200.50500.657400 | Installation of Temporary Door | 1d | 2026-08-20 | 2026-08-20 | 8701 |  | 7 Days Work | 9295684 |
| 8703 | 36900.37000.37100.37200.38200.50500.657500 | Fixing of window tracks | 5d | 2026-08-21 | 2026-08-25 | 8702 |  | 7 Days Work | 9295694 |
| 8704 | 36900.37000.37100.37200.38200.50500.657600 | Wire Pulling | 7d | 2026-08-26 | 2026-09-01 | 8703 |  | 7 Days Work | 9295704 |
| 8705 | 36900.37000.37100.37200.38200.50500.657700 | Gypsum Remaining | 5d | 2026-09-02 | 2026-09-06 | 8704 |  | 7 Days Work | 9295714 |
| 8706 | 36900.37000.37100.37200.38200.50500.657800 | Fixing of windoow shutter | 5d | 2026-09-07 | 2026-09-11 | 8705 |  | 7 Days Work | 9295724 |
| 8707 | 36900.37000.37100.37200.38200.50500.657900 | Putty Works - walls & ceiling | 15d | 2026-09-12 | 2026-09-26 | 8706 |  | 7 Days Work | 9295734 |
| 8708 | 36900.37000.37100.37200.38200.50500.658000 | False Ceiling- Framing | 10d | 2026-09-27 | 2026-10-06 | 8707 |  | 7 Days Work | 9295744 |
| 8709 | 36900.37000.37100.37200.38200.50500.658100 | Pre Hung Door | 3d | 2026-10-07 | 2026-10-09 | 8708 |  | 7 Days Work | 9295754 |
| 8710 | 36900.37000.37100.37200.38200.50500.658200 | Protechtion sheet | 2d | 2026-10-10 | 2026-10-11 | 8709 |  | 7 Days Work | 9295764 |
| 8711 | 36900.37000.37100.37200.38200.50500.658300 | Skirting near door | 2d | 2026-10-12 | 2026-10-13 | 8710 |  | 7 Days Work | 9295774 |
| 8712 | 36900.37000.37100.37200.38200.50500.658400 | Electrical Switch box fixing | 14d | 2026-10-14 | 2026-10-27 | 8711 |  | 7 Days Work | 9295784 |
| 8713 | 36900.37000.37100.37200.38200.50500.658500 | Fire Fighting painting | 5d | 2026-10-28 | 2026-11-01 | 8712 |  | 7 Days Work | 9295794 |
| 8714 | 36900.37000.37100.37200.38200.50500.658600 | Protection of all flooring, door & window hardware | 5d | 2026-11-02 | 2026-11-06 | 8713 |  | 7 Days Work | 9295804 |
| 8715 | 36900.37000.37100.37200.38200.50500.658700 | 1st coat primer- ceiling 1st & walls | 14d | 2026-11-07 | 2026-11-20 | 8714 |  | 7 Days Work | 9295814 |
| 8716 | 36900.37000.37100.37200.38200.50500.658800 | Wooden Flooring | 5d | 2026-11-21 | 2026-11-25 | 8715 |  | 7 Days Work | 9295824 |
| 8717 | 36900.37000.37100.37200.38200.50500.658900 | Removing of Temporary Railing & installation of Glass Railing | 5d | 2026-11-21 | 2026-11-25 | 8715 |  | 7 Days Work | 9295834 |
| 8718 | 36900.37000.37100.37200.38200.50500.659000 | Tile Grouting | 7d | 2026-11-21 | 2026-11-27 | 8715 |  | 7 Days Work | 9295844 |
| 8719 | 36900.37000.37100.37200.38200.50500.659100 | False Ceiling | 5d | 2026-11-28 | 2026-12-02 | 8718 |  | 7 Days Work | 9295854 |
| 8720 | 36900.37000.37100.37200.38200.50500.659200 | 2nd coat of primer | 10d | 2026-12-03 | 2026-12-12 | 8719 |  | 7 Days Work | 9295864 |
| 8721 | 36900.37000.37100.37200.38200.50500.659300 | Final cutting/polishing of stone flooring | 7d | 2026-12-13 | 2026-12-19 | 8720 |  | 7 Days Work | 9295874 |

| ID | WBS | Task | Duration | Start | Finish | Predecessors | Constraint | Calendar | Unique_Task_ID |
| --- | --- | --- | --- | --- | --- | --- | --- | --- | --- |
| 8722 | 36900.37000.37100.37200.38200.50500.64800 | **Toilet** | 237d | 2026-04-26 | 2026-12-18 |  | start no earlier than 2026-04-26 | 7 Days Work | 9293944 |
| 8723 | 36900.37000.37100.37200.38200.50500.64800.996900 | Toilet_MEP Clearance -1 | 7d | 2026-04-26 | 2026-05-02 | 8686 |  | 7 Days Work | 9304104 |
| 8724 | 36900.37000.37100.37200.38200.50500.64800.997000 | Toilet_Level Marking | 1d | 2026-05-03 | 2026-05-03 | 8723 |  | 7 Days Work | 9304114 |
| 8725 | 36900.37000.37100.37200.38200.50500.64800.997100 | Toilet_Chasing work for Electrical conduit & concealed plumbing | 5d | 2026-05-04 | 2026-05-08 | 8724 |  | 7 Days Work | 9304124 |
| 8726 | 36900.37000.37100.37200.38200.50500.64800.997200 | Toilet_Plumbing work 1st fix | 5d | 2026-05-09 | 2026-05-13 | 8725 |  | 7 Days Work | 9304134 |
| 8727 | 36900.37000.37100.37200.38200.50500.64800.997300 | Toilet_Sleeve/Bore Packing | 5d | 2026-05-14 | 2026-05-18 | 8726 |  | 7 Days Work | 9304144 |
| 8728 | 36900.37000.37100.37200.38200.50500.64800.997400 | Toilet_Waterproofing | 10d | 2026-05-19 | 2026-05-28 | 8727 |  | 7 Days Work | 9304154 |
| 8729 | 36900.37000.37100.37200.38200.50500.64800.997500 | Toilet_Screed | 1d | 2026-05-29 | 2026-05-29 | 8728 |  | 7 Days Work | 9304164 |
| 8730 | 36900.37000.37100.37200.38200.50500.64800.997600 | Toilet_Plumbing 2nd fix | 5d | 2026-05-30 | 2026-06-03 | 8729 |  | 7 Days Work | 9304174 |
| 8731 | 36900.37000.37100.37200.38200.50500.64800.997700 | Toilet_Ledge wall | 5d | 2026-06-04 | 2026-06-08 | 8730 |  | 7 Days Work | 9304184 |
| 8732 | 36900.37000.37100.37200.38200.50500.64800.997800 | Toilet_Cement Plaster | 5d | 2026-06-09 | 2026-06-13 | 8731 |  | 7 Days Work | 9304194 |
| 8733 | 36900.37000.37100.37200.38200.50500.64800.997900 | Toilet_Door Frame | 1d | 2026-06-14 | 2026-06-14 | 8732 |  | 7 Days Work | 9304204 |
| 8734 | 36900.37000.37100.37200.38200.50500.64800.998000 | Toilet_Wash basin & Couter | 3d | 2026-06-15 | 2026-06-17 | 8733 |  | 7 Days Work | 9304214 |
| 8735 | 36900.37000.37100.37200.38200.50500.64800.998100 | Toilet_Wall dado | 20d | 2026-06-18 | 2026-07-07 | 8734 |  | 7 Days Work | 9304224 |
| 8736 | 36900.37000.37100.37200.38200.50500.64800.998200 | Toilet_Granite Work-Ledge wall top | 3d | 2026-07-08 | 2026-07-10 | 8735 |  | 7 Days Work | 9304234 |
| 8737 | 36900.37000.37100.37200.38200.50500.64800.998300 | Toilet_Floor Tilling work | 20d | 2026-07-11 | 2026-07-30 | 8736 |  | 7 Days Work | 9304244 |
| 8738 | 36900.37000.37100.37200.38200.50500.64800.998400 | Toilet_1st row of dado | 5d | 2026-07-31 | 2026-08-04 | 8737 |  | 7 Days Work | 9304254 |
| 8739 | 36900.37000.37100.37200.38200.50500.64800.998500 | Toilet_Window Fixing | 14d | 2026-08-05 | 2026-08-18 | 8738 |  | 7 Days Work | 9304264 |
| 8740 | 36900.37000.37100.37200.38200.50500.64800.998600 | Toilet_Services above False ceiling | 21d | 2026-08-19 | 2026-09-08 | 8739 |  | 7 Days Work | 9304274 |
| 8741 | 36900.37000.37100.37200.38200.50500.64800.998700 | Toilet_False Ceiling framing | 12d | 2026-09-09 | 2026-09-20 | 8740 |  | 7 Days Work | 9304284 |
| 8742 | 36900.37000.37100.37200.38200.50500.64800.998800 | Toilet_Door Frame | 5d | 2026-09-21 | 2026-09-25 | 8741 |  | 7 Days Work | 9304294 |
| 8743 | 36900.37000.37100.37200.38200.50500.64800.998900 | Toilet_Epoxy Tile Grouting | 7d | 2026-11-21 | 2026-11-27 | 8718SS |  | 7 Days Work | 9304304 |
| 8744 | 36900.37000.37100.37200.38200.50500.64800.999000 | Toilet_False ceiling board fixing, CP Sanitary Fixture, Electric Fixture | 21d | 2026-11-28 | 2026-12-18 | 8743 |  | 7 Days Work | 9304314 |
| 8745 | 36900.37000.37100.37200.38200.50600 | **5th Habitable/6th Floor** | 245d | 2026-05-01 | 2026-12-31 |  | start no earlier than 2026-05-01 | 7 Days Work | 9293744 |
| 8746 | 36900.37000.37100.37200.38200.50600.659400 | Post Pour | 7d | 2026-05-01 | 2026-05-07 | 8490 |  | 7 Days Work | 9295884 |
| 8747 | 36900.37000.37100.37200.38200.50600.659500 | MEP Clearance -1 | 5d | 2026-05-08 | 2026-05-12 | 8746 |  | 7 Days Work | 9295894 |
| 8748 | 36900.37000.37100.37200.38200.50600.659600 | Benchmark | 1d | 2026-05-13 | 2026-05-13 | 8747 |  | 7 Days Work | 9295904 |
| 8749 | 36900.37000.37100.37200.38200.50600.659700 | Temporary Railing | 3d | 2026-05-14 | 2026-05-16 | 8748 |  | 7 Days Work | 9295914 |
| 8750 | 36900.37000.37100.37200.38200.50600.659800 | Blockwork | 10d | 2026-05-17 | 2026-05-26 | 8749 |  | 7 Days Work | 9295924 |
| 8751 | 36900.37000.37100.37200.38200.50600.659900 | MEP Clearance -2 | 10d | 2026-05-27 | 2026-06-05 | 8750 |  | 7 Days Work | 9295934 |
| 8752 | 36900.37000.37100.37200.38200.50600.660000 | Gypsum Plaster | 14d | 2026-06-06 | 2026-06-19 | 8751 |  | 7 Days Work | 9295944 |
| 8753 | 36900.37000.37100.37200.38200.50600.660100 | Kitchen Platform | 3d | 2026-06-20 | 2026-06-22 | 8752 |  | 7 Days Work | 9295954 |
| 8754 | 36900.37000.37100.37200.38200.50600.660200 | Kitchen dado | 7d | 2026-06-23 | 2026-06-29 | 8753 |  | 7 Days Work | 9295964 |
| 8755 | 36900.37000.37100.37200.38200.50600.660300 | Fire Fighting | 5d | 2026-06-30 | 2026-07-04 | 8754 |  | 7 Days Work | 9295974 |
| 8756 | 36900.37000.37100.37200.38200.50600.660400 | Anticapilary | 5d | 2026-07-05 | 2026-07-09 | 8755 |  | 7 Days Work | 9295984 |
| 8757 | 36900.37000.37100.37200.38200.50600.660500 | Stone Laying | 10d | 2026-08-12 | 2026-08-21 | 8797 |  | 7 Days Work | 9295994 |
| 8758 | 36900.37000.37100.37200.38200.50600.660600 | Tiles Laying | 7d | 2026-08-12 | 2026-08-18 | 8797 |  | 7 Days Work | 9296004 |
| 8759 | 36900.37000.37100.37200.38200.50600.660700 | 1st cutting/polishing of stone flooring | 7d | 2026-08-19 | 2026-08-25 | 8758 |  | 7 Days Work | 9296014 |
| 8760 | 36900.37000.37100.37200.38200.50600.660800 | Tiles/Stone skirting | 5d | 2026-08-26 | 2026-08-30 | 8759 |  | 7 Days Work | 9296024 |
| 8761 | 36900.37000.37100.37200.38200.50600.660900 | Protechtion sheet | 1d | 2026-08-31 | 2026-08-31 | 8760 |  | 7 Days Work | 9296034 |
| 8762 | 36900.37000.37100.37200.38200.50600.661000 | Installation of Temporary Door | 1d | 2026-09-01 | 2026-09-01 | 8761 |  | 7 Days Work | 9296044 |
| 8763 | 36900.37000.37100.37200.38200.50600.661100 | Fixing of window tracks | 5d | 2026-09-02 | 2026-09-06 | 8762 |  | 7 Days Work | 9296054 |
| 8764 | 36900.37000.37100.37200.38200.50600.661200 | Wire Pulling | 7d | 2026-09-07 | 2026-09-13 | 8763 |  | 7 Days Work | 9296064 |
| 8765 | 36900.37000.37100.37200.38200.50600.661300 | Gypsum Remaining | 5d | 2026-09-14 | 2026-09-18 | 8764 |  | 7 Days Work | 9296074 |
| 8766 | 36900.37000.37100.37200.38200.50600.661400 | Fixing of windoow shutter | 5d | 2026-09-19 | 2026-09-23 | 8765 |  | 7 Days Work | 9296084 |
| 8767 | 36900.37000.37100.37200.38200.50600.661500 | Putty Works - walls & ceiling | 15d | 2026-09-24 | 2026-10-08 | 8766 |  | 7 Days Work | 9296094 |
| 8768 | 36900.37000.37100.37200.38200.50600.661600 | False Ceiling- Framing | 10d | 2026-10-09 | 2026-10-18 | 8767 |  | 7 Days Work | 9296104 |
| 8769 | 36900.37000.37100.37200.38200.50600.661700 | Pre Hung Door | 3d | 2026-10-19 | 2026-10-21 | 8768 |  | 7 Days Work | 9296114 |
| 8770 | 36900.37000.37100.37200.38200.50600.661800 | Protechtion sheet | 2d | 2026-10-22 | 2026-10-23 | 8769 |  | 7 Days Work | 9296124 |
| 8771 | 36900.37000.37100.37200.38200.50600.661900 | Skirting near door | 2d | 2026-10-24 | 2026-10-25 | 8770 |  | 7 Days Work | 9296134 |
| 8772 | 36900.37000.37100.37200.38200.50600.662000 | Electrical Switch box fixing | 14d | 2026-10-26 | 2026-11-08 | 8771 |  | 7 Days Work | 9296144 |
| 8773 | 36900.37000.37100.37200.38200.50600.662100 | Fire Fighting painting | 5d | 2026-11-09 | 2026-11-13 | 8772 |  | 7 Days Work | 9296154 |
| 8774 | 36900.37000.37100.37200.38200.50600.662200 | Protection of all flooring, door & window hardware | 5d | 2026-11-14 | 2026-11-18 | 8773 |  | 7 Days Work | 9296164 |
| 8775 | 36900.37000.37100.37200.38200.50600.662300 | 1st coat primer- ceiling 1st & walls | 14d | 2026-11-19 | 2026-12-02 | 8774 |  | 7 Days Work | 9296174 |
| 8776 | 36900.37000.37100.37200.38200.50600.662400 | Wooden Flooring | 5d | 2026-12-03 | 2026-12-07 | 8775 |  | 7 Days Work | 9296184 |
| 8777 | 36900.37000.37100.37200.38200.50600.662500 | Removing of Temporary Railing & installation of Glass Railing | 5d | 2026-12-03 | 2026-12-07 | 8775 |  | 7 Days Work | 9296194 |
| 8778 | 36900.37000.37100.37200.38200.50600.662600 | Tile Grouting | 7d | 2026-12-03 | 2026-12-09 | 8775 |  | 7 Days Work | 9296204 |
| 8779 | 36900.37000.37100.37200.38200.50600.662700 | False Ceiling | 5d | 2026-12-10 | 2026-12-14 | 8778 |  | 7 Days Work | 9296214 |
| 8780 | 36900.37000.37100.37200.38200.50600.662800 | 2nd coat of primer | 10d | 2026-12-15 | 2026-12-24 | 8779 |  | 7 Days Work | 9296224 |
| 8781 | 36900.37000.37100.37200.38200.50600.662900 | Final cutting/polishing of stone flooring | 7d | 2026-12-25 | 2026-12-31 | 8780 |  | 7 Days Work | 9296234 |

| ID | WBS | Task | Duration | Start | Finish | Predecessors | Constraint | Calendar | Unique_Task_ID |
| --- | --- | --- | --- | --- | --- | --- | --- | --- | --- |
| 8782 | 36900.37000.37100.37200.38200.50600.64900 | **Toilet** | 237d | 2026-05-08 | 2026-12-30 |  | start no earlier than 2026-05-08 | 7 Days Work | 9293954 |
| 8783 | 36900.37000.37100.37200.38200.50600.64900.999100 | Toilet_MEP Clearance -1 | 7d | 2026-05-08 | 2026-05-14 | 8746 |  | 7 Days Work | 9304324 |
| 8784 | 36900.37000.37100.37200.38200.50600.64900.999200 | Toilet_Level Marking | 1d | 2026-05-15 | 2026-05-15 | 8783 |  | 7 Days Work | 9304334 |
| 8785 | 36900.37000.37100.37200.38200.50600.64900.999300 | Toilet_Chasing work for Electrical conduit & concealed plumbing | 5d | 2026-05-16 | 2026-05-20 | 8784 |  | 7 Days Work | 9304344 |
| 8786 | 36900.37000.37100.37200.38200.50600.64900.999400 | Toilet_Plumbing work 1st fix | 5d | 2026-05-21 | 2026-05-25 | 8785 |  | 7 Days Work | 9304354 |
| 8787 | 36900.37000.37100.37200.38200.50600.64900.999500 | Toilet_Sleeve/Bore Packing | 5d | 2026-05-26 | 2026-05-30 | 8786 |  | 7 Days Work | 9304364 |
| 8788 | 36900.37000.37100.37200.38200.50600.64900.999600 | Toilet_Waterproofing | 10d | 2026-05-31 | 2026-06-09 | 8787 |  | 7 Days Work | 9304374 |
| 8789 | 36900.37000.37100.37200.38200.50600.64900.999700 | Toilet_Screed | 1d | 2026-06-10 | 2026-06-10 | 8788 |  | 7 Days Work | 9304384 |
| 8790 | 36900.37000.37100.37200.38200.50600.64900.999800 | Toilet_Plumbing 2nd fix | 5d | 2026-06-11 | 2026-06-15 | 8789 |  | 7 Days Work | 9304394 |
| 8791 | 36900.37000.37100.37200.38200.50600.64900.999900 | Toilet_Ledge wall | 5d | 2026-06-16 | 2026-06-20 | 8790 |  | 7 Days Work | 9304404 |
| 8792 | 36900.37000.37100.37200.38200.50600.64900.1000000 | Toilet_Cement Plaster | 5d | 2026-06-21 | 2026-06-25 | 8791 |  | 7 Days Work | 9304414 |
| 8793 | 36900.37000.37100.37200.38200.50600.64900.1000100 | Toilet_Door Frame | 1d | 2026-06-26 | 2026-06-26 | 8792 |  | 7 Days Work | 9304424 |
| 8794 | 36900.37000.37100.37200.38200.50600.64900.1000200 | Toilet_Wash basin & Couter | 3d | 2026-06-27 | 2026-06-29 | 8793 |  | 7 Days Work | 9304434 |
| 8795 | 36900.37000.37100.37200.38200.50600.64900.1000300 | Toilet_Wall dado | 20d | 2026-06-30 | 2026-07-19 | 8794 |  | 7 Days Work | 9304444 |
| 8796 | 36900.37000.37100.37200.38200.50600.64900.1000400 | Toilet_Granite Work-Ledge wall top | 3d | 2026-07-20 | 2026-07-22 | 8795 |  | 7 Days Work | 9304454 |
| 8797 | 36900.37000.37100.37200.38200.50600.64900.1000500 | Toilet_Floor Tilling work | 20d | 2026-07-23 | 2026-08-11 | 8796 |  | 7 Days Work | 9304464 |
| 8798 | 36900.37000.37100.37200.38200.50600.64900.1000600 | Toilet_1st row of dado | 5d | 2026-08-12 | 2026-08-16 | 8797 |  | 7 Days Work | 9304474 |
| 8799 | 36900.37000.37100.37200.38200.50600.64900.1000700 | Toilet_Window Fixing | 14d | 2026-08-17 | 2026-08-30 | 8798 |  | 7 Days Work | 9304484 |
| 8800 | 36900.37000.37100.37200.38200.50600.64900.1000800 | Toilet_Services above False ceiling | 21d | 2026-08-31 | 2026-09-20 | 8799 |  | 7 Days Work | 9304494 |
| 8801 | 36900.37000.37100.37200.38200.50600.64900.1000900 | Toilet_False Ceiling framing | 12d | 2026-09-21 | 2026-10-02 | 8800 |  | 7 Days Work | 9304504 |
| 8802 | 36900.37000.37100.37200.38200.50600.64900.1001000 | Toilet_Door Frame | 5d | 2026-10-03 | 2026-10-07 | 8801 |  | 7 Days Work | 9304514 |
| 8803 | 36900.37000.37100.37200.38200.50600.64900.1001100 | Toilet_Epoxy Tile Grouting | 7d | 2026-12-03 | 2026-12-09 | 8778SS |  | 7 Days Work | 9304524 |
| 8804 | 36900.37000.37100.37200.38200.50600.64900.1001200 | Toilet_False ceiling board fixing, CP Sanitary Fixture, Electric Fixture | 21d | 2026-12-10 | 2026-12-30 | 8803 |  | 7 Days Work | 9304534 |
| 8805 | 36900.37000.37100.37200.38200.50700 | **6th Habitable/7th Floor** | 245d | 2026-05-13 | 2027-01-12 |  | start no earlier than 2026-05-13 | 7 Days Work | 9293754 |
| 8806 | 36900.37000.37100.37200.38200.50700.663000 | Post Pour | 7d | 2026-05-13 | 2026-05-19 | 8491 |  | 7 Days Work | 9296244 |
| 8807 | 36900.37000.37100.37200.38200.50700.663100 | MEP Clearance -1 | 5d | 2026-05-20 | 2026-05-24 | 8806 |  | 7 Days Work | 9296254 |
| 8808 | 36900.37000.37100.37200.38200.50700.663200 | Benchmark | 1d | 2026-05-25 | 2026-05-25 | 8807 |  | 7 Days Work | 9296264 |
| 8809 | 36900.37000.37100.37200.38200.50700.663300 | Temporary Railing | 3d | 2026-05-26 | 2026-05-28 | 8808 |  | 7 Days Work | 9296274 |
| 8810 | 36900.37000.37100.37200.38200.50700.663400 | Blockwork | 10d | 2026-05-29 | 2026-06-07 | 8809 |  | 7 Days Work | 9296284 |
| 8811 | 36900.37000.37100.37200.38200.50700.663500 | MEP Clearance -2 | 10d | 2026-06-08 | 2026-06-17 | 8810 |  | 7 Days Work | 9296294 |
| 8812 | 36900.37000.37100.37200.38200.50700.663600 | Gypsum Plaster | 14d | 2026-06-18 | 2026-07-01 | 8811 |  | 7 Days Work | 9296304 |
| 8813 | 36900.37000.37100.37200.38200.50700.663700 | Kitchen Platform | 3d | 2026-07-02 | 2026-07-04 | 8812 |  | 7 Days Work | 9296314 |
| 8814 | 36900.37000.37100.37200.38200.50700.663800 | Kitchen dado | 7d | 2026-07-05 | 2026-07-11 | 8813 |  | 7 Days Work | 9296324 |
| 8815 | 36900.37000.37100.37200.38200.50700.663900 | Fire Fighting | 5d | 2026-07-12 | 2026-07-16 | 8814 |  | 7 Days Work | 9296334 |
| 8816 | 36900.37000.37100.37200.38200.50700.664000 | Anticapilary | 5d | 2026-07-17 | 2026-07-21 | 8815 |  | 7 Days Work | 9296344 |
| 8817 | 36900.37000.37100.37200.38200.50700.664100 | Stone Laying | 10d | 2026-08-24 | 2026-09-02 | 8857 |  | 7 Days Work | 9296354 |
| 8818 | 36900.37000.37100.37200.38200.50700.664200 | Tiles Laying | 7d | 2026-08-24 | 2026-08-30 | 8857 |  | 7 Days Work | 9296364 |
| 8819 | 36900.37000.37100.37200.38200.50700.664300 | 1st cutting/polishing of stone flooring | 7d | 2026-08-31 | 2026-09-06 | 8818 |  | 7 Days Work | 9296374 |
| 8820 | 36900.37000.37100.37200.38200.50700.664400 | Tiles/Stone skirting | 5d | 2026-09-07 | 2026-09-11 | 8819 |  | 7 Days Work | 9296384 |
| 8821 | 36900.37000.37100.37200.38200.50700.664500 | Protechtion sheet | 1d | 2026-09-12 | 2026-09-12 | 8820 |  | 7 Days Work | 9296394 |
| 8822 | 36900.37000.37100.37200.38200.50700.664600 | Installation of Temporary Door | 1d | 2026-09-13 | 2026-09-13 | 8821 |  | 7 Days Work | 9296404 |
| 8823 | 36900.37000.37100.37200.38200.50700.664700 | Fixing of window tracks | 5d | 2026-09-14 | 2026-09-18 | 8822 |  | 7 Days Work | 9296414 |
| 8824 | 36900.37000.37100.37200.38200.50700.664800 | Wire Pulling | 7d | 2026-09-19 | 2026-09-25 | 8823 |  | 7 Days Work | 9296424 |
| 8825 | 36900.37000.37100.37200.38200.50700.664900 | Gypsum Remaining | 5d | 2026-09-26 | 2026-09-30 | 8824 |  | 7 Days Work | 9296434 |
| 8826 | 36900.37000.37100.37200.38200.50700.665000 | Fixing of windoow shutter | 5d | 2026-10-01 | 2026-10-05 | 8825 |  | 7 Days Work | 9296444 |
| 8827 | 36900.37000.37100.37200.38200.50700.665100 | Putty Works - walls & ceiling | 15d | 2026-10-06 | 2026-10-20 | 8826 |  | 7 Days Work | 9296454 |
| 8828 | 36900.37000.37100.37200.38200.50700.665200 | False Ceiling- Framing | 10d | 2026-10-21 | 2026-10-30 | 8827 |  | 7 Days Work | 9296464 |
| 8829 | 36900.37000.37100.37200.38200.50700.665300 | Pre Hung Door | 3d | 2026-10-31 | 2026-11-02 | 8828 |  | 7 Days Work | 9296474 |
| 8830 | 36900.37000.37100.37200.38200.50700.665400 | Protechtion sheet | 2d | 2026-11-03 | 2026-11-04 | 8829 |  | 7 Days Work | 9296484 |
| 8831 | 36900.37000.37100.37200.38200.50700.665500 | Skirting near door | 2d | 2026-11-05 | 2026-11-06 | 8830 |  | 7 Days Work | 9296494 |
| 8832 | 36900.37000.37100.37200.38200.50700.665600 | Electrical Switch box fixing | 14d | 2026-11-07 | 2026-11-20 | 8831 |  | 7 Days Work | 9296504 |
| 8833 | 36900.37000.37100.37200.38200.50700.665700 | Fire Fighting painting | 5d | 2026-11-21 | 2026-11-25 | 8832 |  | 7 Days Work | 9296514 |
| 8834 | 36900.37000.37100.37200.38200.50700.665800 | Protection of all flooring, door & window hardware | 5d | 2026-11-26 | 2026-11-30 | 8833 |  | 7 Days Work | 9296524 |
| 8835 | 36900.37000.37100.37200.38200.50700.665900 | 1st coat primer- ceiling 1st & walls | 14d | 2026-12-01 | 2026-12-14 | 8834 |  | 7 Days Work | 9296534 |
| 8836 | 36900.37000.37100.37200.38200.50700.666000 | Wooden Flooring | 5d | 2026-12-15 | 2026-12-19 | 8835 |  | 7 Days Work | 9296544 |
| 8837 | 36900.37000.37100.37200.38200.50700.666100 | Removing of Temporary Railing & installation of Glass Railing | 5d | 2026-12-15 | 2026-12-19 | 8835 |  | 7 Days Work | 9296554 |
| 8838 | 36900.37000.37100.37200.38200.50700.666200 | Tile Grouting | 7d | 2026-12-15 | 2026-12-21 | 8835 |  | 7 Days Work | 9296564 |
| 8839 | 36900.37000.37100.37200.38200.50700.666300 | False Ceiling | 5d | 2026-12-22 | 2026-12-26 | 8838 |  | 7 Days Work | 9296574 |
| 8840 | 36900.37000.37100.37200.38200.50700.666400 | 2nd coat of primer | 10d | 2026-12-27 | 2027-01-05 | 8839 |  | 7 Days Work | 9296584 |
| 8841 | 36900.37000.37100.37200.38200.50700.666500 | Final cutting/polishing of stone flooring | 7d | 2027-01-06 | 2027-01-12 | 8840 |  | 7 Days Work | 9296594 |

| ID | WBS | Task | Duration | Start | Finish | Predecessors | Constraint | Calendar | Unique_Task_ID |
| --- | --- | --- | --- | --- | --- | --- | --- | --- | --- |
| 8842 | 36900.37000.37100.37200.38200.50700.65000 | **Toilet** | 237d | 2026-05-20 | 2027-01-11 |  | start no earlier than 2026-05-20 | 7 Days Work | 9293964 |
| 8843 | 36900.37000.37100.37200.38200.50700.65000.1001300 | Toilet_MEP Clearance -1 | 7d | 2026-05-20 | 2026-05-26 | 8806 |  | 7 Days Work | 9304544 |
| 8844 | 36900.37000.37100.37200.38200.50700.65000.1001400 | Toilet_Level Marking | 1d | 2026-05-27 | 2026-05-27 | 8843 |  | 7 Days Work | 9304554 |
| 8845 | 36900.37000.37100.37200.38200.50700.65000.1001500 | Toilet_Chasing work for Electrical conduit & concealed plumbing | 5d | 2026-05-28 | 2026-06-01 | 8844 |  | 7 Days Work | 9304564 |
| 8846 | 36900.37000.37100.37200.38200.50700.65000.1001600 | Toilet_Plumbing work 1st fix | 5d | 2026-06-02 | 2026-06-06 | 8845 |  | 7 Days Work | 9304574 |
| 8847 | 36900.37000.37100.37200.38200.50700.65000.1001700 | Toilet_Sleeve/Bore Packing | 5d | 2026-06-07 | 2026-06-11 | 8846 |  | 7 Days Work | 9304584 |
| 8848 | 36900.37000.37100.37200.38200.50700.65000.1001800 | Toilet_Waterproofing | 10d | 2026-06-12 | 2026-06-21 | 8847 |  | 7 Days Work | 9304594 |
| 8849 | 36900.37000.37100.37200.38200.50700.65000.1001900 | Toilet_Screed | 1d | 2026-06-22 | 2026-06-22 | 8848 |  | 7 Days Work | 9304604 |
| 8850 | 36900.37000.37100.37200.38200.50700.65000.1002000 | Toilet_Plumbing 2nd fix | 5d | 2026-06-23 | 2026-06-27 | 8849 |  | 7 Days Work | 9304614 |
| 8851 | 36900.37000.37100.37200.38200.50700.65000.1002100 | Toilet_Ledge wall | 5d | 2026-06-28 | 2026-07-02 | 8850 |  | 7 Days Work | 9304624 |
| 8852 | 36900.37000.37100.37200.38200.50700.65000.1002200 | Toilet_Cement Plaster | 5d | 2026-07-03 | 2026-07-07 | 8851 |  | 7 Days Work | 9304634 |
| 8853 | 36900.37000.37100.37200.38200.50700.65000.1002300 | Toilet_Door Frame | 1d | 2026-07-08 | 2026-07-08 | 8852 |  | 7 Days Work | 9304644 |
| 8854 | 36900.37000.37100.37200.38200.50700.65000.1002400 | Toilet_Wash basin & Couter | 3d | 2026-07-09 | 2026-07-11 | 8853 |  | 7 Days Work | 9304654 |
| 8855 | 36900.37000.37100.37200.38200.50700.65000.1002500 | Toilet_Wall dado | 20d | 2026-07-12 | 2026-07-31 | 8854 |  | 7 Days Work | 9304664 |
| 8856 | 36900.37000.37100.37200.38200.50700.65000.1002600 | Toilet_Granite Work-Ledge wall top | 3d | 2026-08-01 | 2026-08-03 | 8855 |  | 7 Days Work | 9304674 |
| 8857 | 36900.37000.37100.37200.38200.50700.65000.1002700 | Toilet_Floor Tilling work | 20d | 2026-08-04 | 2026-08-23 | 8856 |  | 7 Days Work | 9304684 |
| 8858 | 36900.37000.37100.37200.38200.50700.65000.1002800 | Toilet_1st row of dado | 5d | 2026-08-24 | 2026-08-28 | 8857 |  | 7 Days Work | 9304694 |
| 8859 | 36900.37000.37100.37200.38200.50700.65000.1002900 | Toilet_Window Fixing | 14d | 2026-08-29 | 2026-09-11 | 8858 |  | 7 Days Work | 9304704 |
| 8860 | 36900.37000.37100.37200.38200.50700.65000.1003000 | Toilet_Services above False ceiling | 21d | 2026-09-12 | 2026-10-02 | 8859 |  | 7 Days Work | 9304714 |
| 8861 | 36900.37000.37100.37200.38200.50700.65000.1003100 | Toilet_False Ceiling framing | 12d | 2026-10-03 | 2026-10-14 | 8860 |  | 7 Days Work | 9304724 |
| 8862 | 36900.37000.37100.37200.38200.50700.65000.1003200 | Toilet_Door Frame | 5d | 2026-10-15 | 2026-10-19 | 8861 |  | 7 Days Work | 9304734 |
| 8863 | 36900.37000.37100.37200.38200.50700.65000.1003300 | Toilet_Epoxy Tile Grouting | 7d | 2026-12-15 | 2026-12-21 | 8838SS |  | 7 Days Work | 9304744 |
| 8864 | 36900.37000.37100.37200.38200.50700.65000.1003400 | Toilet_False ceiling board fixing, CP Sanitary Fixture, Electric Fixture | 21d | 2026-12-22 | 2027-01-11 | 8863 |  | 7 Days Work | 9304754 |
| 8865 | 36900.37000.37100.37200.38200.50800 | **7th Habitable/8th Floor** | 245d | 2026-05-25 | 2027-01-24 |  | start no earlier than 2026-05-25 | 7 Days Work | 9293764 |
| 8866 | 36900.37000.37100.37200.38200.50800.666600 | Post Pour | 7d | 2026-05-25 | 2026-05-31 | 8492 |  | 7 Days Work | 9296604 |
| 8867 | 36900.37000.37100.37200.38200.50800.666700 | MEP Clearance -1 | 5d | 2026-06-01 | 2026-06-05 | 8866 |  | 7 Days Work | 9296614 |
| 8868 | 36900.37000.37100.37200.38200.50800.666800 | Benchmark | 1d | 2026-06-06 | 2026-06-06 | 8867 |  | 7 Days Work | 9296624 |
| 8869 | 36900.37000.37100.37200.38200.50800.666900 | Temporary Railing | 3d | 2026-06-07 | 2026-06-09 | 8868 |  | 7 Days Work | 9296634 |
| 8870 | 36900.37000.37100.37200.38200.50800.667000 | Blockwork | 10d | 2026-06-10 | 2026-06-19 | 8869 |  | 7 Days Work | 9296644 |
| 8871 | 36900.37000.37100.37200.38200.50800.667100 | MEP Clearance -2 | 10d | 2026-06-20 | 2026-06-29 | 8870 |  | 7 Days Work | 9296654 |
| 8872 | 36900.37000.37100.37200.38200.50800.667200 | Gypsum Plaster | 14d | 2026-06-30 | 2026-07-13 | 8871 |  | 7 Days Work | 9296664 |
| 8873 | 36900.37000.37100.37200.38200.50800.667300 | Kitchen Platform | 3d | 2026-07-14 | 2026-07-16 | 8872 |  | 7 Days Work | 9296674 |
| 8874 | 36900.37000.37100.37200.38200.50800.667400 | Kitchen dado | 7d | 2026-07-17 | 2026-07-23 | 8873 |  | 7 Days Work | 9296684 |
| 8875 | 36900.37000.37100.37200.38200.50800.667500 | Fire Fighting | 5d | 2026-07-24 | 2026-07-28 | 8874 |  | 7 Days Work | 9296694 |
| 8876 | 36900.37000.37100.37200.38200.50800.667600 | Anticapilary | 5d | 2026-07-29 | 2026-08-02 | 8875 |  | 7 Days Work | 9296704 |
| 8877 | 36900.37000.37100.37200.38200.50800.667700 | Stone Laying | 10d | 2026-09-05 | 2026-09-14 | 8917 |  | 7 Days Work | 9296714 |
| 8878 | 36900.37000.37100.37200.38200.50800.667800 | Tiles Laying | 7d | 2026-09-05 | 2026-09-11 | 8917 |  | 7 Days Work | 9296724 |
| 8879 | 36900.37000.37100.37200.38200.50800.667900 | 1st cutting/polishing of stone flooring | 7d | 2026-09-12 | 2026-09-18 | 8878 |  | 7 Days Work | 9296734 |
| 8880 | 36900.37000.37100.37200.38200.50800.668000 | Tiles/Stone skirting | 5d | 2026-09-19 | 2026-09-23 | 8879 |  | 7 Days Work | 9296744 |
| 8881 | 36900.37000.37100.37200.38200.50800.668100 | Protechtion sheet | 1d | 2026-09-24 | 2026-09-24 | 8880 |  | 7 Days Work | 9296754 |
| 8882 | 36900.37000.37100.37200.38200.50800.668200 | Installation of Temporary Door | 1d | 2026-09-25 | 2026-09-25 | 8881 |  | 7 Days Work | 9296764 |
| 8883 | 36900.37000.37100.37200.38200.50800.668300 | Fixing of window tracks | 5d | 2026-09-26 | 2026-09-30 | 8882 |  | 7 Days Work | 9296774 |
| 8884 | 36900.37000.37100.37200.38200.50800.668400 | Wire Pulling | 7d | 2026-10-01 | 2026-10-07 | 8883 |  | 7 Days Work | 9296784 |
| 8885 | 36900.37000.37100.37200.38200.50800.668500 | Gypsum Remaining | 5d | 2026-10-08 | 2026-10-12 | 8884 |  | 7 Days Work | 9296794 |
| 8886 | 36900.37000.37100.37200.38200.50800.668600 | Fixing of windoow shutter | 5d | 2026-10-13 | 2026-10-17 | 8885 |  | 7 Days Work | 9296804 |
| 8887 | 36900.37000.37100.37200.38200.50800.668700 | Putty Works - walls & ceiling | 15d | 2026-10-18 | 2026-11-01 | 8886 |  | 7 Days Work | 9296814 |
| 8888 | 36900.37000.37100.37200.38200.50800.668800 | False Ceiling- Framing | 10d | 2026-11-02 | 2026-11-11 | 8887 |  | 7 Days Work | 9296824 |
| 8889 | 36900.37000.37100.37200.38200.50800.668900 | Pre Hung Door | 3d | 2026-11-12 | 2026-11-14 | 8888 |  | 7 Days Work | 9296834 |
| 8890 | 36900.37000.37100.37200.38200.50800.669000 | Protechtion sheet | 2d | 2026-11-15 | 2026-11-16 | 8889 |  | 7 Days Work | 9296844 |
| 8891 | 36900.37000.37100.37200.38200.50800.669100 | Skirting near door | 2d | 2026-11-17 | 2026-11-18 | 8890 |  | 7 Days Work | 9296854 |
| 8892 | 36900.37000.37100.37200.38200.50800.669200 | Electrical Switch box fixing | 14d | 2026-11-19 | 2026-12-02 | 8891 |  | 7 Days Work | 9296864 |
| 8893 | 36900.37000.37100.37200.38200.50800.669300 | Fire Fighting painting | 5d | 2026-12-03 | 2026-12-07 | 8892 |  | 7 Days Work | 9296874 |
| 8894 | 36900.37000.37100.37200.38200.50800.669400 | Protection of all flooring, door & window hardware | 5d | 2026-12-08 | 2026-12-12 | 8893 |  | 7 Days Work | 9296884 |
| 8895 | 36900.37000.37100.37200.38200.50800.669500 | 1st coat primer- ceiling 1st & walls | 14d | 2026-12-13 | 2026-12-26 | 8894 |  | 7 Days Work | 9296894 |
| 8896 | 36900.37000.37100.37200.38200.50800.669600 | Wooden Flooring | 5d | 2026-12-27 | 2026-12-31 | 8895 |  | 7 Days Work | 9296904 |
| 8897 | 36900.37000.37100.37200.38200.50800.669700 | Removing of Temporary Railing & installation of Glass Railing | 5d | 2026-12-27 | 2026-12-31 | 8895 |  | 7 Days Work | 9296914 |
| 8898 | 36900.37000.37100.37200.38200.50800.669800 | Tile Grouting | 7d | 2026-12-27 | 2027-01-02 | 8895 |  | 7 Days Work | 9296924 |
| 8899 | 36900.37000.37100.37200.38200.50800.669900 | False Ceiling | 5d | 2027-01-03 | 2027-01-07 | 8898 |  | 7 Days Work | 9296934 |
| 8900 | 36900.37000.37100.37200.38200.50800.670000 | 2nd coat of primer | 10d | 2027-01-08 | 2027-01-17 | 8899 |  | 7 Days Work | 9296944 |
| 8901 | 36900.37000.37100.37200.38200.50800.670100 | Final cutting/polishing of stone flooring | 7d | 2027-01-18 | 2027-01-24 | 8900 |  | 7 Days Work | 9296954 |

| ID | WBS | Task | Duration | Start | Finish | Predecessors | Constraint | Calendar | Unique_Task_ID |
| --- | --- | --- | --- | --- | --- | --- | --- | --- | --- |
| 8902 | 36900.37000.37100.37200.38200.50800.65100 | **Toilet** | 237d | 2026-06-01 | 2027-01-23 |  | start no earlier than 2026-06-01 | 7 Days Work | 9293974 |
| 8903 | 36900.37000.37100.37200.38200.50800.65100.1003500 | Toilet_MEP Clearance -1 | 7d | 2026-06-01 | 2026-06-07 | 8866 |  | 7 Days Work | 9304764 |
| 8904 | 36900.37000.37100.37200.38200.50800.65100.1003600 | Toilet_Level Marking | 1d | 2026-06-08 | 2026-06-08 | 8903 |  | 7 Days Work | 9304774 |
| 8905 | 36900.37000.37100.37200.38200.50800.65100.1003700 | Toilet_Chasing work for Electrical conduit & concealed plumbing | 5d | 2026-06-09 | 2026-06-13 | 8904 |  | 7 Days Work | 9304784 |
| 8906 | 36900.37000.37100.37200.38200.50800.65100.1003800 | Toilet_Plumbing work 1st fix | 5d | 2026-06-14 | 2026-06-18 | 8905 |  | 7 Days Work | 9304794 |
| 8907 | 36900.37000.37100.37200.38200.50800.65100.1003900 | Toilet_Sleeve/Bore Packing | 5d | 2026-06-19 | 2026-06-23 | 8906 |  | 7 Days Work | 9304804 |
| 8908 | 36900.37000.37100.37200.38200.50800.65100.1004000 | Toilet_Waterproofing | 10d | 2026-06-24 | 2026-07-03 | 8907 |  | 7 Days Work | 9304814 |
| 8909 | 36900.37000.37100.37200.38200.50800.65100.1004100 | Toilet_Screed | 1d | 2026-07-04 | 2026-07-04 | 8908 |  | 7 Days Work | 9304824 |
| 8910 | 36900.37000.37100.37200.38200.50800.65100.1004200 | Toilet_Plumbing 2nd fix | 5d | 2026-07-05 | 2026-07-09 | 8909 |  | 7 Days Work | 9304834 |
| 8911 | 36900.37000.37100.37200.38200.50800.65100.1004300 | Toilet_Ledge wall | 5d | 2026-07-10 | 2026-07-14 | 8910 |  | 7 Days Work | 9304844 |
| 8912 | 36900.37000.37100.37200.38200.50800.65100.1004400 | Toilet_Cement Plaster | 5d | 2026-07-15 | 2026-07-19 | 8911 |  | 7 Days Work | 9304854 |
| 8913 | 36900.37000.37100.37200.38200.50800.65100.1004500 | Toilet_Door Frame | 1d | 2026-07-20 | 2026-07-20 | 8912 |  | 7 Days Work | 9304864 |
| 8914 | 36900.37000.37100.37200.38200.50800.65100.1004600 | Toilet_Wash basin & Couter | 3d | 2026-07-21 | 2026-07-23 | 8913 |  | 7 Days Work | 9304874 |
| 8915 | 36900.37000.37100.37200.38200.50800.65100.1004700 | Toilet_Wall dado | 20d | 2026-07-24 | 2026-08-12 | 8914 |  | 7 Days Work | 9304884 |
| 8916 | 36900.37000.37100.37200.38200.50800.65100.1004800 | Toilet_Granite Work-Ledge wall top | 3d | 2026-08-13 | 2026-08-15 | 8915 |  | 7 Days Work | 9304894 |
| 8917 | 36900.37000.37100.37200.38200.50800.65100.1004900 | Toilet_Floor Tilling work | 20d | 2026-08-16 | 2026-09-04 | 8916 |  | 7 Days Work | 9304904 |
| 8918 | 36900.37000.37100.37200.38200.50800.65100.1005000 | Toilet_1st row of dado | 5d | 2026-09-05 | 2026-09-09 | 8917 |  | 7 Days Work | 9304914 |
| 8919 | 36900.37000.37100.37200.38200.50800.65100.1005100 | Toilet_Window Fixing | 14d | 2026-09-10 | 2026-09-23 | 8918 |  | 7 Days Work | 9304924 |
| 8920 | 36900.37000.37100.37200.38200.50800.65100.1005200 | Toilet_Services above False ceiling | 21d | 2026-09-24 | 2026-10-14 | 8919 |  | 7 Days Work | 9304934 |
| 8921 | 36900.37000.37100.37200.38200.50800.65100.1005300 | Toilet_False Ceiling framing | 12d | 2026-10-15 | 2026-10-26 | 8920 |  | 7 Days Work | 9304944 |
| 8922 | 36900.37000.37100.37200.38200.50800.65100.1005400 | Toilet_Door Frame | 5d | 2026-10-27 | 2026-10-31 | 8921 |  | 7 Days Work | 9304954 |
| 8923 | 36900.37000.37100.37200.38200.50800.65100.1005500 | Toilet_Epoxy Tile Grouting | 7d | 2026-12-27 | 2027-01-02 | 8898SS |  | 7 Days Work | 9304964 |
| 8924 | 36900.37000.37100.37200.38200.50800.65100.1005600 | Toilet_False ceiling board fixing, CP Sanitary Fixture, Electric Fixture | 21d | 2027-01-03 | 2027-01-23 | 8923 |  | 7 Days Work | 9304974 |
| 8925 | 36900.37000.37100.37200.38200.50900 | **8th Habitable/9th Floor** | 245d | 2026-06-06 | 2027-02-05 |  | start no earlier than 2026-06-06 | 7 Days Work | 9293774 |
| 8926 | 36900.37000.37100.37200.38200.50900.670200 | Post Pour | 7d | 2026-06-06 | 2026-06-12 | 8493 |  | 7 Days Work | 9296964 |
| 8927 | 36900.37000.37100.37200.38200.50900.670300 | MEP Clearance -1 | 5d | 2026-06-13 | 2026-06-17 | 8926 |  | 7 Days Work | 9296974 |
| 8928 | 36900.37000.37100.37200.38200.50900.670400 | Benchmark | 1d | 2026-06-18 | 2026-06-18 | 8927 |  | 7 Days Work | 9296984 |
| 8929 | 36900.37000.37100.37200.38200.50900.670500 | Temporary Railing | 3d | 2026-06-19 | 2026-06-21 | 8928 |  | 7 Days Work | 9296994 |
| 8930 | 36900.37000.37100.37200.38200.50900.670600 | Blockwork | 10d | 2026-06-22 | 2026-07-01 | 8929 |  | 7 Days Work | 9297004 |
| 8931 | 36900.37000.37100.37200.38200.50900.670700 | MEP Clearance -2 | 10d | 2026-07-02 | 2026-07-11 | 8930 |  | 7 Days Work | 9297014 |
| 8932 | 36900.37000.37100.37200.38200.50900.670800 | Gypsum Plaster | 14d | 2026-07-12 | 2026-07-25 | 8931 |  | 7 Days Work | 9297024 |
| 8933 | 36900.37000.37100.37200.38200.50900.670900 | Kitchen Platform | 3d | 2026-07-26 | 2026-07-28 | 8932 |  | 7 Days Work | 9297034 |
| 8934 | 36900.37000.37100.37200.38200.50900.671000 | Kitchen dado | 7d | 2026-07-29 | 2026-08-04 | 8933 |  | 7 Days Work | 9297044 |
| 8935 | 36900.37000.37100.37200.38200.50900.671100 | Fire Fighting | 5d | 2026-08-05 | 2026-08-09 | 8934 |  | 7 Days Work | 9297054 |
| 8936 | 36900.37000.37100.37200.38200.50900.671200 | Anticapilary | 5d | 2026-08-10 | 2026-08-14 | 8935 |  | 7 Days Work | 9297064 |
| 8937 | 36900.37000.37100.37200.38200.50900.671300 | Stone Laying | 10d | 2026-09-17 | 2026-09-26 | 8977 |  | 7 Days Work | 9297074 |
| 8938 | 36900.37000.37100.37200.38200.50900.671400 | Tiles Laying | 7d | 2026-09-17 | 2026-09-23 | 8977 |  | 7 Days Work | 9297084 |
| 8939 | 36900.37000.37100.37200.38200.50900.671500 | 1st cutting/polishing of stone flooring | 7d | 2026-09-24 | 2026-09-30 | 8938 |  | 7 Days Work | 9297094 |
| 8940 | 36900.37000.37100.37200.38200.50900.671600 | Tiles/Stone skirting | 5d | 2026-10-01 | 2026-10-05 | 8939 |  | 7 Days Work | 9297104 |
| 8941 | 36900.37000.37100.37200.38200.50900.671700 | Protechtion sheet | 1d | 2026-10-06 | 2026-10-06 | 8940 |  | 7 Days Work | 9297114 |
| 8942 | 36900.37000.37100.37200.38200.50900.671800 | Installation of Temporary Door | 1d | 2026-10-07 | 2026-10-07 | 8941 |  | 7 Days Work | 9297124 |
| 8943 | 36900.37000.37100.37200.38200.50900.671900 | Fixing of window tracks | 5d | 2026-10-08 | 2026-10-12 | 8942 |  | 7 Days Work | 9297134 |
| 8944 | 36900.37000.37100.37200.38200.50900.672000 | Wire Pulling | 7d | 2026-10-13 | 2026-10-19 | 8943 |  | 7 Days Work | 9297144 |
| 8945 | 36900.37000.37100.37200.38200.50900.672100 | Gypsum Remaining | 5d | 2026-10-20 | 2026-10-24 | 8944 |  | 7 Days Work | 9297154 |
| 8946 | 36900.37000.37100.37200.38200.50900.672200 | Fixing of windoow shutter | 5d | 2026-10-25 | 2026-10-29 | 8945 |  | 7 Days Work | 9297164 |
| 8947 | 36900.37000.37100.37200.38200.50900.672300 | Putty Works - walls & ceiling | 15d | 2026-10-30 | 2026-11-13 | 8946 |  | 7 Days Work | 9297174 |
| 8948 | 36900.37000.37100.37200.38200.50900.672400 | False Ceiling- Framing | 10d | 2026-11-14 | 2026-11-23 | 8947 |  | 7 Days Work | 9297184 |
| 8949 | 36900.37000.37100.37200.38200.50900.672500 | Pre Hung Door | 3d | 2026-11-24 | 2026-11-26 | 8948 |  | 7 Days Work | 9297194 |
| 8950 | 36900.37000.37100.37200.38200.50900.672600 | Protechtion sheet | 2d | 2026-11-27 | 2026-11-28 | 8949 |  | 7 Days Work | 9297204 |
| 8951 | 36900.37000.37100.37200.38200.50900.672700 | Skirting near door | 2d | 2026-11-29 | 2026-11-30 | 8950 |  | 7 Days Work | 9297214 |
| 8952 | 36900.37000.37100.37200.38200.50900.672800 | Electrical Switch box fixing | 14d | 2026-12-01 | 2026-12-14 | 8951 |  | 7 Days Work | 9297224 |
| 8953 | 36900.37000.37100.37200.38200.50900.672900 | Fire Fighting painting | 5d | 2026-12-15 | 2026-12-19 | 8952 |  | 7 Days Work | 9297234 |
| 8954 | 36900.37000.37100.37200.38200.50900.673000 | Protection of all flooring, door & window hardware | 5d | 2026-12-20 | 2026-12-24 | 8953 |  | 7 Days Work | 9297244 |
| 8955 | 36900.37000.37100.37200.38200.50900.673100 | 1st coat primer- ceiling 1st & walls | 14d | 2026-12-25 | 2027-01-07 | 8954 |  | 7 Days Work | 9297254 |
| 8956 | 36900.37000.37100.37200.38200.50900.673200 | Wooden Flooring | 5d | 2027-01-08 | 2027-01-12 | 8955 |  | 7 Days Work | 9297264 |
| 8957 | 36900.37000.37100.37200.38200.50900.673300 | Removing of Temporary Railing & installation of Glass Railing | 5d | 2027-01-08 | 2027-01-12 | 8955 |  | 7 Days Work | 9297274 |
| 8958 | 36900.37000.37100.37200.38200.50900.673400 | Tile Grouting | 7d | 2027-01-08 | 2027-01-14 | 8955 |  | 7 Days Work | 9297284 |
| 8959 | 36900.37000.37100.37200.38200.50900.673500 | False Ceiling | 5d | 2027-01-15 | 2027-01-19 | 8958 |  | 7 Days Work | 9297294 |
| 8960 | 36900.37000.37100.37200.38200.50900.673600 | 2nd coat of primer | 10d | 2027-01-20 | 2027-01-29 | 8959 |  | 7 Days Work | 9297304 |
| 8961 | 36900.37000.37100.37200.38200.50900.673700 | Final cutting/polishing of stone flooring | 7d | 2027-01-30 | 2027-02-05 | 8960 |  | 7 Days Work | 9297314 |

| ID | WBS | Task | Duration | Start | Finish | Predecessors | Constraint | Calendar | Unique_Task_ID |
| --- | --- | --- | --- | --- | --- | --- | --- | --- | --- |
| 8962 | 36900.37000.37100.37200.38200.50900.65200 | **Toilet** | 237d | 2026-06-13 | 2027-02-04 |  | start no earlier than 2026-06-13 | 7 Days Work | 9293984 |
| 8963 | 36900.37000.37100.37200.38200.50900.65200.1005700 | Toilet_MEP Clearance -1 | 7d | 2026-06-13 | 2026-06-19 | 8926 |  | 7 Days Work | 9304984 |
| 8964 | 36900.37000.37100.37200.38200.50900.65200.1005800 | Toilet_Level Marking | 1d | 2026-06-20 | 2026-06-20 | 8963 |  | 7 Days Work | 9304994 |
| 8965 | 36900.37000.37100.37200.38200.50900.65200.1005900 | Toilet_Chasing work for Electrical conduit & concealed plumbing | 5d | 2026-06-21 | 2026-06-25 | 8964 |  | 7 Days Work | 9305004 |
| 8966 | 36900.37000.37100.37200.38200.50900.65200.1006000 | Toilet_Plumbing work 1st fix | 5d | 2026-06-26 | 2026-06-30 | 8965 |  | 7 Days Work | 9305014 |
| 8967 | 36900.37000.37100.37200.38200.50900.65200.1006100 | Toilet_Sleeve/Bore Packing | 5d | 2026-07-01 | 2026-07-05 | 8966 |  | 7 Days Work | 9305024 |
| 8968 | 36900.37000.37100.37200.38200.50900.65200.1006200 | Toilet_Waterproofing | 10d | 2026-07-06 | 2026-07-15 | 8967 |  | 7 Days Work | 9305034 |
| 8969 | 36900.37000.37100.37200.38200.50900.65200.1006300 | Toilet_Screed | 1d | 2026-07-16 | 2026-07-16 | 8968 |  | 7 Days Work | 9305044 |
| 8970 | 36900.37000.37100.37200.38200.50900.65200.1006400 | Toilet_Plumbing 2nd fix | 5d | 2026-07-17 | 2026-07-21 | 8969 |  | 7 Days Work | 9305054 |
| 8971 | 36900.37000.37100.37200.38200.50900.65200.1006500 | Toilet_Ledge wall | 5d | 2026-07-22 | 2026-07-26 | 8970 |  | 7 Days Work | 9305064 |
| 8972 | 36900.37000.37100.37200.38200.50900.65200.1006600 | Toilet_Cement Plaster | 5d | 2026-07-27 | 2026-07-31 | 8971 |  | 7 Days Work | 9305074 |
| 8973 | 36900.37000.37100.37200.38200.50900.65200.1006700 | Toilet_Door Frame | 1d | 2026-08-01 | 2026-08-01 | 8972 |  | 7 Days Work | 9305084 |
| 8974 | 36900.37000.37100.37200.38200.50900.65200.1006800 | Toilet_Wash basin & Couter | 3d | 2026-08-02 | 2026-08-04 | 8973 |  | 7 Days Work | 9305094 |
| 8975 | 36900.37000.37100.37200.38200.50900.65200.1006900 | Toilet_Wall dado | 20d | 2026-08-05 | 2026-08-24 | 8974 |  | 7 Days Work | 9305104 |
| 8976 | 36900.37000.37100.37200.38200.50900.65200.1007000 | Toilet_Granite Work-Ledge wall top | 3d | 2026-08-25 | 2026-08-27 | 8975 |  | 7 Days Work | 9305114 |
| 8977 | 36900.37000.37100.37200.38200.50900.65200.1007100 | Toilet_Floor Tilling work | 20d | 2026-08-28 | 2026-09-16 | 8976 |  | 7 Days Work | 9305124 |
| 8978 | 36900.37000.37100.37200.38200.50900.65200.1007200 | Toilet_1st row of dado | 5d | 2026-09-17 | 2026-09-21 | 8977 |  | 7 Days Work | 9305134 |
| 8979 | 36900.37000.37100.37200.38200.50900.65200.1007300 | Toilet_Window Fixing | 14d | 2026-09-22 | 2026-10-05 | 8978 |  | 7 Days Work | 9305144 |
| 8980 | 36900.37000.37100.37200.38200.50900.65200.1007400 | Toilet_Services above False ceiling | 21d | 2026-10-06 | 2026-10-26 | 8979 |  | 7 Days Work | 9305154 |
| 8981 | 36900.37000.37100.37200.38200.50900.65200.1007500 | Toilet_False Ceiling framing | 12d | 2026-10-27 | 2026-11-07 | 8980 |  | 7 Days Work | 9305164 |
| 8982 | 36900.37000.37100.37200.38200.50900.65200.1007600 | Toilet_Door Frame | 5d | 2026-11-08 | 2026-11-12 | 8981 |  | 7 Days Work | 9305174 |
| 8983 | 36900.37000.37100.37200.38200.50900.65200.1007700 | Toilet_Epoxy Tile Grouting | 7d | 2027-01-08 | 2027-01-14 | 8958SS |  | 7 Days Work | 9305184 |
| 8984 | 36900.37000.37100.37200.38200.50900.65200.1007800 | Toilet_False ceiling board fixing, CP Sanitary Fixture, Electric Fixture | 21d | 2027-01-15 | 2027-02-04 | 8983 |  | 7 Days Work | 9305194 |
| 8985 | 36900.37000.37100.37200.38200.51000 | **9th Habitable/10th Floor** | 245d | 2026-06-18 | 2027-02-17 |  | start no earlier than 2026-06-18 | 7 Days Work | 9293784 |
| 8986 | 36900.37000.37100.37200.38200.51000.673800 | Post Pour | 7d | 2026-06-18 | 2026-06-24 | 8494 |  | 7 Days Work | 9297324 |
| 8987 | 36900.37000.37100.37200.38200.51000.673900 | MEP Clearance -1 | 5d | 2026-06-25 | 2026-06-29 | 8986 |  | 7 Days Work | 9297334 |
| 8988 | 36900.37000.37100.37200.38200.51000.674000 | Benchmark | 1d | 2026-06-30 | 2026-06-30 | 8987 |  | 7 Days Work | 9297344 |
| 8989 | 36900.37000.37100.37200.38200.51000.674100 | Temporary Railing | 3d | 2026-07-01 | 2026-07-03 | 8988 |  | 7 Days Work | 9297354 |
| 8990 | 36900.37000.37100.37200.38200.51000.674200 | Blockwork | 10d | 2026-07-04 | 2026-07-13 | 8989 |  | 7 Days Work | 9297364 |
| 8991 | 36900.37000.37100.37200.38200.51000.674300 | MEP Clearance -2 | 10d | 2026-07-14 | 2026-07-23 | 8990 |  | 7 Days Work | 9297374 |
| 8992 | 36900.37000.37100.37200.38200.51000.674400 | Gypsum Plaster | 14d | 2026-07-24 | 2026-08-06 | 8991 |  | 7 Days Work | 9297384 |
| 8993 | 36900.37000.37100.37200.38200.51000.674500 | Kitchen Platform | 3d | 2026-08-07 | 2026-08-09 | 8992 |  | 7 Days Work | 9297394 |
| 8994 | 36900.37000.37100.37200.38200.51000.674600 | Kitchen dado | 7d | 2026-08-10 | 2026-08-16 | 8993 |  | 7 Days Work | 9297404 |
| 8995 | 36900.37000.37100.37200.38200.51000.674700 | Fire Fighting | 5d | 2026-08-17 | 2026-08-21 | 8994 |  | 7 Days Work | 9297414 |
| 8996 | 36900.37000.37100.37200.38200.51000.674800 | Anticapilary | 5d | 2026-08-22 | 2026-08-26 | 8995 |  | 7 Days Work | 9297424 |
| 8997 | 36900.37000.37100.37200.38200.51000.674900 | Stone Laying | 10d | 2026-09-29 | 2026-10-08 | 9037 |  | 7 Days Work | 9297434 |
| 8998 | 36900.37000.37100.37200.38200.51000.675000 | Tiles Laying | 7d | 2026-09-29 | 2026-10-05 | 9037 |  | 7 Days Work | 9297444 |
| 8999 | 36900.37000.37100.37200.38200.51000.675100 | 1st cutting/polishing of stone flooring | 7d | 2026-10-06 | 2026-10-12 | 8998 |  | 7 Days Work | 9297454 |
| 9000 | 36900.37000.37100.37200.38200.51000.675200 | Tiles/Stone skirting | 5d | 2026-10-13 | 2026-10-17 | 8999 |  | 7 Days Work | 9297464 |
| 9001 | 36900.37000.37100.37200.38200.51000.675300 | Protechtion sheet | 1d | 2026-10-18 | 2026-10-18 | 9000 |  | 7 Days Work | 9297474 |
| 9002 | 36900.37000.37100.37200.38200.51000.675400 | Installation of Temporary Door | 1d | 2026-10-19 | 2026-10-19 | 9001 |  | 7 Days Work | 9297484 |
| 9003 | 36900.37000.37100.37200.38200.51000.675500 | Fixing of window tracks | 5d | 2026-10-20 | 2026-10-24 | 9002 |  | 7 Days Work | 9297494 |
| 9004 | 36900.37000.37100.37200.38200.51000.675600 | Wire Pulling | 7d | 2026-10-25 | 2026-10-31 | 9003 |  | 7 Days Work | 9297504 |
| 9005 | 36900.37000.37100.37200.38200.51000.675700 | Gypsum Remaining | 5d | 2026-11-01 | 2026-11-05 | 9004 |  | 7 Days Work | 9297514 |
| 9006 | 36900.37000.37100.37200.38200.51000.675800 | Fixing of windoow shutter | 5d | 2026-11-06 | 2026-11-10 | 9005 |  | 7 Days Work | 9297524 |
| 9007 | 36900.37000.37100.37200.38200.51000.675900 | Putty Works - walls & ceiling | 15d | 2026-11-11 | 2026-11-25 | 9006 |  | 7 Days Work | 9297534 |
| 9008 | 36900.37000.37100.37200.38200.51000.676000 | False Ceiling- Framing | 10d | 2026-11-26 | 2026-12-05 | 9007 |  | 7 Days Work | 9297544 |
| 9009 | 36900.37000.37100.37200.38200.51000.676100 | Pre Hung Door | 3d | 2026-12-06 | 2026-12-08 | 9008 |  | 7 Days Work | 9297554 |
| 9010 | 36900.37000.37100.37200.38200.51000.676200 | Protechtion sheet | 2d | 2026-12-09 | 2026-12-10 | 9009 |  | 7 Days Work | 9297564 |
| 9011 | 36900.37000.37100.37200.38200.51000.676300 | Skirting near door | 2d | 2026-12-11 | 2026-12-12 | 9010 |  | 7 Days Work | 9297574 |
| 9012 | 36900.37000.37100.37200.38200.51000.676400 | Electrical Switch box fixing | 14d | 2026-12-13 | 2026-12-26 | 9011 |  | 7 Days Work | 9297584 |
| 9013 | 36900.37000.37100.37200.38200.51000.676500 | Fire Fighting painting | 5d | 2026-12-27 | 2026-12-31 | 9012 |  | 7 Days Work | 9297594 |
| 9014 | 36900.37000.37100.37200.38200.51000.676600 | Protection of all flooring, door & window hardware | 5d | 2027-01-01 | 2027-01-05 | 9013 |  | 7 Days Work | 9297604 |
| 9015 | 36900.37000.37100.37200.38200.51000.676700 | 1st coat primer- ceiling 1st & walls | 14d | 2027-01-06 | 2027-01-19 | 9014 |  | 7 Days Work | 9297614 |
| 9016 | 36900.37000.37100.37200.38200.51000.676800 | Wooden Flooring | 5d | 2027-01-20 | 2027-01-24 | 9015 |  | 7 Days Work | 9297624 |
| 9017 | 36900.37000.37100.37200.38200.51000.676900 | Removing of Temporary Railing & installation of Glass Railing | 5d | 2027-01-20 | 2027-01-24 | 9015 |  | 7 Days Work | 9297634 |
| 9018 | 36900.37000.37100.37200.38200.51000.677000 | Tile Grouting | 7d | 2027-01-20 | 2027-01-26 | 9015 |  | 7 Days Work | 9297644 |
| 9019 | 36900.37000.37100.37200.38200.51000.677100 | False Ceiling | 5d | 2027-01-27 | 2027-01-31 | 9018 |  | 7 Days Work | 9297654 |
| 9020 | 36900.37000.37100.37200.38200.51000.677200 | 2nd coat of primer | 10d | 2027-02-01 | 2027-02-10 | 9019 |  | 7 Days Work | 9297664 |
| 9021 | 36900.37000.37100.37200.38200.51000.677300 | Final cutting/polishing of stone flooring | 7d | 2027-02-11 | 2027-02-17 | 9020 |  | 7 Days Work | 9297674 |

| ID | WBS | Task | Duration | Start | Finish | Predecessors | Constraint | Calendar | Unique_Task_ID |
| --- | --- | --- | --- | --- | --- | --- | --- | --- | --- |
| 9022 | 36900.37000.37100.37200.38200.51000.65300 | **Toilet** | 237d | 2026-06-25 | 2027-02-16 |  | start no earlier than 2026-06-25 | 7 Days Work | 9293994 |
| 9023 | 36900.37000.37100.37200.38200.51000.65300.1007900 | Toilet_MEP Clearance -1 | 7d | 2026-06-25 | 2026-07-01 | 8986 |  | 7 Days Work | 9305204 |
| 9024 | 36900.37000.37100.37200.38200.51000.65300.1008000 | Toilet_Level Marking | 1d | 2026-07-02 | 2026-07-02 | 9023 |  | 7 Days Work | 9305214 |
| 9025 | 36900.37000.37100.37200.38200.51000.65300.1008100 | Toilet_Chasing work for Electrical conduit & concealed plumbing | 5d | 2026-07-03 | 2026-07-07 | 9024 |  | 7 Days Work | 9305224 |
| 9026 | 36900.37000.37100.37200.38200.51000.65300.1008200 | Toilet_Plumbing work 1st fix | 5d | 2026-07-08 | 2026-07-12 | 9025 |  | 7 Days Work | 9305234 |
| 9027 | 36900.37000.37100.37200.38200.51000.65300.1008300 | Toilet_Sleeve/Bore Packing | 5d | 2026-07-13 | 2026-07-17 | 9026 |  | 7 Days Work | 9305244 |
| 9028 | 36900.37000.37100.37200.38200.51000.65300.1008400 | Toilet_Waterproofing | 10d | 2026-07-18 | 2026-07-27 | 9027 |  | 7 Days Work | 9305254 |
| 9029 | 36900.37000.37100.37200.38200.51000.65300.1008500 | Toilet_Screed | 1d | 2026-07-28 | 2026-07-28 | 9028 |  | 7 Days Work | 9305264 |
| 9030 | 36900.37000.37100.37200.38200.51000.65300.1008600 | Toilet_Plumbing 2nd fix | 5d | 2026-07-29 | 2026-08-02 | 9029 |  | 7 Days Work | 9305274 |
| 9031 | 36900.37000.37100.37200.38200.51000.65300.1008700 | Toilet_Ledge wall | 5d | 2026-08-03 | 2026-08-07 | 9030 |  | 7 Days Work | 9305284 |
| 9032 | 36900.37000.37100.37200.38200.51000.65300.1008800 | Toilet_Cement Plaster | 5d | 2026-08-08 | 2026-08-12 | 9031 |  | 7 Days Work | 9305294 |
| 9033 | 36900.37000.37100.37200.38200.51000.65300.1008900 | Toilet_Door Frame | 1d | 2026-08-13 | 2026-08-13 | 9032 |  | 7 Days Work | 9305304 |
| 9034 | 36900.37000.37100.37200.38200.51000.65300.1009000 | Toilet_Wash basin & Couter | 3d | 2026-08-14 | 2026-08-16 | 9033 |  | 7 Days Work | 9305314 |
| 9035 | 36900.37000.37100.37200.38200.51000.65300.1009100 | Toilet_Wall dado | 20d | 2026-08-17 | 2026-09-05 | 9034 |  | 7 Days Work | 9305324 |
| 9036 | 36900.37000.37100.37200.38200.51000.65300.1009200 | Toilet_Granite Work-Ledge wall top | 3d | 2026-09-06 | 2026-09-08 | 9035 |  | 7 Days Work | 9305334 |
| 9037 | 36900.37000.37100.37200.38200.51000.65300.1009300 | Toilet_Floor Tilling work | 20d | 2026-09-09 | 2026-09-28 | 9036 |  | 7 Days Work | 9305344 |
| 9038 | 36900.37000.37100.37200.38200.51000.65300.1009400 | Toilet_1st row of dado | 5d | 2026-09-29 | 2026-10-03 | 9037 |  | 7 Days Work | 9305354 |
| 9039 | 36900.37000.37100.37200.38200.51000.65300.1009500 | Toilet_Window Fixing | 14d | 2026-10-04 | 2026-10-17 | 9038 |  | 7 Days Work | 9305364 |
| 9040 | 36900.37000.37100.37200.38200.51000.65300.1009600 | Toilet_Services above False ceiling | 21d | 2026-10-18 | 2026-11-07 | 9039 |  | 7 Days Work | 9305374 |
| 9041 | 36900.37000.37100.37200.38200.51000.65300.1009700 | Toilet_False Ceiling framing | 12d | 2026-11-08 | 2026-11-19 | 9040 |  | 7 Days Work | 9305384 |
| 9042 | 36900.37000.37100.37200.38200.51000.65300.1009800 | Toilet_Door Frame | 5d | 2026-11-20 | 2026-11-24 | 9041 |  | 7 Days Work | 9305394 |
| 9043 | 36900.37000.37100.37200.38200.51000.65300.1009900 | Toilet_Epoxy Tile Grouting | 7d | 2027-01-20 | 2027-01-26 | 9018SS |  | 7 Days Work | 9305404 |
| 9044 | 36900.37000.37100.37200.38200.51000.65300.1010000 | Toilet_False ceiling board fixing, CP Sanitary Fixture, Electric Fixture | 21d | 2027-01-27 | 2027-02-16 | 9043 |  | 7 Days Work | 9305414 |
| 9045 | 36900.37000.37100.37200.38200.51100 | **10th Habitable/11th Floor** | 245d | 2026-06-30 | 2027-03-01 |  | start no earlier than 2026-06-30 | 7 Days Work | 9293794 |
| 9046 | 36900.37000.37100.37200.38200.51100.677400 | Post Pour | 7d | 2026-06-30 | 2026-07-06 | 8495 |  | 7 Days Work | 9297684 |
| 9047 | 36900.37000.37100.37200.38200.51100.677500 | MEP Clearance -1 | 5d | 2026-07-07 | 2026-07-11 | 9046 |  | 7 Days Work | 9297694 |
| 9048 | 36900.37000.37100.37200.38200.51100.677600 | Benchmark | 1d | 2026-07-12 | 2026-07-12 | 9047 |  | 7 Days Work | 9297704 |
| 9049 | 36900.37000.37100.37200.38200.51100.677700 | Temporary Railing | 3d | 2026-07-13 | 2026-07-15 | 9048 |  | 7 Days Work | 9297714 |
| 9050 | 36900.37000.37100.37200.38200.51100.677800 | Blockwork | 10d | 2026-07-16 | 2026-07-25 | 9049 |  | 7 Days Work | 9297724 |
| 9051 | 36900.37000.37100.37200.38200.51100.677900 | MEP Clearance -2 | 10d | 2026-07-26 | 2026-08-04 | 9050 |  | 7 Days Work | 9297734 |
| 9052 | 36900.37000.37100.37200.38200.51100.678000 | Gypsum Plaster | 14d | 2026-08-05 | 2026-08-18 | 9051 |  | 7 Days Work | 9297744 |
| 9053 | 36900.37000.37100.37200.38200.51100.678100 | Kitchen Platform | 3d | 2026-08-19 | 2026-08-21 | 9052 |  | 7 Days Work | 9297754 |
| 9054 | 36900.37000.37100.37200.38200.51100.678200 | Kitchen dado | 7d | 2026-08-22 | 2026-08-28 | 9053 |  | 7 Days Work | 9297764 |
| 9055 | 36900.37000.37100.37200.38200.51100.678300 | Fire Fighting | 5d | 2026-08-29 | 2026-09-02 | 9054 |  | 7 Days Work | 9297774 |
| 9056 | 36900.37000.37100.37200.38200.51100.678400 | Anticapilary | 5d | 2026-09-03 | 2026-09-07 | 9055 |  | 7 Days Work | 9297784 |
| 9057 | 36900.37000.37100.37200.38200.51100.678500 | Stone Laying | 10d | 2026-10-11 | 2026-10-20 | 9097 |  | 7 Days Work | 9297794 |
| 9058 | 36900.37000.37100.37200.38200.51100.678600 | Tiles Laying | 7d | 2026-10-11 | 2026-10-17 | 9097 |  | 7 Days Work | 9297804 |
| 9059 | 36900.37000.37100.37200.38200.51100.678700 | 1st cutting/polishing of stone flooring | 7d | 2026-10-18 | 2026-10-24 | 9058 |  | 7 Days Work | 9297814 |
| 9060 | 36900.37000.37100.37200.38200.51100.678800 | Tiles/Stone skirting | 5d | 2026-10-25 | 2026-10-29 | 9059 |  | 7 Days Work | 9297824 |
| 9061 | 36900.37000.37100.37200.38200.51100.678900 | Protechtion sheet | 1d | 2026-10-30 | 2026-10-30 | 9060 |  | 7 Days Work | 9297834 |
| 9062 | 36900.37000.37100.37200.38200.51100.679000 | Installation of Temporary Door | 1d | 2026-10-31 | 2026-10-31 | 9061 |  | 7 Days Work | 9297844 |
| 9063 | 36900.37000.37100.37200.38200.51100.679100 | Fixing of window tracks | 5d | 2026-11-01 | 2026-11-05 | 9062 |  | 7 Days Work | 9297854 |
| 9064 | 36900.37000.37100.37200.38200.51100.679200 | Wire Pulling | 7d | 2026-11-06 | 2026-11-12 | 9063 |  | 7 Days Work | 9297864 |
| 9065 | 36900.37000.37100.37200.38200.51100.679300 | Gypsum Remaining | 5d | 2026-11-13 | 2026-11-17 | 9064 |  | 7 Days Work | 9297874 |
| 9066 | 36900.37000.37100.37200.38200.51100.679400 | Fixing of windoow shutter | 5d | 2026-11-18 | 2026-11-22 | 9065 |  | 7 Days Work | 9297884 |
| 9067 | 36900.37000.37100.37200.38200.51100.679500 | Putty Works - walls & ceiling | 15d | 2026-11-23 | 2026-12-07 | 9066 |  | 7 Days Work | 9297894 |
| 9068 | 36900.37000.37100.37200.38200.51100.679600 | False Ceiling- Framing | 10d | 2026-12-08 | 2026-12-17 | 9067 |  | 7 Days Work | 9297904 |
| 9069 | 36900.37000.37100.37200.38200.51100.679700 | Pre Hung Door | 3d | 2026-12-18 | 2026-12-20 | 9068 |  | 7 Days Work | 9297914 |
| 9070 | 36900.37000.37100.37200.38200.51100.679800 | Protechtion sheet | 2d | 2026-12-21 | 2026-12-22 | 9069 |  | 7 Days Work | 9297924 |
| 9071 | 36900.37000.37100.37200.38200.51100.679900 | Skirting near door | 2d | 2026-12-23 | 2026-12-24 | 9070 |  | 7 Days Work | 9297934 |
| 9072 | 36900.37000.37100.37200.38200.51100.680000 | Electrical Switch box fixing | 14d | 2026-12-25 | 2027-01-07 | 9071 |  | 7 Days Work | 9297944 |
| 9073 | 36900.37000.37100.37200.38200.51100.680100 | Fire Fighting painting | 5d | 2027-01-08 | 2027-01-12 | 9072 |  | 7 Days Work | 9297954 |
| 9074 | 36900.37000.37100.37200.38200.51100.680200 | Protection of all flooring, door & window hardware | 5d | 2027-01-13 | 2027-01-17 | 9073 |  | 7 Days Work | 9297964 |
| 9075 | 36900.37000.37100.37200.38200.51100.680300 | 1st coat primer- ceiling 1st & walls | 14d | 2027-01-18 | 2027-01-31 | 9074 |  | 7 Days Work | 9297974 |
| 9076 | 36900.37000.37100.37200.38200.51100.680400 | Wooden Flooring | 5d | 2027-02-01 | 2027-02-05 | 9075 |  | 7 Days Work | 9297984 |
| 9077 | 36900.37000.37100.37200.38200.51100.680500 | Removing of Temporary Railing & installation of Glass Railing | 5d | 2027-02-01 | 2027-02-05 | 9075 |  | 7 Days Work | 9297994 |
| 9078 | 36900.37000.37100.37200.38200.51100.680600 | Tile Grouting | 7d | 2027-02-01 | 2027-02-07 | 9075 |  | 7 Days Work | 9298004 |
| 9079 | 36900.37000.37100.37200.38200.51100.680700 | False Ceiling | 5d | 2027-02-08 | 2027-02-12 | 9078 |  | 7 Days Work | 9298014 |
| 9080 | 36900.37000.37100.37200.38200.51100.680800 | 2nd coat of primer | 10d | 2027-02-13 | 2027-02-22 | 9079 |  | 7 Days Work | 9298024 |
| 9081 | 36900.37000.37100.37200.38200.51100.680900 | Final cutting/polishing of stone flooring | 7d | 2027-02-23 | 2027-03-01 | 9080 |  | 7 Days Work | 9298034 |

| ID | WBS | Task | Duration | Start | Finish | Predecessors | Constraint | Calendar | Unique_Task_ID |
| --- | --- | --- | --- | --- | --- | --- | --- | --- | --- |
| 9082 | 36900.37000.37100.37200.38200.51100.65400 | **Toilet** | 237d | 2026-07-07 | 2027-02-28 |  | start no earlier than 2026-07-07 | 7 Days Work | 9294004 |
| 9083 | 36900.37000.37100.37200.38200.51100.65400.1010100 | Toilet_MEP Clearance -1 | 7d | 2026-07-07 | 2026-07-13 | 9046 |  | 7 Days Work | 9305424 |
| 9084 | 36900.37000.37100.37200.38200.51100.65400.1010200 | Toilet_Level Marking | 1d | 2026-07-14 | 2026-07-14 | 9083 |  | 7 Days Work | 9305434 |
| 9085 | 36900.37000.37100.37200.38200.51100.65400.1010300 | Toilet_Chasing work for Electrical conduit & concealed plumbing | 5d | 2026-07-15 | 2026-07-19 | 9084 |  | 7 Days Work | 9305444 |
| 9086 | 36900.37000.37100.37200.38200.51100.65400.1010400 | Toilet_Plumbing work 1st fix | 5d | 2026-07-20 | 2026-07-24 | 9085 |  | 7 Days Work | 9305454 |
| 9087 | 36900.37000.37100.37200.38200.51100.65400.1010500 | Toilet_Sleeve/Bore Packing | 5d | 2026-07-25 | 2026-07-29 | 9086 |  | 7 Days Work | 9305464 |
| 9088 | 36900.37000.37100.37200.38200.51100.65400.1010600 | Toilet_Waterproofing | 10d | 2026-07-30 | 2026-08-08 | 9087 |  | 7 Days Work | 9305474 |
| 9089 | 36900.37000.37100.37200.38200.51100.65400.1010700 | Toilet_Screed | 1d | 2026-08-09 | 2026-08-09 | 9088 |  | 7 Days Work | 9305484 |
| 9090 | 36900.37000.37100.37200.38200.51100.65400.1010800 | Toilet_Plumbing 2nd fix | 5d | 2026-08-10 | 2026-08-14 | 9089 |  | 7 Days Work | 9305494 |
| 9091 | 36900.37000.37100.37200.38200.51100.65400.1010900 | Toilet_Ledge wall | 5d | 2026-08-15 | 2026-08-19 | 9090 |  | 7 Days Work | 9305504 |
| 9092 | 36900.37000.37100.37200.38200.51100.65400.1011000 | Toilet_Cement Plaster | 5d | 2026-08-20 | 2026-08-24 | 9091 |  | 7 Days Work | 9305514 |
| 9093 | 36900.37000.37100.37200.38200.51100.65400.1011100 | Toilet_Door Frame | 1d | 2026-08-25 | 2026-08-25 | 9092 |  | 7 Days Work | 9305524 |
| 9094 | 36900.37000.37100.37200.38200.51100.65400.1011200 | Toilet_Wash basin & Couter | 3d | 2026-08-26 | 2026-08-28 | 9093 |  | 7 Days Work | 9305534 |
| 9095 | 36900.37000.37100.37200.38200.51100.65400.1011300 | Toilet_Wall dado | 20d | 2026-08-29 | 2026-09-17 | 9094 |  | 7 Days Work | 9305544 |
| 9096 | 36900.37000.37100.37200.38200.51100.65400.1011400 | Toilet_Granite Work-Ledge wall top | 3d | 2026-09-18 | 2026-09-20 | 9095 |  | 7 Days Work | 9305554 |
| 9097 | 36900.37000.37100.37200.38200.51100.65400.1011500 | Toilet_Floor Tilling work | 20d | 2026-09-21 | 2026-10-10 | 9096 |  | 7 Days Work | 9305564 |
| 9098 | 36900.37000.37100.37200.38200.51100.65400.1011600 | Toilet_1st row of dado | 5d | 2026-10-11 | 2026-10-15 | 9097 |  | 7 Days Work | 9305574 |
| 9099 | 36900.37000.37100.37200.38200.51100.65400.1011700 | Toilet_Window Fixing | 14d | 2026-10-16 | 2026-10-29 | 9098 |  | 7 Days Work | 9305584 |
| 9100 | 36900.37000.37100.37200.38200.51100.65400.1011800 | Toilet_Services above False ceiling | 21d | 2026-10-30 | 2026-11-19 | 9099 |  | 7 Days Work | 9305594 |
| 9101 | 36900.37000.37100.37200.38200.51100.65400.1011900 | Toilet_False Ceiling framing | 12d | 2026-11-20 | 2026-12-01 | 9100 |  | 7 Days Work | 9305604 |
| 9102 | 36900.37000.37100.37200.38200.51100.65400.1012000 | Toilet_Door Frame | 5d | 2026-12-02 | 2026-12-06 | 9101 |  | 7 Days Work | 9305614 |
| 9103 | 36900.37000.37100.37200.38200.51100.65400.1012100 | Toilet_Epoxy Tile Grouting | 7d | 2027-02-01 | 2027-02-07 | 9078SS |  | 7 Days Work | 9305624 |
| 9104 | 36900.37000.37100.37200.38200.51100.65400.1012200 | Toilet_False ceiling board fixing, CP Sanitary Fixture, Electric Fixture | 21d | 2027-02-08 | 2027-02-28 | 9103 |  | 7 Days Work | 9305634 |
| 9105 | 36900.37000.37100.37200.38200.51200 | **11th Habitable/12th Floor** | 245d | 2026-07-12 | 2027-03-13 |  | start no earlier than 2026-07-12 | 7 Days Work | 9293804 |
| 9106 | 36900.37000.37100.37200.38200.51200.681000 | Post Pour | 7d | 2026-07-12 | 2026-07-18 | 8496 |  | 7 Days Work | 9298044 |
| 9107 | 36900.37000.37100.37200.38200.51200.681100 | MEP Clearance -1 | 5d | 2026-07-19 | 2026-07-23 | 9106 |  | 7 Days Work | 9298054 |
| 9108 | 36900.37000.37100.37200.38200.51200.681200 | Benchmark | 1d | 2026-07-24 | 2026-07-24 | 9107 |  | 7 Days Work | 9298064 |
| 9109 | 36900.37000.37100.37200.38200.51200.681300 | Temporary Railing | 3d | 2026-07-25 | 2026-07-27 | 9108 |  | 7 Days Work | 9298074 |
| 9110 | 36900.37000.37100.37200.38200.51200.681400 | Blockwork | 10d | 2026-07-28 | 2026-08-06 | 9109 |  | 7 Days Work | 9298084 |
| 9111 | 36900.37000.37100.37200.38200.51200.681500 | MEP Clearance -2 | 10d | 2026-08-07 | 2026-08-16 | 9110 |  | 7 Days Work | 9298094 |
| 9112 | 36900.37000.37100.37200.38200.51200.681600 | Gypsum Plaster | 14d | 2026-08-17 | 2026-08-30 | 9111 |  | 7 Days Work | 9298104 |
| 9113 | 36900.37000.37100.37200.38200.51200.681700 | Kitchen Platform | 3d | 2026-08-31 | 2026-09-02 | 9112 |  | 7 Days Work | 9298114 |
| 9114 | 36900.37000.37100.37200.38200.51200.681800 | Kitchen dado | 7d | 2026-09-03 | 2026-09-09 | 9113 |  | 7 Days Work | 9298124 |
| 9115 | 36900.37000.37100.37200.38200.51200.681900 | Fire Fighting | 5d | 2026-09-10 | 2026-09-14 | 9114 |  | 7 Days Work | 9298134 |
| 9116 | 36900.37000.37100.37200.38200.51200.682000 | Anticapilary | 5d | 2026-09-15 | 2026-09-19 | 9115 |  | 7 Days Work | 9298144 |
| 9117 | 36900.37000.37100.37200.38200.51200.682100 | Stone Laying | 10d | 2026-10-23 | 2026-11-01 | 9157 |  | 7 Days Work | 9298154 |
| 9118 | 36900.37000.37100.37200.38200.51200.682200 | Tiles Laying | 7d | 2026-10-23 | 2026-10-29 | 9157 |  | 7 Days Work | 9298164 |
| 9119 | 36900.37000.37100.37200.38200.51200.682300 | 1st cutting/polishing of stone flooring | 7d | 2026-10-30 | 2026-11-05 | 9118 |  | 7 Days Work | 9298174 |
| 9120 | 36900.37000.37100.37200.38200.51200.682400 | Tiles/Stone skirting | 5d | 2026-11-06 | 2026-11-10 | 9119 |  | 7 Days Work | 9298184 |
| 9121 | 36900.37000.37100.37200.38200.51200.682500 | Protechtion sheet | 1d | 2026-11-11 | 2026-11-11 | 9120 |  | 7 Days Work | 9298194 |
| 9122 | 36900.37000.37100.37200.38200.51200.682600 | Installation of Temporary Door | 1d | 2026-11-12 | 2026-11-12 | 9121 |  | 7 Days Work | 9298204 |
| 9123 | 36900.37000.37100.37200.38200.51200.682700 | Fixing of window tracks | 5d | 2026-11-13 | 2026-11-17 | 9122 |  | 7 Days Work | 9298214 |
| 9124 | 36900.37000.37100.37200.38200.51200.682800 | Wire Pulling | 7d | 2026-11-18 | 2026-11-24 | 9123 |  | 7 Days Work | 9298224 |
| 9125 | 36900.37000.37100.37200.38200.51200.682900 | Gypsum Remaining | 5d | 2026-11-25 | 2026-11-29 | 9124 |  | 7 Days Work | 9298234 |
| 9126 | 36900.37000.37100.37200.38200.51200.683000 | Fixing of windoow shutter | 5d | 2026-11-30 | 2026-12-04 | 9125 |  | 7 Days Work | 9298244 |
| 9127 | 36900.37000.37100.37200.38200.51200.683100 | Putty Works - walls & ceiling | 15d | 2026-12-05 | 2026-12-19 | 9126 |  | 7 Days Work | 9298254 |
| 9128 | 36900.37000.37100.37200.38200.51200.683200 | False Ceiling- Framing | 10d | 2026-12-20 | 2026-12-29 | 9127 |  | 7 Days Work | 9298264 |
| 9129 | 36900.37000.37100.37200.38200.51200.683300 | Pre Hung Door | 3d | 2026-12-30 | 2027-01-01 | 9128 |  | 7 Days Work | 9298274 |
| 9130 | 36900.37000.37100.37200.38200.51200.683400 | Protechtion sheet | 2d | 2027-01-02 | 2027-01-03 | 9129 |  | 7 Days Work | 9298284 |
| 9131 | 36900.37000.37100.37200.38200.51200.683500 | Skirting near door | 2d | 2027-01-04 | 2027-01-05 | 9130 |  | 7 Days Work | 9298294 |
| 9132 | 36900.37000.37100.37200.38200.51200.683600 | Electrical Switch box fixing | 14d | 2027-01-06 | 2027-01-19 | 9131 |  | 7 Days Work | 9298304 |
| 9133 | 36900.37000.37100.37200.38200.51200.683700 | Fire Fighting painting | 5d | 2027-01-20 | 2027-01-24 | 9132 |  | 7 Days Work | 9298314 |
| 9134 | 36900.37000.37100.37200.38200.51200.683800 | Protection of all flooring, door & window hardware | 5d | 2027-01-25 | 2027-01-29 | 9133 |  | 7 Days Work | 9298324 |
| 9135 | 36900.37000.37100.37200.38200.51200.683900 | 1st coat primer- ceiling 1st & walls | 14d | 2027-01-30 | 2027-02-12 | 9134 |  | 7 Days Work | 9298334 |
| 9136 | 36900.37000.37100.37200.38200.51200.684000 | Wooden Flooring | 5d | 2027-02-13 | 2027-02-17 | 9135 |  | 7 Days Work | 9298344 |
| 9137 | 36900.37000.37100.37200.38200.51200.684100 | Removing of Temporary Railing & installation of Glass Railing | 5d | 2027-02-13 | 2027-02-17 | 9135 |  | 7 Days Work | 9298354 |
| 9138 | 36900.37000.37100.37200.38200.51200.684200 | Tile Grouting | 7d | 2027-02-13 | 2027-02-19 | 9135 |  | 7 Days Work | 9298364 |
| 9139 | 36900.37000.37100.37200.38200.51200.684300 | False Ceiling | 5d | 2027-02-20 | 2027-02-24 | 9138 |  | 7 Days Work | 9298374 |
| 9140 | 36900.37000.37100.37200.38200.51200.684400 | 2nd coat of primer | 10d | 2027-02-25 | 2027-03-06 | 9139 |  | 7 Days Work | 9298384 |
| 9141 | 36900.37000.37100.37200.38200.51200.684500 | Final cutting/polishing of stone flooring | 7d | 2027-03-07 | 2027-03-13 | 9140 |  | 7 Days Work | 9298394 |

| ID | WBS | Task | Duration | Start | Finish | Predecessors | Constraint | Calendar | Unique_Task_ID |
| --- | --- | --- | --- | --- | --- | --- | --- | --- | --- |
| 9142 | 36900.37000.37100.37200.38200.51200.65500 | **Toilet** | 237d | 2026-07-19 | 2027-03-12 |  | start no earlier than 2026-07-19 | 7 Days Work | 9294014 |
| 9143 | 36900.37000.37100.37200.38200.51200.65500.1012300 | Toilet_MEP Clearance -1 | 7d | 2026-07-19 | 2026-07-25 | 9106 |  | 7 Days Work | 9305644 |
| 9144 | 36900.37000.37100.37200.38200.51200.65500.1012400 | Toilet_Level Marking | 1d | 2026-07-26 | 2026-07-26 | 9143 |  | 7 Days Work | 9305654 |
| 9145 | 36900.37000.37100.37200.38200.51200.65500.1012500 | Toilet_Chasing work for Electrical conduit & concealed plumbing | 5d | 2026-07-27 | 2026-07-31 | 9144 |  | 7 Days Work | 9305664 |
| 9146 | 36900.37000.37100.37200.38200.51200.65500.1012600 | Toilet_Plumbing work 1st fix | 5d | 2026-08-01 | 2026-08-05 | 9145 |  | 7 Days Work | 9305674 |
| 9147 | 36900.37000.37100.37200.38200.51200.65500.1012700 | Toilet_Sleeve/Bore Packing | 5d | 2026-08-06 | 2026-08-10 | 9146 |  | 7 Days Work | 9305684 |
| 9148 | 36900.37000.37100.37200.38200.51200.65500.1012800 | Toilet_Waterproofing | 10d | 2026-08-11 | 2026-08-20 | 9147 |  | 7 Days Work | 9305694 |
| 9149 | 36900.37000.37100.37200.38200.51200.65500.1012900 | Toilet_Screed | 1d | 2026-08-21 | 2026-08-21 | 9148 |  | 7 Days Work | 9305704 |
| 9150 | 36900.37000.37100.37200.38200.51200.65500.1013000 | Toilet_Plumbing 2nd fix | 5d | 2026-08-22 | 2026-08-26 | 9149 |  | 7 Days Work | 9305714 |
| 9151 | 36900.37000.37100.37200.38200.51200.65500.1013100 | Toilet_Ledge wall | 5d | 2026-08-27 | 2026-08-31 | 9150 |  | 7 Days Work | 9305724 |
| 9152 | 36900.37000.37100.37200.38200.51200.65500.1013200 | Toilet_Cement Plaster | 5d | 2026-09-01 | 2026-09-05 | 9151 |  | 7 Days Work | 9305734 |
| 9153 | 36900.37000.37100.37200.38200.51200.65500.1013300 | Toilet_Door Frame | 1d | 2026-09-06 | 2026-09-06 | 9152 |  | 7 Days Work | 9305744 |
| 9154 | 36900.37000.37100.37200.38200.51200.65500.1013400 | Toilet_Wash basin & Couter | 3d | 2026-09-07 | 2026-09-09 | 9153 |  | 7 Days Work | 9305754 |
| 9155 | 36900.37000.37100.37200.38200.51200.65500.1013500 | Toilet_Wall dado | 20d | 2026-09-10 | 2026-09-29 | 9154 |  | 7 Days Work | 9305764 |
| 9156 | 36900.37000.37100.37200.38200.51200.65500.1013600 | Toilet_Granite Work-Ledge wall top | 3d | 2026-09-30 | 2026-10-02 | 9155 |  | 7 Days Work | 9305774 |
| 9157 | 36900.37000.37100.37200.38200.51200.65500.1013700 | Toilet_Floor Tilling work | 20d | 2026-10-03 | 2026-10-22 | 9156 |  | 7 Days Work | 9305784 |
| 9158 | 36900.37000.37100.37200.38200.51200.65500.1013800 | Toilet_1st row of dado | 5d | 2026-10-23 | 2026-10-27 | 9157 |  | 7 Days Work | 9305794 |
| 9159 | 36900.37000.37100.37200.38200.51200.65500.1013900 | Toilet_Window Fixing | 14d | 2026-10-28 | 2026-11-10 | 9158 |  | 7 Days Work | 9305804 |
| 9160 | 36900.37000.37100.37200.38200.51200.65500.1014000 | Toilet_Services above False ceiling | 21d | 2026-11-11 | 2026-12-01 | 9159 |  | 7 Days Work | 9305814 |
| 9161 | 36900.37000.37100.37200.38200.51200.65500.1014100 | Toilet_False Ceiling framing | 12d | 2026-12-02 | 2026-12-13 | 9160 |  | 7 Days Work | 9305824 |
| 9162 | 36900.37000.37100.37200.38200.51200.65500.1014200 | Toilet_Door Frame | 5d | 2026-12-14 | 2026-12-18 | 9161 |  | 7 Days Work | 9305834 |
| 9163 | 36900.37000.37100.37200.38200.51200.65500.1014300 | Toilet_Epoxy Tile Grouting | 7d | 2027-02-13 | 2027-02-19 | 9138SS |  | 7 Days Work | 9305844 |
| 9164 | 36900.37000.37100.37200.38200.51200.65500.1014400 | Toilet_False ceiling board fixing, CP Sanitary Fixture, Electric Fixture | 21d | 2027-02-20 | 2027-03-12 | 9163 |  | 7 Days Work | 9305854 |
| 9165 | 36900.37000.37100.37200.38200.51300 | **12th Habitable/13th Floor** | 245d | 2026-07-24 | 2027-03-25 |  | start no earlier than 2026-07-24 | 7 Days Work | 9293814 |
| 9166 | 36900.37000.37100.37200.38200.51300.684600 | Post Pour | 7d | 2026-07-24 | 2026-07-30 | 8497 |  | 7 Days Work | 9298404 |
| 9167 | 36900.37000.37100.37200.38200.51300.684700 | MEP Clearance -1 | 5d | 2026-07-31 | 2026-08-04 | 9166 |  | 7 Days Work | 9298414 |
| 9168 | 36900.37000.37100.37200.38200.51300.684800 | Benchmark | 1d | 2026-08-05 | 2026-08-05 | 9167 |  | 7 Days Work | 9298424 |
| 9169 | 36900.37000.37100.37200.38200.51300.684900 | Temporary Railing | 3d | 2026-08-06 | 2026-08-08 | 9168 |  | 7 Days Work | 9298434 |
| 9170 | 36900.37000.37100.37200.38200.51300.685000 | Blockwork | 10d | 2026-08-09 | 2026-08-18 | 9169 |  | 7 Days Work | 9298444 |
| 9171 | 36900.37000.37100.37200.38200.51300.685100 | MEP Clearance -2 | 10d | 2026-08-19 | 2026-08-28 | 9170 |  | 7 Days Work | 9298454 |
| 9172 | 36900.37000.37100.37200.38200.51300.685200 | Gypsum Plaster | 14d | 2026-08-29 | 2026-09-11 | 9171 |  | 7 Days Work | 9298464 |
| 9173 | 36900.37000.37100.37200.38200.51300.685300 | Kitchen Platform | 3d | 2026-09-12 | 2026-09-14 | 9172 |  | 7 Days Work | 9298474 |
| 9174 | 36900.37000.37100.37200.38200.51300.685400 | Kitchen dado | 7d | 2026-09-15 | 2026-09-21 | 9173 |  | 7 Days Work | 9298484 |
| 9175 | 36900.37000.37100.37200.38200.51300.685500 | Fire Fighting | 5d | 2026-09-22 | 2026-09-26 | 9174 |  | 7 Days Work | 9298494 |
| 9176 | 36900.37000.37100.37200.38200.51300.685600 | Anticapilary | 5d | 2026-09-27 | 2026-10-01 | 9175 |  | 7 Days Work | 9298504 |
| 9177 | 36900.37000.37100.37200.38200.51300.685700 | Stone Laying | 10d | 2026-11-04 | 2026-11-13 | 9217 |  | 7 Days Work | 9298514 |
| 9178 | 36900.37000.37100.37200.38200.51300.685800 | Tiles Laying | 7d | 2026-11-04 | 2026-11-10 | 9217 |  | 7 Days Work | 9298524 |
| 9179 | 36900.37000.37100.37200.38200.51300.685900 | 1st cutting/polishing of stone flooring | 7d | 2026-11-11 | 2026-11-17 | 9178 |  | 7 Days Work | 9298534 |
| 9180 | 36900.37000.37100.37200.38200.51300.686000 | Tiles/Stone skirting | 5d | 2026-11-18 | 2026-11-22 | 9179 |  | 7 Days Work | 9298544 |
| 9181 | 36900.37000.37100.37200.38200.51300.686100 | Protechtion sheet | 1d | 2026-11-23 | 2026-11-23 | 9180 |  | 7 Days Work | 9298554 |
| 9182 | 36900.37000.37100.37200.38200.51300.686200 | Installation of Temporary Door | 1d | 2026-11-24 | 2026-11-24 | 9181 |  | 7 Days Work | 9298564 |
| 9183 | 36900.37000.37100.37200.38200.51300.686300 | Fixing of window tracks | 5d | 2026-11-25 | 2026-11-29 | 9182 |  | 7 Days Work | 9298574 |
| 9184 | 36900.37000.37100.37200.38200.51300.686400 | Wire Pulling | 7d | 2026-11-30 | 2026-12-06 | 9183 |  | 7 Days Work | 9298584 |
| 9185 | 36900.37000.37100.37200.38200.51300.686500 | Gypsum Remaining | 5d | 2026-12-07 | 2026-12-11 | 9184 |  | 7 Days Work | 9298594 |
| 9186 | 36900.37000.37100.37200.38200.51300.686600 | Fixing of windoow shutter | 5d | 2026-12-12 | 2026-12-16 | 9185 |  | 7 Days Work | 9298604 |
| 9187 | 36900.37000.37100.37200.38200.51300.686700 | Putty Works - walls & ceiling | 15d | 2026-12-17 | 2026-12-31 | 9186 |  | 7 Days Work | 9298614 |
| 9188 | 36900.37000.37100.37200.38200.51300.686800 | False Ceiling- Framing | 10d | 2027-01-01 | 2027-01-10 | 9187 |  | 7 Days Work | 9298624 |
| 9189 | 36900.37000.37100.37200.38200.51300.686900 | Pre Hung Door | 3d | 2027-01-11 | 2027-01-13 | 9188 |  | 7 Days Work | 9298634 |
| 9190 | 36900.37000.37100.37200.38200.51300.687000 | Protechtion sheet | 2d | 2027-01-14 | 2027-01-15 | 9189 |  | 7 Days Work | 9298644 |
| 9191 | 36900.37000.37100.37200.38200.51300.687100 | Skirting near door | 2d | 2027-01-16 | 2027-01-17 | 9190 |  | 7 Days Work | 9298654 |
| 9192 | 36900.37000.37100.37200.38200.51300.687200 | Electrical Switch box fixing | 14d | 2027-01-18 | 2027-01-31 | 9191 |  | 7 Days Work | 9298664 |
| 9193 | 36900.37000.37100.37200.38200.51300.687300 | Fire Fighting painting | 5d | 2027-02-01 | 2027-02-05 | 9192 |  | 7 Days Work | 9298674 |
| 9194 | 36900.37000.37100.37200.38200.51300.687400 | Protection of all flooring, door & window hardware | 5d | 2027-02-06 | 2027-02-10 | 9193 |  | 7 Days Work | 9298684 |
| 9195 | 36900.37000.37100.37200.38200.51300.687500 | 1st coat primer- ceiling 1st & walls | 14d | 2027-02-11 | 2027-02-24 | 9194 |  | 7 Days Work | 9298694 |
| 9196 | 36900.37000.37100.37200.38200.51300.687600 | Wooden Flooring | 5d | 2027-02-25 | 2027-03-01 | 9195 |  | 7 Days Work | 9298704 |
| 9197 | 36900.37000.37100.37200.38200.51300.687700 | Removing of Temporary Railing & installation of Glass Railing | 5d | 2027-02-25 | 2027-03-01 | 9195 |  | 7 Days Work | 9298714 |
| 9198 | 36900.37000.37100.37200.38200.51300.687800 | Tile Grouting | 7d | 2027-02-25 | 2027-03-03 | 9195 |  | 7 Days Work | 9298724 |
| 9199 | 36900.37000.37100.37200.38200.51300.687900 | False Ceiling | 5d | 2027-03-04 | 2027-03-08 | 9198 |  | 7 Days Work | 9298734 |
| 9200 | 36900.37000.37100.37200.38200.51300.688000 | 2nd coat of primer | 10d | 2027-03-09 | 2027-03-18 | 9199 |  | 7 Days Work | 9298744 |
| 9201 | 36900.37000.37100.37200.38200.51300.688100 | Final cutting/polishing of stone flooring | 7d | 2027-03-19 | 2027-03-25 | 9200 |  | 7 Days Work | 9298754 |

| ID | WBS | Task | Duration | Start | Finish | Predecessors | Constraint | Calendar | Unique_Task_ID |
| --- | --- | --- | --- | --- | --- | --- | --- | --- | --- |
| 9202 | 36900.37000.37100.37200.38200.51300.65600 | **Toilet** | 237d | 2026-07-31 | 2027-03-24 |  | start no earlier than 2026-07-31 | 7 Days Work | 9294024 |
| 9203 | 36900.37000.37100.37200.38200.51300.65600.1014500 | Toilet_MEP Clearance -1 | 7d | 2026-07-31 | 2026-08-06 | 9166 |  | 7 Days Work | 9305864 |
| 9204 | 36900.37000.37100.37200.38200.51300.65600.1014600 | Toilet_Level Marking | 1d | 2026-08-07 | 2026-08-07 | 9203 |  | 7 Days Work | 9305874 |
| 9205 | 36900.37000.37100.37200.38200.51300.65600.1014700 | Toilet_Chasing work for Electrical conduit & concealed plumbing | 5d | 2026-08-08 | 2026-08-12 | 9204 |  | 7 Days Work | 9305884 |
| 9206 | 36900.37000.37100.37200.38200.51300.65600.1014800 | Toilet_Plumbing work 1st fix | 5d | 2026-08-13 | 2026-08-17 | 9205 |  | 7 Days Work | 9305894 |
| 9207 | 36900.37000.37100.37200.38200.51300.65600.1014900 | Toilet_Sleeve/Bore Packing | 5d | 2026-08-18 | 2026-08-22 | 9206 |  | 7 Days Work | 9305904 |
| 9208 | 36900.37000.37100.37200.38200.51300.65600.1015000 | Toilet_Waterproofing | 10d | 2026-08-23 | 2026-09-01 | 9207 |  | 7 Days Work | 9305914 |
| 9209 | 36900.37000.37100.37200.38200.51300.65600.1015100 | Toilet_Screed | 1d | 2026-09-02 | 2026-09-02 | 9208 |  | 7 Days Work | 9305924 |
| 9210 | 36900.37000.37100.37200.38200.51300.65600.1015200 | Toilet_Plumbing 2nd fix | 5d | 2026-09-03 | 2026-09-07 | 9209 |  | 7 Days Work | 9305934 |
| 9211 | 36900.37000.37100.37200.38200.51300.65600.1015300 | Toilet_Ledge wall | 5d | 2026-09-08 | 2026-09-12 | 9210 |  | 7 Days Work | 9305944 |
| 9212 | 36900.37000.37100.37200.38200.51300.65600.1015400 | Toilet_Cement Plaster | 5d | 2026-09-13 | 2026-09-17 | 9211 |  | 7 Days Work | 9305954 |
| 9213 | 36900.37000.37100.37200.38200.51300.65600.1015500 | Toilet_Door Frame | 1d | 2026-09-18 | 2026-09-18 | 9212 |  | 7 Days Work | 9305964 |
| 9214 | 36900.37000.37100.37200.38200.51300.65600.1015600 | Toilet_Wash basin & Couter | 3d | 2026-09-19 | 2026-09-21 | 9213 |  | 7 Days Work | 9305974 |
| 9215 | 36900.37000.37100.37200.38200.51300.65600.1015700 | Toilet_Wall dado | 20d | 2026-09-22 | 2026-10-11 | 9214 |  | 7 Days Work | 9305984 |
| 9216 | 36900.37000.37100.37200.38200.51300.65600.1015800 | Toilet_Granite Work-Ledge wall top | 3d | 2026-10-12 | 2026-10-14 | 9215 |  | 7 Days Work | 9305994 |
| 9217 | 36900.37000.37100.37200.38200.51300.65600.1015900 | Toilet_Floor Tilling work | 20d | 2026-10-15 | 2026-11-03 | 9216 |  | 7 Days Work | 9306004 |
| 9218 | 36900.37000.37100.37200.38200.51300.65600.1016000 | Toilet_1st row of dado | 5d | 2026-11-04 | 2026-11-08 | 9217 |  | 7 Days Work | 9306014 |
| 9219 | 36900.37000.37100.37200.38200.51300.65600.1016100 | Toilet_Window Fixing | 14d | 2026-11-09 | 2026-11-22 | 9218 |  | 7 Days Work | 9306024 |
| 9220 | 36900.37000.37100.37200.38200.51300.65600.1016200 | Toilet_Services above False ceiling | 21d | 2026-11-23 | 2026-12-13 | 9219 |  | 7 Days Work | 9306034 |
| 9221 | 36900.37000.37100.37200.38200.51300.65600.1016300 | Toilet_False Ceiling framing | 12d | 2026-12-14 | 2026-12-25 | 9220 |  | 7 Days Work | 9306044 |
| 9222 | 36900.37000.37100.37200.38200.51300.65600.1016400 | Toilet_Door Frame | 5d | 2026-12-26 | 2026-12-30 | 9221 |  | 7 Days Work | 9306054 |
| 9223 | 36900.37000.37100.37200.38200.51300.65600.1016500 | Toilet_Epoxy Tile Grouting | 7d | 2027-02-25 | 2027-03-03 | 9198SS |  | 7 Days Work | 9306064 |
| 9224 | 36900.37000.37100.37200.38200.51300.65600.1016600 | Toilet_False ceiling board fixing, CP Sanitary Fixture, Electric Fixture | 21d | 2027-03-04 | 2027-03-24 | 9223 |  | 7 Days Work | 9306074 |
| 9225 | 36900.37000.37100.37200.38200.51400 | **13th Habitable/14th Floor** | 493d | 2025-11-30 | 2027-04-06 |  | start no earlier than 2025-11-30 | 7 Days Work | 9293824 |
| 9226 | 36900.37000.37100.37200.38200.51400.688200 | Post Pour | 7d | 2026-08-05 | 2026-08-11 | 8498 |  | 7 Days Work | 9298764 |
| 9227 | 36900.37000.37100.37200.38200.51400.688300 | MEP Clearance -1 | 5d | 2026-08-12 | 2026-08-16 | 9226 |  | 7 Days Work | 9298774 |
| 9228 | 36900.37000.37100.37200.38200.51400.688400 | Benchmark | 1d | 2026-08-17 | 2026-08-17 | 9227 |  | 7 Days Work | 9298784 |
| 9229 | 36900.37000.37100.37200.38200.51400.688500 | Temporary Railing | 3d | 2026-08-18 | 2026-08-20 | 9228 |  | 7 Days Work | 9298794 |
| 9230 | 36900.37000.37100.37200.38200.51400.688600 | Blockwork | 5d | 2025-11-30 | 2025-12-04 |  | start no earlier than 2025-11-30 | 7 Days Work | 9298445 |
| 9231 | 36900.37000.37100.37200.38200.51400.688700 | Blockwork | 10d | 2026-08-21 | 2026-08-30 | 9229, 9230 |  | 7 Days Work | 9298804 |
| 9232 | 36900.37000.37100.37200.38200.51400.688800 | MEP Clearance -2 | 10d | 2026-08-31 | 2026-09-09 | 9231 |  | 7 Days Work | 9298814 |
| 9233 | 36900.37000.37100.37200.38200.51400.688900 | Gypsum Plaster | 14d | 2026-09-10 | 2026-09-23 | 9232 |  | 7 Days Work | 9298824 |
| 9234 | 36900.37000.37100.37200.38200.51400.689000 | Kitchen Platform | 3d | 2026-09-24 | 2026-09-26 | 9233 |  | 7 Days Work | 9298834 |
| 9235 | 36900.37000.37100.37200.38200.51400.689100 | Kitchen dado | 7d | 2026-09-27 | 2026-10-03 | 9234 |  | 7 Days Work | 9298844 |
| 9236 | 36900.37000.37100.37200.38200.51400.689200 | Fire Fighting | 5d | 2026-10-04 | 2026-10-08 | 9235 |  | 7 Days Work | 9298854 |
| 9237 | 36900.37000.37100.37200.38200.51400.689300 | Anticapilary | 5d | 2026-10-09 | 2026-10-13 | 9236 |  | 7 Days Work | 9298864 |
| 9238 | 36900.37000.37100.37200.38200.51400.689400 | Stone Laying | 10d | 2026-11-16 | 2026-11-25 | 9278 |  | 7 Days Work | 9298874 |
| 9239 | 36900.37000.37100.37200.38200.51400.689500 | Tiles Laying | 7d | 2026-11-16 | 2026-11-22 | 9278 |  | 7 Days Work | 9298884 |
| 9240 | 36900.37000.37100.37200.38200.51400.689600 | 1st cutting/polishing of stone flooring | 7d | 2026-11-23 | 2026-11-29 | 9239 |  | 7 Days Work | 9298894 |
| 9241 | 36900.37000.37100.37200.38200.51400.689700 | Tiles/Stone skirting | 5d | 2026-11-30 | 2026-12-04 | 9240 |  | 7 Days Work | 9298904 |
| 9242 | 36900.37000.37100.37200.38200.51400.689800 | Protechtion sheet | 1d | 2026-12-05 | 2026-12-05 | 9241 |  | 7 Days Work | 9298914 |
| 9243 | 36900.37000.37100.37200.38200.51400.689900 | Installation of Temporary Door | 1d | 2026-12-06 | 2026-12-06 | 9242 |  | 7 Days Work | 9298924 |
| 9244 | 36900.37000.37100.37200.38200.51400.690000 | Fixing of window tracks | 5d | 2026-12-07 | 2026-12-11 | 9243 |  | 7 Days Work | 9298934 |
| 9245 | 36900.37000.37100.37200.38200.51400.690100 | Wire Pulling | 7d | 2026-12-12 | 2026-12-18 | 9244 |  | 7 Days Work | 9298944 |
| 9246 | 36900.37000.37100.37200.38200.51400.690200 | Gypsum Remaining | 5d | 2026-12-19 | 2026-12-23 | 9245 |  | 7 Days Work | 9298954 |
| 9247 | 36900.37000.37100.37200.38200.51400.690300 | Fixing of windoow shutter | 5d | 2026-12-24 | 2026-12-28 | 9246 |  | 7 Days Work | 9298964 |
| 9248 | 36900.37000.37100.37200.38200.51400.690400 | Putty Works - walls & ceiling | 15d | 2026-12-29 | 2027-01-12 | 9247 |  | 7 Days Work | 9298974 |
| 9249 | 36900.37000.37100.37200.38200.51400.690500 | False Ceiling- Framing | 10d | 2027-01-13 | 2027-01-22 | 9248 |  | 7 Days Work | 9298984 |
| 9250 | 36900.37000.37100.37200.38200.51400.690600 | Pre Hung Door | 3d | 2027-01-23 | 2027-01-25 | 9249 |  | 7 Days Work | 9298994 |
| 9251 | 36900.37000.37100.37200.38200.51400.690700 | Protechtion sheet | 2d | 2027-01-26 | 2027-01-27 | 9250 |  | 7 Days Work | 9299004 |
| 9252 | 36900.37000.37100.37200.38200.51400.690800 | Skirting near door | 2d | 2027-01-28 | 2027-01-29 | 9251 |  | 7 Days Work | 9299014 |
| 9253 | 36900.37000.37100.37200.38200.51400.690900 | Electrical Switch box fixing | 14d | 2027-01-30 | 2027-02-12 | 9252 |  | 7 Days Work | 9299024 |
| 9254 | 36900.37000.37100.37200.38200.51400.691000 | Fire Fighting painting | 5d | 2027-02-13 | 2027-02-17 | 9253 |  | 7 Days Work | 9299034 |
| 9255 | 36900.37000.37100.37200.38200.51400.691100 | Protection of all flooring, door & window hardware | 5d | 2027-02-18 | 2027-02-22 | 9254 |  | 7 Days Work | 9299044 |
| 9256 | 36900.37000.37100.37200.38200.51400.691200 | 1st coat primer- ceiling 1st & walls | 14d | 2027-02-23 | 2027-03-08 | 9255 |  | 7 Days Work | 9299054 |
| 9257 | 36900.37000.37100.37200.38200.51400.691300 | Wooden Flooring | 5d | 2027-03-09 | 2027-03-13 | 9256 |  | 7 Days Work | 9299064 |
| 9258 | 36900.37000.37100.37200.38200.51400.691400 | Removing of Temporary Railing & installation of Glass Railing | 5d | 2027-03-09 | 2027-03-13 | 9256 |  | 7 Days Work | 9299074 |
| 9259 | 36900.37000.37100.37200.38200.51400.691500 | Tile Grouting | 7d | 2027-03-09 | 2027-03-15 | 9256 |  | 7 Days Work | 9299084 |
| 9260 | 36900.37000.37100.37200.38200.51400.691600 | False Ceiling | 5d | 2027-03-16 | 2027-03-20 | 9259 |  | 7 Days Work | 9299094 |
| 9261 | 36900.37000.37100.37200.38200.51400.691700 | 2nd coat of primer | 10d | 2027-03-21 | 2027-03-30 | 9260 |  | 7 Days Work | 9299104 |
| 9262 | 36900.37000.37100.37200.38200.51400.691800 | Final cutting/polishing of stone flooring | 7d | 2027-03-31 | 2027-04-06 | 9261 |  | 7 Days Work | 9299114 |

| ID | WBS | Task | Duration | Start | Finish | Predecessors | Constraint | Calendar | Unique_Task_ID |
| --- | --- | --- | --- | --- | --- | --- | --- | --- | --- |
| 9263 | 36900.37000.37100.37200.38200.51400.65700 | **Toilet** | 237d | 2026-08-12 | 2027-04-05 |  | start no earlier than 2026-08-12 | 7 Days Work | 9294034 |
| 9264 | 36900.37000.37100.37200.38200.51400.65700.1016700 | Toilet_MEP Clearance -1 | 7d | 2026-08-12 | 2026-08-18 | 9226 |  | 7 Days Work | 9306084 |
| 9265 | 36900.37000.37100.37200.38200.51400.65700.1016800 | Toilet_Level Marking | 1d | 2026-08-19 | 2026-08-19 | 9264 |  | 7 Days Work | 9306094 |
| 9266 | 36900.37000.37100.37200.38200.51400.65700.1016900 | Toilet_Chasing work for Electrical conduit & concealed plumbing | 5d | 2026-08-20 | 2026-08-24 | 9265 |  | 7 Days Work | 9306104 |
| 9267 | 36900.37000.37100.37200.38200.51400.65700.1017000 | Toilet_Plumbing work 1st fix | 5d | 2026-08-25 | 2026-08-29 | 9266 |  | 7 Days Work | 9306114 |
| 9268 | 36900.37000.37100.37200.38200.51400.65700.1017100 | Toilet_Sleeve/Bore Packing | 5d | 2026-08-30 | 2026-09-03 | 9267 |  | 7 Days Work | 9306124 |
| 9269 | 36900.37000.37100.37200.38200.51400.65700.1017200 | Toilet_Waterproofing | 10d | 2026-09-04 | 2026-09-13 | 9268 |  | 7 Days Work | 9306134 |
| 9270 | 36900.37000.37100.37200.38200.51400.65700.1017300 | Toilet_Screed | 1d | 2026-09-14 | 2026-09-14 | 9269 |  | 7 Days Work | 9306144 |
| 9271 | 36900.37000.37100.37200.38200.51400.65700.1017400 | Toilet_Plumbing 2nd fix | 5d | 2026-09-15 | 2026-09-19 | 9270 |  | 7 Days Work | 9306154 |
| 9272 | 36900.37000.37100.37200.38200.51400.65700.1017500 | Toilet_Ledge wall | 5d | 2026-09-20 | 2026-09-24 | 9271 |  | 7 Days Work | 9306164 |
| 9273 | 36900.37000.37100.37200.38200.51400.65700.1017600 | Toilet_Cement Plaster | 5d | 2026-09-25 | 2026-09-29 | 9272 |  | 7 Days Work | 9306174 |
| 9274 | 36900.37000.37100.37200.38200.51400.65700.1017700 | Toilet_Door Frame | 1d | 2026-09-30 | 2026-09-30 | 9273 |  | 7 Days Work | 9306184 |
| 9275 | 36900.37000.37100.37200.38200.51400.65700.1017800 | Toilet_Wash basin & Couter | 3d | 2026-10-01 | 2026-10-03 | 9274 |  | 7 Days Work | 9306194 |
| 9276 | 36900.37000.37100.37200.38200.51400.65700.1017900 | Toilet_Wall dado | 20d | 2026-10-04 | 2026-10-23 | 9275 |  | 7 Days Work | 9306204 |
| 9277 | 36900.37000.37100.37200.38200.51400.65700.1018000 | Toilet_Granite Work-Ledge wall top | 3d | 2026-10-24 | 2026-10-26 | 9276 |  | 7 Days Work | 9306214 |
| 9278 | 36900.37000.37100.37200.38200.51400.65700.1018100 | Toilet_Floor Tilling work | 20d | 2026-10-27 | 2026-11-15 | 9277 |  | 7 Days Work | 9306224 |
| 9279 | 36900.37000.37100.37200.38200.51400.65700.1018200 | Toilet_1st row of dado | 5d | 2026-11-16 | 2026-11-20 | 9278 |  | 7 Days Work | 9306234 |
| 9280 | 36900.37000.37100.37200.38200.51400.65700.1018300 | Toilet_Window Fixing | 14d | 2026-11-21 | 2026-12-04 | 9279 |  | 7 Days Work | 9306244 |
| 9281 | 36900.37000.37100.37200.38200.51400.65700.1018400 | Toilet_Services above False ceiling | 21d | 2026-12-05 | 2026-12-25 | 9280 |  | 7 Days Work | 9306254 |
| 9282 | 36900.37000.37100.37200.38200.51400.65700.1018500 | Toilet_False Ceiling framing | 12d | 2026-12-26 | 2027-01-06 | 9281 |  | 7 Days Work | 9306264 |
| 9283 | 36900.37000.37100.37200.38200.51400.65700.1018600 | Toilet_Door Frame | 5d | 2027-01-07 | 2027-01-11 | 9282 |  | 7 Days Work | 9306274 |
| 9284 | 36900.37000.37100.37200.38200.51400.65700.1018700 | Toilet_Epoxy Tile Grouting | 7d | 2027-03-09 | 2027-03-15 | 9259SS |  | 7 Days Work | 9306284 |
| 9285 | 36900.37000.37100.37200.38200.51400.65700.1018800 | Toilet_False ceiling board fixing, CP Sanitary Fixture, Electric Fixture | 21d | 2027-03-16 | 2027-04-05 | 9284 |  | 7 Days Work | 9306294 |
| 9286 | 36900.37000.37100.37200.38200.51500 | **14th Habitable/15th Floor** | 245d | 2026-08-17 | 2027-04-18 |  | start no earlier than 2026-08-17 | 7 Days Work | 9293834 |
| 9287 | 36900.37000.37100.37200.38200.51500.691900 | Post Pour | 7d | 2026-08-17 | 2026-08-23 | 8499 |  | 7 Days Work | 9299124 |
| 9288 | 36900.37000.37100.37200.38200.51500.692000 | MEP Clearance -1 | 5d | 2026-08-24 | 2026-08-28 | 9287 |  | 7 Days Work | 9299134 |
| 9289 | 36900.37000.37100.37200.38200.51500.692100 | Benchmark | 1d | 2026-08-29 | 2026-08-29 | 9288 |  | 7 Days Work | 9299144 |
| 9290 | 36900.37000.37100.37200.38200.51500.692200 | Temporary Railing | 3d | 2026-08-30 | 2026-09-01 | 9289 |  | 7 Days Work | 9299154 |
| 9291 | 36900.37000.37100.37200.38200.51500.692300 | Blockwork | 10d | 2026-09-02 | 2026-09-11 | 9290 |  | 7 Days Work | 9299164 |
| 9292 | 36900.37000.37100.37200.38200.51500.692400 | MEP Clearance -2 | 10d | 2026-09-12 | 2026-09-21 | 9291 |  | 7 Days Work | 9299174 |
| 9293 | 36900.37000.37100.37200.38200.51500.692500 | Gypsum Plaster | 14d | 2026-09-22 | 2026-10-05 | 9292 |  | 7 Days Work | 9299184 |
| 9294 | 36900.37000.37100.37200.38200.51500.692600 | Kitchen Platform | 3d | 2026-10-06 | 2026-10-08 | 9293 |  | 7 Days Work | 9299194 |
| 9295 | 36900.37000.37100.37200.38200.51500.692700 | Kitchen dado | 7d | 2026-10-09 | 2026-10-15 | 9294 |  | 7 Days Work | 9299204 |
| 9296 | 36900.37000.37100.37200.38200.51500.692800 | Fire Fighting | 5d | 2026-10-16 | 2026-10-20 | 9295 |  | 7 Days Work | 9299214 |
| 9297 | 36900.37000.37100.37200.38200.51500.692900 | Anticapilary | 5d | 2026-10-21 | 2026-10-25 | 9296 |  | 7 Days Work | 9299224 |
| 9298 | 36900.37000.37100.37200.38200.51500.693000 | Stone Laying | 10d | 2026-11-28 | 2026-12-07 | 9338 |  | 7 Days Work | 9299234 |
| 9299 | 36900.37000.37100.37200.38200.51500.693100 | Tiles Laying | 7d | 2026-11-28 | 2026-12-04 | 9338 |  | 7 Days Work | 9299244 |
| 9300 | 36900.37000.37100.37200.38200.51500.693200 | 1st cutting/polishing of stone flooring | 7d | 2026-12-05 | 2026-12-11 | 9299 |  | 7 Days Work | 9299254 |
| 9301 | 36900.37000.37100.37200.38200.51500.693300 | Tiles/Stone skirting | 5d | 2026-12-12 | 2026-12-16 | 9300 |  | 7 Days Work | 9299264 |
| 9302 | 36900.37000.37100.37200.38200.51500.693400 | Protechtion sheet | 1d | 2026-12-17 | 2026-12-17 | 9301 |  | 7 Days Work | 9299274 |
| 9303 | 36900.37000.37100.37200.38200.51500.693500 | Installation of Temporary Door | 1d | 2026-12-18 | 2026-12-18 | 9302 |  | 7 Days Work | 9299284 |
| 9304 | 36900.37000.37100.37200.38200.51500.693600 | Fixing of window tracks | 5d | 2026-12-19 | 2026-12-23 | 9303 |  | 7 Days Work | 9299294 |
| 9305 | 36900.37000.37100.37200.38200.51500.693700 | Wire Pulling | 7d | 2026-12-24 | 2026-12-30 | 9304 |  | 7 Days Work | 9299304 |
| 9306 | 36900.37000.37100.37200.38200.51500.693800 | Gypsum Remaining | 5d | 2026-12-31 | 2027-01-04 | 9305 |  | 7 Days Work | 9299314 |
| 9307 | 36900.37000.37100.37200.38200.51500.693900 | Fixing of windoow shutter | 5d | 2027-01-05 | 2027-01-09 | 9306 |  | 7 Days Work | 9299324 |
| 9308 | 36900.37000.37100.37200.38200.51500.694000 | Putty Works - walls & ceiling | 15d | 2027-01-10 | 2027-01-24 | 9307 |  | 7 Days Work | 9299334 |
| 9309 | 36900.37000.37100.37200.38200.51500.694100 | False Ceiling- Framing | 10d | 2027-01-25 | 2027-02-03 | 9308 |  | 7 Days Work | 9299344 |
| 9310 | 36900.37000.37100.37200.38200.51500.694200 | Pre Hung Door | 3d | 2027-02-04 | 2027-02-06 | 9309 |  | 7 Days Work | 9299354 |
| 9311 | 36900.37000.37100.37200.38200.51500.694300 | Protechtion sheet | 2d | 2027-02-07 | 2027-02-08 | 9310 |  | 7 Days Work | 9299364 |
| 9312 | 36900.37000.37100.37200.38200.51500.694400 | Skirting near door | 2d | 2027-02-09 | 2027-02-10 | 9311 |  | 7 Days Work | 9299374 |
| 9313 | 36900.37000.37100.37200.38200.51500.694500 | Electrical Switch box fixing | 14d | 2027-02-11 | 2027-02-24 | 9312 |  | 7 Days Work | 9299384 |
| 9314 | 36900.37000.37100.37200.38200.51500.694600 | Fire Fighting painting | 5d | 2027-02-25 | 2027-03-01 | 9313 |  | 7 Days Work | 9299394 |
| 9315 | 36900.37000.37100.37200.38200.51500.694700 | Protection of all flooring, door & window hardware | 5d | 2027-03-02 | 2027-03-06 | 9314 |  | 7 Days Work | 9299404 |
| 9316 | 36900.37000.37100.37200.38200.51500.694800 | 1st coat primer- ceiling 1st & walls | 14d | 2027-03-07 | 2027-03-20 | 9315 |  | 7 Days Work | 9299414 |
| 9317 | 36900.37000.37100.37200.38200.51500.694900 | Wooden Flooring | 5d | 2027-03-21 | 2027-03-25 | 9316 |  | 7 Days Work | 9299424 |
| 9318 | 36900.37000.37100.37200.38200.51500.695000 | Removing of Temporary Railing & installation of Glass Railing | 5d | 2027-03-21 | 2027-03-25 | 9316 |  | 7 Days Work | 9299434 |
| 9319 | 36900.37000.37100.37200.38200.51500.695100 | Tile Grouting | 7d | 2027-03-21 | 2027-03-27 | 9316 |  | 7 Days Work | 9299444 |
| 9320 | 36900.37000.37100.37200.38200.51500.695200 | False Ceiling | 5d | 2027-03-28 | 2027-04-01 | 9319 |  | 7 Days Work | 9299454 |
| 9321 | 36900.37000.37100.37200.38200.51500.695300 | 2nd coat of primer | 10d | 2027-04-02 | 2027-04-11 | 9320 |  | 7 Days Work | 9299464 |
| 9322 | 36900.37000.37100.37200.38200.51500.695400 | Final cutting/polishing of stone flooring | 7d | 2027-04-12 | 2027-04-18 | 9321 |  | 7 Days Work | 9299474 |

| ID | WBS | Task | Duration | Start | Finish | Predecessors | Constraint | Calendar | Unique_Task_ID |
| --- | --- | --- | --- | --- | --- | --- | --- | --- | --- |
| 9323 | 36900.37000.37100.37200.38200.51500.65800 | **Toilet** | 237d | 2026-08-24 | 2027-04-17 |  | start no earlier than 2026-08-24 | 7 Days Work | 9294044 |
| 9324 | 36900.37000.37100.37200.38200.51500.65800.1018900 | Toilet_MEP Clearance -1 | 7d | 2026-08-24 | 2026-08-30 | 9287 |  | 7 Days Work | 9306304 |
| 9325 | 36900.37000.37100.37200.38200.51500.65800.1019000 | Toilet_Level Marking | 1d | 2026-08-31 | 2026-08-31 | 9324 |  | 7 Days Work | 9306314 |
| 9326 | 36900.37000.37100.37200.38200.51500.65800.1019100 | Toilet_Chasing work for Electrical conduit & concealed plumbing | 5d | 2026-09-01 | 2026-09-05 | 9325 |  | 7 Days Work | 9306324 |
| 9327 | 36900.37000.37100.37200.38200.51500.65800.1019200 | Toilet_Plumbing work 1st fix | 5d | 2026-09-06 | 2026-09-10 | 9326 |  | 7 Days Work | 9306334 |
| 9328 | 36900.37000.37100.37200.38200.51500.65800.1019300 | Toilet_Sleeve/Bore Packing | 5d | 2026-09-11 | 2026-09-15 | 9327 |  | 7 Days Work | 9306344 |
| 9329 | 36900.37000.37100.37200.38200.51500.65800.1019400 | Toilet_Waterproofing | 10d | 2026-09-16 | 2026-09-25 | 9328 |  | 7 Days Work | 9306354 |
| 9330 | 36900.37000.37100.37200.38200.51500.65800.1019500 | Toilet_Screed | 1d | 2026-09-26 | 2026-09-26 | 9329 |  | 7 Days Work | 9306364 |
| 9331 | 36900.37000.37100.37200.38200.51500.65800.1019600 | Toilet_Plumbing 2nd fix | 5d | 2026-09-27 | 2026-10-01 | 9330 |  | 7 Days Work | 9306374 |
| 9332 | 36900.37000.37100.37200.38200.51500.65800.1019700 | Toilet_Ledge wall | 5d | 2026-10-02 | 2026-10-06 | 9331 |  | 7 Days Work | 9306384 |
| 9333 | 36900.37000.37100.37200.38200.51500.65800.1019800 | Toilet_Cement Plaster | 5d | 2026-10-07 | 2026-10-11 | 9332 |  | 7 Days Work | 9306394 |
| 9334 | 36900.37000.37100.37200.38200.51500.65800.1019900 | Toilet_Door Frame | 1d | 2026-10-12 | 2026-10-12 | 9333 |  | 7 Days Work | 9306404 |
| 9335 | 36900.37000.37100.37200.38200.51500.65800.1020000 | Toilet_Wash basin & Couter | 3d | 2026-10-13 | 2026-10-15 | 9334 |  | 7 Days Work | 9306414 |
| 9336 | 36900.37000.37100.37200.38200.51500.65800.1020100 | Toilet_Wall dado | 20d | 2026-10-16 | 2026-11-04 | 9335 |  | 7 Days Work | 9306424 |
| 9337 | 36900.37000.37100.37200.38200.51500.65800.1020200 | Toilet_Granite Work-Ledge wall top | 3d | 2026-11-05 | 2026-11-07 | 9336 |  | 7 Days Work | 9306434 |
| 9338 | 36900.37000.37100.37200.38200.51500.65800.1020300 | Toilet_Floor Tilling work | 20d | 2026-11-08 | 2026-11-27 | 9337 |  | 7 Days Work | 9306444 |
| 9339 | 36900.37000.37100.37200.38200.51500.65800.1020400 | Toilet_1st row of dado | 5d | 2026-11-28 | 2026-12-02 | 9338 |  | 7 Days Work | 9306454 |
| 9340 | 36900.37000.37100.37200.38200.51500.65800.1020500 | Toilet_Window Fixing | 14d | 2026-12-03 | 2026-12-16 | 9339 |  | 7 Days Work | 9306464 |
| 9341 | 36900.37000.37100.37200.38200.51500.65800.1020600 | Toilet_Services above False ceiling | 21d | 2026-12-17 | 2027-01-06 | 9340 |  | 7 Days Work | 9306474 |
| 9342 | 36900.37000.37100.37200.38200.51500.65800.1020700 | Toilet_False Ceiling framing | 12d | 2027-01-07 | 2027-01-18 | 9341 |  | 7 Days Work | 9306484 |
| 9343 | 36900.37000.37100.37200.38200.51500.65800.1020800 | Toilet_Door Frame | 5d | 2027-01-19 | 2027-01-23 | 9342 |  | 7 Days Work | 9306494 |
| 9344 | 36900.37000.37100.37200.38200.51500.65800.1020900 | Toilet_Epoxy Tile Grouting | 7d | 2027-03-21 | 2027-03-27 | 9319SS |  | 7 Days Work | 9306504 |
| 9345 | 36900.37000.37100.37200.38200.51500.65800.1021000 | Toilet_False ceiling board fixing, CP Sanitary Fixture, Electric Fixture | 21d | 2027-03-28 | 2027-04-17 | 9344 |  | 7 Days Work | 9306514 |
| 9346 | 36900.37000.37100.37200.38200.51600 | **15th Habitable/16th Floor** | 245d | 2026-08-29 | 2027-04-30 |  | start no earlier than 2026-08-29 | 7 Days Work | 9293844 |
| 9347 | 36900.37000.37100.37200.38200.51600.695500 | Post Pour | 7d | 2026-08-29 | 2026-09-04 | 8500 |  | 7 Days Work | 9299484 |
| 9348 | 36900.37000.37100.37200.38200.51600.695600 | MEP Clearance -1 | 5d | 2026-09-05 | 2026-09-09 | 9347 |  | 7 Days Work | 9299494 |
| 9349 | 36900.37000.37100.37200.38200.51600.695700 | Benchmark | 1d | 2026-09-10 | 2026-09-10 | 9348 |  | 7 Days Work | 9299504 |
| 9350 | 36900.37000.37100.37200.38200.51600.695800 | Temporary Railing | 3d | 2026-09-11 | 2026-09-13 | 9349 |  | 7 Days Work | 9299514 |
| 9351 | 36900.37000.37100.37200.38200.51600.695900 | Blockwork | 10d | 2026-09-14 | 2026-09-23 | 9350 |  | 7 Days Work | 9299524 |
| 9352 | 36900.37000.37100.37200.38200.51600.696000 | MEP Clearance -2 | 10d | 2026-09-24 | 2026-10-03 | 9351 |  | 7 Days Work | 9299534 |
| 9353 | 36900.37000.37100.37200.38200.51600.696100 | Gypsum Plaster | 14d | 2026-10-04 | 2026-10-17 | 9352 |  | 7 Days Work | 9299544 |
| 9354 | 36900.37000.37100.37200.38200.51600.696200 | Kitchen Platform | 3d | 2026-10-18 | 2026-10-20 | 9353 |  | 7 Days Work | 9299554 |
| 9355 | 36900.37000.37100.37200.38200.51600.696300 | Kitchen dado | 7d | 2026-10-21 | 2026-10-27 | 9354 |  | 7 Days Work | 9299564 |
| 9356 | 36900.37000.37100.37200.38200.51600.696400 | Fire Fighting | 5d | 2026-10-28 | 2026-11-01 | 9355 |  | 7 Days Work | 9299574 |
| 9357 | 36900.37000.37100.37200.38200.51600.696500 | Anticapilary | 5d | 2026-11-02 | 2026-11-06 | 9356 |  | 7 Days Work | 9299584 |
| 9358 | 36900.37000.37100.37200.38200.51600.696600 | Stone Laying | 10d | 2026-12-10 | 2026-12-19 | 9398 |  | 7 Days Work | 9299594 |
| 9359 | 36900.37000.37100.37200.38200.51600.696700 | Tiles Laying | 7d | 2026-12-10 | 2026-12-16 | 9398 |  | 7 Days Work | 9299604 |
| 9360 | 36900.37000.37100.37200.38200.51600.696800 | 1st cutting/polishing of stone flooring | 7d | 2026-12-17 | 2026-12-23 | 9359 |  | 7 Days Work | 9299614 |
| 9361 | 36900.37000.37100.37200.38200.51600.696900 | Tiles/Stone skirting | 5d | 2026-12-24 | 2026-12-28 | 9360 |  | 7 Days Work | 9299624 |
| 9362 | 36900.37000.37100.37200.38200.51600.697000 | Protechtion sheet | 1d | 2026-12-29 | 2026-12-29 | 9361 |  | 7 Days Work | 9299634 |
| 9363 | 36900.37000.37100.37200.38200.51600.697100 | Installation of Temporary Door | 1d | 2026-12-30 | 2026-12-30 | 9362 |  | 7 Days Work | 9299644 |
| 9364 | 36900.37000.37100.37200.38200.51600.697200 | Fixing of window tracks | 5d | 2026-12-31 | 2027-01-04 | 9363 |  | 7 Days Work | 9299654 |
| 9365 | 36900.37000.37100.37200.38200.51600.697300 | Wire Pulling | 7d | 2027-01-05 | 2027-01-11 | 9364 |  | 7 Days Work | 9299664 |
| 9366 | 36900.37000.37100.37200.38200.51600.697400 | Gypsum Remaining | 5d | 2027-01-12 | 2027-01-16 | 9365 |  | 7 Days Work | 9299674 |
| 9367 | 36900.37000.37100.37200.38200.51600.697500 | Fixing of windoow shutter | 5d | 2027-01-17 | 2027-01-21 | 9366 |  | 7 Days Work | 9299684 |
| 9368 | 36900.37000.37100.37200.38200.51600.697600 | Putty Works - walls & ceiling | 15d | 2027-01-22 | 2027-02-05 | 9367 |  | 7 Days Work | 9299694 |
| 9369 | 36900.37000.37100.37200.38200.51600.697700 | False Ceiling- Framing | 10d | 2027-02-06 | 2027-02-15 | 9368 |  | 7 Days Work | 9299704 |
| 9370 | 36900.37000.37100.37200.38200.51600.697800 | Pre Hung Door | 3d | 2027-02-16 | 2027-02-18 | 9369 |  | 7 Days Work | 9299714 |
| 9371 | 36900.37000.37100.37200.38200.51600.697900 | Protechtion sheet | 2d | 2027-02-19 | 2027-02-20 | 9370 |  | 7 Days Work | 9299724 |
| 9372 | 36900.37000.37100.37200.38200.51600.698000 | Skirting near door | 2d | 2027-02-21 | 2027-02-22 | 9371 |  | 7 Days Work | 9299734 |
| 9373 | 36900.37000.37100.37200.38200.51600.698100 | Electrical Switch box fixing | 14d | 2027-02-23 | 2027-03-08 | 9372 |  | 7 Days Work | 9299744 |
| 9374 | 36900.37000.37100.37200.38200.51600.698200 | Fire Fighting painting | 5d | 2027-03-09 | 2027-03-13 | 9373 |  | 7 Days Work | 9299754 |
| 9375 | 36900.37000.37100.37200.38200.51600.698300 | Protection of all flooring, door & window hardware | 5d | 2027-03-14 | 2027-03-18 | 9374 |  | 7 Days Work | 9299764 |
| 9376 | 36900.37000.37100.37200.38200.51600.698400 | 1st coat primer- ceiling 1st & walls | 14d | 2027-03-19 | 2027-04-01 | 9375 |  | 7 Days Work | 9299774 |
| 9377 | 36900.37000.37100.37200.38200.51600.698500 | Wooden Flooring | 5d | 2027-04-02 | 2027-04-06 | 9376 |  | 7 Days Work | 9299784 |
| 9378 | 36900.37000.37100.37200.38200.51600.698600 | Removing of Temporary Railing & installation of Glass Railing | 5d | 2027-04-02 | 2027-04-06 | 9376 |  | 7 Days Work | 9299794 |
| 9379 | 36900.37000.37100.37200.38200.51600.698700 | Tile Grouting | 7d | 2027-04-02 | 2027-04-08 | 9376 |  | 7 Days Work | 9299804 |
| 9380 | 36900.37000.37100.37200.38200.51600.698800 | False Ceiling | 5d | 2027-04-09 | 2027-04-13 | 9379 |  | 7 Days Work | 9299814 |
| 9381 | 36900.37000.37100.37200.38200.51600.698900 | 2nd coat of primer | 10d | 2027-04-14 | 2027-04-23 | 9380 |  | 7 Days Work | 9299824 |
| 9382 | 36900.37000.37100.37200.38200.51600.699000 | Final cutting/polishing of stone flooring | 7d | 2027-04-24 | 2027-04-30 | 9381 |  | 7 Days Work | 9299834 |

| ID | WBS | Task | Duration | Start | Finish | Predecessors | Constraint | Calendar | Unique_Task_ID |
| --- | --- | --- | --- | --- | --- | --- | --- | --- | --- |
| 9383 | 36900.37000.37100.37200.38200.51600.65900 | **Toilet** | 237d | 2026-09-05 | 2027-04-29 |  | start no earlier than 2026-09-05 | 7 Days Work | 9294054 |
| 9384 | 36900.37000.37100.37200.38200.51600.65900.1021100 | Toilet_MEP Clearance -1 | 7d | 2026-09-05 | 2026-09-11 | 9347 |  | 7 Days Work | 9306524 |
| 9385 | 36900.37000.37100.37200.38200.51600.65900.1021200 | Toilet_Level Marking | 1d | 2026-09-12 | 2026-09-12 | 9384 |  | 7 Days Work | 9306534 |
| 9386 | 36900.37000.37100.37200.38200.51600.65900.1021300 | Toilet_Chasing work for Electrical conduit & concealed plumbing | 5d | 2026-09-13 | 2026-09-17 | 9385 |  | 7 Days Work | 9306544 |
| 9387 | 36900.37000.37100.37200.38200.51600.65900.1021400 | Toilet_Plumbing work 1st fix | 5d | 2026-09-18 | 2026-09-22 | 9386 |  | 7 Days Work | 9306554 |
| 9388 | 36900.37000.37100.37200.38200.51600.65900.1021500 | Toilet_Sleeve/Bore Packing | 5d | 2026-09-23 | 2026-09-27 | 9387 |  | 7 Days Work | 9306564 |
| 9389 | 36900.37000.37100.37200.38200.51600.65900.1021600 | Toilet_Waterproofing | 10d | 2026-09-28 | 2026-10-07 | 9388 |  | 7 Days Work | 9306574 |
| 9390 | 36900.37000.37100.37200.38200.51600.65900.1021700 | Toilet_Screed | 1d | 2026-10-08 | 2026-10-08 | 9389 |  | 7 Days Work | 9306584 |
| 9391 | 36900.37000.37100.37200.38200.51600.65900.1021800 | Toilet_Plumbing 2nd fix | 5d | 2026-10-09 | 2026-10-13 | 9390 |  | 7 Days Work | 9306594 |
| 9392 | 36900.37000.37100.37200.38200.51600.65900.1021900 | Toilet_Ledge wall | 5d | 2026-10-14 | 2026-10-18 | 9391 |  | 7 Days Work | 9306604 |
| 9393 | 36900.37000.37100.37200.38200.51600.65900.1022000 | Toilet_Cement Plaster | 5d | 2026-10-19 | 2026-10-23 | 9392 |  | 7 Days Work | 9306614 |
| 9394 | 36900.37000.37100.37200.38200.51600.65900.1022100 | Toilet_Door Frame | 1d | 2026-10-24 | 2026-10-24 | 9393 |  | 7 Days Work | 9306624 |
| 9395 | 36900.37000.37100.37200.38200.51600.65900.1022200 | Toilet_Wash basin & Couter | 3d | 2026-10-25 | 2026-10-27 | 9394 |  | 7 Days Work | 9306634 |
| 9396 | 36900.37000.37100.37200.38200.51600.65900.1022300 | Toilet_Wall dado | 20d | 2026-10-28 | 2026-11-16 | 9395 |  | 7 Days Work | 9306644 |
| 9397 | 36900.37000.37100.37200.38200.51600.65900.1022400 | Toilet_Granite Work-Ledge wall top | 3d | 2026-11-17 | 2026-11-19 | 9396 |  | 7 Days Work | 9306654 |
| 9398 | 36900.37000.37100.37200.38200.51600.65900.1022500 | Toilet_Floor Tilling work | 20d | 2026-11-20 | 2026-12-09 | 9397 |  | 7 Days Work | 9306664 |
| 9399 | 36900.37000.37100.37200.38200.51600.65900.1022600 | Toilet_1st row of dado | 5d | 2026-12-10 | 2026-12-14 | 9398 |  | 7 Days Work | 9306674 |
| 9400 | 36900.37000.37100.37200.38200.51600.65900.1022700 | Toilet_Window Fixing | 14d | 2026-12-15 | 2026-12-28 | 9399 |  | 7 Days Work | 9306684 |
| 9401 | 36900.37000.37100.37200.38200.51600.65900.1022800 | Toilet_Services above False ceiling | 21d | 2026-12-29 | 2027-01-18 | 9400 |  | 7 Days Work | 9306694 |
| 9402 | 36900.37000.37100.37200.38200.51600.65900.1022900 | Toilet_False Ceiling framing | 12d | 2027-01-19 | 2027-01-30 | 9401 |  | 7 Days Work | 9306704 |
| 9403 | 36900.37000.37100.37200.38200.51600.65900.1023000 | Toilet_Door Frame | 5d | 2027-01-31 | 2027-02-04 | 9402 |  | 7 Days Work | 9306714 |
| 9404 | 36900.37000.37100.37200.38200.51600.65900.1023100 | Toilet_Epoxy Tile Grouting | 7d | 2027-04-02 | 2027-04-08 | 9379SS |  | 7 Days Work | 9306724 |
| 9405 | 36900.37000.37100.37200.38200.51600.65900.1023200 | Toilet_False ceiling board fixing, CP Sanitary Fixture, Electric Fixture | 21d | 2027-04-09 | 2027-04-29 | 9404 |  | 7 Days Work | 9306734 |
| 9406 | 36900.37000.37100.37200.38200.51700 | **16th Habitable/17th Floor** | 245d | 2026-09-10 | 2027-05-12 |  | start no earlier than 2026-09-10 | 7 Days Work | 9293854 |
| 9407 | 36900.37000.37100.37200.38200.51700.699100 | Post Pour | 7d | 2026-09-10 | 2026-09-16 | 8501 |  | 7 Days Work | 9299844 |
| 9408 | 36900.37000.37100.37200.38200.51700.699200 | MEP Clearance -1 | 5d | 2026-09-17 | 2026-09-21 | 9407 |  | 7 Days Work | 9299854 |
| 9409 | 36900.37000.37100.37200.38200.51700.699300 | Benchmark | 1d | 2026-09-22 | 2026-09-22 | 9408 |  | 7 Days Work | 9299864 |
| 9410 | 36900.37000.37100.37200.38200.51700.699400 | Temporary Railing | 3d | 2026-09-23 | 2026-09-25 | 9409 |  | 7 Days Work | 9299874 |
| 9411 | 36900.37000.37100.37200.38200.51700.699500 | Blockwork | 10d | 2026-09-26 | 2026-10-05 | 9410 |  | 7 Days Work | 9299884 |
| 9412 | 36900.37000.37100.37200.38200.51700.699600 | MEP Clearance -2 | 10d | 2026-10-06 | 2026-10-15 | 9411 |  | 7 Days Work | 9299894 |
| 9413 | 36900.37000.37100.37200.38200.51700.699700 | Gypsum Plaster | 14d | 2026-10-16 | 2026-10-29 | 9412 |  | 7 Days Work | 9299904 |
| 9414 | 36900.37000.37100.37200.38200.51700.699800 | Kitchen Platform | 3d | 2026-10-30 | 2026-11-01 | 9413 |  | 7 Days Work | 9299914 |
| 9415 | 36900.37000.37100.37200.38200.51700.699900 | Kitchen dado | 7d | 2026-11-02 | 2026-11-08 | 9414 |  | 7 Days Work | 9299924 |
| 9416 | 36900.37000.37100.37200.38200.51700.700000 | Fire Fighting | 5d | 2026-11-09 | 2026-11-13 | 9415 |  | 7 Days Work | 9299934 |
| 9417 | 36900.37000.37100.37200.38200.51700.700100 | Anticapilary | 5d | 2026-11-14 | 2026-11-18 | 9416 |  | 7 Days Work | 9299944 |
| 9418 | 36900.37000.37100.37200.38200.51700.700200 | Stone Laying | 10d | 2026-12-22 | 2026-12-31 | 9458 |  | 7 Days Work | 9299954 |
| 9419 | 36900.37000.37100.37200.38200.51700.700300 | Tiles Laying | 7d | 2026-12-22 | 2026-12-28 | 9458 |  | 7 Days Work | 9299964 |
| 9420 | 36900.37000.37100.37200.38200.51700.700400 | 1st cutting/polishing of stone flooring | 7d | 2026-12-29 | 2027-01-04 | 9419 |  | 7 Days Work | 9299974 |
| 9421 | 36900.37000.37100.37200.38200.51700.700500 | Tiles/Stone skirting | 5d | 2027-01-05 | 2027-01-09 | 9420 |  | 7 Days Work | 9299984 |
| 9422 | 36900.37000.37100.37200.38200.51700.700600 | Protechtion sheet | 1d | 2027-01-10 | 2027-01-10 | 9421 |  | 7 Days Work | 9299994 |
| 9423 | 36900.37000.37100.37200.38200.51700.700700 | Installation of Temporary Door | 1d | 2027-01-11 | 2027-01-11 | 9422 |  | 7 Days Work | 9300004 |
| 9424 | 36900.37000.37100.37200.38200.51700.700800 | Fixing of window tracks | 5d | 2027-01-12 | 2027-01-16 | 9423 |  | 7 Days Work | 9300014 |
| 9425 | 36900.37000.37100.37200.38200.51700.700900 | Wire Pulling | 7d | 2027-01-17 | 2027-01-23 | 9424 |  | 7 Days Work | 9300024 |
| 9426 | 36900.37000.37100.37200.38200.51700.701000 | Gypsum Remaining | 5d | 2027-01-24 | 2027-01-28 | 9425 |  | 7 Days Work | 9300034 |
| 9427 | 36900.37000.37100.37200.38200.51700.701100 | Fixing of windoow shutter | 5d | 2027-01-29 | 2027-02-02 | 9426 |  | 7 Days Work | 9300044 |
| 9428 | 36900.37000.37100.37200.38200.51700.701200 | Putty Works - walls & ceiling | 15d | 2027-02-03 | 2027-02-17 | 9427 |  | 7 Days Work | 9300054 |
| 9429 | 36900.37000.37100.37200.38200.51700.701300 | False Ceiling- Framing | 10d | 2027-02-18 | 2027-02-27 | 9428 |  | 7 Days Work | 9300064 |
| 9430 | 36900.37000.37100.37200.38200.51700.701400 | Pre Hung Door | 3d | 2027-02-28 | 2027-03-02 | 9429 |  | 7 Days Work | 9300074 |
| 9431 | 36900.37000.37100.37200.38200.51700.701500 | Protechtion sheet | 2d | 2027-03-03 | 2027-03-04 | 9430 |  | 7 Days Work | 9300084 |
| 9432 | 36900.37000.37100.37200.38200.51700.701600 | Skirting near door | 2d | 2027-03-05 | 2027-03-06 | 9431 |  | 7 Days Work | 9300094 |
| 9433 | 36900.37000.37100.37200.38200.51700.701700 | Electrical Switch box fixing | 14d | 2027-03-07 | 2027-03-20 | 9432 |  | 7 Days Work | 9300104 |
| 9434 | 36900.37000.37100.37200.38200.51700.701800 | Fire Fighting painting | 5d | 2027-03-21 | 2027-03-25 | 9433 |  | 7 Days Work | 9300114 |
| 9435 | 36900.37000.37100.37200.38200.51700.701900 | Protection of all flooring, door & window hardware | 5d | 2027-03-26 | 2027-03-30 | 9434 |  | 7 Days Work | 9300124 |
| 9436 | 36900.37000.37100.37200.38200.51700.702000 | 1st coat primer- ceiling 1st & walls | 14d | 2027-03-31 | 2027-04-13 | 9435 |  | 7 Days Work | 9300134 |
| 9437 | 36900.37000.37100.37200.38200.51700.702100 | Wooden Flooring | 5d | 2027-04-14 | 2027-04-18 | 9436 |  | 7 Days Work | 9300144 |
| 9438 | 36900.37000.37100.37200.38200.51700.702200 | Removing of Temporary Railing & installation of Glass Railing | 5d | 2027-04-14 | 2027-04-18 | 9436 |  | 7 Days Work | 9300154 |
| 9439 | 36900.37000.37100.37200.38200.51700.702300 | Tile Grouting | 7d | 2027-04-14 | 2027-04-20 | 9436 |  | 7 Days Work | 9300164 |
| 9440 | 36900.37000.37100.37200.38200.51700.702400 | False Ceiling | 5d | 2027-04-21 | 2027-04-25 | 9439 |  | 7 Days Work | 9300174 |
| 9441 | 36900.37000.37100.37200.38200.51700.702500 | 2nd coat of primer | 10d | 2027-04-26 | 2027-05-05 | 9440 |  | 7 Days Work | 9300184 |
| 9442 | 36900.37000.37100.37200.38200.51700.702600 | Final cutting/polishing of stone flooring | 7d | 2027-05-06 | 2027-05-12 | 9441 |  | 7 Days Work | 9300194 |

| ID | WBS | Task | Duration | Start | Finish | Predecessors | Constraint | Calendar | Unique_Task_ID |
| --- | --- | --- | --- | --- | --- | --- | --- | --- | --- |
| 9443 | 36900.37000.37100.37200.38200.51700.66000 | **Toilet** | 237d | 2026-09-17 | 2027-05-11 |  | start no earlier than 2026-09-17 | 7 Days Work | 9294064 |
| 9444 | 36900.37000.37100.37200.38200.51700.66000.1023300 | Toilet_MEP Clearance -1 | 7d | 2026-09-17 | 2026-09-23 | 9407 |  | 7 Days Work | 9306744 |
| 9445 | 36900.37000.37100.37200.38200.51700.66000.1023400 | Toilet_Level Marking | 1d | 2026-09-24 | 2026-09-24 | 9444 |  | 7 Days Work | 9306754 |
| 9446 | 36900.37000.37100.37200.38200.51700.66000.1023500 | Toilet_Chasing work for Electrical conduit & concealed plumbing | 5d | 2026-09-25 | 2026-09-29 | 9445 |  | 7 Days Work | 9306764 |
| 9447 | 36900.37000.37100.37200.38200.51700.66000.1023600 | Toilet_Plumbing work 1st fix | 5d | 2026-09-30 | 2026-10-04 | 9446 |  | 7 Days Work | 9306774 |
| 9448 | 36900.37000.37100.37200.38200.51700.66000.1023700 | Toilet_Sleeve/Bore Packing | 5d | 2026-10-05 | 2026-10-09 | 9447 |  | 7 Days Work | 9306784 |
| 9449 | 36900.37000.37100.37200.38200.51700.66000.1023800 | Toilet_Waterproofing | 10d | 2026-10-10 | 2026-10-19 | 9448 |  | 7 Days Work | 9306794 |
| 9450 | 36900.37000.37100.37200.38200.51700.66000.1023900 | Toilet_Screed | 1d | 2026-10-20 | 2026-10-20 | 9449 |  | 7 Days Work | 9306804 |
| 9451 | 36900.37000.37100.37200.38200.51700.66000.1024000 | Toilet_Plumbing 2nd fix | 5d | 2026-10-21 | 2026-10-25 | 9450 |  | 7 Days Work | 9306814 |
| 9452 | 36900.37000.37100.37200.38200.51700.66000.1024100 | Toilet_Ledge wall | 5d | 2026-10-26 | 2026-10-30 | 9451 |  | 7 Days Work | 9306824 |
| 9453 | 36900.37000.37100.37200.38200.51700.66000.1024200 | Toilet_Cement Plaster | 5d | 2026-10-31 | 2026-11-04 | 9452 |  | 7 Days Work | 9306834 |
| 9454 | 36900.37000.37100.37200.38200.51700.66000.1024300 | Toilet_Door Frame | 1d | 2026-11-05 | 2026-11-05 | 9453 |  | 7 Days Work | 9306844 |
| 9455 | 36900.37000.37100.37200.38200.51700.66000.1024400 | Toilet_Wash basin & Couter | 3d | 2026-11-06 | 2026-11-08 | 9454 |  | 7 Days Work | 9306854 |
| 9456 | 36900.37000.37100.37200.38200.51700.66000.1024500 | Toilet_Wall dado | 20d | 2026-11-09 | 2026-11-28 | 9455 |  | 7 Days Work | 9306864 |
| 9457 | 36900.37000.37100.37200.38200.51700.66000.1024600 | Toilet_Granite Work-Ledge wall top | 3d | 2026-11-29 | 2026-12-01 | 9456 |  | 7 Days Work | 9306874 |
| 9458 | 36900.37000.37100.37200.38200.51700.66000.1024700 | Toilet_Floor Tilling work | 20d | 2026-12-02 | 2026-12-21 | 9457 |  | 7 Days Work | 9306884 |
| 9459 | 36900.37000.37100.37200.38200.51700.66000.1024800 | Toilet_1st row of dado | 5d | 2026-12-22 | 2026-12-26 | 9458 |  | 7 Days Work | 9306894 |
| 9460 | 36900.37000.37100.37200.38200.51700.66000.1024900 | Toilet_Window Fixing | 14d | 2026-12-27 | 2027-01-09 | 9459 |  | 7 Days Work | 9306904 |
| 9461 | 36900.37000.37100.37200.38200.51700.66000.1025000 | Toilet_Services above False ceiling | 21d | 2027-01-10 | 2027-01-30 | 9460 |  | 7 Days Work | 9306914 |
| 9462 | 36900.37000.37100.37200.38200.51700.66000.1025100 | Toilet_False Ceiling framing | 12d | 2027-01-31 | 2027-02-11 | 9461 |  | 7 Days Work | 9306924 |
| 9463 | 36900.37000.37100.37200.38200.51700.66000.1025200 | Toilet_Door Frame | 5d | 2027-02-12 | 2027-02-16 | 9462 |  | 7 Days Work | 9306934 |
| 9464 | 36900.37000.37100.37200.38200.51700.66000.1025300 | Toilet_Epoxy Tile Grouting | 7d | 2027-04-14 | 2027-04-20 | 9439SS |  | 7 Days Work | 9306944 |
| 9465 | 36900.37000.37100.37200.38200.51700.66000.1025400 | Toilet_False ceiling board fixing, CP Sanitary Fixture, Electric Fixture | 21d | 2027-04-21 | 2027-05-11 | 9464 |  | 7 Days Work | 9306954 |
| 9466 | 36900.37000.37100.37200.38200.51800 | **17th Habitable/18th Floor** | 245d | 2026-09-22 | 2027-05-24 |  | start no earlier than 2026-09-22 | 7 Days Work | 9293864 |
| 9467 | 36900.37000.37100.37200.38200.51800.702700 | Post Pour | 7d | 2026-09-22 | 2026-09-28 | 8502 |  | 7 Days Work | 9300204 |
| 9468 | 36900.37000.37100.37200.38200.51800.702800 | MEP Clearance -1 | 5d | 2026-09-29 | 2026-10-03 | 9467 |  | 7 Days Work | 9300214 |
| 9469 | 36900.37000.37100.37200.38200.51800.702900 | Benchmark | 1d | 2026-10-04 | 2026-10-04 | 9468 |  | 7 Days Work | 9300224 |
| 9470 | 36900.37000.37100.37200.38200.51800.703000 | Temporary Railing | 3d | 2026-10-05 | 2026-10-07 | 9469 |  | 7 Days Work | 9300234 |
| 9471 | 36900.37000.37100.37200.38200.51800.703100 | Blockwork | 10d | 2026-10-08 | 2026-10-17 | 9470 |  | 7 Days Work | 9300244 |
| 9472 | 36900.37000.37100.37200.38200.51800.703200 | MEP Clearance -2 | 10d | 2026-10-18 | 2026-10-27 | 9471 |  | 7 Days Work | 9300254 |
| 9473 | 36900.37000.37100.37200.38200.51800.703300 | Gypsum Plaster | 14d | 2026-10-28 | 2026-11-10 | 9472 |  | 7 Days Work | 9300264 |
| 9474 | 36900.37000.37100.37200.38200.51800.703400 | Kitchen Platform | 3d | 2026-11-11 | 2026-11-13 | 9473 |  | 7 Days Work | 9300274 |
| 9475 | 36900.37000.37100.37200.38200.51800.703500 | Kitchen dado | 7d | 2026-11-14 | 2026-11-20 | 9474 |  | 7 Days Work | 9300284 |
| 9476 | 36900.37000.37100.37200.38200.51800.703600 | Fire Fighting | 5d | 2026-11-21 | 2026-11-25 | 9475 |  | 7 Days Work | 9300294 |
| 9477 | 36900.37000.37100.37200.38200.51800.703700 | Anticapilary | 5d | 2026-11-26 | 2026-11-30 | 9476 |  | 7 Days Work | 9300304 |
| 9478 | 36900.37000.37100.37200.38200.51800.703800 | Stone Laying | 10d | 2027-01-03 | 2027-01-12 | 9518 |  | 7 Days Work | 9300314 |
| 9479 | 36900.37000.37100.37200.38200.51800.703900 | Tiles Laying | 7d | 2027-01-03 | 2027-01-09 | 9518 |  | 7 Days Work | 9300324 |
| 9480 | 36900.37000.37100.37200.38200.51800.704000 | 1st cutting/polishing of stone flooring | 7d | 2027-01-10 | 2027-01-16 | 9479 |  | 7 Days Work | 9300334 |
| 9481 | 36900.37000.37100.37200.38200.51800.704100 | Tiles/Stone skirting | 5d | 2027-01-17 | 2027-01-21 | 9480 |  | 7 Days Work | 9300344 |
| 9482 | 36900.37000.37100.37200.38200.51800.704200 | Protechtion sheet | 1d | 2027-01-22 | 2027-01-22 | 9481 |  | 7 Days Work | 9300354 |
| 9483 | 36900.37000.37100.37200.38200.51800.704300 | Installation of Temporary Door | 1d | 2027-01-23 | 2027-01-23 | 9482 |  | 7 Days Work | 9300364 |
| 9484 | 36900.37000.37100.37200.38200.51800.704400 | Fixing of window tracks | 5d | 2027-01-24 | 2027-01-28 | 9483 |  | 7 Days Work | 9300374 |
| 9485 | 36900.37000.37100.37200.38200.51800.704500 | Wire Pulling | 7d | 2027-01-29 | 2027-02-04 | 9484 |  | 7 Days Work | 9300384 |
| 9486 | 36900.37000.37100.37200.38200.51800.704600 | Gypsum Remaining | 5d | 2027-02-05 | 2027-02-09 | 9485 |  | 7 Days Work | 9300394 |
| 9487 | 36900.37000.37100.37200.38200.51800.704700 | Fixing of windoow shutter | 5d | 2027-02-10 | 2027-02-14 | 9486 |  | 7 Days Work | 9300404 |
| 9488 | 36900.37000.37100.37200.38200.51800.704800 | Putty Works - walls & ceiling | 15d | 2027-02-15 | 2027-03-01 | 9487 |  | 7 Days Work | 9300414 |
| 9489 | 36900.37000.37100.37200.38200.51800.704900 | False Ceiling- Framing | 10d | 2027-03-02 | 2027-03-11 | 9488 |  | 7 Days Work | 9300424 |
| 9490 | 36900.37000.37100.37200.38200.51800.705000 | Pre Hung Door | 3d | 2027-03-12 | 2027-03-14 | 9489 |  | 7 Days Work | 9300434 |
| 9491 | 36900.37000.37100.37200.38200.51800.705100 | Protechtion sheet | 2d | 2027-03-15 | 2027-03-16 | 9490 |  | 7 Days Work | 9300444 |
| 9492 | 36900.37000.37100.37200.38200.51800.705200 | Skirting near door | 2d | 2027-03-17 | 2027-03-18 | 9491 |  | 7 Days Work | 9300454 |
| 9493 | 36900.37000.37100.37200.38200.51800.705300 | Electrical Switch box fixing | 14d | 2027-03-19 | 2027-04-01 | 9492 |  | 7 Days Work | 9300464 |
| 9494 | 36900.37000.37100.37200.38200.51800.705400 | Fire Fighting painting | 5d | 2027-04-02 | 2027-04-06 | 9493 |  | 7 Days Work | 9300474 |
| 9495 | 36900.37000.37100.37200.38200.51800.705500 | Protection of all flooring, door & window hardware | 5d | 2027-04-07 | 2027-04-11 | 9494 |  | 7 Days Work | 9300484 |
| 9496 | 36900.37000.37100.37200.38200.51800.705600 | 1st coat primer- ceiling 1st & walls | 14d | 2027-04-12 | 2027-04-25 | 9495 |  | 7 Days Work | 9300494 |
| 9497 | 36900.37000.37100.37200.38200.51800.705700 | Wooden Flooring | 5d | 2027-04-26 | 2027-04-30 | 9496 |  | 7 Days Work | 9300504 |
| 9498 | 36900.37000.37100.37200.38200.51800.705800 | Removing of Temporary Railing & installation of Glass Railing | 5d | 2027-04-26 | 2027-04-30 | 9496 |  | 7 Days Work | 9300514 |
| 9499 | 36900.37000.37100.37200.38200.51800.705900 | Tile Grouting | 7d | 2027-04-26 | 2027-05-02 | 9496 |  | 7 Days Work | 9300524 |
| 9500 | 36900.37000.37100.37200.38200.51800.706000 | False Ceiling | 5d | 2027-05-03 | 2027-05-07 | 9499 |  | 7 Days Work | 9300534 |
| 9501 | 36900.37000.37100.37200.38200.51800.706100 | 2nd coat of primer | 10d | 2027-05-08 | 2027-05-17 | 9500 |  | 7 Days Work | 9300544 |
| 9502 | 36900.37000.37100.37200.38200.51800.706200 | Final cutting/polishing of stone flooring | 7d | 2027-05-18 | 2027-05-24 | 9501 |  | 7 Days Work | 9300554 |

| ID | WBS | Task | Duration | Start | Finish | Predecessors | Constraint | Calendar | Unique_Task_ID |
| --- | --- | --- | --- | --- | --- | --- | --- | --- | --- |
| 9503 | 36900.37000.37100.37200.38200.51800.66100 | **Toilet** | 237d | 2026-09-29 | 2027-05-23 |  | start no earlier than 2026-09-29 | 7 Days Work | 9294074 |
| 9504 | 36900.37000.37100.37200.38200.51800.66100.1025500 | Toilet_MEP Clearance -1 | 7d | 2026-09-29 | 2026-10-05 | 9467 |  | 7 Days Work | 9306964 |
| 9505 | 36900.37000.37100.37200.38200.51800.66100.1025600 | Toilet_Level Marking | 1d | 2026-10-06 | 2026-10-06 | 9504 |  | 7 Days Work | 9306974 |
| 9506 | 36900.37000.37100.37200.38200.51800.66100.1025700 | Toilet_Chasing work for Electrical conduit & concealed plumbing | 5d | 2026-10-07 | 2026-10-11 | 9505 |  | 7 Days Work | 9306984 |
| 9507 | 36900.37000.37100.37200.38200.51800.66100.1025800 | Toilet_Plumbing work 1st fix | 5d | 2026-10-12 | 2026-10-16 | 9506 |  | 7 Days Work | 9306994 |
| 9508 | 36900.37000.37100.37200.38200.51800.66100.1025900 | Toilet_Sleeve/Bore Packing | 5d | 2026-10-17 | 2026-10-21 | 9507 |  | 7 Days Work | 9307004 |
| 9509 | 36900.37000.37100.37200.38200.51800.66100.1026000 | Toilet_Waterproofing | 10d | 2026-10-22 | 2026-10-31 | 9508 |  | 7 Days Work | 9307014 |
| 9510 | 36900.37000.37100.37200.38200.51800.66100.1026100 | Toilet_Screed | 1d | 2026-11-01 | 2026-11-01 | 9509 |  | 7 Days Work | 9307024 |
| 9511 | 36900.37000.37100.37200.38200.51800.66100.1026200 | Toilet_Plumbing 2nd fix | 5d | 2026-11-02 | 2026-11-06 | 9510 |  | 7 Days Work | 9307034 |
| 9512 | 36900.37000.37100.37200.38200.51800.66100.1026300 | Toilet_Ledge wall | 5d | 2026-11-07 | 2026-11-11 | 9511 |  | 7 Days Work | 9307044 |
| 9513 | 36900.37000.37100.37200.38200.51800.66100.1026400 | Toilet_Cement Plaster | 5d | 2026-11-12 | 2026-11-16 | 9512 |  | 7 Days Work | 9307054 |
| 9514 | 36900.37000.37100.37200.38200.51800.66100.1026500 | Toilet_Door Frame | 1d | 2026-11-17 | 2026-11-17 | 9513 |  | 7 Days Work | 9307064 |
| 9515 | 36900.37000.37100.37200.38200.51800.66100.1026600 | Toilet_Wash basin & Couter | 3d | 2026-11-18 | 2026-11-20 | 9514 |  | 7 Days Work | 9307074 |
| 9516 | 36900.37000.37100.37200.38200.51800.66100.1026700 | Toilet_Wall dado | 20d | 2026-11-21 | 2026-12-10 | 9515 |  | 7 Days Work | 9307084 |
| 9517 | 36900.37000.37100.37200.38200.51800.66100.1026800 | Toilet_Granite Work-Ledge wall top | 3d | 2026-12-11 | 2026-12-13 | 9516 |  | 7 Days Work | 9307094 |
| 9518 | 36900.37000.37100.37200.38200.51800.66100.1026900 | Toilet_Floor Tilling work | 20d | 2026-12-14 | 2027-01-02 | 9517 |  | 7 Days Work | 9307104 |
| 9519 | 36900.37000.37100.37200.38200.51800.66100.1027000 | Toilet_1st row of dado | 5d | 2027-01-03 | 2027-01-07 | 9518 |  | 7 Days Work | 9307114 |
| 9520 | 36900.37000.37100.37200.38200.51800.66100.1027100 | Toilet_Window Fixing | 14d | 2027-01-08 | 2027-01-21 | 9519 |  | 7 Days Work | 9307124 |
| 9521 | 36900.37000.37100.37200.38200.51800.66100.1027200 | Toilet_Services above False ceiling | 21d | 2027-01-22 | 2027-02-11 | 9520 |  | 7 Days Work | 9307134 |
| 9522 | 36900.37000.37100.37200.38200.51800.66100.1027300 | Toilet_False Ceiling framing | 12d | 2027-02-12 | 2027-02-23 | 9521 |  | 7 Days Work | 9307144 |
| 9523 | 36900.37000.37100.37200.38200.51800.66100.1027400 | Toilet_Door Frame | 5d | 2027-02-24 | 2027-02-28 | 9522 |  | 7 Days Work | 9307154 |
| 9524 | 36900.37000.37100.37200.38200.51800.66100.1027500 | Toilet_Epoxy Tile Grouting | 7d | 2027-04-26 | 2027-05-02 | 9499SS |  | 7 Days Work | 9307164 |
| 9525 | 36900.37000.37100.37200.38200.51800.66100.1027600 | Toilet_False ceiling board fixing, CP Sanitary Fixture, Electric Fixture | 21d | 2027-05-03 | 2027-05-23 | 9524 |  | 7 Days Work | 9307174 |
| 9526 | 36900.37000.37100.37200.38200.51900 | **18th Habitable/19th Floor** | 245d | 2026-09-29 | 2027-05-31 |  | start no earlier than 2026-09-29 | 7 Days Work | 9293874 |
| 9527 | 36900.37000.37100.37200.38200.51900.706300 | Post Pour | 7d | 2026-09-29 | 2026-10-05 | 9467 |  | 7 Days Work | 9300564 |
| 9528 | 36900.37000.37100.37200.38200.51900.706400 | MEP Clearance -1 | 5d | 2026-10-06 | 2026-10-10 | 9527 |  | 7 Days Work | 9300574 |
| 9529 | 36900.37000.37100.37200.38200.51900.706500 | Benchmark | 1d | 2026-10-11 | 2026-10-11 | 9528 |  | 7 Days Work | 9300584 |
| 9530 | 36900.37000.37100.37200.38200.51900.706600 | Temporary Railing | 3d | 2026-10-12 | 2026-10-14 | 9529 |  | 7 Days Work | 9300594 |
| 9531 | 36900.37000.37100.37200.38200.51900.706700 | Blockwork | 10d | 2026-10-15 | 2026-10-24 | 9530 |  | 7 Days Work | 9300604 |
| 9532 | 36900.37000.37100.37200.38200.51900.706800 | MEP Clearance -2 | 10d | 2026-10-25 | 2026-11-03 | 9531 |  | 7 Days Work | 9300614 |
| 9533 | 36900.37000.37100.37200.38200.51900.706900 | Gypsum Plaster | 14d | 2026-11-04 | 2026-11-17 | 9532 |  | 7 Days Work | 9300624 |
| 9534 | 36900.37000.37100.37200.38200.51900.707000 | Kitchen Platform | 3d | 2026-11-18 | 2026-11-20 | 9533 |  | 7 Days Work | 9300634 |
| 9535 | 36900.37000.37100.37200.38200.51900.707100 | Kitchen dado | 7d | 2026-11-21 | 2026-11-27 | 9534 |  | 7 Days Work | 9300644 |
| 9536 | 36900.37000.37100.37200.38200.51900.707200 | Fire Fighting | 5d | 2026-11-28 | 2026-12-02 | 9535 |  | 7 Days Work | 9300654 |
| 9537 | 36900.37000.37100.37200.38200.51900.707300 | Anticapilary | 5d | 2026-12-03 | 2026-12-07 | 9536 |  | 7 Days Work | 9300664 |
| 9538 | 36900.37000.37100.37200.38200.51900.707400 | Stone Laying | 10d | 2027-01-10 | 2027-01-19 | 9578 |  | 7 Days Work | 9300674 |
| 9539 | 36900.37000.37100.37200.38200.51900.707500 | Tiles Laying | 7d | 2027-01-10 | 2027-01-16 | 9578 |  | 7 Days Work | 9300684 |
| 9540 | 36900.37000.37100.37200.38200.51900.707600 | 1st cutting/polishing of stone flooring | 7d | 2027-01-17 | 2027-01-23 | 9539 |  | 7 Days Work | 9300694 |
| 9541 | 36900.37000.37100.37200.38200.51900.707700 | Tiles/Stone skirting | 5d | 2027-01-24 | 2027-01-28 | 9540 |  | 7 Days Work | 9300704 |
| 9542 | 36900.37000.37100.37200.38200.51900.707800 | Protechtion sheet | 1d | 2027-01-29 | 2027-01-29 | 9541 |  | 7 Days Work | 9300714 |
| 9543 | 36900.37000.37100.37200.38200.51900.707900 | Installation of Temporary Door | 1d | 2027-01-30 | 2027-01-30 | 9542 |  | 7 Days Work | 9300724 |
| 9544 | 36900.37000.37100.37200.38200.51900.708000 | Fixing of window tracks | 5d | 2027-01-31 | 2027-02-04 | 9543 |  | 7 Days Work | 9300734 |
| 9545 | 36900.37000.37100.37200.38200.51900.708100 | Wire Pulling | 7d | 2027-02-05 | 2027-02-11 | 9544 |  | 7 Days Work | 9300744 |
| 9546 | 36900.37000.37100.37200.38200.51900.708200 | Gypsum Remaining | 5d | 2027-02-12 | 2027-02-16 | 9545 |  | 7 Days Work | 9300754 |
| 9547 | 36900.37000.37100.37200.38200.51900.708300 | Fixing of windoow shutter | 5d | 2027-02-17 | 2027-02-21 | 9546 |  | 7 Days Work | 9300764 |
| 9548 | 36900.37000.37100.37200.38200.51900.708400 | Putty Works - walls & ceiling | 15d | 2027-02-22 | 2027-03-08 | 9547 |  | 7 Days Work | 9300774 |
| 9549 | 36900.37000.37100.37200.38200.51900.708500 | False Ceiling- Framing | 10d | 2027-03-09 | 2027-03-18 | 9548 |  | 7 Days Work | 9300784 |
| 9550 | 36900.37000.37100.37200.38200.51900.708600 | Pre Hung Door | 3d | 2027-03-19 | 2027-03-21 | 9549 |  | 7 Days Work | 9300794 |
| 9551 | 36900.37000.37100.37200.38200.51900.708700 | Protechtion sheet | 2d | 2027-03-22 | 2027-03-23 | 9550 |  | 7 Days Work | 9300804 |
| 9552 | 36900.37000.37100.37200.38200.51900.708800 | Skirting near door | 2d | 2027-03-24 | 2027-03-25 | 9551 |  | 7 Days Work | 9300814 |
| 9553 | 36900.37000.37100.37200.38200.51900.708900 | Electrical Switch box fixing | 14d | 2027-03-26 | 2027-04-08 | 9552 |  | 7 Days Work | 9300824 |
| 9554 | 36900.37000.37100.37200.38200.51900.709000 | Fire Fighting painting | 5d | 2027-04-09 | 2027-04-13 | 9553 |  | 7 Days Work | 9300834 |
| 9555 | 36900.37000.37100.37200.38200.51900.709100 | Protection of all flooring, door & window hardware | 5d | 2027-04-14 | 2027-04-18 | 9554 |  | 7 Days Work | 9300844 |
| 9556 | 36900.37000.37100.37200.38200.51900.709200 | 1st coat primer- ceiling 1st & walls | 14d | 2027-04-19 | 2027-05-02 | 9555 |  | 7 Days Work | 9300854 |
| 9557 | 36900.37000.37100.37200.38200.51900.709300 | Wooden Flooring | 5d | 2027-05-03 | 2027-05-07 | 9556 |  | 7 Days Work | 9300864 |
| 9558 | 36900.37000.37100.37200.38200.51900.709400 | Removing of Temporary Railing & installation of Glass Railing | 5d | 2027-05-03 | 2027-05-07 | 9556 |  | 7 Days Work | 9300874 |
| 9559 | 36900.37000.37100.37200.38200.51900.709500 | Tile Grouting | 7d | 2027-05-03 | 2027-05-09 | 9556 |  | 7 Days Work | 9300884 |
| 9560 | 36900.37000.37100.37200.38200.51900.709600 | False Ceiling | 5d | 2027-05-10 | 2027-05-14 | 9559 |  | 7 Days Work | 9300894 |
| 9561 | 36900.37000.37100.37200.38200.51900.709700 | 2nd coat of primer | 10d | 2027-05-15 | 2027-05-24 | 9560 |  | 7 Days Work | 9300904 |
| 9562 | 36900.37000.37100.37200.38200.51900.709800 | Final cutting/polishing of stone flooring | 7d | 2027-05-25 | 2027-05-31 | 9561 |  | 7 Days Work | 9300914 |

| ID | WBS | Task | Duration | Start | Finish | Predecessors | Constraint | Calendar | Unique_Task_ID |
| --- | --- | --- | --- | --- | --- | --- | --- | --- | --- |
| 9563 | 36900.37000.37100.37200.38200.51900.66200 | **Toilet** | 237d | 2026-10-06 | 2027-05-30 |  | start no earlier than 2026-10-06 | 7 Days Work | 9294084 |
| 9564 | 36900.37000.37100.37200.38200.51900.66200.1027700 | Toilet_MEP Clearance -1 | 7d | 2026-10-06 | 2026-10-12 | 9527 |  | 7 Days Work | 9307184 |
| 9565 | 36900.37000.37100.37200.38200.51900.66200.1027800 | Toilet_Level Marking | 1d | 2026-10-13 | 2026-10-13 | 9564 |  | 7 Days Work | 9307194 |
| 9566 | 36900.37000.37100.37200.38200.51900.66200.1027900 | Toilet_Chasing work for Electrical conduit & concealed plumbing | 5d | 2026-10-14 | 2026-10-18 | 9565 |  | 7 Days Work | 9307204 |
| 9567 | 36900.37000.37100.37200.38200.51900.66200.1028000 | Toilet_Plumbing work 1st fix | 5d | 2026-10-19 | 2026-10-23 | 9566 |  | 7 Days Work | 9307214 |
| 9568 | 36900.37000.37100.37200.38200.51900.66200.1028100 | Toilet_Sleeve/Bore Packing | 5d | 2026-10-24 | 2026-10-28 | 9567 |  | 7 Days Work | 9307224 |
| 9569 | 36900.37000.37100.37200.38200.51900.66200.1028200 | Toilet_Waterproofing | 10d | 2026-10-29 | 2026-11-07 | 9568 |  | 7 Days Work | 9307234 |
| 9570 | 36900.37000.37100.37200.38200.51900.66200.1028300 | Toilet_Screed | 1d | 2026-11-08 | 2026-11-08 | 9569 |  | 7 Days Work | 9307244 |
| 9571 | 36900.37000.37100.37200.38200.51900.66200.1028400 | Toilet_Plumbing 2nd fix | 5d | 2026-11-09 | 2026-11-13 | 9570 |  | 7 Days Work | 9307254 |
| 9572 | 36900.37000.37100.37200.38200.51900.66200.1028500 | Toilet_Ledge wall | 5d | 2026-11-14 | 2026-11-18 | 9571 |  | 7 Days Work | 9307264 |
| 9573 | 36900.37000.37100.37200.38200.51900.66200.1028600 | Toilet_Cement Plaster | 5d | 2026-11-19 | 2026-11-23 | 9572 |  | 7 Days Work | 9307274 |
| 9574 | 36900.37000.37100.37200.38200.51900.66200.1028700 | Toilet_Door Frame | 1d | 2026-11-24 | 2026-11-24 | 9573 |  | 7 Days Work | 9307284 |
| 9575 | 36900.37000.37100.37200.38200.51900.66200.1028800 | Toilet_Wash basin & Couter | 3d | 2026-11-25 | 2026-11-27 | 9574 |  | 7 Days Work | 9307294 |
| 9576 | 36900.37000.37100.37200.38200.51900.66200.1028900 | Toilet_Wall dado | 20d | 2026-11-28 | 2026-12-17 | 9575 |  | 7 Days Work | 9307304 |
| 9577 | 36900.37000.37100.37200.38200.51900.66200.1029000 | Toilet_Granite Work-Ledge wall top | 3d | 2026-12-18 | 2026-12-20 | 9576 |  | 7 Days Work | 9307314 |
| 9578 | 36900.37000.37100.37200.38200.51900.66200.1029100 | Toilet_Floor Tilling work | 20d | 2026-12-21 | 2027-01-09 | 9577 |  | 7 Days Work | 9307324 |
| 9579 | 36900.37000.37100.37200.38200.51900.66200.1029200 | Toilet_1st row of dado | 5d | 2027-01-10 | 2027-01-14 | 9578 |  | 7 Days Work | 9307334 |
| 9580 | 36900.37000.37100.37200.38200.51900.66200.1029300 | Toilet_Window Fixing | 14d | 2027-01-15 | 2027-01-28 | 9579 |  | 7 Days Work | 9307344 |
| 9581 | 36900.37000.37100.37200.38200.51900.66200.1029400 | Toilet_Services above False ceiling | 21d | 2027-01-29 | 2027-02-18 | 9580 |  | 7 Days Work | 9307354 |
| 9582 | 36900.37000.37100.37200.38200.51900.66200.1029500 | Toilet_False Ceiling framing | 12d | 2027-02-19 | 2027-03-02 | 9581 |  | 7 Days Work | 9307364 |
| 9583 | 36900.37000.37100.37200.38200.51900.66200.1029600 | Toilet_Door Frame | 5d | 2027-03-03 | 2027-03-07 | 9582 |  | 7 Days Work | 9307374 |
| 9584 | 36900.37000.37100.37200.38200.51900.66200.1029700 | Toilet_Epoxy Tile Grouting | 7d | 2027-05-03 | 2027-05-09 | 9559SS |  | 7 Days Work | 9307384 |
| 9585 | 36900.37000.37100.37200.38200.51900.66200.1029800 | Toilet_False ceiling board fixing, CP Sanitary Fixture, Electric Fixture | 21d | 2027-05-10 | 2027-05-30 | 9584 |  | 7 Days Work | 9307394 |
| 9586 | 36900.37000.37100.37200.38200.52000 | **19th Habitable/20th Floor** | 245d | 2026-10-06 | 2027-06-07 |  | start no earlier than 2026-10-06 | 7 Days Work | 9293884 |
| 9587 | 36900.37000.37100.37200.38200.52000.709900 | Post Pour | 7d | 2026-10-06 | 2026-10-12 | 9527 |  | 7 Days Work | 9300924 |
| 9588 | 36900.37000.37100.37200.38200.52000.710000 | MEP Clearance -1 | 5d | 2026-10-13 | 2026-10-17 | 9587 |  | 7 Days Work | 9300934 |
| 9589 | 36900.37000.37100.37200.38200.52000.710100 | Benchmark | 1d | 2026-10-18 | 2026-10-18 | 9588 |  | 7 Days Work | 9300944 |
| 9590 | 36900.37000.37100.37200.38200.52000.710200 | Temporary Railing | 3d | 2026-10-19 | 2026-10-21 | 9589 |  | 7 Days Work | 9300954 |
| 9591 | 36900.37000.37100.37200.38200.52000.710300 | Blockwork | 10d | 2026-10-22 | 2026-10-31 | 9590 |  | 7 Days Work | 9300964 |
| 9592 | 36900.37000.37100.37200.38200.52000.710400 | MEP Clearance -2 | 10d | 2026-11-01 | 2026-11-10 | 9591 |  | 7 Days Work | 9300974 |
| 9593 | 36900.37000.37100.37200.38200.52000.710500 | Gypsum Plaster | 14d | 2026-11-11 | 2026-11-24 | 9592 |  | 7 Days Work | 9300984 |
| 9594 | 36900.37000.37100.37200.38200.52000.710600 | Kitchen Platform | 3d | 2026-11-25 | 2026-11-27 | 9593 |  | 7 Days Work | 9300994 |
| 9595 | 36900.37000.37100.37200.38200.52000.710700 | Kitchen dado | 7d | 2026-11-28 | 2026-12-04 | 9594 |  | 7 Days Work | 9301004 |
| 9596 | 36900.37000.37100.37200.38200.52000.710800 | Fire Fighting | 5d | 2026-12-05 | 2026-12-09 | 9595 |  | 7 Days Work | 9301014 |
| 9597 | 36900.37000.37100.37200.38200.52000.710900 | Anticapilary | 5d | 2026-12-10 | 2026-12-14 | 9596 |  | 7 Days Work | 9301024 |
| 9598 | 36900.37000.37100.37200.38200.52000.711000 | Stone Laying | 10d | 2027-01-17 | 2027-01-26 | 9638 |  | 7 Days Work | 9301034 |
| 9599 | 36900.37000.37100.37200.38200.52000.711100 | Tiles Laying | 7d | 2027-01-17 | 2027-01-23 | 9638 |  | 7 Days Work | 9301044 |
| 9600 | 36900.37000.37100.37200.38200.52000.711200 | 1st cutting/polishing of stone flooring | 7d | 2027-01-24 | 2027-01-30 | 9599 |  | 7 Days Work | 9301054 |
| 9601 | 36900.37000.37100.37200.38200.52000.711300 | Tiles/Stone skirting | 5d | 2027-01-31 | 2027-02-04 | 9600 |  | 7 Days Work | 9301064 |
| 9602 | 36900.37000.37100.37200.38200.52000.711400 | Protechtion sheet | 1d | 2027-02-05 | 2027-02-05 | 9601 |  | 7 Days Work | 9301074 |
| 9603 | 36900.37000.37100.37200.38200.52000.711500 | Installation of Temporary Door | 1d | 2027-02-06 | 2027-02-06 | 9602 |  | 7 Days Work | 9301084 |
| 9604 | 36900.37000.37100.37200.38200.52000.711600 | Fixing of window tracks | 5d | 2027-02-07 | 2027-02-11 | 9603 |  | 7 Days Work | 9301094 |
| 9605 | 36900.37000.37100.37200.38200.52000.711700 | Wire Pulling | 7d | 2027-02-12 | 2027-02-18 | 9604 |  | 7 Days Work | 9301104 |
| 9606 | 36900.37000.37100.37200.38200.52000.711800 | Gypsum Remaining | 5d | 2027-02-19 | 2027-02-23 | 9605 |  | 7 Days Work | 9301114 |
| 9607 | 36900.37000.37100.37200.38200.52000.711900 | Fixing of windoow shutter | 5d | 2027-02-24 | 2027-02-28 | 9606 |  | 7 Days Work | 9301124 |
| 9608 | 36900.37000.37100.37200.38200.52000.712000 | Putty Works - walls & ceiling | 15d | 2027-03-01 | 2027-03-15 | 9607 |  | 7 Days Work | 9301134 |
| 9609 | 36900.37000.37100.37200.38200.52000.712100 | False Ceiling- Framing | 10d | 2027-03-16 | 2027-03-25 | 9608 |  | 7 Days Work | 9301144 |
| 9610 | 36900.37000.37100.37200.38200.52000.712200 | Pre Hung Door | 3d | 2027-03-26 | 2027-03-28 | 9609 |  | 7 Days Work | 9301154 |
| 9611 | 36900.37000.37100.37200.38200.52000.712300 | Protechtion sheet | 2d | 2027-03-29 | 2027-03-30 | 9610 |  | 7 Days Work | 9301164 |
| 9612 | 36900.37000.37100.37200.38200.52000.712400 | Skirting near door | 2d | 2027-03-31 | 2027-04-01 | 9611 |  | 7 Days Work | 9301174 |
| 9613 | 36900.37000.37100.37200.38200.52000.712500 | Electrical Switch box fixing | 14d | 2027-04-02 | 2027-04-15 | 9612 |  | 7 Days Work | 9301184 |
| 9614 | 36900.37000.37100.37200.38200.52000.712600 | Fire Fighting painting | 5d | 2027-04-16 | 2027-04-20 | 9613 |  | 7 Days Work | 9301194 |
| 9615 | 36900.37000.37100.37200.38200.52000.712700 | Protection of all flooring, door & window hardware | 5d | 2027-04-21 | 2027-04-25 | 9614 |  | 7 Days Work | 9301204 |
| 9616 | 36900.37000.37100.37200.38200.52000.712800 | 1st coat primer- ceiling 1st & walls | 14d | 2027-04-26 | 2027-05-09 | 9615 |  | 7 Days Work | 9301214 |
| 9617 | 36900.37000.37100.37200.38200.52000.712900 | Wooden Flooring | 5d | 2027-05-10 | 2027-05-14 | 9616 |  | 7 Days Work | 9301224 |
| 9618 | 36900.37000.37100.37200.38200.52000.713000 | Removing of Temporary Railing & installation of Glass Railing | 5d | 2027-05-10 | 2027-05-14 | 9616 |  | 7 Days Work | 9301234 |
| 9619 | 36900.37000.37100.37200.38200.52000.713100 | Tile Grouting | 7d | 2027-05-10 | 2027-05-16 | 9616 |  | 7 Days Work | 9301244 |
| 9620 | 36900.37000.37100.37200.38200.52000.713200 | False Ceiling | 5d | 2027-05-17 | 2027-05-21 | 9619 |  | 7 Days Work | 9301254 |
| 9621 | 36900.37000.37100.37200.38200.52000.713300 | 2nd coat of primer | 10d | 2027-05-22 | 2027-05-31 | 9620 |  | 7 Days Work | 9301264 |
| 9622 | 36900.37000.37100.37200.38200.52000.713400 | Final cutting/polishing of stone flooring | 7d | 2027-06-01 | 2027-06-07 | 9621 |  | 7 Days Work | 9301274 |

| ID | WBS | Task | Duration | Start | Finish | Predecessors | Constraint | Calendar | Unique_Task_ID |
| --- | --- | --- | --- | --- | --- | --- | --- | --- | --- |
| 9623 | 36900.37000.37100.37200.38200.52000.66300 | **Toilet** | 237d | 2026-10-13 | 2027-06-06 |  | start no earlier than 2026-10-13 | 7 Days Work | 9294094 |
| 9624 | 36900.37000.37100.37200.38200.52000.66300.1029900 | Toilet_MEP Clearance -1 | 7d | 2026-10-13 | 2026-10-19 | 9587 |  | 7 Days Work | 9307404 |
| 9625 | 36900.37000.37100.37200.38200.52000.66300.1030000 | Toilet_Level Marking | 1d | 2026-10-20 | 2026-10-20 | 9624 |  | 7 Days Work | 9307414 |
| 9626 | 36900.37000.37100.37200.38200.52000.66300.1030100 | Toilet_Chasing work for Electrical conduit & concealed plumbing | 5d | 2026-10-21 | 2026-10-25 | 9625 |  | 7 Days Work | 9307424 |
| 9627 | 36900.37000.37100.37200.38200.52000.66300.1030200 | Toilet_Plumbing work 1st fix | 5d | 2026-10-26 | 2026-10-30 | 9626 |  | 7 Days Work | 9307434 |
| 9628 | 36900.37000.37100.37200.38200.52000.66300.1030300 | Toilet_Sleeve/Bore Packing | 5d | 2026-10-31 | 2026-11-04 | 9627 |  | 7 Days Work | 9307444 |
| 9629 | 36900.37000.37100.37200.38200.52000.66300.1030400 | Toilet_Waterproofing | 10d | 2026-11-05 | 2026-11-14 | 9628 |  | 7 Days Work | 9307454 |
| 9630 | 36900.37000.37100.37200.38200.52000.66300.1030500 | Toilet_Screed | 1d | 2026-11-15 | 2026-11-15 | 9629 |  | 7 Days Work | 9307464 |
| 9631 | 36900.37000.37100.37200.38200.52000.66300.1030600 | Toilet_Plumbing 2nd fix | 5d | 2026-11-16 | 2026-11-20 | 9630 |  | 7 Days Work | 9307474 |
| 9632 | 36900.37000.37100.37200.38200.52000.66300.1030700 | Toilet_Ledge wall | 5d | 2026-11-21 | 2026-11-25 | 9631 |  | 7 Days Work | 9307484 |
| 9633 | 36900.37000.37100.37200.38200.52000.66300.1030800 | Toilet_Cement Plaster | 5d | 2026-11-26 | 2026-11-30 | 9632 |  | 7 Days Work | 9307494 |
| 9634 | 36900.37000.37100.37200.38200.52000.66300.1030900 | Toilet_Door Frame | 1d | 2026-12-01 | 2026-12-01 | 9633 |  | 7 Days Work | 9307504 |
| 9635 | 36900.37000.37100.37200.38200.52000.66300.1031000 | Toilet_Wash basin & Couter | 3d | 2026-12-02 | 2026-12-04 | 9634 |  | 7 Days Work | 9307514 |
| 9636 | 36900.37000.37100.37200.38200.52000.66300.1031100 | Toilet_Wall dado | 20d | 2026-12-05 | 2026-12-24 | 9635 |  | 7 Days Work | 9307524 |
| 9637 | 36900.37000.37100.37200.38200.52000.66300.1031200 | Toilet_Granite Work-Ledge wall top | 3d | 2026-12-25 | 2026-12-27 | 9636 |  | 7 Days Work | 9307534 |
| 9638 | 36900.37000.37100.37200.38200.52000.66300.1031300 | Toilet_Floor Tilling work | 20d | 2026-12-28 | 2027-01-16 | 9637 |  | 7 Days Work | 9307544 |
| 9639 | 36900.37000.37100.37200.38200.52000.66300.1031400 | Toilet_1st row of dado | 5d | 2027-01-17 | 2027-01-21 | 9638 |  | 7 Days Work | 9307554 |
| 9640 | 36900.37000.37100.37200.38200.52000.66300.1031500 | Toilet_Window Fixing | 14d | 2027-01-22 | 2027-02-04 | 9639 |  | 7 Days Work | 9307564 |
| 9641 | 36900.37000.37100.37200.38200.52000.66300.1031600 | Toilet_Services above False ceiling | 21d | 2027-02-05 | 2027-02-25 | 9640 |  | 7 Days Work | 9307574 |
| 9642 | 36900.37000.37100.37200.38200.52000.66300.1031700 | Toilet_False Ceiling framing | 12d | 2027-02-26 | 2027-03-09 | 9641 |  | 7 Days Work | 9307584 |
| 9643 | 36900.37000.37100.37200.38200.52000.66300.1031800 | Toilet_Door Frame | 5d | 2027-03-10 | 2027-03-14 | 9642 |  | 7 Days Work | 9307594 |
| 9644 | 36900.37000.37100.37200.38200.52000.66300.1031900 | Toilet_Epoxy Tile Grouting | 7d | 2027-05-10 | 2027-05-16 | 9619SS |  | 7 Days Work | 9307604 |
| 9645 | 36900.37000.37100.37200.38200.52000.66300.1032000 | Toilet_False ceiling board fixing, CP Sanitary Fixture, Electric Fixture | 21d | 2027-05-17 | 2027-06-06 | 9644 |  | 7 Days Work | 9307614 |
| 9646 | 36900.37000.37100.37200.38200.52100 | **20th Habitable/21st Floor** | 245d | 2026-10-13 | 2027-06-14 |  | start no earlier than 2026-10-13 | 7 Days Work | 9293894 |
| 9647 | 36900.37000.37100.37200.38200.52100.713500 | Post Pour | 7d | 2026-10-13 | 2026-10-19 | 9587 |  | 7 Days Work | 9301284 |
| 9648 | 36900.37000.37100.37200.38200.52100.713600 | MEP Clearance -1 | 5d | 2026-10-20 | 2026-10-24 | 9647 |  | 7 Days Work | 9301294 |
| 9649 | 36900.37000.37100.37200.38200.52100.713700 | Benchmark | 1d | 2026-10-25 | 2026-10-25 | 9648 |  | 7 Days Work | 9301304 |
| 9650 | 36900.37000.37100.37200.38200.52100.713800 | Temporary Railing | 3d | 2026-10-26 | 2026-10-28 | 9649 |  | 7 Days Work | 9301314 |
| 9651 | 36900.37000.37100.37200.38200.52100.713900 | Blockwork | 10d | 2026-10-29 | 2026-11-07 | 9650 |  | 7 Days Work | 9301324 |
| 9652 | 36900.37000.37100.37200.38200.52100.714000 | MEP Clearance -2 | 10d | 2026-11-08 | 2026-11-17 | 9651 |  | 7 Days Work | 9301334 |
| 9653 | 36900.37000.37100.37200.38200.52100.714100 | Gypsum Plaster | 14d | 2026-11-18 | 2026-12-01 | 9652 |  | 7 Days Work | 9045074 |
| 9654 | 36900.37000.37100.37200.38200.52100.714200 | Kitchen Platform | 3d | 2026-12-02 | 2026-12-04 | 9653 |  | 7 Days Work | 9301354 |
| 9655 | 36900.37000.37100.37200.38200.52100.714300 | Kitchen dado | 7d | 2026-12-05 | 2026-12-11 | 9654 |  | 7 Days Work | 9301364 |
| 9656 | 36900.37000.37100.37200.38200.52100.714400 | Fire Fighting | 5d | 2026-12-12 | 2026-12-16 | 9655 |  | 7 Days Work | 9301374 |
| 9657 | 36900.37000.37100.37200.38200.52100.714500 | Anticapilary | 5d | 2026-12-17 | 2026-12-21 | 9656 |  | 7 Days Work | 9301384 |
| 9658 | 36900.37000.37100.37200.38200.52100.714600 | Stone Laying | 10d | 2027-01-24 | 2027-02-02 | 9698 |  | 7 Days Work | 9301394 |
| 9659 | 36900.37000.37100.37200.38200.52100.714700 | Tiles Laying | 7d | 2027-01-24 | 2027-01-30 | 9658SS |  | 7 Days Work | 9045084 |
| 9660 | 36900.37000.37100.37200.38200.52100.714800 | 1st cutting/polishing of stone flooring | 7d | 2027-01-31 | 2027-02-06 | 9659 |  | 7 Days Work | 9301414 |
| 9661 | 36900.37000.37100.37200.38200.52100.714900 | Tiles/Stone skirting | 5d | 2027-02-07 | 2027-02-11 | 9660 |  | 7 Days Work | 9301424 |
| 9662 | 36900.37000.37100.37200.38200.52100.715000 | Protechtion sheet | 1d | 2027-02-12 | 2027-02-12 | 9661 |  | 7 Days Work | 9301434 |
| 9663 | 36900.37000.37100.37200.38200.52100.715100 | Installation of Temporary Door | 1d | 2027-02-13 | 2027-02-13 | 9662 |  | 7 Days Work | 9301444 |
| 9664 | 36900.37000.37100.37200.38200.52100.715200 | Fixing of window tracks | 5d | 2027-02-14 | 2027-02-18 | 9663 |  | 7 Days Work | 9301454 |
| 9665 | 36900.37000.37100.37200.38200.52100.715300 | Wire Pulling | 7d | 2027-02-19 | 2027-02-25 | 9664 |  | 7 Days Work | 9301464 |
| 9666 | 36900.37000.37100.37200.38200.52100.715400 | Gypsum Remaining | 5d | 2027-02-26 | 2027-03-02 | 9665 |  | 7 Days Work | 9301474 |
| 9667 | 36900.37000.37100.37200.38200.52100.715500 | Fixing of windoow shutter | 5d | 2027-03-03 | 2027-03-07 | 9666 |  | 7 Days Work | 9301484 |
| 9668 | 36900.37000.37100.37200.38200.52100.715600 | Putty Works - walls & ceiling | 15d | 2027-03-08 | 2027-03-22 | 9667 |  | 7 Days Work | 9301494 |
| 9669 | 36900.37000.37100.37200.38200.52100.715700 | False Ceiling- Framing | 10d | 2027-03-23 | 2027-04-01 | 9668 |  | 7 Days Work | 9301504 |
| 9670 | 36900.37000.37100.37200.38200.52100.715800 | Pre Hung Door | 3d | 2027-04-02 | 2027-04-04 | 9669 |  | 7 Days Work | 9301514 |
| 9671 | 36900.37000.37100.37200.38200.52100.715900 | Protechtion sheet | 2d | 2027-04-05 | 2027-04-06 | 9670 |  | 7 Days Work | 9301524 |
| 9672 | 36900.37000.37100.37200.38200.52100.716000 | Skirting near door | 2d | 2027-04-07 | 2027-04-08 | 9671 |  | 7 Days Work | 9301534 |
| 9673 | 36900.37000.37100.37200.38200.52100.716100 | Electrical Switch box fixing | 14d | 2027-04-09 | 2027-04-22 | 9672 |  | 7 Days Work | 9301544 |
| 9674 | 36900.37000.37100.37200.38200.52100.716200 | Fire Fighting painting | 5d | 2027-04-23 | 2027-04-27 | 9673 |  | 7 Days Work | 9301554 |
| 9675 | 36900.37000.37100.37200.38200.52100.716300 | Protection of all flooring, door & window hardware | 5d | 2027-04-28 | 2027-05-02 | 9674 |  | 7 Days Work | 9301564 |
| 9676 | 36900.37000.37100.37200.38200.52100.716400 | 1st coat primer- ceiling 1st & walls | 14d | 2027-05-03 | 2027-05-16 | 9675 |  | 7 Days Work | 9301574 |
| 9677 | 36900.37000.37100.37200.38200.52100.716500 | Wooden Flooring | 5d | 2027-05-17 | 2027-05-21 | 9676 |  | 7 Days Work | 9301584 |
| 9678 | 36900.37000.37100.37200.38200.52100.716600 | Removing of Temporary Railing & installation of Glass Railing | 5d | 2027-05-17 | 2027-05-21 | 9676 |  | 7 Days Work | 9301594 |
| 9679 | 36900.37000.37100.37200.38200.52100.716700 | Tile Grouting | 7d | 2027-05-17 | 2027-05-23 | 9676 |  | 7 Days Work | 9301604 |
| 9680 | 36900.37000.37100.37200.38200.52100.716800 | False Ceiling | 5d | 2027-05-24 | 2027-05-28 | 9679 |  | 7 Days Work | 9301614 |
| 9681 | 36900.37000.37100.37200.38200.52100.716900 | 2nd coat of primer | 10d | 2027-05-29 | 2027-06-07 | 9680 |  | 7 Days Work | 9301624 |
| 9682 | 36900.37000.37100.37200.38200.52100.717000 | Final cutting/polishing of stone flooring | 7d | 2027-06-08 | 2027-06-14 | 9681 |  | 7 Days Work | 9301634 |

| ID | WBS | Task | Duration | Start | Finish | Predecessors | Constraint | Calendar | Unique_Task_ID |
| --- | --- | --- | --- | --- | --- | --- | --- | --- | --- |
| 9683 | 36900.37000.37100.37200.38200.52100.66400 | **Toilet** | 237d | 2026-10-20 | 2027-06-13 |  | start no earlier than 2026-10-20 | 7 Days Work | 9294104 |
| 9684 | 36900.37000.37100.37200.38200.52100.66400.1032100 | Toilet_MEP Clearance -1 | 7d | 2026-10-20 | 2026-10-26 | 9647 |  | 7 Days Work | 9307624 |
| 9685 | 36900.37000.37100.37200.38200.52100.66400.1032200 | Toilet_Level Marking | 1d | 2026-10-27 | 2026-10-27 | 9684 |  | 7 Days Work | 9307634 |
| 9686 | 36900.37000.37100.37200.38200.52100.66400.1032300 | Toilet_Chasing work for Electrical conduit & concealed plumbing | 5d | 2026-10-28 | 2026-11-01 | 9685 |  | 7 Days Work | 9307644 |
| 9687 | 36900.37000.37100.37200.38200.52100.66400.1032400 | Toilet_Plumbing work 1st fix | 5d | 2026-11-02 | 2026-11-06 | 9686 |  | 7 Days Work | 9307654 |
| 9688 | 36900.37000.37100.37200.38200.52100.66400.1032500 | Toilet_Sleeve/Bore Packing | 5d | 2026-11-07 | 2026-11-11 | 9687 |  | 7 Days Work | 9307664 |
| 9689 | 36900.37000.37100.37200.38200.52100.66400.1032600 | Toilet_Waterproofing | 10d | 2026-11-12 | 2026-11-21 | 9688 |  | 7 Days Work | 9307674 |
| 9690 | 36900.37000.37100.37200.38200.52100.66400.1032700 | Toilet_Screed | 1d | 2026-11-22 | 2026-11-22 | 9689 |  | 7 Days Work | 9307684 |
| 9691 | 36900.37000.37100.37200.38200.52100.66400.1032800 | Toilet_Plumbing 2nd fix | 5d | 2026-11-23 | 2026-11-27 | 9690 |  | 7 Days Work | 9307694 |
| 9692 | 36900.37000.37100.37200.38200.52100.66400.1032900 | Toilet_Ledge wall | 5d | 2026-11-28 | 2026-12-02 | 9691 |  | 7 Days Work | 9307704 |
| 9693 | 36900.37000.37100.37200.38200.52100.66400.1033000 | Toilet_Cement Plaster | 5d | 2026-12-03 | 2026-12-07 | 9692 |  | 7 Days Work | 9307714 |
| 9694 | 36900.37000.37100.37200.38200.52100.66400.1033100 | Toilet_Door Frame | 1d | 2026-12-08 | 2026-12-08 | 9693 |  | 7 Days Work | 9307724 |
| 9695 | 36900.37000.37100.37200.38200.52100.66400.1033200 | Toilet_Wash basin & Couter | 3d | 2026-12-09 | 2026-12-11 | 9694 |  | 7 Days Work | 9307734 |
| 9696 | 36900.37000.37100.37200.38200.52100.66400.1033300 | Toilet_Wall dado | 20d | 2026-12-12 | 2026-12-31 | 9695 |  | 7 Days Work | 9307744 |
| 9697 | 36900.37000.37100.37200.38200.52100.66400.1033400 | Toilet_Granite Work-Ledge wall top | 3d | 2027-01-01 | 2027-01-03 | 9696 |  | 7 Days Work | 9307754 |
| 9698 | 36900.37000.37100.37200.38200.52100.66400.1033500 | Toilet_Floor Tilling work | 20d | 2027-01-04 | 2027-01-23 | 9697 |  | 7 Days Work | 9307764 |
| 9699 | 36900.37000.37100.37200.38200.52100.66400.1033600 | Toilet_1st row of dado | 5d | 2027-01-24 | 2027-01-28 | 9698 |  | 7 Days Work | 9307774 |
| 9700 | 36900.37000.37100.37200.38200.52100.66400.1033700 | Toilet_Window Fixing | 14d | 2027-01-29 | 2027-02-11 | 9699 |  | 7 Days Work | 9307784 |
| 9701 | 36900.37000.37100.37200.38200.52100.66400.1033800 | Toilet_Services above False ceiling | 21d | 2027-02-12 | 2027-03-04 | 9700 |  | 7 Days Work | 9307794 |
| 9702 | 36900.37000.37100.37200.38200.52100.66400.1033900 | Toilet_False Ceiling framing | 12d | 2027-03-05 | 2027-03-16 | 9701 |  | 7 Days Work | 9307804 |
| 9703 | 36900.37000.37100.37200.38200.52100.66400.1034000 | Toilet_Door Frame | 5d | 2027-03-17 | 2027-03-21 | 9702 |  | 7 Days Work | 9307814 |
| 9704 | 36900.37000.37100.37200.38200.52100.66400.1034100 | Toilet_Epoxy Tile Grouting | 7d | 2027-05-17 | 2027-05-23 | 9679SS |  | 7 Days Work | 9307824 |
| 9705 | 36900.37000.37100.37200.38200.52100.66400.1034200 | Toilet_False ceiling board fixing, CP Sanitary Fixture, Electric Fixture | 21d | 2027-05-24 | 2027-06-13 | 9704 |  | 7 Days Work | 9307834 |
| 9706 | 36900.37000.37100.37200.52500 | **Common area Finishing** | 329d | 2026-12-08 | 2027-11-01 |  | start no earlier than 2026-12-08 | 7 Days Work | 9293904 |
| 9707 | 36900.37000.37100.37200.52500.79800 | **1st Habitable/2nd Floor** | 158d | 2026-12-08 | 2027-05-14 |  | start no earlier than 2026-12-08 | 7 Days Work | 9294124 |
| 9708 | 36900.37000.37100.37200.52500.79800.717100 | Side blockwork for lift shafts | 9d | 2026-12-08 | 2026-12-16 | 9913 |  | 7 Days Work | 9301644 |
| 9709 | 36900.37000.37100.37200.52500.79800.717200 | Door Threshold for lifts | 6d | 2026-12-17 | 2026-12-22 | 9708 |  | 7 Days Work | 9301654 |
| 9710 | 36900.37000.37100.37200.52500.79800.717300 | Granite Cladding | 10d | 2026-12-23 | 2027-01-01 | 9709 |  | 7 Days Work | 9301664 |
| 9711 | 36900.37000.37100.37200.52500.79800.717400 | MEP Services | 60d | 2027-01-02 | 2027-03-02 | 9710 |  | 7 Days Work | 9301674 |
| 9712 | 36900.37000.37100.37200.52500.79800.717500 | Flooring+Skirting | 20d | 2027-03-03 | 2027-03-22 | 9711 |  | 7 Days Work | 9301684 |
| 9713 | 36900.37000.37100.37200.52500.79800.717600 | Wall finishes | 21d | 2027-03-23 | 2027-04-12 | 9712 |  | 7 Days Work | 9301694 |
| 9714 | 36900.37000.37100.37200.52500.79800.717700 | False Ceiling | 10d | 2027-04-13 | 2027-04-22 | 9713 |  | 7 Days Work | 9301704 |
| 9715 | 36900.37000.37100.37200.52500.79800.717800 | Staircase | 15d | 2027-04-23 | 2027-05-07 | 9714 |  | 7 Days Work | 9301714 |
| 9716 | 36900.37000.37100.37200.52500.79800.717900 | Deep Cleaning | 7d | 2027-05-08 | 2027-05-14 | 9715 |  | 7 Days Work | 9301724 |

| ID | WBS | Task | Duration | Start | Finish | Predecessors | Constraint | Calendar | Unique_Task_ID |
| --- | --- | --- | --- | --- | --- | --- | --- | --- | --- |
| 9717 | 36900.37000.37100.37200.52500.79900 | **2nd Habitable/3rd Floor** | 158d | 2026-12-17 | 2027-05-23 |  | start no earlier than 2026-12-17 | 7 Days Work | 9294134 |
| 9718 | 36900.37000.37100.37200.52500.79900.718000 | Side blockwork for lift shafts | 9d | 2026-12-17 | 2026-12-25 | 9708 |  | 7 Days Work | 9301734 |
| 9719 | 36900.37000.37100.37200.52500.79900.718100 | Door Threshold for lifts | 6d | 2026-12-26 | 2026-12-31 | 9718 |  | 7 Days Work | 9301744 |
| 9720 | 36900.37000.37100.37200.52500.79900.718200 | Granite Cladding | 10d | 2027-01-01 | 2027-01-10 | 9719 |  | 7 Days Work | 9301754 |
| 9721 | 36900.37000.37100.37200.52500.79900.718300 | MEP Services | 60d | 2027-01-11 | 2027-03-11 | 9720 |  | 7 Days Work | 9301764 |
| 9722 | 36900.37000.37100.37200.52500.79900.718400 | Flooring+Skirting | 20d | 2027-03-12 | 2027-03-31 | 9721 |  | 7 Days Work | 9301774 |
| 9723 | 36900.37000.37100.37200.52500.79900.718500 | Wall finishes | 21d | 2027-04-01 | 2027-04-21 | 9722 |  | 7 Days Work | 9301784 |
| 9724 | 36900.37000.37100.37200.52500.79900.718600 | False Ceiling | 10d | 2027-04-22 | 2027-05-01 | 9723 |  | 7 Days Work | 9301794 |
| 9725 | 36900.37000.37100.37200.52500.79900.718700 | Staircase | 15d | 2027-05-02 | 2027-05-16 | 9724 |  | 7 Days Work | 9301804 |
| 9726 | 36900.37000.37100.37200.52500.79900.718800 | Deep Cleaning | 7d | 2027-05-17 | 2027-05-23 | 9725 |  | 7 Days Work | 9301814 |
| 9727 | 36900.37000.37100.37200.52500.80000 | **3rd Habitable/4th Floor** | 158d | 2026-12-26 | 2027-06-01 |  | start no earlier than 2026-12-26 | 7 Days Work | 9294144 |
| 9728 | 36900.37000.37100.37200.52500.80000.718900 | Side blockwork for lift shafts | 9d | 2026-12-26 | 2027-01-03 | 9718 |  | 7 Days Work | 9301824 |
| 9729 | 36900.37000.37100.37200.52500.80000.719000 | Door Threshold for lifts | 6d | 2027-01-04 | 2027-01-09 | 9728 |  | 7 Days Work | 9301834 |
| 9730 | 36900.37000.37100.37200.52500.80000.719100 | Granite Cladding | 10d | 2027-01-10 | 2027-01-19 | 9729 |  | 7 Days Work | 9301844 |
| 9731 | 36900.37000.37100.37200.52500.80000.719200 | MEP Services | 60d | 2027-01-20 | 2027-03-20 | 9730 |  | 7 Days Work | 9301854 |
| 9732 | 36900.37000.37100.37200.52500.80000.719300 | Flooring+Skirting | 20d | 2027-03-21 | 2027-04-09 | 9731 |  | 7 Days Work | 9301864 |
| 9733 | 36900.37000.37100.37200.52500.80000.719400 | Wall finishes | 21d | 2027-04-10 | 2027-04-30 | 9732 |  | 7 Days Work | 9301874 |
| 9734 | 36900.37000.37100.37200.52500.80000.719500 | False Ceiling | 10d | 2027-05-01 | 2027-05-10 | 9733 |  | 7 Days Work | 9301884 |
| 9735 | 36900.37000.37100.37200.52500.80000.719600 | Staircase | 15d | 2027-05-11 | 2027-05-25 | 9734 |  | 7 Days Work | 9301894 |
| 9736 | 36900.37000.37100.37200.52500.80000.719700 | Deep Cleaning | 7d | 2027-05-26 | 2027-06-01 | 9735 |  | 7 Days Work | 9301904 |
| 9737 | 36900.37000.37100.37200.52500.80100 | **4th Habitable/5th Floor** | 158d | 2027-01-04 | 2027-06-10 |  | start no earlier than 2027-01-04 | 7 Days Work | 9294154 |
| 9738 | 36900.37000.37100.37200.52500.80100.719800 | Side blockwork for lift shafts | 9d | 2027-01-04 | 2027-01-12 | 9728 |  | 7 Days Work | 9301914 |
| 9739 | 36900.37000.37100.37200.52500.80100.719900 | Door Threshold for lifts | 6d | 2027-01-13 | 2027-01-18 | 9738 |  | 7 Days Work | 9301924 |
| 9740 | 36900.37000.37100.37200.52500.80100.720000 | Granite Cladding | 10d | 2027-01-19 | 2027-01-28 | 9739 |  | 7 Days Work | 9301934 |
| 9741 | 36900.37000.37100.37200.52500.80100.720100 | MEP Services | 60d | 2027-01-29 | 2027-03-29 | 9740 |  | 7 Days Work | 9301944 |
| 9742 | 36900.37000.37100.37200.52500.80100.720200 | Flooring+Skirting | 20d | 2027-03-30 | 2027-04-18 | 9741 |  | 7 Days Work | 9301954 |
| 9743 | 36900.37000.37100.37200.52500.80100.720300 | Wall finishes | 21d | 2027-04-19 | 2027-05-09 | 9742 |  | 7 Days Work | 9301964 |
| 9744 | 36900.37000.37100.37200.52500.80100.720400 | False Ceiling | 10d | 2027-05-10 | 2027-05-19 | 9743 |  | 7 Days Work | 9301974 |
| 9745 | 36900.37000.37100.37200.52500.80100.720500 | Staircase | 15d | 2027-05-20 | 2027-06-03 | 9744 |  | 7 Days Work | 9301984 |
| 9746 | 36900.37000.37100.37200.52500.80100.720600 | Deep Cleaning | 7d | 2027-06-04 | 2027-06-10 | 9745 |  | 7 Days Work | 9301994 |

| ID | WBS | Task | Duration | Start | Finish | Predecessors | Constraint | Calendar | Unique_Task_ID |
| --- | --- | --- | --- | --- | --- | --- | --- | --- | --- |
| 9747 | 36900.37000.37100.37200.52500.80200 | **5th Habitable/6th Floor** | 158d | 2027-01-13 | 2027-06-19 |  | start no earlier than 2027-01-13 | 7 Days Work | 9294164 |
| 9748 | 36900.37000.37100.37200.52500.80200.720700 | Side blockwork for lift shafts | 9d | 2027-01-13 | 2027-01-21 | 9738 |  | 7 Days Work | 9302004 |
| 9749 | 36900.37000.37100.37200.52500.80200.720800 | Door Threshold for lifts | 6d | 2027-01-22 | 2027-01-27 | 9748 |  | 7 Days Work | 9302014 |
| 9750 | 36900.37000.37100.37200.52500.80200.720900 | Granite Cladding | 10d | 2027-01-28 | 2027-02-06 | 9749 |  | 7 Days Work | 9302024 |
| 9751 | 36900.37000.37100.37200.52500.80200.721000 | MEP Services | 60d | 2027-02-07 | 2027-04-07 | 9750 |  | 7 Days Work | 9302034 |
| 9752 | 36900.37000.37100.37200.52500.80200.721100 | Flooring+Skirting | 20d | 2027-04-08 | 2027-04-27 | 9751 |  | 7 Days Work | 9302044 |
| 9753 | 36900.37000.37100.37200.52500.80200.721200 | Wall finishes | 21d | 2027-04-28 | 2027-05-18 | 9752 |  | 7 Days Work | 9302054 |
| 9754 | 36900.37000.37100.37200.52500.80200.721300 | False Ceiling | 10d | 2027-05-19 | 2027-05-28 | 9753 |  | 7 Days Work | 9302064 |
| 9755 | 36900.37000.37100.37200.52500.80200.721400 | Staircase | 15d | 2027-05-29 | 2027-06-12 | 9754 |  | 7 Days Work | 9302074 |
| 9756 | 36900.37000.37100.37200.52500.80200.721500 | Deep Cleaning | 7d | 2027-06-13 | 2027-06-19 | 9755 |  | 7 Days Work | 9302084 |
| 9757 | 36900.37000.37100.37200.52500.80300 | **6th Habitable/7th Floor** | 158d | 2027-01-22 | 2027-06-28 |  | start no earlier than 2027-01-22 | 7 Days Work | 9294174 |
| 9758 | 36900.37000.37100.37200.52500.80300.721600 | Side blockwork for lift shafts | 9d | 2027-01-22 | 2027-01-30 | 9748 |  | 7 Days Work | 9302094 |
| 9759 | 36900.37000.37100.37200.52500.80300.721700 | Door Threshold for lifts | 6d | 2027-01-31 | 2027-02-05 | 9758 |  | 7 Days Work | 9302104 |
| 9760 | 36900.37000.37100.37200.52500.80300.721800 | Granite Cladding | 10d | 2027-02-06 | 2027-02-15 | 9759 |  | 7 Days Work | 9302114 |
| 9761 | 36900.37000.37100.37200.52500.80300.721900 | MEP Services | 60d | 2027-02-16 | 2027-04-16 | 9760 |  | 7 Days Work | 9302124 |
| 9762 | 36900.37000.37100.37200.52500.80300.722000 | Flooring+Skirting | 20d | 2027-04-17 | 2027-05-06 | 9761 |  | 7 Days Work | 9302134 |
| 9763 | 36900.37000.37100.37200.52500.80300.722100 | Wall finishes | 21d | 2027-05-07 | 2027-05-27 | 9762 |  | 7 Days Work | 9302144 |
| 9764 | 36900.37000.37100.37200.52500.80300.722200 | False Ceiling | 10d | 2027-05-28 | 2027-06-06 | 9763 |  | 7 Days Work | 9302154 |
| 9765 | 36900.37000.37100.37200.52500.80300.722300 | Staircase | 15d | 2027-06-07 | 2027-06-21 | 9764 |  | 7 Days Work | 9302164 |
| 9766 | 36900.37000.37100.37200.52500.80300.722400 | Deep Cleaning | 7d | 2027-06-22 | 2027-06-28 | 9765 |  | 7 Days Work | 9302174 |
| 9767 | 36900.37000.37100.37200.52500.80400 | **7th Habitable/8th Floor** | 158d | 2027-01-31 | 2027-07-07 |  | start no earlier than 2027-01-31 | 7 Days Work | 9294184 |
| 9768 | 36900.37000.37100.37200.52500.80400.722500 | Side blockwork for lift shafts | 9d | 2027-01-31 | 2027-02-08 | 9758 |  | 7 Days Work | 9302184 |
| 9769 | 36900.37000.37100.37200.52500.80400.722600 | Door Threshold for lifts | 6d | 2027-02-09 | 2027-02-14 | 9768 |  | 7 Days Work | 9302194 |
| 9770 | 36900.37000.37100.37200.52500.80400.722700 | Granite Cladding | 10d | 2027-02-15 | 2027-02-24 | 9769 |  | 7 Days Work | 9302204 |
| 9771 | 36900.37000.37100.37200.52500.80400.722800 | MEP Services | 60d | 2027-02-25 | 2027-04-25 | 9770 |  | 7 Days Work | 9302214 |
| 9772 | 36900.37000.37100.37200.52500.80400.722900 | Flooring+Skirting | 20d | 2027-04-26 | 2027-05-15 | 9771 |  | 7 Days Work | 9302224 |
| 9773 | 36900.37000.37100.37200.52500.80400.723000 | Wall finishes | 21d | 2027-05-16 | 2027-06-05 | 9772 |  | 7 Days Work | 9302234 |
| 9774 | 36900.37000.37100.37200.52500.80400.723100 | False Ceiling | 10d | 2027-06-06 | 2027-06-15 | 9773 |  | 7 Days Work | 9302244 |
| 9775 | 36900.37000.37100.37200.52500.80400.723200 | Staircase | 15d | 2027-06-16 | 2027-06-30 | 9774 |  | 7 Days Work | 9302254 |
| 9776 | 36900.37000.37100.37200.52500.80400.723300 | Deep Cleaning | 7d | 2027-07-01 | 2027-07-07 | 9775 |  | 7 Days Work | 9302264 |

| ID | WBS | Task | Duration | Start | Finish | Predecessors | Constraint | Calendar | Unique_Task_ID |
| --- | --- | --- | --- | --- | --- | --- | --- | --- | --- |
| 9777 | 36900.37000.37100.37200.52500.80500 | **8th Habitable/9th Floor** | 158d | 2027-02-09 | 2027-07-16 |  | start no earlier than 2027-02-09 | 7 Days Work | 9294194 |
| 9778 | 36900.37000.37100.37200.52500.80500.723400 | Side blockwork for lift shafts | 9d | 2027-02-09 | 2027-02-17 | 9768 |  | 7 Days Work | 9302274 |
| 9779 | 36900.37000.37100.37200.52500.80500.723500 | Door Threshold for lifts | 6d | 2027-02-18 | 2027-02-23 | 9778 |  | 7 Days Work | 9302284 |
| 9780 | 36900.37000.37100.37200.52500.80500.723600 | Granite Cladding | 10d | 2027-02-24 | 2027-03-05 | 9779 |  | 7 Days Work | 9302294 |
| 9781 | 36900.37000.37100.37200.52500.80500.723700 | MEP Services | 60d | 2027-03-06 | 2027-05-04 | 9780 |  | 7 Days Work | 9302304 |
| 9782 | 36900.37000.37100.37200.52500.80500.723800 | Flooring+Skirting | 20d | 2027-05-05 | 2027-05-24 | 9781 |  | 7 Days Work | 9302314 |
| 9783 | 36900.37000.37100.37200.52500.80500.723900 | Wall finishes | 21d | 2027-05-25 | 2027-06-14 | 9782 |  | 7 Days Work | 9302324 |
| 9784 | 36900.37000.37100.37200.52500.80500.724000 | False Ceiling | 10d | 2027-06-15 | 2027-06-24 | 9783 |  | 7 Days Work | 9302334 |
| 9785 | 36900.37000.37100.37200.52500.80500.724100 | Staircase | 15d | 2027-06-25 | 2027-07-09 | 9784 |  | 7 Days Work | 9302344 |
| 9786 | 36900.37000.37100.37200.52500.80500.724200 | Deep Cleaning | 7d | 2027-07-10 | 2027-07-16 | 9785 |  | 7 Days Work | 9302354 |
| 9787 | 36900.37000.37100.37200.52500.80600 | **9th Habitable/10th Floor** | 158d | 2027-02-18 | 2027-07-25 |  | start no earlier than 2027-02-18 | 7 Days Work | 9294204 |
| 9788 | 36900.37000.37100.37200.52500.80600.724300 | Side blockwork for lift shafts | 9d | 2027-02-18 | 2027-02-26 | 9778 |  | 7 Days Work | 9302364 |
| 9789 | 36900.37000.37100.37200.52500.80600.724400 | Door Threshold for lifts | 6d | 2027-02-27 | 2027-03-04 | 9788 |  | 7 Days Work | 9302374 |
| 9790 | 36900.37000.37100.37200.52500.80600.724500 | Granite Cladding | 10d | 2027-03-05 | 2027-03-14 | 9789 |  | 7 Days Work | 9302384 |
| 9791 | 36900.37000.37100.37200.52500.80600.724600 | MEP Services | 60d | 2027-03-15 | 2027-05-13 | 9790 |  | 7 Days Work | 9302394 |
| 9792 | 36900.37000.37100.37200.52500.80600.724700 | Flooring+Skirting | 20d | 2027-05-14 | 2027-06-02 | 9791 |  | 7 Days Work | 9302404 |
| 9793 | 36900.37000.37100.37200.52500.80600.724800 | Wall finishes | 21d | 2027-06-03 | 2027-06-23 | 9792 |  | 7 Days Work | 9302414 |
| 9794 | 36900.37000.37100.37200.52500.80600.724900 | False Ceiling | 10d | 2027-06-24 | 2027-07-03 | 9793 |  | 7 Days Work | 9302424 |
| 9795 | 36900.37000.37100.37200.52500.80600.725000 | Staircase | 15d | 2027-07-04 | 2027-07-18 | 9794 |  | 7 Days Work | 9302434 |
| 9796 | 36900.37000.37100.37200.52500.80600.725100 | Deep Cleaning | 7d | 2027-07-19 | 2027-07-25 | 9795 |  | 7 Days Work | 9302444 |
| 9797 | 36900.37000.37100.37200.52500.80700 | **10th Habitable/11th Floor** | 158d | 2027-02-27 | 2027-08-03 |  | start no earlier than 2027-02-27 | 7 Days Work | 9294214 |
| 9798 | 36900.37000.37100.37200.52500.80700.725200 | Side blockwork for lift shafts | 9d | 2027-02-27 | 2027-03-07 | 9788 |  | 7 Days Work | 9302454 |
| 9799 | 36900.37000.37100.37200.52500.80700.725300 | Door Threshold for lifts | 6d | 2027-03-08 | 2027-03-13 | 9798 |  | 7 Days Work | 9302464 |
| 9800 | 36900.37000.37100.37200.52500.80700.725400 | Granite Cladding | 10d | 2027-03-14 | 2027-03-23 | 9799 |  | 7 Days Work | 9302474 |
| 9801 | 36900.37000.37100.37200.52500.80700.725500 | MEP Services | 60d | 2027-03-24 | 2027-05-22 | 9800 |  | 7 Days Work | 9302484 |
| 9802 | 36900.37000.37100.37200.52500.80700.725600 | Flooring+Skirting | 20d | 2027-05-23 | 2027-06-11 | 9801 |  | 7 Days Work | 9302494 |
| 9803 | 36900.37000.37100.37200.52500.80700.725700 | Wall finishes | 21d | 2027-06-12 | 2027-07-02 | 9802 |  | 7 Days Work | 9302504 |
| 9804 | 36900.37000.37100.37200.52500.80700.725800 | False Ceiling | 10d | 2027-07-03 | 2027-07-12 | 9803 |  | 7 Days Work | 9302514 |
| 9805 | 36900.37000.37100.37200.52500.80700.725900 | Staircase | 15d | 2027-07-13 | 2027-07-27 | 9804 |  | 7 Days Work | 9302524 |
| 9806 | 36900.37000.37100.37200.52500.80700.726000 | Deep Cleaning | 7d | 2027-07-28 | 2027-08-03 | 9805 |  | 7 Days Work | 9302534 |

| ID | WBS | Task | Duration | Start | Finish | Predecessors | Constraint | Calendar | Unique_Task_ID |
| --- | --- | --- | --- | --- | --- | --- | --- | --- | --- |
| 9807 | 36900.37000.37100.37200.52500.80800 | **11th Habitable/12th Floor** | 158d | 2027-03-08 | 2027-08-12 |  | start no earlier than 2027-03-08 | 7 Days Work | 9294224 |
| 9808 | 36900.37000.37100.37200.52500.80800.726100 | Side blockwork for lift shafts | 9d | 2027-03-08 | 2027-03-16 | 9798 |  | 7 Days Work | 9302544 |
| 9809 | 36900.37000.37100.37200.52500.80800.726200 | Door Threshold for lifts | 6d | 2027-03-17 | 2027-03-22 | 9808 |  | 7 Days Work | 9302554 |
| 9810 | 36900.37000.37100.37200.52500.80800.726300 | Granite Cladding | 10d | 2027-03-23 | 2027-04-01 | 9809 |  | 7 Days Work | 9302564 |
| 9811 | 36900.37000.37100.37200.52500.80800.726400 | MEP Services | 60d | 2027-04-02 | 2027-05-31 | 9810 |  | 7 Days Work | 9302574 |
| 9812 | 36900.37000.37100.37200.52500.80800.726500 | Flooring+Skirting | 20d | 2027-06-01 | 2027-06-20 | 9811 |  | 7 Days Work | 9302584 |
| 9813 | 36900.37000.37100.37200.52500.80800.726600 | Wall finishes | 21d | 2027-06-21 | 2027-07-11 | 9812 |  | 7 Days Work | 9302594 |
| 9814 | 36900.37000.37100.37200.52500.80800.726700 | False Ceiling | 10d | 2027-07-12 | 2027-07-21 | 9813 |  | 7 Days Work | 9302604 |
| 9815 | 36900.37000.37100.37200.52500.80800.726800 | Staircase | 15d | 2027-07-22 | 2027-08-05 | 9814 |  | 7 Days Work | 9302614 |
| 9816 | 36900.37000.37100.37200.52500.80800.726900 | Deep Cleaning | 7d | 2027-08-06 | 2027-08-12 | 9815 |  | 7 Days Work | 9302624 |
| 9817 | 36900.37000.37100.37200.52500.80900 | **12th Habitable/13th Floor** | 158d | 2027-03-17 | 2027-08-21 |  | start no earlier than 2027-03-17 | 7 Days Work | 9294234 |
| 9818 | 36900.37000.37100.37200.52500.80900.727000 | Side blockwork for lift shafts | 9d | 2027-03-17 | 2027-03-25 | 9808 |  | 7 Days Work | 9302634 |
| 9819 | 36900.37000.37100.37200.52500.80900.727100 | Door Threshold for lifts | 6d | 2027-03-26 | 2027-03-31 | 9818 |  | 7 Days Work | 9302644 |
| 9820 | 36900.37000.37100.37200.52500.80900.727200 | Granite Cladding | 10d | 2027-04-01 | 2027-04-10 | 9819 |  | 7 Days Work | 9302654 |
| 9821 | 36900.37000.37100.37200.52500.80900.727300 | MEP Services | 60d | 2027-04-11 | 2027-06-09 | 9820 |  | 7 Days Work | 9302664 |
| 9822 | 36900.37000.37100.37200.52500.80900.727400 | Flooring+Skirting | 20d | 2027-06-10 | 2027-06-29 | 9821 |  | 7 Days Work | 9302674 |
| 9823 | 36900.37000.37100.37200.52500.80900.727500 | Wall finishes | 21d | 2027-06-30 | 2027-07-20 | 9822 |  | 7 Days Work | 9302684 |
| 9824 | 36900.37000.37100.37200.52500.80900.727600 | False Ceiling | 10d | 2027-07-21 | 2027-07-30 | 9823 |  | 7 Days Work | 9302694 |
| 9825 | 36900.37000.37100.37200.52500.80900.727700 | Staircase | 15d | 2027-07-31 | 2027-08-14 | 9824 |  | 7 Days Work | 9302704 |
| 9826 | 36900.37000.37100.37200.52500.80900.727800 | Deep Cleaning | 7d | 2027-08-15 | 2027-08-21 | 9825 |  | 7 Days Work | 9302714 |
| 9827 | 36900.37000.37100.37200.52500.81000 | **13th Habitable/14th Floor** | 158d | 2027-03-26 | 2027-08-30 |  | start no earlier than 2027-03-26 | 7 Days Work | 9294244 |
| 9828 | 36900.37000.37100.37200.52500.81000.727900 | Side blockwork for lift shafts | 9d | 2027-03-26 | 2027-04-03 | 9818 |  | 7 Days Work | 9302724 |
| 9829 | 36900.37000.37100.37200.52500.81000.728000 | Door Threshold for lifts | 6d | 2027-04-04 | 2027-04-09 | 9828 |  | 7 Days Work | 9302734 |
| 9830 | 36900.37000.37100.37200.52500.81000.728100 | Granite Cladding | 10d | 2027-04-10 | 2027-04-19 | 9829 |  | 7 Days Work | 9302744 |
| 9831 | 36900.37000.37100.37200.52500.81000.728200 | MEP Services | 60d | 2027-04-20 | 2027-06-18 | 9830 |  | 7 Days Work | 9302754 |
| 9832 | 36900.37000.37100.37200.52500.81000.728300 | Flooring+Skirting | 20d | 2027-06-19 | 2027-07-08 | 9831 |  | 7 Days Work | 9302764 |
| 9833 | 36900.37000.37100.37200.52500.81000.728400 | Wall finishes | 21d | 2027-07-09 | 2027-07-29 | 9832 |  | 7 Days Work | 9302774 |
| 9834 | 36900.37000.37100.37200.52500.81000.728500 | False Ceiling | 10d | 2027-07-30 | 2027-08-08 | 9833 |  | 7 Days Work | 9302784 |
| 9835 | 36900.37000.37100.37200.52500.81000.728600 | Staircase | 15d | 2027-08-09 | 2027-08-23 | 9834 |  | 7 Days Work | 9302794 |
| 9836 | 36900.37000.37100.37200.52500.81000.728700 | Deep Cleaning | 7d | 2027-08-24 | 2027-08-30 | 9835 |  | 7 Days Work | 9302804 |

| ID | WBS | Task | Duration | Start | Finish | Predecessors | Constraint | Calendar | Unique_Task_ID |
| --- | --- | --- | --- | --- | --- | --- | --- | --- | --- |
| 9837 | 36900.37000.37100.37200.52500.81100 | **14th Habitable/15th Floor** | 158d | 2027-04-04 | 2027-09-08 |  | start no earlier than 2027-04-04 | 7 Days Work | 9294254 |
| 9838 | 36900.37000.37100.37200.52500.81100.728800 | Side blockwork for lift shafts | 9d | 2027-04-04 | 2027-04-12 | 9828 |  | 7 Days Work | 9302814 |
| 9839 | 36900.37000.37100.37200.52500.81100.728900 | Door Threshold for lifts | 6d | 2027-04-13 | 2027-04-18 | 9838 |  | 7 Days Work | 9302824 |
| 9840 | 36900.37000.37100.37200.52500.81100.729000 | Granite Cladding | 10d | 2027-04-19 | 2027-04-28 | 9839 |  | 7 Days Work | 9302834 |
| 9841 | 36900.37000.37100.37200.52500.81100.729100 | MEP Services | 60d | 2027-04-29 | 2027-06-27 | 9840 |  | 7 Days Work | 9302844 |
| 9842 | 36900.37000.37100.37200.52500.81100.729200 | Flooring+Skirting | 20d | 2027-06-28 | 2027-07-17 | 9841 |  | 7 Days Work | 9302854 |
| 9843 | 36900.37000.37100.37200.52500.81100.729300 | Wall finishes | 21d | 2027-07-18 | 2027-08-07 | 9842 |  | 7 Days Work | 9302864 |
| 9844 | 36900.37000.37100.37200.52500.81100.729400 | False Ceiling | 10d | 2027-08-08 | 2027-08-17 | 9843 |  | 7 Days Work | 9302874 |
| 9845 | 36900.37000.37100.37200.52500.81100.729500 | Staircase | 15d | 2027-08-18 | 2027-09-01 | 9844 |  | 7 Days Work | 9302884 |
| 9846 | 36900.37000.37100.37200.52500.81100.729600 | Deep Cleaning | 7d | 2027-09-02 | 2027-09-08 | 9845 |  | 7 Days Work | 9302894 |
| 9847 | 36900.37000.37100.37200.52500.81200 | **15th Habitable/16th Floor** | 158d | 2027-04-13 | 2027-09-17 |  | start no earlier than 2027-04-13 | 7 Days Work | 9294264 |
| 9848 | 36900.37000.37100.37200.52500.81200.729700 | Side blockwork for lift shafts | 9d | 2027-04-13 | 2027-04-21 | 9838 |  | 7 Days Work | 9302904 |
| 9849 | 36900.37000.37100.37200.52500.81200.729800 | Door Threshold for lifts | 6d | 2027-04-22 | 2027-04-27 | 9848 |  | 7 Days Work | 9302914 |
| 9850 | 36900.37000.37100.37200.52500.81200.729900 | Granite Cladding | 10d | 2027-04-28 | 2027-05-07 | 9849 |  | 7 Days Work | 9302924 |
| 9851 | 36900.37000.37100.37200.52500.81200.730000 | MEP Services | 60d | 2027-05-08 | 2027-07-06 | 9850 |  | 7 Days Work | 9302934 |
| 9852 | 36900.37000.37100.37200.52500.81200.730100 | Flooring+Skirting | 20d | 2027-07-07 | 2027-07-26 | 9851 |  | 7 Days Work | 9302944 |
| 9853 | 36900.37000.37100.37200.52500.81200.730200 | Wall finishes | 21d | 2027-07-27 | 2027-08-16 | 9852 |  | 7 Days Work | 9302954 |
| 9854 | 36900.37000.37100.37200.52500.81200.730300 | False Ceiling | 10d | 2027-08-17 | 2027-08-26 | 9853 |  | 7 Days Work | 9302964 |
| 9855 | 36900.37000.37100.37200.52500.81200.730400 | Staircase | 15d | 2027-08-27 | 2027-09-10 | 9854 |  | 7 Days Work | 9302974 |
| 9856 | 36900.37000.37100.37200.52500.81200.730500 | Deep Cleaning | 7d | 2027-09-11 | 2027-09-17 | 9855 |  | 7 Days Work | 9302984 |
| 9857 | 36900.37000.37100.37200.52500.81300 | **16th Habitable/17th Floor** | 158d | 2027-04-22 | 2027-09-26 |  | start no earlier than 2027-04-22 | 7 Days Work | 9294274 |
| 9858 | 36900.37000.37100.37200.52500.81300.730600 | Side blockwork for lift shafts | 9d | 2027-04-22 | 2027-04-30 | 9848 |  | 7 Days Work | 9302994 |
| 9859 | 36900.37000.37100.37200.52500.81300.730700 | Door Threshold for lifts | 6d | 2027-05-01 | 2027-05-06 | 9858 |  | 7 Days Work | 9303004 |
| 9860 | 36900.37000.37100.37200.52500.81300.730800 | Granite Cladding | 10d | 2027-05-07 | 2027-05-16 | 9859 |  | 7 Days Work | 9303014 |
| 9861 | 36900.37000.37100.37200.52500.81300.730900 | MEP Services | 60d | 2027-05-17 | 2027-07-15 | 9860 |  | 7 Days Work | 9303024 |
| 9862 | 36900.37000.37100.37200.52500.81300.731000 | Flooring+Skirting | 20d | 2027-07-16 | 2027-08-04 | 9861 |  | 7 Days Work | 9303034 |
| 9863 | 36900.37000.37100.37200.52500.81300.731100 | Wall finishes | 21d | 2027-08-05 | 2027-08-25 | 9862 |  | 7 Days Work | 9303044 |
| 9864 | 36900.37000.37100.37200.52500.81300.731200 | False Ceiling | 10d | 2027-08-26 | 2027-09-04 | 9863 |  | 7 Days Work | 9303054 |
| 9865 | 36900.37000.37100.37200.52500.81300.731300 | Staircase | 15d | 2027-09-05 | 2027-09-19 | 9864 |  | 7 Days Work | 9303064 |
| 9866 | 36900.37000.37100.37200.52500.81300.731400 | Deep Cleaning | 7d | 2027-09-20 | 2027-09-26 | 9865 |  | 7 Days Work | 9303074 |

| ID | WBS | Task | Duration | Start | Finish | Predecessors | Constraint | Calendar | Unique_Task_ID |
| --- | --- | --- | --- | --- | --- | --- | --- | --- | --- |
| 9867 | 36900.37000.37100.37200.52500.81400 | **17th Habitable/18th Floor** | 158d | 2027-05-01 | 2027-10-05 |  | start no earlier than 2027-05-01 | 7 Days Work | 9294284 |
| 9868 | 36900.37000.37100.37200.52500.81400.731500 | Side blockwork for lift shafts | 9d | 2027-05-01 | 2027-05-09 | 9858 |  | 7 Days Work | 9303084 |
| 9869 | 36900.37000.37100.37200.52500.81400.731600 | Door Threshold for lifts | 6d | 2027-05-10 | 2027-05-15 | 9868 |  | 7 Days Work | 9303094 |
| 9870 | 36900.37000.37100.37200.52500.81400.731700 | Granite Cladding | 10d | 2027-05-16 | 2027-05-25 | 9869 |  | 7 Days Work | 9303104 |
| 9871 | 36900.37000.37100.37200.52500.81400.731800 | MEP Services | 60d | 2027-05-26 | 2027-07-24 | 9870 |  | 7 Days Work | 9303114 |
| 9872 | 36900.37000.37100.37200.52500.81400.731900 | Flooring+Skirting | 20d | 2027-07-25 | 2027-08-13 | 9871 |  | 7 Days Work | 9303124 |
| 9873 | 36900.37000.37100.37200.52500.81400.732000 | Wall finishes | 21d | 2027-08-14 | 2027-09-03 | 9872 |  | 7 Days Work | 9303134 |
| 9874 | 36900.37000.37100.37200.52500.81400.732100 | False Ceiling | 10d | 2027-09-04 | 2027-09-13 | 9873 |  | 7 Days Work | 9303144 |
| 9875 | 36900.37000.37100.37200.52500.81400.732200 | Staircase | 15d | 2027-09-14 | 2027-09-28 | 9874 |  | 7 Days Work | 9303154 |
| 9876 | 36900.37000.37100.37200.52500.81400.732300 | Deep Cleaning | 7d | 2027-09-29 | 2027-10-05 | 9875 |  | 7 Days Work | 9303164 |
| 9877 | 36900.37000.37100.37200.52500.81500 | **18th Habitable/19th Floor** | 158d | 2027-05-10 | 2027-10-14 |  | start no earlier than 2027-05-10 | 7 Days Work | 9294294 |
| 9878 | 36900.37000.37100.37200.52500.81500.732400 | Side blockwork for lift shafts | 9d | 2027-05-10 | 2027-05-18 | 9868 |  | 7 Days Work | 9303174 |
| 9879 | 36900.37000.37100.37200.52500.81500.732500 | Door Threshold for lifts | 6d | 2027-05-19 | 2027-05-24 | 9878 |  | 7 Days Work | 9303184 |
| 9880 | 36900.37000.37100.37200.52500.81500.732600 | Granite Cladding | 10d | 2027-05-25 | 2027-06-03 | 9879 |  | 7 Days Work | 9303194 |
| 9881 | 36900.37000.37100.37200.52500.81500.732700 | MEP Services | 60d | 2027-06-04 | 2027-08-02 | 9880 |  | 7 Days Work | 9303204 |
| 9882 | 36900.37000.37100.37200.52500.81500.732800 | Flooring+Skirting | 20d | 2027-08-03 | 2027-08-22 | 9881 |  | 7 Days Work | 9303214 |
| 9883 | 36900.37000.37100.37200.52500.81500.732900 | Wall finishes | 21d | 2027-08-23 | 2027-09-12 | 9882 |  | 7 Days Work | 9303224 |
| 9884 | 36900.37000.37100.37200.52500.81500.733000 | False Ceiling | 10d | 2027-09-13 | 2027-09-22 | 9883 |  | 7 Days Work | 9303234 |
| 9885 | 36900.37000.37100.37200.52500.81500.733100 | Staircase | 15d | 2027-09-23 | 2027-10-07 | 9884 |  | 7 Days Work | 9303244 |
| 9886 | 36900.37000.37100.37200.52500.81500.733200 | Deep Cleaning | 7d | 2027-10-08 | 2027-10-14 | 9885 |  | 7 Days Work | 9303254 |
| 9887 | 36900.37000.37100.37200.52500.81600 | **19th Habitable/20th Floor** | 158d | 2027-05-19 | 2027-10-23 |  | start no earlier than 2027-05-19 | 7 Days Work | 9294304 |
| 9888 | 36900.37000.37100.37200.52500.81600.733300 | Side blockwork for lift shafts | 9d | 2027-05-19 | 2027-05-27 | 9878 |  | 7 Days Work | 9303264 |
| 9889 | 36900.37000.37100.37200.52500.81600.733400 | Door Threshold for lifts | 6d | 2027-05-28 | 2027-06-02 | 9888 |  | 7 Days Work | 9303274 |
| 9890 | 36900.37000.37100.37200.52500.81600.733500 | Granite Cladding | 10d | 2027-06-03 | 2027-06-12 | 9889 |  | 7 Days Work | 9303284 |
| 9891 | 36900.37000.37100.37200.52500.81600.733600 | MEP Services | 60d | 2027-06-13 | 2027-08-11 | 9890 |  | 7 Days Work | 9303294 |
| 9892 | 36900.37000.37100.37200.52500.81600.733700 | Flooring+Skirting | 20d | 2027-08-12 | 2027-08-31 | 9891 |  | 7 Days Work | 9303304 |
| 9893 | 36900.37000.37100.37200.52500.81600.733800 | Wall finishes | 21d | 2027-09-01 | 2027-09-21 | 9892 |  | 7 Days Work | 9303314 |
| 9894 | 36900.37000.37100.37200.52500.81600.733900 | False Ceiling | 10d | 2027-09-22 | 2027-10-01 | 9893 |  | 7 Days Work | 9303324 |
| 9895 | 36900.37000.37100.37200.52500.81600.734000 | Staircase | 15d | 2027-10-02 | 2027-10-16 | 9894 |  | 7 Days Work | 9303334 |
| 9896 | 36900.37000.37100.37200.52500.81600.734100 | Deep Cleaning | 7d | 2027-10-17 | 2027-10-23 | 9895 |  | 7 Days Work | 9303344 |

| ID | WBS | Task | Duration | Start | Finish | Predecessors | Constraint | Calendar | Unique_Task_ID |
| --- | --- | --- | --- | --- | --- | --- | --- | --- | --- |
| 9897 | 36900.37000.37100.37200.52500.81700 | **20th Habitable/21st Floor** | 158d | 2027-05-28 | 2027-11-01 |  | start no earlier than 2027-05-28 | 7 Days Work | 9294314 |
| 9898 | 36900.37000.37100.37200.52500.81700.734200 | Side blockwork for lift shafts | 9d | 2027-05-28 | 2027-06-05 | 9888 |  | 7 Days Work | 9303354 |
| 9899 | 36900.37000.37100.37200.52500.81700.734300 | Door Threshold for lifts | 6d | 2027-06-06 | 2027-06-11 | 9898 |  | 7 Days Work | 9303364 |
| 9900 | 36900.37000.37100.37200.52500.81700.734400 | Granite Cladding | 10d | 2027-06-12 | 2027-06-21 | 9899 |  | 7 Days Work | 9303374 |
| 9901 | 36900.37000.37100.37200.52500.81700.734500 | MEP Services | 60d | 2027-06-22 | 2027-08-20 | 9900 |  | 7 Days Work | 9303384 |
| 9902 | 36900.37000.37100.37200.52500.81700.734600 | Flooring+Skirting | 20d | 2027-08-21 | 2027-09-09 | 9901 |  | 7 Days Work | 9303394 |
| 9903 | 36900.37000.37100.37200.52500.81700.734700 | Wall finishes | 21d | 2027-09-10 | 2027-09-30 | 9902 |  | 7 Days Work | 9303404 |
| 9904 | 36900.37000.37100.37200.52500.81700.734800 | False Ceiling | 10d | 2027-10-01 | 2027-10-10 | 9903 |  | 7 Days Work | 9303414 |
| 9905 | 36900.37000.37100.37200.52500.81700.734900 | Staircase | 15d | 2027-10-11 | 2027-10-25 | 9904 |  | 7 Days Work | 9303424 |
| 9906 | 36900.37000.37100.37200.52500.81700.735000 | Deep Cleaning | 7d | 2027-10-26 | 2027-11-01 | 9905 |  | 7 Days Work | 9045104 |
| 9907 | 36900.37000.37100.37200.68100 | **Lift** | 350d | 2026-02-06 | 2027-01-21 |  | start no earlier than 2026-02-06 | 7 Days Work | 9294114 |
| 9908 | 36900.37000.37100.37200.68100.121700 | Order Issue | 104d | 2026-02-06 | 2026-05-20 | 8493FS-120d |  | 7 Days Work | 9294324 |
| 9909 | 36900.37000.37100.37200.68100.121800 | Shop drawing approval | 30d | 2026-05-21 | 2026-06-19 | 9908 |  | 7 Days Work | 9294334 |
| 9910 | 36900.37000.37100.37200.68100.121900 | Material recipt | 90d | 2026-06-20 | 2026-09-17 | 9909 |  | 7 Days Work | 9294344 |
| 9911 | 36900.37000.37100.37200.68100.122000 | Lift Shaft Handover | 30d | 2026-10-27 | 2026-11-25 | 8503 |  | 7 Days Work | 9294354 |
| 9912 | 36900.37000.37100.37200.68100.122100 | Template fixing by lift contractor | 7d | 2026-11-26 | 2026-12-02 | 9911 |  | 7 Days Work | 9294364 |
| 9913 | 36900.37000.37100.37200.68100.122200 | Centre line marking for lift shafts | 5d | 2026-12-03 | 2026-12-07 | 9912 |  | 7 Days Work | 9294374 |
| 9914 | 36900.37000.37100.37200.68100.122300 | Rail & Bracket Fixing | 5d | 2026-12-08 | 2026-12-12 | 9913 |  | 7 Days Work | 9294384 |
| 9915 | 36900.37000.37100.37200.68100.122400 | Cage Installation | 5d | 2026-12-13 | 2026-12-17 | 9914 |  | 7 Days Work | 9294394 |
| 9916 | 36900.37000.37100.37200.68100.122500 | Slow Speed | 20d | 2026-12-18 | 2027-01-06 | 9915 |  | 7 Days Work | 9294404 |
| 9917 | 36900.37000.37100.37200.68100.122600 | High Spped | 5d | 2027-01-07 | 2027-01-11 | 9916 |  | 7 Days Work | 9294414 |
| 9918 | 36900.37000.37100.37200.68100.122700 | Commisioning | 7d | 2027-01-12 | 2027-01-18 | 9917 |  | 7 Days Work | 9294424 |
| 9919 | 36900.37000.37100.37200.68100.122800 | Handover | 3d | 2027-01-19 | 2027-01-21 | 9918 |  | 7 Days Work | 9045094 |
| 9920 | 36900.37000.37100.37200.112300 | External Paint | 90d | 2027-02-04 | 2027-05-04 | 8502FS+135d |  | 7 Days Work | 9146074 |

| ID | WBS | Task | Duration | Start | Finish | Predecessors | Complete | Constraint | Calendar | Unique_Task_ID |
| --- | --- | --- | --- | --- | --- | --- | --- | --- | --- | --- |
| 9921 | 36900.37000.37100.82400 | **Podium-P1** | 706d | 2025-05-16 | 2027-04-21 |  | 21% | start no earlier than 2025-05-16 | 7 Days Work | 9042744 |
| 9922 | 36900.37000.37100.82400.83300 | Pilling | 150d | 2025-05-16 | 2025-12-12 | 8465FS+10d | 91% | start no earlier than 2025-05-16 | 7 Days Work | 9044194 |
| 9923 | 36900.37000.37100.82400.112400 | Core & shell | 200d | 2025-12-13 | 2026-06-30 | 9922 |  |  | 7 Days Work | 9044204 |
| 9924 | 36900.37000.37100.82400.112500 | Finishing | 120d | 2026-07-01 | 2026-10-28 | 9923 |  |  | 7 Days Work | 9044214 |
| 9925 | 36900.37000.37100.82400.112600 | Services | 85d | 2026-10-29 | 2027-01-21 | 9924 |  |  | 7 Days Work | 9044224 |
| 9926 | 36900.37000.37100.82400.112700 | Furniture, Equipment & other amenities | 90d | 2027-01-22 | 2027-04-21 | 9925 |  |  | 7 Days Work | 9044234 |
| 9927 | 36900.37000.37100.81900 | **Podium-P2** | 636.25d | 2025-09-12 | 2027-06-10 |  | 6% | start no earlier than 2025-09-12 | 7 Days Work | 9042724 |
| 9928 | 36900.37000.37100.81900.83200 | Pilling | 137d | 2025-09-12 | 2026-02-24 | 9922 | 36% | start no earlier than 2025-09-12 | 7 Days Work | 9045114 |
| 9929 | 36900.37000.37100.81900.112800 | Core & shell-1 | 180d | 2025-12-29 | 2026-06-26 | 9928SS+108d |  |  | 7 Days Work | 9045124 |
| 9930 | 36900.37000.37100.81900.112900 | Core & shell-2 | 150d | 2026-03-17 | 2026-08-13 | 9928FS+20d |  |  | 7 Days Work | 10722828 |
| 9931 | 36900.37000.37100.81900.113000 | Finishing | 120d | 2026-08-14 | 2026-12-12 | 9930FS+0.25d |  |  | 7 Days Work | 9045134 |
| 9932 | 36900.37000.37100.81900.113100 | Services | 90d | 2026-12-12 | 2027-03-12 | 9931 |  |  | 7 Days Work | 9045144 |
| 9933 | 36900.37000.37100.81900.113200 | Furniture, Equipment & other amenities | 90d | 2027-03-12 | 2027-06-10 | 9932 |  |  | 7 Days Work | 9045154 |
| 9934 | 36900.37000.37100.82300 | **Club House** | 365d | 2026-02-25 | 2027-02-24 |  |  | start no earlier than 2026-02-25 | 7 Days Work | 9042734 |
| 9935 | 36900.37000.37100.82300.113300 | Pilling | 90d | 2026-02-25 | 2026-05-25 | 9928 |  |  | 7 Days Work | 9042934 |
| 9936 | 36900.37000.37100.82300.113400 | Core & shell | 160d | 2026-05-26 | 2026-11-01 | 9935 |  |  | 7 Days Work | 9042944 |
| 9937 | 36900.37000.37100.82300.113500 | Finishing | 120d | 2026-06-25 | 2026-10-22 | 9936SS+30d |  |  | 7 Days Work | 9042954 |
| 9938 | 36900.37000.37100.82300.113600 | Services | 100d | 2026-11-12 | 2027-02-19 | 9937FS+20d |  |  | 7 Days Work | 9042964 |
| 9939 | 36900.37000.37100.82300.113700 | Furniture & Equipment | 60d | 2026-12-27 | 2027-02-24 | 9937FF, 9938FF+5d |  |  | 7 Days Work | 9042974 |
| 9940 | 36900.37000.37100.66700 | **Infra & External Work** | 942.3d | 2024-06-24 | 2027-01-22 |  | 42% | start no earlier than 2024-06-24 | 7 Days Work | 9042684 |
| 9941 | 36900.37000.37100.66700.83100 | Boundary Wall | 201d | 2024-06-24 | 2025-11-30 | 24FS-401.3d | 99% | start no earlier than 2024-06-24 | 7 Days Work | 9042984 |
| 9942 | 36900.37000.37100.66700.83000 | South west Boundary wall | 41d | 2024-11-18 | 2025-11-30 |  | 97% | start no earlier than 2024-11-18 | 7 Days Work | 9042985 |
| 9943 | 36900.37000.37100.66700.82900 | Pond Beautification | 112d | 2024-07-17 | 2025-02-27 |  | 100% | start no earlier than 2024-07-17 | 7 Days Work | 9042994 |
| 9944 | 36900.37000.37100.66700.82800 | Misc Work | 100d | 2025-01-27 | 2025-12-08 | 25FS-146d, 63FS-181d | 91% | start no earlier than 2025-01-27 | 7 Days Work | 9043004 |
| 9945 | 36900.37000.37100.66700.113800 | External Services near club houses | 40d | 2026-11-02 | 2026-12-11 | 9936, 9944FS+0.25d |  |  | 7 Days Work | 9043014 |
| 9946 | 36900.37000.37100.66700.82700 | Test Pile | 127d | 2024-08-05 | 2024-12-10 | 26FS+30d | 100% | start no earlier than 2024-08-05 | 7 Days Work | 9043024 |
| 9947 | 36900.37000.37100.66700.82600 | Area Development (Deck, fountain, demolition etc) | 40d | 2025-01-03 | 2025-02-12 |  | 100% | start no earlier than 2025-01-03 | 7 Days Work | 9043034 |
| 9948 | 36900.37000.37100.66700.113900 | STP | 150d | 2026-07-01 | 2026-11-27 | 9923 |  |  | 7 Days Work | 9043035 |
| 9949 | 36900.37000.37100.66700.114000 | WTP | 150d | 2026-07-01 | 2026-11-27 | 9923 |  |  | 7 Days Work | 9043036 |
| 9950 | 36900.37000.37100.66700.114100 | RHWT | 5d | 2025-12-28 | 2026-01-01 |  |  | start no earlier than 2025-12-28 | 7 Days Work | 9043046 |
| 9951 | 36900.37000.37100.66700.114200 | RHWT | 60d | 2026-10-13 | 2026-12-12 | 9932SF, 9950 |  |  | 7 Days Work | 9043037 |
| 9952 | 36900.37000.37100.66700.114300 | External Services | 200d | 2026-05-12 | 2026-11-27 | 9949FF |  |  | 7 Days Work | 9043047 |
| 9953 | 36900.37000.37100.66700.114400 | Landscaping | 210d | 2026-06-27 | 2027-01-22 | 9929 |  |  | 7 Days Work | 9043038 |

| ID | WBS | Task | Type | Duration | Start | Finish | Predecessors | Complete | Constraint | Calendar | Unique_Task_ID |
| --- | --- | --- | --- | --- | --- | --- | --- | --- | --- | --- | --- |
| 9954 | 36900.37000.82500 | **NOC & OC** |  | 177.75d | 2027-03-07 | 2027-09-01 |  |  | start no earlier than 2027-03-07 | 7 Days Work | 9128324 |
| 9955 | 36900.37000.82500.92000 | Lift NOC |  | 7d | 2027-03-07 | 2027-03-14 | 1409, 2717, 4100, 5553, 9919, 8462 |  |  | 7 Days Work | 9128444 |
| 9956 | 36900.37000.82500.92100 | Fire NOC |  | 45d | 2027-03-14 | 2027-04-28 | 9955FS+0.25d |  |  | 7 Days Work | 9128454 |
| 9957 | 36900.37000.82500.92200 | OC Application |  | 45d | 2027-06-18 | 2027-08-02 | 9955FS+0.25d, 9956FS+0.25d, 9920, 8463FS+4.75d, 1410, 2718, 4101, 5554, 7008 |  |  | 7 Days Work | 9128464 |
| 9958 | 36900.37000.82500.92300 | OC Receipt |  | 30d | 2027-08-02 | 2027-09-01 | 9957 |  |  | 7 Days Work | 9128474 |
| 9959 | 36900.37000.81800 | **Handover** |  | 177.5d | 2027-11-01 | 2028-04-26 |  |  | start no earlier than 2027-11-01 | 7 Days Work | 9128304 |
| 9960 | 36900.37000.81800.92400 | Tower-1_Snagging , De-Snagging, Hand Over |  | 120d | 2027-11-12 | 2028-03-10 | 1396 |  |  | 7 Days Work | 9128394 |
| 9961 | 36900.37000.81800.92500 | Tower-2_Snagging & De-Snagging |  | 120d | 2027-12-28 | 2028-04-26 | 2704FS+30d |  |  | 7 Days Work | 9128484 |
| 9962 | 36900.37000.81800.92600 | Tower-3_Snagging & De-Snagging |  | 120d | 2027-11-20 | 2028-03-19 | 4087 |  |  | 7 Days Work | 9128404 |
| 9963 | 36900.37000.81800.92700 | Tower-4_Snagging & De-Snagging |  | 120d | 2027-11-01 | 2028-02-28 | 5540 |  |  | 7 Days Work | 9128414 |
| 9964 | 36900.37000.81800.92800 | Tower-5_Snagging & De-Snagging |  | 120d | 2027-11-04 | 2028-03-02 | 6994 |  |  | 7 Days Work | 9128424 |
| 9965 | 36900.37000.81800.92900 | Tower-6_Snagging & De-Snagging |  | 120d | 2027-11-05 | 2028-03-03 | 8449 |  |  | 7 Days Work | 9128425 |
| 9966 | 36900.37000.81800.93000 | Tower-7_Snagging & De-Snagging |  | 120d | 2027-11-02 | 2028-02-29 | 9906 |  |  | 7 Days Work | 9128434 |
| 9967 | 36900.37000.66500 | **Customer Milestone** |  | 1276.75d | 2025-03-04 | 2028-08-31 |  | 17% | start no earlier than 2025-03-04 | 7 Days Work | 9128254 |
| 9968 | 36900.37000.66500.66800 | **Tower 1** |  | 1226.25d | 2025-03-08 | 2028-07-16 |  | 15% | start no earlier than 2025-03-08 | 7 Days Work | 9128264 |
| 9969 | 36900.37000.66500.66800.1034300 | Initiation of Piling | milestone | 0d | 2025-03-08 A | 2025-03-08 A |  | 100% | start no earlier than 2025-03-08 | 7 Days Work | 9128944 |
| 9970 | 36900.37000.66500.66800.1034400 | On Completion of Piling | milestone | 0d | 2025-08-20 A | 2025-08-20 A |  | 100% | start no earlier than 2025-08-20 | 7 Days Work | 9128934 |
| 9971 | 36900.37000.66500.66800.1034500 | On Completion of Foundation | milestone | 0d | 2026-04-20 | 2026-04-20 |  |  | start no earlier than 2026-04-20 | 7 Days Work | 9128924 |
| 9972 | 36900.37000.66500.66800.1034600 | On Completion of 3rd Floor Slab | milestone | 0d | 2026-07-26 | 2026-07-26 |  |  | start no earlier than 2026-07-26 | 7 Days Work | 9128914 |
| 9973 | 36900.37000.66500.66800.1034700 | On Completion of 6th Floor Slab | milestone | 0d | 2026-09-09 | 2026-09-09 |  |  | start no earlier than 2026-09-09 | 7 Days Work | 9128904 |
| 9974 | 36900.37000.66500.66800.1034800 | On Completion of 9th Floor Slab | milestone | 0d | 2026-10-09 | 2026-10-09 |  |  | start no earlier than 2026-10-09 | 7 Days Work | 9128894 |
| 9975 | 36900.37000.66500.66800.1034900 | On Completion of 12th Floor Slab | milestone | 0d | 2026-11-08 | 2026-11-08 |  |  | start no earlier than 2026-11-08 | 7 Days Work | 9128884 |
| 9976 | 36900.37000.66500.66800.1035000 | On Completion of 15th Floor Slab | milestone | 0d | 2026-12-08 | 2026-12-08 |  |  | start no earlier than 2026-12-08 | 7 Days Work | 9128874 |
| 9977 | 36900.37000.66500.66800.1035100 | On Completion of Top Floor Slab | milestone | 0d | 2027-02-15 | 2027-02-15 |  |  | start no earlier than 2027-02-15 | 7 Days Work | 9128864 |
| 9978 | 36900.37000.66500.66800.1035200 | On Completion of Internal Blockwork of the unit | milestone | 0d | 2027-04-21 | 2027-04-21 |  |  | start no earlier than 2027-04-21 | 7 Days Work | 9128854 |
| 9979 | 36900.37000.66500.66800.1035300 | On Completion of Internal Flooring of the unit | milestone | 0d | 2027-06-20 | 2027-06-20 |  |  | start no earlier than 2027-06-20 | 7 Days Work | 9128844 |
| 9980 | 36900.37000.66500.66800.1035400 | On Application of OC | milestone | 0d | 2027-12-07 | 2027-12-07 |  |  | start no earlier than 2027-12-07 | 7 Days Work | 9128334 |
| 9981 | 36900.37000.66500.66800.1035500 | On Notice of Possession | milestone | 0d | 2028-07-16 | 2028-07-16 |  |  | start no earlier than 2028-07-16 | 7 Days Work | 9128344 |

| ID | WBS | Task | Type | Duration | Start | Finish | Complete | Constraint | Calendar | Unique_Task_ID |
| --- | --- | --- | --- | --- | --- | --- | --- | --- | --- | --- |
| 9982 | 36900.37000.66500.66900 | **Tower 2** |  | 1204.75d | 2025-05-15 | 2028-08-31 | 15% | start no earlier than 2025-05-15 | 7 Days Work | 9128274 |
| 9983 | 36900.37000.66500.66900.1035600 | Initiation of Piling | milestone | 0d | 2025-05-15 A | 2025-05-15 A | 100% | start no earlier than 2025-05-15 | 7 Days Work | 9128834 |
| 9984 | 36900.37000.66500.66900.1035700 | On Completion of Piling | milestone | 0d | 2025-09-25 A | 2025-09-25 A | 100% | start no earlier than 2025-09-25 | 7 Days Work | 9128824 |
| 9985 | 36900.37000.66500.66900.1035800 | On Completion of Foundation | milestone | 0d | 2026-05-24 | 2026-05-24 |  | start no earlier than 2026-05-24 | 7 Days Work | 9128814 |
| 9986 | 36900.37000.66500.66900.1035900 | On Completion of 3rd Floor Slab | milestone | 0d | 2026-08-29 | 2026-08-29 |  | start no earlier than 2026-08-29 | 7 Days Work | 9128804 |
| 9987 | 36900.37000.66500.66900.1036000 | On Completion of 6th Floor Slab | milestone | 0d | 2026-10-13 | 2026-10-13 |  | start no earlier than 2026-10-13 | 7 Days Work | 9128794 |
| 9988 | 36900.37000.66500.66900.1036100 | On Completion of 9th Floor Slab | milestone | 0d | 2026-11-12 | 2026-11-12 |  | start no earlier than 2026-11-12 | 7 Days Work | 9128784 |
| 9989 | 36900.37000.66500.66900.1036200 | On Completion of 12th Floor Slab | milestone | 0d | 2026-12-12 | 2026-12-12 |  | start no earlier than 2026-12-12 | 7 Days Work | 9128774 |
| 9990 | 36900.37000.66500.66900.1036300 | On Completion of 15th Floor Slab | milestone | 0d | 2027-01-11 | 2027-01-11 |  | start no earlier than 2027-01-11 | 7 Days Work | 9128764 |
| 9991 | 36900.37000.66500.66900.1036400 | On Completion of Top Floor Slab | milestone | 0d | 2027-04-16 | 2027-04-16 |  | start no earlier than 2027-04-16 | 7 Days Work | 9128754 |
| 9992 | 36900.37000.66500.66900.1036500 | On Completion of Internal Blockwork of the unit | milestone | 0d | 2027-05-16 | 2027-05-16 |  | start no earlier than 2027-05-16 | 7 Days Work | 9128744 |
| 9993 | 36900.37000.66500.66900.1036600 | On Completion of Internal Flooring of the unit | milestone | 0d | 2027-07-15 | 2027-07-15 |  | start no earlier than 2027-07-15 | 7 Days Work | 9128734 |
| 9994 | 36900.37000.66500.66900.1036700 | On Application of OC | milestone | 0d | 2027-12-07 | 2027-12-07 |  | start no earlier than 2027-12-07 | 7 Days Work | 9128354 |
| 9995 | 36900.37000.66500.66900.1036800 | On Notice of Possession | milestone | 0d | 2028-08-31 | 2028-08-31 |  | start no earlier than 2028-08-31 | 7 Days Work | 9128364 |
| 9996 | 36900.37000.66500.67000 | **Tower 3** |  | 1072.25d | 2025-03-04 | 2028-02-09 | 15% | start no earlier than 2025-03-04 | 7 Days Work | 9128284 |
| 9997 | 36900.37000.66500.67000.1036900 | Initiation of Piling | milestone | 0d | 2025-03-04 A | 2025-03-04 A | 100% | start no earlier than 2025-03-04 | 7 Days Work | 9128724 |
| 9998 | 36900.37000.66500.67000.1037000 | On Completion of Piling | milestone | 0d | 2025-07-24 A | 2025-07-24 A | 100% | start no earlier than 2025-07-24 | 7 Days Work | 9128714 |
| 9999 | 36900.37000.66500.67000.1037100 | On Completion of Foundation | milestone | 0d | 2025-11-30 | 2025-11-30 |  | start no earlier than 2025-11-30 | 7 Days Work | 9128704 |
| 10000 | 36900.37000.66500.67000.1037200 | On Completion of 3rd Floor Slab | milestone | 0d | 2026-02-18 | 2026-02-18 |  | start no earlier than 2026-02-18 | 7 Days Work | 9128694 |
| 10001 | 36900.37000.66500.67000.1037300 | On Completion of 6th Floor Slab | milestone | 0d | 2026-04-04 | 2026-04-04 |  | start no earlier than 2026-04-04 | 7 Days Work | 9128684 |
| 10002 | 36900.37000.66500.67000.1037400 | On Completion of 9th Floor Slab | milestone | 0d | 2026-05-04 | 2026-05-04 |  | start no earlier than 2026-05-04 | 7 Days Work | 9128674 |
| 10003 | 36900.37000.66500.67000.1037500 | On Completion of 12th Floor Slab | milestone | 0d | 2026-06-03 | 2026-06-03 |  | start no earlier than 2026-06-03 | 7 Days Work | 9128664 |
| 10004 | 36900.37000.66500.67000.1037600 | On Completion of 15th Floor Slab | milestone | 0d | 2026-07-03 | 2026-07-03 |  | start no earlier than 2026-07-03 | 7 Days Work | 9128654 |
| 10005 | 36900.37000.66500.67000.1037700 | On Completion of Top Floor Slab | milestone | 0d | 2026-09-10 | 2026-09-10 |  | start no earlier than 2026-09-10 | 7 Days Work | 9128644 |
| 10006 | 36900.37000.66500.67000.1037800 | On Completion of Internal Blockwork of the unit | milestone | 0d | 2026-05-15 | 2026-05-15 |  | start no earlier than 2026-05-15 | 7 Days Work | 9128634 |
| 10007 | 36900.37000.66500.67000.1037900 | On Completion of Internal Flooring of the unit | milestone | 0d | 2026-07-14 | 2026-07-14 |  | start no earlier than 2026-07-14 | 7 Days Work | 9128624 |
| 10008 | 36900.37000.66500.67000.1038000 | On Application of OC | milestone | 0d | 2027-12-07 | 2027-12-07 |  | start no earlier than 2027-12-07 | 7 Days Work | 9128374 |
| 10009 | 36900.37000.66500.67000.1038100 | On Notice of Possession | milestone | 0d | 2028-02-09 | 2028-02-09 |  | start no earlier than 2028-02-09 | 7 Days Work | 9128384 |

| ID | WBS | Task | Type | Duration | Start | Finish | Complete | Constraint | Calendar | Unique_Task_ID |
| --- | --- | --- | --- | --- | --- | --- | --- | --- | --- | --- |
| 10010 | 36900.37000.66500.67100 | **Tower 4** |  | 1028d | 2025-03-04 | 2027-12-27 | 15% | start no earlier than 2025-03-04 | 7 Days Work | 9145434 |
| 10011 | 36900.37000.66500.67100.1038200 | Initiation of Piling | milestone | 0d | 2025-03-04 A | 2025-03-04 A | 100% | start no earlier than 2025-03-04 | 7 Days Work | 9145444 |
| 10012 | 36900.37000.66500.67100.1038300 | On Completion of Piling | milestone | 0d | 2025-06-12 A | 2025-06-12 A | 100% | start no earlier than 2025-06-12 | 7 Days Work | 9145454 |
| 10013 | 36900.37000.66500.67100.1038400 | On Completion of Foundation | milestone | 0d | 2025-11-30 | 2025-11-30 |  | start no earlier than 2025-11-30 | 7 Days Work | 9145464 |
| 10014 | 36900.37000.66500.67100.1038500 | On Completion of 3rd Floor Slab | milestone | 0d | 2026-01-08 | 2026-01-08 |  | start no earlier than 2026-01-08 | 7 Days Work | 9145474 |
| 10015 | 36900.37000.66500.67100.1038600 | On Completion of 6th Floor Slab | milestone | 0d | 2026-02-10 | 2026-02-10 |  | start no earlier than 2026-02-10 | 7 Days Work | 9145484 |
| 10016 | 36900.37000.66500.67100.1038700 | On Completion of 9th Floor Slab | milestone | 0d | 2026-03-12 | 2026-03-12 |  | start no earlier than 2026-03-12 | 7 Days Work | 9145494 |
| 10017 | 36900.37000.66500.67100.1038800 | On Completion of 12th Floor Slab | milestone | 0d | 2026-04-11 | 2026-04-11 |  | start no earlier than 2026-04-11 | 7 Days Work | 9145504 |
| 10018 | 36900.37000.66500.67100.1038900 | On Completion of 15th Floor Slab | milestone | 0d | 2026-05-11 | 2026-05-11 |  | start no earlier than 2026-05-11 | 7 Days Work | 9145514 |
| 10019 | 36900.37000.66500.67100.1039000 | On Completion of Top Floor Slab | milestone | 0d | 2026-07-19 | 2026-07-19 |  | start no earlier than 2026-07-19 | 7 Days Work | 9145524 |
| 10020 | 36900.37000.66500.67100.1039100 | On Completion of Internal Blockwork of the unit | milestone | 0d | 2026-09-22 | 2026-09-22 |  | start no earlier than 2026-09-22 | 7 Days Work | 9145534 |
| 10021 | 36900.37000.66500.67100.1039200 | On Completion of Internal Flooring of the unit | milestone | 0d | 2026-11-21 | 2026-11-21 |  | start no earlier than 2026-11-21 | 7 Days Work | 9145544 |
| 10022 | 36900.37000.66500.67100.1039300 | On Application of OC | milestone | 0d | 2027-12-07 | 2027-12-07 |  | start no earlier than 2027-12-07 | 7 Days Work | 9145554 |
| 10023 | 36900.37000.66500.67100.1039400 | On Notice of Possession | milestone | 0d | 2027-12-27 | 2027-12-27 |  | start no earlier than 2027-12-27 | 7 Days Work | 9145564 |
| 10024 | 36900.37000.66500.67200 | **Tower 5** |  | 1032.25d | 2025-03-04 | 2027-12-31 | 23% | start no earlier than 2025-03-04 | 7 Days Work | 9145574 |
| 10025 | 36900.37000.66500.67200.1039500 | Initiation of Piling | milestone | 0d | 2025-03-04 A | 2025-03-04 A | 100% | start no earlier than 2025-03-04 | 7 Days Work | 9145584 |
| 10026 | 36900.37000.66500.67200.1039600 | On Completion of Piling | milestone | 0d | 2025-06-14 A | 2025-06-14 A | 100% | start no earlier than 2025-06-14 | 7 Days Work | 9145594 |
| 10027 | 36900.37000.66500.67200.1039700 | On Completion of Foundation | milestone | 0d | 2025-10-31 A | 2025-10-31 A | 100% | start no earlier than 2025-10-31 | 7 Days Work | 9145604 |
| 10028 | 36900.37000.66500.67200.1039800 | On Completion of 3rd Floor Slab | milestone | 0d | 2026-01-12 | 2026-01-12 |  | start no earlier than 2026-01-12 | 7 Days Work | 9145614 |
| 10029 | 36900.37000.66500.67200.1039900 | On Completion of 6th Floor Slab | milestone | 0d | 2026-02-14 | 2026-02-14 |  | start no earlier than 2026-02-14 | 7 Days Work | 9145624 |
| 10030 | 36900.37000.66500.67200.1040000 | On Completion of 9th Floor Slab | milestone | 0d | 2026-03-16 | 2026-03-16 |  | start no earlier than 2026-03-16 | 7 Days Work | 9145634 |
| 10031 | 36900.37000.66500.67200.1040100 | On Completion of 12th Floor Slab | milestone | 0d | 2026-04-15 | 2026-04-15 |  | start no earlier than 2026-04-15 | 7 Days Work | 9145644 |
| 10032 | 36900.37000.66500.67200.1040200 | On Completion of 15th Floor Slab | milestone | 0d | 2026-05-15 | 2026-05-15 |  | start no earlier than 2026-05-15 | 7 Days Work | 9145654 |
| 10033 | 36900.37000.66500.67200.1040300 | On Completion of Top Floor Slab | milestone | 0d | 2026-07-23 | 2026-07-23 |  | start no earlier than 2026-07-23 | 7 Days Work | 9145664 |
| 10034 | 36900.37000.66500.67200.1040400 | On Completion of Internal Blockwork of the unit | milestone | 0d | 2026-09-26 | 2026-09-26 |  | start no earlier than 2026-09-26 | 7 Days Work | 9145674 |
| 10035 | 36900.37000.66500.67200.1040500 | On Completion of Internal Flooring of the unit | milestone | 0d | 2026-11-25 | 2026-11-25 |  | start no earlier than 2026-11-25 | 7 Days Work | 9145684 |
| 10036 | 36900.37000.66500.67200.1040600 | On Application of OC | milestone | 0d | 2027-12-07 | 2027-12-07 |  | start no earlier than 2027-12-07 | 7 Days Work | 9145694 |
| 10037 | 36900.37000.66500.67200.1040700 | On Notice of Possession | milestone | 0d | 2027-12-31 | 2027-12-31 |  | start no earlier than 2027-12-31 | 7 Days Work | 9145704 |

| ID | WBS | Task | Type | Duration | Start | Finish | Complete | Constraint | Calendar | Unique_Task_ID |
| --- | --- | --- | --- | --- | --- | --- | --- | --- | --- | --- |
| 10038 | 36900.37000.66500.67300 | **Tower 6** |  | 1048d | 2025-03-04 | 2028-01-16 | 15% | start no earlier than 2025-03-04 | 7 Days Work | 9145714 |
| 10039 | 36900.37000.66500.67300.1040800 | Initiation of Piling | milestone | 0d | 2025-03-04 A | 2025-03-04 A | 100% | start no earlier than 2025-03-04 | 7 Days Work | 9145724 |
| 10040 | 36900.37000.66500.67300.1040900 | On Completion of Piling | milestone | 0d | 2025-07-01 A | 2025-07-01 A | 100% | start no earlier than 2025-07-01 | 7 Days Work | 9145734 |
| 10041 | 36900.37000.66500.67300.1041000 | On Completion of Foundation | milestone | 0d | 2025-11-30 | 2025-11-30 |  | start no earlier than 2025-11-30 | 7 Days Work | 9145744 |
| 10042 | 36900.37000.66500.67300.1041100 | On Completion of 3rd Floor Slab | milestone | 0d | 2026-01-28 | 2026-01-28 |  | start no earlier than 2026-01-28 | 7 Days Work | 9145754 |
| 10043 | 36900.37000.66500.67300.1041200 | On Completion of 6th Floor Slab | milestone | 0d | 2026-03-02 | 2026-03-02 |  | start no earlier than 2026-03-02 | 7 Days Work | 9145764 |
| 10044 | 36900.37000.66500.67300.1041300 | On Completion of 9th Floor Slab | milestone | 0d | 2026-04-01 | 2026-04-01 |  | start no earlier than 2026-04-01 | 7 Days Work | 9145774 |
| 10045 | 36900.37000.66500.67300.1041400 | On Completion of 12th Floor Slab | milestone | 0d | 2026-05-01 | 2026-05-01 |  | start no earlier than 2026-05-01 | 7 Days Work | 9145784 |
| 10046 | 36900.37000.66500.67300.1041500 | On Completion of 15th Floor Slab | milestone | 0d | 2026-05-31 | 2026-05-31 |  | start no earlier than 2026-05-31 | 7 Days Work | 9145794 |
| 10047 | 36900.37000.66500.67300.1041600 | On Completion of Top Floor Slab | milestone | 0d | 2026-08-08 | 2026-08-08 |  | start no earlier than 2026-08-08 | 7 Days Work | 9145804 |
| 10048 | 36900.37000.66500.67300.1041700 | On Completion of Internal Blockwork of the unit | milestone | 0d | 2026-10-12 | 2026-10-12 |  | start no earlier than 2026-10-12 | 7 Days Work | 9145814 |
| 10049 | 36900.37000.66500.67300.1041800 | On Completion of Internal Flooring of the unit | milestone | 0d | 2026-12-21 | 2026-12-21 |  | start no earlier than 2026-12-21 | 7 Days Work | 9145824 |
| 10050 | 36900.37000.66500.67300.1041900 | On Application of OC | milestone | 0d | 2027-12-07 | 2027-12-07 |  | start no earlier than 2027-12-07 | 7 Days Work | 9145834 |
| 10051 | 36900.37000.66500.67300.1042000 | On Notice of Possession | milestone | 0d | 2028-01-16 | 2028-01-16 |  | start no earlier than 2028-01-16 | 7 Days Work | 9145844 |
| 10052 | 36900.37000.66500.67400 | **Tower 7** |  | 1008.25d | 2025-03-04 | 2027-12-07 | 23% | start no earlier than 2025-03-04 | 7 Days Work | 9128294 |
| 10053 | 36900.37000.66500.67400.1042100 | Initiation of Piling | milestone | 0d | 2025-03-04 A | 2025-03-04 A | 100% | start no earlier than 2025-03-04 | 7 Days Work | 9128614 |
| 10054 | 36900.37000.66500.67400.1042200 | On Completion of Piling | milestone | 0d | 2025-05-23 A | 2025-05-23 A | 100% | start no earlier than 2025-05-23 | 7 Days Work | 9128604 |
| 10055 | 36900.37000.66500.67400.1042300 | On Completion of Foundation | milestone | 0d | 2025-10-12 A | 2025-10-12 A | 100% | start no earlier than 2025-10-12 | 7 Days Work | 9128594 |
| 10056 | 36900.37000.66500.67400.1042400 | On Completion of 3rd Floor Slab | milestone | 0d | 2025-12-16 | 2025-12-16 |  | start no earlier than 2025-12-16 | 7 Days Work | 9128584 |
| 10057 | 36900.37000.66500.67400.1042500 | On Completion of 6th Floor Slab | milestone | 0d | 2026-01-18 | 2026-01-18 |  | start no earlier than 2026-01-18 | 7 Days Work | 9128574 |
| 10058 | 36900.37000.66500.67400.1042600 | On Completion of 9th Floor Slab | milestone | 0d | 2026-02-17 | 2026-02-17 |  | start no earlier than 2026-02-17 | 7 Days Work | 9128564 |
| 10059 | 36900.37000.66500.67400.1042700 | On Completion of 12th Floor Slab | milestone | 0d | 2026-03-19 | 2026-03-19 |  | start no earlier than 2026-03-19 | 7 Days Work | 9128554 |
| 10060 | 36900.37000.66500.67400.1042800 | On Completion of 15th Floor Slab | milestone | 0d | 2026-04-18 | 2026-04-18 |  | start no earlier than 2026-04-18 | 7 Days Work | 9128544 |
| 10061 | 36900.37000.66500.67400.1042900 | On Completion of Top Floor Slab | milestone | 0d | 2026-06-26 | 2026-06-26 |  | start no earlier than 2026-06-26 | 7 Days Work | 9128534 |
| 10062 | 36900.37000.66500.67400.1043000 | On Completion of Internal Blockwork of the unit | milestone | 0d | 2026-08-30 | 2026-08-30 |  | start no earlier than 2026-08-30 | 7 Days Work | 9128524 |
| 10063 | 36900.37000.66500.67400.1043100 | On Completion of Internal Flooring of the unit | milestone | 0d | 2026-10-29 | 2026-10-29 |  | start no earlier than 2026-10-29 | 7 Days Work | 9128514 |
| 10064 | 36900.37000.66500.67400.1043200 | On Application of OC | milestone | 0d | 2027-12-07 | 2027-12-07 |  | start no earlier than 2027-12-07 | 7 Days Work | 9128494 |
| 10065 | 36900.37000.66500.67400.1043300 | On Notice of Possession | milestone | 0d | 2027-12-04 | 2027-12-04 |  | start no earlier than 2027-12-04 | 7 Days Work | 9128504 |
