Schedule from MS Project XML, 2023-05-13 to 2029-10-30.

## Calendars

- Standard: Mon-Fri 08:00-12:00, 13:00-17:00; Sat-Sun off. Exceptions (off unless hours are given): 2023-05-29, 2023-08-28, 2023-12-25 to 2024-01-07, 2024-03-29 to 2024-04-01, 2024-05-06, 2024-05-27, 2024-08-26, 2024-12-23 to 2025-01-05, 2025-04-18 to 2025-04-21, 2025-05-05, 2025-05-26, 2025-08-25, 2025-12-22 to 2026-01-04, 2026-03-27 to 2026-03-30, 2026-05-04, 2026-05-23 to 2026-05-25, 2026-08-29 to 2026-08-31, 2026-12-21 to 2027-01-03, 2027-04-16 to 2027-04-19, 2027-05-01 to 2027-05-03, 2027-05-29 to 2027-05-31, 2027-08-30, 2027-12-25 to 2028-01-09, 2028-03-31 to 2028-04-03, 2028-04-29 to 2028-05-01, 2028-05-27 to 2028-05-29, 2028-08-26 to 2028-08-28, 2028-12-23 to 2029-01-07, 2029-03-23 to 2029-03-26, 2029-05-07, 2029-05-28, 2029-08-27.
- Indian Calendar: Mon-Sat 08:00-12:00, 13:00-17:00; Sun off. Exceptions (off unless hours are given): 2023-11-15 to 2023-12-15, 2024-07-01 to 2024-07-06 08:00-10:00, 14:00-17:00, 2024-07-07, 2024-07-08 to 2024-07-13 08:00-10:00, 14:00-17:00, 2024-07-14, 2024-07-15 to 2024-07-20 08:00-10:00, 14:00-17:00, 2024-07-21, 2024-07-22 to 2024-07-27 08:00-10:00, 14:00-17:00, 2024-07-28, 2024-07-29 to 2024-07-31 08:00-10:00, 14:00-17:00, 2024-08-01 to 2024-08-03 08:00-10:00, 11:00-12:00, 13:00-17:00, 2024-08-04, 2024-08-05 to 2024-08-10 08:00-10:00, 11:00-12:00, 13:00-17:00, 2024-08-11, 2024-08-12 to 2024-08-17 08:00-10:00, 11:00-12:00, 13:00-17:00, 2024-08-18, 2024-08-19 to 2024-08-24 08:00-10:00, 11:00-12:00, 13:00-17:00, 2024-08-25, 2024-08-26 to 2024-08-31 08:00-10:00, 11:00-12:00, 13:00-17:00, 2024-09-01, 2024-09-02 to 2024-09-07 08:00-10:00, 11:00-12:00, 13:00-17:00, 2024-09-08, 2024-09-09 to 2024-09-14 08:00-10:00, 11:00-12:00, 13:00-17:00, 2024-09-15, 2024-09-16 to 2024-09-21 08:00-10:00, 11:00-12:00, 13:00-17:00, 2024-09-22, 2024-09-23 to 2024-09-28 08:00-10:00, 11:00-12:00, 13:00-17:00, 2024-09-29, 2024-09-30 08:00-10:00, 11:00-12:00, 13:00-17:00.
- GC1: Mon-Sun 08:30-13:00, 14:00-18:30. Exceptions (off unless hours are given): 2025-11-12 to 2025-11-26, 2025-12-01 to 2025-12-26, 2026-11-01 to 2026-12-15, 2027-11-01 to 2027-12-15.

## Resources

| Resource |
| --- |
| Riverine |
| GPL cost & revenue |
| GPL Revenue |
| GPL Costs & Revenue |

## Schedule

| ID | WBS | Task | Duration | Start | Finish | Predecessors | Complete | Constraint | Calendar | Unique_Task_ID |
| --- | --- | --- | --- | --- | --- | --- | --- | --- | --- | --- |
| 1 | 37200 | **Jardinia** | 2362.29ed | 2023-05-13 | 2029-10-30 |  | 14% | start no earlier than 2023-05-13 |  | 8805804 |
| 2 | 37200.37400 | **Godrej Jardinia 146** | 2510.62d | 2023-05-13 | 2029-10-30 |  | 14% | start no earlier than 2023-05-13 | GC1 | 8805814 |
| 3 | 37200.37400.37500 | **Phase-1** | 2510.62d | 2023-05-13 | 2029-10-30 |  | 13% | start no earlier than 2023-05-13 | GC1 | 8805824 |
| 4 | 37200.37400.37500.38400 | **Tower 5** | 2171.28d | 2023-05-13 | 2029-01-02 |  | 14% | start no earlier than 2023-05-13 | GC1 | 8805834 |
| 5 | 37200.37400.37500.38400.98500 | **Substructure** | 774d | 2024-05-14 | 2026-05-12 |  | 74% | start no earlier than 2024-05-14 | GC1 | 8808094 |
| 6 | 37200.37400.37500.38400.98500.108600 | **Soil Bed Preparation** | 687.38d | 2024-05-14 | 2026-02-24 |  | 80% | start no earlier than 2024-05-14 | GC1 | 8808264 |
| 7 | 37200.37400.37500.38400.98500.108600.228300 | Test Piling | 106.69d | 2024-05-14 | 2024-08-16 |  | 100% | start no earlier than 2024-05-14 | GC1 | 8811934 |
| 8 | 37200.37400.37500.38400.98500.108600.228100 | Excavation | 33.56d | 2024-06-05 | 2024-07-04 | 7SS+22d | 100% | start no earlier than 2024-06-05 | GC1 | 8811944 |
| 9 | 37200.37400.37500.38400.98500.108600.228000 | Main Piling Work | 162.44d | 2024-09-25 | 2025-03-31 | 7FS+35d | 100% | start no earlier than 2024-09-25 | GC1 | 8811954 |
| 10 | 37200.37400.37500.38400.98500.108600.333600 | Anti-termite | 5.62d | 2025-12-27 | 2025-12-31 | 9FF+2d |  |  | GC1 | 8811964 |
| 11 | 37200.37400.37500.38400.98500.108600.227800 | PCC | 4.5d | 2025-03-29 | 2025-04-06 | 8, 10SS-3.38d | 100% | start no earlier than 2025-03-29 | GC1 | 8811974 |
| 12 | 37200.37400.37500.38400.98500.108600.333700 | Backfilling | 67.5d | 2025-12-27 | 2026-02-24 | 25FS-1.12d, 17, 21 |  |  | GC1 | 8811984 |
| 13 | 37200.37400.37500.38400.98500.102200 | **RCC Structure** | 228.38d | 2025-03-31 | 2025-10-19 |  | 100% | start no earlier than 2025-03-31 | GC1 | 8808174 |
| 14 | 37200.37400.37500.38400.98500.102200.166900 | **Raft Foundation** | 86.62d | 2025-03-31 | 2025-06-15 |  | 100% | start no earlier than 2025-03-31 | GC1 | 8810464 |
| 15 | 37200.37400.37500.38400.98500.102200.166900.233400 | Reinforcement | 70.88d | 2025-03-31 | 2025-06-12 | 11FS-7.88d | 100% | start no earlier than 2025-03-31 | GC1 | 8815754 |
| 16 | 37200.37400.37500.38400.98500.102200.166900.233500 | Formwork | 4.5d | 2025-06-11 | 2025-06-14 | 15FF+7.88d | 100% | start no earlier than 2025-06-11 | GC1 | 8815764 |
| 17 | 37200.37400.37500.38400.98500.102200.166900.233600 | Concreting | 2.25d | 2025-06-14 | 2025-06-15 | 16FF+1.12d | 100% | start no earlier than 2025-06-14 | GC1 | 8815774 |
| 18 | 37200.37400.37500.38400.98500.102200.166800 | **Basement 1 Slab** | 109.12d | 2025-05-08 | 2025-08-12 |  | 100% | start no earlier than 2025-05-08 | GC1 | 8810474 |
| 19 | 37200.37400.37500.38400.98500.102200.166800.233700 | Reinforcement | 27d | 2025-06-19 | 2025-07-12 | 17 | 100% | start no earlier than 2025-06-19 | GC1 | 8815784 |
| 20 | 37200.37400.37500.38400.98500.102200.166800.233800 | Formwork | 22.5d | 2025-05-08 | 2025-05-27 | 19SS+1.12d | 100% | start no earlier than 2025-05-08 | GC1 | 8815794 |
| 21 | 37200.37400.37500.38400.98500.102200.166800.233900 | Concreting | 86.62d | 2025-05-28 | 2025-08-12 | 20 | 100% | start no earlier than 2025-05-28 | GC1 | 8815804 |
| 22 | 37200.37400.37500.38400.98500.102200.166700 | **Basement 2 Slab/GF** | 117d | 2025-05-30 | 2025-09-10 |  | 100% | start no earlier than 2025-05-30 | GC1 | 8810484 |
| 23 | 37200.37400.37500.38400.98500.102200.166700.234000 | Reinforcement | 112.5d | 2025-06-03 | 2025-09-10 | 21FS-109.12d | 100% | start no earlier than 2025-06-03 | GC1 | 8815814 |
| 24 | 37200.37400.37500.38400.98500.102200.166700.234100 | Formwork | 49.5d | 2025-06-03 | 2025-09-09 | 23SS+27d | 100% | start no earlier than 2025-06-03 | GC1 | 8815824 |
| 25 | 37200.37400.37500.38400.98500.102200.166700.234200 | Concreting | 91.12d | 2025-05-30 | 2025-08-18 | 24FS-180d | 100% | start no earlier than 2025-05-30 | GC1 | 8815834 |

| ID | WBS | Task | Duration | Start | Finish | Predecessors | Complete | Constraint | Calendar | Unique_Task_ID |
| --- | --- | --- | --- | --- | --- | --- | --- | --- | --- | --- |
| 26 | 37200.37400.37500.38400.98500.102200.166600 | **Podium /Ground Floor Slab** | 43.88d | 2025-09-11 | 2025-10-19 |  | 100% | start no earlier than 2025-09-11 | GC1 | 8810494 |
| 27 | 37200.37400.37500.38400.98500.102200.166600.234300 | Reinforcement | 25.88d | 2025-09-11 | 2025-10-17 | 25FS-1.12d | 100% | start no earlier than 2025-09-11 | GC1 | 8815844 |
| 28 | 37200.37400.37500.38400.98500.102200.166600.234400 | Formwork | 27d | 2025-09-16 | 2025-10-18 | 27SS+1.12d | 100% | start no earlier than 2025-09-16 | GC1 | 8815854 |
| 29 | 37200.37400.37500.38400.98500.102200.166600.234500 | Concreting | 9d | 2025-09-19 | 2025-10-19 | 28FS-29.25d | 100% | start no earlier than 2025-09-19 | GC1 | 8815864 |
| 30 | 37200.37400.37500.38400.98500.147300 | **Substructure Finishing** | 146.25d | 2026-01-03 | 2026-05-12 |  |  | start no earlier than 2026-01-03 | GC1 | 8808464 |
| 31 | 37200.37400.37500.38400.98500.147300.333800 | Masonary work | 50.62d | 2026-01-03 | 2026-02-16 | 29FS+33.75d |  |  | GC1 | 8811994 |
| 32 | 37200.37400.37500.38400.98500.147300.333900 | Plaster | 45d | 2026-02-17 | 2026-03-28 | 31 |  |  | GC1 | 8812004 |
| 33 | 37200.37400.37500.38400.98500.147300.334000 | Structural steel | 67.5d | 2026-01-03 | 2026-03-03 | 29FS+33.75d |  |  | GC1 | 8812014 |
| 34 | 37200.37400.37500.38400.98500.147300.334100 | White Wash | 50.62d | 2026-03-29 | 2026-05-12 | 32 |  |  | GC1 | 8812024 |
| 35 | 37200.37400.37500.38400.39400 | **Superstructure** | 1065.4d | 2025-10-09 | 2028-09-21 |  |  | start no earlier than 2025-10-09 | GC1 | 8805884 |
| 36 | 37200.37400.37500.38400.39400.43800 | **RCC structure** | 576.9d | 2025-10-09 | 2027-05-30 |  | 7% | start no earlier than 2025-10-09 | GC1 | 8806034 |
| 37 | 37200.37400.37500.38400.39400.43800.125900 | **1st floor slab** | 78.53d | 2025-10-09 | 2026-01-27 |  | 47% | start no earlier than 2025-10-09 | GC1 | 8810414 |
| 38 | 37200.37400.37500.38400.39400.43800.125900.234600 | Reinforcement | 56.25d | 2025-10-09 | 2026-01-23 | 29FS-7.88d | 44% | start no earlier than 2025-10-09 | GC1 | 8815874 |
| 39 | 37200.37400.37500.38400.39400.43800.125900.234700 | Wall conduiting | 5.62d | 2025-10-17 | 2025-12-29 | 38SS+9d | 60% | start no earlier than 2025-10-17 | GC1 | 8815884 |
| 40 | 37200.37400.37500.38400.39400.43800.125900.234900 | Formwork | 67.5d | 2025-10-17 | 2026-01-25 | 38SS+9d | 50% | start no earlier than 2025-10-17 | GC1 | 8815894 |
| 41 | 37200.37400.37500.38400.39400.43800.125900.235300 | Concreting | 1.12d | 2025-10-19 | 2026-01-27 | 40FS-65.25d | 20% |  | GC1 | 8815904 |
| 42 | 37200.37400.37500.38400.39400.43800.166500 | **2nd floor slab** | 79.65d | 2025-11-07 | 2026-02-26 |  | 17% | start no earlier than 2025-11-07 | GC1 | 8810404 |
| 43 | 37200.37400.37500.38400.39400.43800.166500.235400 | Reinforcement | 34.88d | 2025-11-07 | 2026-02-18 | 41FS-45.9d | 35% | start no earlier than 2025-11-07 | GC1 | 8815914 |
| 44 | 37200.37400.37500.38400.39400.43800.166500.490900 | Wall conduiting | 3.38d | 2026-01-28 | 2026-01-31 | 39FS+0.25d, 43SS+47.02d |  |  | GC1 | 8815924 |
| 45 | 37200.37400.37500.38400.39400.43800.166500.491000 | Formwork | 30.38d | 2026-01-29 | 2026-02-25 | 43SS+48.15d |  |  | GC1 | 8815934 |
| 46 | 37200.37400.37500.38400.39400.43800.166500.491100 | Concreting | 1.12d | 2026-02-25 | 2026-02-26 | 45 |  |  | GC1 | 8815944 |
| 47 | 37200.37400.37500.38400.39400.43800.166400 | **3rd floor slab** | 11.25d | 2026-02-26 | 2026-03-08 |  |  | start no earlier than 2026-02-26 | GC1 | 8810394 |
| 48 | 37200.37400.37500.38400.39400.43800.166400.491200 | Reinforcement | 7.88d | 2026-02-26 | 2026-03-05 | 46 |  |  | GC1 | 8815954 |
| 49 | 37200.37400.37500.38400.39400.43800.166400.491300 | Wall conduiting | 2.25d | 2026-03-01 | 2026-03-03 | 44, 48SS+3.38d |  |  | GC1 | 8815964 |
| 50 | 37200.37400.37500.38400.39400.43800.166400.491400 | Formwork | 7.88d | 2026-02-28 | 2026-03-07 | 48SS+2.25d |  |  | GC1 | 8815974 |
| 51 | 37200.37400.37500.38400.39400.43800.166400.491500 | Concreting | 1.12d | 2026-03-07 | 2026-03-08 | 50 |  |  | GC1 | 8815984 |

| ID | WBS | Task | Duration | Start | Finish | Predecessors | Constraint | Calendar | Unique_Task_ID |
| --- | --- | --- | --- | --- | --- | --- | --- | --- | --- |
| 52 | 37200.37400.37500.38400.39400.43800.166200 | **4th floor slab** | 11.25d | 2026-03-08 | 2026-03-18 |  | start no earlier than 2026-03-08 | GC1 | 8810384 |
| 53 | 37200.37400.37500.38400.39400.43800.166200.491600 | Reinforcement | 7.88d | 2026-03-08 | 2026-03-15 | 51 |  | GC1 | 8815994 |
| 54 | 37200.37400.37500.38400.39400.43800.166200.491700 | Wall conduiting | 2.25d | 2026-03-09 | 2026-03-11 | 49, 53SS+1.12d |  | GC1 | 8816004 |
| 55 | 37200.37400.37500.38400.39400.43800.166200.491800 | Formwork | 7.88d | 2026-03-10 | 2026-03-17 | 53SS+2.25d |  | GC1 | 8816014 |
| 56 | 37200.37400.37500.38400.39400.43800.166200.491900 | Concreting | 1.12d | 2026-03-17 | 2026-03-18 | 55 |  | GC1 | 8816024 |
| 57 | 37200.37400.37500.38400.39400.43800.166100 | **5th floor slab** | 11.25d | 2026-03-18 | 2026-03-28 |  | start no earlier than 2026-03-18 | GC1 | 8810374 |
| 58 | 37200.37400.37500.38400.39400.43800.166100.492000 | Reinforcement | 7.88d | 2026-03-18 | 2026-03-25 | 56 |  | GC1 | 8816034 |
| 59 | 37200.37400.37500.38400.39400.43800.166100.492100 | Wall conduiting | 2.25d | 2026-03-19 | 2026-03-21 | 54, 58SS+1.12d |  | GC1 | 8816044 |
| 60 | 37200.37400.37500.38400.39400.43800.166100.492200 | Formwork | 7.88d | 2026-03-20 | 2026-03-27 | 58SS+2.25d |  | GC1 | 8816054 |
| 61 | 37200.37400.37500.38400.39400.43800.166100.492300 | Concreting | 1.12d | 2026-03-27 | 2026-03-28 | 60 |  | GC1 | 8816064 |
| 62 | 37200.37400.37500.38400.39400.43800.166000 | **6th floor slab** | 11.25d | 2026-03-28 | 2026-04-07 |  | start no earlier than 2026-03-28 | GC1 | 8810364 |
| 63 | 37200.37400.37500.38400.39400.43800.166000.492400 | Reinforcement | 7.88d | 2026-03-28 | 2026-04-04 | 61 |  | GC1 | 8816074 |
| 64 | 37200.37400.37500.38400.39400.43800.166000.492500 | Wall conduiting | 2.25d | 2026-03-29 | 2026-03-31 | 59, 63SS+1.12d |  | GC1 | 8816084 |
| 65 | 37200.37400.37500.38400.39400.43800.166000.492600 | Formwork | 7.88d | 2026-03-30 | 2026-04-06 | 63SS+2.25d |  | GC1 | 8816094 |
| 66 | 37200.37400.37500.38400.39400.43800.166000.492700 | Concreting | 1.12d | 2026-04-06 | 2026-04-07 | 65 |  | GC1 | 8816104 |
| 67 | 37200.37400.37500.38400.39400.43800.165900 | **7th floor slab** | 11.25d | 2026-04-07 | 2026-04-17 |  | start no earlier than 2026-04-07 | GC1 | 8810354 |
| 68 | 37200.37400.37500.38400.39400.43800.165900.492800 | Reinforcement | 7.88d | 2026-04-07 | 2026-04-14 | 66 |  | GC1 | 8816114 |
| 69 | 37200.37400.37500.38400.39400.43800.165900.492900 | Wall conduiting | 2.25d | 2026-04-08 | 2026-04-10 | 64, 68SS+1.12d |  | GC1 | 8816124 |
| 70 | 37200.37400.37500.38400.39400.43800.165900.493000 | Formwork | 7.88d | 2026-04-09 | 2026-04-16 | 68SS+2.25d |  | GC1 | 8816134 |
| 71 | 37200.37400.37500.38400.39400.43800.165900.493100 | Concreting | 1.12d | 2026-04-16 | 2026-04-17 | 70 |  | GC1 | 8816144 |
| 72 | 37200.37400.37500.38400.39400.43800.165800 | **8th floor slab** | 12.38d | 2026-04-17 | 2026-04-28 |  | start no earlier than 2026-04-17 | GC1 | 8810344 |
| 73 | 37200.37400.37500.38400.39400.43800.165800.493200 | Reinforcement | 7.88d | 2026-04-17 | 2026-04-24 | 71 |  | GC1 | 8816154 |
| 74 | 37200.37400.37500.38400.39400.43800.165800.493300 | Wall conduiting | 2.25d | 2026-04-18 | 2026-04-20 | 69, 73SS+1.12d |  | GC1 | 8816164 |
| 75 | 37200.37400.37500.38400.39400.43800.165800.493400 | Formwork | 9d | 2026-04-19 | 2026-04-27 | 73SS+2.25d |  | GC1 | 8816174 |
| 76 | 37200.37400.37500.38400.39400.43800.165800.493500 | Concreting | 1.12d | 2026-04-27 | 2026-04-28 | 75 |  | GC1 | 8816184 |

| ID | WBS | Task | Duration | Start | Finish | Predecessors | Constraint | Calendar | Unique_Task_ID |
| --- | --- | --- | --- | --- | --- | --- | --- | --- | --- |
| 77 | 37200.37400.37500.38400.39400.43800.165700 | **9th floor slab** | 11.25d | 2026-04-28 | 2026-05-08 |  | start no earlier than 2026-04-28 | GC1 | 8810334 |
| 78 | 37200.37400.37500.38400.39400.43800.165700.493600 | Reinforcement | 7.88d | 2026-04-28 | 2026-05-05 | 76 |  | GC1 | 8816194 |
| 79 | 37200.37400.37500.38400.39400.43800.165700.493700 | Wall conduiting | 2.25d | 2026-04-29 | 2026-05-01 | 74, 78SS+1.12d |  | GC1 | 8816204 |
| 80 | 37200.37400.37500.38400.39400.43800.165700.493800 | Formwork | 7.88d | 2026-04-30 | 2026-05-07 | 78SS+2.25d |  | GC1 | 8816214 |
| 81 | 37200.37400.37500.38400.39400.43800.165700.493900 | Concreting | 1.12d | 2026-05-07 | 2026-05-08 | 80 |  | GC1 | 8816224 |
| 82 | 37200.37400.37500.38400.39400.43800.165600 | **10th floor slab** | 11.25d | 2026-05-08 | 2026-05-18 |  | start no earlier than 2026-05-08 | GC1 | 8810324 |
| 83 | 37200.37400.37500.38400.39400.43800.165600.494000 | Reinforcement | 7.88d | 2026-05-08 | 2026-05-15 | 81 |  | GC1 | 8816234 |
| 84 | 37200.37400.37500.38400.39400.43800.165600.494100 | Wall conduiting | 2.25d | 2026-05-09 | 2026-05-11 | 79, 83SS+1.12d |  | GC1 | 8816244 |
| 85 | 37200.37400.37500.38400.39400.43800.165600.494200 | Formwork | 7.88d | 2026-05-10 | 2026-05-17 | 83SS+2.25d |  | GC1 | 8816254 |
| 86 | 37200.37400.37500.38400.39400.43800.165600.494300 | Concreting | 1.12d | 2026-05-17 | 2026-05-18 | 85 |  | GC1 | 8816264 |
| 87 | 37200.37400.37500.38400.39400.43800.165500 | **11th floor slab** | 11.25d | 2026-05-18 | 2026-05-28 |  | start no earlier than 2026-05-18 | GC1 | 8810314 |
| 88 | 37200.37400.37500.38400.39400.43800.165500.494400 | Reinforcement | 7.88d | 2026-05-18 | 2026-05-25 | 86 |  | GC1 | 8816274 |
| 89 | 37200.37400.37500.38400.39400.43800.165500.494500 | Wall conduiting | 2.25d | 2026-05-19 | 2026-05-21 | 84, 88SS+1.12d |  | GC1 | 8816284 |
| 90 | 37200.37400.37500.38400.39400.43800.165500.494600 | Formwork | 7.88d | 2026-05-20 | 2026-05-27 | 88SS+2.25d |  | GC1 | 8816294 |
| 91 | 37200.37400.37500.38400.39400.43800.165500.494700 | Concreting | 1.12d | 2026-05-27 | 2026-05-28 | 90 |  | GC1 | 8816304 |
| 92 | 37200.37400.37500.38400.39400.43800.165300 | **12th floor slab** | 11.25d | 2026-05-28 | 2026-06-07 |  | start no earlier than 2026-05-28 | GC1 | 8810304 |
| 93 | 37200.37400.37500.38400.39400.43800.165300.494800 | Reinforcement | 7.88d | 2026-05-28 | 2026-06-04 | 91 |  | GC1 | 8816314 |
| 94 | 37200.37400.37500.38400.39400.43800.165300.494900 | Wall conduiting | 2.25d | 2026-05-29 | 2026-05-31 | 89, 93SS+1.12d |  | GC1 | 8816324 |
| 95 | 37200.37400.37500.38400.39400.43800.165300.495000 | Formwork | 7.88d | 2026-05-30 | 2026-06-06 | 93SS+2.25d |  | GC1 | 8816334 |
| 96 | 37200.37400.37500.38400.39400.43800.165300.495100 | Concreting | 1.12d | 2026-06-06 | 2026-06-07 | 95 |  | GC1 | 8816344 |
| 97 | 37200.37400.37500.38400.39400.43800.165200 | **13th floor slab** | 11.25d | 2026-06-07 | 2026-06-17 |  | start no earlier than 2026-06-07 | GC1 | 8810294 |
| 98 | 37200.37400.37500.38400.39400.43800.165200.495200 | Reinforcement | 7.88d | 2026-06-07 | 2026-06-14 | 96 |  | GC1 | 8816354 |
| 99 | 37200.37400.37500.38400.39400.43800.165200.495300 | Wall conduiting | 2.25d | 2026-06-08 | 2026-06-10 | 94, 98SS+1.12d |  | GC1 | 8816364 |
| 100 | 37200.37400.37500.38400.39400.43800.165200.495400 | Formwork | 7.88d | 2026-06-09 | 2026-06-16 | 98SS+2.25d |  | GC1 | 8816374 |
| 101 | 37200.37400.37500.38400.39400.43800.165200.495500 | Concreting | 1.12d | 2026-06-16 | 2026-06-17 | 100 |  | GC1 | 8816384 |

| ID | WBS | Task | Duration | Start | Finish | Predecessors | Constraint | Calendar | Unique_Task_ID |
| --- | --- | --- | --- | --- | --- | --- | --- | --- | --- |
| 102 | 37200.37400.37500.38400.39400.43800.165100 | **14th floor slab** | 11.25d | 2026-06-17 | 2026-06-27 |  | start no earlier than 2026-06-17 | GC1 | 8810284 |
| 103 | 37200.37400.37500.38400.39400.43800.165100.495600 | Reinforcement | 7.88d | 2026-06-17 | 2026-06-24 | 101 |  | GC1 | 8816394 |
| 104 | 37200.37400.37500.38400.39400.43800.165100.495700 | Wall conduiting | 2.25d | 2026-06-18 | 2026-06-20 | 99, 103SS+1.12d |  | GC1 | 8816404 |
| 105 | 37200.37400.37500.38400.39400.43800.165100.495800 | Formwork | 7.88d | 2026-06-19 | 2026-06-26 | 103SS+2.25d |  | GC1 | 8816414 |
| 106 | 37200.37400.37500.38400.39400.43800.165100.495900 | Concreting | 1.12d | 2026-06-26 | 2026-06-27 | 105 |  | GC1 | 8816424 |
| 107 | 37200.37400.37500.38400.39400.43800.165000 | **15th floor slab** | 11.25d | 2026-06-27 | 2026-07-07 |  | start no earlier than 2026-06-27 | GC1 | 8810274 |
| 108 | 37200.37400.37500.38400.39400.43800.165000.496000 | Reinforcement | 7.88d | 2026-06-27 | 2026-07-04 | 106 |  | GC1 | 8816434 |
| 109 | 37200.37400.37500.38400.39400.43800.165000.496100 | Wall conduiting | 2.25d | 2026-06-28 | 2026-06-30 | 104, 108SS+1.12d |  | GC1 | 8816444 |
| 110 | 37200.37400.37500.38400.39400.43800.165000.496200 | Formwork | 7.88d | 2026-06-29 | 2026-07-06 | 108SS+2.25d |  | GC1 | 8816454 |
| 111 | 37200.37400.37500.38400.39400.43800.165000.496300 | Concreting | 1.12d | 2026-07-06 | 2026-07-07 | 110 |  | GC1 | 8816464 |
| 112 | 37200.37400.37500.38400.39400.43800.164900 | **16th floor slab** | 12.38d | 2026-07-07 | 2026-07-18 |  | start no earlier than 2026-07-07 | GC1 | 8810264 |
| 113 | 37200.37400.37500.38400.39400.43800.164900.496400 | Reinforcement | 10.12d | 2026-07-07 | 2026-07-16 | 111 |  | GC1 | 8816474 |
| 114 | 37200.37400.37500.38400.39400.43800.164900.496500 | Wall conduiting | 2.25d | 2026-07-08 | 2026-07-10 | 109, 113SS+1.12d |  | GC1 | 8816484 |
| 115 | 37200.37400.37500.38400.39400.43800.164900.496600 | Formwork | 10.12d | 2026-07-08 | 2026-07-17 | 113SS+1.12d |  | GC1 | 8816494 |
| 116 | 37200.37400.37500.38400.39400.43800.164900.496700 | Concreting | 1.12d | 2026-07-17 | 2026-07-18 | 115 |  | GC1 | 8816504 |
| 117 | 37200.37400.37500.38400.39400.43800.164800 | **17th floor slab** | 11.25d | 2026-07-18 | 2026-07-28 |  | start no earlier than 2026-07-18 | GC1 | 8810254 |
| 118 | 37200.37400.37500.38400.39400.43800.164800.496800 | Reinforcement | 9d | 2026-07-18 | 2026-07-26 | 116 |  | GC1 | 8816514 |
| 119 | 37200.37400.37500.38400.39400.43800.164800.496900 | Wall conduiting | 2.25d | 2026-07-19 | 2026-07-21 | 114, 118SS+1.12d |  | GC1 | 8816524 |
| 120 | 37200.37400.37500.38400.39400.43800.164800.497000 | Formwork | 7.88d | 2026-07-20 | 2026-07-27 | 118SS+2.25d |  | GC1 | 8816534 |
| 121 | 37200.37400.37500.38400.39400.43800.164800.497100 | Concreting | 1.12d | 2026-07-27 | 2026-07-28 | 120 |  | GC1 | 8816544 |
| 122 | 37200.37400.37500.38400.39400.43800.164700 | **18th floor slab** | 11.25d | 2026-07-28 | 2026-08-07 |  | start no earlier than 2026-07-28 | GC1 | 8810244 |
| 123 | 37200.37400.37500.38400.39400.43800.164700.497200 | Reinforcement | 9d | 2026-07-28 | 2026-08-05 | 121 |  | GC1 | 8816554 |
| 124 | 37200.37400.37500.38400.39400.43800.164700.497300 | Wall conduiting | 2.25d | 2026-07-29 | 2026-07-31 | 119, 123SS+1.12d |  | GC1 | 8816564 |
| 125 | 37200.37400.37500.38400.39400.43800.164700.497400 | Formwork | 7.88d | 2026-07-30 | 2026-08-06 | 123SS+2.25d |  | GC1 | 8816574 |
| 126 | 37200.37400.37500.38400.39400.43800.164700.497500 | Concreting | 1.12d | 2026-08-06 | 2026-08-07 | 125 |  | GC1 | 8816584 |

| ID | WBS | Task | Duration | Start | Finish | Predecessors | Constraint | Calendar | Unique_Task_ID |
| --- | --- | --- | --- | --- | --- | --- | --- | --- | --- |
| 127 | 37200.37400.37500.38400.39400.43800.164600 | **19th floor slab** | 11.25d | 2026-08-07 | 2026-08-17 |  | start no earlier than 2026-08-07 | GC1 | 8810234 |
| 128 | 37200.37400.37500.38400.39400.43800.164600.497600 | Reinforcement | 9d | 2026-08-07 | 2026-08-15 | 126 |  | GC1 | 8816594 |
| 129 | 37200.37400.37500.38400.39400.43800.164600.497700 | Wall conduiting | 2.25d | 2026-08-08 | 2026-08-10 | 124, 128SS+1.12d |  | GC1 | 8816604 |
| 130 | 37200.37400.37500.38400.39400.43800.164600.497800 | Formwork | 7.88d | 2026-08-09 | 2026-08-16 | 128SS+2.25d |  | GC1 | 8816614 |
| 131 | 37200.37400.37500.38400.39400.43800.164600.497900 | Concreting | 1.12d | 2026-08-16 | 2026-08-17 | 130 |  | GC1 | 8816624 |
| 132 | 37200.37400.37500.38400.39400.43800.164500 | **20th floor slab** | 11.25d | 2026-08-17 | 2026-08-27 |  | start no earlier than 2026-08-17 | GC1 | 8810224 |
| 133 | 37200.37400.37500.38400.39400.43800.164500.498000 | Reinforcement | 9d | 2026-08-17 | 2026-08-25 | 131 |  | GC1 | 8816634 |
| 134 | 37200.37400.37500.38400.39400.43800.164500.498100 | Wall conduiting | 2.25d | 2026-08-18 | 2026-08-20 | 129, 133SS+1.12d |  | GC1 | 8816644 |
| 135 | 37200.37400.37500.38400.39400.43800.164500.498200 | Formwork | 7.88d | 2026-08-19 | 2026-08-26 | 133SS+2.25d |  | GC1 | 8816654 |
| 136 | 37200.37400.37500.38400.39400.43800.164500.498300 | Concreting | 1.12d | 2026-08-26 | 2026-08-27 | 135 |  | GC1 | 8816664 |
| 137 | 37200.37400.37500.38400.39400.43800.164300 | **21st floor slab** | 11.25d | 2026-08-27 | 2026-09-06 |  | start no earlier than 2026-08-27 | GC1 | 8810214 |
| 138 | 37200.37400.37500.38400.39400.43800.164300.498400 | Reinforcement | 9d | 2026-08-27 | 2026-09-04 | 136 |  | GC1 | 8816674 |
| 139 | 37200.37400.37500.38400.39400.43800.164300.498500 | Wall conduiting | 2.25d | 2026-08-28 | 2026-08-30 | 134, 138SS+1.12d |  | GC1 | 8816684 |
| 140 | 37200.37400.37500.38400.39400.43800.164300.498600 | Formwork | 7.88d | 2026-08-29 | 2026-09-05 | 138SS+2.25d |  | GC1 | 8816694 |
| 141 | 37200.37400.37500.38400.39400.43800.164300.498700 | Concreting | 1.12d | 2026-09-05 | 2026-09-06 | 140 |  | GC1 | 8816704 |
| 142 | 37200.37400.37500.38400.39400.43800.164200 | **22nd floor slab** | 11.25d | 2026-09-06 | 2026-09-16 |  | start no earlier than 2026-09-06 | GC1 | 8810204 |
| 143 | 37200.37400.37500.38400.39400.43800.164200.498800 | Reinforcement | 9d | 2026-09-06 | 2026-09-14 | 141 |  | GC1 | 8816714 |
| 144 | 37200.37400.37500.38400.39400.43800.164200.498900 | Wall conduiting | 2.25d | 2026-09-07 | 2026-09-09 | 139, 143SS+1.12d |  | GC1 | 8816724 |
| 145 | 37200.37400.37500.38400.39400.43800.164200.499000 | Formwork | 7.88d | 2026-09-08 | 2026-09-15 | 143SS+2.25d |  | GC1 | 8816734 |
| 146 | 37200.37400.37500.38400.39400.43800.164200.499100 | Concreting | 1.12d | 2026-09-15 | 2026-09-16 | 145 |  | GC1 | 8816744 |
| 147 | 37200.37400.37500.38400.39400.43800.164100 | **23rd floor slab** | 11.25d | 2026-09-16 | 2026-09-26 |  | start no earlier than 2026-09-16 | GC1 | 8810194 |
| 148 | 37200.37400.37500.38400.39400.43800.164100.499200 | Reinforcement | 9d | 2026-09-16 | 2026-09-24 | 146 |  | GC1 | 8816754 |
| 149 | 37200.37400.37500.38400.39400.43800.164100.499300 | Wall conduiting | 2.25d | 2026-09-17 | 2026-09-19 | 144, 148SS+1.12d |  | GC1 | 8816764 |
| 150 | 37200.37400.37500.38400.39400.43800.164100.499400 | Formwork | 7.88d | 2026-09-18 | 2026-09-25 | 148SS+2.25d |  | GC1 | 8816774 |
| 151 | 37200.37400.37500.38400.39400.43800.164100.499500 | Concreting | 1.12d | 2026-09-25 | 2026-09-26 | 150 |  | GC1 | 8816784 |

| ID | WBS | Task | Duration | Start | Finish | Predecessors | Constraint | Calendar | Unique_Task_ID |
| --- | --- | --- | --- | --- | --- | --- | --- | --- | --- |
| 152 | 37200.37400.37500.38400.39400.43800.164000 | **24th floor slab** | 15.75d | 2026-09-26 | 2026-10-10 |  | start no earlier than 2026-09-26 | GC1 | 8810184 |
| 153 | 37200.37400.37500.38400.39400.43800.164000.499600 | Reinforcement | 12.38d | 2026-09-26 | 2026-10-07 | 151 |  | GC1 | 8816794 |
| 154 | 37200.37400.37500.38400.39400.43800.164000.499700 | Wall conduiting | 2.25d | 2026-09-27 | 2026-09-29 | 149, 153SS+1.12d |  | GC1 | 8816804 |
| 155 | 37200.37400.37500.38400.39400.43800.164000.499800 | Formwork | 12.38d | 2026-09-28 | 2026-10-09 | 153SS+2.25d |  | GC1 | 8816814 |
| 156 | 37200.37400.37500.38400.39400.43800.164000.499900 | Concreting | 1.12d | 2026-10-09 | 2026-10-10 | 155 |  | GC1 | 8816824 |
| 157 | 37200.37400.37500.38400.39400.43800.163900 | **25th floor slab** | 16.88d | 2026-10-10 | 2026-10-25 |  | start no earlier than 2026-10-10 | GC1 | 8810174 |
| 158 | 37200.37400.37500.38400.39400.43800.163900.500000 | Reinforcement | 12.38d | 2026-10-10 | 2026-10-21 | 156 |  | GC1 | 8816834 |
| 159 | 37200.37400.37500.38400.39400.43800.163900.500100 | Wall conduiting | 2.25d | 2026-10-11 | 2026-10-13 | 154, 158SS+1.12d |  | GC1 | 8816844 |
| 160 | 37200.37400.37500.38400.39400.43800.163900.500200 | Formwork | 12.38d | 2026-10-13 | 2026-10-24 | 158SS+3.38d |  | GC1 | 8816854 |
| 161 | 37200.37400.37500.38400.39400.43800.163900.500300 | Concreting | 1.12d | 2026-10-24 | 2026-10-25 | 160 |  | GC1 | 8816864 |
| 162 | 37200.37400.37500.38400.39400.43800.163800 | **26th floor slab** | 11.25d | 2026-10-25 | 2026-12-19 |  | start no earlier than 2026-10-25 | GC1 | 8810164 |
| 163 | 37200.37400.37500.38400.39400.43800.163800.500400 | Reinforcement | 9d | 2026-10-25 | 2026-12-17 | 161 |  | GC1 | 8816874 |
| 164 | 37200.37400.37500.38400.39400.43800.163800.500500 | Wall conduiting | 2.25d | 2026-10-26 | 2026-10-28 | 159, 163SS+1.12d |  | GC1 | 8816884 |
| 165 | 37200.37400.37500.38400.39400.43800.163800.500600 | Formwork | 7.88d | 2026-10-27 | 2026-12-18 | 163SS+2.25d |  | GC1 | 8816894 |
| 166 | 37200.37400.37500.38400.39400.43800.163800.500700 | Concreting | 1.12d | 2026-12-18 | 2026-12-19 | 165 |  | GC1 | 8816904 |
| 167 | 37200.37400.37500.38400.39400.43800.163700 | **27th floor slab** | 11.25d | 2026-12-19 | 2026-12-29 |  | start no earlier than 2026-12-19 | GC1 | 8810154 |
| 168 | 37200.37400.37500.38400.39400.43800.163700.500800 | Reinforcement | 9d | 2026-12-19 | 2026-12-27 | 166 |  | GC1 | 8816914 |
| 169 | 37200.37400.37500.38400.39400.43800.163700.500900 | Wall conduiting | 2.25d | 2026-12-20 | 2026-12-22 | 164, 168SS+1.12d |  | GC1 | 8816924 |
| 170 | 37200.37400.37500.38400.39400.43800.163700.501000 | Formwork | 7.88d | 2026-12-21 | 2026-12-28 | 168SS+2.25d |  | GC1 | 8816934 |
| 171 | 37200.37400.37500.38400.39400.43800.163700.501100 | Concreting | 1.12d | 2026-12-28 | 2026-12-29 | 170 |  | GC1 | 8816944 |
| 172 | 37200.37400.37500.38400.39400.43800.163600 | **28th floor slab** | 11.25d | 2026-12-29 | 2027-01-08 |  | start no earlier than 2026-12-29 | GC1 | 8810144 |
| 173 | 37200.37400.37500.38400.39400.43800.163600.501200 | Reinforcement | 9d | 2026-12-29 | 2027-01-06 | 171 |  | GC1 | 8816954 |
| 174 | 37200.37400.37500.38400.39400.43800.163600.501300 | Wall conduiting | 2.25d | 2026-12-30 | 2027-01-01 | 169, 173SS+1.12d |  | GC1 | 8816964 |
| 175 | 37200.37400.37500.38400.39400.43800.163600.501400 | Formwork | 7.88d | 2026-12-31 | 2027-01-07 | 173SS+2.25d |  | GC1 | 8816974 |
| 176 | 37200.37400.37500.38400.39400.43800.163600.501500 | Concreting | 1.12d | 2027-01-07 | 2027-01-08 | 175 |  | GC1 | 8816984 |

| ID | WBS | Task | Duration | Start | Finish | Predecessors | Constraint | Calendar | Unique_Task_ID |
| --- | --- | --- | --- | --- | --- | --- | --- | --- | --- |
| 177 | 37200.37400.37500.38400.39400.43800.163500 | **29th floor slab** | 11.25d | 2027-01-08 | 2027-01-18 |  | start no earlier than 2027-01-08 | GC1 | 8810134 |
| 178 | 37200.37400.37500.38400.39400.43800.163500.501600 | Reinforcement | 9d | 2027-01-08 | 2027-01-16 | 176 |  | GC1 | 8816994 |
| 179 | 37200.37400.37500.38400.39400.43800.163500.501700 | Wall conduiting | 2.25d | 2027-01-09 | 2027-01-11 | 174, 178SS+1.12d |  | GC1 | 8817004 |
| 180 | 37200.37400.37500.38400.39400.43800.163500.501800 | Formwork | 7.88d | 2027-01-10 | 2027-01-17 | 178SS+2.25d |  | GC1 | 8817014 |
| 181 | 37200.37400.37500.38400.39400.43800.163500.501900 | Concreting | 1.12d | 2027-01-17 | 2027-01-18 | 180 |  | GC1 | 8817024 |
| 182 | 37200.37400.37500.38400.39400.43800.163400 | **30th floor slab** | 11.25d | 2027-01-18 | 2027-01-28 |  | start no earlier than 2027-01-18 | GC1 | 8810124 |
| 183 | 37200.37400.37500.38400.39400.43800.163400.502000 | Reinforcement | 9d | 2027-01-18 | 2027-01-26 | 181 |  | GC1 | 8817034 |
| 184 | 37200.37400.37500.38400.39400.43800.163400.502100 | Wall conduiting | 2.25d | 2027-01-19 | 2027-01-21 | 179, 183SS+1.12d |  | GC1 | 8817044 |
| 185 | 37200.37400.37500.38400.39400.43800.163400.502200 | Formwork | 7.88d | 2027-01-20 | 2027-01-27 | 183SS+2.25d |  | GC1 | 8817054 |
| 186 | 37200.37400.37500.38400.39400.43800.163400.502300 | Concreting | 1.12d | 2027-01-27 | 2027-01-28 | 185 |  | GC1 | 8817064 |
| 187 | 37200.37400.37500.38400.39400.43800.163300 | **31st floor slab** | 11.25d | 2027-01-28 | 2027-02-07 |  | start no earlier than 2027-01-28 | GC1 | 8810114 |
| 188 | 37200.37400.37500.38400.39400.43800.163300.502400 | Reinforcement | 7.88d | 2027-01-28 | 2027-02-04 | 186 |  | GC1 | 8817074 |
| 189 | 37200.37400.37500.38400.39400.43800.163300.502500 | Wall conduiting | 2.25d | 2027-01-29 | 2027-01-31 | 184, 188SS+1.12d |  | GC1 | 8817084 |
| 190 | 37200.37400.37500.38400.39400.43800.163300.502600 | Formwork | 7.88d | 2027-01-30 | 2027-02-06 | 188SS+2.25d |  | GC1 | 8817094 |
| 191 | 37200.37400.37500.38400.39400.43800.163300.502700 | Concreting | 1.12d | 2027-02-06 | 2027-02-07 | 190 |  | GC1 | 8817104 |
| 192 | 37200.37400.37500.38400.39400.43800.163200 | **32nd floor slab** | 15.75d | 2027-02-07 | 2027-02-21 |  | start no earlier than 2027-02-07 | GC1 | 8810104 |
| 193 | 37200.37400.37500.38400.39400.43800.163200.502800 | Reinforcement | 11.25d | 2027-02-07 | 2027-02-17 | 191 |  | GC1 | 8817114 |
| 194 | 37200.37400.37500.38400.39400.43800.163200.502900 | Wall conduiting | 2.25d | 2027-02-08 | 2027-02-10 | 189, 193SS+1.12d |  | GC1 | 8817124 |
| 195 | 37200.37400.37500.38400.39400.43800.163200.503000 | Formwork | 12.38d | 2027-02-09 | 2027-02-20 | 193SS+2.25d |  | GC1 | 8817134 |
| 196 | 37200.37400.37500.38400.39400.43800.163200.503100 | Concreting | 1.12d | 2027-02-20 | 2027-02-21 | 195 |  | GC1 | 8817144 |
| 197 | 37200.37400.37500.38400.39400.43800.163100 | **33rd floor slab** | 11.25d | 2027-02-21 | 2027-03-03 |  | start no earlier than 2027-02-21 | GC1 | 8810094 |
| 198 | 37200.37400.37500.38400.39400.43800.163100.503200 | Reinforcement | 7.88d | 2027-02-21 | 2027-02-28 | 196 |  | GC1 | 8817154 |
| 199 | 37200.37400.37500.38400.39400.43800.163100.503300 | Wall conduiting | 2.25d | 2027-02-22 | 2027-02-24 | 194, 198SS+1.12d |  | GC1 | 8817164 |
| 200 | 37200.37400.37500.38400.39400.43800.163100.503400 | Formwork | 7.88d | 2027-02-23 | 2027-03-02 | 198SS+2.25d |  | GC1 | 8817174 |
| 201 | 37200.37400.37500.38400.39400.43800.163100.503500 | Concreting | 1.12d | 2027-03-02 | 2027-03-03 | 200 |  | GC1 | 8817184 |

| ID | WBS | Task | Duration | Start | Finish | Predecessors | Constraint | Calendar | Unique_Task_ID |
| --- | --- | --- | --- | --- | --- | --- | --- | --- | --- |
| 202 | 37200.37400.37500.38400.39400.43800.163000 | **34th floor slab** | 16.88d | 2027-03-03 | 2027-03-18 |  | start no earlier than 2027-03-03 | GC1 | 8810084 |
| 203 | 37200.37400.37500.38400.39400.43800.163000.503600 | Reinforcement | 13.5d | 2027-03-03 | 2027-03-15 | 201 |  | GC1 | 8817194 |
| 204 | 37200.37400.37500.38400.39400.43800.163000.503700 | Wall conduiting | 2.25d | 2027-03-04 | 2027-03-06 | 199, 203SS+1.12d |  | GC1 | 8817204 |
| 205 | 37200.37400.37500.38400.39400.43800.163000.503800 | Formwork | 13.5d | 2027-03-05 | 2027-03-17 | 203SS+2.25d |  | GC1 | 8817214 |
| 206 | 37200.37400.37500.38400.39400.43800.163000.503900 | Concreting | 1.12d | 2027-03-17 | 2027-03-18 | 205 |  | GC1 | 8817224 |
| 207 | 37200.37400.37500.38400.39400.43800.162900 | **35th floor slab** | 13.5d | 2027-03-18 | 2027-03-30 |  | start no earlier than 2027-03-18 | GC1 | 8810074 |
| 208 | 37200.37400.37500.38400.39400.43800.162900.504000 | Reinforcement | 9d | 2027-03-18 | 2027-03-26 | 206 |  | GC1 | 8817234 |
| 209 | 37200.37400.37500.38400.39400.43800.162900.504100 | Wall conduiting | 2.25d | 2027-03-19 | 2027-03-21 | 204, 208SS+1.12d |  | GC1 | 8817244 |
| 210 | 37200.37400.37500.38400.39400.43800.162900.504200 | Formwork | 9d | 2027-03-21 | 2027-03-29 | 209SS+2.25d |  | GC1 | 8817254 |
| 211 | 37200.37400.37500.38400.39400.43800.162900.504300 | Concreting | 1.12d | 2027-03-29 | 2027-03-30 | 210 |  | GC1 | 8817264 |
| 212 | 37200.37400.37500.38400.39400.43800.162800 | **Terrace floor slab** | 23.62d | 2027-03-30 | 2027-04-20 |  | start no earlier than 2027-03-30 | GC1 | 8810064 |
| 213 | 37200.37400.37500.38400.39400.43800.162800.504400 | Reinforcement | 19.12d | 2027-03-30 | 2027-04-16 | 211 |  | GC1 | 8817274 |
| 214 | 37200.37400.37500.38400.39400.43800.162800.504500 | Wall conduiting | 2.25d | 2027-03-31 | 2027-04-02 | 209, 213SS+1.12d |  | GC1 | 8817284 |
| 215 | 37200.37400.37500.38400.39400.43800.162800.504600 | Formwork | 19.12d | 2027-04-02 | 2027-04-19 | 213SS+3.38d |  | GC1 | 8817294 |
| 216 | 37200.37400.37500.38400.39400.43800.162800.504700 | Concreting | 1.12d | 2027-04-19 | 2027-04-20 | 215 |  | GC1 | 8817304 |
| 217 | 37200.37400.37500.38400.39400.43800.162700 | **OHT & Mumty** | 45d | 2027-04-20 | 2027-05-30 |  | start no earlier than 2027-04-20 | GC1 | 8810054 |
| 218 | 37200.37400.37500.38400.39400.43800.162700.504800 | Reinforcement | 32.62d | 2027-04-20 | 2027-05-19 | 216 |  | GC1 | 8817314 |
| 219 | 37200.37400.37500.38400.39400.43800.162700.504900 | Wall conduiting | 5.62d | 2027-04-21 | 2027-04-26 | 214, 218SS+1.12d |  | GC1 | 8817324 |
| 220 | 37200.37400.37500.38400.39400.43800.162700.505000 | Formwork | 34.88d | 2027-04-26 | 2027-05-27 | 218SS+4.5d, 219 |  | GC1 | 8817334 |
| 221 | 37200.37400.37500.38400.39400.43800.162700.505100 | Concreting | 3.38d | 2027-05-27 | 2027-05-30 | 220 |  | GC1 | 8817344 |
| 222 | 37200.37400.37500.38400.39400.45300 | **Post Pour Activities** | 484.88d | 2026-03-19 | 2027-07-08 |  | start no earlier than 2026-03-19 | GC1 | 8806084 |
| 223 | 37200.37400.37500.38400.39400.45300.334200 | 1st Floor | 12.38d | 2026-03-19 | 2026-03-30 | 56FS+0.25d |  | GC1 | 8812034 |
| 224 | 37200.37400.37500.38400.39400.45300.334300 | 2nd Floor | 12.38d | 2026-03-30 | 2026-04-10 | 223, 61 |  | GC1 | 8812044 |
| 225 | 37200.37400.37500.38400.39400.45300.334400 | 3rd Floor | 12.38d | 2026-04-10 | 2026-04-21 | 224, 66 |  | GC1 | 8812054 |
| 226 | 37200.37400.37500.38400.39400.45300.334500 | 4th Floor | 12.38d | 2026-04-21 | 2026-05-02 | 225, 71 |  | GC1 | 8812064 |
| 227 | 37200.37400.37500.38400.39400.45300.334600 | 5th Floor | 12.38d | 2026-05-02 | 2026-05-13 | 226, 76 |  | GC1 | 8812074 |
| 228 | 37200.37400.37500.38400.39400.45300.334700 | 6th Floor | 12.38d | 2026-05-13 | 2026-05-24 | 227, 81 |  | GC1 | 8812084 |
| 229 | 37200.37400.37500.38400.39400.45300.334800 | 7th Floor | 12.38d | 2026-05-24 | 2026-06-04 | 228, 86 |  | GC1 | 8812094 |
| 230 | 37200.37400.37500.38400.39400.45300.334900 | 8th Floor | 12.38d | 2026-06-04 | 2026-06-15 | 229, 91 |  | GC1 | 8812104 |
| 231 | 37200.37400.37500.38400.39400.45300.335000 | 9th Floor | 12.38d | 2026-06-15 | 2026-06-26 | 230, 96 |  | GC1 | 8812114 |
| 232 | 37200.37400.37500.38400.39400.45300.335100 | 10th Floor | 12.38d | 2026-06-26 | 2026-07-07 | 231, 101 |  | GC1 | 8812124 |
| 233 | 37200.37400.37500.38400.39400.45300.335200 | 11th Floor | 12.38d | 2026-07-07 | 2026-07-18 | 232, 106 |  | GC1 | 8812134 |
| 234 | 37200.37400.37500.38400.39400.45300.335300 | 12th Floor | 12.38d | 2026-07-18 | 2026-07-29 | 233, 111 |  | GC1 | 8812144 |
| 235 | 37200.37400.37500.38400.39400.45300.335400 | 13th Floor | 12.38d | 2026-07-29 | 2026-08-09 | 234, 116 |  | GC1 | 8812154 |
| 236 | 37200.37400.37500.38400.39400.45300.335500 | 14th Floor | 13.5d | 2026-08-09 | 2026-08-21 | 235, 121 |  | GC1 | 8812164 |
| 237 | 37200.37400.37500.38400.39400.45300.335600 | 15th Floor | 13.5d | 2026-08-21 | 2026-09-02 | 236, 126 |  | GC1 | 8812174 |
| 238 | 37200.37400.37500.38400.39400.45300.335700 | 16th Floor | 13.5d | 2026-09-02 | 2026-09-14 | 237, 131 |  | GC1 | 8812184 |
| 239 | 37200.37400.37500.38400.39400.45300.335800 | 17th Floor | 13.5d | 2026-09-14 | 2026-09-26 | 238, 136 |  | GC1 | 8812194 |
| 240 | 37200.37400.37500.38400.39400.45300.335900 | 18th Floor | 13.5d | 2026-09-26 | 2026-10-08 | 239, 141 |  | GC1 | 8812204 |
| 241 | 37200.37400.37500.38400.39400.45300.336000 | 19th Floor | 13.5d | 2026-10-08 | 2026-10-20 | 240, 146 |  | GC1 | 8812214 |
| 242 | 37200.37400.37500.38400.39400.45300.336100 | 20th Floor | 13.5d | 2026-10-20 | 2026-12-16 | 241, 151 |  | GC1 | 8812224 |
| 243 | 37200.37400.37500.38400.39400.45300.336200 | 21st Floor | 13.5d | 2026-12-16 | 2026-12-28 | 242, 156 |  | GC1 | 8812234 |
| 244 | 37200.37400.37500.38400.39400.45300.336300 | 22nd Floor | 13.5d | 2026-12-28 | 2027-01-09 | 243, 161 |  | GC1 | 8812244 |
| 245 | 37200.37400.37500.38400.39400.45300.336400 | 23rd Floor | 13.5d | 2027-01-09 | 2027-01-21 | 244, 166 |  | GC1 | 8812254 |
| 246 | 37200.37400.37500.38400.39400.45300.336500 | 24th Floor | 13.5d | 2027-01-21 | 2027-02-02 | 245, 171 |  | GC1 | 8812264 |
| 247 | 37200.37400.37500.38400.39400.45300.336600 | 25th Floor | 13.5d | 2027-02-02 | 2027-02-14 | 246, 176 |  | GC1 | 8812274 |
| 248 | 37200.37400.37500.38400.39400.45300.336700 | 26th Floor | 13.5d | 2027-02-14 | 2027-02-26 | 247, 181 |  | GC1 | 8812284 |
| 249 | 37200.37400.37500.38400.39400.45300.336800 | 27th Floor | 13.5d | 2027-02-26 | 2027-03-10 | 248, 186 |  | GC1 | 8812294 |
| 250 | 37200.37400.37500.38400.39400.45300.336900 | 28th Floor | 13.5d | 2027-03-10 | 2027-03-22 | 249, 191 |  | GC1 | 8812304 |
| 251 | 37200.37400.37500.38400.39400.45300.337000 | 29th Floor | 13.5d | 2027-03-22 | 2027-04-03 | 250, 201 |  | GC1 | 8812314 |
| 252 | 37200.37400.37500.38400.39400.45300.337100 | 30th Floor | 13.5d | 2027-04-03 | 2027-04-15 | 251, 206 |  | GC1 | 8812324 |
| 253 | 37200.37400.37500.38400.39400.45300.337200 | 31st Floor | 13.5d | 2027-04-15 | 2027-04-27 | 252, 211 |  | GC1 | 8812334 |
| 254 | 37200.37400.37500.38400.39400.45300.337300 | 32nd Floor | 13.5d | 2027-04-27 | 2027-05-09 | 253, 216 |  | GC1 | 8812344 |
| 255 | 37200.37400.37500.38400.39400.45300.337400 | 33rd Floor | 13.5d | 2027-05-09 | 2027-05-21 | 254 |  | GC1 | 8812354 |
| 256 | 37200.37400.37500.38400.39400.45300.337500 | 34th Floor | 13.5d | 2027-05-21 | 2027-06-02 | 255 |  | GC1 | 8812364 |
| 257 | 37200.37400.37500.38400.39400.45300.337600 | 35th Floor | 13.5d | 2027-06-02 | 2027-06-14 | 256 |  | GC1 | 8812374 |
| 258 | 37200.37400.37500.38400.39400.45300.337700 | Terrace | 13.5d | 2027-06-14 | 2027-06-26 | 257 |  | GC1 | 8812384 |
| 259 | 37200.37400.37500.38400.39400.45300.337800 | Mumty & Machine Room | 13.5d | 2027-06-26 | 2027-07-08 | 258 |  | GC1 | 8812394 |

| ID | WBS | Task | Duration | Start | Finish | Predecessors | Constraint | Calendar | Unique_Task_ID |
| --- | --- | --- | --- | --- | --- | --- | --- | --- | --- |
| 260 | 37200.37400.37500.38400.39400.40800 | **Finishing work** | 918d | 2026-03-30 | 2028-09-21 |  | start no earlier than 2026-03-30 | GC1 | 8805934 |
| 261 | 37200.37400.37500.38400.39400.40800.41800 | **Flat finishing** | 918d | 2026-03-30 | 2028-09-21 |  | start no earlier than 2026-03-30 | GC1 | 8805984 |
| 262 | 37200.37400.37500.38400.39400.40800.41800.76800 | **1st Floor** | 420.75d | 2026-03-30 | 2027-05-23 |  | start no earlier than 2026-03-30 | GC1 | 8806194 |
| 263 | 37200.37400.37500.38400.39400.40800.41800.76800.1078700 | Block Work | 10.12d | 2026-03-30 | 2026-04-08 | 223 |  | GC1 | 8826154 |
| 264 | 37200.37400.37500.38400.39400.40800.41800.76800.1078800 | Door Frame Fixing | 6.75d | 2026-04-08 | 2026-04-14 | 263 |  | GC1 | 8826164 |
| 265 | 37200.37400.37500.38400.39400.40800.41800.76800.1078900 | Internal Plumbing Works | 7.88d | 2026-04-08 | 2026-04-15 | 263 |  | GC1 | 8826174 |
| 266 | 37200.37400.37500.38400.39400.40800.41800.76800.1079000 | Waterproofing | 10.12d | 2026-04-15 | 2026-04-24 | 265 |  | GC1 | 8826184 |
| 267 | 37200.37400.37500.38400.39400.40800.41800.76800.1079100 | Internal Plaster | 5.62d | 2026-04-24 | 2026-04-29 | 264, 265, 266 |  | GC1 | 8826194 |
| 268 | 37200.37400.37500.38400.39400.40800.41800.76800.1079200 | IPS flooring work | 7.88d | 2026-04-24 | 2026-05-01 | 264, 265, 266 |  | GC1 | 8826204 |
| 269 | 37200.37400.37500.38400.39400.40800.41800.76800.1079300 | Toilet dado work | 7.88d | 2027-03-10 | 2027-03-17 | 266FS+303.75d, 267FS+303.75d |  | GC1 | 8826214 |
| 270 | 37200.37400.37500.38400.39400.40800.41800.76800.1079400 | Toilet flooring work | 6.75d | 2027-03-17 | 2027-03-23 | 269 |  | GC1 | 8826224 |
| 271 | 37200.37400.37500.38400.39400.40800.41800.76800.1079500 | Living dinning flooring | 10.12d | 2027-03-23 | 2027-04-01 | 264, 270 |  | GC1 | 8826234 |
| 272 | 37200.37400.37500.38400.39400.40800.41800.76800.1079600 | Aluminium door-window fixing | 14.62d | 2027-04-11 | 2027-04-24 | 268FS+11.25d, 271FS+11.25d |  | GC1 | 8826244 |
| 273 | 37200.37400.37500.38400.39400.40800.41800.76800.1079700 | Putty primer coat | 6.75d | 2027-04-01 | 2027-04-07 | 271 |  | GC1 | 8826254 |
| 274 | 37200.37400.37500.38400.39400.40800.41800.76800.1079800 | Door shutter fixing | 9d | 2027-04-01 | 2027-04-09 | 271 |  | GC1 | 8826264 |
| 275 | 37200.37400.37500.38400.39400.40800.41800.76800.1079900 | Electrical wiring work | 13.5d | 2027-04-19 | 2027-05-01 | 274FS+11.25d |  | GC1 | 8826274 |
| 276 | 37200.37400.37500.38400.39400.40800.41800.76800.1080000 | Painting 1st coat | 13.5d | 2027-05-01 | 2027-05-13 | 273, 274, 275 |  | GC1 | 8826284 |
| 277 | 37200.37400.37500.38400.39400.40800.41800.76800.1080100 | False Ceiling panel fixing | 11.25d | 2027-05-13 | 2027-05-23 | 276 |  | GC1 | 8826294 |
| 278 | 37200.37400.37500.38400.39400.40800.41800.76900 | **2nd Floor** | 423.88d | 2026-04-08 | 2027-06-04 |  | start no earlier than 2026-04-08 | GC1 | 8806204 |
| 279 | 37200.37400.37500.38400.39400.40800.41800.76900.1080200 | Block Work | 10.12d | 2026-04-08 | 2026-04-17 | 263FS+0.25d |  | GC1 | 8826304 |
| 280 | 37200.37400.37500.38400.39400.40800.41800.76900.1080300 | Door Frame Fixing | 6.75d | 2026-04-17 | 2026-04-23 | 264, 279 |  | GC1 | 8826314 |
| 281 | 37200.37400.37500.38400.39400.40800.41800.76900.1080400 | Internal Plumbing Works | 7.88d | 2026-04-17 | 2026-04-24 | 265, 279 |  | GC1 | 8826324 |
| 282 | 37200.37400.37500.38400.39400.40800.41800.76900.1080500 | Waterproofing | 10.12d | 2026-04-24 | 2026-05-03 | 266, 281 |  | GC1 | 8826334 |
| 283 | 37200.37400.37500.38400.39400.40800.41800.76900.1080600 | Internal Plaster | 5.62d | 2026-04-29 | 2026-05-04 | 267FS+0.25d, 280FS+0.25d |  | GC1 | 8826344 |
| 284 | 37200.37400.37500.38400.39400.40800.41800.76900.1080700 | IPS flooring work | 7.88d | 2026-05-03 | 2026-05-10 | 268, 280, 281, 282 |  | GC1 | 8826354 |
| 285 | 37200.37400.37500.38400.39400.40800.41800.76900.1080800 | Toilet dado work | 7.88d | 2027-03-17 | 2027-03-24 | 269, 282, 283 |  | GC1 | 8826364 |
| 286 | 37200.37400.37500.38400.39400.40800.41800.76900.1080900 | Toilet flooring work | 6.75d | 2027-03-24 | 2027-03-30 | 270, 285 |  | GC1 | 8826374 |
| 287 | 37200.37400.37500.38400.39400.40800.41800.76900.1081000 | Living dinning flooring | 10.12d | 2027-04-01 | 2027-04-10 | 271FS+0.25d, 280FS+0.25d |  | GC1 | 8826384 |
| 288 | 37200.37400.37500.38400.39400.40800.41800.76900.1081100 | Aluminium door-window fixing | 14.62d | 2027-04-24 | 2027-05-07 | 272FS+0.25d, 287FS+0.25d |  | GC1 | 8826394 |
| 289 | 37200.37400.37500.38400.39400.40800.41800.76900.1081200 | Putty primer coat | 6.75d | 2027-04-10 | 2027-04-16 | 273, 287 |  | GC1 | 8826404 |
| 290 | 37200.37400.37500.38400.39400.40800.41800.76900.1081300 | Door shutter fixing | 9d | 2027-04-10 | 2027-04-18 | 274, 287 |  | GC1 | 8826414 |
| 291 | 37200.37400.37500.38400.39400.40800.41800.76900.1081400 | Electrical wiring work | 13.5d | 2027-05-01 | 2027-05-13 | 275, 290 |  | GC1 | 8826424 |
| 292 | 37200.37400.37500.38400.39400.40800.41800.76900.1081500 | Painting 1st coat | 13.5d | 2027-05-13 | 2027-05-25 | 276, 289, 290, 291 |  | GC1 | 8826434 |
| 293 | 37200.37400.37500.38400.39400.40800.41800.76900.1081600 | False ceiling | 11.25d | 2027-05-25 | 2027-06-04 | 277, 292 |  | GC1 | 8826444 |

| ID | WBS | Task | Duration | Start | Finish | Predecessors | Constraint | Calendar | Unique_Task_ID |
| --- | --- | --- | --- | --- | --- | --- | --- | --- | --- |
| 294 | 37200.37400.37500.38400.39400.40800.41800.77000 | **3rd Floor** | 427d | 2026-04-17 | 2027-06-16 |  | start no earlier than 2026-04-17 | GC1 | 8806214 |
| 295 | 37200.37400.37500.38400.39400.40800.41800.77000.1081700 | Block Work | 10.12d | 2026-04-17 | 2026-04-26 | 279FS+0.25d |  | GC1 | 8826454 |
| 296 | 37200.37400.37500.38400.39400.40800.41800.77000.1081800 | Door Frame Fixing | 6.75d | 2026-04-26 | 2026-05-02 | 280, 295 |  | GC1 | 8826464 |
| 297 | 37200.37400.37500.38400.39400.40800.41800.77000.1081900 | Internal Plumbing Works | 7.88d | 2026-04-26 | 2026-05-03 | 281, 295 |  | GC1 | 8826474 |
| 298 | 37200.37400.37500.38400.39400.40800.41800.77000.1082000 | Waterproofing | 10.12d | 2026-05-03 | 2026-05-12 | 282, 297 |  | GC1 | 8826484 |
| 299 | 37200.37400.37500.38400.39400.40800.41800.77000.1082100 | Internal Plaster | 5.62d | 2026-05-04 | 2026-05-09 | 283FS+0.25d, 296FS+0.25d |  | GC1 | 8826494 |
| 300 | 37200.37400.37500.38400.39400.40800.41800.77000.1082200 | IPS flooring work | 7.88d | 2026-05-12 | 2026-05-19 | 284, 296, 298, 299 |  | GC1 | 8826504 |
| 301 | 37200.37400.37500.38400.39400.40800.41800.77000.1082300 | Toilet dado work | 7.88d | 2027-03-24 | 2027-03-31 | 285, 298, 299 |  | GC1 | 8826514 |
| 302 | 37200.37400.37500.38400.39400.40800.41800.77000.1082400 | Toilet flooring work | 6.75d | 2027-03-31 | 2027-04-06 | 286, 301 |  | GC1 | 8826524 |
| 303 | 37200.37400.37500.38400.39400.40800.41800.77000.1082500 | Living dinning flooring | 10.12d | 2027-04-10 | 2027-04-19 | 287FS+0.25d, 296FS+0.25d |  | GC1 | 8826534 |
| 304 | 37200.37400.37500.38400.39400.40800.41800.77000.1082600 | Aluminium door-window fixing | 14.62d | 2027-05-07 | 2027-05-20 | 288FS+0.25d, 303FS+0.25d |  | GC1 | 8826544 |
| 305 | 37200.37400.37500.38400.39400.40800.41800.77000.1082700 | Putty primer coat | 6.75d | 2027-04-19 | 2027-04-25 | 289, 303 |  | GC1 | 8826554 |
| 306 | 37200.37400.37500.38400.39400.40800.41800.77000.1082800 | Door shutter fixing | 9d | 2027-04-19 | 2027-04-27 | 290, 303 |  | GC1 | 8826564 |
| 307 | 37200.37400.37500.38400.39400.40800.41800.77000.1082900 | Electrical wiring work | 13.5d | 2027-05-13 | 2027-05-25 | 291, 306 |  | GC1 | 8826574 |
| 308 | 37200.37400.37500.38400.39400.40800.41800.77000.1083000 | Painting 1st coat | 13.5d | 2027-05-25 | 2027-06-06 | 292, 305, 306, 307 |  | GC1 | 8826584 |
| 309 | 37200.37400.37500.38400.39400.40800.41800.77000.1083100 | False ceiling | 11.25d | 2027-06-06 | 2027-06-16 | 293, 308 |  | GC1 | 8826594 |
| 310 | 37200.37400.37500.38400.39400.40800.41800.77100 | **4th Floor** | 430.12d | 2026-04-26 | 2027-06-28 |  | start no earlier than 2026-04-26 | GC1 | 8806224 |
| 311 | 37200.37400.37500.38400.39400.40800.41800.77100.1083200 | Block Work | 10.12d | 2026-04-26 | 2026-05-05 | 295FS+0.25d |  | GC1 | 8826604 |
| 312 | 37200.37400.37500.38400.39400.40800.41800.77100.1083300 | Door Frame Fixing | 6.75d | 2026-05-05 | 2026-05-11 | 296, 311 |  | GC1 | 8826614 |
| 313 | 37200.37400.37500.38400.39400.40800.41800.77100.1083400 | Internal Plumbing Works | 7.88d | 2026-05-05 | 2026-05-12 | 297, 311 |  | GC1 | 8826624 |
| 314 | 37200.37400.37500.38400.39400.40800.41800.77100.1083500 | Waterproofing | 10.12d | 2026-05-12 | 2026-05-21 | 298, 313 |  | GC1 | 8826634 |
| 315 | 37200.37400.37500.38400.39400.40800.41800.77100.1083600 | Internal Plaster | 5.62d | 2026-05-11 | 2026-05-16 | 299FS+0.25d, 312FS+0.25d |  | GC1 | 8826644 |
| 316 | 37200.37400.37500.38400.39400.40800.41800.77100.1083700 | IPS flooring work | 7.88d | 2026-05-21 | 2026-05-28 | 300, 312, 314, 315 |  | GC1 | 8826654 |
| 317 | 37200.37400.37500.38400.39400.40800.41800.77100.1083800 | Toilet dado work | 7.88d | 2027-03-31 | 2027-04-07 | 301, 314, 315 |  | GC1 | 8826664 |
| 318 | 37200.37400.37500.38400.39400.40800.41800.77100.1083900 | Toilet flooring work | 6.75d | 2027-04-07 | 2027-04-13 | 302, 317 |  | GC1 | 8826674 |
| 319 | 37200.37400.37500.38400.39400.40800.41800.77100.1084000 | Living dinning flooring | 6.75d | 2027-04-19 | 2027-04-25 | 303FS+0.25d, 312FS+0.25d |  | GC1 | 8826684 |
| 320 | 37200.37400.37500.38400.39400.40800.41800.77100.1084100 | Aluminium door-window fixing | 14.62d | 2027-05-20 | 2027-06-02 | 304FS+0.25d, 319FS+0.25d |  | GC1 | 8826694 |
| 321 | 37200.37400.37500.38400.39400.40800.41800.77100.1084200 | Putty primer coat | 6.75d | 2027-04-25 | 2027-05-01 | 305, 319 |  | GC1 | 8826704 |
| 322 | 37200.37400.37500.38400.39400.40800.41800.77100.1084300 | Door shutter fixing | 9d | 2027-04-27 | 2027-05-05 | 306, 319 |  | GC1 | 8826714 |
| 323 | 37200.37400.37500.38400.39400.40800.41800.77100.1084400 | Electrical wiring work | 13.5d | 2027-05-25 | 2027-06-06 | 307, 322 |  | GC1 | 8826724 |
| 324 | 37200.37400.37500.38400.39400.40800.41800.77100.1084500 | Painting 1st coat | 13.5d | 2027-06-06 | 2027-06-18 | 308, 321, 322, 323 |  | GC1 | 8826734 |
| 325 | 37200.37400.37500.38400.39400.40800.41800.77100.1084600 | False ceiling | 11.25d | 2027-06-18 | 2027-06-28 | 309, 324 |  | GC1 | 8826744 |

| ID | WBS | Task | Duration | Start | Finish | Predecessors | Constraint | Calendar | Unique_Task_ID |
| --- | --- | --- | --- | --- | --- | --- | --- | --- | --- |
| 326 | 37200.37400.37500.38400.39400.40800.41800.77200 | **5th Floor** | 433.25d | 2026-05-05 | 2027-07-10 |  | start no earlier than 2026-05-05 | GC1 | 8806234 |
| 327 | 37200.37400.37500.38400.39400.40800.41800.77200.1084700 | Block Work | 10.12d | 2026-05-05 | 2026-05-14 | 311FS+0.25d |  | GC1 | 8826754 |
| 328 | 37200.37400.37500.38400.39400.40800.41800.77200.1084800 | Door Frame Fixing | 6.75d | 2026-05-14 | 2026-05-20 | 312, 327 |  | GC1 | 8826764 |
| 329 | 37200.37400.37500.38400.39400.40800.41800.77200.1084900 | Internal Plumbing Works | 7.88d | 2026-05-14 | 2026-05-21 | 313, 327 |  | GC1 | 8826774 |
| 330 | 37200.37400.37500.38400.39400.40800.41800.77200.1085000 | Waterproofing | 10.12d | 2026-05-21 | 2026-05-30 | 314, 329 |  | GC1 | 8826784 |
| 331 | 37200.37400.37500.38400.39400.40800.41800.77200.1085100 | Internal Plaster | 5.62d | 2026-05-21 | 2026-05-26 | 315FS+0.25d, 328FS+0.25d |  | GC1 | 8826794 |
| 332 | 37200.37400.37500.38400.39400.40800.41800.77200.1085200 | IPS flooring work | 7.88d | 2026-05-30 | 2026-06-06 | 316, 328, 330, 331 |  | GC1 | 8826804 |
| 333 | 37200.37400.37500.38400.39400.40800.41800.77200.1085300 | Toilet dado work | 7.88d | 2027-04-07 | 2027-04-14 | 317, 330, 331 |  | GC1 | 8826814 |
| 334 | 37200.37400.37500.38400.39400.40800.41800.77200.1085400 | Toilet flooring work | 6.75d | 2027-04-14 | 2027-04-20 | 318, 333 |  | GC1 | 8826824 |
| 335 | 37200.37400.37500.38400.39400.40800.41800.77200.1085500 | Living dinning flooring | 6.75d | 2027-04-25 | 2027-05-01 | 319FS+0.25d, 328FS+0.25d |  | GC1 | 8826834 |
| 336 | 37200.37400.37500.38400.39400.40800.41800.77200.1085600 | Aluminium door-window fixing | 14.62d | 2027-06-02 | 2027-06-15 | 320FS+0.25d, 335FS+0.25d |  | GC1 | 8826844 |
| 337 | 37200.37400.37500.38400.39400.40800.41800.77200.1085700 | Putty primer coat | 6.75d | 2027-05-01 | 2027-05-07 | 321, 335 |  | GC1 | 8826854 |
| 338 | 37200.37400.37500.38400.39400.40800.41800.77200.1085800 | Door shutter fixing | 9d | 2027-05-05 | 2027-05-13 | 322, 335 |  | GC1 | 8826864 |
| 339 | 37200.37400.37500.38400.39400.40800.41800.77200.1085900 | Electrical wiring work | 13.5d | 2027-06-06 | 2027-06-18 | 323, 338 |  | GC1 | 8826874 |
| 340 | 37200.37400.37500.38400.39400.40800.41800.77200.1086000 | Painting 1st coat | 13.5d | 2027-06-18 | 2027-06-30 | 324, 337, 338, 339 |  | GC1 | 8826884 |
| 341 | 37200.37400.37500.38400.39400.40800.41800.77200.1086100 | False ceiling | 11.25d | 2027-06-30 | 2027-07-10 | 325, 340 |  | GC1 | 8826894 |
| 342 | 37200.37400.37500.38400.39400.40800.41800.77300 | **6th Floor** | 436.38d | 2026-05-15 | 2027-07-22 |  | start no earlier than 2026-05-15 | GC1 | 8806244 |
| 343 | 37200.37400.37500.38400.39400.40800.41800.77300.1086200 | Block Work | 10.12d | 2026-05-15 | 2026-05-24 | 327FS+0.25d |  | GC1 | 8826904 |
| 344 | 37200.37400.37500.38400.39400.40800.41800.77300.1086300 | Door Frame Fixing | 6.75d | 2026-05-20 | 2026-05-26 | 76, 328 |  | GC1 | 8826914 |
| 345 | 37200.37400.37500.38400.39400.40800.41800.77300.1086400 | Internal Plumbing Works | 7.88d | 2026-05-24 | 2026-05-31 | 329, 343 |  | GC1 | 8826924 |
| 346 | 37200.37400.37500.38400.39400.40800.41800.77300.1086500 | Waterproofing | 10.12d | 2026-05-31 | 2026-06-09 | 330, 345 |  | GC1 | 8826934 |
| 347 | 37200.37400.37500.38400.39400.40800.41800.77300.1086600 | Internal Plaster | 5.62d | 2026-05-27 | 2026-06-01 | 331FS+0.25d, 344FS+0.25d |  | GC1 | 8826944 |
| 348 | 37200.37400.37500.38400.39400.40800.41800.77300.1086700 | IPS flooring work | 7.88d | 2026-06-09 | 2026-06-16 | 332, 344, 346, 347 |  | GC1 | 8826954 |
| 349 | 37200.37400.37500.38400.39400.40800.41800.77300.1086800 | Toilet dado work | 7.88d | 2027-04-14 | 2027-04-21 | 333, 346, 347 |  | GC1 | 8826964 |
| 350 | 37200.37400.37500.38400.39400.40800.41800.77300.1086900 | Toilet flooring work | 6.75d | 2027-04-21 | 2027-04-27 | 334, 349 |  | GC1 | 8826974 |
| 351 | 37200.37400.37500.38400.39400.40800.41800.77300.1087000 | Living dinning flooring | 6.75d | 2027-05-02 | 2027-05-08 | 335FS+0.25d, 344FS+0.25d |  | GC1 | 8826984 |
| 352 | 37200.37400.37500.38400.39400.40800.41800.77300.1087100 | Aluminium door-window fixing | 16.88d | 2027-06-16 | 2027-07-01 | 336FS+0.25d, 351FS+0.25d |  | GC1 | 8826994 |
| 353 | 37200.37400.37500.38400.39400.40800.41800.77300.1087200 | Putty primer coat | 6.75d | 2027-05-08 | 2027-05-14 | 337, 351 |  | GC1 | 8827004 |
| 354 | 37200.37400.37500.38400.39400.40800.41800.77300.1087300 | Door shutter fixing | 9d | 2027-05-13 | 2027-05-21 | 338, 351 |  | GC1 | 8827014 |
| 355 | 37200.37400.37500.38400.39400.40800.41800.77300.1087400 | Electrical wiring work | 13.5d | 2027-06-18 | 2027-06-30 | 339, 354 |  | GC1 | 8827024 |
| 356 | 37200.37400.37500.38400.39400.40800.41800.77300.1087500 | Painting 1st coat | 13.5d | 2027-06-30 | 2027-07-12 | 340, 353, 354, 355 |  | GC1 | 8827034 |
| 357 | 37200.37400.37500.38400.39400.40800.41800.77300.1087600 | False ceiling | 11.25d | 2027-07-12 | 2027-07-22 | 341, 356 |  | GC1 | 8827044 |

| ID | WBS | Task | Duration | Start | Finish | Predecessors | Constraint | Calendar | Unique_Task_ID |
| --- | --- | --- | --- | --- | --- | --- | --- | --- | --- |
| 358 | 37200.37400.37500.38400.39400.40800.41800.77400 | **7th Floor** | 439.5d | 2026-05-24 | 2027-08-03 |  | start no earlier than 2026-05-24 | GC1 | 8806254 |
| 359 | 37200.37400.37500.38400.39400.40800.41800.77400.1087700 | Block Work | 10.12d | 2026-05-24 | 2026-06-02 | 343FS+0.25d |  | GC1 | 8827054 |
| 360 | 37200.37400.37500.38400.39400.40800.41800.77400.1087800 | Door Frame Fixing | 6.75d | 2026-06-02 | 2026-06-08 | 344, 359 |  | GC1 | 8827064 |
| 361 | 37200.37400.37500.38400.39400.40800.41800.77400.1087900 | Internal Plumbing Works | 7.88d | 2026-06-02 | 2026-06-09 | 345, 359 |  | GC1 | 8827074 |
| 362 | 37200.37400.37500.38400.39400.40800.41800.77400.1088000 | Waterproofing | 10.12d | 2026-06-09 | 2026-06-18 | 346, 361 |  | GC1 | 8827084 |
| 363 | 37200.37400.37500.38400.39400.40800.41800.77400.1088100 | Internal Plaster | 5.62d | 2026-06-08 | 2026-06-13 | 347FS+0.25d, 360FS+0.25d |  | GC1 | 8827094 |
| 364 | 37200.37400.37500.38400.39400.40800.41800.77400.1088200 | IPS flooring work | 7.88d | 2026-06-18 | 2026-06-25 | 348, 360, 362, 363 |  | GC1 | 8827104 |
| 365 | 37200.37400.37500.38400.39400.40800.41800.77400.1088300 | Toilet dado work | 7.88d | 2027-04-21 | 2027-04-28 | 349, 362, 363 |  | GC1 | 8827114 |
| 366 | 37200.37400.37500.38400.39400.40800.41800.77400.1088400 | Toilet flooring work | 6.75d | 2027-04-28 | 2027-05-04 | 350, 365 |  | GC1 | 8827124 |
| 367 | 37200.37400.37500.38400.39400.40800.41800.77400.1088500 | Living dinning flooring | 6.75d | 2027-05-08 | 2027-05-14 | 351FS+0.25d, 360FS+0.25d |  | GC1 | 8827134 |
| 368 | 37200.37400.37500.38400.39400.40800.41800.77400.1088600 | Aluminium door-window fixing | 16.88d | 2027-07-01 | 2027-07-16 | 352FS+0.25d, 367FS+0.25d |  | GC1 | 8827144 |
| 369 | 37200.37400.37500.38400.39400.40800.41800.77400.1088700 | Putty primer coat | 6.75d | 2027-05-14 | 2027-05-20 | 353, 367 |  | GC1 | 8827154 |
| 370 | 37200.37400.37500.38400.39400.40800.41800.77400.1088800 | Door shutter fixing | 9d | 2027-05-21 | 2027-05-29 | 354, 367 |  | GC1 | 8827164 |
| 371 | 37200.37400.37500.38400.39400.40800.41800.77400.1088900 | Electrical wiring work | 13.5d | 2027-06-30 | 2027-07-12 | 355, 370 |  | GC1 | 8827174 |
| 372 | 37200.37400.37500.38400.39400.40800.41800.77400.1089000 | Painting 1st coat | 13.5d | 2027-07-12 | 2027-07-24 | 356, 369, 370, 371 |  | GC1 | 8827184 |
| 373 | 37200.37400.37500.38400.39400.40800.41800.77400.1089100 | False ceiling | 11.25d | 2027-07-24 | 2027-08-03 | 357, 372 |  | GC1 | 8827194 |
| 374 | 37200.37400.37500.38400.39400.40800.41800.77500 | **8th Floor** | 442.62d | 2026-06-02 | 2027-08-15 |  | start no earlier than 2026-06-02 | GC1 | 8806264 |
| 375 | 37200.37400.37500.38400.39400.40800.41800.77500.1089200 | Block Work | 10.12d | 2026-06-02 | 2026-06-11 | 359FS+0.25d |  | GC1 | 8827204 |
| 376 | 37200.37400.37500.38400.39400.40800.41800.77500.1089300 | Door Frame Fixing | 6.75d | 2026-06-11 | 2026-06-17 | 360, 375 |  | GC1 | 8827214 |
| 377 | 37200.37400.37500.38400.39400.40800.41800.77500.1089400 | Internal Plumbing Works | 7.88d | 2026-06-11 | 2026-06-18 | 361, 375 |  | GC1 | 8827224 |
| 378 | 37200.37400.37500.38400.39400.40800.41800.77500.1089500 | Waterproofing | 10.12d | 2026-06-18 | 2026-06-27 | 362, 377 |  | GC1 | 8827234 |
| 379 | 37200.37400.37500.38400.39400.40800.41800.77500.1089600 | Internal Plaster | 5.62d | 2026-06-17 | 2026-06-22 | 363FS+0.25d, 376FS+0.25d |  | GC1 | 8827244 |
| 380 | 37200.37400.37500.38400.39400.40800.41800.77500.1089700 | IPS flooring work | 7.88d | 2026-06-27 | 2026-07-04 | 364, 376, 378, 379 |  | GC1 | 8827254 |
| 381 | 37200.37400.37500.38400.39400.40800.41800.77500.1089800 | Toilet dado work | 7.88d | 2027-04-28 | 2027-05-05 | 365, 378, 379 |  | GC1 | 8827264 |
| 382 | 37200.37400.37500.38400.39400.40800.41800.77500.1089900 | Toilet flooring work | 6.75d | 2027-05-05 | 2027-05-11 | 366, 381 |  | GC1 | 8827274 |
| 383 | 37200.37400.37500.38400.39400.40800.41800.77500.1090000 | Living dinning flooring | 6.75d | 2027-05-14 | 2027-05-20 | 367FS+0.25d, 376FS+0.25d |  | GC1 | 8827284 |
| 384 | 37200.37400.37500.38400.39400.40800.41800.77500.1090100 | Aluminium door-window fixing | 16.88d | 2027-07-16 | 2027-07-31 | 368FS+0.25d, 383FS+0.25d |  | GC1 | 8827294 |
| 385 | 37200.37400.37500.38400.39400.40800.41800.77500.1090200 | Putty primer coat | 6.75d | 2027-05-20 | 2027-05-26 | 369, 383 |  | GC1 | 8827304 |
| 386 | 37200.37400.37500.38400.39400.40800.41800.77500.1090300 | Door shutter fixing | 9d | 2027-05-29 | 2027-06-06 | 370, 383 |  | GC1 | 8827314 |
| 387 | 37200.37400.37500.38400.39400.40800.41800.77500.1090400 | Electrical wiring work | 13.5d | 2027-07-12 | 2027-07-24 | 371, 386 |  | GC1 | 8827324 |
| 388 | 37200.37400.37500.38400.39400.40800.41800.77500.1090500 | Painting 1st coat | 13.5d | 2027-07-24 | 2027-08-05 | 372, 385, 386, 387 |  | GC1 | 8827334 |
| 389 | 37200.37400.37500.38400.39400.40800.41800.77500.1090600 | False ceiling | 11.25d | 2027-08-05 | 2027-08-15 | 373, 388 |  | GC1 | 8827344 |

| ID | WBS | Task | Duration | Start | Finish | Predecessors | Constraint | Calendar | Unique_Task_ID |
| --- | --- | --- | --- | --- | --- | --- | --- | --- | --- |
| 390 | 37200.37400.37500.38400.39400.40800.41800.77600 | **9th Floor** | 445.75d | 2026-06-11 | 2027-08-27 |  | start no earlier than 2026-06-11 | GC1 | 8806274 |
| 391 | 37200.37400.37500.38400.39400.40800.41800.77600.1090700 | Block Work | 10.12d | 2026-06-11 | 2026-06-20 | 375FS+0.25d |  | GC1 | 8827354 |
| 392 | 37200.37400.37500.38400.39400.40800.41800.77600.1090800 | Door Frame Fixing | 6.75d | 2026-06-20 | 2026-06-26 | 376, 391 |  | GC1 | 8827364 |
| 393 | 37200.37400.37500.38400.39400.40800.41800.77600.1090900 | Internal Plumbing Works | 7.88d | 2026-06-20 | 2026-06-27 | 377, 391 |  | GC1 | 8827374 |
| 394 | 37200.37400.37500.38400.39400.40800.41800.77600.1091000 | Waterproofing | 10.12d | 2026-06-27 | 2026-07-06 | 378, 393 |  | GC1 | 8827384 |
| 395 | 37200.37400.37500.38400.39400.40800.41800.77600.1091100 | Internal Plaster | 5.62d | 2026-06-27 | 2026-07-02 | 379FS+0.25d, 392FS+0.25d |  | GC1 | 8827394 |
| 396 | 37200.37400.37500.38400.39400.40800.41800.77600.1091200 | IPS flooring work | 7.88d | 2026-07-06 | 2026-07-13 | 380, 392, 394, 395 |  | GC1 | 8827404 |
| 397 | 37200.37400.37500.38400.39400.40800.41800.77600.1091300 | Toilet dado work | 7.88d | 2027-05-05 | 2027-05-12 | 381, 394, 395 |  | GC1 | 8827414 |
| 398 | 37200.37400.37500.38400.39400.40800.41800.77600.1091400 | Toilet flooring work | 6.75d | 2027-05-12 | 2027-05-18 | 382, 397 |  | GC1 | 8827424 |
| 399 | 37200.37400.37500.38400.39400.40800.41800.77600.1091500 | Living dinning flooring | 10.12d | 2027-05-20 | 2027-05-29 | 383FS+0.25d, 392FS+0.25d |  | GC1 | 8827434 |
| 400 | 37200.37400.37500.38400.39400.40800.41800.77600.1091600 | Aluminium door-window fixing | 16.88d | 2027-07-31 | 2027-08-15 | 384FS+0.25d, 399FS+0.25d |  | GC1 | 8827444 |
| 401 | 37200.37400.37500.38400.39400.40800.41800.77600.1091700 | Putty primer coat | 6.75d | 2027-05-29 | 2027-06-04 | 385, 399 |  | GC1 | 8827454 |
| 402 | 37200.37400.37500.38400.39400.40800.41800.77600.1091800 | Door shutter fixing | 9d | 2027-06-06 | 2027-06-14 | 386, 399 |  | GC1 | 8827464 |
| 403 | 37200.37400.37500.38400.39400.40800.41800.77600.1091900 | Electrical wiring work | 13.5d | 2027-07-24 | 2027-08-05 | 387, 402 |  | GC1 | 8827474 |
| 404 | 37200.37400.37500.38400.39400.40800.41800.77600.1092000 | Painting 1st coat | 13.5d | 2027-08-05 | 2027-08-17 | 388, 401, 402, 403 |  | GC1 | 8827484 |
| 405 | 37200.37400.37500.38400.39400.40800.41800.77600.1092100 | False ceiling | 11.25d | 2027-08-17 | 2027-08-27 | 389, 404 |  | GC1 | 8827494 |
| 406 | 37200.37400.37500.38400.39400.40800.41800.77700 | **10th Floor** | 448.88d | 2026-06-21 | 2027-09-08 |  | start no earlier than 2026-06-21 | GC1 | 8806284 |
| 407 | 37200.37400.37500.38400.39400.40800.41800.77700.1092200 | Block Work | 10.12d | 2026-06-21 | 2026-06-30 | 391FS+0.25d |  | GC1 | 8827504 |
| 408 | 37200.37400.37500.38400.39400.40800.41800.77700.1092300 | Door Frame Fixing | 6.75d | 2026-06-30 | 2026-07-06 | 392, 407 |  | GC1 | 8827514 |
| 409 | 37200.37400.37500.38400.39400.40800.41800.77700.1092400 | Internal Plumbing Works | 7.88d | 2026-06-30 | 2026-07-07 | 393, 407 |  | GC1 | 8827524 |
| 410 | 37200.37400.37500.38400.39400.40800.41800.77700.1092500 | Waterproofing | 10.12d | 2026-07-07 | 2026-07-16 | 394, 409 |  | GC1 | 8827534 |
| 411 | 37200.37400.37500.38400.39400.40800.41800.77700.1092600 | Internal Plaster | 5.62d | 2026-07-06 | 2026-07-11 | 395FS+0.25d, 408FS+0.25d |  | GC1 | 8827544 |
| 412 | 37200.37400.37500.38400.39400.40800.41800.77700.1092700 | IPS flooring work | 7.88d | 2026-07-16 | 2026-07-23 | 396, 408, 410, 411 |  | GC1 | 8827554 |
| 413 | 37200.37400.37500.38400.39400.40800.41800.77700.1092800 | Toilet dado work | 7.88d | 2027-05-12 | 2027-05-19 | 397, 410, 411 |  | GC1 | 8827564 |
| 414 | 37200.37400.37500.38400.39400.40800.41800.77700.1092900 | Toilet flooring work | 6.75d | 2027-05-19 | 2027-05-25 | 398, 413 |  | GC1 | 8827574 |
| 415 | 37200.37400.37500.38400.39400.40800.41800.77700.1093000 | Living dinning flooring | 10.12d | 2027-05-30 | 2027-06-08 | 399FS+0.25d, 408FS+0.25d |  | GC1 | 8827584 |
| 416 | 37200.37400.37500.38400.39400.40800.41800.77700.1093100 | Aluminium door-window fixing | 16.88d | 2027-08-16 | 2027-08-31 | 400FS+0.25d, 415FS+0.25d |  | GC1 | 8827594 |
| 417 | 37200.37400.37500.38400.39400.40800.41800.77700.1093200 | Putty primer coat | 6.75d | 2027-06-08 | 2027-06-14 | 401, 415 |  | GC1 | 8827604 |
| 418 | 37200.37400.37500.38400.39400.40800.41800.77700.1093300 | Door shutter fixing | 9d | 2027-06-14 | 2027-06-22 | 402, 415 |  | GC1 | 8827614 |
| 419 | 37200.37400.37500.38400.39400.40800.41800.77700.1093400 | Electrical wiring work | 13.5d | 2027-08-05 | 2027-08-17 | 403, 418 |  | GC1 | 8827624 |
| 420 | 37200.37400.37500.38400.39400.40800.41800.77700.1093500 | Painting 1st coat | 13.5d | 2027-08-17 | 2027-08-29 | 404, 417, 418, 419 |  | GC1 | 8827634 |
| 421 | 37200.37400.37500.38400.39400.40800.41800.77700.1093600 | False ceiling | 11.25d | 2027-08-29 | 2027-09-08 | 405, 420 |  | GC1 | 8827644 |

| ID | WBS | Task | Duration | Start | Finish | Predecessors | Constraint | Calendar | Unique_Task_ID |
| --- | --- | --- | --- | --- | --- | --- | --- | --- | --- |
| 422 | 37200.37400.37500.38400.39400.40800.41800.77800 | **11th Floor** | 452d | 2026-06-30 | 2027-09-20 |  | start no earlier than 2026-06-30 | GC1 | 8806294 |
| 423 | 37200.37400.37500.38400.39400.40800.41800.77800.1093700 | Block Work | 10.12d | 2026-06-30 | 2026-07-09 | 407FS+0.25d |  | GC1 | 8827654 |
| 424 | 37200.37400.37500.38400.39400.40800.41800.77800.1093800 | Door Frame Fixing | 4.5d | 2026-07-09 | 2026-07-13 | 408, 423 |  | GC1 | 8827664 |
| 425 | 37200.37400.37500.38400.39400.40800.41800.77800.1093900 | Internal Plumbing Works | 7.88d | 2026-07-09 | 2026-07-16 | 409, 423 |  | GC1 | 8827674 |
| 426 | 37200.37400.37500.38400.39400.40800.41800.77800.1094000 | Waterproofing | 10.12d | 2026-07-16 | 2026-07-25 | 410, 425 |  | GC1 | 8827684 |
| 427 | 37200.37400.37500.38400.39400.40800.41800.77800.1094100 | Internal Plaster | 5.62d | 2026-07-13 | 2026-07-18 | 411FS+0.25d, 424FS+0.25d |  | GC1 | 8827694 |
| 428 | 37200.37400.37500.38400.39400.40800.41800.77800.1094200 | IPS flooring work | 7.88d | 2026-07-25 | 2026-08-01 | 412, 424, 425, 426 |  | GC1 | 8827704 |
| 429 | 37200.37400.37500.38400.39400.40800.41800.77800.1094300 | Toilet dado work | 7.88d | 2027-05-19 | 2027-05-26 | 413, 426, 427 |  | GC1 | 8827714 |
| 430 | 37200.37400.37500.38400.39400.40800.41800.77800.1094400 | Toilet flooring work | 6.75d | 2027-05-26 | 2027-06-01 | 414, 429 |  | GC1 | 8827724 |
| 431 | 37200.37400.37500.38400.39400.40800.41800.77800.1094500 | Living dinning flooring | 10.12d | 2027-06-08 | 2027-06-17 | 415, 424, 430 |  | GC1 | 8827734 |
| 432 | 37200.37400.37500.38400.39400.40800.41800.77800.1094600 | Aluminium door-window fixing | 16.88d | 2027-08-31 | 2027-09-15 | 416, 428, 431 |  | GC1 | 8827744 |
| 433 | 37200.37400.37500.38400.39400.40800.41800.77800.1094700 | Putty primer coat | 6.75d | 2027-06-17 | 2027-06-23 | 417, 431 |  | GC1 | 8827754 |
| 434 | 37200.37400.37500.38400.39400.40800.41800.77800.1094800 | Door shutter fixing | 9d | 2027-06-22 | 2027-06-30 | 418, 431 |  | GC1 | 8827764 |
| 435 | 37200.37400.37500.38400.39400.40800.41800.77800.1094900 | Electrical wiring work | 13.5d | 2027-08-17 | 2027-08-29 | 419, 434 |  | GC1 | 8827774 |
| 436 | 37200.37400.37500.38400.39400.40800.41800.77800.1095000 | Painting 1st coat | 13.5d | 2027-08-29 | 2027-09-10 | 420, 433, 434, 435 |  | GC1 | 8827784 |
| 437 | 37200.37400.37500.38400.39400.40800.41800.77800.1095100 | False ceiling | 11.25d | 2027-09-10 | 2027-09-20 | 421, 436 |  | GC1 | 8827794 |
| 438 | 37200.37400.37500.38400.39400.40800.41800.77900 | **12th Floor** | 455.12d | 2026-07-09 | 2027-10-02 |  | start no earlier than 2026-07-09 | GC1 | 8806304 |
| 439 | 37200.37400.37500.38400.39400.40800.41800.77900.1095200 | Block Work | 10.12d | 2026-07-09 | 2026-07-18 | 423FS+0.25d |  | GC1 | 8827804 |
| 440 | 37200.37400.37500.38400.39400.40800.41800.77900.1095300 | Door Frame Fixing | 6.75d | 2026-07-18 | 2026-07-24 | 424, 439 |  | GC1 | 8827814 |
| 441 | 37200.37400.37500.38400.39400.40800.41800.77900.1095400 | Internal Plumbing Works | 9d | 2026-07-18 | 2026-07-26 | 425, 439 |  | GC1 | 8827824 |
| 442 | 37200.37400.37500.38400.39400.40800.41800.77900.1095500 | Waterproofing | 11.25d | 2026-07-26 | 2026-08-05 | 426, 441 |  | GC1 | 8827834 |
| 443 | 37200.37400.37500.38400.39400.40800.41800.77900.1095600 | Internal Plaster | 9d | 2026-08-05 | 2026-08-13 | 427, 440, 441, 442 |  | GC1 | 8827844 |
| 444 | 37200.37400.37500.38400.39400.40800.41800.77900.1095700 | IPS flooring work | 9d | 2026-08-05 | 2026-08-13 | 428, 440, 441, 442 |  | GC1 | 8827854 |
| 445 | 37200.37400.37500.38400.39400.40800.41800.77900.1095800 | Toilet dado work | 9d | 2027-05-26 | 2027-06-03 | 429, 442, 443 |  | GC1 | 8827864 |
| 446 | 37200.37400.37500.38400.39400.40800.41800.77900.1095900 | Toilet flooring work | 7.88d | 2027-06-03 | 2027-06-10 | 430, 445 |  | GC1 | 8827874 |
| 447 | 37200.37400.37500.38400.39400.40800.41800.77900.1096000 | Living dinning flooring | 11.25d | 2027-06-17 | 2027-06-27 | 431, 440, 446 |  | GC1 | 8827884 |
| 448 | 37200.37400.37500.38400.39400.40800.41800.77900.1096100 | Aluminium door-window fixing | 13.5d | 2027-09-15 | 2027-09-27 | 432, 444, 447 |  | GC1 | 8827894 |
| 449 | 37200.37400.37500.38400.39400.40800.41800.77900.1096200 | Putty primer coat | 6.75d | 2027-06-27 | 2027-07-03 | 433, 447 |  | GC1 | 8827904 |
| 450 | 37200.37400.37500.38400.39400.40800.41800.77900.1096300 | Door shutter fixing | 9d | 2027-06-30 | 2027-07-08 | 434, 447 |  | GC1 | 8827914 |
| 451 | 37200.37400.37500.38400.39400.40800.41800.77900.1096400 | Electrical wiring work | 13.5d | 2027-08-29 | 2027-09-10 | 435, 450 |  | GC1 | 8827924 |
| 452 | 37200.37400.37500.38400.39400.40800.41800.77900.1096500 | Painting 1st coat | 13.5d | 2027-09-10 | 2027-09-22 | 436, 449, 450, 451 |  | GC1 | 8827934 |
| 453 | 37200.37400.37500.38400.39400.40800.41800.77900.1096600 | False ceiling | 11.25d | 2027-09-22 | 2027-10-02 | 437, 452 |  | GC1 | 8827944 |

| ID | WBS | Task | Duration | Start | Finish | Predecessors | Constraint | Calendar | Unique_Task_ID |
| --- | --- | --- | --- | --- | --- | --- | --- | --- | --- |
| 454 | 37200.37400.37500.38400.39400.40800.41800.78000 | **13th Floor** | 434.25d | 2026-08-09 | 2027-10-14 |  | start no earlier than 2026-08-09 | GC1 | 8806314 |
| 455 | 37200.37400.37500.38400.39400.40800.41800.78000.1096700 | Block Work | 4.5d | 2026-08-09 | 2026-08-13 | 235, 439 |  | GC1 | 8827954 |
| 456 | 37200.37400.37500.38400.39400.40800.41800.78000.1096800 | Door Frame Fixing | 10.12d | 2026-08-13 | 2026-08-22 | 440, 455 |  | GC1 | 8827964 |
| 457 | 37200.37400.37500.38400.39400.40800.41800.78000.1096900 | Internal Plumbing Works | 11.25d | 2026-08-13 | 2026-08-23 | 441, 455 |  | GC1 | 8827974 |
| 458 | 37200.37400.37500.38400.39400.40800.41800.78000.1097000 | Waterproofing | 13.5d | 2026-08-23 | 2026-09-04 | 442, 457 |  | GC1 | 8827984 |
| 459 | 37200.37400.37500.38400.39400.40800.41800.78000.1097100 | Internal Plaster | 10.12d | 2026-09-04 | 2026-09-13 | 443, 456, 457, 458 |  | GC1 | 8827994 |
| 460 | 37200.37400.37500.38400.39400.40800.41800.78000.1097200 | IPS flooring work | 10.12d | 2026-09-13 | 2026-09-22 | 444, 456, 458, 459 |  | GC1 | 8828004 |
| 461 | 37200.37400.37500.38400.39400.40800.41800.78000.1097300 | Toilet dado work | 9d | 2027-06-03 | 2027-06-11 | 445, 458, 459 |  | GC1 | 8828014 |
| 462 | 37200.37400.37500.38400.39400.40800.41800.78000.1097400 | Toilet flooring work | 7.88d | 2027-06-11 | 2027-06-18 | 446, 461 |  | GC1 | 8828024 |
| 463 | 37200.37400.37500.38400.39400.40800.41800.78000.1097500 | Living dinning flooring | 16.88d | 2027-06-27 | 2027-07-12 | 447, 456, 462 |  | GC1 | 8828034 |
| 464 | 37200.37400.37500.38400.39400.40800.41800.78000.1097600 | Aluminium door-window fixing | 16.88d | 2027-09-27 | 2027-10-12 | 448, 460, 463 |  | GC1 | 8828044 |
| 465 | 37200.37400.37500.38400.39400.40800.41800.78000.1097700 | Putty primer coat | 6.75d | 2027-07-12 | 2027-07-18 | 449, 463 |  | GC1 | 8828054 |
| 466 | 37200.37400.37500.38400.39400.40800.41800.78000.1097800 | Door shutter fixing | 9d | 2027-07-12 | 2027-07-20 | 450, 463 |  | GC1 | 8828064 |
| 467 | 37200.37400.37500.38400.39400.40800.41800.78000.1097900 | Electrical wiring work | 13.5d | 2027-09-10 | 2027-09-22 | 451, 466 |  | GC1 | 8828074 |
| 468 | 37200.37400.37500.38400.39400.40800.41800.78000.1098000 | Painting 1st coat | 13.5d | 2027-09-22 | 2027-10-04 | 452, 465, 466, 467 |  | GC1 | 8828084 |
| 469 | 37200.37400.37500.38400.39400.40800.41800.78000.1098100 | False ceiling | 11.25d | 2027-10-04 | 2027-10-14 | 453, 468 |  | GC1 | 8828094 |
| 470 | 37200.37400.37500.38400.39400.40800.41800.78100 | **14th Floor** | 435.38d | 2026-08-21 | 2027-10-27 |  | start no earlier than 2026-08-21 | GC1 | 8806324 |
| 471 | 37200.37400.37500.38400.39400.40800.41800.78100.1098200 | Block Work | 4.5d | 2026-08-21 | 2026-08-25 | 236, 455 |  | GC1 | 8828104 |
| 472 | 37200.37400.37500.38400.39400.40800.41800.78100.1098300 | Door Frame Fixing | 10.12d | 2026-08-25 | 2026-09-03 | 456, 471 |  | GC1 | 8828114 |
| 473 | 37200.37400.37500.38400.39400.40800.41800.78100.1098400 | Internal Plumbing Works | 11.25d | 2026-08-25 | 2026-09-04 | 457, 471 |  | GC1 | 8828124 |
| 474 | 37200.37400.37500.38400.39400.40800.41800.78100.1098500 | Waterproofing | 13.5d | 2026-09-04 | 2026-09-16 | 458, 473 |  | GC1 | 8828134 |
| 475 | 37200.37400.37500.38400.39400.40800.41800.78100.1098600 | Internal Plaster | 10.12d | 2026-09-16 | 2026-09-25 | 459, 472, 473, 474 |  | GC1 | 8828144 |
| 476 | 37200.37400.37500.38400.39400.40800.41800.78100.1098700 | IPS flooring work | 10.12d | 2026-09-22 | 2026-10-01 | 460, 472, 473, 474 |  | GC1 | 8828154 |
| 477 | 37200.37400.37500.38400.39400.40800.41800.78100.1098800 | Toilet dado work | 9d | 2027-06-11 | 2027-06-19 | 461, 474, 475 |  | GC1 | 8828164 |
| 478 | 37200.37400.37500.38400.39400.40800.41800.78100.1098900 | Toilet flooring work | 7.88d | 2027-06-19 | 2027-06-26 | 462, 477 |  | GC1 | 8828174 |
| 479 | 37200.37400.37500.38400.39400.40800.41800.78100.1099000 | Living dinning flooring | 16.88d | 2027-07-12 | 2027-07-27 | 463, 472, 478 |  | GC1 | 8828184 |
| 480 | 37200.37400.37500.38400.39400.40800.41800.78100.1099100 | Aluminium door-window fixing | 16.88d | 2027-10-12 | 2027-10-27 | 464, 476, 479 |  | GC1 | 8828194 |
| 481 | 37200.37400.37500.38400.39400.40800.41800.78100.1099200 | Putty primer coat | 6.75d | 2027-07-27 | 2027-08-02 | 465, 479 |  | GC1 | 8828204 |
| 482 | 37200.37400.37500.38400.39400.40800.41800.78100.1099300 | Door shutter fixing | 9d | 2027-07-27 | 2027-08-04 | 466, 479 |  | GC1 | 8828214 |
| 483 | 37200.37400.37500.38400.39400.40800.41800.78100.1099400 | Electrical wiring work | 13.5d | 2027-09-22 | 2027-10-04 | 467, 482 |  | GC1 | 8828224 |
| 484 | 37200.37400.37500.38400.39400.40800.41800.78100.1099500 | Painting 1st coat | 13.5d | 2027-10-04 | 2027-10-16 | 468, 481, 482, 483 |  | GC1 | 8828234 |
| 485 | 37200.37400.37500.38400.39400.40800.41800.78100.1099600 | False ceiling | 11.25d | 2027-10-16 | 2027-10-26 | 469, 484 |  | GC1 | 8828244 |

| ID | WBS | Task | Duration | Start | Finish | Predecessors | Constraint | Calendar | Unique_Task_ID |
| --- | --- | --- | --- | --- | --- | --- | --- | --- | --- |
| 486 | 37200.37400.37500.38400.39400.40800.41800.78200 | **15th Floor** | 435.38d | 2026-09-02 | 2027-12-23 |  | start no earlier than 2026-09-02 | GC1 | 8806334 |
| 487 | 37200.37400.37500.38400.39400.40800.41800.78200.1099700 | Block Work | 9d | 2026-09-02 | 2026-09-10 | 237, 471 |  | GC1 | 8828254 |
| 488 | 37200.37400.37500.38400.39400.40800.41800.78200.1099800 | Door Frame Fixing | 10.12d | 2026-09-10 | 2026-09-19 | 472, 487 |  | GC1 | 8828264 |
| 489 | 37200.37400.37500.38400.39400.40800.41800.78200.1099900 | Internal Plumbing Works | 11.25d | 2026-09-10 | 2026-09-20 | 473, 487 |  | GC1 | 8828274 |
| 490 | 37200.37400.37500.38400.39400.40800.41800.78200.1100000 | Waterproofing | 13.5d | 2026-09-20 | 2026-10-02 | 474, 489 |  | GC1 | 8828284 |
| 491 | 37200.37400.37500.38400.39400.40800.41800.78200.1100100 | Internal Plaster | 10.12d | 2026-10-02 | 2026-10-11 | 475, 488, 489, 490 |  | GC1 | 8828294 |
| 492 | 37200.37400.37500.38400.39400.40800.41800.78200.1100200 | IPS flooring work | 10.12d | 2026-10-02 | 2026-10-11 | 476, 488, 489, 490 |  | GC1 | 8828304 |
| 493 | 37200.37400.37500.38400.39400.40800.41800.78200.1100300 | Toilet dado work | 9d | 2027-06-19 | 2027-06-27 | 477, 490, 491 |  | GC1 | 8828314 |
| 494 | 37200.37400.37500.38400.39400.40800.41800.78200.1100400 | Toilet flooring work | 7.88d | 2027-06-27 | 2027-07-04 | 478, 493 |  | GC1 | 8828324 |
| 495 | 37200.37400.37500.38400.39400.40800.41800.78200.1100500 | Living dinning flooring | 13.5d | 2027-07-27 | 2027-08-08 | 479, 488, 494 |  | GC1 | 8828334 |
| 496 | 37200.37400.37500.38400.39400.40800.41800.78200.1100600 | Aluminium door-window fixing | 13.5d | 2027-10-27 | 2027-12-23 | 480, 492, 495 |  | GC1 | 8828344 |
| 497 | 37200.37400.37500.38400.39400.40800.41800.78200.1100700 | Putty primer coat | 6.75d | 2027-08-08 | 2027-08-14 | 481, 495 |  | GC1 | 8828354 |
| 498 | 37200.37400.37500.38400.39400.40800.41800.78200.1100800 | Door shutter fixing | 9d | 2027-08-08 | 2027-08-16 | 482, 495 |  | GC1 | 8828364 |
| 499 | 37200.37400.37500.38400.39400.40800.41800.78200.1100900 | Electrical wiring work | 13.5d | 2027-10-04 | 2027-10-16 | 483, 498 |  | GC1 | 8828374 |
| 500 | 37200.37400.37500.38400.39400.40800.41800.78200.1101000 | Painting 1st coat | 13.5d | 2027-10-16 | 2027-10-28 | 484, 497, 498, 499 |  | GC1 | 8828384 |
| 501 | 37200.37400.37500.38400.39400.40800.41800.78200.1101100 | False ceiling | 11.25d | 2027-10-28 | 2027-12-22 | 485, 500 |  | GC1 | 8828394 |
| 502 | 37200.37400.37500.38400.39400.40800.41800.78300 | **16th Floor** | 435.38d | 2026-09-14 | 2028-01-04 |  | start no earlier than 2026-09-14 | GC1 | 8806344 |
| 503 | 37200.37400.37500.38400.39400.40800.41800.78300.1101200 | Block Work | 9d | 2026-09-14 | 2026-09-22 | 238, 487 |  | GC1 | 8828404 |
| 504 | 37200.37400.37500.38400.39400.40800.41800.78300.1101300 | Door Frame Fixing | 10.12d | 2026-09-22 | 2026-10-01 | 488, 503 |  | GC1 | 8828414 |
| 505 | 37200.37400.37500.38400.39400.40800.41800.78300.1101400 | Internal Plumbing Works | 11.25d | 2026-09-22 | 2026-10-02 | 489, 503 |  | GC1 | 8828424 |
| 506 | 37200.37400.37500.38400.39400.40800.41800.78300.1101500 | Waterproofing | 13.5d | 2026-10-02 | 2026-10-14 | 490, 505 |  | GC1 | 8828434 |
| 507 | 37200.37400.37500.38400.39400.40800.41800.78300.1101600 | Internal Plaster | 10.12d | 2026-10-14 | 2026-10-23 | 491, 504, 505, 506 |  | GC1 | 8828444 |
| 508 | 37200.37400.37500.38400.39400.40800.41800.78300.1101700 | IPS flooring work | 10.12d | 2026-10-14 | 2026-10-23 | 492, 504, 505, 506 |  | GC1 | 8828454 |
| 509 | 37200.37400.37500.38400.39400.40800.41800.78300.1101800 | Toilet dado work | 9d | 2027-06-27 | 2027-07-05 | 493, 506, 507 |  | GC1 | 8828464 |
| 510 | 37200.37400.37500.38400.39400.40800.41800.78300.1101900 | Toilet flooring work | 7.88d | 2027-07-05 | 2027-07-12 | 494, 509 |  | GC1 | 8828474 |
| 511 | 37200.37400.37500.38400.39400.40800.41800.78300.1102000 | Living dinning flooring | 13.5d | 2027-08-08 | 2027-08-20 | 495, 504, 510 |  | GC1 | 8828484 |
| 512 | 37200.37400.37500.38400.39400.40800.41800.78300.1102100 | Aluminium door-window fixing | 13.5d | 2027-12-23 | 2028-01-04 | 496, 508, 511 |  | GC1 | 8828494 |
| 513 | 37200.37400.37500.38400.39400.40800.41800.78300.1102200 | Putty primer coat | 6.75d | 2027-08-20 | 2027-08-26 | 497, 511 |  | GC1 | 8828504 |
| 514 | 37200.37400.37500.38400.39400.40800.41800.78300.1102300 | Door shutter fixing | 9d | 2027-08-20 | 2027-08-28 | 498, 511 |  | GC1 | 8828514 |
| 515 | 37200.37400.37500.38400.39400.40800.41800.78300.1102400 | Electrical wiring work | 13.5d | 2027-10-16 | 2027-10-28 | 499, 514 |  | GC1 | 8828524 |
| 516 | 37200.37400.37500.38400.39400.40800.41800.78300.1102500 | Painting 1st coat | 13.5d | 2027-10-28 | 2027-12-24 | 500, 513, 514, 515 |  | GC1 | 8828534 |
| 517 | 37200.37400.37500.38400.39400.40800.41800.78300.1102600 | False ceiling | 11.25d | 2027-12-24 | 2028-01-03 | 501, 516 |  | GC1 | 8828544 |

| ID | WBS | Task | Duration | Start | Finish | Predecessors | Constraint | Calendar | Unique_Task_ID |
| --- | --- | --- | --- | --- | --- | --- | --- | --- | --- |
| 518 | 37200.37400.37500.38400.39400.40800.41800.78400 | **17th Floor** | 435.38d | 2026-09-26 | 2028-01-16 |  | start no earlier than 2026-09-26 | GC1 | 8806354 |
| 519 | 37200.37400.37500.38400.39400.40800.41800.78400.1102700 | Block Work | 9d | 2026-09-26 | 2026-10-04 | 239, 503 |  | GC1 | 8828554 |
| 520 | 37200.37400.37500.38400.39400.40800.41800.78400.1102800 | Door Frame Fixing | 10.12d | 2026-10-04 | 2026-10-13 | 504, 519 |  | GC1 | 8828564 |
| 521 | 37200.37400.37500.38400.39400.40800.41800.78400.1102900 | Internal Plumbing Works | 11.25d | 2026-10-04 | 2026-10-14 | 505, 519 |  | GC1 | 8828574 |
| 522 | 37200.37400.37500.38400.39400.40800.41800.78400.1103000 | Waterproofing | 13.5d | 2026-10-14 | 2026-10-26 | 506, 521 |  | GC1 | 8828584 |
| 523 | 37200.37400.37500.38400.39400.40800.41800.78400.1103100 | Internal Plaster | 10.12d | 2026-10-26 | 2026-12-19 | 507, 520, 521, 522 |  | GC1 | 8828594 |
| 524 | 37200.37400.37500.38400.39400.40800.41800.78400.1103200 | IPS flooring work | 10.12d | 2026-10-26 | 2026-12-19 | 508, 520, 521, 522 |  | GC1 | 8828604 |
| 525 | 37200.37400.37500.38400.39400.40800.41800.78400.1103300 | Toilet dado work | 9d | 2027-07-05 | 2027-07-13 | 509, 522, 523 |  | GC1 | 8828614 |
| 526 | 37200.37400.37500.38400.39400.40800.41800.78400.1103400 | Toilet flooring work | 7.88d | 2027-07-13 | 2027-07-20 | 510, 525 |  | GC1 | 8828624 |
| 527 | 37200.37400.37500.38400.39400.40800.41800.78400.1103500 | Living dinning flooring | 13.5d | 2027-08-20 | 2027-09-01 | 511, 520, 526 |  | GC1 | 8828634 |
| 528 | 37200.37400.37500.38400.39400.40800.41800.78400.1103600 | Aluminium door-window fixing | 13.5d | 2028-01-04 | 2028-01-16 | 512, 524, 527 |  | GC1 | 8828644 |
| 529 | 37200.37400.37500.38400.39400.40800.41800.78400.1103700 | Putty primer coat | 6.75d | 2027-09-01 | 2027-09-07 | 513, 527 |  | GC1 | 8828654 |
| 530 | 37200.37400.37500.38400.39400.40800.41800.78400.1103800 | Door shutter fixing | 9d | 2027-09-01 | 2027-09-09 | 514, 527 |  | GC1 | 8828664 |
| 531 | 37200.37400.37500.38400.39400.40800.41800.78400.1103900 | Electrical wiring work | 13.5d | 2027-10-28 | 2027-12-24 | 515, 530 |  | GC1 | 8828674 |
| 532 | 37200.37400.37500.38400.39400.40800.41800.78400.1104000 | Painting 1st coat | 13.5d | 2027-12-24 | 2028-01-05 | 516, 529, 530, 531 |  | GC1 | 8828684 |
| 533 | 37200.37400.37500.38400.39400.40800.41800.78400.1104100 | False ceiling | 11.25d | 2028-01-05 | 2028-01-15 | 517, 532 |  | GC1 | 8828694 |
| 534 | 37200.37400.37500.38400.39400.40800.41800.78500 | **18th Floor** | 435.38d | 2026-10-08 | 2028-01-28 |  | start no earlier than 2026-10-08 | GC1 | 8806364 |
| 535 | 37200.37400.37500.38400.39400.40800.41800.78500.1104200 | Block Work | 9d | 2026-10-08 | 2026-10-16 | 240, 519 |  | GC1 | 8828704 |
| 536 | 37200.37400.37500.38400.39400.40800.41800.78500.1104300 | Door Frame Fixing | 10.12d | 2026-10-16 | 2026-10-25 | 520, 535 |  | GC1 | 8828714 |
| 537 | 37200.37400.37500.38400.39400.40800.41800.78500.1104400 | Internal Plumbing Works | 11.25d | 2026-10-16 | 2026-10-26 | 521, 535 |  | GC1 | 8828724 |
| 538 | 37200.37400.37500.38400.39400.40800.41800.78500.1104500 | Waterproofing | 13.5d | 2026-10-26 | 2026-12-22 | 522, 537 |  | GC1 | 8828734 |
| 539 | 37200.37400.37500.38400.39400.40800.41800.78500.1104600 | Internal Plaster | 10.12d | 2026-12-22 | 2026-12-31 | 523, 536, 537, 538 |  | GC1 | 8828744 |
| 540 | 37200.37400.37500.38400.39400.40800.41800.78500.1104700 | IPS flooring work | 10.12d | 2026-12-22 | 2026-12-31 | 524, 536, 537, 538 |  | GC1 | 8828754 |
| 541 | 37200.37400.37500.38400.39400.40800.41800.78500.1104800 | Toilet dado work | 9d | 2027-07-13 | 2027-07-21 | 525, 538, 539 |  | GC1 | 8828764 |
| 542 | 37200.37400.37500.38400.39400.40800.41800.78500.1104900 | Toilet flooring work | 7.88d | 2027-07-21 | 2027-07-28 | 526, 541 |  | GC1 | 8828774 |
| 543 | 37200.37400.37500.38400.39400.40800.41800.78500.1105000 | Living dinning flooring | 13.5d | 2027-09-01 | 2027-09-13 | 527, 536, 542 |  | GC1 | 8828784 |
| 544 | 37200.37400.37500.38400.39400.40800.41800.78500.1105100 | Aluminium door-window fixing | 13.5d | 2028-01-16 | 2028-01-28 | 528, 540, 543 |  | GC1 | 8828794 |
| 545 | 37200.37400.37500.38400.39400.40800.41800.78500.1105200 | Putty primer coat | 6.75d | 2027-09-13 | 2027-09-19 | 529, 543 |  | GC1 | 8828804 |
| 546 | 37200.37400.37500.38400.39400.40800.41800.78500.1105300 | Door shutter fixing | 9d | 2027-09-13 | 2027-09-21 | 530, 543 |  | GC1 | 8828814 |
| 547 | 37200.37400.37500.38400.39400.40800.41800.78500.1105400 | Electrical wiring work | 13.5d | 2027-12-24 | 2028-01-05 | 531, 546 |  | GC1 | 8828824 |
| 548 | 37200.37400.37500.38400.39400.40800.41800.78500.1105500 | Painting 1st coat | 13.5d | 2028-01-05 | 2028-01-17 | 532, 545, 546, 547 |  | GC1 | 8828834 |
| 549 | 37200.37400.37500.38400.39400.40800.41800.78500.1105600 | False ceiling | 11.25d | 2028-01-17 | 2028-01-27 | 533, 548 |  | GC1 | 8828844 |

| ID | WBS | Task | Duration | Start | Finish | Predecessors | Constraint | Calendar | Unique_Task_ID |
| --- | --- | --- | --- | --- | --- | --- | --- | --- | --- |
| 550 | 37200.37400.37500.38400.39400.40800.41800.78600 | **19th Floor** | 435.38d | 2026-10-20 | 2028-02-09 |  | start no earlier than 2026-10-20 | GC1 | 8806374 |
| 551 | 37200.37400.37500.38400.39400.40800.41800.78600.1105700 | Block Work | 9d | 2026-10-20 | 2026-10-28 | 241, 535 |  | GC1 | 8828854 |
| 552 | 37200.37400.37500.38400.39400.40800.41800.78600.1105800 | Door Frame Fixing | 10.12d | 2026-10-28 | 2026-12-21 | 536, 551 |  | GC1 | 8828864 |
| 553 | 37200.37400.37500.38400.39400.40800.41800.78600.1105900 | Internal Plumbing Works | 11.25d | 2026-10-28 | 2026-12-22 | 537, 551 |  | GC1 | 8828874 |
| 554 | 37200.37400.37500.38400.39400.40800.41800.78600.1106000 | Waterproofing | 13.5d | 2026-12-22 | 2027-01-03 | 538, 553 |  | GC1 | 8828884 |
| 555 | 37200.37400.37500.38400.39400.40800.41800.78600.1106100 | Internal Plaster | 10.12d | 2027-01-03 | 2027-01-12 | 539, 552, 553, 554 |  | GC1 | 8828894 |
| 556 | 37200.37400.37500.38400.39400.40800.41800.78600.1106200 | IPS flooring work | 10.12d | 2027-01-12 | 2027-01-21 | 540, 552, 554, 555 |  | GC1 | 8828904 |
| 557 | 37200.37400.37500.38400.39400.40800.41800.78600.1106300 | Toilet dado work | 9d | 2027-07-21 | 2027-07-29 | 541, 554, 555 |  | GC1 | 8828914 |
| 558 | 37200.37400.37500.38400.39400.40800.41800.78600.1106400 | Toilet flooring work | 7.88d | 2027-07-29 | 2027-08-05 | 542, 557 |  | GC1 | 8828924 |
| 559 | 37200.37400.37500.38400.39400.40800.41800.78600.1106500 | Living dinning flooring | 13.5d | 2027-09-13 | 2027-09-25 | 543, 552, 558 |  | GC1 | 8828934 |
| 560 | 37200.37400.37500.38400.39400.40800.41800.78600.1106600 | Aluminium door-window fixing | 13.5d | 2028-01-28 | 2028-02-09 | 544, 556, 559 |  | GC1 | 8828944 |
| 561 | 37200.37400.37500.38400.39400.40800.41800.78600.1106700 | Putty primer coat | 6.75d | 2027-09-25 | 2027-10-01 | 545, 559 |  | GC1 | 8828954 |
| 562 | 37200.37400.37500.38400.39400.40800.41800.78600.1106800 | Door shutter fixing | 9d | 2027-09-25 | 2027-10-03 | 546, 559 |  | GC1 | 8828964 |
| 563 | 37200.37400.37500.38400.39400.40800.41800.78600.1106900 | Electrical wiring work | 13.5d | 2028-01-05 | 2028-01-17 | 547, 562 |  | GC1 | 8828974 |
| 564 | 37200.37400.37500.38400.39400.40800.41800.78600.1107000 | Painting 1st coat | 13.5d | 2028-01-17 | 2028-01-29 | 548, 561, 562, 563 |  | GC1 | 8828984 |
| 565 | 37200.37400.37500.38400.39400.40800.41800.78600.1107100 | False ceiling | 11.25d | 2028-01-29 | 2028-02-08 | 549, 564 |  | GC1 | 8828994 |
| 566 | 37200.37400.37500.38400.39400.40800.41800.78700 | **20th Floor** | 435.38d | 2026-12-16 | 2028-02-21 |  | start no earlier than 2026-12-16 | GC1 | 8806384 |
| 567 | 37200.37400.37500.38400.39400.40800.41800.78700.1107200 | Block Work | 9d | 2026-12-16 | 2026-12-24 | 242, 551 |  | GC1 | 8829004 |
| 568 | 37200.37400.37500.38400.39400.40800.41800.78700.1107300 | Door Frame Fixing | 10.12d | 2026-12-24 | 2027-01-02 | 552, 567 |  | GC1 | 8829014 |
| 569 | 37200.37400.37500.38400.39400.40800.41800.78700.1107400 | Internal Plumbing Works | 11.25d | 2026-12-24 | 2027-01-03 | 553, 567 |  | GC1 | 8829024 |
| 570 | 37200.37400.37500.38400.39400.40800.41800.78700.1107500 | Waterproofing | 13.5d | 2027-01-03 | 2027-01-15 | 554, 569 |  | GC1 | 8829034 |
| 571 | 37200.37400.37500.38400.39400.40800.41800.78700.1107600 | Internal Plaster | 10.12d | 2027-01-15 | 2027-01-24 | 555, 568, 569, 570 |  | GC1 | 8829044 |
| 572 | 37200.37400.37500.38400.39400.40800.41800.78700.1107700 | IPS flooring work | 10.12d | 2027-01-24 | 2027-02-02 | 556, 568, 570, 571 |  | GC1 | 8829054 |
| 573 | 37200.37400.37500.38400.39400.40800.41800.78700.1107800 | Toilet dado work | 9d | 2027-07-29 | 2027-08-06 | 557, 570, 571 |  | GC1 | 8829064 |
| 574 | 37200.37400.37500.38400.39400.40800.41800.78700.1107900 | Toilet flooring work | 7.88d | 2027-08-06 | 2027-08-13 | 558, 573 |  | GC1 | 8829074 |
| 575 | 37200.37400.37500.38400.39400.40800.41800.78700.1108000 | Living dinning flooring | 13.5d | 2027-09-25 | 2027-10-07 | 559, 568, 574 |  | GC1 | 8829084 |
| 576 | 37200.37400.37500.38400.39400.40800.41800.78700.1108100 | Aluminium door-window fixing | 13.5d | 2028-02-09 | 2028-02-21 | 560, 572, 575 |  | GC1 | 8829094 |
| 577 | 37200.37400.37500.38400.39400.40800.41800.78700.1108200 | Putty primer coat | 6.75d | 2027-10-07 | 2027-10-13 | 561, 575 |  | GC1 | 8829104 |
| 578 | 37200.37400.37500.38400.39400.40800.41800.78700.1108300 | Door shutter fixing | 9d | 2027-10-07 | 2027-10-15 | 562, 575 |  | GC1 | 8829114 |
| 579 | 37200.37400.37500.38400.39400.40800.41800.78700.1108400 | Electrical wiring work | 13.5d | 2028-01-17 | 2028-01-29 | 563, 578 |  | GC1 | 8829124 |
| 580 | 37200.37400.37500.38400.39400.40800.41800.78700.1108500 | Painting 1st coat | 13.5d | 2028-01-29 | 2028-02-10 | 564, 577, 578, 579 |  | GC1 | 8829134 |
| 581 | 37200.37400.37500.38400.39400.40800.41800.78700.1108600 | False ceiling | 11.25d | 2028-02-10 | 2028-02-20 | 565, 580 |  | GC1 | 8829144 |

| ID | WBS | Task | Duration | Start | Finish | Predecessors | Constraint | Calendar | Unique_Task_ID |
| --- | --- | --- | --- | --- | --- | --- | --- | --- | --- |
| 582 | 37200.37400.37500.38400.39400.40800.41800.78800 | **21st Floor** | 435.38d | 2026-12-28 | 2028-03-04 |  | start no earlier than 2026-12-28 | GC1 | 8806394 |
| 583 | 37200.37400.37500.38400.39400.40800.41800.78800.1108700 | Block Work | 9d | 2026-12-28 | 2027-01-05 | 243, 567 |  | GC1 | 8829154 |
| 584 | 37200.37400.37500.38400.39400.40800.41800.78800.1108800 | Door Frame Fixing | 10.12d | 2027-01-05 | 2027-01-14 | 568, 583 |  | GC1 | 8829164 |
| 585 | 37200.37400.37500.38400.39400.40800.41800.78800.1108900 | Internal Plumbing Works | 11.25d | 2027-01-05 | 2027-01-15 | 569, 583 |  | GC1 | 8829174 |
| 586 | 37200.37400.37500.38400.39400.40800.41800.78800.1109000 | Waterproofing | 13.5d | 2027-01-15 | 2027-01-27 | 570, 585 |  | GC1 | 8829184 |
| 587 | 37200.37400.37500.38400.39400.40800.41800.78800.1109100 | Internal Plaster | 10.12d | 2027-01-27 | 2027-02-05 | 571, 584, 585, 586 |  | GC1 | 8829194 |
| 588 | 37200.37400.37500.38400.39400.40800.41800.78800.1109200 | IPS flooring work | 10.12d | 2027-02-05 | 2027-02-14 | 572, 584, 586, 587 |  | GC1 | 8829204 |
| 589 | 37200.37400.37500.38400.39400.40800.41800.78800.1109300 | Toilet dado work | 9d | 2027-08-06 | 2027-08-14 | 573, 586, 587 |  | GC1 | 8829214 |
| 590 | 37200.37400.37500.38400.39400.40800.41800.78800.1109400 | Toilet flooring work | 7.88d | 2027-08-14 | 2027-08-21 | 574, 589 |  | GC1 | 8829224 |
| 591 | 37200.37400.37500.38400.39400.40800.41800.78800.1109500 | Living dinning flooring | 13.5d | 2027-10-07 | 2027-10-19 | 575, 584, 590 |  | GC1 | 8829234 |
| 592 | 37200.37400.37500.38400.39400.40800.41800.78800.1109600 | Aluminium door-window fixing | 13.5d | 2028-02-21 | 2028-03-04 | 576, 588, 591 |  | GC1 | 8829244 |
| 593 | 37200.37400.37500.38400.39400.40800.41800.78800.1109700 | Putty primer coat | 6.75d | 2027-10-19 | 2027-10-25 | 577, 591 |  | GC1 | 8829254 |
| 594 | 37200.37400.37500.38400.39400.40800.41800.78800.1109800 | Door shutter fixing | 9d | 2027-10-19 | 2027-10-27 | 578, 591 |  | GC1 | 8829264 |
| 595 | 37200.37400.37500.38400.39400.40800.41800.78800.1109900 | Electrical wiring work | 13.5d | 2028-01-29 | 2028-02-10 | 579, 594 |  | GC1 | 8829274 |
| 596 | 37200.37400.37500.38400.39400.40800.41800.78800.1110000 | Painting 1st coat | 13.5d | 2028-02-10 | 2028-02-22 | 580, 593, 594, 595 |  | GC1 | 8829284 |
| 597 | 37200.37400.37500.38400.39400.40800.41800.78800.1110100 | False ceiling | 11.25d | 2028-02-22 | 2028-03-03 | 581, 596 |  | GC1 | 8829294 |
| 598 | 37200.37400.37500.38400.39400.40800.41800.78900 | **22nd Floor** | 435.38d | 2027-01-09 | 2028-03-16 |  | start no earlier than 2027-01-09 | GC1 | 8806404 |
| 599 | 37200.37400.37500.38400.39400.40800.41800.78900.1110200 | Block Work | 9d | 2027-01-09 | 2027-01-17 | 244, 583 |  | GC1 | 8829304 |
| 600 | 37200.37400.37500.38400.39400.40800.41800.78900.1110300 | Door Frame Fixing | 10.12d | 2027-01-17 | 2027-01-26 | 584, 599 |  | GC1 | 8829314 |
| 601 | 37200.37400.37500.38400.39400.40800.41800.78900.1110400 | Internal Plumbing Works | 11.25d | 2027-01-17 | 2027-01-27 | 585, 599 |  | GC1 | 8829324 |
| 602 | 37200.37400.37500.38400.39400.40800.41800.78900.1110500 | Waterproofing | 13.5d | 2027-01-27 | 2027-02-08 | 586, 601 |  | GC1 | 8829334 |
| 603 | 37200.37400.37500.38400.39400.40800.41800.78900.1110600 | Internal Plaster | 10.12d | 2027-02-08 | 2027-02-17 | 587, 600, 601, 602 |  | GC1 | 8829344 |
| 604 | 37200.37400.37500.38400.39400.40800.41800.78900.1110700 | IPS flooring work | 10.12d | 2027-02-17 | 2027-02-26 | 588, 600, 602, 603 |  | GC1 | 8829354 |
| 605 | 37200.37400.37500.38400.39400.40800.41800.78900.1110800 | Toilet dado work | 9d | 2027-08-14 | 2027-08-22 | 589, 602, 603 |  | GC1 | 8829364 |
| 606 | 37200.37400.37500.38400.39400.40800.41800.78900.1110900 | Toilet flooring work | 7.88d | 2027-08-22 | 2027-08-29 | 590, 605 |  | GC1 | 8829374 |
| 607 | 37200.37400.37500.38400.39400.40800.41800.78900.1111000 | Living dinning flooring | 13.5d | 2027-10-19 | 2027-10-31 | 591, 600, 606 |  | GC1 | 8829384 |
| 608 | 37200.37400.37500.38400.39400.40800.41800.78900.1111100 | Aluminium door-window fixing | 13.5d | 2028-03-04 | 2028-03-16 | 592, 604, 607 |  | GC1 | 8829394 |
| 609 | 37200.37400.37500.38400.39400.40800.41800.78900.1111200 | Putty primer coat | 6.75d | 2027-10-31 | 2027-12-21 | 593, 607 |  | GC1 | 8829404 |
| 610 | 37200.37400.37500.38400.39400.40800.41800.78900.1111300 | Door shutter fixing | 9d | 2027-10-31 | 2027-12-23 | 594, 607 |  | GC1 | 8829414 |
| 611 | 37200.37400.37500.38400.39400.40800.41800.78900.1111400 | Electrical wiring work | 13.5d | 2028-02-10 | 2028-02-22 | 595, 610 |  | GC1 | 8829424 |
| 612 | 37200.37400.37500.38400.39400.40800.41800.78900.1111500 | Painting 1st coat | 13.5d | 2028-02-22 | 2028-03-05 | 596, 609, 610, 611 |  | GC1 | 8829434 |
| 613 | 37200.37400.37500.38400.39400.40800.41800.78900.1111600 | False ceiling | 11.25d | 2028-03-05 | 2028-03-15 | 597, 612 |  | GC1 | 8829444 |

| ID | WBS | Task | Duration | Start | Finish | Predecessors | Constraint | Calendar | Unique_Task_ID |
| --- | --- | --- | --- | --- | --- | --- | --- | --- | --- |
| 614 | 37200.37400.37500.38400.39400.40800.41800.79000 | **23rd Floor** | 438.75d | 2027-01-21 | 2028-03-31 |  | start no earlier than 2027-01-21 | GC1 | 8806414 |
| 615 | 37200.37400.37500.38400.39400.40800.41800.79000.1111700 | Block Work | 9d | 2027-01-21 | 2027-01-29 | 245, 599 |  | GC1 | 8829454 |
| 616 | 37200.37400.37500.38400.39400.40800.41800.79000.1111800 | Door Frame Fixing | 10.12d | 2027-01-29 | 2027-02-07 | 600, 615 |  | GC1 | 8829464 |
| 617 | 37200.37400.37500.38400.39400.40800.41800.79000.1111900 | Internal Plumbing Works | 11.25d | 2027-01-29 | 2027-02-08 | 601, 615 |  | GC1 | 8829474 |
| 618 | 37200.37400.37500.38400.39400.40800.41800.79000.1112000 | Waterproofing | 13.5d | 2027-02-08 | 2027-02-20 | 602, 617 |  | GC1 | 8829484 |
| 619 | 37200.37400.37500.38400.39400.40800.41800.79000.1112100 | Internal Plaster | 10.12d | 2027-02-20 | 2027-03-01 | 603, 616, 617, 618 |  | GC1 | 8829494 |
| 620 | 37200.37400.37500.38400.39400.40800.41800.79000.1112200 | IPS flooring work | 10.12d | 2027-03-01 | 2027-03-10 | 604, 616, 618, 619 |  | GC1 | 8829504 |
| 621 | 37200.37400.37500.38400.39400.40800.41800.79000.1112300 | Toilet dado work | 9d | 2027-08-22 | 2027-08-30 | 605, 618, 619 |  | GC1 | 8829514 |
| 622 | 37200.37400.37500.38400.39400.40800.41800.79000.1112400 | Toilet flooring work | 7.88d | 2027-08-30 | 2027-09-06 | 606, 621 |  | GC1 | 8829524 |
| 623 | 37200.37400.37500.38400.39400.40800.41800.79000.1112500 | Living dinning flooring | 16.88d | 2027-10-31 | 2027-12-30 | 607, 616, 622 |  | GC1 | 8829534 |
| 624 | 37200.37400.37500.38400.39400.40800.41800.79000.1112600 | Aluminium door-window fixing | 16.88d | 2028-03-16 | 2028-03-31 | 608, 620, 623 |  | GC1 | 8829544 |
| 625 | 37200.37400.37500.38400.39400.40800.41800.79000.1112700 | Putty primer coat | 6.75d | 2027-12-30 | 2028-01-05 | 609, 623 |  | GC1 | 8829554 |
| 626 | 37200.37400.37500.38400.39400.40800.41800.79000.1112800 | Door shutter fixing | 9d | 2027-12-30 | 2028-01-07 | 610, 623 |  | GC1 | 8829564 |
| 627 | 37200.37400.37500.38400.39400.40800.41800.79000.1112900 | Electrical wiring work | 13.5d | 2028-02-22 | 2028-03-05 | 611, 626 |  | GC1 | 8829574 |
| 628 | 37200.37400.37500.38400.39400.40800.41800.79000.1113000 | Painting 1st coat | 13.5d | 2028-03-05 | 2028-03-17 | 612, 625, 626, 627 |  | GC1 | 8829584 |
| 629 | 37200.37400.37500.38400.39400.40800.41800.79000.1113100 | False ceiling | 11.25d | 2028-03-17 | 2028-03-27 | 613, 628 |  | GC1 | 8829594 |
| 630 | 37200.37400.37500.38400.39400.40800.41800.79100 | **24th Floor** | 442.12d | 2027-02-02 | 2028-04-15 |  | start no earlier than 2027-02-02 | GC1 | 8806424 |
| 631 | 37200.37400.37500.38400.39400.40800.41800.79100.1113200 | Block Work | 9d | 2027-02-02 | 2027-02-10 | 246, 615 |  | GC1 | 8829604 |
| 632 | 37200.37400.37500.38400.39400.40800.41800.79100.1113300 | Door Frame Fixing | 10.12d | 2027-02-10 | 2027-02-19 | 616, 631 |  | GC1 | 8829614 |
| 633 | 37200.37400.37500.38400.39400.40800.41800.79100.1113400 | Internal Plumbing Works | 11.25d | 2027-02-10 | 2027-02-20 | 617, 631 |  | GC1 | 8829624 |
| 634 | 37200.37400.37500.38400.39400.40800.41800.79100.1113500 | Waterproofing | 13.5d | 2027-02-20 | 2027-03-04 | 618, 633 |  | GC1 | 8829634 |
| 635 | 37200.37400.37500.38400.39400.40800.41800.79100.1113600 | Internal Plaster | 10.12d | 2027-03-04 | 2027-03-13 | 619, 632, 633, 634 |  | GC1 | 8829644 |
| 636 | 37200.37400.37500.38400.39400.40800.41800.79100.1113700 | IPS flooring work | 10.12d | 2027-03-13 | 2027-03-22 | 620, 632, 634, 635 |  | GC1 | 8829654 |
| 637 | 37200.37400.37500.38400.39400.40800.41800.79100.1113800 | Toilet dado work | 9d | 2027-08-30 | 2027-09-07 | 621, 634, 635 |  | GC1 | 8829664 |
| 638 | 37200.37400.37500.38400.39400.40800.41800.79100.1113900 | Toilet flooring work | 7.88d | 2027-09-07 | 2027-09-14 | 622, 637 |  | GC1 | 8829674 |
| 639 | 37200.37400.37500.38400.39400.40800.41800.79100.1114000 | Living dinning flooring | 16.88d | 2027-12-30 | 2028-01-14 | 623, 632, 638 |  | GC1 | 8829684 |
| 640 | 37200.37400.37500.38400.39400.40800.41800.79100.1114100 | Aluminium door-window fixing | 16.88d | 2028-03-31 | 2028-04-15 | 624, 636, 639 |  | GC1 | 8829694 |
| 641 | 37200.37400.37500.38400.39400.40800.41800.79100.1114200 | Putty primer coat | 6.75d | 2028-01-14 | 2028-01-20 | 625, 639 |  | GC1 | 8829704 |
| 642 | 37200.37400.37500.38400.39400.40800.41800.79100.1114300 | Door shutter fixing | 9d | 2028-01-14 | 2028-01-22 | 626, 639 |  | GC1 | 8829714 |
| 643 | 37200.37400.37500.38400.39400.40800.41800.79100.1114400 | Electrical wiring work | 13.5d | 2028-03-05 | 2028-03-17 | 627, 642 |  | GC1 | 8829724 |
| 644 | 37200.37400.37500.38400.39400.40800.41800.79100.1114500 | Painting 1st coat | 13.5d | 2028-03-17 | 2028-03-29 | 628, 641, 642, 643 |  | GC1 | 8829734 |
| 645 | 37200.37400.37500.38400.39400.40800.41800.79100.1114600 | False ceiling | 11.25d | 2028-03-29 | 2028-04-08 | 629, 644 |  | GC1 | 8829744 |

| ID | WBS | Task | Duration | Start | Finish | Predecessors | Constraint | Calendar | Unique_Task_ID |
| --- | --- | --- | --- | --- | --- | --- | --- | --- | --- |
| 646 | 37200.37400.37500.38400.39400.40800.41800.79200 | **25th Floor** | 445.5d | 2027-02-14 | 2028-04-30 |  | start no earlier than 2027-02-14 | GC1 | 8806434 |
| 647 | 37200.37400.37500.38400.39400.40800.41800.79200.1114700 | Block Work | 9d | 2027-02-14 | 2027-02-22 | 247, 631 |  | GC1 | 8829754 |
| 648 | 37200.37400.37500.38400.39400.40800.41800.79200.1114800 | Door Frame Fixing | 10.12d | 2027-02-22 | 2027-03-03 | 632, 647 |  | GC1 | 8829764 |
| 649 | 37200.37400.37500.38400.39400.40800.41800.79200.1114900 | Internal Plumbing Works | 11.25d | 2027-02-22 | 2027-03-04 | 633, 647 |  | GC1 | 8829774 |
| 650 | 37200.37400.37500.38400.39400.40800.41800.79200.1115000 | Waterproofing | 13.5d | 2027-03-04 | 2027-03-16 | 634, 649 |  | GC1 | 8829784 |
| 651 | 37200.37400.37500.38400.39400.40800.41800.79200.1115100 | Internal Plaster | 10.12d | 2027-03-16 | 2027-03-25 | 635, 648, 649, 650 |  | GC1 | 8829794 |
| 652 | 37200.37400.37500.38400.39400.40800.41800.79200.1115200 | IPS flooring work | 10.12d | 2027-03-25 | 2027-04-03 | 636, 648, 650, 651 |  | GC1 | 8829804 |
| 653 | 37200.37400.37500.38400.39400.40800.41800.79200.1115300 | Toilet dado work | 9d | 2027-09-07 | 2027-09-15 | 637, 650, 651 |  | GC1 | 8829814 |
| 654 | 37200.37400.37500.38400.39400.40800.41800.79200.1115400 | Toilet flooring work | 7.88d | 2027-09-15 | 2027-09-22 | 638, 653 |  | GC1 | 8829824 |
| 655 | 37200.37400.37500.38400.39400.40800.41800.79200.1115500 | Living dinning flooring | 16.88d | 2028-01-14 | 2028-01-29 | 639, 648, 654 |  | GC1 | 8829834 |
| 656 | 37200.37400.37500.38400.39400.40800.41800.79200.1115600 | Aluminium door-window fixing | 16.88d | 2028-04-15 | 2028-04-30 | 640, 652, 655 |  | GC1 | 8829844 |
| 657 | 37200.37400.37500.38400.39400.40800.41800.79200.1115700 | Putty primer coat | 6.75d | 2028-01-29 | 2028-02-04 | 641, 655 |  | GC1 | 8829854 |
| 658 | 37200.37400.37500.38400.39400.40800.41800.79200.1115800 | Door shutter fixing | 9d | 2028-01-29 | 2028-02-06 | 642, 655 |  | GC1 | 8829864 |
| 659 | 37200.37400.37500.38400.39400.40800.41800.79200.1115900 | Electrical wiring work | 13.5d | 2028-03-17 | 2028-03-29 | 643, 658 |  | GC1 | 8829874 |
| 660 | 37200.37400.37500.38400.39400.40800.41800.79200.1116000 | Painting 1st coat | 13.5d | 2028-03-29 | 2028-04-10 | 644, 657, 658, 659 |  | GC1 | 8829884 |
| 661 | 37200.37400.37500.38400.39400.40800.41800.79200.1116100 | False ceiling | 11.25d | 2028-04-10 | 2028-04-20 | 645, 660 |  | GC1 | 8829894 |
| 662 | 37200.37400.37500.38400.39400.40800.41800.79300 | **26th Floor** | 448.88d | 2027-02-26 | 2028-05-15 |  | start no earlier than 2027-02-26 | GC1 | 8806444 |
| 663 | 37200.37400.37500.38400.39400.40800.41800.79300.1116200 | Block Work | 9d | 2027-02-26 | 2027-03-06 | 248, 647 |  | GC1 | 8829904 |
| 664 | 37200.37400.37500.38400.39400.40800.41800.79300.1116300 | Door Frame Fixing | 10.12d | 2027-03-06 | 2027-03-15 | 648, 663 |  | GC1 | 8829914 |
| 665 | 37200.37400.37500.38400.39400.40800.41800.79300.1116400 | Internal Plumbing Works | 11.25d | 2027-03-06 | 2027-03-16 | 649, 663 |  | GC1 | 8829924 |
| 666 | 37200.37400.37500.38400.39400.40800.41800.79300.1116500 | Waterproofing | 13.5d | 2027-03-16 | 2027-03-28 | 650, 665 |  | GC1 | 8829934 |
| 667 | 37200.37400.37500.38400.39400.40800.41800.79300.1116600 | Internal Plaster | 10.12d | 2027-03-28 | 2027-04-06 | 651, 664, 665, 666 |  | GC1 | 8829944 |
| 668 | 37200.37400.37500.38400.39400.40800.41800.79300.1116700 | IPS flooring work | 10.12d | 2027-04-06 | 2027-04-15 | 652, 664, 666, 667 |  | GC1 | 8829954 |
| 669 | 37200.37400.37500.38400.39400.40800.41800.79300.1116800 | Toilet dado work | 9d | 2027-09-15 | 2027-09-23 | 653, 666, 667 |  | GC1 | 8829964 |
| 670 | 37200.37400.37500.38400.39400.40800.41800.79300.1116900 | Toilet flooring work | 7.88d | 2027-09-23 | 2027-09-30 | 654, 669 |  | GC1 | 8829974 |
| 671 | 37200.37400.37500.38400.39400.40800.41800.79300.1117000 | Living dinning flooring | 16.88d | 2028-01-29 | 2028-02-13 | 655, 664, 670 |  | GC1 | 8829984 |
| 672 | 37200.37400.37500.38400.39400.40800.41800.79300.1117100 | Aluminium door-window fixing | 16.88d | 2028-04-30 | 2028-05-15 | 656, 668, 671 |  | GC1 | 8829994 |
| 673 | 37200.37400.37500.38400.39400.40800.41800.79300.1117200 | Putty primer coat | 6.75d | 2028-02-13 | 2028-02-19 | 657, 671 |  | GC1 | 8830004 |
| 674 | 37200.37400.37500.38400.39400.40800.41800.79300.1117300 | Door shutter fixing | 9d | 2028-02-13 | 2028-02-21 | 658, 671 |  | GC1 | 8830014 |
| 675 | 37200.37400.37500.38400.39400.40800.41800.79300.1117400 | Electrical wiring work | 13.5d | 2028-03-29 | 2028-04-10 | 659, 674 |  | GC1 | 8830024 |
| 676 | 37200.37400.37500.38400.39400.40800.41800.79300.1117500 | Painting 1st coat | 13.5d | 2028-04-10 | 2028-04-22 | 660, 673, 674, 675 |  | GC1 | 8830034 |
| 677 | 37200.37400.37500.38400.39400.40800.41800.79300.1117600 | False ceiling | 11.25d | 2028-04-22 | 2028-05-02 | 661, 676 |  | GC1 | 8830044 |

| ID | WBS | Task | Duration | Start | Finish | Predecessors | Constraint | Calendar | Unique_Task_ID |
| --- | --- | --- | --- | --- | --- | --- | --- | --- | --- |
| 678 | 37200.37400.37500.38400.39400.40800.41800.79400 | **27th Floor** | 452.25d | 2027-03-10 | 2028-05-30 |  | start no earlier than 2027-03-10 | GC1 | 8806454 |
| 679 | 37200.37400.37500.38400.39400.40800.41800.79400.1117700 | Block Work | 9d | 2027-03-10 | 2027-03-18 | 249, 663 |  | GC1 | 8830054 |
| 680 | 37200.37400.37500.38400.39400.40800.41800.79400.1117800 | Door Frame Fixing | 10.12d | 2027-03-18 | 2027-03-27 | 664, 679 |  | GC1 | 8830064 |
| 681 | 37200.37400.37500.38400.39400.40800.41800.79400.1117900 | Internal Plumbing Works | 11.25d | 2027-03-18 | 2027-03-28 | 665, 679 |  | GC1 | 8830074 |
| 682 | 37200.37400.37500.38400.39400.40800.41800.79400.1118000 | Waterproofing | 13.5d | 2027-03-28 | 2027-04-09 | 666, 681 |  | GC1 | 8830084 |
| 683 | 37200.37400.37500.38400.39400.40800.41800.79400.1118100 | Internal Plaster | 10.12d | 2027-04-09 | 2027-04-18 | 667, 680, 681, 682 |  | GC1 | 8830094 |
| 684 | 37200.37400.37500.38400.39400.40800.41800.79400.1118200 | IPS flooring work | 10.12d | 2027-04-18 | 2027-04-27 | 668, 680, 682, 683 |  | GC1 | 8830104 |
| 685 | 37200.37400.37500.38400.39400.40800.41800.79400.1118300 | Toilet dado work | 9d | 2027-09-23 | 2027-10-01 | 669, 682, 683 |  | GC1 | 8830114 |
| 686 | 37200.37400.37500.38400.39400.40800.41800.79400.1118400 | Toilet flooring work | 7.88d | 2027-10-01 | 2027-10-08 | 670, 685 |  | GC1 | 8830124 |
| 687 | 37200.37400.37500.38400.39400.40800.41800.79400.1118500 | Living dinning flooring | 16.88d | 2028-02-13 | 2028-02-28 | 671, 680, 686 |  | GC1 | 8830134 |
| 688 | 37200.37400.37500.38400.39400.40800.41800.79400.1118600 | Aluminium door-window fixing | 16.88d | 2028-05-15 | 2028-05-30 | 672, 684, 687 |  | GC1 | 8830144 |
| 689 | 37200.37400.37500.38400.39400.40800.41800.79400.1118700 | Putty primer coat | 6.75d | 2028-02-28 | 2028-03-05 | 673, 687 |  | GC1 | 8830154 |
| 690 | 37200.37400.37500.38400.39400.40800.41800.79400.1118800 | Door shutter fixing | 9d | 2028-02-28 | 2028-03-07 | 674, 687 |  | GC1 | 8830164 |
| 691 | 37200.37400.37500.38400.39400.40800.41800.79400.1118900 | Electrical wiring work | 13.5d | 2028-04-10 | 2028-04-22 | 675, 690 |  | GC1 | 8830174 |
| 692 | 37200.37400.37500.38400.39400.40800.41800.79400.1119000 | Painting 1st coat | 13.5d | 2028-04-22 | 2028-05-04 | 676, 689, 690, 691 |  | GC1 | 8830184 |
| 693 | 37200.37400.37500.38400.39400.40800.41800.79400.1119100 | False ceiling | 11.25d | 2028-05-04 | 2028-05-14 | 677, 692 |  | GC1 | 8830194 |
| 694 | 37200.37400.37500.38400.39400.40800.41800.79500 | **28th Floor** | 455.62d | 2027-03-22 | 2028-06-14 |  | start no earlier than 2027-03-22 | GC1 | 8806464 |
| 695 | 37200.37400.37500.38400.39400.40800.41800.79500.1119200 | Block Work | 9d | 2027-03-22 | 2027-03-30 | 250, 679 |  | GC1 | 8830204 |
| 696 | 37200.37400.37500.38400.39400.40800.41800.79500.1119300 | Door Frame Fixing | 10.12d | 2027-03-30 | 2027-04-08 | 680, 695 |  | GC1 | 8830214 |
| 697 | 37200.37400.37500.38400.39400.40800.41800.79500.1119400 | Internal Plumbing Works | 11.25d | 2027-03-30 | 2027-04-09 | 681, 695 |  | GC1 | 8830224 |
| 698 | 37200.37400.37500.38400.39400.40800.41800.79500.1119500 | Waterproofing | 13.5d | 2027-04-09 | 2027-04-21 | 682, 697 |  | GC1 | 8830234 |
| 699 | 37200.37400.37500.38400.39400.40800.41800.79500.1119600 | Internal Plaster | 10.12d | 2027-04-21 | 2027-04-30 | 683, 696, 697, 698 |  | GC1 | 8830244 |
| 700 | 37200.37400.37500.38400.39400.40800.41800.79500.1119700 | IPS flooring work | 10.12d | 2027-04-30 | 2027-05-09 | 684, 696, 698, 699 |  | GC1 | 8830254 |
| 701 | 37200.37400.37500.38400.39400.40800.41800.79500.1119800 | Toilet dado work | 9d | 2027-10-01 | 2027-10-09 | 685, 698, 699 |  | GC1 | 8830264 |
| 702 | 37200.37400.37500.38400.39400.40800.41800.79500.1119900 | Toilet flooring work | 7.88d | 2027-10-09 | 2027-10-16 | 686, 701 |  | GC1 | 8830274 |
| 703 | 37200.37400.37500.38400.39400.40800.41800.79500.1120000 | Living dinning flooring | 16.88d | 2028-02-28 | 2028-03-14 | 687, 696, 702 |  | GC1 | 8830284 |
| 704 | 37200.37400.37500.38400.39400.40800.41800.79500.1120100 | Aluminium door-window fixing | 16.88d | 2028-05-30 | 2028-06-14 | 688, 700, 703 |  | GC1 | 8830294 |
| 705 | 37200.37400.37500.38400.39400.40800.41800.79500.1120200 | Putty primer coat | 6.75d | 2028-03-14 | 2028-03-20 | 689, 703 |  | GC1 | 8830304 |
| 706 | 37200.37400.37500.38400.39400.40800.41800.79500.1120300 | Door shutter fixing | 9d | 2028-03-14 | 2028-03-22 | 690, 703 |  | GC1 | 8830314 |
| 707 | 37200.37400.37500.38400.39400.40800.41800.79500.1120400 | Electrical wiring work | 13.5d | 2028-04-22 | 2028-05-04 | 691, 706 |  | GC1 | 8830324 |
| 708 | 37200.37400.37500.38400.39400.40800.41800.79500.1120500 | Painting 1st coat | 13.5d | 2028-05-04 | 2028-05-16 | 692, 705, 706, 707 |  | GC1 | 8830334 |
| 709 | 37200.37400.37500.38400.39400.40800.41800.79500.1120600 | False ceiling | 11.25d | 2028-05-16 | 2028-05-26 | 693, 708 |  | GC1 | 8830344 |

| ID | WBS | Task | Duration | Start | Finish | Predecessors | Constraint | Calendar | Unique_Task_ID |
| --- | --- | --- | --- | --- | --- | --- | --- | --- | --- |
| 710 | 37200.37400.37500.38400.39400.40800.41800.79600 | **29th Floor** | 459d | 2027-04-03 | 2028-06-29 |  | start no earlier than 2027-04-03 | GC1 | 8806474 |
| 711 | 37200.37400.37500.38400.39400.40800.41800.79600.1120700 | Block Work | 9d | 2027-04-03 | 2027-04-11 | 251, 695 |  | GC1 | 8830354 |
| 712 | 37200.37400.37500.38400.39400.40800.41800.79600.1120800 | Door Frame Fixing | 10.12d | 2027-04-11 | 2027-04-20 | 696, 711 |  | GC1 | 8830364 |
| 713 | 37200.37400.37500.38400.39400.40800.41800.79600.1120900 | Internal Plumbing Works | 11.25d | 2027-04-11 | 2027-04-21 | 697, 711 |  | GC1 | 8830374 |
| 714 | 37200.37400.37500.38400.39400.40800.41800.79600.1121000 | Waterproofing | 13.5d | 2027-04-21 | 2027-05-03 | 698, 713 |  | GC1 | 8830384 |
| 715 | 37200.37400.37500.38400.39400.40800.41800.79600.1121100 | Internal Plaster | 10.12d | 2027-05-03 | 2027-05-12 | 699, 712, 713, 714 |  | GC1 | 8830394 |
| 716 | 37200.37400.37500.38400.39400.40800.41800.79600.1121200 | IPS flooring work | 10.12d | 2027-05-12 | 2027-05-21 | 700, 712, 714, 715 |  | GC1 | 8830404 |
| 717 | 37200.37400.37500.38400.39400.40800.41800.79600.1121300 | Toilet dado work | 9d | 2027-10-09 | 2027-10-17 | 701, 714, 715 |  | GC1 | 8830414 |
| 718 | 37200.37400.37500.38400.39400.40800.41800.79600.1121400 | Toilet flooring work | 7.88d | 2027-10-17 | 2027-10-24 | 702, 717 |  | GC1 | 8830424 |
| 719 | 37200.37400.37500.38400.39400.40800.41800.79600.1121500 | Living dinning flooring | 16.88d | 2028-03-14 | 2028-03-29 | 703, 712, 718 |  | GC1 | 8830434 |
| 720 | 37200.37400.37500.38400.39400.40800.41800.79600.1121600 | Aluminium door-window fixing | 16.88d | 2028-06-14 | 2028-06-29 | 704, 716, 719 |  | GC1 | 8830444 |
| 721 | 37200.37400.37500.38400.39400.40800.41800.79600.1121700 | Putty primer coat | 6.75d | 2028-03-29 | 2028-04-04 | 705, 719 |  | GC1 | 8830454 |
| 722 | 37200.37400.37500.38400.39400.40800.41800.79600.1121800 | Door shutter fixing | 9d | 2028-03-29 | 2028-04-06 | 706, 719 |  | GC1 | 8830464 |
| 723 | 37200.37400.37500.38400.39400.40800.41800.79600.1121900 | Electrical wiring work | 13.5d | 2028-05-04 | 2028-05-16 | 707, 722 |  | GC1 | 8830474 |
| 724 | 37200.37400.37500.38400.39400.40800.41800.79600.1122000 | Painting 1st coat | 13.5d | 2028-05-16 | 2028-05-28 | 708, 721, 722, 723 |  | GC1 | 8830484 |
| 725 | 37200.37400.37500.38400.39400.40800.41800.79600.1122100 | False ceiling | 11.25d | 2028-05-28 | 2028-06-07 | 709, 724 |  | GC1 | 8830494 |
| 726 | 37200.37400.37500.38400.39400.40800.41800.79700 | **30th Floor** | 462.38d | 2027-04-15 | 2028-07-14 |  | start no earlier than 2027-04-15 | GC1 | 8806484 |
| 727 | 37200.37400.37500.38400.39400.40800.41800.79700.1122200 | Block Work | 9d | 2027-04-15 | 2027-04-23 | 252, 711 |  | GC1 | 8830504 |
| 728 | 37200.37400.37500.38400.39400.40800.41800.79700.1122300 | Door Frame Fixing | 10.12d | 2027-04-23 | 2027-05-02 | 712, 727 |  | GC1 | 8830514 |
| 729 | 37200.37400.37500.38400.39400.40800.41800.79700.1122400 | Internal Plumbing Works | 11.25d | 2027-04-23 | 2027-05-03 | 713, 727 |  | GC1 | 8830524 |
| 730 | 37200.37400.37500.38400.39400.40800.41800.79700.1122500 | Waterproofing | 13.5d | 2027-05-03 | 2027-05-15 | 714, 729 |  | GC1 | 8830534 |
| 731 | 37200.37400.37500.38400.39400.40800.41800.79700.1122600 | Internal Plaster | 10.12d | 2027-05-15 | 2027-05-24 | 715, 728, 729, 730 |  | GC1 | 8830544 |
| 732 | 37200.37400.37500.38400.39400.40800.41800.79700.1122700 | IPS flooring work | 10.12d | 2027-05-24 | 2027-06-02 | 716, 728, 730, 731 |  | GC1 | 8830554 |
| 733 | 37200.37400.37500.38400.39400.40800.41800.79700.1122800 | Toilet dado work | 9d | 2027-10-17 | 2027-10-25 | 717, 730, 731 |  | GC1 | 8830564 |
| 734 | 37200.37400.37500.38400.39400.40800.41800.79700.1122900 | Toilet flooring work | 7.88d | 2027-10-25 | 2027-12-16 | 718, 733 |  | GC1 | 8830574 |
| 735 | 37200.37400.37500.38400.39400.40800.41800.79700.1123000 | Living dinning flooring | 16.88d | 2028-03-29 | 2028-04-13 | 719, 728, 734 |  | GC1 | 8830584 |
| 736 | 37200.37400.37500.38400.39400.40800.41800.79700.1123100 | Aluminium door-window fixing | 16.88d | 2028-06-29 | 2028-07-14 | 720, 732, 735 |  | GC1 | 8830594 |
| 737 | 37200.37400.37500.38400.39400.40800.41800.79700.1123200 | Putty primer coat | 6.75d | 2028-04-13 | 2028-04-19 | 721, 735 |  | GC1 | 8830604 |
| 738 | 37200.37400.37500.38400.39400.40800.41800.79700.1123300 | Door shutter fixing | 9d | 2028-04-13 | 2028-04-21 | 722, 735 |  | GC1 | 8830614 |
| 739 | 37200.37400.37500.38400.39400.40800.41800.79700.1123400 | Electrical wiring work | 16.88d | 2028-05-16 | 2028-05-31 | 723, 738 |  | GC1 | 8830624 |
| 740 | 37200.37400.37500.38400.39400.40800.41800.79700.1123500 | Painting 1st coat | 16.88d | 2028-05-31 | 2028-06-15 | 724, 737, 738, 739 |  | GC1 | 8830634 |
| 741 | 37200.37400.37500.38400.39400.40800.41800.79700.1123600 | False ceiling | 11.25d | 2028-06-15 | 2028-06-25 | 725, 740 |  | GC1 | 8830644 |

| ID | WBS | Task | Duration | Start | Finish | Predecessors | Constraint | Calendar | Unique_Task_ID |
| --- | --- | --- | --- | --- | --- | --- | --- | --- | --- |
| 742 | 37200.37400.37500.38400.39400.40800.41800.79800 | **31st Floor** | 462.38d | 2027-04-27 | 2028-07-26 |  | start no earlier than 2027-04-27 | GC1 | 8806494 |
| 743 | 37200.37400.37500.38400.39400.40800.41800.79800.1123700 | Block Work | 9d | 2027-04-27 | 2027-05-05 | 253, 727 |  | GC1 | 8830654 |
| 744 | 37200.37400.37500.38400.39400.40800.41800.79800.1123800 | Door Frame Fixing | 10.12d | 2027-05-05 | 2027-05-14 | 728, 743 |  | GC1 | 8830664 |
| 745 | 37200.37400.37500.38400.39400.40800.41800.79800.1123900 | Internal Plumbing Works | 11.25d | 2027-05-05 | 2027-05-15 | 729, 743 |  | GC1 | 8830674 |
| 746 | 37200.37400.37500.38400.39400.40800.41800.79800.1124000 | Waterproofing | 13.5d | 2027-05-15 | 2027-05-27 | 730, 745 |  | GC1 | 8830684 |
| 747 | 37200.37400.37500.38400.39400.40800.41800.79800.1124100 | Internal Plaster | 10.12d | 2027-05-27 | 2027-06-05 | 731, 744, 745, 746 |  | GC1 | 8830694 |
| 748 | 37200.37400.37500.38400.39400.40800.41800.79800.1124200 | IPS flooring work | 10.12d | 2027-06-05 | 2027-06-14 | 732, 744, 746, 747 |  | GC1 | 8830704 |
| 749 | 37200.37400.37500.38400.39400.40800.41800.79800.1124300 | Toilet dado work | 9d | 2027-10-25 | 2027-12-17 | 733, 746, 747 |  | GC1 | 8830714 |
| 750 | 37200.37400.37500.38400.39400.40800.41800.79800.1124400 | Toilet flooring work | 7.88d | 2027-12-17 | 2027-12-24 | 734, 749 |  | GC1 | 8830724 |
| 751 | 37200.37400.37500.38400.39400.40800.41800.79800.1124500 | Living dinning flooring | 16.88d | 2028-04-13 | 2028-04-28 | 735, 744, 750 |  | GC1 | 8830734 |
| 752 | 37200.37400.37500.38400.39400.40800.41800.79800.1124600 | Aluminium door-window fixing | 13.5d | 2028-07-14 | 2028-07-26 | 736, 748, 751 |  | GC1 | 8830744 |
| 753 | 37200.37400.37500.38400.39400.40800.41800.79800.1124700 | Putty primer coat | 6.75d | 2028-04-28 | 2028-05-04 | 737, 751 |  | GC1 | 8830754 |
| 754 | 37200.37400.37500.38400.39400.40800.41800.79800.1124800 | Door shutter fixing | 9d | 2028-04-28 | 2028-05-06 | 738, 751 |  | GC1 | 8830764 |
| 755 | 37200.37400.37500.38400.39400.40800.41800.79800.1124900 | Electrical wiring work | 16.88d | 2028-05-31 | 2028-06-15 | 739, 754 |  | GC1 | 8830774 |
| 756 | 37200.37400.37500.38400.39400.40800.41800.79800.1125000 | Painting 1st coat | 16.88d | 2028-06-15 | 2028-06-30 | 740, 753, 754, 755 |  | GC1 | 8830784 |
| 757 | 37200.37400.37500.38400.39400.40800.41800.79800.1125100 | False ceiling | 11.25d | 2028-06-30 | 2028-07-10 | 741, 756 |  | GC1 | 8830794 |
| 758 | 37200.37400.37500.38400.39400.40800.41800.79900 | **32nd Floor** | 462.38d | 2027-05-09 | 2028-08-07 |  | start no earlier than 2027-05-09 | GC1 | 8806504 |
| 759 | 37200.37400.37500.38400.39400.40800.41800.79900.1125200 | Block Work | 9d | 2027-05-09 | 2027-05-17 | 254, 743 |  | GC1 | 8830804 |
| 760 | 37200.37400.37500.38400.39400.40800.41800.79900.1125300 | Door Frame Fixing | 10.12d | 2027-05-17 | 2027-05-26 | 744, 759 |  | GC1 | 8830814 |
| 761 | 37200.37400.37500.38400.39400.40800.41800.79900.1125400 | Internal Plumbing Works | 11.25d | 2027-05-17 | 2027-05-27 | 745, 759 |  | GC1 | 8830824 |
| 762 | 37200.37400.37500.38400.39400.40800.41800.79900.1125500 | Waterproofing | 13.5d | 2027-05-27 | 2027-06-08 | 746, 761 |  | GC1 | 8830834 |
| 763 | 37200.37400.37500.38400.39400.40800.41800.79900.1125600 | Internal Plaster | 10.12d | 2027-06-08 | 2027-06-17 | 747, 760, 761, 762 |  | GC1 | 8830844 |
| 764 | 37200.37400.37500.38400.39400.40800.41800.79900.1125700 | IPS flooring work | 10.12d | 2027-06-17 | 2027-06-26 | 748, 760, 762, 763 |  | GC1 | 8830854 |
| 765 | 37200.37400.37500.38400.39400.40800.41800.79900.1125800 | Toilet dado work | 9d | 2027-12-17 | 2027-12-25 | 749, 762, 763 |  | GC1 | 8830864 |
| 766 | 37200.37400.37500.38400.39400.40800.41800.79900.1125900 | Toilet flooring work | 7.88d | 2027-12-25 | 2028-01-01 | 750, 765 |  | GC1 | 8830874 |
| 767 | 37200.37400.37500.38400.39400.40800.41800.79900.1126000 | Living dinning flooring | 16.88d | 2028-04-28 | 2028-05-13 | 751, 760, 766 |  | GC1 | 8830884 |
| 768 | 37200.37400.37500.38400.39400.40800.41800.79900.1126100 | Aluminium door-window fixing | 13.5d | 2028-07-26 | 2028-08-07 | 752, 764, 767 |  | GC1 | 8830894 |
| 769 | 37200.37400.37500.38400.39400.40800.41800.79900.1126200 | Putty primer coat | 6.75d | 2028-05-13 | 2028-05-19 | 753, 767 |  | GC1 | 8830904 |
| 770 | 37200.37400.37500.38400.39400.40800.41800.79900.1126300 | Door shutter fixing | 9d | 2028-05-13 | 2028-05-21 | 754, 767 |  | GC1 | 8830914 |
| 771 | 37200.37400.37500.38400.39400.40800.41800.79900.1126400 | Electrical wiring work | 16.88d | 2028-06-15 | 2028-06-30 | 755, 770 |  | GC1 | 8830924 |
| 772 | 37200.37400.37500.38400.39400.40800.41800.79900.1126500 | Painting 1st coat | 16.88d | 2028-06-30 | 2028-07-15 | 756, 769, 770, 771 |  | GC1 | 8830934 |
| 773 | 37200.37400.37500.38400.39400.40800.41800.79900.1126600 | False ceiling | 11.25d | 2028-07-15 | 2028-07-25 | 757, 772 |  | GC1 | 8830944 |

| ID | WBS | Task | Duration | Start | Finish | Predecessors | Constraint | Calendar | Unique_Task_ID |
| --- | --- | --- | --- | --- | --- | --- | --- | --- | --- |
| 774 | 37200.37400.37500.38400.39400.40800.41800.80000 | **33rd Floor** | 465.75d | 2027-05-21 | 2028-08-22 |  | start no earlier than 2027-05-21 | GC1 | 8806514 |
| 775 | 37200.37400.37500.38400.39400.40800.41800.80000.1126700 | Block Work | 9d | 2027-05-21 | 2027-05-29 | 255, 759 |  | GC1 | 8830954 |
| 776 | 37200.37400.37500.38400.39400.40800.41800.80000.1126800 | Door Frame Fixing | 10.12d | 2027-05-29 | 2027-06-07 | 760, 775 |  | GC1 | 8830964 |
| 777 | 37200.37400.37500.38400.39400.40800.41800.80000.1126900 | Internal Plumbing Works | 11.25d | 2027-05-29 | 2027-06-08 | 761, 775 |  | GC1 | 8830974 |
| 778 | 37200.37400.37500.38400.39400.40800.41800.80000.1127000 | Waterproofing | 13.5d | 2027-06-08 | 2027-06-20 | 762, 777 |  | GC1 | 8830984 |
| 779 | 37200.37400.37500.38400.39400.40800.41800.80000.1127100 | Internal Plaster | 10.12d | 2027-06-20 | 2027-06-29 | 763, 776, 777, 778 |  | GC1 | 8830994 |
| 780 | 37200.37400.37500.38400.39400.40800.41800.80000.1127200 | IPS flooring work | 10.12d | 2027-06-29 | 2027-07-08 | 764, 776, 778, 779 |  | GC1 | 8831004 |
| 781 | 37200.37400.37500.38400.39400.40800.41800.80000.1127300 | Toilet dado work | 9d | 2027-12-25 | 2028-01-02 | 765, 778, 779 |  | GC1 | 8831014 |
| 782 | 37200.37400.37500.38400.39400.40800.41800.80000.1127400 | Toilet flooring work | 7.88d | 2028-01-02 | 2028-01-09 | 766, 781 |  | GC1 | 8831024 |
| 783 | 37200.37400.37500.38400.39400.40800.41800.80000.1127500 | Living dinning flooring | 16.88d | 2028-05-13 | 2028-05-28 | 767, 776, 782 |  | GC1 | 8831034 |
| 784 | 37200.37400.37500.38400.39400.40800.41800.80000.1127600 | Aluminium door-window fixing | 16.88d | 2028-08-07 | 2028-08-22 | 768, 780, 783 |  | GC1 | 8831044 |
| 785 | 37200.37400.37500.38400.39400.40800.41800.80000.1127700 | Putty primer coat | 6.75d | 2028-05-28 | 2028-06-03 | 769, 783 |  | GC1 | 8831054 |
| 786 | 37200.37400.37500.38400.39400.40800.41800.80000.1127800 | Door shutter fixing | 9d | 2028-05-28 | 2028-06-05 | 770, 783 |  | GC1 | 8831064 |
| 787 | 37200.37400.37500.38400.39400.40800.41800.80000.1127900 | Electrical wiring work | 13.5d | 2028-06-30 | 2028-07-12 | 771, 786 |  | GC1 | 8831074 |
| 788 | 37200.37400.37500.38400.39400.40800.41800.80000.1128000 | Painting 1st coat | 13.5d | 2028-07-15 | 2028-07-27 | 772, 785, 786, 787 |  | GC1 | 8831084 |
| 789 | 37200.37400.37500.38400.39400.40800.41800.80000.1128100 | False ceiling | 11.25d | 2028-07-27 | 2028-08-06 | 773, 788 |  | GC1 | 8831094 |
| 790 | 37200.37400.37500.38400.39400.40800.41800.80100 | **34th Floor** | 469.12d | 2027-06-02 | 2028-09-06 |  | start no earlier than 2027-06-02 | GC1 | 8806524 |
| 791 | 37200.37400.37500.38400.39400.40800.41800.80100.1128200 | Block Work | 9d | 2027-06-02 | 2027-06-10 | 256, 775 |  | GC1 | 8831104 |
| 792 | 37200.37400.37500.38400.39400.40800.41800.80100.1128300 | Door Frame Fixing | 10.12d | 2027-06-10 | 2027-06-19 | 776, 791 |  | GC1 | 8831114 |
| 793 | 37200.37400.37500.38400.39400.40800.41800.80100.1128400 | Internal Plumbing Works | 11.25d | 2027-06-10 | 2027-06-20 | 777, 791 |  | GC1 | 8831124 |
| 794 | 37200.37400.37500.38400.39400.40800.41800.80100.1128500 | Waterproofing | 13.5d | 2027-06-20 | 2027-07-02 | 778, 793 |  | GC1 | 8831134 |
| 795 | 37200.37400.37500.38400.39400.40800.41800.80100.1128600 | Internal Plaster | 10.12d | 2027-07-02 | 2027-07-11 | 779, 792, 793, 794 |  | GC1 | 8831144 |
| 796 | 37200.37400.37500.38400.39400.40800.41800.80100.1128700 | IPS flooring work | 10.12d | 2027-07-11 | 2027-07-20 | 780, 792, 794, 795 |  | GC1 | 8831154 |
| 797 | 37200.37400.37500.38400.39400.40800.41800.80100.1128800 | Toilet dado work | 9d | 2028-01-02 | 2028-01-10 | 781, 794, 795 |  | GC1 | 8831164 |
| 798 | 37200.37400.37500.38400.39400.40800.41800.80100.1128900 | Toilet flooring work | 7.88d | 2028-01-10 | 2028-01-17 | 782, 797 |  | GC1 | 8831174 |
| 799 | 37200.37400.37500.38400.39400.40800.41800.80100.1129000 | Living dinning flooring | 16.88d | 2028-05-28 | 2028-06-12 | 783, 792, 798 |  | GC1 | 8831184 |
| 800 | 37200.37400.37500.38400.39400.40800.41800.80100.1129100 | Aluminium door-window fixing | 16.88d | 2028-08-22 | 2028-09-06 | 784, 796, 799 |  | GC1 | 8831194 |
| 801 | 37200.37400.37500.38400.39400.40800.41800.80100.1129200 | Putty primer coat | 6.75d | 2028-06-12 | 2028-06-18 | 785, 799 |  | GC1 | 8831204 |
| 802 | 37200.37400.37500.38400.39400.40800.41800.80100.1129300 | Door shutter fixing | 9d | 2028-06-12 | 2028-06-20 | 786, 799 |  | GC1 | 8831214 |
| 803 | 37200.37400.37500.38400.39400.40800.41800.80100.1129400 | Electrical wiring work | 13.5d | 2028-07-12 | 2028-07-24 | 787, 802 |  | GC1 | 8831224 |
| 804 | 37200.37400.37500.38400.39400.40800.41800.80100.1129500 | Painting 1st coat | 13.5d | 2028-07-27 | 2028-08-08 | 788, 801, 802, 803 |  | GC1 | 8831234 |
| 805 | 37200.37400.37500.38400.39400.40800.41800.80100.1129600 | False ceiling | 11.25d | 2028-08-08 | 2028-08-18 | 789, 804 |  | GC1 | 8831244 |

| ID | WBS | Task | Duration | Start | Finish | Predecessors | Constraint | Calendar | Unique_Task_ID |
| --- | --- | --- | --- | --- | --- | --- | --- | --- | --- |
| 806 | 37200.37400.37500.38400.39400.40800.41800.80200 | **35th Floor** | 472.5d | 2027-06-14 | 2028-09-21 |  | start no earlier than 2027-06-14 | GC1 | 8806534 |
| 807 | 37200.37400.37500.38400.39400.40800.41800.80200.1129700 | Block Work | 9d | 2027-06-14 | 2027-06-22 | 257, 791 |  | GC1 | 8831254 |
| 808 | 37200.37400.37500.38400.39400.40800.41800.80200.1129800 | Door Frame Fixing | 10.12d | 2027-06-22 | 2027-07-01 | 792, 807 |  | GC1 | 8831264 |
| 809 | 37200.37400.37500.38400.39400.40800.41800.80200.1129900 | Internal Plumbing Works | 11.25d | 2027-06-22 | 2027-07-02 | 793, 807 |  | GC1 | 8831274 |
| 810 | 37200.37400.37500.38400.39400.40800.41800.80200.1130000 | Waterproofing | 13.5d | 2027-07-02 | 2027-07-14 | 794, 809 |  | GC1 | 8831284 |
| 811 | 37200.37400.37500.38400.39400.40800.41800.80200.1130100 | Internal Plaster | 10.12d | 2027-08-09 | 2027-08-18 | 216FF+135d, 795FS+0.25d, 808FS+0.25d, 809FS+0.25d, 810FS+0.25d |  | GC1 | 8831294 |
| 812 | 37200.37400.37500.38400.39400.40800.41800.80200.1130200 | IPS flooring work | 10.12d | 2027-08-18 | 2027-08-27 | 796, 808, 810, 811 |  | GC1 | 8831304 |
| 813 | 37200.37400.37500.38400.39400.40800.41800.80200.1130300 | Toilet dado work | 9d | 2028-01-10 | 2028-01-18 | 797, 810, 811 |  | GC1 | 8831314 |
| 814 | 37200.37400.37500.38400.39400.40800.41800.80200.1130400 | Toilet flooring work | 7.88d | 2028-01-18 | 2028-01-25 | 798, 813 |  | GC1 | 8831324 |
| 815 | 37200.37400.37500.38400.39400.40800.41800.80200.1130500 | Living dinning flooring | 16.88d | 2028-06-12 | 2028-06-27 | 216FF+191.25d, 799FS+0.25d, 808FS+0.25d |  | GC1 | 8831334 |
| 816 | 37200.37400.37500.38400.39400.40800.41800.80200.1130600 | Aluminium door-window fixing | 16.88d | 2028-09-06 | 2028-09-21 | 800, 812, 815 |  | GC1 | 8831344 |
| 817 | 37200.37400.37500.38400.39400.40800.41800.80200.1130700 | Putty primer coat | 6.75d | 2028-06-27 | 2028-07-03 | 801, 815 |  | GC1 | 8831354 |
| 818 | 37200.37400.37500.38400.39400.40800.41800.80200.1130800 | Door shutter fixing | 9d | 2028-06-27 | 2028-07-05 | 802, 815 |  | GC1 | 8831364 |
| 819 | 37200.37400.37500.38400.39400.40800.41800.80200.1130900 | Electrical wiring work | 13.5d | 2028-07-24 | 2028-08-05 | 803, 818 |  | GC1 | 8831374 |
| 820 | 37200.37400.37500.38400.39400.40800.41800.80200.1131000 | Painting 1st coat | 13.5d | 2028-08-08 | 2028-08-20 | 804, 817, 818, 819 |  | GC1 | 8831384 |
| 821 | 37200.37400.37500.38400.39400.40800.41800.80200.1131100 | False ceiling | 11.25d | 2028-08-20 | 2028-08-30 | 805, 820 |  | GC1 | 8831394 |
| 822 | 37200.37400.37500.38400.39400.40800.190300 | **Terrace Finishing** | 90d | 2027-04-20 | 2027-07-09 |  | start no earlier than 2027-04-20 | GC1 | 8810714 |
| 823 | 37200.37400.37500.38400.39400.40800.190300.505200 | Terrace waterproofing | 45d | 2027-04-20 | 2027-05-30 | 216 |  | GC1 | 8817354 |
| 824 | 37200.37400.37500.38400.39400.40800.190300.505300 | Terrace finishing | 45d | 2027-05-30 | 2027-07-09 | 823 |  | GC1 | 8817364 |
| 825 | 37200.37400.37500.38400.39400.40800.100400 | **Common Area Finishing** | 303.75d | 2027-05-30 | 2028-04-09 |  | start no earlier than 2027-05-30 | GC1 | 8808074 |
| 826 | 37200.37400.37500.38400.39400.40800.100400.505400 | Block Work | 67.5d | 2027-05-30 | 2027-07-29 | 221 |  | GC1 | 8817374 |
| 827 | 37200.37400.37500.38400.39400.40800.100400.505500 | Internal Plaster | 135d | 2027-07-29 | 2028-01-10 | 832SS+45d |  | GC1 | 8817384 |
| 828 | 37200.37400.37500.38400.39400.40800.100400.505600 | Staircase railing fixing | 101.25d | 2027-10-22 | 2028-03-05 | 830SS+11.25d, 829SS+11.25d |  | GC1 | 8817394 |
| 829 | 37200.37400.37500.38400.39400.40800.100400.505700 | Main staircase flooring | 101.25d | 2027-10-12 | 2028-02-24 | 830SS+16.88d |  | GC1 | 8817404 |
| 830 | 37200.37400.37500.38400.39400.40800.100400.505800 | Fire staircase flooring | 168.75d | 2027-09-27 | 2028-04-09 | 827SS+16.88d, 834SS+33.75d |  | GC1 | 8817414 |
| 831 | 37200.37400.37500.38400.39400.40800.100400.505900 | Fire door work | 67.5d | 2027-12-26 | 2028-02-24 | 829SS+33.75d, 830SS+33.75d |  | GC1 | 8817424 |
| 832 | 37200.37400.37500.38400.39400.40800.100400.506000 | Electrical wiring work | 135d | 2027-06-19 | 2027-10-17 | 826SS+22.5d |  | GC1 | 8817434 |
| 833 | 37200.37400.37500.38400.39400.40800.100400.506100 | Lobby flooring | 168.75d | 2027-06-23 | 2028-01-04 | 832SS+4.12d |  | GC1 | 8817444 |
| 834 | 37200.37400.37500.38400.39400.40800.100400.506200 | Ceiling & wall putty-primer | 123.75d | 2027-08-28 | 2028-01-30 | 827SS+33.75d |  | GC1 | 8817454 |
| 835 | 37200.37400.37500.38400.39400.40800.100400.506300 | Ceiling & wall painting | 112.5d | 2027-09-17 | 2028-02-09 | 834SS+22.5d |  | GC1 | 8817464 |
| 836 | 37200.37400.37500.38400.39400.40800.100400.506400 | Light fixture supply & installation | 50.62d | 2027-12-31 | 2028-02-14 | 835SS+67.5d |  | GC1 | 8817474 |

| ID | WBS | Task | Duration | Start | Finish | Predecessors | Constraint | Calendar | Unique_Task_ID |
| --- | --- | --- | --- | --- | --- | --- | --- | --- | --- |
| 837 | 37200.37400.37500.38400.39400.40800.46800 | **Balcony Glass Railing** | 78.75d | 2027-12-22 | 2028-03-01 |  | start no earlier than 2027-12-22 | GC1 | 8806174 |
| 838 | 37200.37400.37500.38400.39400.40800.46800.506500 | 1st Floor | 2.25d | 2027-12-22 | 2027-12-24 | 906 |  | GC1 | 8817484 |
| 839 | 37200.37400.37500.38400.39400.40800.46800.506600 | 2nd Floor | 2.25d | 2027-12-24 | 2027-12-26 | 838 |  | GC1 | 8817494 |
| 840 | 37200.37400.37500.38400.39400.40800.46800.506700 | 3rd Floor | 2.25d | 2027-12-26 | 2027-12-28 | 839 |  | GC1 | 8817504 |
| 841 | 37200.37400.37500.38400.39400.40800.46800.506800 | 4th Floor | 2.25d | 2027-12-28 | 2027-12-30 | 840 |  | GC1 | 8817514 |
| 842 | 37200.37400.37500.38400.39400.40800.46800.506900 | 5th Floor | 2.25d | 2027-12-30 | 2028-01-01 | 841 |  | GC1 | 8817524 |
| 843 | 37200.37400.37500.38400.39400.40800.46800.507000 | 6th Floor | 2.25d | 2028-01-01 | 2028-01-03 | 842 |  | GC1 | 8817534 |
| 844 | 37200.37400.37500.38400.39400.40800.46800.507100 | 7th Floor | 2.25d | 2028-01-03 | 2028-01-05 | 843 |  | GC1 | 8817544 |
| 845 | 37200.37400.37500.38400.39400.40800.46800.507200 | 8th Floor | 2.25d | 2028-01-05 | 2028-01-07 | 844 |  | GC1 | 8817554 |
| 846 | 37200.37400.37500.38400.39400.40800.46800.507300 | 9th Floor | 2.25d | 2028-01-07 | 2028-01-09 | 845 |  | GC1 | 8817564 |
| 847 | 37200.37400.37500.38400.39400.40800.46800.507400 | 10th Floor | 2.25d | 2028-01-09 | 2028-01-11 | 846 |  | GC1 | 8817574 |
| 848 | 37200.37400.37500.38400.39400.40800.46800.507500 | 11th Floor | 2.25d | 2028-01-11 | 2028-01-13 | 847 |  | GC1 | 8817584 |
| 849 | 37200.37400.37500.38400.39400.40800.46800.507600 | 12th Floor | 2.25d | 2028-01-13 | 2028-01-15 | 848 |  | GC1 | 8817594 |
| 850 | 37200.37400.37500.38400.39400.40800.46800.507700 | 13th Floor | 2.25d | 2028-01-15 | 2028-01-17 | 849 |  | GC1 | 8817604 |
| 851 | 37200.37400.37500.38400.39400.40800.46800.507800 | 14th Floor | 2.25d | 2028-01-17 | 2028-01-19 | 850 |  | GC1 | 8817614 |
| 852 | 37200.37400.37500.38400.39400.40800.46800.507900 | 15th Floor | 2.25d | 2028-01-19 | 2028-01-21 | 851 |  | GC1 | 8817624 |
| 853 | 37200.37400.37500.38400.39400.40800.46800.508000 | 16th Floor | 2.25d | 2028-01-21 | 2028-01-23 | 852 |  | GC1 | 8817634 |
| 854 | 37200.37400.37500.38400.39400.40800.46800.508100 | 17th Floor | 2.25d | 2028-01-23 | 2028-01-25 | 853 |  | GC1 | 8817644 |
| 855 | 37200.37400.37500.38400.39400.40800.46800.508200 | 18th Floor | 2.25d | 2028-01-25 | 2028-01-27 | 854 |  | GC1 | 8817654 |
| 856 | 37200.37400.37500.38400.39400.40800.46800.508300 | 19th Floor | 2.25d | 2028-01-27 | 2028-01-29 | 855 |  | GC1 | 8817664 |
| 857 | 37200.37400.37500.38400.39400.40800.46800.508400 | 20th Floor | 2.25d | 2028-01-29 | 2028-01-31 | 856 |  | GC1 | 8817674 |
| 858 | 37200.37400.37500.38400.39400.40800.46800.508500 | 21st Floor | 2.25d | 2028-01-31 | 2028-02-02 | 857 |  | GC1 | 8817684 |
| 859 | 37200.37400.37500.38400.39400.40800.46800.508600 | 22nd Floor | 2.25d | 2028-02-02 | 2028-02-04 | 858 |  | GC1 | 8817694 |
| 860 | 37200.37400.37500.38400.39400.40800.46800.508700 | 23rd Floor | 2.25d | 2028-02-04 | 2028-02-06 | 859 |  | GC1 | 8817704 |
| 861 | 37200.37400.37500.38400.39400.40800.46800.508800 | 24th Floor | 2.25d | 2028-02-06 | 2028-02-08 | 860 |  | GC1 | 8817714 |
| 862 | 37200.37400.37500.38400.39400.40800.46800.508900 | 25th Floor | 2.25d | 2028-02-08 | 2028-02-10 | 861 |  | GC1 | 8817724 |
| 863 | 37200.37400.37500.38400.39400.40800.46800.509000 | 26th Floor | 2.25d | 2028-02-10 | 2028-02-12 | 862 |  | GC1 | 8817734 |
| 864 | 37200.37400.37500.38400.39400.40800.46800.509100 | 27th Floor | 2.25d | 2028-02-12 | 2028-02-14 | 863 |  | GC1 | 8817744 |
| 865 | 37200.37400.37500.38400.39400.40800.46800.509200 | 28th Floor | 2.25d | 2028-02-14 | 2028-02-16 | 864 |  | GC1 | 8817754 |
| 866 | 37200.37400.37500.38400.39400.40800.46800.509300 | 29th Floor | 2.25d | 2028-02-16 | 2028-02-18 | 865 |  | GC1 | 8817764 |
| 867 | 37200.37400.37500.38400.39400.40800.46800.509400 | 30th Floor | 2.25d | 2028-02-18 | 2028-02-20 | 866 |  | GC1 | 8817774 |
| 868 | 37200.37400.37500.38400.39400.40800.46800.509500 | 31st Floor | 2.25d | 2028-02-20 | 2028-02-22 | 867 |  | GC1 | 8817784 |
| 869 | 37200.37400.37500.38400.39400.40800.46800.509600 | 32nd Floor | 2.25d | 2028-02-22 | 2028-02-24 | 868 |  | GC1 | 8817794 |
| 870 | 37200.37400.37500.38400.39400.40800.46800.509700 | 33rd Floor | 2.25d | 2028-02-24 | 2028-02-26 | 869 |  | GC1 | 8817804 |
| 871 | 37200.37400.37500.38400.39400.40800.46800.509800 | 34th Floor | 2.25d | 2028-02-26 | 2028-02-28 | 870 |  | GC1 | 8817814 |
| 872 | 37200.37400.37500.38400.39400.40800.46800.509900 | 35th Floor | 2.25d | 2028-02-28 | 2028-03-01 | 871 |  | GC1 | 8817824 |

| ID | WBS | Task | Duration | Start | Finish | Predecessors | Constraint | Calendar | Unique_Task_ID |
| --- | --- | --- | --- | --- | --- | --- | --- | --- | --- |
| 873 | 37200.37400.37500.38400.95700 | **MEP work** | 370.38d | 2027-05-30 | 2028-06-08 |  | start no earlier than 2027-05-30 | GC1 | 8807984 |
| 874 | 37200.37400.37500.38400.95700.97200 | **Electrical work** | 275.88d | 2027-05-30 | 2028-03-16 |  | start no earlier than 2027-05-30 | GC1 | 8807994 |
| 875 | 37200.37400.37500.38400.95700.97200.337900 | Cable Tray | 135d | 2027-05-30 | 2027-09-27 | 221 |  | GC1 | 8812404 |
| 876 | 37200.37400.37500.38400.95700.97200.338000 | Cable, main & sub main | 90d | 2027-07-14 | 2027-10-02 | 875SS+50.62d |  | GC1 | 8812414 |
| 877 | 37200.37400.37500.38400.95700.97200.338100 | LT panel & DB | 135d | 2027-09-27 | 2028-03-10 | 875 |  | GC1 | 8812424 |
| 878 | 37200.37400.37500.38400.95700.97200.338200 | Rising main | 135d | 2027-07-29 | 2028-01-10 | 875FF+67.5d |  | GC1 | 8812434 |
| 879 | 37200.37400.37500.38400.95700.97200.338300 | EARTHING Works | 67.5d | 2027-10-12 | 2028-01-25 | 875FS+16.88d |  | GC1 | 8812444 |
| 880 | 37200.37400.37500.38400.95700.97200.338400 | Advance lightening protection | 67.5d | 2027-07-09 | 2027-09-07 | 824 |  | GC1 | 8812454 |
| 881 | 37200.37400.37500.38400.95700.97200.338500 | Inverter | 39.38d | 2028-01-25 | 2028-02-29 | 878, 879, 882 |  | GC1 | 8812464 |
| 882 | 37200.37400.37500.38400.95700.97200.338600 | Energy meter | 67.5d | 2027-10-02 | 2028-01-15 | 876 |  | GC1 | 8812474 |
| 883 | 37200.37400.37500.38400.95700.97200.338700 | Exhaust fan | 67.5d | 2027-10-17 | 2028-01-30 | 882FF+16.88d |  | GC1 | 8812484 |
| 884 | 37200.37400.37500.38400.95700.97200.338800 | FTTH | 67.5d | 2028-01-15 | 2028-03-15 | 879FS-11.25d |  | GC1 | 8812494 |
| 885 | 37200.37400.37500.38400.95700.97200.338900 | Security System - FA & PA | 61.88d | 2028-01-21 | 2028-03-16 | 877FF, 884FF+0.25d |  | GC1 | 8812504 |
| 886 | 37200.37400.37500.38400.95700.97200.339000 | Solar water heater | 67.5d | 2027-07-09 | 2027-09-07 | 824 |  | GC1 | 8812514 |
| 887 | 37200.37400.37500.38400.95700.125800 | **Plumbing work** | 370.38d | 2027-05-30 | 2028-06-08 |  | start no earlier than 2027-05-30 | GC1 | 8808344 |
| 888 | 37200.37400.37500.38400.95700.125800.339100 | Terrace looping | 50.62d | 2027-05-30 | 2027-07-14 | 823 |  | GC1 | 8812524 |
| 889 | 37200.37400.37500.38400.95700.125800.339200 | Shaft Plumbing | 135d | 2027-07-14 | 2027-12-26 | 34, 888 |  | GC1 | 8812534 |
| 890 | 37200.37400.37500.38400.95700.125800.339300 | CP sanitary fixture supply | 84.38d | 2028-03-25 | 2028-06-08 | 811, 814FS+67.5d |  | GC1 | 8812544 |
| 891 | 37200.37400.37500.38400.95700.125800.339400 | Cold & flushing water supply | 101.25d | 2027-10-27 | 2028-03-10 | 827SS+101.25d |  | GC1 | 8812554 |
| 892 | 37200.37400.37500.38400.95700.125800.339500 | Misc work | 33.75d | 2028-02-28 | 2028-03-29 | 891FS-12.38d |  | GC1 | 8812564 |
| 893 | 37200.37400.37500.38400.95700.146800 | **Fire fighting work** | 180d | 2027-05-30 | 2027-12-21 |  | start no earlier than 2027-05-30 | GC1 | 8808474 |
| 894 | 37200.37400.37500.38400.95700.146800.339600 | Fire hydrant work | 45d | 2027-08-08 | 2027-09-17 | 827SS+11.25d |  | GC1 | 8812574 |
| 895 | 37200.37400.37500.38400.95700.146800.339700 | Sprinkler & piping work | 45d | 2027-09-27 | 2027-12-21 | 894FS+11.25d |  | GC1 | 8812584 |
| 896 | 37200.37400.37500.38400.95700.146800.339800 | Shaft Downtake works | 101.25d | 2027-05-30 | 2027-08-28 | 823 |  | GC1 | 8812594 |
| 897 | 37200.37400.37500.38400.95700.146800.339900 | Connection to pump room | 33.75d | 2027-08-28 | 2027-09-27 | 896 |  | GC1 | 8812604 |

| ID | WBS | Task | Duration | Start | Finish | Predecessors | Complete | Constraint | Calendar | Unique_Task_ID |
| --- | --- | --- | --- | --- | --- | --- | --- | --- | --- | --- |
| 898 | 37200.37400.37500.38400.95700.187700 | **Lift work** | 191.25d | 2027-05-30 | 2027-12-31 |  |  | start no earlier than 2027-05-30 | GC1 | 8810704 |
| 899 | 37200.37400.37500.38400.95700.187700.340000 | Lift Shaft Handover | 45d | 2027-05-30 | 2027-07-09 | 221 |  |  | GC1 | 8812614 |
| 900 | 37200.37400.37500.38400.95700.187700.340100 | Lift installation work | 50.62d | 2027-07-09 | 2027-08-23 | 899 |  |  | GC1 | 8812624 |
| 901 | 37200.37400.37500.38400.95700.187700.340200 | Lift testing and commissioning | 95.62d | 2027-08-23 | 2027-12-31 | 900 |  |  | GC1 | 8812634 |
| 902 | 37200.37400.37500.38400.95700.193900 | **AC work** | 67.5d | 2028-04-01 | 2028-05-31 |  |  | start no earlier than 2028-04-01 | GC1 | 8810874 |
| 903 | 37200.37400.37500.38400.95700.193900.340300 | Split AC | 67.5d | 2028-04-01 | 2028-05-31 | 919FS-67.5d |  |  | GC1 | 8812644 |
| 904 | 37200.37400.37500.38400.131700 | **Tower Completion** | 202.5d | 2027-07-10 | 2028-02-20 |  |  | start no earlier than 2027-07-10 | GC1 | 8808504 |
| 905 | 37200.37400.37500.38400.131700.270800 | SURFACE PREPARATION | 33.75d | 2027-07-10 | 2027-08-09 | 259FS+2.25d |  |  | GC1 | 8811204 |
| 906 | 37200.37400.37500.38400.131700.270900 | External Painting | 101.25d | 2027-08-09 | 2027-12-22 | 905 |  |  | GC1 | 8811214 |
| 907 | 37200.37400.37500.38400.131700.271000 | Final coat of painting | 67.5d | 2027-12-22 | 2028-02-20 | 906 |  |  | GC1 | 8811224 |
| 908 | 37200.37400.37500.38400.131700.271100 | Misc. work | 67.5d | 2027-12-22 | 2028-02-20 | 906 |  |  | GC1 | 8811234 |
| 909 | 37200.37400.37500.38400.192700 | **Basement lobby** | 135d | 2028-01-04 | 2028-05-03 |  |  | start no earlier than 2028-01-04 | GC1 | 8810854 |
| 910 | 37200.37400.37500.38400.192700.271200 | Basement lobby | 135d | 2028-01-04 | 2028-05-03 | 833 |  |  | GC1 | 8811244 |
| 911 | 37200.37400.37500.38400.106700 | **Post OC activities** | 2137.53d | 2023-05-13 | 2028-12-03 |  | 58% | start no earlier than 2023-05-13 | GC1 | 8808234 |
| 912 | 37200.37400.37500.38400.106700.271300 | Balcony Tile Flooring | 135d | 2028-05-01 | 2028-08-29 | 919FS-33.75d |  |  | GC1 | 8811254 |
| 913 | 37200.37400.37500.38400.106700.233300 | Waterproofing | 1129.5d | 2023-05-13 | 2028-09-06 | 919FS-1971.03d, 890FS-1937.28d | 91% |  | GC1 | 8811264 |
| 914 | 37200.37400.37500.38400.106700.271400 | Wooden Flooring | 135d | 2028-05-01 | 2028-08-29 | 919FS-33.75d |  |  | GC1 | 8811274 |
| 915 | 37200.37400.37500.38400.106700.271500 | Electrical Fixtures And Fittings | 135d | 2028-08-05 | 2028-12-03 | 819 |  |  | GC1 | 8811284 |
| 916 | 37200.37400.37500.38400.106700.271600 | Modular Kitchen | 135d | 2028-05-01 | 2028-08-29 | 912SS |  |  | GC1 | 8811294 |
| 917 | 37200.37400.37500.38400.106700.271700 | External Paint | 101.25d | 2028-05-16 | 2028-08-14 | 919FS-16.88d, 836 |  |  | GC1 | 8811304 |
| 918 | 37200.37400.37500.38400.257100 | OC Application/Readiness | 1.12d | 2028-03-30 | 2028-03-31 | 221FS+0.25d, 828FS+9d, 901FS+0.25d, 33FS+0.25d, 831FS+0.25d, 872FS+0.25d, 880FS+0.25d, 881FS+0.25d, 883FS+0.25d, 885FS+0.25d, 886FS+0.25d, 889FS+0.25d, 892FS+0.25d, 895FS+0.25d, 897FS+0.25d, 908FS+0.25d |  |  | GC1 | 8810954 |
| 919 | 37200.37400.37500.38400.257200 | OC Receipt | 1.12d | 2028-05-30 | 2028-05-31 | 918FS+67.5d, 907, 910 |  |  | GC1 | 8810964 |
| 920 | 37200.37400.37500.38400.257300 | Offer To Possession | 33.75d | 2028-12-03 | 2029-01-02 | 912, 913, 914, 915, 916, 917, 903 |  |  | GC1 | 8810974 |
| 921 | 37200.37400.37500.38500 | **Tower 4** | 1935.14d | 2023-12-06 | 2028-12-30 |  | 12% | start no earlier than 2023-12-06 | GC1 | 8805844 |
| 922 | 37200.37400.37500.38500.98600 | **Substructure** | 769.5d | 2024-05-14 | 2026-05-08 |  | 74% | start no earlier than 2024-05-14 | GC1 | 8808104 |
| 923 | 37200.37400.37500.38500.98600.108700 | **Soil Bed Preparation** | 687.38d | 2024-05-14 | 2026-02-24 |  | 81% | start no earlier than 2024-05-14 | GC1 | 8808224 |
| 924 | 37200.37400.37500.38500.98600.108700.222500 | Test Piling | 106.69d | 2024-05-14 | 2024-08-16 | 7SS | 100% | start no earlier than 2024-05-14 | GC1 | 8812654 |
| 925 | 37200.37400.37500.38500.98600.108700.222400 | Excavation | 33.56d | 2024-06-26 | 2024-07-25 | 924SS+43d | 100% | start no earlier than 2024-06-26 | GC1 | 8812664 |
| 926 | 37200.37400.37500.38500.98600.108700.222300 | Main Piling Work | 169.88d | 2024-09-01 | 2025-03-06 | 924FS+15d | 100% | start no earlier than 2024-09-01 | GC1 | 8812674 |
| 927 | 37200.37400.37500.38500.98600.108700.340400 | Anti-termite | 5.62d | 2025-12-27 | 2025-12-31 | 926FF+2d |  |  | GC1 | 8812684 |
| 928 | 37200.37400.37500.38500.98600.108700.222200 | PCC | 9d | 2025-03-23 | 2025-03-31 | 925FS+0.25d | 100% | start no earlier than 2025-03-23 | GC1 | 8812694 |
| 929 | 37200.37400.37500.38500.98600.108700.340500 | Backfilling | 67.5d | 2025-12-27 | 2026-02-24 | 942 |  |  | GC1 | 8812704 |

| ID | WBS | Task | Duration | Start | Finish | Predecessors | Complete | Constraint | Calendar | Unique_Task_ID |
| --- | --- | --- | --- | --- | --- | --- | --- | --- | --- | --- |
| 930 | 37200.37400.37500.38500.98600.102400 | **RCC Structure** | 241.88d | 2025-03-15 | 2025-10-15 |  | 100% | start no earlier than 2025-03-15 | GC1 | 8808184 |
| 931 | 37200.37400.37500.38500.98600.102400.162600 | **Raft Foundation** | 79.88d | 2025-03-15 | 2025-05-24 |  | 100% | start no earlier than 2025-03-15 | GC1 | 8810504 |
| 932 | 37200.37400.37500.38500.98600.102400.162600.235500 | Reinforcement | 19.12d | 2025-03-15 | 2025-03-31 | 928FS-2.25d | 100% | start no earlier than 2025-03-15 | GC1 | 8817834 |
| 933 | 37200.37400.37500.38500.98600.102400.162600.235600 | Formwork | 36d | 2025-04-21 | 2025-05-22 | 932FF+11.25d | 100% | start no earlier than 2025-04-21 | GC1 | 8817844 |
| 934 | 37200.37400.37500.38500.98600.102400.162600.235700 | Concreting | 3.38d | 2025-05-22 | 2025-05-24 | 933FS-3.38d | 100% | start no earlier than 2025-05-22 | GC1 | 8817854 |
| 935 | 37200.37400.37500.38500.98600.102400.162500 | **Basement 1 Slab** | 65.25d | 2025-04-16 | 2025-06-12 |  | 100% | start no earlier than 2025-04-16 | GC1 | 8810514 |
| 936 | 37200.37400.37500.38500.98600.102400.162500.235800 | Reinforcement | 22.5d | 2025-05-24 | 2025-06-12 | 934 | 100% | start no earlier than 2025-05-24 | GC1 | 8817864 |
| 937 | 37200.37400.37500.38500.98600.102400.162500.235900 | Formwork | 22.5d | 2025-04-16 | 2025-05-05 | 936SS+1.12d | 100% | start no earlier than 2025-04-16 | GC1 | 8817874 |
| 938 | 37200.37400.37500.38500.98600.102400.162500.236000 | Concreting | 4.5d | 2025-05-06 | 2025-05-09 | 937 | 100% | start no earlier than 2025-05-06 | GC1 | 8817884 |
| 939 | 37200.37400.37500.38500.98600.102400.162400 | **Basement 2 Slab/GF** | 132.75d | 2025-05-10 | 2025-09-04 |  | 100% | start no earlier than 2025-05-10 | GC1 | 8810524 |
| 940 | 37200.37400.37500.38500.98600.102400.162400.236100 | Reinforcement | 131.62d | 2025-05-10 | 2025-09-03 | 938 | 100% | start no earlier than 2025-05-10 | GC1 | 8817894 |
| 941 | 37200.37400.37500.38500.98600.102400.162400.236200 | Formwork | 130.5d | 2025-05-11 | 2025-09-03 | 940SS+1.12d | 100% | start no earlier than 2025-05-11 | GC1 | 8817904 |
| 942 | 37200.37400.37500.38500.98600.102400.162400.236300 | Concreting | 109.12d | 2025-05-31 | 2025-09-04 | 941 | 100% | start no earlier than 2025-05-31 | GC1 | 8817914 |
| 943 | 37200.37400.37500.38500.98600.102400.162300 | **Podium /Ground Floor Slab** | 126d | 2025-06-26 | 2025-10-15 |  | 100% | start no earlier than 2025-06-26 | GC1 | 8810534 |
| 944 | 37200.37400.37500.38500.98600.102400.162300.236400 | Reinforcement | 21.38d | 2025-09-01 | 2025-10-14 | 942 | 100% | start no earlier than 2025-09-01 | GC1 | 8817924 |
| 945 | 37200.37400.37500.38500.98600.102400.162300.236500 | Formwork | 21.38d | 2025-09-03 | 2025-10-14 | 944SS+1.12d | 100% | start no earlier than 2025-09-03 | GC1 | 8817934 |
| 946 | 37200.37400.37500.38500.98600.102400.162300.236600 | Concreting | 4.5d | 2025-06-26 | 2025-10-15 | 945FS-124.88d | 100% | start no earlier than 2025-06-26 | GC1 | 8817944 |
| 947 | 37200.37400.37500.38500.98600.137200 | **Substructure Finishing** | 146.25d | 2025-12-30 | 2026-05-08 |  |  | start no earlier than 2025-12-30 | GC1 | 8808484 |
| 948 | 37200.37400.37500.38500.98600.137200.340600 | Masonary work | 50.62d | 2025-12-30 | 2026-02-12 | 946FS+33.75d |  |  | GC1 | 8812714 |
| 949 | 37200.37400.37500.38500.98600.137200.340700 | Plaster | 45d | 2026-02-13 | 2026-03-24 | 948 |  |  | GC1 | 8812724 |
| 950 | 37200.37400.37500.38500.98600.137200.340800 | Structural steel | 67.5d | 2026-01-29 | 2026-03-29 | 946FS+67.5d |  |  | GC1 | 8812734 |
| 951 | 37200.37400.37500.38500.98600.137200.340900 | White Wash | 50.62d | 2026-03-25 | 2026-05-08 | 949 |  |  | GC1 | 8812744 |
| 952 | 37200.37400.37500.38500.39500 | **Superstructure** | 1036.26d | 2025-10-10 | 2028-08-27 |  |  | start no earlier than 2025-10-10 | GC1 | 8805894 |
| 953 | 37200.37400.37500.38500.39500.43900 | **RCC structure** | 573.64d | 2025-10-10 | 2027-05-28 |  | 5% | start no earlier than 2025-10-10 | GC1 | 8806044 |
| 954 | 37200.37400.37500.38500.39500.43900.125400 | **1st floor slab** | 75.26d | 2025-10-10 | 2026-01-25 |  | 30% | start no earlier than 2025-10-10 | GC1 | 8810044 |
| 955 | 37200.37400.37500.38500.39500.43900.125400.236700 | Reinforcement | 52.88d | 2025-10-10 | 2026-01-23 | 946FS-6.75d | 40% | start no earlier than 2025-10-10 | GC1 | 8817954 |
| 956 | 37200.37400.37500.38500.39500.43900.125400.236800 | Wall conduiting | 33.75d | 2025-10-13 | 2026-01-23 | 955SS+3.38d | 6% | start no earlier than 2025-10-13 | GC1 | 8817964 |
| 957 | 37200.37400.37500.38500.39500.43900.125400.236900 | Formwork | 51.75d | 2025-10-13 | 2026-01-24 | 955SS+3.38d | 36% | start no earlier than 2025-10-13 | GC1 | 8817974 |
| 958 | 37200.37400.37500.38500.39500.43900.125400.237000 | Concreting | 1.12d | 2025-10-14 | 2026-01-25 | 957FS-69.75d | 10% |  | GC1 | 8817984 |

| ID | WBS | Task | Duration | Start | Finish | Predecessors | Complete | Constraint | Calendar | Unique_Task_ID |
| --- | --- | --- | --- | --- | --- | --- | --- | --- | --- | --- |
| 959 | 37200.37400.37500.38500.39500.43900.162200 | **2nd floor slab** | 78.64d | 2025-11-06 | 2026-02-24 |  | 19% | start no earlier than 2025-11-06 | GC1 | 8810034 |
| 960 | 37200.37400.37500.38500.39500.43900.162200.237100 | Reinforcement | 34.88d | 2025-11-06 | 2026-02-15 | 958FS-44.89d | 38% | start no earlier than 2025-11-06 | GC1 | 8817994 |
| 961 | 37200.37400.37500.38500.39500.43900.162200.510000 | Wall conduiting | 3.38d | 2026-01-26 | 2026-01-29 | 956FS+0.25d, 960SS+46.01d |  |  | GC1 | 8818004 |
| 962 | 37200.37400.37500.38500.39500.43900.162200.510100 | Formwork | 30.38d | 2026-01-27 | 2026-02-23 | 960SS+47.14d |  |  | GC1 | 8818014 |
| 963 | 37200.37400.37500.38500.39500.43900.162200.510200 | Concreting | 1.12d | 2026-02-23 | 2026-02-24 | 962 |  |  | GC1 | 8818024 |
| 964 | 37200.37400.37500.38500.39500.43900.162100 | **3rd floor slab** | 11.25d | 2026-02-24 | 2026-03-06 |  |  | start no earlier than 2026-02-24 | GC1 | 8810024 |
| 965 | 37200.37400.37500.38500.39500.43900.162100.510300 | Reinforcement | 7.88d | 2026-02-24 | 2026-03-03 | 963 |  |  | GC1 | 8818034 |
| 966 | 37200.37400.37500.38500.39500.43900.162100.510400 | Wall conduiting | 2.25d | 2026-02-27 | 2026-03-01 | 961, 965SS+3.38d |  |  | GC1 | 8818044 |
| 967 | 37200.37400.37500.38500.39500.43900.162100.510500 | Formwork | 7.88d | 2026-02-26 | 2026-03-05 | 965SS+2.25d |  |  | GC1 | 8818054 |
| 968 | 37200.37400.37500.38500.39500.43900.162100.510600 | Concreting | 1.12d | 2026-03-05 | 2026-03-06 | 967 |  |  | GC1 | 8818064 |
| 969 | 37200.37400.37500.38500.39500.43900.162000 | **4th floor slab** | 11.25d | 2026-03-06 | 2026-03-16 |  |  | start no earlier than 2026-03-06 | GC1 | 8810014 |
| 970 | 37200.37400.37500.38500.39500.43900.162000.510700 | Reinforcement | 7.88d | 2026-03-06 | 2026-03-13 | 968 |  |  | GC1 | 8818074 |
| 971 | 37200.37400.37500.38500.39500.43900.162000.510800 | Wall conduiting | 2.25d | 2026-03-07 | 2026-03-09 | 966, 970SS+1.12d |  |  | GC1 | 8818084 |
| 972 | 37200.37400.37500.38500.39500.43900.162000.510900 | Formwork | 7.88d | 2026-03-08 | 2026-03-15 | 970SS+2.25d |  |  | GC1 | 8818094 |
| 973 | 37200.37400.37500.38500.39500.43900.162000.511000 | Concreting | 1.12d | 2026-03-15 | 2026-03-16 | 972 |  |  | GC1 | 8818104 |
| 974 | 37200.37400.37500.38500.39500.43900.161900 | **5th floor slab** | 11.25d | 2026-03-16 | 2026-03-26 |  |  | start no earlier than 2026-03-16 | GC1 | 8810004 |
| 975 | 37200.37400.37500.38500.39500.43900.161900.511100 | Reinforcement | 7.88d | 2026-03-16 | 2026-03-23 | 973 |  |  | GC1 | 8818114 |
| 976 | 37200.37400.37500.38500.39500.43900.161900.511200 | Wall conduiting | 2.25d | 2026-03-17 | 2026-03-19 | 971, 975SS+1.12d |  |  | GC1 | 8818124 |
| 977 | 37200.37400.37500.38500.39500.43900.161900.511300 | Formwork | 7.88d | 2026-03-18 | 2026-03-25 | 975SS+2.25d |  |  | GC1 | 8818134 |
| 978 | 37200.37400.37500.38500.39500.43900.161900.511400 | Concreting | 1.12d | 2026-03-25 | 2026-03-26 | 977 |  |  | GC1 | 8818144 |
| 979 | 37200.37400.37500.38500.39500.43900.161800 | **6th floor slab** | 11.25d | 2026-03-26 | 2026-04-05 |  |  | start no earlier than 2026-03-26 | GC1 | 8809994 |
| 980 | 37200.37400.37500.38500.39500.43900.161800.511500 | Reinforcement | 7.88d | 2026-03-26 | 2026-04-02 | 978 |  |  | GC1 | 8818154 |
| 981 | 37200.37400.37500.38500.39500.43900.161800.511600 | Wall conduiting | 2.25d | 2026-03-27 | 2026-03-29 | 976, 980SS+1.12d |  |  | GC1 | 8818164 |
| 982 | 37200.37400.37500.38500.39500.43900.161800.511700 | Formwork | 7.88d | 2026-03-28 | 2026-04-04 | 980SS+2.25d |  |  | GC1 | 8818174 |
| 983 | 37200.37400.37500.38500.39500.43900.161800.511800 | Concreting | 1.12d | 2026-04-04 | 2026-04-05 | 982 |  |  | GC1 | 8818184 |

| ID | WBS | Task | Duration | Start | Finish | Predecessors | Constraint | Calendar | Unique_Task_ID |
| --- | --- | --- | --- | --- | --- | --- | --- | --- | --- |
| 984 | 37200.37400.37500.38500.39500.43900.161700 | **7th floor slab** | 11.25d | 2026-04-05 | 2026-04-15 |  | start no earlier than 2026-04-05 | GC1 | 8809984 |
| 985 | 37200.37400.37500.38500.39500.43900.161700.511900 | Reinforcement | 7.88d | 2026-04-05 | 2026-04-12 | 983 |  | GC1 | 8818194 |
| 986 | 37200.37400.37500.38500.39500.43900.161700.512000 | Wall conduiting | 2.25d | 2026-04-06 | 2026-04-08 | 981, 985SS+1.12d |  | GC1 | 8818204 |
| 987 | 37200.37400.37500.38500.39500.43900.161700.512100 | Formwork | 7.88d | 2026-04-07 | 2026-04-14 | 985SS+2.25d |  | GC1 | 8818214 |
| 988 | 37200.37400.37500.38500.39500.43900.161700.512200 | Concreting | 1.12d | 2026-04-14 | 2026-04-15 | 987 |  | GC1 | 8818224 |
| 989 | 37200.37400.37500.38500.39500.43900.161600 | **8th floor slab** | 12.38d | 2026-04-15 | 2026-04-26 |  | start no earlier than 2026-04-15 | GC1 | 8809974 |
| 990 | 37200.37400.37500.38500.39500.43900.161600.512300 | Reinforcement | 7.88d | 2026-04-15 | 2026-04-22 | 988 |  | GC1 | 8818234 |
| 991 | 37200.37400.37500.38500.39500.43900.161600.512400 | Wall conduiting | 2.25d | 2026-04-16 | 2026-04-18 | 986, 990SS+1.12d |  | GC1 | 8818244 |
| 992 | 37200.37400.37500.38500.39500.43900.161600.512500 | Formwork | 9d | 2026-04-17 | 2026-04-25 | 990SS+2.25d |  | GC1 | 8818254 |
| 993 | 37200.37400.37500.38500.39500.43900.161600.512600 | Concreting | 1.12d | 2026-04-25 | 2026-04-26 | 992 |  | GC1 | 8818264 |
| 994 | 37200.37400.37500.38500.39500.43900.161500 | **9th floor slab** | 11.25d | 2026-04-26 | 2026-05-06 |  | start no earlier than 2026-04-26 | GC1 | 8809964 |
| 995 | 37200.37400.37500.38500.39500.43900.161500.512700 | Reinforcement | 7.88d | 2026-04-26 | 2026-05-03 | 993 |  | GC1 | 8818274 |
| 996 | 37200.37400.37500.38500.39500.43900.161500.512800 | Wall conduiting | 2.25d | 2026-04-27 | 2026-04-29 | 991, 995SS+1.12d |  | GC1 | 8818284 |
| 997 | 37200.37400.37500.38500.39500.43900.161500.512900 | Formwork | 7.88d | 2026-04-28 | 2026-05-05 | 995SS+2.25d |  | GC1 | 8818294 |
| 998 | 37200.37400.37500.38500.39500.43900.161500.513000 | Concreting | 1.12d | 2026-05-05 | 2026-05-06 | 997 |  | GC1 | 8818304 |
| 999 | 37200.37400.37500.38500.39500.43900.161400 | **10th floor slab** | 11.25d | 2026-05-06 | 2026-05-16 |  | start no earlier than 2026-05-06 | GC1 | 8809954 |
| 1000 | 37200.37400.37500.38500.39500.43900.161400.513100 | Reinforcement | 7.88d | 2026-05-06 | 2026-05-13 | 998 |  | GC1 | 8818314 |
| 1001 | 37200.37400.37500.38500.39500.43900.161400.513200 | Wall conduiting | 2.25d | 2026-05-07 | 2026-05-09 | 996, 1000SS+1.12d |  | GC1 | 8818324 |
| 1002 | 37200.37400.37500.38500.39500.43900.161400.513300 | Formwork | 7.88d | 2026-05-08 | 2026-05-15 | 1000SS+2.25d |  | GC1 | 8818334 |
| 1003 | 37200.37400.37500.38500.39500.43900.161400.513400 | Concreting | 1.12d | 2026-05-15 | 2026-05-16 | 1002 |  | GC1 | 8818344 |
| 1004 | 37200.37400.37500.38500.39500.43900.161300 | **11th floor slab** | 11.25d | 2026-05-16 | 2026-05-26 |  | start no earlier than 2026-05-16 | GC1 | 8809944 |
| 1005 | 37200.37400.37500.38500.39500.43900.161300.513500 | Reinforcement | 7.88d | 2026-05-16 | 2026-05-23 | 1003 |  | GC1 | 8818354 |
| 1006 | 37200.37400.37500.38500.39500.43900.161300.513600 | Wall conduiting | 2.25d | 2026-05-17 | 2026-05-19 | 1001, 1005SS+1.12d |  | GC1 | 8818364 |
| 1007 | 37200.37400.37500.38500.39500.43900.161300.513700 | Formwork | 7.88d | 2026-05-18 | 2026-05-25 | 1005SS+2.25d |  | GC1 | 8818374 |
| 1008 | 37200.37400.37500.38500.39500.43900.161300.513800 | Concreting | 1.12d | 2026-05-25 | 2026-05-26 | 1007 |  | GC1 | 8818384 |

| ID | WBS | Task | Duration | Start | Finish | Predecessors | Constraint | Calendar | Unique_Task_ID |
| --- | --- | --- | --- | --- | --- | --- | --- | --- | --- |
| 1009 | 37200.37400.37500.38500.39500.43900.161200 | **12th floor slab** | 11.25d | 2026-05-26 | 2026-06-05 |  | start no earlier than 2026-05-26 | GC1 | 8809934 |
| 1010 | 37200.37400.37500.38500.39500.43900.161200.513900 | Reinforcement | 7.88d | 2026-05-26 | 2026-06-02 | 1008 |  | GC1 | 8818394 |
| 1011 | 37200.37400.37500.38500.39500.43900.161200.514000 | Wall conduiting | 2.25d | 2026-05-27 | 2026-05-29 | 1006, 1010SS+1.12d |  | GC1 | 8818404 |
| 1012 | 37200.37400.37500.38500.39500.43900.161200.514100 | Formwork | 7.88d | 2026-05-28 | 2026-06-04 | 1010SS+2.25d |  | GC1 | 8818414 |
| 1013 | 37200.37400.37500.38500.39500.43900.161200.514200 | Concreting | 1.12d | 2026-06-04 | 2026-06-05 | 1012 |  | GC1 | 8818424 |
| 1014 | 37200.37400.37500.38500.39500.43900.161100 | **13th floor slab** | 11.25d | 2026-06-05 | 2026-06-15 |  | start no earlier than 2026-06-05 | GC1 | 8809924 |
| 1015 | 37200.37400.37500.38500.39500.43900.161100.514300 | Reinforcement | 7.88d | 2026-06-05 | 2026-06-12 | 1013 |  | GC1 | 8818434 |
| 1016 | 37200.37400.37500.38500.39500.43900.161100.514400 | Wall conduiting | 2.25d | 2026-06-06 | 2026-06-08 | 1011, 1015SS+1.12d |  | GC1 | 8818444 |
| 1017 | 37200.37400.37500.38500.39500.43900.161100.514500 | Formwork | 7.88d | 2026-06-07 | 2026-06-14 | 1015SS+2.25d |  | GC1 | 8818454 |
| 1018 | 37200.37400.37500.38500.39500.43900.161100.514600 | Concreting | 1.12d | 2026-06-14 | 2026-06-15 | 1017 |  | GC1 | 8818464 |
| 1019 | 37200.37400.37500.38500.39500.43900.161000 | **14th floor slab** | 11.25d | 2026-06-15 | 2026-06-25 |  | start no earlier than 2026-06-15 | GC1 | 8809914 |
| 1020 | 37200.37400.37500.38500.39500.43900.161000.514700 | Reinforcement | 7.88d | 2026-06-15 | 2026-06-22 | 1018 |  | GC1 | 8818474 |
| 1021 | 37200.37400.37500.38500.39500.43900.161000.514800 | Wall conduiting | 2.25d | 2026-06-16 | 2026-06-18 | 1016, 1020SS+1.12d |  | GC1 | 8818484 |
| 1022 | 37200.37400.37500.38500.39500.43900.161000.514900 | Formwork | 7.88d | 2026-06-17 | 2026-06-24 | 1020SS+2.25d |  | GC1 | 8818494 |
| 1023 | 37200.37400.37500.38500.39500.43900.161000.515000 | Concreting | 1.12d | 2026-06-24 | 2026-06-25 | 1022 |  | GC1 | 8818504 |
| 1024 | 37200.37400.37500.38500.39500.43900.160900 | **15th floor slab** | 11.25d | 2026-06-25 | 2026-07-05 |  | start no earlier than 2026-06-25 | GC1 | 8809904 |
| 1025 | 37200.37400.37500.38500.39500.43900.160900.515100 | Reinforcement | 7.88d | 2026-06-25 | 2026-07-02 | 1023 |  | GC1 | 8818514 |
| 1026 | 37200.37400.37500.38500.39500.43900.160900.515200 | Wall conduiting | 2.25d | 2026-06-26 | 2026-06-28 | 1021, 1025SS+1.12d |  | GC1 | 8818524 |
| 1027 | 37200.37400.37500.38500.39500.43900.160900.515300 | Formwork | 7.88d | 2026-06-27 | 2026-07-04 | 1025SS+2.25d |  | GC1 | 8818534 |
| 1028 | 37200.37400.37500.38500.39500.43900.160900.515400 | Concreting | 1.12d | 2026-07-04 | 2026-07-05 | 1027 |  | GC1 | 8818544 |
| 1029 | 37200.37400.37500.38500.39500.43900.160800 | **16th floor slab** | 12.38d | 2026-07-05 | 2026-07-16 |  | start no earlier than 2026-07-05 | GC1 | 8809894 |
| 1030 | 37200.37400.37500.38500.39500.43900.160800.515500 | Reinforcement | 9d | 2026-07-05 | 2026-07-13 | 1028 |  | GC1 | 8818554 |
| 1031 | 37200.37400.37500.38500.39500.43900.160800.515600 | Wall conduiting | 2.25d | 2026-07-06 | 2026-07-08 | 1026, 1030SS+1.12d |  | GC1 | 8818564 |
| 1032 | 37200.37400.37500.38500.39500.43900.160800.515700 | Formwork | 9d | 2026-07-07 | 2026-07-15 | 1030SS+2.25d |  | GC1 | 8818574 |
| 1033 | 37200.37400.37500.38500.39500.43900.160800.515800 | Concreting | 1.12d | 2026-07-15 | 2026-07-16 | 1032 |  | GC1 | 8818584 |

| ID | WBS | Task | Duration | Start | Finish | Predecessors | Constraint | Calendar | Unique_Task_ID |
| --- | --- | --- | --- | --- | --- | --- | --- | --- | --- |
| 1034 | 37200.37400.37500.38500.39500.43900.160700 | **17th floor slab** | 11.25d | 2026-07-16 | 2026-07-26 |  | start no earlier than 2026-07-16 | GC1 | 8809884 |
| 1035 | 37200.37400.37500.38500.39500.43900.160700.515900 | Reinforcement | 9d | 2026-07-16 | 2026-07-24 | 1033 |  | GC1 | 8818594 |
| 1036 | 37200.37400.37500.38500.39500.43900.160700.516000 | Wall conduiting | 2.25d | 2026-07-17 | 2026-07-19 | 1031, 1035SS+1.12d |  | GC1 | 8818604 |
| 1037 | 37200.37400.37500.38500.39500.43900.160700.516100 | Formwork | 7.88d | 2026-07-18 | 2026-07-25 | 1035SS+2.25d |  | GC1 | 8818614 |
| 1038 | 37200.37400.37500.38500.39500.43900.160700.516200 | Concreting | 1.12d | 2026-07-25 | 2026-07-26 | 1037 |  | GC1 | 8818624 |
| 1039 | 37200.37400.37500.38500.39500.43900.160600 | **18th floor slab** | 11.25d | 2026-07-26 | 2026-08-05 |  | start no earlier than 2026-07-26 | GC1 | 8809874 |
| 1040 | 37200.37400.37500.38500.39500.43900.160600.516300 | Reinforcement | 9d | 2026-07-26 | 2026-08-03 | 1038 |  | GC1 | 8818634 |
| 1041 | 37200.37400.37500.38500.39500.43900.160600.516400 | Wall conduiting | 2.25d | 2026-07-27 | 2026-07-29 | 1036, 1040SS+1.12d |  | GC1 | 8818644 |
| 1042 | 37200.37400.37500.38500.39500.43900.160600.516500 | Formwork | 7.88d | 2026-07-28 | 2026-08-04 | 1040SS+2.25d |  | GC1 | 8818654 |
| 1043 | 37200.37400.37500.38500.39500.43900.160600.516600 | Concreting | 1.12d | 2026-08-04 | 2026-08-05 | 1042 |  | GC1 | 8818664 |
| 1044 | 37200.37400.37500.38500.39500.43900.160500 | **19th floor slab** | 11.25d | 2026-08-05 | 2026-08-15 |  | start no earlier than 2026-08-05 | GC1 | 8809864 |
| 1045 | 37200.37400.37500.38500.39500.43900.160500.516700 | Reinforcement | 9d | 2026-08-05 | 2026-08-13 | 1043 |  | GC1 | 8818674 |
| 1046 | 37200.37400.37500.38500.39500.43900.160500.516800 | Wall conduiting | 2.25d | 2026-08-06 | 2026-08-08 | 1041, 1045SS+1.12d |  | GC1 | 8818684 |
| 1047 | 37200.37400.37500.38500.39500.43900.160500.516900 | Formwork | 9d | 2026-08-06 | 2026-08-14 | 1045SS+1.12d |  | GC1 | 8818694 |
| 1048 | 37200.37400.37500.38500.39500.43900.160500.517000 | Concreting | 1.12d | 2026-08-14 | 2026-08-15 | 1047 |  | GC1 | 8818704 |
| 1049 | 37200.37400.37500.38500.39500.43900.160400 | **20th floor slab** | 11.25d | 2026-08-15 | 2026-08-25 |  | start no earlier than 2026-08-15 | GC1 | 8809854 |
| 1050 | 37200.37400.37500.38500.39500.43900.160400.517100 | Reinforcement | 9d | 2026-08-15 | 2026-08-23 | 1048 |  | GC1 | 8818714 |
| 1051 | 37200.37400.37500.38500.39500.43900.160400.517200 | Wall conduiting | 2.25d | 2026-08-16 | 2026-08-18 | 1046, 1050SS+1.12d |  | GC1 | 8818724 |
| 1052 | 37200.37400.37500.38500.39500.43900.160400.517300 | Formwork | 9d | 2026-08-16 | 2026-08-24 | 1050SS+1.12d |  | GC1 | 8818734 |
| 1053 | 37200.37400.37500.38500.39500.43900.160400.517400 | Concreting | 1.12d | 2026-08-24 | 2026-08-25 | 1052 |  | GC1 | 8818744 |
| 1054 | 37200.37400.37500.38500.39500.43900.160300 | **21st floor slab** | 11.25d | 2026-08-25 | 2026-09-04 |  | start no earlier than 2026-08-25 | GC1 | 8809844 |
| 1055 | 37200.37400.37500.38500.39500.43900.160300.517500 | Reinforcement | 9d | 2026-08-25 | 2026-09-02 | 1053 |  | GC1 | 8818754 |
| 1056 | 37200.37400.37500.38500.39500.43900.160300.517600 | Wall conduiting | 2.25d | 2026-08-26 | 2026-08-28 | 1051, 1055SS+1.12d |  | GC1 | 8818764 |
| 1057 | 37200.37400.37500.38500.39500.43900.160300.517700 | Formwork | 7.88d | 2026-08-27 | 2026-09-03 | 1055SS+2.25d |  | GC1 | 8818774 |
| 1058 | 37200.37400.37500.38500.39500.43900.160300.517800 | Concreting | 1.12d | 2026-09-03 | 2026-09-04 | 1057 |  | GC1 | 8818784 |

| ID | WBS | Task | Duration | Start | Finish | Predecessors | Constraint | Calendar | Unique_Task_ID |
| --- | --- | --- | --- | --- | --- | --- | --- | --- | --- |
| 1059 | 37200.37400.37500.38500.39500.43900.160200 | **22nd floor slab** | 11.25d | 2026-09-04 | 2026-09-14 |  | start no earlier than 2026-09-04 | GC1 | 8809834 |
| 1060 | 37200.37400.37500.38500.39500.43900.160200.517900 | Reinforcement | 9d | 2026-09-04 | 2026-09-12 | 1058 |  | GC1 | 8818794 |
| 1061 | 37200.37400.37500.38500.39500.43900.160200.518000 | Wall conduiting | 2.25d | 2026-09-05 | 2026-09-07 | 1056, 1060SS+1.12d |  | GC1 | 8818804 |
| 1062 | 37200.37400.37500.38500.39500.43900.160200.518100 | Formwork | 7.88d | 2026-09-06 | 2026-09-13 | 1060SS+2.25d |  | GC1 | 8818814 |
| 1063 | 37200.37400.37500.38500.39500.43900.160200.518200 | Concreting | 1.12d | 2026-09-13 | 2026-09-14 | 1062 |  | GC1 | 8818824 |
| 1064 | 37200.37400.37500.38500.39500.43900.160100 | **23rd floor slab** | 11.25d | 2026-09-14 | 2026-09-24 |  | start no earlier than 2026-09-14 | GC1 | 8809824 |
| 1065 | 37200.37400.37500.38500.39500.43900.160100.518300 | Reinforcement | 9d | 2026-09-14 | 2026-09-22 | 1063 |  | GC1 | 8818834 |
| 1066 | 37200.37400.37500.38500.39500.43900.160100.518400 | Wall conduiting | 2.25d | 2026-09-15 | 2026-09-17 | 1061, 1065SS+1.12d |  | GC1 | 8818844 |
| 1067 | 37200.37400.37500.38500.39500.43900.160100.518500 | Formwork | 7.88d | 2026-09-16 | 2026-09-23 | 1065SS+2.25d |  | GC1 | 8818854 |
| 1068 | 37200.37400.37500.38500.39500.43900.160100.518600 | Concreting | 1.12d | 2026-09-23 | 2026-09-24 | 1067 |  | GC1 | 8818864 |
| 1069 | 37200.37400.37500.38500.39500.43900.160000 | **24th floor slab** | 15.75d | 2026-09-24 | 2026-10-08 |  | start no earlier than 2026-09-24 | GC1 | 8809814 |
| 1070 | 37200.37400.37500.38500.39500.43900.160000.518700 | Reinforcement | 12.38d | 2026-09-24 | 2026-10-05 | 1068 |  | GC1 | 8818874 |
| 1071 | 37200.37400.37500.38500.39500.43900.160000.518800 | Wall conduiting | 2.25d | 2026-09-25 | 2026-09-27 | 1066, 1070SS+1.12d |  | GC1 | 8818884 |
| 1072 | 37200.37400.37500.38500.39500.43900.160000.518900 | Formwork | 12.38d | 2026-09-26 | 2026-10-07 | 1070SS+2.25d |  | GC1 | 8818894 |
| 1073 | 37200.37400.37500.38500.39500.43900.160000.519000 | Concreting | 1.12d | 2026-10-07 | 2026-10-08 | 1072 |  | GC1 | 8818904 |
| 1074 | 37200.37400.37500.38500.39500.43900.159900 | **25th floor slab** | 16.88d | 2026-10-08 | 2026-10-23 |  | start no earlier than 2026-10-08 | GC1 | 8809804 |
| 1075 | 37200.37400.37500.38500.39500.43900.159900.519100 | Reinforcement | 13.5d | 2026-10-08 | 2026-10-20 | 1073 |  | GC1 | 8818914 |
| 1076 | 37200.37400.37500.38500.39500.43900.159900.519200 | Wall conduiting | 2.25d | 2026-10-09 | 2026-10-11 | 1071, 1075SS+1.12d |  | GC1 | 8818924 |
| 1077 | 37200.37400.37500.38500.39500.43900.159900.519300 | Formwork | 13.5d | 2026-10-10 | 2026-10-22 | 1075SS+2.25d |  | GC1 | 8818934 |
| 1078 | 37200.37400.37500.38500.39500.43900.159900.519400 | Concreting | 1.12d | 2026-10-22 | 2026-10-23 | 1077 |  | GC1 | 8818944 |
| 1079 | 37200.37400.37500.38500.39500.43900.159800 | **26th floor slab** | 11.25d | 2026-10-23 | 2026-12-17 |  | start no earlier than 2026-10-23 | GC1 | 8809794 |
| 1080 | 37200.37400.37500.38500.39500.43900.159800.519500 | Reinforcement | 9d | 2026-10-23 | 2026-10-31 | 1078 |  | GC1 | 8818954 |
| 1081 | 37200.37400.37500.38500.39500.43900.159800.519600 | Wall conduiting | 2.25d | 2026-10-24 | 2026-10-26 | 1076, 1080SS+1.12d |  | GC1 | 8818964 |
| 1082 | 37200.37400.37500.38500.39500.43900.159800.519700 | Formwork | 7.88d | 2026-10-25 | 2026-12-16 | 1080SS+2.25d |  | GC1 | 8818974 |
| 1083 | 37200.37400.37500.38500.39500.43900.159800.519800 | Concreting | 1.12d | 2026-12-16 | 2026-12-17 | 1082 |  | GC1 | 8818984 |

| ID | WBS | Task | Duration | Start | Finish | Predecessors | Constraint | Calendar | Unique_Task_ID |
| --- | --- | --- | --- | --- | --- | --- | --- | --- | --- |
| 1084 | 37200.37400.37500.38500.39500.43900.159700 | **27th floor slab** | 11.25d | 2026-12-17 | 2026-12-27 |  | start no earlier than 2026-12-17 | GC1 | 8809784 |
| 1085 | 37200.37400.37500.38500.39500.43900.159700.519900 | Reinforcement | 9d | 2026-12-17 | 2026-12-25 | 1083 |  | GC1 | 8818994 |
| 1086 | 37200.37400.37500.38500.39500.43900.159700.520000 | Wall conduiting | 2.25d | 2026-12-18 | 2026-12-20 | 1081, 1085SS+1.12d |  | GC1 | 8819004 |
| 1087 | 37200.37400.37500.38500.39500.43900.159700.520100 | Formwork | 7.88d | 2026-12-19 | 2026-12-26 | 1085SS+2.25d |  | GC1 | 8819014 |
| 1088 | 37200.37400.37500.38500.39500.43900.159700.520200 | Concreting | 1.12d | 2026-12-26 | 2026-12-27 | 1087 |  | GC1 | 8819024 |
| 1089 | 37200.37400.37500.38500.39500.43900.159600 | **28th floor slab** | 11.25d | 2026-12-27 | 2027-01-06 |  | start no earlier than 2026-12-27 | GC1 | 8809774 |
| 1090 | 37200.37400.37500.38500.39500.43900.159600.520300 | Reinforcement | 9d | 2026-12-27 | 2027-01-04 | 1088 |  | GC1 | 8819034 |
| 1091 | 37200.37400.37500.38500.39500.43900.159600.520400 | Wall conduiting | 2.25d | 2026-12-28 | 2026-12-30 | 1086, 1090SS+1.12d |  | GC1 | 8819044 |
| 1092 | 37200.37400.37500.38500.39500.43900.159600.520500 | Formwork | 7.88d | 2026-12-29 | 2027-01-05 | 1090SS+2.25d |  | GC1 | 8819054 |
| 1093 | 37200.37400.37500.38500.39500.43900.159600.520600 | Concreting | 1.12d | 2027-01-05 | 2027-01-06 | 1092 |  | GC1 | 8819064 |
| 1094 | 37200.37400.37500.38500.39500.43900.159500 | **29th floor slab** | 11.25d | 2027-01-06 | 2027-01-16 |  | start no earlier than 2027-01-06 | GC1 | 8809764 |
| 1095 | 37200.37400.37500.38500.39500.43900.159500.520700 | Reinforcement | 9d | 2027-01-06 | 2027-01-14 | 1093 |  | GC1 | 8819074 |
| 1096 | 37200.37400.37500.38500.39500.43900.159500.520800 | Wall conduiting | 2.25d | 2027-01-07 | 2027-01-09 | 1091, 1095SS+1.12d |  | GC1 | 8819084 |
| 1097 | 37200.37400.37500.38500.39500.43900.159500.520900 | Formwork | 7.88d | 2027-01-08 | 2027-01-15 | 1095SS+2.25d |  | GC1 | 8819094 |
| 1098 | 37200.37400.37500.38500.39500.43900.159500.521000 | Concreting | 1.12d | 2027-01-15 | 2027-01-16 | 1097 |  | GC1 | 8819104 |
| 1099 | 37200.37400.37500.38500.39500.43900.159400 | **30th floor slab** | 11.25d | 2027-01-16 | 2027-01-26 |  | start no earlier than 2027-01-16 | GC1 | 8809754 |
| 1100 | 37200.37400.37500.38500.39500.43900.159400.521100 | Reinforcement | 9d | 2027-01-16 | 2027-01-24 | 1098 |  | GC1 | 8819114 |
| 1101 | 37200.37400.37500.38500.39500.43900.159400.521200 | Wall conduiting | 2.25d | 2027-01-17 | 2027-01-19 | 1096, 1100SS+1.12d |  | GC1 | 8819124 |
| 1102 | 37200.37400.37500.38500.39500.43900.159400.521300 | Formwork | 7.88d | 2027-01-18 | 2027-01-25 | 1100SS+2.25d |  | GC1 | 8819134 |
| 1103 | 37200.37400.37500.38500.39500.43900.159400.521400 | Concreting | 1.12d | 2027-01-25 | 2027-01-26 | 1102 |  | GC1 | 8819144 |
| 1104 | 37200.37400.37500.38500.39500.43900.159300 | **31st floor slab** | 11.25d | 2027-01-26 | 2027-02-05 |  | start no earlier than 2027-01-26 | GC1 | 8809744 |
| 1105 | 37200.37400.37500.38500.39500.43900.159300.521500 | Reinforcement | 7.88d | 2027-01-26 | 2027-02-02 | 1103 |  | GC1 | 8819154 |
| 1106 | 37200.37400.37500.38500.39500.43900.159300.521600 | Wall conduiting | 2.25d | 2027-01-27 | 2027-01-29 | 1101, 1105SS+1.12d |  | GC1 | 8819164 |
| 1107 | 37200.37400.37500.38500.39500.43900.159300.521700 | Formwork | 7.88d | 2027-01-28 | 2027-02-04 | 1105SS+2.25d |  | GC1 | 8819174 |
| 1108 | 37200.37400.37500.38500.39500.43900.159300.521800 | Concreting | 1.12d | 2027-02-04 | 2027-02-05 | 1107 |  | GC1 | 8819184 |

| ID | WBS | Task | Duration | Start | Finish | Predecessors | Constraint | Calendar | Unique_Task_ID |
| --- | --- | --- | --- | --- | --- | --- | --- | --- | --- |
| 1109 | 37200.37400.37500.38500.39500.43900.159200 | **32nd floor slab** | 15.75d | 2027-02-05 | 2027-02-19 |  | start no earlier than 2027-02-05 | GC1 | 8809734 |
| 1110 | 37200.37400.37500.38500.39500.43900.159200.521900 | Reinforcement | 11.25d | 2027-02-05 | 2027-02-15 | 1108 |  | GC1 | 8819194 |
| 1111 | 37200.37400.37500.38500.39500.43900.159200.522000 | Wall conduiting | 2.25d | 2027-02-06 | 2027-02-08 | 1106, 1110SS+1.12d |  | GC1 | 8819204 |
| 1112 | 37200.37400.37500.38500.39500.43900.159200.522100 | Formwork | 12.38d | 2027-02-07 | 2027-02-18 | 1110SS+2.25d |  | GC1 | 8819214 |
| 1113 | 37200.37400.37500.38500.39500.43900.159200.522200 | Concreting | 1.12d | 2027-02-18 | 2027-02-19 | 1112 |  | GC1 | 8819224 |
| 1114 | 37200.37400.37500.38500.39500.43900.159100 | **33rd floor slab** | 11.25d | 2027-02-19 | 2027-03-01 |  | start no earlier than 2027-02-19 | GC1 | 8809724 |
| 1115 | 37200.37400.37500.38500.39500.43900.159100.522300 | Reinforcement | 7.88d | 2027-02-19 | 2027-02-26 | 1113 |  | GC1 | 8819234 |
| 1116 | 37200.37400.37500.38500.39500.43900.159100.522400 | Wall conduiting | 2.25d | 2027-02-20 | 2027-02-22 | 1111, 1115SS+1.12d |  | GC1 | 8819244 |
| 1117 | 37200.37400.37500.38500.39500.43900.159100.522500 | Formwork | 7.88d | 2027-02-21 | 2027-02-28 | 1115SS+2.25d |  | GC1 | 8819254 |
| 1118 | 37200.37400.37500.38500.39500.43900.159100.522600 | Concreting | 1.12d | 2027-02-28 | 2027-03-01 | 1117 |  | GC1 | 8819264 |
| 1119 | 37200.37400.37500.38500.39500.43900.159000 | **34th floor slab** | 16.88d | 2027-03-01 | 2027-03-16 |  | start no earlier than 2027-03-01 | GC1 | 8809714 |
| 1120 | 37200.37400.37500.38500.39500.43900.159000.522700 | Reinforcement | 13.5d | 2027-03-01 | 2027-03-13 | 1118 |  | GC1 | 8819274 |
| 1121 | 37200.37400.37500.38500.39500.43900.159000.522800 | Wall conduiting | 2.25d | 2027-03-02 | 2027-03-04 | 1116, 1120SS+1.12d |  | GC1 | 8819284 |
| 1122 | 37200.37400.37500.38500.39500.43900.159000.522900 | Formwork | 13.5d | 2027-03-03 | 2027-03-15 | 1120SS+2.25d |  | GC1 | 8819294 |
| 1123 | 37200.37400.37500.38500.39500.43900.159000.523000 | Concreting | 1.12d | 2027-03-15 | 2027-03-16 | 1122 |  | GC1 | 8819304 |
| 1124 | 37200.37400.37500.38500.39500.43900.158900 | **35th floor slab** | 13.5d | 2027-03-16 | 2027-03-28 |  | start no earlier than 2027-03-16 | GC1 | 8809704 |
| 1125 | 37200.37400.37500.38500.39500.43900.158900.523100 | Reinforcement | 9d | 2027-03-16 | 2027-03-24 | 1123 |  | GC1 | 8819314 |
| 1126 | 37200.37400.37500.38500.39500.43900.158900.523200 | Wall conduiting | 2.25d | 2027-03-17 | 2027-03-19 | 1121, 1125SS+1.12d |  | GC1 | 8819324 |
| 1127 | 37200.37400.37500.38500.39500.43900.158900.523300 | Formwork | 9d | 2027-03-19 | 2027-03-27 | 1126SS+2.25d |  | GC1 | 8819334 |
| 1128 | 37200.37400.37500.38500.39500.43900.158900.523400 | Concreting | 1.12d | 2027-03-27 | 2027-03-28 | 1127 |  | GC1 | 8819344 |
| 1129 | 37200.37400.37500.38500.39500.43900.158800 | **Terrace floor slab** | 23.62d | 2027-03-28 | 2027-04-18 |  | start no earlier than 2027-03-28 | GC1 | 8809694 |
| 1130 | 37200.37400.37500.38500.39500.43900.158800.523500 | Reinforcement | 20.25d | 2027-03-28 | 2027-04-15 | 1128 |  | GC1 | 8819354 |
| 1131 | 37200.37400.37500.38500.39500.43900.158800.523600 | Wall conduiting | 2.25d | 2027-03-29 | 2027-03-31 | 1126, 1130SS+1.12d |  | GC1 | 8819364 |
| 1132 | 37200.37400.37500.38500.39500.43900.158800.523700 | Formwork | 20.25d | 2027-03-30 | 2027-04-17 | 1130SS+2.25d |  | GC1 | 8819374 |
| 1133 | 37200.37400.37500.38500.39500.43900.158800.523800 | Concreting | 1.12d | 2027-04-17 | 2027-04-18 | 1132 |  | GC1 | 8819384 |

| ID | WBS | Task | Duration | Start | Finish | Predecessors | Constraint | Calendar | Unique_Task_ID |
| --- | --- | --- | --- | --- | --- | --- | --- | --- | --- |
| 1134 | 37200.37400.37500.38500.39500.43900.158700 | **OHT & Mumty** | 45d | 2027-04-18 | 2027-05-28 |  | start no earlier than 2027-04-18 | GC1 | 8809684 |
| 1135 | 37200.37400.37500.38500.39500.43900.158700.523900 | Reinforcement | 37.12d | 2027-04-18 | 2027-05-21 | 1133 |  | GC1 | 8819394 |
| 1136 | 37200.37400.37500.38500.39500.43900.158700.524000 | Wall conduiting | 5.62d | 2027-04-19 | 2027-04-24 | 1131, 1135SS+1.12d |  | GC1 | 8819404 |
| 1137 | 37200.37400.37500.38500.39500.43900.158700.524100 | Formwork | 37.12d | 2027-04-22 | 2027-05-25 | 1135SS+4.5d |  | GC1 | 8819414 |
| 1138 | 37200.37400.37500.38500.39500.43900.158700.524200 | Concreting | 3.38d | 2027-05-25 | 2027-05-28 | 1137 |  | GC1 | 8819424 |
| 1139 | 37200.37400.37500.38500.39500.45000 | **Post Pour Activities** | 447.75d | 2026-03-16 | 2027-06-02 |  | start no earlier than 2026-03-16 | GC1 | 8806094 |
| 1140 | 37200.37400.37500.38500.39500.45000.341000 | 1st Floor | 12.38d | 2026-03-16 | 2026-03-27 | 973 |  | GC1 | 8812754 |
| 1141 | 37200.37400.37500.38500.39500.45000.341100 | 2nd Floor | 12.38d | 2026-03-27 | 2026-04-07 | 1140, 978 |  | GC1 | 8812764 |
| 1142 | 37200.37400.37500.38500.39500.45000.341200 | 3rd Floor | 12.38d | 2026-04-07 | 2026-04-18 | 1141, 983 |  | GC1 | 8812774 |
| 1143 | 37200.37400.37500.38500.39500.45000.341300 | 4th Floor | 12.38d | 2026-04-18 | 2026-04-29 | 1142, 988 |  | GC1 | 8812784 |
| 1144 | 37200.37400.37500.38500.39500.45000.341400 | 5th Floor | 12.38d | 2026-04-29 | 2026-05-10 | 1143, 993 |  | GC1 | 8812794 |
| 1145 | 37200.37400.37500.38500.39500.45000.341500 | 6th Floor | 12.38d | 2026-05-10 | 2026-05-21 | 1144, 998 |  | GC1 | 8812804 |
| 1146 | 37200.37400.37500.38500.39500.45000.341600 | 7th Floor | 12.38d | 2026-05-21 | 2026-06-01 | 1145, 1003 |  | GC1 | 8812814 |
| 1147 | 37200.37400.37500.38500.39500.45000.341700 | 8th Floor | 12.38d | 2026-06-01 | 2026-06-12 | 1146, 1008 |  | GC1 | 8812824 |
| 1148 | 37200.37400.37500.38500.39500.45000.341800 | 9th Floor | 12.38d | 2026-06-12 | 2026-06-23 | 1147, 1013 |  | GC1 | 8812834 |
| 1149 | 37200.37400.37500.38500.39500.45000.341900 | 10th Floor | 12.38d | 2026-06-23 | 2026-07-04 | 1148, 1018 |  | GC1 | 8812844 |
| 1150 | 37200.37400.37500.38500.39500.45000.342000 | 11th Floor | 12.38d | 2026-07-04 | 2026-07-15 | 1149, 1023 |  | GC1 | 8812854 |
| 1151 | 37200.37400.37500.38500.39500.45000.342100 | 12th Floor | 12.38d | 2026-07-15 | 2026-07-26 | 1150, 1028 |  | GC1 | 8812864 |
| 1152 | 37200.37400.37500.38500.39500.45000.342200 | 13th Floor | 12.38d | 2026-07-26 | 2026-08-06 | 1151, 1033 |  | GC1 | 8812874 |
| 1153 | 37200.37400.37500.38500.39500.45000.342300 | 14th Floor | 12.38d | 2026-08-06 | 2026-08-17 | 1152, 1038 |  | GC1 | 8812884 |
| 1154 | 37200.37400.37500.38500.39500.45000.342400 | 15th Floor | 12.38d | 2026-08-17 | 2026-08-28 | 1153, 1043 |  | GC1 | 8812894 |
| 1155 | 37200.37400.37500.38500.39500.45000.342500 | 16th Floor | 12.38d | 2026-08-28 | 2026-09-08 | 1154, 1048 |  | GC1 | 8812904 |
| 1156 | 37200.37400.37500.38500.39500.45000.342600 | 17th Floor | 12.38d | 2026-09-08 | 2026-09-19 | 1155, 1053 |  | GC1 | 8812914 |
| 1157 | 37200.37400.37500.38500.39500.45000.342700 | 18th Floor | 12.38d | 2026-09-19 | 2026-09-30 | 1156, 1058 |  | GC1 | 8812924 |
| 1158 | 37200.37400.37500.38500.39500.45000.342800 | 19th Floor | 12.38d | 2026-09-30 | 2026-10-11 | 1157, 1063 |  | GC1 | 8812934 |
| 1159 | 37200.37400.37500.38500.39500.45000.342900 | 20th Floor | 12.38d | 2026-10-11 | 2026-10-22 | 1158, 1068 |  | GC1 | 8812944 |
| 1160 | 37200.37400.37500.38500.39500.45000.343000 | 21st Floor | 12.38d | 2026-10-22 | 2026-12-17 | 1159, 1073 |  | GC1 | 8812954 |
| 1161 | 37200.37400.37500.38500.39500.45000.343100 | 22nd Floor | 12.38d | 2026-12-17 | 2026-12-28 | 1160, 1078 |  | GC1 | 8812964 |
| 1162 | 37200.37400.37500.38500.39500.45000.343200 | 23rd Floor | 12.38d | 2026-12-28 | 2027-01-08 | 1161, 1083 |  | GC1 | 8812974 |
| 1163 | 37200.37400.37500.38500.39500.45000.343300 | 24th Floor | 12.38d | 2027-01-08 | 2027-01-19 | 1162, 1088 |  | GC1 | 8812984 |
| 1164 | 37200.37400.37500.38500.39500.45000.343400 | 25th Floor | 12.38d | 2027-01-19 | 2027-01-30 | 1163, 1093 |  | GC1 | 8812994 |
| 1165 | 37200.37400.37500.38500.39500.45000.343500 | 26th Floor | 12.38d | 2027-01-30 | 2027-02-10 | 1164, 1098 |  | GC1 | 8813004 |
| 1166 | 37200.37400.37500.38500.39500.45000.343600 | 27th Floor | 12.38d | 2027-02-10 | 2027-02-21 | 1165, 1103 |  | GC1 | 8813014 |
| 1167 | 37200.37400.37500.38500.39500.45000.343700 | 28th Floor | 12.38d | 2027-02-21 | 2027-03-04 | 1166, 1108 |  | GC1 | 8813024 |
| 1168 | 37200.37400.37500.38500.39500.45000.343800 | 29th Floor | 12.38d | 2027-03-04 | 2027-03-15 | 1167, 1113 |  | GC1 | 8813034 |
| 1169 | 37200.37400.37500.38500.39500.45000.343900 | 30th Floor | 12.38d | 2027-03-15 | 2027-03-26 | 1168, 1118 |  | GC1 | 8813044 |
| 1170 | 37200.37400.37500.38500.39500.45000.344000 | 31st Floor | 12.38d | 2027-03-26 | 2027-04-06 | 1169, 1123 |  | GC1 | 8813054 |
| 1171 | 37200.37400.37500.38500.39500.45000.344100 | 32nd Flood | 12.38d | 2027-04-06 | 2027-04-17 | 1170, 1128 |  | GC1 | 8813064 |
| 1172 | 37200.37400.37500.38500.39500.45000.344200 | 33rd Floor | 12.38d | 2027-04-17 | 2027-04-28 | 1171 |  | GC1 | 8813074 |
| 1173 | 37200.37400.37500.38500.39500.45000.344300 | 34th Floor | 9d | 2027-04-28 | 2027-05-06 | 1172 |  | GC1 | 8813084 |
| 1174 | 37200.37400.37500.38500.39500.45000.344400 | 35th Floor | 9d | 2027-05-06 | 2027-05-14 | 1173 |  | GC1 | 8813094 |
| 1175 | 37200.37400.37500.38500.39500.45000.344500 | Terrace | 9d | 2027-05-14 | 2027-05-22 | 1174 |  | GC1 | 8813104 |
| 1176 | 37200.37400.37500.38500.39500.45000.344600 | Mumty & Machine Room | 12.38d | 2027-05-22 | 2027-06-02 | 1175 |  | GC1 | 8813114 |

| ID | WBS | Task | Duration | Start | Finish | Predecessors | Constraint | Calendar | Unique_Task_ID |
| --- | --- | --- | --- | --- | --- | --- | --- | --- | --- |
| 1177 | 37200.37400.37500.38500.39500.40900 | **Finishing work** | 892.12d | 2026-03-28 | 2028-08-27 |  | start no earlier than 2026-03-28 | GC1 | 8805944 |
| 1178 | 37200.37400.37500.38500.39500.40900.41900 | **Flat finishing** | 892.12d | 2026-03-28 | 2028-08-27 |  | start no earlier than 2026-03-28 | GC1 | 8805994 |
| 1179 | 37200.37400.37500.38500.39500.40900.41900.80400 | **1st Floor** | 419.62d | 2026-03-28 | 2027-05-20 |  | start no earlier than 2026-03-28 | GC1 | 8806544 |
| 1180 | 37200.37400.37500.38500.39500.40900.41900.80400.1131200 | Block Work | 11.25d | 2026-03-28 | 2026-04-07 | 1140FS+0.25d |  | GC1 | 8831404 |
| 1181 | 37200.37400.37500.38500.39500.40900.41900.80400.1131300 | Door Frame Fixing | 9d | 2026-04-07 | 2026-04-15 | 1180 |  | GC1 | 8831414 |
| 1182 | 37200.37400.37500.38500.39500.40900.41900.80400.1131400 | Internal Plumbing Works | 11.25d | 2026-04-07 | 2026-04-17 | 1180 |  | GC1 | 8831424 |
| 1183 | 37200.37400.37500.38500.39500.40900.41900.80400.1131500 | Waterproofing | 9d | 2026-04-17 | 2026-04-25 | 1182 |  | GC1 | 8831434 |
| 1184 | 37200.37400.37500.38500.39500.40900.41900.80400.1131600 | Internal Plaster | 6.75d | 2026-04-15 | 2026-04-21 | 1181FS+0.25d |  | GC1 | 8831444 |
| 1185 | 37200.37400.37500.38500.39500.40900.41900.80400.1131700 | IPS flooring work | 10.12d | 2026-04-25 | 2026-05-04 | 1181, 1182, 1183 |  | GC1 | 8831454 |
| 1186 | 37200.37400.37500.38500.39500.40900.41900.80400.1131800 | Toilet dado work | 9d | 2027-03-06 | 2027-03-14 | 1183FS+303.75d, 1184FS+303.75d |  | GC1 | 8831464 |
| 1187 | 37200.37400.37500.38500.39500.40900.41900.80400.1131900 | Toilet flooring work | 7.88d | 2027-03-14 | 2027-03-21 | 1186 |  | GC1 | 8831474 |
| 1188 | 37200.37400.37500.38500.39500.40900.41900.80400.1132000 | Living dinning flooring | 9d | 2027-03-21 | 2027-03-29 | 1181, 1187 |  | GC1 | 8831484 |
| 1189 | 37200.37400.37500.38500.39500.40900.41900.80400.1132100 | Aluminium door-window fixing | 13.5d | 2027-04-08 | 2027-04-20 | 1185FS+11.25d, 1188FS+11.25d |  | GC1 | 8831494 |
| 1190 | 37200.37400.37500.38500.39500.40900.41900.80400.1132200 | Putty primer coat | 6.75d | 2027-03-29 | 2027-04-04 | 1188 |  | GC1 | 8831504 |
| 1191 | 37200.37400.37500.38500.39500.40900.41900.80400.1132300 | Door shutter fixing | 9d | 2027-03-29 | 2027-04-06 | 1188 |  | GC1 | 8831514 |
| 1192 | 37200.37400.37500.38500.39500.40900.41900.80400.1132400 | Electrical wiring work | 13.5d | 2027-04-16 | 2027-04-28 | 1191FS+11.25d |  | GC1 | 8831524 |
| 1193 | 37200.37400.37500.38500.39500.40900.41900.80400.1132500 | Painting 1st coat | 13.5d | 2027-04-28 | 2027-05-10 | 1190, 1191, 1192 |  | GC1 | 8831534 |
| 1194 | 37200.37400.37500.38500.39500.40900.41900.80400.1132600 | False ceiling | 11.25d | 2027-05-10 | 2027-05-20 | 1193 |  | GC1 | 8831544 |
| 1195 | 37200.37400.37500.38500.39500.40900.41900.80500 | **2nd Floor** | 421.62d | 2026-04-07 | 2027-06-01 |  | start no earlier than 2026-04-07 | GC1 | 8806554 |
| 1196 | 37200.37400.37500.38500.39500.40900.41900.80500.1132700 | Block Work | 11.25d | 2026-04-07 | 2026-04-17 | 1180FS+0.25d |  | GC1 | 8831554 |
| 1197 | 37200.37400.37500.38500.39500.40900.41900.80500.1132800 | Door Frame Fixing | 9d | 2026-04-17 | 2026-04-25 | 1181, 1196 |  | GC1 | 8831564 |
| 1198 | 37200.37400.37500.38500.39500.40900.41900.80500.1132900 | Internal Plumbing Works | 11.25d | 2026-04-17 | 2026-04-27 | 1182, 1196 |  | GC1 | 8831574 |
| 1199 | 37200.37400.37500.38500.39500.40900.41900.80500.1133000 | Waterproofing | 9d | 2026-04-27 | 2026-05-05 | 1183, 1198 |  | GC1 | 8831584 |
| 1200 | 37200.37400.37500.38500.39500.40900.41900.80500.1133100 | Internal Plaster | 6.75d | 2026-04-25 | 2026-05-01 | 1184FS+0.25d, 1197FS+0.25d |  | GC1 | 8831594 |
| 1201 | 37200.37400.37500.38500.39500.40900.41900.80500.1133200 | IPS flooring work | 10.12d | 2026-05-05 | 2026-05-14 | 1185, 1197, 1198, 1199 |  | GC1 | 8831604 |
| 1202 | 37200.37400.37500.38500.39500.40900.41900.80500.1133300 | Toilet dado work | 9d | 2027-03-14 | 2027-03-22 | 1186, 1199, 1200 |  | GC1 | 8831614 |
| 1203 | 37200.37400.37500.38500.39500.40900.41900.80500.1133400 | Toilet flooring work | 7.88d | 2027-03-22 | 2027-03-29 | 1187, 1202 |  | GC1 | 8831624 |
| 1204 | 37200.37400.37500.38500.39500.40900.41900.80500.1133500 | Living dinning flooring | 9d | 2027-03-29 | 2027-04-06 | 1188FS+0.25d, 1197FS+0.25d |  | GC1 | 8831634 |
| 1205 | 37200.37400.37500.38500.39500.40900.41900.80500.1133600 | Aluminium door-window fixing | 13.5d | 2027-04-20 | 2027-05-02 | 1189FS+0.25d, 1204FS+0.25d |  | GC1 | 8831644 |
| 1206 | 37200.37400.37500.38500.39500.40900.41900.80500.1133700 | Putty primer coat | 6.75d | 2027-04-06 | 2027-04-12 | 1190, 1204 |  | GC1 | 8831654 |
| 1207 | 37200.37400.37500.38500.39500.40900.41900.80500.1133800 | Door shutter fixing | 9d | 2027-04-06 | 2027-04-14 | 1191, 1204 |  | GC1 | 8831664 |
| 1208 | 37200.37400.37500.38500.39500.40900.41900.80500.1133900 | Electrical wiring work | 13.5d | 2027-04-28 | 2027-05-10 | 1192, 1207 |  | GC1 | 8831674 |
| 1209 | 37200.37400.37500.38500.39500.40900.41900.80500.1134000 | Painting 1st coat | 13.5d | 2027-05-10 | 2027-05-22 | 1193, 1206, 1207, 1208 |  | GC1 | 8831684 |
| 1210 | 37200.37400.37500.38500.39500.40900.41900.80500.1134100 | False ceiling | 11.25d | 2027-05-22 | 2027-06-01 | 1194, 1209 |  | GC1 | 8831694 |

| ID | WBS | Task | Duration | Start | Finish | Predecessors | Constraint | Calendar | Unique_Task_ID |
| --- | --- | --- | --- | --- | --- | --- | --- | --- | --- |
| 1211 | 37200.37400.37500.38500.39500.40900.41900.80600 | **3rd Floor** | 423.62d | 2026-04-17 | 2027-06-13 |  | start no earlier than 2026-04-17 | GC1 | 8806564 |
| 1212 | 37200.37400.37500.38500.39500.40900.41900.80600.1134200 | Block Work | 11.25d | 2026-04-17 | 2026-04-27 | 1196FS+0.25d |  | GC1 | 8831704 |
| 1213 | 37200.37400.37500.38500.39500.40900.41900.80600.1134300 | Door Frame Fixing | 9d | 2026-04-27 | 2026-05-05 | 1197, 1212 |  | GC1 | 8831714 |
| 1214 | 37200.37400.37500.38500.39500.40900.41900.80600.1134400 | Internal Plumbing Works | 11.25d | 2026-04-27 | 2026-05-07 | 1198, 1212 |  | GC1 | 8831724 |
| 1215 | 37200.37400.37500.38500.39500.40900.41900.80600.1134500 | Waterproofing | 9d | 2026-05-07 | 2026-05-15 | 1199, 1214 |  | GC1 | 8831734 |
| 1216 | 37200.37400.37500.38500.39500.40900.41900.80600.1134600 | Internal Plaster | 6.75d | 2026-05-05 | 2026-05-11 | 1200FS+0.25d, 1213FS+0.25d |  | GC1 | 8831744 |
| 1217 | 37200.37400.37500.38500.39500.40900.41900.80600.1134700 | IPS flooring work | 10.12d | 2026-05-15 | 2026-05-24 | 1201, 1213, 1215, 1216 |  | GC1 | 8831754 |
| 1218 | 37200.37400.37500.38500.39500.40900.41900.80600.1134800 | Toilet dado work | 9d | 2027-03-22 | 2027-03-30 | 1202, 1215, 1216 |  | GC1 | 8831764 |
| 1219 | 37200.37400.37500.38500.39500.40900.41900.80600.1134900 | Toilet flooring work | 7.88d | 2027-03-30 | 2027-04-06 | 1203, 1218 |  | GC1 | 8831774 |
| 1220 | 37200.37400.37500.38500.39500.40900.41900.80600.1135000 | Living dinning flooring | 9d | 2027-04-06 | 2027-04-14 | 1204FS+0.25d, 1213FS+0.25d |  | GC1 | 8831784 |
| 1221 | 37200.37400.37500.38500.39500.40900.41900.80600.1135100 | Aluminium door-window fixing | 13.5d | 2027-05-02 | 2027-05-14 | 1205FS+0.25d, 1220FS+0.25d |  | GC1 | 8831794 |
| 1222 | 37200.37400.37500.38500.39500.40900.41900.80600.1135200 | Putty primer coat | 6.75d | 2027-04-14 | 2027-04-20 | 1206, 1220 |  | GC1 | 8831804 |
| 1223 | 37200.37400.37500.38500.39500.40900.41900.80600.1135300 | Door shutter fixing | 9d | 2027-04-14 | 2027-04-22 | 1207, 1220 |  | GC1 | 8831814 |
| 1224 | 37200.37400.37500.38500.39500.40900.41900.80600.1135400 | Electrical wiring work | 13.5d | 2027-05-10 | 2027-05-22 | 1208, 1223 |  | GC1 | 8831824 |
| 1225 | 37200.37400.37500.38500.39500.40900.41900.80600.1135500 | Painting 1st coat | 13.5d | 2027-05-22 | 2027-06-03 | 1209, 1222, 1223, 1224 |  | GC1 | 8831834 |
| 1226 | 37200.37400.37500.38500.39500.40900.41900.80600.1135600 | False ceiling | 11.25d | 2027-06-03 | 2027-06-13 | 1210, 1225 |  | GC1 | 8831844 |
| 1227 | 37200.37400.37500.38500.39500.40900.41900.80700 | **4th Floor** | 425.62d | 2026-04-27 | 2027-06-25 |  | start no earlier than 2026-04-27 | GC1 | 8806574 |
| 1228 | 37200.37400.37500.38500.39500.40900.41900.80700.1135700 | Block Work | 9d | 2026-04-27 | 2026-05-05 | 1212FS+0.25d |  | GC1 | 8831854 |
| 1229 | 37200.37400.37500.38500.39500.40900.41900.80700.1135800 | Door Frame Fixing | 9d | 2026-05-05 | 2026-05-13 | 1213, 1228 |  | GC1 | 8831864 |
| 1230 | 37200.37400.37500.38500.39500.40900.41900.80700.1135900 | Internal Plumbing Works | 11.25d | 2026-05-07 | 2026-05-17 | 1214, 1228 |  | GC1 | 8831874 |
| 1231 | 37200.37400.37500.38500.39500.40900.41900.80700.1136000 | Waterproofing | 9d | 2026-05-17 | 2026-05-25 | 1215, 1230 |  | GC1 | 8831884 |
| 1232 | 37200.37400.37500.38500.39500.40900.41900.80700.1136100 | Internal Plaster | 6.75d | 2026-05-14 | 2026-05-20 | 1216FS+0.25d, 1229FS+0.25d |  | GC1 | 8831894 |
| 1233 | 37200.37400.37500.38500.39500.40900.41900.80700.1136200 | IPS flooring work | 10.12d | 2026-05-25 | 2026-06-03 | 1217, 1229, 1231, 1232 |  | GC1 | 8831904 |
| 1234 | 37200.37400.37500.38500.39500.40900.41900.80700.1136300 | Toilet dado work | 9d | 2027-03-30 | 2027-04-07 | 1218, 1231, 1232 |  | GC1 | 8831914 |
| 1235 | 37200.37400.37500.38500.39500.40900.41900.80700.1136400 | Toilet flooring work | 7.88d | 2027-04-07 | 2027-04-14 | 1219, 1234 |  | GC1 | 8831924 |
| 1236 | 37200.37400.37500.38500.39500.40900.41900.80700.1136500 | Living dinning flooring | 9d | 2027-04-14 | 2027-04-22 | 1220FS+0.25d, 1229FS+0.25d |  | GC1 | 8831934 |
| 1237 | 37200.37400.37500.38500.39500.40900.41900.80700.1136600 | Aluminium door-window fixing | 13.5d | 2027-05-14 | 2027-05-26 | 1221FS+0.25d, 1236FS+0.25d |  | GC1 | 8831944 |
| 1238 | 37200.37400.37500.38500.39500.40900.41900.80700.1136700 | Putty primer coat | 6.75d | 2027-04-22 | 2027-04-28 | 1222, 1236 |  | GC1 | 8831954 |
| 1239 | 37200.37400.37500.38500.39500.40900.41900.80700.1136800 | Door shutter fixing | 9d | 2027-04-22 | 2027-04-30 | 1223, 1236 |  | GC1 | 8831964 |
| 1240 | 37200.37400.37500.38500.39500.40900.41900.80700.1136900 | Electrical wiring work | 13.5d | 2027-05-22 | 2027-06-03 | 1224, 1239 |  | GC1 | 8831974 |
| 1241 | 37200.37400.37500.38500.39500.40900.41900.80700.1137000 | Painting 1st coat | 13.5d | 2027-06-03 | 2027-06-15 | 1225, 1238, 1239, 1240 |  | GC1 | 8831984 |
| 1242 | 37200.37400.37500.38500.39500.40900.41900.80700.1137100 | False ceiling | 11.25d | 2027-06-15 | 2027-06-25 | 1226, 1241 |  | GC1 | 8831994 |

| ID | WBS | Task | Duration | Start | Finish | Predecessors | Constraint | Calendar | Unique_Task_ID |
| --- | --- | --- | --- | --- | --- | --- | --- | --- | --- |
| 1243 | 37200.37400.37500.38500.39500.40900.41900.80800 | **5th Floor** | 433.25d | 2026-05-06 | 2027-07-10 |  | start no earlier than 2026-05-06 | GC1 | 8806584 |
| 1244 | 37200.37400.37500.38500.39500.40900.41900.80800.1137200 | Block Work | 9d | 2026-05-06 | 2026-05-14 | 1228FS+0.25d |  | GC1 | 8832004 |
| 1245 | 37200.37400.37500.38500.39500.40900.41900.80800.1137300 | Door Frame Fixing | 9d | 2026-05-14 | 2026-05-22 | 1229, 1244 |  | GC1 | 8832014 |
| 1246 | 37200.37400.37500.38500.39500.40900.41900.80800.1137400 | Internal Plumbing Works | 11.25d | 2026-05-17 | 2026-05-27 | 1230, 1244 |  | GC1 | 8832024 |
| 1247 | 37200.37400.37500.38500.39500.40900.41900.80800.1137500 | Waterproofing | 9d | 2026-05-27 | 2026-06-04 | 1231, 1246 |  | GC1 | 8832034 |
| 1248 | 37200.37400.37500.38500.39500.40900.41900.80800.1137600 | Internal Plaster | 6.75d | 2026-05-22 | 2026-05-28 | 1232FS+0.25d, 1245FS+0.25d |  | GC1 | 8832044 |
| 1249 | 37200.37400.37500.38500.39500.40900.41900.80800.1137700 | IPS flooring work | 10.12d | 2026-06-04 | 2026-06-13 | 1233, 1245, 1247, 1248 |  | GC1 | 8832054 |
| 1250 | 37200.37400.37500.38500.39500.40900.41900.80800.1137800 | Toilet dado work | 9d | 2027-04-07 | 2027-04-15 | 1234, 1247, 1248 |  | GC1 | 8832064 |
| 1251 | 37200.37400.37500.38500.39500.40900.41900.80800.1137900 | Toilet flooring work | 7.88d | 2027-04-15 | 2027-04-22 | 1235, 1250 |  | GC1 | 8832074 |
| 1252 | 37200.37400.37500.38500.39500.40900.41900.80800.1138000 | Living dinning flooring | 9d | 2027-04-23 | 2027-05-01 | 1236FS+0.25d, 1245FS+0.25d |  | GC1 | 8832084 |
| 1253 | 37200.37400.37500.38500.39500.40900.41900.80800.1138100 | Aluminium door-window fixing | 13.5d | 2027-05-27 | 2027-06-08 | 1237FS+0.25d, 1252FS+0.25d |  | GC1 | 8832094 |
| 1254 | 37200.37400.37500.38500.39500.40900.41900.80800.1138200 | Putty primer coat | 6.75d | 2027-05-01 | 2027-05-07 | 1238, 1252 |  | GC1 | 8832104 |
| 1255 | 37200.37400.37500.38500.39500.40900.41900.80800.1138300 | Door shutter fixing | 9d | 2027-05-01 | 2027-05-09 | 1239, 1252 |  | GC1 | 8832114 |
| 1256 | 37200.37400.37500.38500.39500.40900.41900.80800.1138400 | Electrical wiring work | 13.5d | 2027-06-03 | 2027-06-15 | 1240, 1255 |  | GC1 | 8832124 |
| 1257 | 37200.37400.37500.38500.39500.40900.41900.80800.1138500 | Painting 1st coat | 16.88d | 2027-06-15 | 2027-06-30 | 1241, 1254, 1255, 1256 |  | GC1 | 8832134 |
| 1258 | 37200.37400.37500.38500.39500.40900.41900.80800.1138600 | False ceiling | 11.25d | 2027-06-30 | 2027-07-10 | 1242, 1257 |  | GC1 | 8832144 |
| 1259 | 37200.37400.37500.38500.39500.40900.41900.80900 | **6th Floor** | 437.5d | 2026-05-14 | 2027-07-22 |  | start no earlier than 2026-05-14 | GC1 | 8806594 |
| 1260 | 37200.37400.37500.38500.39500.40900.41900.80900.1138700 | Block Work | 9d | 2026-05-14 | 2026-05-22 | 1244FS+0.25d |  | GC1 | 8832154 |
| 1261 | 37200.37400.37500.38500.39500.40900.41900.80900.1138800 | Door Frame Fixing | 9d | 2026-05-22 | 2026-05-30 | 993, 1245 |  | GC1 | 8832164 |
| 1262 | 37200.37400.37500.38500.39500.40900.41900.80900.1138900 | Internal Plumbing Works | 11.25d | 2026-05-27 | 2026-06-06 | 1246, 1260 |  | GC1 | 8832174 |
| 1263 | 37200.37400.37500.38500.39500.40900.41900.80900.1139000 | Waterproofing | 9d | 2026-06-06 | 2026-06-14 | 1247, 1262 |  | GC1 | 8832184 |
| 1264 | 37200.37400.37500.38500.39500.40900.41900.80900.1139100 | Internal Plaster | 6.75d | 2026-06-14 | 2026-06-20 | 1248FS+0.25d, 1261FS+0.25d, 1262FS+0.25d, 1263FS+0.25d |  | GC1 | 8832194 |
| 1265 | 37200.37400.37500.38500.39500.40900.41900.80900.1139200 | IPS flooring work | 10.12d | 2026-06-20 | 2026-06-29 | 1249, 1261, 1263, 1264 |  | GC1 | 8832204 |
| 1266 | 37200.37400.37500.38500.39500.40900.41900.80900.1139300 | Toilet dado work | 9d | 2027-04-15 | 2027-04-23 | 1250, 1263, 1264 |  | GC1 | 8832214 |
| 1267 | 37200.37400.37500.38500.39500.40900.41900.80900.1139400 | Toilet flooring work | 7.88d | 2027-04-23 | 2027-04-30 | 1251, 1266 |  | GC1 | 8832224 |
| 1268 | 37200.37400.37500.38500.39500.40900.41900.80900.1139500 | Living dinning flooring | 9d | 2027-05-01 | 2027-05-09 | 1252FS+0.25d, 1261FS+0.25d |  | GC1 | 8832234 |
| 1269 | 37200.37400.37500.38500.39500.40900.41900.80900.1139600 | Aluminium door-window fixing | 13.5d | 2027-06-08 | 2027-06-20 | 1253FS+0.25d, 1268FS+0.25d |  | GC1 | 8832244 |
| 1270 | 37200.37400.37500.38500.39500.40900.41900.80900.1139700 | Putty primer coat | 6.75d | 2027-05-09 | 2027-05-15 | 1254, 1268 |  | GC1 | 8832254 |
| 1271 | 37200.37400.37500.38500.39500.40900.41900.80900.1139800 | Door shutter fixing | 9d | 2027-05-09 | 2027-05-17 | 1255, 1268 |  | GC1 | 8832264 |
| 1272 | 37200.37400.37500.38500.39500.40900.41900.80900.1139900 | Electrical wiring work | 13.5d | 2027-06-15 | 2027-06-27 | 1256, 1271 |  | GC1 | 8832274 |
| 1273 | 37200.37400.37500.38500.39500.40900.41900.80900.1140000 | Painting 1st coat | 13.5d | 2027-06-30 | 2027-07-12 | 1257, 1270, 1271, 1272 |  | GC1 | 8832284 |
| 1274 | 37200.37400.37500.38500.39500.40900.41900.80900.1140100 | False ceiling | 11.25d | 2027-07-12 | 2027-07-22 | 1258, 1273 |  | GC1 | 8832294 |

| ID | WBS | Task | Duration | Start | Finish | Predecessors | Constraint | Calendar | Unique_Task_ID |
| --- | --- | --- | --- | --- | --- | --- | --- | --- | --- |
| 1275 | 37200.37400.37500.38500.39500.40900.41900.81000 | **7th Floor** | 441.75d | 2026-05-22 | 2027-08-03 |  | start no earlier than 2026-05-22 | GC1 | 8806604 |
| 1276 | 37200.37400.37500.38500.39500.40900.41900.81000.1140200 | Block Work | 9d | 2026-05-22 | 2026-05-30 | 1260FS+0.25d |  | GC1 | 8832304 |
| 1277 | 37200.37400.37500.38500.39500.40900.41900.81000.1140300 | Door Frame Fixing | 9d | 2026-05-30 | 2026-06-07 | 1261, 1276 |  | GC1 | 8832314 |
| 1278 | 37200.37400.37500.38500.39500.40900.41900.81000.1140400 | Internal Plumbing Works | 11.25d | 2026-06-06 | 2026-06-16 | 1262, 1276 |  | GC1 | 8832324 |
| 1279 | 37200.37400.37500.38500.39500.40900.41900.81000.1140500 | Waterproofing | 9d | 2026-06-16 | 2026-06-24 | 1263, 1278 |  | GC1 | 8832334 |
| 1280 | 37200.37400.37500.38500.39500.40900.41900.81000.1140600 | Internal Plaster | 6.75d | 2026-06-24 | 2026-06-30 | 1264FS+0.25d, 1277FS+0.25d, 1278FS+0.25d, 1279FS+0.25d |  | GC1 | 8832344 |
| 1281 | 37200.37400.37500.38500.39500.40900.41900.81000.1140700 | IPS flooring work | 10.12d | 2026-06-30 | 2026-07-09 | 1265, 1277, 1279, 1280 |  | GC1 | 8832354 |
| 1282 | 37200.37400.37500.38500.39500.40900.41900.81000.1140800 | Toilet dado work | 9d | 2027-04-23 | 2027-05-01 | 1266, 1279, 1280 |  | GC1 | 8832364 |
| 1283 | 37200.37400.37500.38500.39500.40900.41900.81000.1140900 | Toilet flooring work | 7.88d | 2027-05-01 | 2027-05-08 | 1267, 1282 |  | GC1 | 8832374 |
| 1284 | 37200.37400.37500.38500.39500.40900.41900.81000.1141000 | Living dinning flooring | 9d | 2027-05-09 | 2027-05-17 | 1268FS+0.25d, 1277FS+0.25d |  | GC1 | 8832384 |
| 1285 | 37200.37400.37500.38500.39500.40900.41900.81000.1141100 | Aluminium door-window fixing | 9d | 2027-06-20 | 2027-06-28 | 1269FS+0.25d, 1284FS+0.25d |  | GC1 | 8832394 |
| 1286 | 37200.37400.37500.38500.39500.40900.41900.81000.1141200 | Putty primer coat | 6.75d | 2027-05-17 | 2027-05-23 | 1270, 1284 |  | GC1 | 8832404 |
| 1287 | 37200.37400.37500.38500.39500.40900.41900.81000.1141300 | Door shutter fixing | 9d | 2027-05-17 | 2027-05-25 | 1271, 1284 |  | GC1 | 8832414 |
| 1288 | 37200.37400.37500.38500.39500.40900.41900.81000.1141400 | Electrical wiring work | 13.5d | 2027-06-27 | 2027-07-09 | 1272, 1287 |  | GC1 | 8832424 |
| 1289 | 37200.37400.37500.38500.39500.40900.41900.81000.1141500 | Painting 1st coat | 13.5d | 2027-07-12 | 2027-07-24 | 1273, 1286, 1287, 1288 |  | GC1 | 8832434 |
| 1290 | 37200.37400.37500.38500.39500.40900.41900.81000.1141600 | False ceiling | 11.25d | 2027-07-24 | 2027-08-03 | 1274, 1289 |  | GC1 | 8832444 |
| 1291 | 37200.37400.37500.38500.39500.40900.41900.81100 | **8th Floor** | 446d | 2026-05-30 | 2027-08-15 |  | start no earlier than 2026-05-30 | GC1 | 8806614 |
| 1292 | 37200.37400.37500.38500.39500.40900.41900.81100.1141700 | Block Work | 9d | 2026-05-30 | 2026-06-07 | 1276FS+0.25d |  | GC1 | 8832454 |
| 1293 | 37200.37400.37500.38500.39500.40900.41900.81100.1141800 | Door Frame Fixing | 9d | 2026-06-07 | 2026-06-15 | 1277, 1292 |  | GC1 | 8832464 |
| 1294 | 37200.37400.37500.38500.39500.40900.41900.81100.1141900 | Internal Plumbing Works | 11.25d | 2026-06-16 | 2026-06-26 | 1278, 1292 |  | GC1 | 8832474 |
| 1295 | 37200.37400.37500.38500.39500.40900.41900.81100.1142000 | Waterproofing | 9d | 2026-06-26 | 2026-07-04 | 1279, 1294 |  | GC1 | 8832484 |
| 1296 | 37200.37400.37500.38500.39500.40900.41900.81100.1142100 | Internal Plaster | 6.75d | 2026-07-01 | 2026-07-07 | 1280FS+0.25d, 1293FS+0.25d |  | GC1 | 8832494 |
| 1297 | 37200.37400.37500.38500.39500.40900.41900.81100.1142200 | IPS flooring work | 10.12d | 2026-07-09 | 2026-07-18 | 1281, 1293, 1295, 1296 |  | GC1 | 8832504 |
| 1298 | 37200.37400.37500.38500.39500.40900.41900.81100.1142300 | Toilet dado work | 9d | 2027-05-01 | 2027-05-09 | 1282, 1295, 1296 |  | GC1 | 8832514 |
| 1299 | 37200.37400.37500.38500.39500.40900.41900.81100.1142400 | Toilet flooring work | 7.88d | 2027-05-09 | 2027-05-16 | 1283, 1298 |  | GC1 | 8832524 |
| 1300 | 37200.37400.37500.38500.39500.40900.41900.81100.1142500 | Living dinning flooring | 9d | 2027-05-17 | 2027-05-25 | 1284FS+0.25d, 1293FS+0.25d |  | GC1 | 8832534 |
| 1301 | 37200.37400.37500.38500.39500.40900.41900.81100.1142600 | Aluminium door-window fixing | 13.5d | 2027-06-28 | 2027-07-10 | 1285FS+0.25d, 1300FS+0.25d |  | GC1 | 8832544 |
| 1302 | 37200.37400.37500.38500.39500.40900.41900.81100.1142700 | Putty primer coat | 6.75d | 2027-05-25 | 2027-05-31 | 1286, 1300 |  | GC1 | 8832554 |
| 1303 | 37200.37400.37500.38500.39500.40900.41900.81100.1142800 | Door shutter fixing | 9d | 2027-05-25 | 2027-06-02 | 1287, 1300 |  | GC1 | 8832564 |
| 1304 | 37200.37400.37500.38500.39500.40900.41900.81100.1142900 | Electrical wiring work | 13.5d | 2027-07-09 | 2027-07-21 | 1288, 1303 |  | GC1 | 8832574 |
| 1305 | 37200.37400.37500.38500.39500.40900.41900.81100.1143000 | Painting 1st coat | 13.5d | 2027-07-24 | 2027-08-05 | 1289, 1302, 1303, 1304 |  | GC1 | 8832584 |
| 1306 | 37200.37400.37500.38500.39500.40900.41900.81100.1143100 | False ceiling | 11.25d | 2027-08-05 | 2027-08-15 | 1290, 1305 |  | GC1 | 8832594 |

| ID | WBS | Task | Duration | Start | Finish | Predecessors | Constraint | Calendar | Unique_Task_ID |
| --- | --- | --- | --- | --- | --- | --- | --- | --- | --- |
| 1307 | 37200.37400.37500.38500.39500.40900.41900.81200 | **9th Floor** | 450.25d | 2026-06-07 | 2027-08-27 |  | start no earlier than 2026-06-07 | GC1 | 8806624 |
| 1308 | 37200.37400.37500.38500.39500.40900.41900.81200.1143200 | Block Work | 9d | 2026-06-07 | 2026-06-15 | 1292FS+0.25d |  | GC1 | 8832604 |
| 1309 | 37200.37400.37500.38500.39500.40900.41900.81200.1143300 | Door Frame Fixing | 9d | 2026-06-15 | 2026-06-23 | 1293, 1308 |  | GC1 | 8832614 |
| 1310 | 37200.37400.37500.38500.39500.40900.41900.81200.1143400 | Internal Plumbing Works | 11.25d | 2026-06-26 | 2026-07-06 | 1294, 1308 |  | GC1 | 8832624 |
| 1311 | 37200.37400.37500.38500.39500.40900.41900.81200.1143500 | Waterproofing | 9d | 2026-07-06 | 2026-07-14 | 1295, 1310 |  | GC1 | 8832634 |
| 1312 | 37200.37400.37500.38500.39500.40900.41900.81200.1143600 | Internal Plaster | 6.75d | 2026-07-07 | 2026-07-13 | 1296FS+0.25d, 1309FS+0.25d |  | GC1 | 8832644 |
| 1313 | 37200.37400.37500.38500.39500.40900.41900.81200.1143700 | IPS flooring work | 10.12d | 2026-07-18 | 2026-07-27 | 1297, 1309, 1311, 1312 |  | GC1 | 8832654 |
| 1314 | 37200.37400.37500.38500.39500.40900.41900.81200.1143800 | Toilet dado work | 9d | 2027-05-09 | 2027-05-17 | 1298, 1311, 1312 |  | GC1 | 8832664 |
| 1315 | 37200.37400.37500.38500.39500.40900.41900.81200.1143900 | Toilet flooring work | 7.88d | 2027-05-17 | 2027-05-24 | 1299, 1314 |  | GC1 | 8832674 |
| 1316 | 37200.37400.37500.38500.39500.40900.41900.81200.1144000 | Living dinning flooring | 9d | 2027-05-25 | 2027-06-02 | 1300FS+0.25d, 1309FS+0.25d |  | GC1 | 8832684 |
| 1317 | 37200.37400.37500.38500.39500.40900.41900.81200.1144100 | Aluminium door-window fixing | 13.5d | 2027-07-10 | 2027-07-22 | 1301FS+0.25d, 1316FS+0.25d |  | GC1 | 8832694 |
| 1318 | 37200.37400.37500.38500.39500.40900.41900.81200.1144200 | Putty primer coat | 6.75d | 2027-06-02 | 2027-06-08 | 1302, 1316 |  | GC1 | 8832704 |
| 1319 | 37200.37400.37500.38500.39500.40900.41900.81200.1144300 | Door shutter fixing | 9d | 2027-06-02 | 2027-06-10 | 1303, 1316 |  | GC1 | 8832714 |
| 1320 | 37200.37400.37500.38500.39500.40900.41900.81200.1144400 | Electrical wiring work | 13.5d | 2027-07-21 | 2027-08-02 | 1304, 1319 |  | GC1 | 8832724 |
| 1321 | 37200.37400.37500.38500.39500.40900.41900.81200.1144500 | Painting 1st coat | 13.5d | 2027-08-05 | 2027-08-17 | 1305, 1318, 1319, 1320 |  | GC1 | 8832734 |
| 1322 | 37200.37400.37500.38500.39500.40900.41900.81200.1144600 | False ceiling | 11.25d | 2027-08-17 | 2027-08-27 | 1306, 1321 |  | GC1 | 8832744 |
| 1323 | 37200.37400.37500.38500.39500.40900.41900.81300 | **10th Floor** | 454.5d | 2026-06-16 | 2027-09-08 |  | start no earlier than 2026-06-16 | GC1 | 8806634 |
| 1324 | 37200.37400.37500.38500.39500.40900.41900.81300.1144700 | Block Work | 9d | 2026-06-16 | 2026-06-24 | 1308FS+0.25d |  | GC1 | 8832754 |
| 1325 | 37200.37400.37500.38500.39500.40900.41900.81300.1144800 | Door Frame Fixing | 9d | 2026-06-24 | 2026-07-02 | 1309, 1324 |  | GC1 | 8832764 |
| 1326 | 37200.37400.37500.38500.39500.40900.41900.81300.1144900 | Internal Plumbing Works | 11.25d | 2026-07-06 | 2026-07-16 | 1310, 1324 |  | GC1 | 8832774 |
| 1327 | 37200.37400.37500.38500.39500.40900.41900.81300.1145000 | Waterproofing | 9d | 2026-07-16 | 2026-07-24 | 1311, 1326 |  | GC1 | 8832784 |
| 1328 | 37200.37400.37500.38500.39500.40900.41900.81300.1145100 | Internal Plaster | 6.75d | 2026-07-13 | 2026-07-19 | 1312FS+0.25d, 1325FS+0.25d |  | GC1 | 8832794 |
| 1329 | 37200.37400.37500.38500.39500.40900.41900.81300.1145200 | IPS flooring work | 10.12d | 2026-07-27 | 2026-08-05 | 1313, 1325, 1327, 1328 |  | GC1 | 8832804 |
| 1330 | 37200.37400.37500.38500.39500.40900.41900.81300.1145300 | Toilet dado work | 9d | 2027-05-17 | 2027-05-25 | 1314, 1327, 1328 |  | GC1 | 8832814 |
| 1331 | 37200.37400.37500.38500.39500.40900.41900.81300.1145400 | Toilet flooring work | 7.88d | 2027-05-25 | 2027-06-01 | 1315, 1330 |  | GC1 | 8832824 |
| 1332 | 37200.37400.37500.38500.39500.40900.41900.81300.1145500 | Living dinning flooring | 9d | 2027-06-03 | 2027-06-11 | 1316FS+0.25d, 1325FS+0.25d |  | GC1 | 8832834 |
| 1333 | 37200.37400.37500.38500.39500.40900.41900.81300.1145600 | Aluminium door-window fixing | 13.5d | 2027-07-23 | 2027-08-04 | 1317FS+0.25d, 1332FS+0.25d |  | GC1 | 8832844 |
| 1334 | 37200.37400.37500.38500.39500.40900.41900.81300.1145700 | Putty primer coat | 6.75d | 2027-06-11 | 2027-06-17 | 1318, 1332 |  | GC1 | 8832854 |
| 1335 | 37200.37400.37500.38500.39500.40900.41900.81300.1145800 | Door shutter fixing | 9d | 2027-06-11 | 2027-06-19 | 1319, 1332 |  | GC1 | 8832864 |
| 1336 | 37200.37400.37500.38500.39500.40900.41900.81300.1145900 | Electrical wiring work | 13.5d | 2027-08-02 | 2027-08-14 | 1320, 1335 |  | GC1 | 8832874 |
| 1337 | 37200.37400.37500.38500.39500.40900.41900.81300.1146000 | Painting 1st coat | 13.5d | 2027-08-17 | 2027-08-29 | 1321, 1334, 1335, 1336 |  | GC1 | 8832884 |
| 1338 | 37200.37400.37500.38500.39500.40900.41900.81300.1146100 | False ceiling | 11.25d | 2027-08-29 | 2027-09-08 | 1322, 1337 |  | GC1 | 8832894 |

| ID | WBS | Task | Duration | Start | Finish | Predecessors | Constraint | Calendar | Unique_Task_ID |
| --- | --- | --- | --- | --- | --- | --- | --- | --- | --- |
| 1339 | 37200.37400.37500.38500.39500.40900.41900.81400 | **11th Floor** | 458.75d | 2026-06-24 | 2027-09-20 |  | start no earlier than 2026-06-24 | GC1 | 8806644 |
| 1340 | 37200.37400.37500.38500.39500.40900.41900.81400.1146200 | Block Work | 9d | 2026-06-24 | 2026-07-02 | 1324FS+0.25d |  | GC1 | 8832904 |
| 1341 | 37200.37400.37500.38500.39500.40900.41900.81400.1146300 | Door Frame Fixing | 9d | 2026-07-02 | 2026-07-10 | 1325, 1340 |  | GC1 | 8832914 |
| 1342 | 37200.37400.37500.38500.39500.40900.41900.81400.1146400 | Internal Plumbing Works | 11.25d | 2026-07-16 | 2026-07-26 | 1326, 1340 |  | GC1 | 8832924 |
| 1343 | 37200.37400.37500.38500.39500.40900.41900.81400.1146500 | Waterproofing | 9d | 2026-07-26 | 2026-08-03 | 1327, 1342 |  | GC1 | 8832934 |
| 1344 | 37200.37400.37500.38500.39500.40900.41900.81400.1146600 | Internal Plaster | 6.75d | 2026-07-19 | 2026-07-25 | 1328FS+0.25d, 1341FS+0.25d |  | GC1 | 8832944 |
| 1345 | 37200.37400.37500.38500.39500.40900.41900.81400.1146700 | IPS flooring work | 10.12d | 2026-08-05 | 2026-08-14 | 1329, 1341, 1342, 1343 |  | GC1 | 8832954 |
| 1346 | 37200.37400.37500.38500.39500.40900.41900.81400.1146800 | Toilet dado work | 9d | 2027-05-25 | 2027-06-02 | 1330, 1343, 1344 |  | GC1 | 8832964 |
| 1347 | 37200.37400.37500.38500.39500.40900.41900.81400.1146900 | Toilet flooring work | 7.88d | 2027-06-02 | 2027-06-09 | 1331, 1346 |  | GC1 | 8832974 |
| 1348 | 37200.37400.37500.38500.39500.40900.41900.81400.1147000 | Living dinning flooring | 9d | 2027-06-11 | 2027-06-19 | 1332FS+0.25d, 1341FS+0.25d |  | GC1 | 8832984 |
| 1349 | 37200.37400.37500.38500.39500.40900.41900.81400.1147100 | Aluminium door-window fixing | 13.5d | 2027-08-04 | 2027-08-16 | 1333FS+0.25d, 1348FS+0.25d |  | GC1 | 8832994 |
| 1350 | 37200.37400.37500.38500.39500.40900.41900.81400.1147200 | Putty primer coat | 6.75d | 2027-06-19 | 2027-06-25 | 1334, 1348 |  | GC1 | 8833004 |
| 1351 | 37200.37400.37500.38500.39500.40900.41900.81400.1147300 | Door shutter fixing | 9d | 2027-06-19 | 2027-06-27 | 1335, 1348 |  | GC1 | 8833014 |
| 1352 | 37200.37400.37500.38500.39500.40900.41900.81400.1147400 | Electrical wiring work | 13.5d | 2027-08-14 | 2027-08-26 | 1336, 1351 |  | GC1 | 8833024 |
| 1353 | 37200.37400.37500.38500.39500.40900.41900.81400.1147500 | Painting 1st coat | 13.5d | 2027-08-29 | 2027-09-10 | 1337, 1350, 1351, 1352 |  | GC1 | 8833034 |
| 1354 | 37200.37400.37500.38500.39500.40900.41900.81400.1147600 | False ceiling | 11.25d | 2027-09-10 | 2027-09-20 | 1338, 1353 |  | GC1 | 8833044 |
| 1355 | 37200.37400.37500.38500.39500.40900.41900.81500 | **12th Floor** | 463d | 2026-07-02 | 2027-10-02 |  | start no earlier than 2026-07-02 | GC1 | 8806654 |
| 1356 | 37200.37400.37500.38500.39500.40900.41900.81500.1147700 | Block Work | 9d | 2026-07-02 | 2026-07-10 | 1340FS+0.25d |  | GC1 | 8833054 |
| 1357 | 37200.37400.37500.38500.39500.40900.41900.81500.1147800 | Door Frame Fixing | 9d | 2026-07-10 | 2026-07-18 | 1341, 1356 |  | GC1 | 8833064 |
| 1358 | 37200.37400.37500.38500.39500.40900.41900.81500.1147900 | Internal Plumbing Works | 11.25d | 2026-07-26 | 2026-08-05 | 1342, 1356 |  | GC1 | 8833074 |
| 1359 | 37200.37400.37500.38500.39500.40900.41900.81500.1148000 | Waterproofing | 9d | 2026-08-05 | 2026-08-13 | 1343, 1358 |  | GC1 | 8833084 |
| 1360 | 37200.37400.37500.38500.39500.40900.41900.81500.1148100 | Internal Plaster | 4.5d | 2026-07-25 | 2026-07-29 | 1344FS+0.25d, 1357FS+0.25d |  | GC1 | 8833094 |
| 1361 | 37200.37400.37500.38500.39500.40900.41900.81500.1148200 | IPS flooring work | 10.12d | 2026-08-14 | 2026-08-23 | 1345, 1357, 1358, 1359 |  | GC1 | 8833104 |
| 1362 | 37200.37400.37500.38500.39500.40900.41900.81500.1148300 | Toilet dado work | 9d | 2027-06-02 | 2027-06-10 | 1346, 1359, 1360 |  | GC1 | 8833114 |
| 1363 | 37200.37400.37500.38500.39500.40900.41900.81500.1148400 | Toilet flooring work | 7.88d | 2027-06-10 | 2027-06-17 | 1347, 1362 |  | GC1 | 8833124 |
| 1364 | 37200.37400.37500.38500.39500.40900.41900.81500.1148500 | Living dinning flooring | 9d | 2027-06-19 | 2027-06-27 | 1348FS+0.25d, 1357FS+0.25d |  | GC1 | 8833134 |
| 1365 | 37200.37400.37500.38500.39500.40900.41900.81500.1148600 | Aluminium door-window fixing | 13.5d | 2027-08-16 | 2027-08-28 | 1349, 1361, 1364 |  | GC1 | 8833144 |
| 1366 | 37200.37400.37500.38500.39500.40900.41900.81500.1148700 | Putty primer coat | 6.75d | 2027-06-27 | 2027-07-03 | 1350, 1364 |  | GC1 | 8833154 |
| 1367 | 37200.37400.37500.38500.39500.40900.41900.81500.1148800 | Door shutter fixing | 9d | 2027-06-27 | 2027-07-05 | 1351, 1364 |  | GC1 | 8833164 |
| 1368 | 37200.37400.37500.38500.39500.40900.41900.81500.1148900 | Electrical wiring work | 13.5d | 2027-08-26 | 2027-09-07 | 1352, 1367 |  | GC1 | 8833174 |
| 1369 | 37200.37400.37500.38500.39500.40900.41900.81500.1149000 | Painting 1st coat | 13.5d | 2027-09-10 | 2027-09-22 | 1353, 1366, 1367, 1368 |  | GC1 | 8833184 |
| 1370 | 37200.37400.37500.38500.39500.40900.41900.81500.1149100 | False ceiling | 11.25d | 2027-09-22 | 2027-10-02 | 1354, 1369 |  | GC1 | 8833194 |

| ID | WBS | Task | Duration | Start | Finish | Predecessors | Constraint | Calendar | Unique_Task_ID |
| --- | --- | --- | --- | --- | --- | --- | --- | --- | --- |
| 1371 | 37200.37400.37500.38500.39500.40900.41900.81600 | **13th Floor** | 467.25d | 2026-07-10 | 2027-10-14 |  | start no earlier than 2026-07-10 | GC1 | 8806664 |
| 1372 | 37200.37400.37500.38500.39500.40900.41900.81600.1149200 | Block Work | 9d | 2026-07-10 | 2026-07-18 | 1356FS+0.25d |  | GC1 | 8833204 |
| 1373 | 37200.37400.37500.38500.39500.40900.41900.81600.1149300 | Door Frame Fixing | 9d | 2026-07-18 | 2026-07-26 | 1357, 1372 |  | GC1 | 8833214 |
| 1374 | 37200.37400.37500.38500.39500.40900.41900.81600.1149400 | Internal Plumbing Works | 11.25d | 2026-08-05 | 2026-08-15 | 1358, 1372 |  | GC1 | 8833224 |
| 1375 | 37200.37400.37500.38500.39500.40900.41900.81600.1149500 | Waterproofing | 9d | 2026-08-15 | 2026-08-23 | 1359, 1374 |  | GC1 | 8833234 |
| 1376 | 37200.37400.37500.38500.39500.40900.41900.81600.1149600 | Internal Plaster | 4.5d | 2026-07-30 | 2026-08-03 | 1360FS+0.25d, 1373FS+0.25d |  | GC1 | 8833244 |
| 1377 | 37200.37400.37500.38500.39500.40900.41900.81600.1149700 | IPS flooring work | 10.12d | 2026-08-23 | 2026-09-01 | 1361, 1373, 1375, 1376 |  | GC1 | 8833254 |
| 1378 | 37200.37400.37500.38500.39500.40900.41900.81600.1149800 | Toilet dado work | 9d | 2027-06-10 | 2027-06-18 | 1362, 1375, 1376 |  | GC1 | 8833264 |
| 1379 | 37200.37400.37500.38500.39500.40900.41900.81600.1149900 | Toilet flooring work | 7.88d | 2027-06-18 | 2027-06-25 | 1363, 1378 |  | GC1 | 8833274 |
| 1380 | 37200.37400.37500.38500.39500.40900.41900.81600.1150000 | Living dinning flooring | 9d | 2027-06-27 | 2027-07-05 | 1364, 1373, 1379 |  | GC1 | 8833284 |
| 1381 | 37200.37400.37500.38500.39500.40900.41900.81600.1150100 | Aluminium door-window fixing | 13.5d | 2027-08-28 | 2027-09-09 | 1365, 1377, 1380 |  | GC1 | 8833294 |
| 1382 | 37200.37400.37500.38500.39500.40900.41900.81600.1150200 | Putty primer coat | 6.75d | 2027-07-05 | 2027-07-11 | 1366, 1380 |  | GC1 | 8833304 |
| 1383 | 37200.37400.37500.38500.39500.40900.41900.81600.1150300 | Door shutter fixing | 9d | 2027-07-05 | 2027-07-13 | 1367, 1380 |  | GC1 | 8833314 |
| 1384 | 37200.37400.37500.38500.39500.40900.41900.81600.1150400 | Electrical wiring work | 13.5d | 2027-09-07 | 2027-09-19 | 1368, 1383 |  | GC1 | 8833324 |
| 1385 | 37200.37400.37500.38500.39500.40900.41900.81600.1150500 | Painting 1st coat | 13.5d | 2027-09-22 | 2027-10-04 | 1369, 1382, 1383, 1384 |  | GC1 | 8833334 |
| 1386 | 37200.37400.37500.38500.39500.40900.41900.81600.1150600 | False ceiling | 11.25d | 2027-10-04 | 2027-10-14 | 1370, 1385 |  | GC1 | 8833344 |
| 1387 | 37200.37400.37500.38500.39500.40900.41900.81700 | **14th Floor** | 471.5d | 2026-07-19 | 2027-10-26 |  | start no earlier than 2026-07-19 | GC1 | 8806674 |
| 1388 | 37200.37400.37500.38500.39500.40900.41900.81700.1150700 | Block Work | 9d | 2026-07-19 | 2026-07-27 | 1372FS+0.25d |  | GC1 | 8833354 |
| 1389 | 37200.37400.37500.38500.39500.40900.41900.81700.1150800 | Door Frame Fixing | 9d | 2026-07-27 | 2026-08-04 | 1373, 1388 |  | GC1 | 8833364 |
| 1390 | 37200.37400.37500.38500.39500.40900.41900.81700.1150900 | Internal Plumbing Works | 11.25d | 2026-08-15 | 2026-08-25 | 1374, 1388 |  | GC1 | 8833374 |
| 1391 | 37200.37400.37500.38500.39500.40900.41900.81700.1151000 | Waterproofing | 9d | 2026-08-25 | 2026-09-02 | 1375, 1390 |  | GC1 | 8833384 |
| 1392 | 37200.37400.37500.38500.39500.40900.41900.81700.1151100 | Internal Plaster | 4.5d | 2026-08-04 | 2026-08-08 | 1376FS+0.25d, 1389FS+0.25d |  | GC1 | 8833394 |
| 1393 | 37200.37400.37500.38500.39500.40900.41900.81700.1151200 | IPS flooring work | 10.12d | 2026-09-02 | 2026-09-11 | 1377, 1389, 1390, 1391 |  | GC1 | 8833404 |
| 1394 | 37200.37400.37500.38500.39500.40900.41900.81700.1151300 | Toilet dado work | 9d | 2027-06-18 | 2027-06-26 | 1378, 1391, 1392 |  | GC1 | 8833414 |
| 1395 | 37200.37400.37500.38500.39500.40900.41900.81700.1151400 | Toilet flooring work | 7.88d | 2027-06-26 | 2027-07-03 | 1379, 1394 |  | GC1 | 8833424 |
| 1396 | 37200.37400.37500.38500.39500.40900.41900.81700.1151500 | Living dinning flooring | 9d | 2027-07-05 | 2027-07-13 | 1380, 1389, 1395 |  | GC1 | 8833434 |
| 1397 | 37200.37400.37500.38500.39500.40900.41900.81700.1151600 | Aluminium door-window fixing | 13.5d | 2027-09-09 | 2027-09-21 | 1381, 1393, 1396 |  | GC1 | 8833444 |
| 1398 | 37200.37400.37500.38500.39500.40900.41900.81700.1151700 | Putty primer coat | 6.75d | 2027-07-13 | 2027-07-19 | 1382, 1396 |  | GC1 | 8833454 |
| 1399 | 37200.37400.37500.38500.39500.40900.41900.81700.1151800 | Door shutter fixing | 9d | 2027-07-13 | 2027-07-21 | 1383, 1396 |  | GC1 | 8833464 |
| 1400 | 37200.37400.37500.38500.39500.40900.41900.81700.1151900 | Electrical wiring work | 13.5d | 2027-09-19 | 2027-10-01 | 1384, 1399 |  | GC1 | 8833474 |
| 1401 | 37200.37400.37500.38500.39500.40900.41900.81700.1152000 | Painting 1st coat | 13.5d | 2027-10-04 | 2027-10-16 | 1385, 1398, 1399, 1400 |  | GC1 | 8833484 |
| 1402 | 37200.37400.37500.38500.39500.40900.41900.81700.1152100 | False ceiling | 11.25d | 2027-10-16 | 2027-10-26 | 1386, 1401 |  | GC1 | 8833494 |

| ID | WBS | Task | Duration | Start | Finish | Predecessors | Constraint | Calendar | Unique_Task_ID |
| --- | --- | --- | --- | --- | --- | --- | --- | --- | --- |
| 1403 | 37200.37400.37500.38500.39500.40900.41900.81800 | **15th Floor** | 475.75d | 2026-07-27 | 2027-12-22 |  | start no earlier than 2026-07-27 | GC1 | 8806684 |
| 1404 | 37200.37400.37500.38500.39500.40900.41900.81800.1152200 | Block Work | 9d | 2026-07-27 | 2026-08-04 | 1388FS+0.25d |  | GC1 | 8833504 |
| 1405 | 37200.37400.37500.38500.39500.40900.41900.81800.1152300 | Door Frame Fixing | 5.62d | 2026-08-04 | 2026-08-09 | 1389, 1404 |  | GC1 | 8833514 |
| 1406 | 37200.37400.37500.38500.39500.40900.41900.81800.1152400 | Internal Plumbing Works | 11.25d | 2026-08-25 | 2026-09-04 | 1390, 1404 |  | GC1 | 8833524 |
| 1407 | 37200.37400.37500.38500.39500.40900.41900.81800.1152500 | Waterproofing | 9d | 2026-09-04 | 2026-09-12 | 1391, 1406 |  | GC1 | 8833534 |
| 1408 | 37200.37400.37500.38500.39500.40900.41900.81800.1152600 | Internal Plaster | 6.75d | 2026-08-09 | 2026-08-15 | 1392FS+0.25d, 1405FS+0.25d |  | GC1 | 8833544 |
| 1409 | 37200.37400.37500.38500.39500.40900.41900.81800.1152700 | IPS flooring work | 10.12d | 2026-09-12 | 2026-09-21 | 1393, 1405, 1406, 1407 |  | GC1 | 8833554 |
| 1410 | 37200.37400.37500.38500.39500.40900.41900.81800.1152800 | Toilet dado work | 9d | 2027-06-26 | 2027-07-04 | 1394, 1407, 1408 |  | GC1 | 8833564 |
| 1411 | 37200.37400.37500.38500.39500.40900.41900.81800.1152900 | Toilet flooring work | 7.88d | 2027-07-04 | 2027-07-11 | 1395, 1410 |  | GC1 | 8833574 |
| 1412 | 37200.37400.37500.38500.39500.40900.41900.81800.1153000 | Living dinning flooring | 9d | 2027-07-13 | 2027-07-21 | 1396, 1405, 1411 |  | GC1 | 8833584 |
| 1413 | 37200.37400.37500.38500.39500.40900.41900.81800.1153100 | Aluminium door-window fixing | 13.5d | 2027-09-21 | 2027-10-03 | 1397, 1409, 1412 |  | GC1 | 8833594 |
| 1414 | 37200.37400.37500.38500.39500.40900.41900.81800.1153200 | Putty primer coat | 6.75d | 2027-07-21 | 2027-07-27 | 1398, 1412 |  | GC1 | 8833604 |
| 1415 | 37200.37400.37500.38500.39500.40900.41900.81800.1153300 | Door shutter fixing | 9d | 2027-07-21 | 2027-07-29 | 1399, 1412 |  | GC1 | 8833614 |
| 1416 | 37200.37400.37500.38500.39500.40900.41900.81800.1153400 | Electrical wiring work | 13.5d | 2027-10-01 | 2027-10-13 | 1400, 1415 |  | GC1 | 8833624 |
| 1417 | 37200.37400.37500.38500.39500.40900.41900.81800.1153500 | Painting 1st coat | 13.5d | 2027-10-16 | 2027-10-28 | 1401, 1414, 1415, 1416 |  | GC1 | 8833634 |
| 1418 | 37200.37400.37500.38500.39500.40900.41900.81800.1153600 | False ceiling | 11.25d | 2027-10-28 | 2027-12-22 | 1402, 1417 |  | GC1 | 8833644 |
| 1419 | 37200.37400.37500.38500.39500.40900.41900.81900 | **16th Floor** | 415.38d | 2026-09-30 | 2028-01-03 |  | start no earlier than 2026-09-30 | GC1 | 8806694 |
| 1420 | 37200.37400.37500.38500.39500.40900.41900.81900.1153700 | Block Work | 9d | 2026-09-30 | 2026-10-08 | 1157, 1404 |  | GC1 | 8833654 |
| 1421 | 37200.37400.37500.38500.39500.40900.41900.81900.1153800 | Door Frame Fixing | 10.12d | 2026-10-08 | 2026-10-17 | 1405, 1420 |  | GC1 | 8833664 |
| 1422 | 37200.37400.37500.38500.39500.40900.41900.81900.1153900 | Internal Plumbing Works | 11.25d | 2026-10-08 | 2026-10-18 | 1406, 1420 |  | GC1 | 8833674 |
| 1423 | 37200.37400.37500.38500.39500.40900.41900.81900.1154000 | Waterproofing | 13.5d | 2026-10-18 | 2026-10-30 | 1407, 1422 |  | GC1 | 8833684 |
| 1424 | 37200.37400.37500.38500.39500.40900.41900.81900.1154100 | Internal Plaster | 10.12d | 2026-10-30 | 2026-12-23 | 1408, 1421, 1422, 1423 |  | GC1 | 8833694 |
| 1425 | 37200.37400.37500.38500.39500.40900.41900.81900.1154200 | IPS flooring work | 10.12d | 2026-10-30 | 2026-12-23 | 1409, 1421, 1422, 1423 |  | GC1 | 8833704 |
| 1426 | 37200.37400.37500.38500.39500.40900.41900.81900.1154300 | Toilet dado work | 9d | 2027-07-04 | 2027-07-12 | 1410, 1423, 1424 |  | GC1 | 8833714 |
| 1427 | 37200.37400.37500.38500.39500.40900.41900.81900.1154400 | Toilet flooring work | 7.88d | 2027-07-12 | 2027-07-19 | 1411, 1426 |  | GC1 | 8833724 |
| 1428 | 37200.37400.37500.38500.39500.40900.41900.81900.1154500 | Living dinning flooring | 13.5d | 2027-07-21 | 2027-08-02 | 1412, 1421, 1427 |  | GC1 | 8833734 |
| 1429 | 37200.37400.37500.38500.39500.40900.41900.81900.1154600 | Aluminium door-window fixing | 13.5d | 2027-10-03 | 2027-10-15 | 1413, 1425, 1428 |  | GC1 | 8833744 |
| 1430 | 37200.37400.37500.38500.39500.40900.41900.81900.1154700 | Putty primer coat | 6.75d | 2027-08-02 | 2027-08-08 | 1414, 1428 |  | GC1 | 8833754 |
| 1431 | 37200.37400.37500.38500.39500.40900.41900.81900.1154800 | Door shutter fixing | 9d | 2027-08-02 | 2027-08-10 | 1415, 1428 |  | GC1 | 8833764 |
| 1432 | 37200.37400.37500.38500.39500.40900.41900.81900.1154900 | Electrical wiring work | 13.5d | 2027-10-13 | 2027-10-25 | 1416, 1431 |  | GC1 | 8833774 |
| 1433 | 37200.37400.37500.38500.39500.40900.41900.81900.1155000 | Painting 1st coat | 13.5d | 2027-10-28 | 2027-12-24 | 1417, 1430, 1431, 1432 |  | GC1 | 8833784 |
| 1434 | 37200.37400.37500.38500.39500.40900.41900.81900.1155100 | False ceiling | 11.25d | 2027-12-24 | 2028-01-03 | 1418, 1433 |  | GC1 | 8833794 |

| ID | WBS | Task | Duration | Start | Finish | Predecessors | Constraint | Calendar | Unique_Task_ID |
| --- | --- | --- | --- | --- | --- | --- | --- | --- | --- |
| 1435 | 37200.37400.37500.38500.39500.40900.41900.82000 | **17th Floor** | 416.5d | 2026-10-11 | 2028-01-15 |  | start no earlier than 2026-10-11 | GC1 | 8806704 |
| 1436 | 37200.37400.37500.38500.39500.40900.41900.82000.1155200 | Block Work | 9d | 2026-10-11 | 2026-10-19 | 1158, 1420 |  | GC1 | 8833804 |
| 1437 | 37200.37400.37500.38500.39500.40900.41900.82000.1155300 | Door Frame Fixing | 10.12d | 2026-10-19 | 2026-10-28 | 1421, 1436 |  | GC1 | 8833814 |
| 1438 | 37200.37400.37500.38500.39500.40900.41900.82000.1155400 | Internal Plumbing Works | 11.25d | 2026-10-19 | 2026-10-29 | 1422, 1436 |  | GC1 | 8833824 |
| 1439 | 37200.37400.37500.38500.39500.40900.41900.82000.1155500 | Waterproofing | 13.5d | 2026-10-30 | 2026-12-26 | 1423, 1438 |  | GC1 | 8833834 |
| 1440 | 37200.37400.37500.38500.39500.40900.41900.82000.1155600 | Internal Plaster | 10.12d | 2026-12-26 | 2027-01-04 | 1424, 1437, 1438, 1439 |  | GC1 | 8833844 |
| 1441 | 37200.37400.37500.38500.39500.40900.41900.82000.1155700 | IPS flooring work | 10.12d | 2026-12-26 | 2027-01-04 | 1425, 1437, 1438, 1439 |  | GC1 | 8833854 |
| 1442 | 37200.37400.37500.38500.39500.40900.41900.82000.1155800 | Toilet dado work | 9d | 2027-07-12 | 2027-07-20 | 1426, 1439, 1440 |  | GC1 | 8833864 |
| 1443 | 37200.37400.37500.38500.39500.40900.41900.82000.1155900 | Toilet flooring work | 7.88d | 2027-07-20 | 2027-07-27 | 1427, 1442 |  | GC1 | 8833874 |
| 1444 | 37200.37400.37500.38500.39500.40900.41900.82000.1156000 | Living dinning flooring | 13.5d | 2027-08-02 | 2027-08-14 | 1428, 1437, 1443 |  | GC1 | 8833884 |
| 1445 | 37200.37400.37500.38500.39500.40900.41900.82000.1156100 | Aluminium door-window fixing | 13.5d | 2027-10-15 | 2027-10-27 | 1429, 1441, 1444 |  | GC1 | 8833894 |
| 1446 | 37200.37400.37500.38500.39500.40900.41900.82000.1156200 | Putty primer coat | 6.75d | 2027-08-14 | 2027-08-20 | 1430, 1444 |  | GC1 | 8833904 |
| 1447 | 37200.37400.37500.38500.39500.40900.41900.82000.1156300 | Door shutter fixing | 9d | 2027-08-14 | 2027-08-22 | 1431, 1444 |  | GC1 | 8833914 |
| 1448 | 37200.37400.37500.38500.39500.40900.41900.82000.1156400 | Electrical wiring work | 13.5d | 2027-10-25 | 2027-12-21 | 1432, 1447 |  | GC1 | 8833924 |
| 1449 | 37200.37400.37500.38500.39500.40900.41900.82000.1156500 | Painting 1st coat | 13.5d | 2027-12-24 | 2028-01-05 | 1433, 1446, 1447, 1448 |  | GC1 | 8833934 |
| 1450 | 37200.37400.37500.38500.39500.40900.41900.82000.1156600 | False ceiling | 11.25d | 2028-01-05 | 2028-01-15 | 1434, 1449 |  | GC1 | 8833944 |
| 1451 | 37200.37400.37500.38500.39500.40900.41900.82100 | **18th Floor** | 417.62d | 2026-10-22 | 2028-01-27 |  | start no earlier than 2026-10-22 | GC1 | 8806714 |
| 1452 | 37200.37400.37500.38500.39500.40900.41900.82100.1156700 | Block Work | 9d | 2026-10-22 | 2026-10-30 | 1159, 1436 |  | GC1 | 8833954 |
| 1453 | 37200.37400.37500.38500.39500.40900.41900.82100.1156800 | Door Frame Fixing | 10.12d | 2026-10-30 | 2026-12-23 | 1437, 1452 |  | GC1 | 8833964 |
| 1454 | 37200.37400.37500.38500.39500.40900.41900.82100.1156900 | Internal Plumbing Works | 11.25d | 2026-10-30 | 2026-12-24 | 1438, 1452 |  | GC1 | 8833974 |
| 1455 | 37200.37400.37500.38500.39500.40900.41900.82100.1157000 | Waterproofing | 13.5d | 2026-12-26 | 2027-01-07 | 1439, 1454 |  | GC1 | 8833984 |
| 1456 | 37200.37400.37500.38500.39500.40900.41900.82100.1157100 | Internal Plaster | 10.12d | 2027-01-07 | 2027-01-16 | 1440, 1453, 1454, 1455 |  | GC1 | 8833994 |
| 1457 | 37200.37400.37500.38500.39500.40900.41900.82100.1157200 | IPS flooring work | 10.12d | 2027-01-07 | 2027-01-16 | 1441, 1453, 1454, 1455 |  | GC1 | 8834004 |
| 1458 | 37200.37400.37500.38500.39500.40900.41900.82100.1157300 | Toilet dado work | 9d | 2027-07-20 | 2027-07-28 | 1442, 1455, 1456 |  | GC1 | 8834014 |
| 1459 | 37200.37400.37500.38500.39500.40900.41900.82100.1157400 | Toilet flooring work | 7.88d | 2027-07-28 | 2027-08-04 | 1443, 1458 |  | GC1 | 8834024 |
| 1460 | 37200.37400.37500.38500.39500.40900.41900.82100.1157500 | Living dinning flooring | 13.5d | 2027-08-14 | 2027-08-26 | 1444, 1453, 1459 |  | GC1 | 8834034 |
| 1461 | 37200.37400.37500.38500.39500.40900.41900.82100.1157600 | Aluminium door-window fixing | 13.5d | 2027-10-27 | 2027-12-23 | 1445, 1457, 1460 |  | GC1 | 8834044 |
| 1462 | 37200.37400.37500.38500.39500.40900.41900.82100.1157700 | Putty primer coat | 6.75d | 2027-08-26 | 2027-09-01 | 1446, 1460 |  | GC1 | 8834054 |
| 1463 | 37200.37400.37500.38500.39500.40900.41900.82100.1157800 | Door shutter fixing | 9d | 2027-08-26 | 2027-09-03 | 1447, 1460 |  | GC1 | 8834064 |
| 1464 | 37200.37400.37500.38500.39500.40900.41900.82100.1157900 | Electrical wiring work | 13.5d | 2027-12-21 | 2028-01-02 | 1448, 1463 |  | GC1 | 8834074 |
| 1465 | 37200.37400.37500.38500.39500.40900.41900.82100.1158000 | Painting 1st coat | 13.5d | 2028-01-05 | 2028-01-17 | 1449, 1462, 1463, 1464 |  | GC1 | 8834084 |
| 1466 | 37200.37400.37500.38500.39500.40900.41900.82100.1158100 | False ceiling | 11.25d | 2028-01-17 | 2028-01-27 | 1450, 1465 |  | GC1 | 8834094 |

| ID | WBS | Task | Duration | Start | Finish | Predecessors | Constraint | Calendar | Unique_Task_ID |
| --- | --- | --- | --- | --- | --- | --- | --- | --- | --- |
| 1467 | 37200.37400.37500.38500.39500.40900.41900.82200 | **19th Floor** | 418.75d | 2026-12-17 | 2028-02-08 |  | start no earlier than 2026-12-17 | GC1 | 8806724 |
| 1468 | 37200.37400.37500.38500.39500.40900.41900.82200.1158200 | Block Work | 9d | 2026-12-17 | 2026-12-25 | 1160, 1452 |  | GC1 | 8834104 |
| 1469 | 37200.37400.37500.38500.39500.40900.41900.82200.1158300 | Door Frame Fixing | 10.12d | 2026-12-25 | 2027-01-03 | 1453, 1468 |  | GC1 | 8834114 |
| 1470 | 37200.37400.37500.38500.39500.40900.41900.82200.1158400 | Internal Plumbing Works | 11.25d | 2026-12-25 | 2027-01-04 | 1454, 1468 |  | GC1 | 8834124 |
| 1471 | 37200.37400.37500.38500.39500.40900.41900.82200.1158500 | Waterproofing | 13.5d | 2027-01-07 | 2027-01-19 | 1455, 1470 |  | GC1 | 8834134 |
| 1472 | 37200.37400.37500.38500.39500.40900.41900.82200.1158600 | Internal Plaster | 10.12d | 2027-01-19 | 2027-01-28 | 1456, 1469, 1470, 1471 |  | GC1 | 8834144 |
| 1473 | 37200.37400.37500.38500.39500.40900.41900.82200.1158700 | IPS flooring work | 10.12d | 2027-01-28 | 2027-02-06 | 1457, 1469, 1471, 1472 |  | GC1 | 8834154 |
| 1474 | 37200.37400.37500.38500.39500.40900.41900.82200.1158800 | Toilet dado work | 9d | 2027-07-28 | 2027-08-05 | 1458, 1471, 1472 |  | GC1 | 8834164 |
| 1475 | 37200.37400.37500.38500.39500.40900.41900.82200.1158900 | Toilet flooring work | 7.88d | 2027-08-05 | 2027-08-12 | 1459, 1474 |  | GC1 | 8834174 |
| 1476 | 37200.37400.37500.38500.39500.40900.41900.82200.1159000 | Living dinning flooring | 13.5d | 2027-08-26 | 2027-09-07 | 1460, 1469, 1475 |  | GC1 | 8834184 |
| 1477 | 37200.37400.37500.38500.39500.40900.41900.82200.1159100 | Aluminium door-window fixing | 13.5d | 2027-12-23 | 2028-01-04 | 1461, 1473, 1476 |  | GC1 | 8834194 |
| 1478 | 37200.37400.37500.38500.39500.40900.41900.82200.1159200 | Putty primer coat | 6.75d | 2027-09-07 | 2027-09-13 | 1462, 1476 |  | GC1 | 8834204 |
| 1479 | 37200.37400.37500.38500.39500.40900.41900.82200.1159300 | Door shutter fixing | 9d | 2027-09-07 | 2027-09-15 | 1463, 1476 |  | GC1 | 8834214 |
| 1480 | 37200.37400.37500.38500.39500.40900.41900.82200.1159400 | Electrical wiring work | 13.5d | 2028-01-02 | 2028-01-14 | 1464, 1479 |  | GC1 | 8834224 |
| 1481 | 37200.37400.37500.38500.39500.40900.41900.82200.1159500 | Painting 1st coat | 13.5d | 2028-01-17 | 2028-01-29 | 1465, 1478, 1479, 1480 |  | GC1 | 8834234 |
| 1482 | 37200.37400.37500.38500.39500.40900.41900.82200.1159600 | False ceiling | 11.25d | 2028-01-29 | 2028-02-08 | 1466, 1481 |  | GC1 | 8834244 |
| 1483 | 37200.37400.37500.38500.39500.40900.41900.82300 | **20th Floor** | 419.88d | 2026-12-28 | 2028-02-20 |  | start no earlier than 2026-12-28 | GC1 | 8806734 |
| 1484 | 37200.37400.37500.38500.39500.40900.41900.82300.1159700 | Block Work | 9d | 2026-12-28 | 2027-01-05 | 1161, 1468 |  | GC1 | 8834254 |
| 1485 | 37200.37400.37500.38500.39500.40900.41900.82300.1159800 | Door Frame Fixing | 10.12d | 2027-01-05 | 2027-01-14 | 1469, 1484 |  | GC1 | 8834264 |
| 1486 | 37200.37400.37500.38500.39500.40900.41900.82300.1159900 | Internal Plumbing Works | 11.25d | 2027-01-05 | 2027-01-15 | 1470, 1484 |  | GC1 | 8834274 |
| 1487 | 37200.37400.37500.38500.39500.40900.41900.82300.1160000 | Waterproofing | 13.5d | 2027-01-19 | 2027-01-31 | 1471, 1486 |  | GC1 | 8834284 |
| 1488 | 37200.37400.37500.38500.39500.40900.41900.82300.1160100 | Internal Plaster | 10.12d | 2027-01-31 | 2027-02-09 | 1472, 1485, 1486, 1487 |  | GC1 | 8834294 |
| 1489 | 37200.37400.37500.38500.39500.40900.41900.82300.1160200 | IPS flooring work | 10.12d | 2027-02-09 | 2027-02-18 | 1473, 1485, 1487, 1488 |  | GC1 | 8834304 |
| 1490 | 37200.37400.37500.38500.39500.40900.41900.82300.1160300 | Toilet dado work | 9d | 2027-08-05 | 2027-08-13 | 1474, 1487, 1488 |  | GC1 | 8834314 |
| 1491 | 37200.37400.37500.38500.39500.40900.41900.82300.1160400 | Toilet flooring work | 7.88d | 2027-08-13 | 2027-08-20 | 1475, 1490 |  | GC1 | 8834324 |
| 1492 | 37200.37400.37500.38500.39500.40900.41900.82300.1160500 | Living dinning flooring | 13.5d | 2027-09-07 | 2027-09-19 | 1476, 1485, 1491 |  | GC1 | 8834334 |
| 1493 | 37200.37400.37500.38500.39500.40900.41900.82300.1160600 | Aluminium door-window fixing | 13.5d | 2028-01-04 | 2028-01-16 | 1477, 1489, 1492 |  | GC1 | 8834344 |
| 1494 | 37200.37400.37500.38500.39500.40900.41900.82300.1160700 | Putty primer coat | 6.75d | 2027-09-19 | 2027-09-25 | 1478, 1492 |  | GC1 | 8834354 |
| 1495 | 37200.37400.37500.38500.39500.40900.41900.82300.1160800 | Door shutter fixing | 9d | 2027-09-19 | 2027-09-27 | 1479, 1492 |  | GC1 | 8834364 |
| 1496 | 37200.37400.37500.38500.39500.40900.41900.82300.1160900 | Electrical wiring work | 13.5d | 2028-01-14 | 2028-01-26 | 1480, 1495 |  | GC1 | 8834374 |
| 1497 | 37200.37400.37500.38500.39500.40900.41900.82300.1161000 | Painting 1st coat | 13.5d | 2028-01-29 | 2028-02-10 | 1481, 1494, 1495, 1496 |  | GC1 | 8834384 |
| 1498 | 37200.37400.37500.38500.39500.40900.41900.82300.1161100 | False ceiling | 11.25d | 2028-02-10 | 2028-02-20 | 1482, 1497 |  | GC1 | 8834394 |

| ID | WBS | Task | Duration | Start | Finish | Predecessors | Constraint | Calendar | Unique_Task_ID |
| --- | --- | --- | --- | --- | --- | --- | --- | --- | --- |
| 1499 | 37200.37400.37500.38500.39500.40900.41900.82400 | **21st Floor** | 421d | 2027-01-08 | 2028-03-03 |  | start no earlier than 2027-01-08 | GC1 | 8806744 |
| 1500 | 37200.37400.37500.38500.39500.40900.41900.82400.1161200 | Block Work | 9d | 2027-01-08 | 2027-01-16 | 1162, 1484 |  | GC1 | 8834404 |
| 1501 | 37200.37400.37500.38500.39500.40900.41900.82400.1161300 | Door Frame Fixing | 10.12d | 2027-01-16 | 2027-01-25 | 1485, 1500 |  | GC1 | 8834414 |
| 1502 | 37200.37400.37500.38500.39500.40900.41900.82400.1161400 | Internal Plumbing Works | 11.25d | 2027-01-16 | 2027-01-26 | 1486, 1500 |  | GC1 | 8834424 |
| 1503 | 37200.37400.37500.38500.39500.40900.41900.82400.1161500 | Waterproofing | 13.5d | 2027-01-31 | 2027-02-12 | 1487, 1502 |  | GC1 | 8834434 |
| 1504 | 37200.37400.37500.38500.39500.40900.41900.82400.1161600 | Internal Plaster | 10.12d | 2027-02-12 | 2027-02-21 | 1488, 1501, 1502, 1503 |  | GC1 | 8834444 |
| 1505 | 37200.37400.37500.38500.39500.40900.41900.82400.1161700 | IPS flooring work | 10.12d | 2027-02-21 | 2027-03-02 | 1489, 1501, 1503, 1504 |  | GC1 | 8834454 |
| 1506 | 37200.37400.37500.38500.39500.40900.41900.82400.1161800 | Toilet dado work | 9d | 2027-08-13 | 2027-08-21 | 1490, 1503, 1504 |  | GC1 | 8834464 |
| 1507 | 37200.37400.37500.38500.39500.40900.41900.82400.1161900 | Toilet flooring work | 7.88d | 2027-08-21 | 2027-08-28 | 1491, 1506 |  | GC1 | 8834474 |
| 1508 | 37200.37400.37500.38500.39500.40900.41900.82400.1162000 | Living dinning flooring | 13.5d | 2027-09-19 | 2027-10-01 | 1492, 1501, 1507 |  | GC1 | 8834484 |
| 1509 | 37200.37400.37500.38500.39500.40900.41900.82400.1162100 | Aluminium door-window fixing | 13.5d | 2028-01-16 | 2028-01-28 | 1493, 1505, 1508 |  | GC1 | 8834494 |
| 1510 | 37200.37400.37500.38500.39500.40900.41900.82400.1162200 | Putty primer coat | 6.75d | 2027-10-01 | 2027-10-07 | 1494, 1508 |  | GC1 | 8834504 |
| 1511 | 37200.37400.37500.38500.39500.40900.41900.82400.1162300 | Door shutter fixing | 9d | 2027-10-01 | 2027-10-09 | 1495, 1508 |  | GC1 | 8834514 |
| 1512 | 37200.37400.37500.38500.39500.40900.41900.82400.1162400 | Electrical wiring work | 13.5d | 2028-01-26 | 2028-02-07 | 1496, 1511 |  | GC1 | 8834524 |
| 1513 | 37200.37400.37500.38500.39500.40900.41900.82400.1162500 | Painting 1st coat | 13.5d | 2028-02-10 | 2028-02-22 | 1497, 1510, 1511, 1512 |  | GC1 | 8834534 |
| 1514 | 37200.37400.37500.38500.39500.40900.41900.82400.1162600 | False ceiling | 11.25d | 2028-02-22 | 2028-03-03 | 1498, 1513 |  | GC1 | 8834544 |
| 1515 | 37200.37400.37500.38500.39500.40900.41900.82500 | **22nd Floor** | 422.12d | 2027-01-19 | 2028-03-15 |  | start no earlier than 2027-01-19 | GC1 | 8806754 |
| 1516 | 37200.37400.37500.38500.39500.40900.41900.82500.1162700 | Block Work | 9d | 2027-01-19 | 2027-01-27 | 1163, 1500 |  | GC1 | 8834554 |
| 1517 | 37200.37400.37500.38500.39500.40900.41900.82500.1162800 | Door Frame Fixing | 10.12d | 2027-01-27 | 2027-02-05 | 1501, 1516 |  | GC1 | 8834564 |
| 1518 | 37200.37400.37500.38500.39500.40900.41900.82500.1162900 | Internal Plumbing Works | 11.25d | 2027-01-27 | 2027-02-06 | 1502, 1516 |  | GC1 | 8834574 |
| 1519 | 37200.37400.37500.38500.39500.40900.41900.82500.1163000 | Waterproofing | 13.5d | 2027-02-12 | 2027-02-24 | 1503, 1518 |  | GC1 | 8834584 |
| 1520 | 37200.37400.37500.38500.39500.40900.41900.82500.1163100 | Internal Plaster | 10.12d | 2027-02-24 | 2027-03-05 | 1504, 1517, 1518, 1519 |  | GC1 | 8834594 |
| 1521 | 37200.37400.37500.38500.39500.40900.41900.82500.1163200 | IPS flooring work | 10.12d | 2027-03-05 | 2027-03-14 | 1505, 1517, 1519, 1520 |  | GC1 | 8834604 |
| 1522 | 37200.37400.37500.38500.39500.40900.41900.82500.1163300 | Toilet dado work | 9d | 2027-08-21 | 2027-08-29 | 1506, 1519, 1520 |  | GC1 | 8834614 |
| 1523 | 37200.37400.37500.38500.39500.40900.41900.82500.1163400 | Toilet flooring work | 7.88d | 2027-08-29 | 2027-09-05 | 1507, 1522 |  | GC1 | 8834624 |
| 1524 | 37200.37400.37500.38500.39500.40900.41900.82500.1163500 | Living dinning flooring | 13.5d | 2027-10-01 | 2027-10-13 | 1508, 1517, 1523 |  | GC1 | 8834634 |
| 1525 | 37200.37400.37500.38500.39500.40900.41900.82500.1163600 | Aluminium door-window fixing | 13.5d | 2028-01-28 | 2028-02-09 | 1509, 1521, 1524 |  | GC1 | 8834644 |
| 1526 | 37200.37400.37500.38500.39500.40900.41900.82500.1163700 | Putty primer coat | 6.75d | 2027-10-13 | 2027-10-19 | 1510, 1524 |  | GC1 | 8834654 |
| 1527 | 37200.37400.37500.38500.39500.40900.41900.82500.1163800 | Door shutter fixing | 9d | 2027-10-13 | 2027-10-21 | 1511, 1524 |  | GC1 | 8834664 |
| 1528 | 37200.37400.37500.38500.39500.40900.41900.82500.1163900 | Electrical wiring work | 13.5d | 2028-02-07 | 2028-02-19 | 1512, 1527 |  | GC1 | 8834674 |
| 1529 | 37200.37400.37500.38500.39500.40900.41900.82500.1164000 | Painting 1st coat | 13.5d | 2028-02-22 | 2028-03-05 | 1513, 1526, 1527, 1528 |  | GC1 | 8834684 |
| 1530 | 37200.37400.37500.38500.39500.40900.41900.82500.1164100 | False ceiling | 11.25d | 2028-03-05 | 2028-03-15 | 1514, 1529 |  | GC1 | 8834694 |

| ID | WBS | Task | Duration | Start | Finish | Predecessors | Constraint | Calendar | Unique_Task_ID |
| --- | --- | --- | --- | --- | --- | --- | --- | --- | --- |
| 1531 | 37200.37400.37500.38500.39500.40900.41900.82600 | **23rd Floor** | 423.25d | 2027-01-30 | 2028-03-27 |  | start no earlier than 2027-01-30 | GC1 | 8806764 |
| 1532 | 37200.37400.37500.38500.39500.40900.41900.82600.1164200 | Block Work | 9d | 2027-01-30 | 2027-02-07 | 1164, 1516 |  | GC1 | 8834704 |
| 1533 | 37200.37400.37500.38500.39500.40900.41900.82600.1164300 | Door Frame Fixing | 10.12d | 2027-02-07 | 2027-02-16 | 1517, 1532 |  | GC1 | 8834714 |
| 1534 | 37200.37400.37500.38500.39500.40900.41900.82600.1164400 | Internal Plumbing Works | 11.25d | 2027-02-07 | 2027-02-17 | 1518, 1532 |  | GC1 | 8834724 |
| 1535 | 37200.37400.37500.38500.39500.40900.41900.82600.1164500 | Waterproofing | 13.5d | 2027-02-24 | 2027-03-08 | 1519, 1534 |  | GC1 | 8834734 |
| 1536 | 37200.37400.37500.38500.39500.40900.41900.82600.1164600 | Internal Plaster | 10.12d | 2027-03-08 | 2027-03-17 | 1520, 1533, 1534, 1535 |  | GC1 | 8834744 |
| 1537 | 37200.37400.37500.38500.39500.40900.41900.82600.1164700 | IPS flooring work | 10.12d | 2027-03-17 | 2027-03-26 | 1521, 1533, 1535, 1536 |  | GC1 | 8834754 |
| 1538 | 37200.37400.37500.38500.39500.40900.41900.82600.1164800 | Toilet dado work | 9d | 2027-08-29 | 2027-09-06 | 1522, 1535, 1536 |  | GC1 | 8834764 |
| 1539 | 37200.37400.37500.38500.39500.40900.41900.82600.1164900 | Toilet flooring work | 7.88d | 2027-09-06 | 2027-09-13 | 1523, 1538 |  | GC1 | 8834774 |
| 1540 | 37200.37400.37500.38500.39500.40900.41900.82600.1165000 | Living dinning flooring | 16.88d | 2027-10-13 | 2027-10-28 | 1524, 1533, 1539 |  | GC1 | 8834784 |
| 1541 | 37200.37400.37500.38500.39500.40900.41900.82600.1165100 | Aluminium door-window fixing | 16.88d | 2028-02-09 | 2028-02-24 | 1525, 1537, 1540 |  | GC1 | 8834794 |
| 1542 | 37200.37400.37500.38500.39500.40900.41900.82600.1165200 | Putty primer coat | 6.75d | 2027-10-28 | 2027-12-18 | 1526, 1540 |  | GC1 | 8834804 |
| 1543 | 37200.37400.37500.38500.39500.40900.41900.82600.1165300 | Door shutter fixing | 9d | 2027-10-28 | 2027-12-20 | 1527, 1540 |  | GC1 | 8834814 |
| 1544 | 37200.37400.37500.38500.39500.40900.41900.82600.1165400 | Electrical wiring work | 13.5d | 2028-02-19 | 2028-03-02 | 1528, 1543 |  | GC1 | 8834824 |
| 1545 | 37200.37400.37500.38500.39500.40900.41900.82600.1165500 | Painting 1st coat | 13.5d | 2028-03-05 | 2028-03-17 | 1529, 1542, 1543, 1544 |  | GC1 | 8834834 |
| 1546 | 37200.37400.37500.38500.39500.40900.41900.82600.1165600 | False ceiling | 11.25d | 2028-03-17 | 2028-03-27 | 1530, 1545 |  | GC1 | 8834844 |
| 1547 | 37200.37400.37500.38500.39500.40900.41900.82700 | **24th Floor** | 424.38d | 2027-02-10 | 2028-04-08 |  | start no earlier than 2027-02-10 | GC1 | 8806774 |
| 1548 | 37200.37400.37500.38500.39500.40900.41900.82700.1165700 | Block Work | 9d | 2027-02-10 | 2027-02-18 | 1165, 1532 |  | GC1 | 8834854 |
| 1549 | 37200.37400.37500.38500.39500.40900.41900.82700.1165800 | Door Frame Fixing | 10.12d | 2027-02-18 | 2027-02-27 | 1533, 1548 |  | GC1 | 8834864 |
| 1550 | 37200.37400.37500.38500.39500.40900.41900.82700.1165900 | Internal Plumbing Works | 11.25d | 2027-02-18 | 2027-02-28 | 1534, 1548 |  | GC1 | 8834874 |
| 1551 | 37200.37400.37500.38500.39500.40900.41900.82700.1166000 | Waterproofing | 13.5d | 2027-03-08 | 2027-03-20 | 1535, 1550 |  | GC1 | 8834884 |
| 1552 | 37200.37400.37500.38500.39500.40900.41900.82700.1166100 | Internal Plaster | 10.12d | 2027-03-20 | 2027-03-29 | 1536, 1549, 1550, 1551 |  | GC1 | 8834894 |
| 1553 | 37200.37400.37500.38500.39500.40900.41900.82700.1166200 | IPS flooring work | 10.12d | 2027-03-29 | 2027-04-07 | 1537, 1549, 1551, 1552 |  | GC1 | 8834904 |
| 1554 | 37200.37400.37500.38500.39500.40900.41900.82700.1166300 | Toilet dado work | 9d | 2027-09-06 | 2027-09-14 | 1538, 1551, 1552 |  | GC1 | 8834914 |
| 1555 | 37200.37400.37500.38500.39500.40900.41900.82700.1166400 | Toilet flooring work | 7.88d | 2027-09-14 | 2027-09-21 | 1539, 1554 |  | GC1 | 8834924 |
| 1556 | 37200.37400.37500.38500.39500.40900.41900.82700.1166500 | Living dinning flooring | 16.88d | 2027-10-28 | 2027-12-27 | 1540, 1549, 1555 |  | GC1 | 8834934 |
| 1557 | 37200.37400.37500.38500.39500.40900.41900.82700.1166600 | Aluminium door-window fixing | 16.88d | 2028-02-24 | 2028-03-10 | 1541, 1553, 1556 |  | GC1 | 8834944 |
| 1558 | 37200.37400.37500.38500.39500.40900.41900.82700.1166700 | Putty primer coat | 6.75d | 2027-12-27 | 2028-01-02 | 1542, 1556 |  | GC1 | 8834954 |
| 1559 | 37200.37400.37500.38500.39500.40900.41900.82700.1166800 | Door shutter fixing | 9d | 2027-12-27 | 2028-01-04 | 1543, 1556 |  | GC1 | 8834964 |
| 1560 | 37200.37400.37500.38500.39500.40900.41900.82700.1166900 | Electrical wiring work | 13.5d | 2028-03-02 | 2028-03-14 | 1544, 1559 |  | GC1 | 8834974 |
| 1561 | 37200.37400.37500.38500.39500.40900.41900.82700.1167000 | Painting 1st coat | 13.5d | 2028-03-17 | 2028-03-29 | 1545, 1558, 1559, 1560 |  | GC1 | 8834984 |
| 1562 | 37200.37400.37500.38500.39500.40900.41900.82700.1167100 | False ceiling | 11.25d | 2028-03-29 | 2028-04-08 | 1546, 1561 |  | GC1 | 8834994 |

| ID | WBS | Task | Duration | Start | Finish | Predecessors | Constraint | Calendar | Unique_Task_ID |
| --- | --- | --- | --- | --- | --- | --- | --- | --- | --- |
| 1563 | 37200.37400.37500.38500.39500.40900.41900.82800 | **25th Floor** | 425.5d | 2027-02-21 | 2028-04-20 |  | start no earlier than 2027-02-21 | GC1 | 8806784 |
| 1564 | 37200.37400.37500.38500.39500.40900.41900.82800.1167200 | Block Work | 9d | 2027-02-21 | 2027-03-01 | 1166, 1548 |  | GC1 | 8835004 |
| 1565 | 37200.37400.37500.38500.39500.40900.41900.82800.1167300 | Door Frame Fixing | 10.12d | 2027-03-01 | 2027-03-10 | 1549, 1564 |  | GC1 | 8835014 |
| 1566 | 37200.37400.37500.38500.39500.40900.41900.82800.1167400 | Internal Plumbing Works | 11.25d | 2027-03-01 | 2027-03-11 | 1550, 1564 |  | GC1 | 8835024 |
| 1567 | 37200.37400.37500.38500.39500.40900.41900.82800.1167500 | Waterproofing | 13.5d | 2027-03-20 | 2027-04-01 | 1551, 1566 |  | GC1 | 8835034 |
| 1568 | 37200.37400.37500.38500.39500.40900.41900.82800.1167600 | Internal Plaster | 10.12d | 2027-04-01 | 2027-04-10 | 1552, 1565, 1566, 1567 |  | GC1 | 8835044 |
| 1569 | 37200.37400.37500.38500.39500.40900.41900.82800.1167700 | IPS flooring work | 10.12d | 2027-04-10 | 2027-04-19 | 1553, 1565, 1567, 1568 |  | GC1 | 8835054 |
| 1570 | 37200.37400.37500.38500.39500.40900.41900.82800.1167800 | Toilet dado work | 9d | 2027-09-14 | 2027-09-22 | 1554, 1567, 1568 |  | GC1 | 8835064 |
| 1571 | 37200.37400.37500.38500.39500.40900.41900.82800.1167900 | Toilet flooring work | 7.88d | 2027-09-22 | 2027-09-29 | 1555, 1570 |  | GC1 | 8835074 |
| 1572 | 37200.37400.37500.38500.39500.40900.41900.82800.1168000 | Living dinning flooring | 16.88d | 2027-12-27 | 2028-01-11 | 1556, 1565, 1571 |  | GC1 | 8835084 |
| 1573 | 37200.37400.37500.38500.39500.40900.41900.82800.1168100 | Aluminium door-window fixing | 16.88d | 2028-03-10 | 2028-03-25 | 1557, 1569, 1572 |  | GC1 | 8835094 |
| 1574 | 37200.37400.37500.38500.39500.40900.41900.82800.1168200 | Putty primer coat | 6.75d | 2028-01-11 | 2028-01-17 | 1558, 1572 |  | GC1 | 8835104 |
| 1575 | 37200.37400.37500.38500.39500.40900.41900.82800.1168300 | Door shutter fixing | 9d | 2028-01-11 | 2028-01-19 | 1559, 1572 |  | GC1 | 8835114 |
| 1576 | 37200.37400.37500.38500.39500.40900.41900.82800.1168400 | Electrical wiring work | 13.5d | 2028-03-14 | 2028-03-26 | 1560, 1575 |  | GC1 | 8835124 |
| 1577 | 37200.37400.37500.38500.39500.40900.41900.82800.1168500 | Painting 1st coat | 13.5d | 2028-03-29 | 2028-04-10 | 1561, 1574, 1575, 1576 |  | GC1 | 8835134 |
| 1578 | 37200.37400.37500.38500.39500.40900.41900.82800.1168600 | False ceiling | 11.25d | 2028-04-10 | 2028-04-20 | 1562, 1577 |  | GC1 | 8835144 |
| 1579 | 37200.37400.37500.38500.39500.40900.41900.82900 | **26th Floor** | 426.62d | 2027-03-04 | 2028-05-02 |  | start no earlier than 2027-03-04 | GC1 | 8806794 |
| 1580 | 37200.37400.37500.38500.39500.40900.41900.82900.1168700 | Block Work | 9d | 2027-03-04 | 2027-03-12 | 1167, 1564 |  | GC1 | 8835154 |
| 1581 | 37200.37400.37500.38500.39500.40900.41900.82900.1168800 | Door Frame Fixing | 10.12d | 2027-03-12 | 2027-03-21 | 1565, 1580 |  | GC1 | 8835164 |
| 1582 | 37200.37400.37500.38500.39500.40900.41900.82900.1168900 | Internal Plumbing Works | 11.25d | 2027-03-12 | 2027-03-22 | 1566, 1580 |  | GC1 | 8835174 |
| 1583 | 37200.37400.37500.38500.39500.40900.41900.82900.1169000 | Waterproofing | 13.5d | 2027-04-01 | 2027-04-13 | 1567, 1582 |  | GC1 | 8835184 |
| 1584 | 37200.37400.37500.38500.39500.40900.41900.82900.1169100 | Internal Plaster | 10.12d | 2027-04-13 | 2027-04-22 | 1568, 1581, 1582, 1583 |  | GC1 | 8835194 |
| 1585 | 37200.37400.37500.38500.39500.40900.41900.82900.1169200 | IPS flooring work | 10.12d | 2027-04-22 | 2027-05-01 | 1569, 1581, 1583, 1584 |  | GC1 | 8835204 |
| 1586 | 37200.37400.37500.38500.39500.40900.41900.82900.1169300 | Toilet dado work | 9d | 2027-09-22 | 2027-09-30 | 1570, 1583, 1584 |  | GC1 | 8835214 |
| 1587 | 37200.37400.37500.38500.39500.40900.41900.82900.1169400 | Toilet flooring work | 7.88d | 2027-09-30 | 2027-10-07 | 1571, 1586 |  | GC1 | 8835224 |
| 1588 | 37200.37400.37500.38500.39500.40900.41900.82900.1169500 | Living dinning flooring | 16.88d | 2028-01-11 | 2028-01-26 | 1572, 1581, 1587 |  | GC1 | 8835234 |
| 1589 | 37200.37400.37500.38500.39500.40900.41900.82900.1169600 | Aluminium door-window fixing | 16.88d | 2028-03-25 | 2028-04-09 | 1573, 1585, 1588 |  | GC1 | 8835244 |
| 1590 | 37200.37400.37500.38500.39500.40900.41900.82900.1169700 | Putty primer coat | 6.75d | 2028-01-26 | 2028-02-01 | 1574, 1588 |  | GC1 | 8835254 |
| 1591 | 37200.37400.37500.38500.39500.40900.41900.82900.1169800 | Door shutter fixing | 9d | 2028-01-26 | 2028-02-03 | 1575, 1588 |  | GC1 | 8835264 |
| 1592 | 37200.37400.37500.38500.39500.40900.41900.82900.1169900 | Electrical wiring work | 13.5d | 2028-03-26 | 2028-04-07 | 1576, 1591 |  | GC1 | 8835274 |
| 1593 | 37200.37400.37500.38500.39500.40900.41900.82900.1170000 | Painting 1st coat | 13.5d | 2028-04-10 | 2028-04-22 | 1577, 1590, 1591, 1592 |  | GC1 | 8835284 |
| 1594 | 37200.37400.37500.38500.39500.40900.41900.82900.1170100 | False ceiling | 11.25d | 2028-04-22 | 2028-05-02 | 1578, 1593 |  | GC1 | 8835294 |

| ID | WBS | Task | Duration | Start | Finish | Predecessors | Constraint | Calendar | Unique_Task_ID |
| --- | --- | --- | --- | --- | --- | --- | --- | --- | --- |
| 1595 | 37200.37400.37500.38500.39500.40900.41900.83000 | **27th Floor** | 427.75d | 2027-03-15 | 2028-05-14 |  | start no earlier than 2027-03-15 | GC1 | 8806804 |
| 1596 | 37200.37400.37500.38500.39500.40900.41900.83000.1170200 | Block Work | 9d | 2027-03-15 | 2027-03-23 | 1168, 1580 |  | GC1 | 8835304 |
| 1597 | 37200.37400.37500.38500.39500.40900.41900.83000.1170300 | Door Frame Fixing | 10.12d | 2027-03-23 | 2027-04-01 | 1581, 1596 |  | GC1 | 8835314 |
| 1598 | 37200.37400.37500.38500.39500.40900.41900.83000.1170400 | Internal Plumbing Works | 11.25d | 2027-03-23 | 2027-04-02 | 1582, 1596 |  | GC1 | 8835324 |
| 1599 | 37200.37400.37500.38500.39500.40900.41900.83000.1170500 | Waterproofing | 13.5d | 2027-04-13 | 2027-04-25 | 1583, 1598 |  | GC1 | 8835334 |
| 1600 | 37200.37400.37500.38500.39500.40900.41900.83000.1170600 | Internal Plaster | 10.12d | 2027-04-25 | 2027-05-04 | 1584, 1597, 1598, 1599 |  | GC1 | 8835344 |
| 1601 | 37200.37400.37500.38500.39500.40900.41900.83000.1170700 | IPS flooring work | 10.12d | 2027-05-04 | 2027-05-13 | 1585, 1597, 1599, 1600 |  | GC1 | 8835354 |
| 1602 | 37200.37400.37500.38500.39500.40900.41900.83000.1170800 | Toilet dado work | 9d | 2027-09-30 | 2027-10-08 | 1586, 1599, 1600 |  | GC1 | 8835364 |
| 1603 | 37200.37400.37500.38500.39500.40900.41900.83000.1170900 | Toilet flooring work | 7.88d | 2027-10-08 | 2027-10-15 | 1587, 1602 |  | GC1 | 8835374 |
| 1604 | 37200.37400.37500.38500.39500.40900.41900.83000.1171000 | Living dinning flooring | 16.88d | 2028-01-26 | 2028-02-10 | 1588, 1597, 1603 |  | GC1 | 8835384 |
| 1605 | 37200.37400.37500.38500.39500.40900.41900.83000.1171100 | Aluminium door-window fixing | 16.88d | 2028-04-09 | 2028-04-24 | 1589, 1601, 1604 |  | GC1 | 8835394 |
| 1606 | 37200.37400.37500.38500.39500.40900.41900.83000.1171200 | Putty primer coat | 6.75d | 2028-02-10 | 2028-02-16 | 1590, 1604 |  | GC1 | 8835404 |
| 1607 | 37200.37400.37500.38500.39500.40900.41900.83000.1171300 | Door shutter fixing | 9d | 2028-02-10 | 2028-02-18 | 1591, 1604 |  | GC1 | 8835414 |
| 1608 | 37200.37400.37500.38500.39500.40900.41900.83000.1171400 | Electrical wiring work | 13.5d | 2028-04-07 | 2028-04-19 | 1592, 1607 |  | GC1 | 8835424 |
| 1609 | 37200.37400.37500.38500.39500.40900.41900.83000.1171500 | Painting 1st coat | 13.5d | 2028-04-22 | 2028-05-04 | 1593, 1606, 1607, 1608 |  | GC1 | 8835434 |
| 1610 | 37200.37400.37500.38500.39500.40900.41900.83000.1171600 | False ceiling | 11.25d | 2028-05-04 | 2028-05-14 | 1594, 1609 |  | GC1 | 8835444 |
| 1611 | 37200.37400.37500.38500.39500.40900.41900.83100 | **28th Floor** | 428.88d | 2027-03-26 | 2028-05-26 |  | start no earlier than 2027-03-26 | GC1 | 8806814 |
| 1612 | 37200.37400.37500.38500.39500.40900.41900.83100.1171700 | Block Work | 9d | 2027-03-26 | 2027-04-03 | 1169, 1596 |  | GC1 | 8835454 |
| 1613 | 37200.37400.37500.38500.39500.40900.41900.83100.1171800 | Door Frame Fixing | 10.12d | 2027-04-03 | 2027-04-12 | 1597, 1612 |  | GC1 | 8835464 |
| 1614 | 37200.37400.37500.38500.39500.40900.41900.83100.1171900 | Internal Plumbing Works | 11.25d | 2027-04-03 | 2027-04-13 | 1598, 1612 |  | GC1 | 8835474 |
| 1615 | 37200.37400.37500.38500.39500.40900.41900.83100.1172000 | Waterproofing | 13.5d | 2027-04-25 | 2027-05-07 | 1599, 1614 |  | GC1 | 8835484 |
| 1616 | 37200.37400.37500.38500.39500.40900.41900.83100.1172100 | Internal Plaster | 10.12d | 2027-05-07 | 2027-05-16 | 1600, 1613, 1614, 1615 |  | GC1 | 8835494 |
| 1617 | 37200.37400.37500.38500.39500.40900.41900.83100.1172200 | IPS flooring work | 10.12d | 2027-05-16 | 2027-05-25 | 1601, 1613, 1615, 1616 |  | GC1 | 8835504 |
| 1618 | 37200.37400.37500.38500.39500.40900.41900.83100.1172300 | Toilet dado work | 9d | 2027-10-08 | 2027-10-16 | 1602, 1615, 1616 |  | GC1 | 8835514 |
| 1619 | 37200.37400.37500.38500.39500.40900.41900.83100.1172400 | Toilet flooring work | 7.88d | 2027-10-16 | 2027-10-23 | 1603, 1618 |  | GC1 | 8835524 |
| 1620 | 37200.37400.37500.38500.39500.40900.41900.83100.1172500 | Living dinning flooring | 16.88d | 2028-02-10 | 2028-02-25 | 1604, 1613, 1619 |  | GC1 | 8835534 |
| 1621 | 37200.37400.37500.38500.39500.40900.41900.83100.1172600 | Aluminium door-window fixing | 16.88d | 2028-04-24 | 2028-05-09 | 1605, 1617, 1620 |  | GC1 | 8835544 |
| 1622 | 37200.37400.37500.38500.39500.40900.41900.83100.1172700 | Putty primer coat | 6.75d | 2028-02-25 | 2028-03-02 | 1606, 1620 |  | GC1 | 8835554 |
| 1623 | 37200.37400.37500.38500.39500.40900.41900.83100.1172800 | Door shutter fixing | 9d | 2028-02-25 | 2028-03-04 | 1607, 1620 |  | GC1 | 8835564 |
| 1624 | 37200.37400.37500.38500.39500.40900.41900.83100.1172900 | Electrical wiring work | 13.5d | 2028-04-19 | 2028-05-01 | 1608, 1623 |  | GC1 | 8835574 |
| 1625 | 37200.37400.37500.38500.39500.40900.41900.83100.1173000 | Painting 1st coat | 13.5d | 2028-05-04 | 2028-05-16 | 1609, 1622, 1623, 1624 |  | GC1 | 8835584 |
| 1626 | 37200.37400.37500.38500.39500.40900.41900.83100.1173100 | False ceiling | 11.25d | 2028-05-16 | 2028-05-26 | 1610, 1625 |  | GC1 | 8835594 |

| ID | WBS | Task | Duration | Start | Finish | Predecessors | Constraint | Calendar | Unique_Task_ID |
| --- | --- | --- | --- | --- | --- | --- | --- | --- | --- |
| 1627 | 37200.37400.37500.38500.39500.40900.41900.83200 | **29th Floor** | 430d | 2027-04-06 | 2028-06-07 |  | start no earlier than 2027-04-06 | GC1 | 8806824 |
| 1628 | 37200.37400.37500.38500.39500.40900.41900.83200.1173200 | Block Work | 9d | 2027-04-06 | 2027-04-14 | 1170, 1612 |  | GC1 | 8835604 |
| 1629 | 37200.37400.37500.38500.39500.40900.41900.83200.1173300 | Door Frame Fixing | 10.12d | 2027-04-14 | 2027-04-23 | 1613, 1628 |  | GC1 | 8835614 |
| 1630 | 37200.37400.37500.38500.39500.40900.41900.83200.1173400 | Internal Plumbing Works | 11.25d | 2027-04-14 | 2027-04-24 | 1614, 1628 |  | GC1 | 8835624 |
| 1631 | 37200.37400.37500.38500.39500.40900.41900.83200.1173500 | Waterproofing | 13.5d | 2027-05-07 | 2027-05-19 | 1615, 1630 |  | GC1 | 8835634 |
| 1632 | 37200.37400.37500.38500.39500.40900.41900.83200.1173600 | Internal Plaster | 10.12d | 2027-05-19 | 2027-05-28 | 1616, 1629, 1630, 1631 |  | GC1 | 8835644 |
| 1633 | 37200.37400.37500.38500.39500.40900.41900.83200.1173700 | IPS flooring work | 10.12d | 2027-05-28 | 2027-06-06 | 1617, 1629, 1631, 1632 |  | GC1 | 8835654 |
| 1634 | 37200.37400.37500.38500.39500.40900.41900.83200.1173800 | Toilet dado work | 9d | 2027-10-16 | 2027-10-24 | 1618, 1631, 1632 |  | GC1 | 8835664 |
| 1635 | 37200.37400.37500.38500.39500.40900.41900.83200.1173900 | Toilet flooring work | 7.88d | 2027-10-24 | 2027-10-31 | 1619, 1634 |  | GC1 | 8835674 |
| 1636 | 37200.37400.37500.38500.39500.40900.41900.83200.1174000 | Living dinning flooring | 16.88d | 2028-02-25 | 2028-03-11 | 1620, 1629, 1635 |  | GC1 | 8835684 |
| 1637 | 37200.37400.37500.38500.39500.40900.41900.83200.1174100 | Aluminium door-window fixing | 16.88d | 2028-05-09 | 2028-05-24 | 1621, 1633, 1636 |  | GC1 | 8835694 |
| 1638 | 37200.37400.37500.38500.39500.40900.41900.83200.1174200 | Putty primer coat | 6.75d | 2028-03-11 | 2028-03-17 | 1622, 1636 |  | GC1 | 8835704 |
| 1639 | 37200.37400.37500.38500.39500.40900.41900.83200.1174300 | Door shutter fixing | 9d | 2028-03-11 | 2028-03-19 | 1623, 1636 |  | GC1 | 8835714 |
| 1640 | 37200.37400.37500.38500.39500.40900.41900.83200.1174400 | Electrical wiring work | 13.5d | 2028-05-01 | 2028-05-13 | 1624, 1639 |  | GC1 | 8835724 |
| 1641 | 37200.37400.37500.38500.39500.40900.41900.83200.1174500 | Painting 1st coat | 13.5d | 2028-05-16 | 2028-05-28 | 1625, 1638, 1639, 1640 |  | GC1 | 8835734 |
| 1642 | 37200.37400.37500.38500.39500.40900.41900.83200.1174600 | False ceiling | 11.25d | 2028-05-28 | 2028-06-07 | 1626, 1641 |  | GC1 | 8835744 |
| 1643 | 37200.37400.37500.38500.39500.40900.41900.83300 | **30th Floor** | 434.5d | 2027-04-17 | 2028-06-22 |  | start no earlier than 2027-04-17 | GC1 | 8806834 |
| 1644 | 37200.37400.37500.38500.39500.40900.41900.83300.1174700 | Block Work | 9d | 2027-04-17 | 2027-04-25 | 1171, 1628 |  | GC1 | 8835754 |
| 1645 | 37200.37400.37500.38500.39500.40900.41900.83300.1174800 | Door Frame Fixing | 10.12d | 2027-04-25 | 2027-05-04 | 1629, 1644 |  | GC1 | 8835764 |
| 1646 | 37200.37400.37500.38500.39500.40900.41900.83300.1174900 | Internal Plumbing Works | 11.25d | 2027-04-25 | 2027-05-05 | 1630, 1644 |  | GC1 | 8835774 |
| 1647 | 37200.37400.37500.38500.39500.40900.41900.83300.1175000 | Waterproofing | 13.5d | 2027-05-19 | 2027-05-31 | 1631, 1646 |  | GC1 | 8835784 |
| 1648 | 37200.37400.37500.38500.39500.40900.41900.83300.1175100 | Internal Plaster | 10.12d | 2027-05-31 | 2027-06-09 | 1632, 1645, 1646, 1647 |  | GC1 | 8835794 |
| 1649 | 37200.37400.37500.38500.39500.40900.41900.83300.1175200 | IPS flooring work | 10.12d | 2027-06-09 | 2027-06-18 | 1633, 1645, 1647, 1648 |  | GC1 | 8835804 |
| 1650 | 37200.37400.37500.38500.39500.40900.41900.83300.1175300 | Toilet dado work | 9d | 2027-10-24 | 2027-12-16 | 1634, 1647, 1648 |  | GC1 | 8835814 |
| 1651 | 37200.37400.37500.38500.39500.40900.41900.83300.1175400 | Toilet flooring work | 7.88d | 2027-12-16 | 2027-12-23 | 1635, 1650 |  | GC1 | 8835824 |
| 1652 | 37200.37400.37500.38500.39500.40900.41900.83300.1175500 | Living dinning flooring | 16.88d | 2028-03-11 | 2028-03-26 | 1636, 1645, 1651 |  | GC1 | 8835834 |
| 1653 | 37200.37400.37500.38500.39500.40900.41900.83300.1175600 | Aluminium door-window fixing | 16.88d | 2028-05-24 | 2028-06-08 | 1637, 1649, 1652 |  | GC1 | 8835844 |
| 1654 | 37200.37400.37500.38500.39500.40900.41900.83300.1175700 | Putty primer coat | 6.75d | 2028-03-26 | 2028-04-01 | 1638, 1652 |  | GC1 | 8835854 |
| 1655 | 37200.37400.37500.38500.39500.40900.41900.83300.1175800 | Door shutter fixing | 9d | 2028-03-26 | 2028-04-03 | 1639, 1652 |  | GC1 | 8835864 |
| 1656 | 37200.37400.37500.38500.39500.40900.41900.83300.1175900 | Electrical wiring work | 16.88d | 2028-05-13 | 2028-05-28 | 1640, 1655 |  | GC1 | 8835874 |
| 1657 | 37200.37400.37500.38500.39500.40900.41900.83300.1176000 | Painting 1st coat | 16.88d | 2028-05-28 | 2028-06-12 | 1641, 1654, 1655, 1656 |  | GC1 | 8835884 |
| 1658 | 37200.37400.37500.38500.39500.40900.41900.83300.1176100 | False ceiling | 11.25d | 2028-06-12 | 2028-06-22 | 1642, 1657 |  | GC1 | 8835894 |

| ID | WBS | Task | Duration | Start | Finish | Predecessors | Constraint | Calendar | Unique_Task_ID |
| --- | --- | --- | --- | --- | --- | --- | --- | --- | --- |
| 1659 | 37200.37400.37500.38500.39500.40900.41900.83400 | **31st Floor** | 439d | 2027-04-28 | 2028-07-07 |  | start no earlier than 2027-04-28 | GC1 | 8806844 |
| 1660 | 37200.37400.37500.38500.39500.40900.41900.83400.1176200 | Block Work | 9d | 2027-04-28 | 2027-05-06 | 1172, 1644 |  | GC1 | 8835904 |
| 1661 | 37200.37400.37500.38500.39500.40900.41900.83400.1176300 | Door Frame Fixing | 10.12d | 2027-05-06 | 2027-05-15 | 1645, 1660 |  | GC1 | 8835914 |
| 1662 | 37200.37400.37500.38500.39500.40900.41900.83400.1176400 | Internal Plumbing Works | 11.25d | 2027-05-06 | 2027-05-16 | 1646, 1660 |  | GC1 | 8835924 |
| 1663 | 37200.37400.37500.38500.39500.40900.41900.83400.1176500 | Waterproofing | 13.5d | 2027-05-31 | 2027-06-12 | 1647, 1662 |  | GC1 | 8835934 |
| 1664 | 37200.37400.37500.38500.39500.40900.41900.83400.1176600 | Internal Plaster | 10.12d | 2027-06-12 | 2027-06-21 | 1648, 1661, 1662, 1663 |  | GC1 | 8835944 |
| 1665 | 37200.37400.37500.38500.39500.40900.41900.83400.1176700 | IPS flooring work | 10.12d | 2027-06-21 | 2027-06-30 | 1649, 1661, 1663, 1664 |  | GC1 | 8835954 |
| 1666 | 37200.37400.37500.38500.39500.40900.41900.83400.1176800 | Toilet dado work | 9d | 2027-12-16 | 2027-12-24 | 1650, 1663, 1664 |  | GC1 | 8835964 |
| 1667 | 37200.37400.37500.38500.39500.40900.41900.83400.1176900 | Toilet flooring work | 7.88d | 2027-12-24 | 2027-12-31 | 1651, 1666 |  | GC1 | 8835974 |
| 1668 | 37200.37400.37500.38500.39500.40900.41900.83400.1177000 | Living dinning flooring | 16.88d | 2028-03-26 | 2028-04-10 | 1652, 1661, 1667 |  | GC1 | 8835984 |
| 1669 | 37200.37400.37500.38500.39500.40900.41900.83400.1177100 | Aluminium door-window fixing | 13.5d | 2028-06-08 | 2028-06-20 | 1653, 1665, 1668 |  | GC1 | 8835994 |
| 1670 | 37200.37400.37500.38500.39500.40900.41900.83400.1177200 | Putty primer coat | 6.75d | 2028-04-10 | 2028-04-16 | 1654, 1668 |  | GC1 | 8836004 |
| 1671 | 37200.37400.37500.38500.39500.40900.41900.83400.1177300 | Door shutter fixing | 9d | 2028-04-10 | 2028-04-18 | 1655, 1668 |  | GC1 | 8836014 |
| 1672 | 37200.37400.37500.38500.39500.40900.41900.83400.1177400 | Electrical wiring work | 16.88d | 2028-05-28 | 2028-06-12 | 1656, 1671 |  | GC1 | 8836024 |
| 1673 | 37200.37400.37500.38500.39500.40900.41900.83400.1177500 | Painting 1st coat | 16.88d | 2028-06-12 | 2028-06-27 | 1657, 1670, 1671, 1672 |  | GC1 | 8836034 |
| 1674 | 37200.37400.37500.38500.39500.40900.41900.83400.1177600 | False ceiling | 11.25d | 2028-06-27 | 2028-07-07 | 1658, 1673 |  | GC1 | 8836044 |
| 1675 | 37200.37400.37500.38500.39500.40900.41900.83500 | **32nd Floor** | 446.88d | 2027-05-06 | 2028-07-22 |  | start no earlier than 2027-05-06 | GC1 | 8806854 |
| 1676 | 37200.37400.37500.38500.39500.40900.41900.83500.1177700 | Block Work | 9d | 2027-05-06 | 2027-05-14 | 1173, 1660 |  | GC1 | 8836054 |
| 1677 | 37200.37400.37500.38500.39500.40900.41900.83500.1177800 | Door Frame Fixing | 10.12d | 2027-05-15 | 2027-05-24 | 1661, 1676 |  | GC1 | 8836064 |
| 1678 | 37200.37400.37500.38500.39500.40900.41900.83500.1177900 | Internal Plumbing Works | 11.25d | 2027-05-16 | 2027-05-26 | 1662, 1676 |  | GC1 | 8836074 |
| 1679 | 37200.37400.37500.38500.39500.40900.41900.83500.1178000 | Waterproofing | 13.5d | 2027-06-12 | 2027-06-24 | 1663, 1678 |  | GC1 | 8836084 |
| 1680 | 37200.37400.37500.38500.39500.40900.41900.83500.1178100 | Internal Plaster | 10.12d | 2027-06-24 | 2027-07-03 | 1664, 1677, 1678, 1679 |  | GC1 | 8836094 |
| 1681 | 37200.37400.37500.38500.39500.40900.41900.83500.1178200 | IPS flooring work | 10.12d | 2027-07-03 | 2027-07-12 | 1665, 1677, 1679, 1680 |  | GC1 | 8836104 |
| 1682 | 37200.37400.37500.38500.39500.40900.41900.83500.1178300 | Toilet dado work | 9d | 2027-12-24 | 2028-01-01 | 1666, 1679, 1680 |  | GC1 | 8836114 |
| 1683 | 37200.37400.37500.38500.39500.40900.41900.83500.1178400 | Toilet flooring work | 7.88d | 2028-01-01 | 2028-01-08 | 1667, 1682 |  | GC1 | 8836124 |
| 1684 | 37200.37400.37500.38500.39500.40900.41900.83500.1178500 | Living dinning flooring | 16.88d | 2028-04-10 | 2028-04-25 | 1668, 1677, 1683 |  | GC1 | 8836134 |
| 1685 | 37200.37400.37500.38500.39500.40900.41900.83500.1178600 | Aluminium door-window fixing | 13.5d | 2028-06-20 | 2028-07-02 | 1669, 1681, 1684 |  | GC1 | 8836144 |
| 1686 | 37200.37400.37500.38500.39500.40900.41900.83500.1178700 | Putty primer coat | 6.75d | 2028-04-25 | 2028-05-01 | 1670, 1684 |  | GC1 | 8836154 |
| 1687 | 37200.37400.37500.38500.39500.40900.41900.83500.1178800 | Door shutter fixing | 9d | 2028-04-25 | 2028-05-03 | 1671, 1684 |  | GC1 | 8836164 |
| 1688 | 37200.37400.37500.38500.39500.40900.41900.83500.1178900 | Electrical wiring work | 16.88d | 2028-06-12 | 2028-06-27 | 1672, 1687 |  | GC1 | 8836174 |
| 1689 | 37200.37400.37500.38500.39500.40900.41900.83500.1179000 | Painting 1st coat | 16.88d | 2028-06-27 | 2028-07-12 | 1673, 1686, 1687, 1688 |  | GC1 | 8836184 |
| 1690 | 37200.37400.37500.38500.39500.40900.41900.83500.1179100 | False ceiling | 11.25d | 2028-07-12 | 2028-07-22 | 1674, 1689 |  | GC1 | 8836194 |

| ID | WBS | Task | Duration | Start | Finish | Predecessors | Constraint | Calendar | Unique_Task_ID |
| --- | --- | --- | --- | --- | --- | --- | --- | --- | --- |
| 1691 | 37200.37400.37500.38500.39500.40900.41900.83600 | **33rd Floor** | 451.38d | 2027-05-14 | 2028-08-03 |  | start no earlier than 2027-05-14 | GC1 | 8806864 |
| 1692 | 37200.37400.37500.38500.39500.40900.41900.83600.1179200 | Block Work | 9d | 2027-05-14 | 2027-05-22 | 1174, 1676 |  | GC1 | 8836204 |
| 1693 | 37200.37400.37500.38500.39500.40900.41900.83600.1179300 | Door Frame Fixing | 10.12d | 2027-05-24 | 2027-06-02 | 1677, 1692 |  | GC1 | 8836214 |
| 1694 | 37200.37400.37500.38500.39500.40900.41900.83600.1179400 | Internal Plumbing Works | 11.25d | 2027-05-26 | 2027-06-05 | 1678, 1692 |  | GC1 | 8836224 |
| 1695 | 37200.37400.37500.38500.39500.40900.41900.83600.1179500 | Waterproofing | 13.5d | 2027-06-24 | 2027-07-06 | 1679, 1694 |  | GC1 | 8836234 |
| 1696 | 37200.37400.37500.38500.39500.40900.41900.83600.1179600 | Internal Plaster | 10.12d | 2027-07-06 | 2027-07-15 | 1680, 1693, 1694, 1695 |  | GC1 | 8836244 |
| 1697 | 37200.37400.37500.38500.39500.40900.41900.83600.1179700 | IPS flooring work | 10.12d | 2027-07-15 | 2027-07-24 | 1681, 1693, 1695, 1696 |  | GC1 | 8836254 |
| 1698 | 37200.37400.37500.38500.39500.40900.41900.83600.1179800 | Toilet dado work | 9d | 2028-01-01 | 2028-01-09 | 1682, 1695, 1696 |  | GC1 | 8836264 |
| 1699 | 37200.37400.37500.38500.39500.40900.41900.83600.1179900 | Toilet flooring work | 7.88d | 2028-01-09 | 2028-01-16 | 1683, 1698 |  | GC1 | 8836274 |
| 1700 | 37200.37400.37500.38500.39500.40900.41900.83600.1180000 | Living dinning flooring | 13.5d | 2028-04-25 | 2028-05-07 | 1684, 1693, 1699 |  | GC1 | 8836284 |
| 1701 | 37200.37400.37500.38500.39500.40900.41900.83600.1180100 | Aluminium door-window fixing | 16.88d | 2028-07-02 | 2028-07-17 | 1685, 1697, 1700 |  | GC1 | 8836294 |
| 1702 | 37200.37400.37500.38500.39500.40900.41900.83600.1180200 | Putty primer coat | 6.75d | 2028-05-07 | 2028-05-13 | 1686, 1700 |  | GC1 | 8836304 |
| 1703 | 37200.37400.37500.38500.39500.40900.41900.83600.1180300 | Door shutter fixing | 9d | 2028-05-07 | 2028-05-15 | 1687, 1700 |  | GC1 | 8836314 |
| 1704 | 37200.37400.37500.38500.39500.40900.41900.83600.1180400 | Electrical wiring work | 13.5d | 2028-06-27 | 2028-07-09 | 1688, 1703 |  | GC1 | 8836324 |
| 1705 | 37200.37400.37500.38500.39500.40900.41900.83600.1180500 | Painting 1st coat | 13.5d | 2028-07-12 | 2028-07-24 | 1689, 1702, 1703, 1704 |  | GC1 | 8836334 |
| 1706 | 37200.37400.37500.38500.39500.40900.41900.83600.1180600 | False ceiling | 11.25d | 2028-07-24 | 2028-08-03 | 1690, 1705 |  | GC1 | 8836344 |
| 1707 | 37200.37400.37500.38500.39500.40900.41900.83700 | **34th Floor** | 455.88d | 2027-05-22 | 2028-08-15 |  | start no earlier than 2027-05-22 | GC1 | 8806874 |
| 1708 | 37200.37400.37500.38500.39500.40900.41900.83700.1180700 | Block Work | 9d | 2027-05-22 | 2027-05-30 | 1175, 1692 |  | GC1 | 8836354 |
| 1709 | 37200.37400.37500.38500.39500.40900.41900.83700.1180800 | Door Frame Fixing | 10.12d | 2027-06-02 | 2027-06-11 | 1693, 1708 |  | GC1 | 8836364 |
| 1710 | 37200.37400.37500.38500.39500.40900.41900.83700.1180900 | Internal Plumbing Works | 11.25d | 2027-06-05 | 2027-06-15 | 1694, 1708 |  | GC1 | 8836374 |
| 1711 | 37200.37400.37500.38500.39500.40900.41900.83700.1181000 | Waterproofing | 13.5d | 2027-07-06 | 2027-07-18 | 1695, 1710 |  | GC1 | 8836384 |
| 1712 | 37200.37400.37500.38500.39500.40900.41900.83700.1181100 | Internal Plaster | 10.12d | 2027-07-18 | 2027-07-27 | 1696, 1709, 1710, 1711 |  | GC1 | 8836394 |
| 1713 | 37200.37400.37500.38500.39500.40900.41900.83700.1181200 | IPS flooring work | 10.12d | 2027-07-27 | 2027-08-05 | 1697, 1709, 1711, 1712 |  | GC1 | 8836404 |
| 1714 | 37200.37400.37500.38500.39500.40900.41900.83700.1181300 | Toilet dado work | 9d | 2028-01-09 | 2028-01-17 | 1698, 1711, 1712 |  | GC1 | 8836414 |
| 1715 | 37200.37400.37500.38500.39500.40900.41900.83700.1181400 | Toilet flooring work | 7.88d | 2028-01-17 | 2028-01-24 | 1699, 1714 |  | GC1 | 8836424 |
| 1716 | 37200.37400.37500.38500.39500.40900.41900.83700.1181500 | Living dinning flooring | 13.5d | 2028-05-07 | 2028-05-19 | 1700, 1709, 1715 |  | GC1 | 8836434 |
| 1717 | 37200.37400.37500.38500.39500.40900.41900.83700.1181600 | Aluminium door-window fixing | 16.88d | 2028-07-17 | 2028-08-01 | 1701, 1713, 1716 |  | GC1 | 8836444 |
| 1718 | 37200.37400.37500.38500.39500.40900.41900.83700.1181700 | Putty primer coat | 6.75d | 2028-05-19 | 2028-05-25 | 1702, 1716 |  | GC1 | 8836454 |
| 1719 | 37200.37400.37500.38500.39500.40900.41900.83700.1181800 | Door shutter fixing | 9d | 2028-05-19 | 2028-05-27 | 1703, 1716 |  | GC1 | 8836464 |
| 1720 | 37200.37400.37500.38500.39500.40900.41900.83700.1181900 | Electrical wiring work | 13.5d | 2028-07-09 | 2028-07-21 | 1704, 1719 |  | GC1 | 8836474 |
| 1721 | 37200.37400.37500.38500.39500.40900.41900.83700.1182000 | Painting 1st coat | 13.5d | 2028-07-24 | 2028-08-05 | 1705, 1718, 1719, 1720 |  | GC1 | 8836484 |
| 1722 | 37200.37400.37500.38500.39500.40900.41900.83700.1182100 | False ceiling | 11.25d | 2028-08-05 | 2028-08-15 | 1706, 1721 |  | GC1 | 8836494 |

| ID | WBS | Task | Duration | Start | Finish | Predecessors | Constraint | Calendar | Unique_Task_ID |
| --- | --- | --- | --- | --- | --- | --- | --- | --- | --- |
| 1723 | 37200.37400.37500.38500.39500.40900.41900.83800 | **35th Floor** | 457d | 2027-06-02 | 2028-08-27 |  | start no earlier than 2027-06-02 | GC1 | 8806884 |
| 1724 | 37200.37400.37500.38500.39500.40900.41900.83800.1182200 | Block Work | 9d | 2027-06-02 | 2027-06-10 | 1176, 1708 |  | GC1 | 8836504 |
| 1725 | 37200.37400.37500.38500.39500.40900.41900.83800.1182300 | Door Frame Fixing | 10.12d | 2027-06-11 | 2027-06-20 | 1709, 1724 |  | GC1 | 8836514 |
| 1726 | 37200.37400.37500.38500.39500.40900.41900.83800.1182400 | Internal Plumbing Works | 11.25d | 2027-06-15 | 2027-06-25 | 1710, 1724 |  | GC1 | 8836524 |
| 1727 | 37200.37400.37500.38500.39500.40900.41900.83800.1182500 | Waterproofing | 13.5d | 2027-07-18 | 2027-07-30 | 1711, 1726 |  | GC1 | 8836534 |
| 1728 | 37200.37400.37500.38500.39500.40900.41900.83800.1182600 | Internal Plaster | 10.12d | 2027-08-07 | 2027-08-16 | 1133FF+135d, 1712FS+0.25d, 1725FS+0.25d, 1726FS+0.25d, 1727FS+0.25d |  | GC1 | 8836544 |
| 1729 | 37200.37400.37500.38500.39500.40900.41900.83800.1182700 | IPS flooring work | 10.12d | 2027-08-16 | 2027-08-25 | 1713, 1725, 1727, 1728 |  | GC1 | 8836554 |
| 1730 | 37200.37400.37500.38500.39500.40900.41900.83800.1182800 | Toilet dado work | 9d | 2028-01-17 | 2028-01-25 | 1714, 1727, 1728 |  | GC1 | 8836564 |
| 1731 | 37200.37400.37500.38500.39500.40900.41900.83800.1182900 | Toilet flooring work | 7.88d | 2028-01-25 | 2028-02-01 | 1715, 1730 |  | GC1 | 8836574 |
| 1732 | 37200.37400.37500.38500.39500.40900.41900.83800.1183000 | Living dinning flooring | 13.5d | 2028-05-19 | 2028-05-31 | 1133FF+191.25d, 1716FS+0.25d, 1725FS+0.25d, 1731FS+0.25d |  | GC1 | 8836584 |
| 1733 | 37200.37400.37500.38500.39500.40900.41900.83800.1183100 | Aluminium door-window fixing | 16.88d | 2028-08-01 | 2028-08-16 | 1717, 1729, 1732 |  | GC1 | 8836594 |
| 1734 | 37200.37400.37500.38500.39500.40900.41900.83800.1183200 | Putty primer coat | 6.75d | 2028-05-31 | 2028-06-06 | 1718, 1732 |  | GC1 | 8836604 |
| 1735 | 37200.37400.37500.38500.39500.40900.41900.83800.1183300 | Door shutter fixing | 9d | 2028-05-31 | 2028-06-08 | 1719, 1732 |  | GC1 | 8836614 |
| 1736 | 37200.37400.37500.38500.39500.40900.41900.83800.1183400 | Electrical wiring work | 13.5d | 2028-07-21 | 2028-08-02 | 1720, 1735 |  | GC1 | 8836624 |
| 1737 | 37200.37400.37500.38500.39500.40900.41900.83800.1183500 | Painting 1st coat | 13.5d | 2028-08-05 | 2028-08-17 | 1721, 1734, 1735, 1736 |  | GC1 | 8836634 |
| 1738 | 37200.37400.37500.38500.39500.40900.41900.83800.1183600 | False ceiling | 11.25d | 2028-08-17 | 2028-08-27 | 1722, 1737 |  | GC1 | 8836644 |
| 1739 | 37200.37400.37500.38500.39500.40900.190500 | **Terrace Finishing** | 90d | 2027-04-18 | 2027-07-07 |  | start no earlier than 2027-04-18 | GC1 | 8810724 |
| 1740 | 37200.37400.37500.38500.39500.40900.190500.524300 | Terrace waterproofing | 45d | 2027-04-18 | 2027-05-28 | 1133 |  | GC1 | 8819434 |
| 1741 | 37200.37400.37500.38500.39500.40900.190500.524400 | Terrace finishing | 45d | 2027-05-28 | 2027-07-07 | 1740 |  | GC1 | 8819444 |
| 1742 | 37200.37400.37500.38500.39500.40900.100300 | **Common Area Finishing** | 343.12d | 2027-05-28 | 2028-05-12 |  | start no earlier than 2027-05-28 | GC1 | 8808044 |
| 1743 | 37200.37400.37500.38500.39500.40900.100300.524500 | Fire Door | 67.5d | 2027-05-28 | 2027-07-27 | 1138 |  | GC1 | 8819454 |
| 1744 | 37200.37400.37500.38500.39500.40900.100300.524600 | Tile Cladding & Lift Lobby Granite Wall | 135d | 2027-07-17 | 2027-12-29 | 1749SS+33.75d |  | GC1 | 8819464 |
| 1745 | 37200.37400.37500.38500.39500.40900.100300.524700 | Staircase railing fixing | 168.75d | 2027-10-30 | 2028-05-12 | 1747SS+33.75d, 1746SS+33.75d |  | GC1 | 8819474 |
| 1746 | 37200.37400.37500.38500.39500.40900.100300.524800 | Main staircase flooring | 168.75d | 2027-09-30 | 2028-04-12 | 1747SS+16.88d |  | GC1 | 8819484 |
| 1747 | 37200.37400.37500.38500.39500.40900.100300.524900 | Fire staircase flooring | 168.75d | 2027-09-15 | 2028-03-28 | 1744SS+16.88d, 1751SS+33.75d |  | GC1 | 8819494 |
| 1748 | 37200.37400.37500.38500.39500.40900.100300.525000 | Fire door work | 67.5d | 2027-10-30 | 2028-02-12 | 1746SS+33.75d, 1747SS+33.75d |  | GC1 | 8819504 |
| 1749 | 37200.37400.37500.38500.39500.40900.100300.525100 | Electrical wiring work | 135d | 2027-06-17 | 2027-10-15 | 1743SS+22.5d |  | GC1 | 8819514 |
| 1750 | 37200.37400.37500.38500.39500.40900.100300.525200 | Lobby flooring | 168.75d | 2027-06-21 | 2028-01-02 | 1749SS+4.12d |  | GC1 | 8819524 |
| 1751 | 37200.37400.37500.38500.39500.40900.100300.525300 | Ceiling & wall putty-primer | 123.75d | 2027-08-16 | 2028-01-18 | 1744SS+33.75d |  | GC1 | 8819534 |
| 1752 | 37200.37400.37500.38500.39500.40900.100300.525400 | Ceiling & wall painting | 112.5d | 2027-09-05 | 2028-01-28 | 1751SS+22.5d |  | GC1 | 8819544 |
| 1753 | 37200.37400.37500.38500.39500.40900.100300.525500 | Light fixture supply & installation | 50.62d | 2027-12-19 | 2028-02-02 | 1752SS+67.5d |  | GC1 | 8819554 |

| ID | WBS | Task | Duration | Start | Finish | Predecessors | Constraint | Calendar | Unique_Task_ID |
| --- | --- | --- | --- | --- | --- | --- | --- | --- | --- |
| 1754 | 37200.37400.37500.38500.39500.40900.46900 | **Balcony Glass Railing** | 78.75d | 2028-01-15 | 2028-03-25 |  | start no earlier than 2028-01-15 | GC1 | 8806164 |
| 1755 | 37200.37400.37500.38500.39500.40900.46900.525600 | 1st Floor | 2.25d | 2028-01-15 | 2028-01-17 | 1823 |  | GC1 | 8819564 |
| 1756 | 37200.37400.37500.38500.39500.40900.46900.525700 | 2nd Floor | 2.25d | 2028-01-17 | 2028-01-19 | 1755 |  | GC1 | 8819574 |
| 1757 | 37200.37400.37500.38500.39500.40900.46900.525800 | 3rd Floor | 2.25d | 2028-01-19 | 2028-01-21 | 1756 |  | GC1 | 8819584 |
| 1758 | 37200.37400.37500.38500.39500.40900.46900.525900 | 4th Floor | 2.25d | 2028-01-21 | 2028-01-23 | 1757 |  | GC1 | 8819594 |
| 1759 | 37200.37400.37500.38500.39500.40900.46900.526000 | 5th Floor | 2.25d | 2028-01-23 | 2028-01-25 | 1758 |  | GC1 | 8819604 |
| 1760 | 37200.37400.37500.38500.39500.40900.46900.526100 | 6th Floor | 2.25d | 2028-01-25 | 2028-01-27 | 1759 |  | GC1 | 8819614 |
| 1761 | 37200.37400.37500.38500.39500.40900.46900.526200 | 7th Floor | 2.25d | 2028-01-27 | 2028-01-29 | 1760 |  | GC1 | 8819624 |
| 1762 | 37200.37400.37500.38500.39500.40900.46900.526300 | 8th Floor | 2.25d | 2028-01-29 | 2028-01-31 | 1761 |  | GC1 | 8819634 |
| 1763 | 37200.37400.37500.38500.39500.40900.46900.526400 | 9th Floor | 2.25d | 2028-01-31 | 2028-02-02 | 1762 |  | GC1 | 8819644 |
| 1764 | 37200.37400.37500.38500.39500.40900.46900.526500 | 10th Floor | 2.25d | 2028-02-02 | 2028-02-04 | 1763 |  | GC1 | 8819654 |
| 1765 | 37200.37400.37500.38500.39500.40900.46900.526600 | 11th Floor | 2.25d | 2028-02-04 | 2028-02-06 | 1764 |  | GC1 | 8819664 |
| 1766 | 37200.37400.37500.38500.39500.40900.46900.526700 | 12th Floor | 2.25d | 2028-02-06 | 2028-02-08 | 1765 |  | GC1 | 8819674 |
| 1767 | 37200.37400.37500.38500.39500.40900.46900.526800 | 13th Floor | 2.25d | 2028-02-08 | 2028-02-10 | 1766 |  | GC1 | 8819684 |
| 1768 | 37200.37400.37500.38500.39500.40900.46900.526900 | 14th Floor | 2.25d | 2028-02-10 | 2028-02-12 | 1767 |  | GC1 | 8819694 |
| 1769 | 37200.37400.37500.38500.39500.40900.46900.527000 | 15th Floor | 2.25d | 2028-02-12 | 2028-02-14 | 1768 |  | GC1 | 8819704 |
| 1770 | 37200.37400.37500.38500.39500.40900.46900.527100 | 16th Floor | 2.25d | 2028-02-14 | 2028-02-16 | 1769 |  | GC1 | 8819714 |
| 1771 | 37200.37400.37500.38500.39500.40900.46900.527200 | 17th Floor | 2.25d | 2028-02-16 | 2028-02-18 | 1770 |  | GC1 | 8819724 |
| 1772 | 37200.37400.37500.38500.39500.40900.46900.527300 | 18th Floor | 2.25d | 2028-02-18 | 2028-02-20 | 1771 |  | GC1 | 8819734 |
| 1773 | 37200.37400.37500.38500.39500.40900.46900.527400 | 19th Floor | 2.25d | 2028-02-20 | 2028-02-22 | 1772 |  | GC1 | 8819744 |
| 1774 | 37200.37400.37500.38500.39500.40900.46900.527500 | 20th Floor | 2.25d | 2028-02-22 | 2028-02-24 | 1773 |  | GC1 | 8819754 |
| 1775 | 37200.37400.37500.38500.39500.40900.46900.527600 | 21st Floor | 2.25d | 2028-02-24 | 2028-02-26 | 1774 |  | GC1 | 8819764 |
| 1776 | 37200.37400.37500.38500.39500.40900.46900.527700 | 22nd Floor | 2.25d | 2028-02-26 | 2028-02-28 | 1775 |  | GC1 | 8819774 |
| 1777 | 37200.37400.37500.38500.39500.40900.46900.527800 | 23rd Floor | 2.25d | 2028-02-28 | 2028-03-01 | 1776 |  | GC1 | 8819784 |
| 1778 | 37200.37400.37500.38500.39500.40900.46900.527900 | 24th Floor | 2.25d | 2028-03-01 | 2028-03-03 | 1777 |  | GC1 | 8819794 |
| 1779 | 37200.37400.37500.38500.39500.40900.46900.528000 | 25th Floor | 2.25d | 2028-03-03 | 2028-03-05 | 1778 |  | GC1 | 8819804 |
| 1780 | 37200.37400.37500.38500.39500.40900.46900.528100 | 26th Floor | 2.25d | 2028-03-05 | 2028-03-07 | 1779 |  | GC1 | 8819814 |
| 1781 | 37200.37400.37500.38500.39500.40900.46900.528200 | 27th Floor | 2.25d | 2028-03-07 | 2028-03-09 | 1780 |  | GC1 | 8819824 |
| 1782 | 37200.37400.37500.38500.39500.40900.46900.528300 | 28th Floor | 2.25d | 2028-03-09 | 2028-03-11 | 1781 |  | GC1 | 8819834 |
| 1783 | 37200.37400.37500.38500.39500.40900.46900.528400 | 29th Floor | 2.25d | 2028-03-11 | 2028-03-13 | 1782 |  | GC1 | 8819844 |
| 1784 | 37200.37400.37500.38500.39500.40900.46900.528500 | 30th Floor | 2.25d | 2028-03-13 | 2028-03-15 | 1783 |  | GC1 | 8819854 |
| 1785 | 37200.37400.37500.38500.39500.40900.46900.528600 | 31st Floor | 2.25d | 2028-03-15 | 2028-03-17 | 1784 |  | GC1 | 8819864 |
| 1786 | 37200.37400.37500.38500.39500.40900.46900.528700 | 32nd Floor | 2.25d | 2028-03-17 | 2028-03-19 | 1785 |  | GC1 | 8819874 |
| 1787 | 37200.37400.37500.38500.39500.40900.46900.528800 | 33rd Floor | 2.25d | 2028-03-19 | 2028-03-21 | 1786 |  | GC1 | 8819884 |
| 1788 | 37200.37400.37500.38500.39500.40900.46900.528900 | 34th Floor | 2.25d | 2028-03-21 | 2028-03-23 | 1787 |  | GC1 | 8819894 |
| 1789 | 37200.37400.37500.38500.39500.40900.46900.529000 | 35th Floor | 2.25d | 2028-03-23 | 2028-03-25 | 1788 |  | GC1 | 8819904 |

| ID | WBS | Task | Duration | Start | Finish | Predecessors | Constraint | Calendar | Unique_Task_ID |
| --- | --- | --- | --- | --- | --- | --- | --- | --- | --- |
| 1790 | 37200.37400.37500.38500.95800 | **MEP work** | 437.88d | 2027-05-28 | 2028-08-05 |  | start no earlier than 2027-05-28 | GC1 | 8807974 |
| 1791 | 37200.37400.37500.38500.95800.97000 | **Electrical work** | 270d | 2027-05-28 | 2028-03-08 |  | start no earlier than 2027-05-28 | GC1 | 8808004 |
| 1792 | 37200.37400.37500.38500.95800.97000.344700 | Cable Tray | 101.25d | 2027-05-28 | 2027-08-26 | 1138 |  | GC1 | 8813124 |
| 1793 | 37200.37400.37500.38500.95800.97000.344800 | Cable, main & sub main | 90d | 2027-07-12 | 2027-09-30 | 1792SS+50.62d |  | GC1 | 8813134 |
| 1794 | 37200.37400.37500.38500.95800.97000.344900 | LT panel & DB | 135d | 2027-08-26 | 2028-02-07 | 1792 |  | GC1 | 8813144 |
| 1795 | 37200.37400.37500.38500.95800.97000.345000 | Rising main | 101.25d | 2027-10-25 | 2028-03-08 | 1792FS+67.5d |  | GC1 | 8813154 |
| 1796 | 37200.37400.37500.38500.95800.97000.345100 | EARTHING Works | 67.5d | 2027-09-10 | 2027-12-24 | 1792FS+16.88d |  | GC1 | 8813164 |
| 1797 | 37200.37400.37500.38500.95800.97000.345200 | Advance lightening protection | 67.5d | 2027-07-07 | 2027-09-05 | 1741 |  | GC1 | 8813174 |
| 1798 | 37200.37400.37500.38500.95800.97000.345300 | Inverter | 39.38d | 2027-12-24 | 2028-01-28 | 1796 |  | GC1 | 8813184 |
| 1799 | 37200.37400.37500.38500.95800.97000.345400 | Energy meter | 67.5d | 2027-09-30 | 2028-01-13 | 1793 |  | GC1 | 8813194 |
| 1800 | 37200.37400.37500.38500.95800.97000.345500 | Exhast fan | 67.5d | 2027-10-05 | 2028-01-18 | 1799FF+5.62d |  | GC1 | 8813204 |
| 1801 | 37200.37400.37500.38500.95800.97000.345600 | FTTH | 67.5d | 2027-10-30 | 2028-02-12 | 1796FS-11.25d |  | GC1 | 8813214 |
| 1802 | 37200.37400.37500.38500.95800.97000.345700 | Security System - FA & PA | 61.88d | 2027-12-19 | 2028-02-12 | 1801FF |  | GC1 | 8813224 |
| 1803 | 37200.37400.37500.38500.95800.97000.345800 | Solar water heater | 67.5d | 2027-07-07 | 2027-09-05 | 1741 |  | GC1 | 8813234 |
| 1804 | 37200.37400.37500.38500.95800.129100 | **Plumbing wrok** | 380.5d | 2027-05-28 | 2028-06-15 |  | start no earlier than 2027-05-28 | GC1 | 8808364 |
| 1805 | 37200.37400.37500.38500.95800.129100.345900 | Terrace looping | 50.62d | 2027-05-28 | 2027-07-12 | 1740 |  | GC1 | 8813244 |
| 1806 | 37200.37400.37500.38500.95800.129100.346000 | Shaft Plumbing | 135d | 2027-07-12 | 2027-12-24 | 1805 |  | GC1 | 8813254 |
| 1807 | 37200.37400.37500.38500.95800.129100.346100 | CP sanitary fixture supply | 84.38d | 2028-04-01 | 2028-06-15 | 1728, 1731FS+67.5d |  | GC1 | 8813264 |
| 1808 | 37200.37400.37500.38500.95800.129100.346200 | Cold & flushing water supply | 101.25d | 2027-10-15 | 2028-02-27 | 1744SS+101.25d |  | GC1 | 8813274 |
| 1809 | 37200.37400.37500.38500.95800.129100.346300 | Misc work | 33.75d | 2028-02-17 | 2028-03-18 | 1808FS-11.25d |  | GC1 | 8813284 |
| 1810 | 37200.37400.37500.38500.95800.137100 | **Fire fighting work** | 270d | 2027-05-28 | 2028-03-08 |  | start no earlier than 2027-05-28 | GC1 | 8808494 |
| 1811 | 37200.37400.37500.38500.95800.137100.346400 | Fire hydrant work | 67.5d | 2027-07-27 | 2027-09-25 | 1744SS+11.25d |  | GC1 | 8813294 |
| 1812 | 37200.37400.37500.38500.95800.137100.346500 | Sprinkler & piping work | 101.25d | 2027-10-25 | 2028-03-08 | 1811FS+33.75d |  | GC1 | 8813304 |
| 1813 | 37200.37400.37500.38500.95800.137100.346600 | Shaft Downtake works | 101.25d | 2027-05-28 | 2027-08-26 | 1740 |  | GC1 | 8813314 |
| 1814 | 37200.37400.37500.38500.95800.137100.346700 | Connection to pump room | 33.75d | 2027-08-26 | 2027-09-25 | 1813 |  | GC1 | 8813324 |

| ID | WBS | Task | Duration | Start | Finish | Predecessors | Complete | Constraint | Calendar | Unique_Task_ID |
| --- | --- | --- | --- | --- | --- | --- | --- | --- | --- | --- |
| 1815 | 37200.37400.37500.38500.95800.186800 | **Lift work** | 191.25d | 2027-05-28 | 2027-12-29 |  |  | start no earlier than 2027-05-28 | GC1 | 8810694 |
| 1816 | 37200.37400.37500.38500.95800.186800.346800 | Lift Shaft Handover | 45d | 2027-05-28 | 2027-07-07 | 1138 |  |  | GC1 | 8813334 |
| 1817 | 37200.37400.37500.38500.95800.186800.346900 | Lift installation work | 50.62d | 2027-07-07 | 2027-08-21 | 1816 |  |  | GC1 | 8813344 |
| 1818 | 37200.37400.37500.38500.95800.186800.347000 | Lift testing and commissioning | 95.62d | 2027-08-21 | 2027-12-29 | 1817 |  |  | GC1 | 8813354 |
| 1819 | 37200.37400.37500.38500.95800.193800 | **AC work** | 112.5d | 2028-04-27 | 2028-08-05 |  |  | start no earlier than 2028-04-27 | GC1 | 8810864 |
| 1820 | 37200.37400.37500.38500.95800.193800.347100 | Split AC | 112.5d | 2028-04-27 | 2028-08-05 | 1836FS-33.75d |  |  | GC1 | 8813364 |
| 1821 | 37200.37400.37500.38500.131900 | **Tower Completion** | 1618.76d | 2023-12-06 | 2028-03-23 |  | 69% | start no earlier than 2023-12-06 | GC1 | 8808454 |
| 1822 | 37200.37400.37500.38500.131900.271800 | SURFACE PREPARATION | 90d | 2027-06-04 | 2027-08-23 | 1176FS+2.25d |  |  | GC1 | 8811314 |
| 1823 | 37200.37400.37500.38500.131900.271900 | External Painting | 112.5d | 2027-08-23 | 2028-01-15 | 1822 |  |  | GC1 | 8811324 |
| 1824 | 37200.37400.37500.38500.131900.232300 | Waterproofing | 871.88d | 2023-12-06 | 2028-03-23 | 1823FS-1542.26d | 91% |  | GC1 | 8811334 |
| 1825 | 37200.37400.37500.38500.131900.272000 | Misc. work | 67.5d | 2028-01-15 | 2028-03-15 | 1823 |  |  | GC1 | 8811344 |
| 1826 | 37200.37400.37500.38500.192600 | **Basement lobby** | 67.5d | 2028-01-02 | 2028-03-02 |  |  | start no earlier than 2028-01-02 | GC1 | 8810884 |
| 1827 | 37200.37400.37500.38500.192600.272100 | Basement lobby | 67.5d | 2028-01-02 | 2028-03-02 | 1750 |  |  | GC1 | 8811354 |
| 1828 | 37200.37400.37500.38500.106600 | **Post OC activities** | 244.12d | 2028-04-27 | 2028-11-30 |  |  | start no earlier than 2028-04-27 | GC1 | 8808244 |
| 1829 | 37200.37400.37500.38500.106600.272200 | Balcony Flooring & Kitchen Counter | 202.5d | 2028-04-27 | 2028-10-24 | 1836FS-33.75d |  |  | GC1 | 8811364 |
| 1830 | 37200.37400.37500.38500.106600.272300 | Final Coat of Paint | 135d | 2028-06-15 | 2028-10-13 | 1836FS-33.75d, 1807 |  |  | GC1 | 8811374 |
| 1831 | 37200.37400.37500.38500.106600.272400 | Wooden Flooring | 202.5d | 2028-04-27 | 2028-10-24 | 1836FS-33.75d |  |  | GC1 | 8811384 |
| 1832 | 37200.37400.37500.38500.106600.272500 | Misc. Fixtures And Fittings | 135d | 2028-08-02 | 2028-11-30 | 1736 |  |  | GC1 | 8811394 |
| 1833 | 37200.37400.37500.38500.106600.272600 | Modular Kitchen | 202.5d | 2028-04-27 | 2028-10-24 | 1829SS |  |  | GC1 | 8811404 |
| 1834 | 37200.37400.37500.38500.106600.272700 | Final Coat Paint | 101.25d | 2028-08-27 | 2028-11-25 | 1836FS-16.88d, 1753, 1738 |  |  | GC1 | 8811414 |
| 1835 | 37200.37400.37500.38500.257400 | OC Application/Readiness | 1.12d | 2028-03-26 | 2028-03-27 | 1789FS+0.25d, 1794FS+0.25d, 1795FS+0.25d, 1797FS+0.25d, 1798FS+0.25d, 1799FS+0.25d, 1800FS+0.25d, 1802FS+0.25d, 1803FS+0.25d, 1806FS+0.25d, 1809FS+0.25d, 1812FS+0.25d, 1814FS+0.25d, 1818FS+0.25d, 1824FS+0.25d, 1825FS+0.25d, 1827FS+0.25d |  |  | GC1 | 8810984 |
| 1836 | 37200.37400.37500.38500.257500 | OC Receipt | 1.12d | 2028-05-26 | 2028-05-27 | 1835FS+67.5d |  |  | GC1 | 8810994 |
| 1837 | 37200.37400.37500.38500.257600 | Offer To Possession | 33.75d | 2028-11-30 | 2028-12-30 | 1829, 1830, 1831, 1832, 1833, 1834, 1820 |  |  | GC1 | 8811004 |
| 1838 | 37200.37400.37500.38600 | **Tower 3** | 2207.5d | 2023-07-26 | 2029-04-18 |  | 15% | start no earlier than 2023-07-26 | GC1 | 8805854 |
| 1839 | 37200.37400.37500.38600.98800 | **Substructure** | 766.12d | 2024-05-14 | 2026-05-05 |  | 80% | start no earlier than 2024-05-14 | GC1 | 8808114 |
| 1840 | 37200.37400.37500.38600.98800.108800 | **Soil Bed Preparation** | 687.38d | 2024-05-14 | 2026-02-24 |  | 81% | start no earlier than 2024-05-14 | GC1 | 8808324 |
| 1841 | 37200.37400.37500.38600.98800.108800.219300 | Test Piling | 106.69d | 2024-05-14 | 2024-08-16 | 7SS | 100% | start no earlier than 2024-05-14 | GC1 | 8813374 |
| 1842 | 37200.37400.37500.38600.98800.108800.219200 | Excavation | 33.56d | 2024-07-21 | 2024-08-19 | 1841SS+68d | 100% | start no earlier than 2024-07-21 | GC1 | 8813384 |
| 1843 | 37200.37400.37500.38600.98800.108800.219100 | Main Piling Work | 174.81d | 2024-08-22 | 2025-03-02 | 1841FS+5d | 100% | start no earlier than 2024-08-22 | GC1 | 8813394 |
| 1844 | 37200.37400.37500.38600.98800.108800.347200 | Anti-termite | 5.62d | 2025-12-27 | 2025-12-31 | 1843FF+2d |  |  | GC1 | 8813404 |
| 1845 | 37200.37400.37500.38600.98800.108800.218900 | PCC | 13.31d | 2025-03-02 | 2025-03-23 | 1842FS+0.25d | 100% | start no earlier than 2025-03-02 | GC1 | 8813414 |
| 1846 | 37200.37400.37500.38600.98800.108800.347300 | Backfilling | 67.5d | 2025-12-27 | 2026-02-24 | 1859 |  |  | GC1 | 8813424 |

| ID | WBS | Task | Duration | Start | Finish | Predecessors | Complete | Constraint | Calendar | Unique_Task_ID |
| --- | --- | --- | --- | --- | --- | --- | --- | --- | --- | --- |
| 1847 | 37200.37400.37500.38600.98800.102500 | **RCC Structure** | 284.62d | 2025-01-17 | 2025-09-26 |  | 100% | start no earlier than 2025-01-17 | GC1 | 8808194 |
| 1848 | 37200.37400.37500.38600.98800.102500.158600 | **Raft Foundation** | 83.25d | 2025-01-17 | 2025-03-31 |  | 100% | start no earlier than 2025-01-17 | GC1 | 8810544 |
| 1849 | 37200.37400.37500.38600.98800.102500.158600.239800 | Reinforcement | 83.25d | 2025-01-17 | 2025-03-31 | 1845FS+2.25d | 100% | start no earlier than 2025-01-17 | GC1 | 8819914 |
| 1850 | 37200.37400.37500.38600.98800.102500.158600.239900 | Formwork | 74.25d | 2025-01-25 | 2025-03-31 | 1849FF+7.88d | 100% | start no earlier than 2025-01-25 | GC1 | 8819924 |
| 1851 | 37200.37400.37500.38600.98800.102500.158600.240000 | Concreting | 68.62d | 2025-01-30 | 2025-03-31 | 1850 | 100% | start no earlier than 2025-01-30 | GC1 | 8819934 |
| 1852 | 37200.37400.37500.38600.98800.102500.158500 | **Basement 1 Slab** | 128.25d | 2025-03-27 | 2025-07-18 |  | 100% | start no earlier than 2025-03-27 | GC1 | 8810554 |
| 1853 | 37200.37400.37500.38600.98800.102500.158500.240100 | Reinforcement | 106.88d | 2025-03-27 | 2025-07-18 | 1851 | 100% | start no earlier than 2025-03-27 | GC1 | 8819944 |
| 1854 | 37200.37400.37500.38600.98800.102500.158500.240200 | Formwork | 22.5d | 2025-03-28 | 2025-04-16 | 1853SS+1.12d | 100% | start no earlier than 2025-03-28 | GC1 | 8819954 |
| 1855 | 37200.37400.37500.38600.98800.102500.158500.240300 | Concreting | 4.5d | 2025-03-31 | 2025-04-19 | 1854FS-19.12d | 100% | start no earlier than 2025-03-31 | GC1 | 8819964 |
| 1856 | 37200.37400.37500.38600.98800.102500.158400 | **Basement 2 Slab/GF** | 136.12d | 2025-04-20 | 2025-08-18 |  | 100% | start no earlier than 2025-04-20 | GC1 | 8810564 |
| 1857 | 37200.37400.37500.38600.98800.102500.158400.240400 | Reinforcement | 133.88d | 2025-04-20 | 2025-08-16 | 1855 | 100% | start no earlier than 2025-04-20 | GC1 | 8819974 |
| 1858 | 37200.37400.37500.38600.98800.102500.158400.240500 | Formwork | 131.62d | 2025-04-21 | 2025-08-15 | 1857SS+1.12d | 100% | start no earlier than 2025-04-21 | GC1 | 8819984 |
| 1859 | 37200.37400.37500.38600.98800.102500.158400.240600 | Concreting | 112.5d | 2025-05-11 | 2025-08-18 | 1858 | 100% | start no earlier than 2025-05-11 | GC1 | 8819994 |
| 1860 | 37200.37400.37500.38600.98800.102500.158300 | **Podium /Ground Floor Slab** | 51.75d | 2025-08-12 | 2025-09-26 |  | 100% | start no earlier than 2025-08-12 | GC1 | 8810574 |
| 1861 | 37200.37400.37500.38600.98800.102500.158300.240700 | Reinforcement | 49.5d | 2025-08-12 | 2025-09-24 | 1859 | 100% | start no earlier than 2025-08-12 | GC1 | 8820004 |
| 1862 | 37200.37400.37500.38600.98800.102500.158300.240800 | Formwork | 49.5d | 2025-08-13 | 2025-09-25 | 1861SS+1.12d | 100% | start no earlier than 2025-08-13 | GC1 | 8820014 |
| 1863 | 37200.37400.37500.38600.98800.102500.158300.240900 | Concreting | 45d | 2025-08-18 | 2025-09-26 | 1862 | 100% | start no earlier than 2025-08-18 | GC1 | 8820024 |
| 1864 | 37200.37400.37500.38600.98800.135700 | **Substructure Finishing** | 146.25d | 2025-12-27 | 2026-05-05 |  |  | start no earlier than 2025-12-27 | GC1 | 8808514 |
| 1865 | 37200.37400.37500.38600.98800.135700.347400 | Masonary work | 50.62d | 2025-12-27 | 2026-02-09 | 1863FS+33.75d |  |  | GC1 | 8813434 |
| 1866 | 37200.37400.37500.38600.98800.135700.347500 | Plaster | 45d | 2026-02-10 | 2026-03-21 | 1865 |  |  | GC1 | 8813444 |
| 1867 | 37200.37400.37500.38600.98800.135700.347600 | Structural steel | 67.5d | 2026-01-10 | 2026-03-10 | 1863FS+67.5d |  |  | GC1 | 8813454 |
| 1868 | 37200.37400.37500.38600.98800.135700.347700 | White Wash | 50.62d | 2026-03-22 | 2026-05-05 | 1866 |  |  | GC1 | 8813464 |
| 1869 | 37200.37400.37500.38600.39600 | **Superstructure** | 1315.38d | 2025-09-26 | 2029-04-18 |  | 1% | start no earlier than 2025-09-26 | GC1 | 8805904 |
| 1870 | 37200.37400.37500.38600.39600.44000 | **RCC structure** | 574.88d | 2025-09-26 | 2027-05-15 |  | 10% | start no earlier than 2025-09-26 | GC1 | 8806054 |
| 1871 | 37200.37400.37500.38600.39600.44000.123800 | **1st floor slab** | 57.38d | 2025-09-26 | 2025-11-30 |  | 100% | start no earlier than 2025-09-26 | GC1 | 8809674 |
| 1872 | 37200.37400.37500.38600.39600.44000.123800.241000 | Reinforcement | 27d | 2025-09-26 | 2025-11-28 | 1863 | 100% | start no earlier than 2025-09-26 | GC1 | 8820034 |
| 1873 | 37200.37400.37500.38600.39600.44000.123800.241100 | Wall conduiting | 7.88d | 2025-10-08 | 2025-11-29 | 1872SS+5.62d | 100% | start no earlier than 2025-10-08 | GC1 | 8820044 |
| 1874 | 37200.37400.37500.38600.39600.44000.123800.241200 | Formwork | 24.75d | 2025-10-03 | 2025-11-29 | 1872SS+5.62d | 100% | start no earlier than 2025-10-03 | GC1 | 8820054 |
| 1875 | 37200.37400.37500.38600.39600.44000.123800.241300 | Concreting | 13.5d | 2025-10-08 | 2025-11-30 | 1874FS-38.36d | 100% | start no earlier than 2025-10-08 | GC1 | 8820064 |

| ID | WBS | Task | Duration | Start | Finish | Predecessors | Complete | Constraint | Calendar | Unique_Task_ID |
| --- | --- | --- | --- | --- | --- | --- | --- | --- | --- | --- |
| 1876 | 37200.37400.37500.38600.39600.44000.158200 | **2nd floor slab** | 56.25d | 2025-10-29 | 2026-01-27 |  | 40% | start no earlier than 2025-10-29 | GC1 | 8809664 |
| 1877 | 37200.37400.37500.38600.39600.44000.158200.241400 | Reinforcement | 33.75d | 2025-10-29 | 2026-01-24 | 1875FS-22.39d | 40% | start no earlier than 2025-10-29 | GC1 | 8820074 |
| 1878 | 37200.37400.37500.38600.39600.44000.158200.529100 | Wall conduiting | 3.38d | 2025-12-28 | 2025-12-31 | 1873, 1877SS+3.38d |  |  | GC1 | 8820084 |
| 1879 | 37200.37400.37500.38600.39600.44000.158200.241500 | Formwork | 51.75d | 2025-10-31 | 2026-01-25 | 1877SS+3.38d | 45% | start no earlier than 2025-10-31 | GC1 | 8820094 |
| 1880 | 37200.37400.37500.38600.39600.44000.158200.529200 | Concreting | 2.25d | 2026-01-26 | 2026-01-27 | 1879 |  |  | GC1 | 8820104 |
| 1881 | 37200.37400.37500.38600.39600.44000.158100 | **3rd floor slab** | 20.25d | 2026-01-28 | 2026-02-14 |  |  | start no earlier than 2026-01-28 | GC1 | 8809654 |
| 1882 | 37200.37400.37500.38600.39600.44000.158100.529300 | Reinforcement | 13.5d | 2026-01-28 | 2026-02-08 | 1880 |  |  | GC1 | 8820114 |
| 1883 | 37200.37400.37500.38600.39600.44000.158100.529400 | Wall conduiting | 2.25d | 2026-01-31 | 2026-02-01 | 1878, 1882SS+3.38d |  |  | GC1 | 8820124 |
| 1884 | 37200.37400.37500.38600.39600.44000.158100.529500 | Formwork | 13.5d | 2026-02-02 | 2026-02-13 | 1882SS+5.62d |  |  | GC1 | 8820134 |
| 1885 | 37200.37400.37500.38600.39600.44000.158100.529600 | Concreting | 1.12d | 2026-02-14 | 2026-02-14 | 1884 |  |  | GC1 | 8820144 |
| 1886 | 37200.37400.37500.38600.39600.44000.158000 | **4th floor slab** | 16.88d | 2026-02-15 | 2026-03-01 |  |  | start no earlier than 2026-02-15 | GC1 | 8809644 |
| 1887 | 37200.37400.37500.38600.39600.44000.158000.529700 | Reinforcement | 12.38d | 2026-02-15 | 2026-02-25 | 1885 |  |  | GC1 | 8820154 |
| 1888 | 37200.37400.37500.38600.39600.44000.158000.529800 | Wall conduiting | 2.25d | 2026-02-16 | 2026-02-17 | 1883, 1887SS+1.12d |  |  | GC1 | 8820164 |
| 1889 | 37200.37400.37500.38600.39600.44000.158000.529900 | Formwork | 12.38d | 2026-02-18 | 2026-02-28 | 1887SS+3.38d |  |  | GC1 | 8820174 |
| 1890 | 37200.37400.37500.38600.39600.44000.158000.530000 | Concreting | 1.12d | 2026-03-01 | 2026-03-01 | 1889 |  |  | GC1 | 8820184 |
| 1891 | 37200.37400.37500.38600.39600.44000.157900 | **5th floor slab** | 13.5d | 2026-03-02 | 2026-03-13 |  |  | start no earlier than 2026-03-02 | GC1 | 8809634 |
| 1892 | 37200.37400.37500.38600.39600.44000.157900.530100 | Reinforcement | 10.12d | 2026-03-02 | 2026-03-10 | 1890 |  |  | GC1 | 8820194 |
| 1893 | 37200.37400.37500.38600.39600.44000.157900.530200 | Wall conduiting | 2.25d | 2026-03-03 | 2026-03-04 | 1888, 1892SS+1.12d |  |  | GC1 | 8820204 |
| 1894 | 37200.37400.37500.38600.39600.44000.157900.530300 | Formwork | 10.12d | 2026-03-04 | 2026-03-12 | 1892SS+2.25d |  |  | GC1 | 8820214 |
| 1895 | 37200.37400.37500.38600.39600.44000.157900.530400 | Concreting | 1.12d | 2026-03-13 | 2026-03-13 | 1894 |  |  | GC1 | 8820224 |
| 1896 | 37200.37400.37500.38600.39600.44000.157800 | **6th floor slab** | 11.25d | 2026-03-14 | 2026-03-23 |  |  | start no earlier than 2026-03-14 | GC1 | 8809624 |
| 1897 | 37200.37400.37500.38600.39600.44000.157800.530500 | Reinforcement | 7.88d | 2026-03-14 | 2026-03-20 | 1895 |  |  | GC1 | 8820234 |
| 1898 | 37200.37400.37500.38600.39600.44000.157800.530600 | Wall conduiting | 2.25d | 2026-03-15 | 2026-03-16 | 1893, 1897SS+1.12d |  |  | GC1 | 8820244 |
| 1899 | 37200.37400.37500.38600.39600.44000.157800.530700 | Formwork | 7.88d | 2026-03-16 | 2026-03-22 | 1897SS+2.25d |  |  | GC1 | 8820254 |
| 1900 | 37200.37400.37500.38600.39600.44000.157800.530800 | Concreting | 1.12d | 2026-03-23 | 2026-03-23 | 1899 |  |  | GC1 | 8820264 |

| ID | WBS | Task | Duration | Start | Finish | Predecessors | Constraint | Calendar | Unique_Task_ID |
| --- | --- | --- | --- | --- | --- | --- | --- | --- | --- |
| 1901 | 37200.37400.37500.38600.39600.44000.157700 | **7th floor slab** | 11.25d | 2026-03-24 | 2026-04-02 |  | start no earlier than 2026-03-24 | GC1 | 8809614 |
| 1902 | 37200.37400.37500.38600.39600.44000.157700.530900 | Reinforcement | 7.88d | 2026-03-24 | 2026-03-30 | 1900 |  | GC1 | 8820274 |
| 1903 | 37200.37400.37500.38600.39600.44000.157700.531000 | Wall conduiting | 2.25d | 2026-03-25 | 2026-03-26 | 1898, 1902SS+1.12d |  | GC1 | 8820284 |
| 1904 | 37200.37400.37500.38600.39600.44000.157700.531100 | Formwork | 7.88d | 2026-03-26 | 2026-04-01 | 1902SS+2.25d |  | GC1 | 8820294 |
| 1905 | 37200.37400.37500.38600.39600.44000.157700.531200 | Concreting | 1.12d | 2026-04-02 | 2026-04-02 | 1904 |  | GC1 | 8820304 |
| 1906 | 37200.37400.37500.38600.39600.44000.157600 | **8th floor slab** | 12.38d | 2026-04-03 | 2026-04-13 |  | start no earlier than 2026-04-03 | GC1 | 8809604 |
| 1907 | 37200.37400.37500.38600.39600.44000.157600.531300 | Reinforcement | 7.88d | 2026-04-03 | 2026-04-09 | 1905 |  | GC1 | 8820314 |
| 1908 | 37200.37400.37500.38600.39600.44000.157600.531400 | Wall conduiting | 2.25d | 2026-04-04 | 2026-04-05 | 1903, 1907SS+1.12d |  | GC1 | 8820324 |
| 1909 | 37200.37400.37500.38600.39600.44000.157600.531500 | Formwork | 9d | 2026-04-05 | 2026-04-12 | 1907SS+2.25d |  | GC1 | 8820334 |
| 1910 | 37200.37400.37500.38600.39600.44000.157600.531600 | Concreting | 1.12d | 2026-04-13 | 2026-04-13 | 1909 |  | GC1 | 8820344 |
| 1911 | 37200.37400.37500.38600.39600.44000.157500 | **9th floor slab** | 11.25d | 2026-04-14 | 2026-04-23 |  | start no earlier than 2026-04-14 | GC1 | 8809594 |
| 1912 | 37200.37400.37500.38600.39600.44000.157500.531700 | Reinforcement | 7.88d | 2026-04-14 | 2026-04-20 | 1910 |  | GC1 | 8820354 |
| 1913 | 37200.37400.37500.38600.39600.44000.157500.531800 | Wall conduiting | 2.25d | 2026-04-15 | 2026-04-16 | 1908, 1912SS+1.12d |  | GC1 | 8820364 |
| 1914 | 37200.37400.37500.38600.39600.44000.157500.531900 | Formwork | 7.88d | 2026-04-16 | 2026-04-22 | 1912SS+2.25d |  | GC1 | 8820374 |
| 1915 | 37200.37400.37500.38600.39600.44000.157500.532000 | Concreting | 1.12d | 2026-04-23 | 2026-04-23 | 1914 |  | GC1 | 8820384 |
| 1916 | 37200.37400.37500.38600.39600.44000.157400 | **10th floor slab** | 11.25d | 2026-04-24 | 2026-05-03 |  | start no earlier than 2026-04-24 | GC1 | 8809584 |
| 1917 | 37200.37400.37500.38600.39600.44000.157400.532100 | Reinforcement | 7.88d | 2026-04-24 | 2026-04-30 | 1915 |  | GC1 | 8820394 |
| 1918 | 37200.37400.37500.38600.39600.44000.157400.532200 | Wall conduiting | 2.25d | 2026-04-25 | 2026-04-26 | 1913, 1917SS+1.12d |  | GC1 | 8820404 |
| 1919 | 37200.37400.37500.38600.39600.44000.157400.532300 | Formwork | 7.88d | 2026-04-26 | 2026-05-02 | 1917SS+2.25d |  | GC1 | 8820414 |
| 1920 | 37200.37400.37500.38600.39600.44000.157400.532400 | Concreting | 1.12d | 2026-05-03 | 2026-05-03 | 1919 |  | GC1 | 8820424 |
| 1921 | 37200.37400.37500.38600.39600.44000.157300 | **11th floor slab** | 11.25d | 2026-05-04 | 2026-05-13 |  | start no earlier than 2026-05-04 | GC1 | 8809574 |
| 1922 | 37200.37400.37500.38600.39600.44000.157300.532500 | Reinforcement | 7.88d | 2026-05-04 | 2026-05-10 | 1920 |  | GC1 | 8820434 |
| 1923 | 37200.37400.37500.38600.39600.44000.157300.532600 | Wall conduiting | 2.25d | 2026-05-05 | 2026-05-06 | 1918, 1922SS+1.12d |  | GC1 | 8820444 |
| 1924 | 37200.37400.37500.38600.39600.44000.157300.532700 | Formwork | 7.88d | 2026-05-06 | 2026-05-12 | 1922SS+2.25d |  | GC1 | 8820454 |
| 1925 | 37200.37400.37500.38600.39600.44000.157300.532800 | Concreting | 1.12d | 2026-05-13 | 2026-05-13 | 1924 |  | GC1 | 8820464 |

| ID | WBS | Task | Duration | Start | Finish | Predecessors | Constraint | Calendar | Unique_Task_ID |
| --- | --- | --- | --- | --- | --- | --- | --- | --- | --- |
| 1926 | 37200.37400.37500.38600.39600.44000.157200 | **12th floor slab** | 11.25d | 2026-05-14 | 2026-05-23 |  | start no earlier than 2026-05-14 | GC1 | 8809564 |
| 1927 | 37200.37400.37500.38600.39600.44000.157200.532900 | Reinforcement | 7.88d | 2026-05-14 | 2026-05-20 | 1925 |  | GC1 | 8820474 |
| 1928 | 37200.37400.37500.38600.39600.44000.157200.533000 | Wall conduiting | 2.25d | 2026-05-15 | 2026-05-16 | 1923, 1927SS+1.12d |  | GC1 | 8820484 |
| 1929 | 37200.37400.37500.38600.39600.44000.157200.533100 | Formwork | 7.88d | 2026-05-16 | 2026-05-22 | 1927SS+2.25d |  | GC1 | 8820494 |
| 1930 | 37200.37400.37500.38600.39600.44000.157200.533200 | Concreting | 1.12d | 2026-05-23 | 2026-05-23 | 1929 |  | GC1 | 8820504 |
| 1931 | 37200.37400.37500.38600.39600.44000.157100 | **13th floor slab** | 11.25d | 2026-05-24 | 2026-06-02 |  | start no earlier than 2026-05-24 | GC1 | 8809554 |
| 1932 | 37200.37400.37500.38600.39600.44000.157100.533300 | Reinforcement | 7.88d | 2026-05-24 | 2026-05-30 | 1930 |  | GC1 | 8820514 |
| 1933 | 37200.37400.37500.38600.39600.44000.157100.533400 | Wall conduiting | 2.25d | 2026-05-25 | 2026-05-26 | 1928, 1932SS+1.12d |  | GC1 | 8820524 |
| 1934 | 37200.37400.37500.38600.39600.44000.157100.533500 | Formwork | 7.88d | 2026-05-26 | 2026-06-01 | 1932SS+2.25d |  | GC1 | 8820534 |
| 1935 | 37200.37400.37500.38600.39600.44000.157100.533600 | Concreting | 1.12d | 2026-06-02 | 2026-06-02 | 1934 |  | GC1 | 8820544 |
| 1936 | 37200.37400.37500.38600.39600.44000.157000 | **14th floor slab** | 11.25d | 2026-06-03 | 2026-06-12 |  | start no earlier than 2026-06-03 | GC1 | 8809544 |
| 1937 | 37200.37400.37500.38600.39600.44000.157000.533700 | Reinforcement | 7.88d | 2026-06-03 | 2026-06-09 | 1935 |  | GC1 | 8820554 |
| 1938 | 37200.37400.37500.38600.39600.44000.157000.533800 | Wall conduiting | 2.25d | 2026-06-04 | 2026-06-05 | 1933, 1937SS+1.12d |  | GC1 | 8820564 |
| 1939 | 37200.37400.37500.38600.39600.44000.157000.533900 | Formwork | 7.88d | 2026-06-05 | 2026-06-11 | 1937SS+2.25d |  | GC1 | 8820574 |
| 1940 | 37200.37400.37500.38600.39600.44000.157000.534000 | Concreting | 1.12d | 2026-06-12 | 2026-06-12 | 1939 |  | GC1 | 8820584 |
| 1941 | 37200.37400.37500.38600.39600.44000.156900 | **15th floor slab** | 11.25d | 2026-06-13 | 2026-06-22 |  | start no earlier than 2026-06-13 | GC1 | 8809534 |
| 1942 | 37200.37400.37500.38600.39600.44000.156900.534100 | Reinforcement | 7.88d | 2026-06-13 | 2026-06-19 | 1940 |  | GC1 | 8820594 |
| 1943 | 37200.37400.37500.38600.39600.44000.156900.534200 | Wall conduiting | 2.25d | 2026-06-14 | 2026-06-15 | 1938, 1942SS+1.12d |  | GC1 | 8820604 |
| 1944 | 37200.37400.37500.38600.39600.44000.156900.534300 | Formwork | 7.88d | 2026-06-15 | 2026-06-21 | 1942SS+2.25d |  | GC1 | 8820614 |
| 1945 | 37200.37400.37500.38600.39600.44000.156900.534400 | Concreting | 1.12d | 2026-06-22 | 2026-06-22 | 1944 |  | GC1 | 8820624 |
| 1946 | 37200.37400.37500.38600.39600.44000.156800 | **16th floor slab** | 12.38d | 2026-06-23 | 2026-07-03 |  | start no earlier than 2026-06-23 | GC1 | 8809524 |
| 1947 | 37200.37400.37500.38600.39600.44000.156800.534500 | Reinforcement | 9d | 2026-06-23 | 2026-06-30 | 1945 |  | GC1 | 8820634 |
| 1948 | 37200.37400.37500.38600.39600.44000.156800.534600 | Wall conduiting | 2.25d | 2026-06-24 | 2026-06-25 | 1943, 1947SS+1.12d |  | GC1 | 8820644 |
| 1949 | 37200.37400.37500.38600.39600.44000.156800.534700 | Formwork | 9d | 2026-06-25 | 2026-07-02 | 1947SS+2.25d |  | GC1 | 8820654 |
| 1950 | 37200.37400.37500.38600.39600.44000.156800.534800 | Concreting | 1.12d | 2026-07-03 | 2026-07-03 | 1949 |  | GC1 | 8820664 |

| ID | WBS | Task | Duration | Start | Finish | Predecessors | Constraint | Calendar | Unique_Task_ID |
| --- | --- | --- | --- | --- | --- | --- | --- | --- | --- |
| 1951 | 37200.37400.37500.38600.39600.44000.156700 | **17th floor slab** | 11.25d | 2026-07-04 | 2026-07-13 |  | start no earlier than 2026-07-04 | GC1 | 8809514 |
| 1952 | 37200.37400.37500.38600.39600.44000.156700.534900 | Reinforcement | 9d | 2026-07-04 | 2026-07-11 | 1950 |  | GC1 | 8820674 |
| 1953 | 37200.37400.37500.38600.39600.44000.156700.535000 | Wall conduiting | 2.25d | 2026-07-05 | 2026-07-06 | 1948, 1952SS+1.12d |  | GC1 | 8820684 |
| 1954 | 37200.37400.37500.38600.39600.44000.156700.535100 | Formwork | 7.88d | 2026-07-06 | 2026-07-12 | 1952SS+2.25d |  | GC1 | 8820694 |
| 1955 | 37200.37400.37500.38600.39600.44000.156700.535200 | Concreting | 1.12d | 2026-07-13 | 2026-07-13 | 1954 |  | GC1 | 8820704 |
| 1956 | 37200.37400.37500.38600.39600.44000.156600 | **18th floor slab** | 11.25d | 2026-07-14 | 2026-07-23 |  | start no earlier than 2026-07-14 | GC1 | 8809504 |
| 1957 | 37200.37400.37500.38600.39600.44000.156600.535300 | Reinforcement | 9d | 2026-07-14 | 2026-07-21 | 1955 |  | GC1 | 8820714 |
| 1958 | 37200.37400.37500.38600.39600.44000.156600.535400 | Wall conduiting | 2.25d | 2026-07-15 | 2026-07-16 | 1953, 1957SS+1.12d |  | GC1 | 8820724 |
| 1959 | 37200.37400.37500.38600.39600.44000.156600.535500 | Formwork | 7.88d | 2026-07-16 | 2026-07-22 | 1957SS+2.25d |  | GC1 | 8820734 |
| 1960 | 37200.37400.37500.38600.39600.44000.156600.535600 | Concreting | 1.12d | 2026-07-23 | 2026-07-23 | 1959 |  | GC1 | 8820744 |
| 1961 | 37200.37400.37500.38600.39600.44000.156500 | **19th floor slab** | 11.25d | 2026-07-24 | 2026-08-02 |  | start no earlier than 2026-07-24 | GC1 | 8809494 |
| 1962 | 37200.37400.37500.38600.39600.44000.156500.535700 | Reinforcement | 9d | 2026-07-24 | 2026-07-31 | 1960 |  | GC1 | 8820754 |
| 1963 | 37200.37400.37500.38600.39600.44000.156500.535800 | Wall conduiting | 2.25d | 2026-07-25 | 2026-07-26 | 1958, 1962SS+1.12d |  | GC1 | 8820764 |
| 1964 | 37200.37400.37500.38600.39600.44000.156500.535900 | Formwork | 9d | 2026-07-25 | 2026-08-01 | 1962SS+1.12d |  | GC1 | 8820774 |
| 1965 | 37200.37400.37500.38600.39600.44000.156500.536000 | Concreting | 1.12d | 2026-08-02 | 2026-08-02 | 1964 |  | GC1 | 8820784 |
| 1966 | 37200.37400.37500.38600.39600.44000.156400 | **20th floor slab** | 11.25d | 2026-08-03 | 2026-08-12 |  | start no earlier than 2026-08-03 | GC1 | 8809484 |
| 1967 | 37200.37400.37500.38600.39600.44000.156400.536100 | Reinforcement | 9d | 2026-08-03 | 2026-08-10 | 1965 |  | GC1 | 8820794 |
| 1968 | 37200.37400.37500.38600.39600.44000.156400.536200 | Wall conduiting | 2.25d | 2026-08-04 | 2026-08-05 | 1963, 1967SS+1.12d |  | GC1 | 8820804 |
| 1969 | 37200.37400.37500.38600.39600.44000.156400.536300 | Formwork | 9d | 2026-08-04 | 2026-08-11 | 1967SS+1.12d |  | GC1 | 8820814 |
| 1970 | 37200.37400.37500.38600.39600.44000.156400.536400 | Concreting | 1.12d | 2026-08-12 | 2026-08-12 | 1969 |  | GC1 | 8820824 |
| 1971 | 37200.37400.37500.38600.39600.44000.156300 | **21st floor slab** | 11.25d | 2026-08-13 | 2026-08-22 |  | start no earlier than 2026-08-13 | GC1 | 8809474 |
| 1972 | 37200.37400.37500.38600.39600.44000.156300.536500 | Reinforcement | 9d | 2026-08-13 | 2026-08-20 | 1970 |  | GC1 | 8820834 |
| 1973 | 37200.37400.37500.38600.39600.44000.156300.536600 | Wall conduiting | 2.25d | 2026-08-14 | 2026-08-15 | 1968, 1972SS+1.12d |  | GC1 | 8820844 |
| 1974 | 37200.37400.37500.38600.39600.44000.156300.536700 | Formwork | 7.88d | 2026-08-15 | 2026-08-21 | 1972SS+2.25d |  | GC1 | 8820854 |
| 1975 | 37200.37400.37500.38600.39600.44000.156300.536800 | Concreting | 1.12d | 2026-08-22 | 2026-08-22 | 1974 |  | GC1 | 8820864 |

| ID | WBS | Task | Duration | Start | Finish | Predecessors | Constraint | Calendar | Unique_Task_ID |
| --- | --- | --- | --- | --- | --- | --- | --- | --- | --- |
| 1976 | 37200.37400.37500.38600.39600.44000.156200 | **22nd floor slab** | 11.25d | 2026-08-23 | 2026-09-01 |  | start no earlier than 2026-08-23 | GC1 | 8809464 |
| 1977 | 37200.37400.37500.38600.39600.44000.156200.536900 | Reinforcement | 9d | 2026-08-23 | 2026-08-30 | 1975 |  | GC1 | 8820874 |
| 1978 | 37200.37400.37500.38600.39600.44000.156200.537000 | Wall conduiting | 2.25d | 2026-08-24 | 2026-08-25 | 1973, 1977SS+1.12d |  | GC1 | 8820884 |
| 1979 | 37200.37400.37500.38600.39600.44000.156200.537100 | Formwork | 7.88d | 2026-08-25 | 2026-08-31 | 1977SS+2.25d |  | GC1 | 8820894 |
| 1980 | 37200.37400.37500.38600.39600.44000.156200.537200 | Concreting | 1.12d | 2026-09-01 | 2026-09-01 | 1979 |  | GC1 | 8820904 |
| 1981 | 37200.37400.37500.38600.39600.44000.156100 | **23rd floor slab** | 11.25d | 2026-09-02 | 2026-09-11 |  | start no earlier than 2026-09-02 | GC1 | 8809454 |
| 1982 | 37200.37400.37500.38600.39600.44000.156100.537300 | Reinforcement | 9d | 2026-09-02 | 2026-09-09 | 1980 |  | GC1 | 8820914 |
| 1983 | 37200.37400.37500.38600.39600.44000.156100.537400 | Wall conduiting | 2.25d | 2026-09-03 | 2026-09-04 | 1978, 1982SS+1.12d |  | GC1 | 8820924 |
| 1984 | 37200.37400.37500.38600.39600.44000.156100.537500 | Formwork | 7.88d | 2026-09-04 | 2026-09-10 | 1982SS+2.25d |  | GC1 | 8820934 |
| 1985 | 37200.37400.37500.38600.39600.44000.156100.537600 | Concreting | 1.12d | 2026-09-11 | 2026-09-11 | 1984 |  | GC1 | 8820944 |
| 1986 | 37200.37400.37500.38600.39600.44000.156000 | **24th floor slab** | 15.75d | 2026-09-12 | 2026-09-25 |  | start no earlier than 2026-09-12 | GC1 | 8809444 |
| 1987 | 37200.37400.37500.38600.39600.44000.156000.537700 | Reinforcement | 12.38d | 2026-09-12 | 2026-09-22 | 1985 |  | GC1 | 8820954 |
| 1988 | 37200.37400.37500.38600.39600.44000.156000.537800 | Wall conduiting | 2.25d | 2026-09-13 | 2026-09-14 | 1983, 1987SS+1.12d |  | GC1 | 8820964 |
| 1989 | 37200.37400.37500.38600.39600.44000.156000.537900 | Formwork | 12.38d | 2026-09-14 | 2026-09-24 | 1987SS+2.25d |  | GC1 | 8820974 |
| 1990 | 37200.37400.37500.38600.39600.44000.156000.538000 | Concreting | 1.12d | 2026-09-25 | 2026-09-25 | 1989 |  | GC1 | 8820984 |
| 1991 | 37200.37400.37500.38600.39600.44000.155900 | **25th floor slab** | 16.88d | 2026-09-26 | 2026-10-10 |  | start no earlier than 2026-09-26 | GC1 | 8809434 |
| 1992 | 37200.37400.37500.38600.39600.44000.155900.538100 | Reinforcement | 13.5d | 2026-09-26 | 2026-10-07 | 1990 |  | GC1 | 8820994 |
| 1993 | 37200.37400.37500.38600.39600.44000.155900.538200 | Wall conduiting | 2.25d | 2026-09-27 | 2026-09-28 | 1988, 1992SS+1.12d |  | GC1 | 8821004 |
| 1994 | 37200.37400.37500.38600.39600.44000.155900.538300 | Formwork | 13.5d | 2026-09-28 | 2026-10-09 | 1992SS+2.25d |  | GC1 | 8821014 |
| 1995 | 37200.37400.37500.38600.39600.44000.155900.538400 | Concreting | 1.12d | 2026-10-10 | 2026-10-10 | 1994 |  | GC1 | 8821024 |
| 1996 | 37200.37400.37500.38600.39600.44000.155800 | **26th floor slab** | 11.25d | 2026-10-11 | 2026-10-20 |  | start no earlier than 2026-10-11 | GC1 | 8809424 |
| 1997 | 37200.37400.37500.38600.39600.44000.155800.538500 | Reinforcement | 9d | 2026-10-11 | 2026-10-18 | 1995 |  | GC1 | 8821034 |
| 1998 | 37200.37400.37500.38600.39600.44000.155800.538600 | Wall conduiting | 2.25d | 2026-10-12 | 2026-10-13 | 1993, 1997SS+1.12d |  | GC1 | 8821044 |
| 1999 | 37200.37400.37500.38600.39600.44000.155800.538700 | Formwork | 7.88d | 2026-10-13 | 2026-10-19 | 1997SS+2.25d |  | GC1 | 8821054 |
| 2000 | 37200.37400.37500.38600.39600.44000.155800.538800 | Concreting | 1.12d | 2026-10-20 | 2026-10-20 | 1999 |  | GC1 | 8821064 |

| ID | WBS | Task | Duration | Start | Finish | Predecessors | Constraint | Calendar | Unique_Task_ID |
| --- | --- | --- | --- | --- | --- | --- | --- | --- | --- |
| 2001 | 37200.37400.37500.38600.39600.44000.155700 | **27th floor slab** | 11.25d | 2026-10-21 | 2026-10-30 |  | start no earlier than 2026-10-21 | GC1 | 8809414 |
| 2002 | 37200.37400.37500.38600.39600.44000.155700.538900 | Reinforcement | 9d | 2026-10-21 | 2026-10-28 | 2000 |  | GC1 | 8821074 |
| 2003 | 37200.37400.37500.38600.39600.44000.155700.539000 | Wall conduiting | 2.25d | 2026-10-22 | 2026-10-23 | 1998, 2002SS+1.12d |  | GC1 | 8821084 |
| 2004 | 37200.37400.37500.38600.39600.44000.155700.539100 | Formwork | 7.88d | 2026-10-23 | 2026-10-29 | 2002SS+2.25d |  | GC1 | 8821094 |
| 2005 | 37200.37400.37500.38600.39600.44000.155700.539200 | Concreting | 1.12d | 2026-10-30 | 2026-10-30 | 2004 |  | GC1 | 8821104 |
| 2006 | 37200.37400.37500.38600.39600.44000.155600 | **28th floor slab** | 11.25d | 2026-10-31 | 2026-12-24 |  | start no earlier than 2026-10-31 | GC1 | 8809404 |
| 2007 | 37200.37400.37500.38600.39600.44000.155600.539300 | Reinforcement | 9d | 2026-10-31 | 2026-12-22 | 2005 |  | GC1 | 8821114 |
| 2008 | 37200.37400.37500.38600.39600.44000.155600.539400 | Wall conduiting | 2.25d | 2026-12-16 | 2026-12-17 | 2003, 2007SS+1.12d |  | GC1 | 8821124 |
| 2009 | 37200.37400.37500.38600.39600.44000.155600.539500 | Formwork | 7.88d | 2026-12-17 | 2026-12-23 | 2007SS+2.25d |  | GC1 | 8821134 |
| 2010 | 37200.37400.37500.38600.39600.44000.155600.539600 | Concreting | 1.12d | 2026-12-24 | 2026-12-24 | 2009 |  | GC1 | 8821144 |
| 2011 | 37200.37400.37500.38600.39600.44000.155500 | **29th floor slab** | 11.25d | 2026-12-25 | 2027-01-03 |  | start no earlier than 2026-12-25 | GC1 | 8809394 |
| 2012 | 37200.37400.37500.38600.39600.44000.155500.539700 | Reinforcement | 9d | 2026-12-25 | 2027-01-01 | 2010 |  | GC1 | 8821154 |
| 2013 | 37200.37400.37500.38600.39600.44000.155500.539800 | Wall conduiting | 2.25d | 2026-12-26 | 2026-12-27 | 2008, 2012SS+1.12d |  | GC1 | 8821164 |
| 2014 | 37200.37400.37500.38600.39600.44000.155500.539900 | Formwork | 7.88d | 2026-12-27 | 2027-01-02 | 2012SS+2.25d |  | GC1 | 8821174 |
| 2015 | 37200.37400.37500.38600.39600.44000.155500.540000 | Concreting | 1.12d | 2027-01-03 | 2027-01-03 | 2014 |  | GC1 | 8821184 |
| 2016 | 37200.37400.37500.38600.39600.44000.155400 | **30th floor slab** | 11.25d | 2027-01-04 | 2027-01-13 |  | start no earlier than 2027-01-04 | GC1 | 8809384 |
| 2017 | 37200.37400.37500.38600.39600.44000.155400.540100 | Reinforcement | 9d | 2027-01-04 | 2027-01-11 | 2015 |  | GC1 | 8821194 |
| 2018 | 37200.37400.37500.38600.39600.44000.155400.540200 | Wall conduiting | 2.25d | 2027-01-05 | 2027-01-06 | 2013, 2017SS+1.12d |  | GC1 | 8821204 |
| 2019 | 37200.37400.37500.38600.39600.44000.155400.540300 | Formwork | 7.88d | 2027-01-06 | 2027-01-12 | 2017SS+2.25d |  | GC1 | 8821214 |
| 2020 | 37200.37400.37500.38600.39600.44000.155400.540400 | Concreting | 1.12d | 2027-01-13 | 2027-01-13 | 2019 |  | GC1 | 8821224 |
| 2021 | 37200.37400.37500.38600.39600.44000.155300 | **31st floor slab** | 11.25d | 2027-01-14 | 2027-01-23 |  | start no earlier than 2027-01-14 | GC1 | 8809374 |
| 2022 | 37200.37400.37500.38600.39600.44000.155300.540500 | Reinforcement | 7.88d | 2027-01-14 | 2027-01-20 | 2020 |  | GC1 | 8821234 |
| 2023 | 37200.37400.37500.38600.39600.44000.155300.540600 | Wall conduiting | 2.25d | 2027-01-15 | 2027-01-16 | 2018, 2022SS+1.12d |  | GC1 | 8821244 |
| 2024 | 37200.37400.37500.38600.39600.44000.155300.540700 | Formwork | 7.88d | 2027-01-16 | 2027-01-22 | 2022SS+2.25d |  | GC1 | 8821254 |
| 2025 | 37200.37400.37500.38600.39600.44000.155300.540800 | Concreting | 1.12d | 2027-01-23 | 2027-01-23 | 2024 |  | GC1 | 8821264 |

| ID | WBS | Task | Duration | Start | Finish | Predecessors | Constraint | Calendar | Unique_Task_ID |
| --- | --- | --- | --- | --- | --- | --- | --- | --- | --- |
| 2026 | 37200.37400.37500.38600.39600.44000.155200 | **32nd floor slab** | 15.75d | 2027-01-24 | 2027-02-06 |  | start no earlier than 2027-01-24 | GC1 | 8809364 |
| 2027 | 37200.37400.37500.38600.39600.44000.155200.540900 | Reinforcement | 11.25d | 2027-01-24 | 2027-02-02 | 2025 |  | GC1 | 8821274 |
| 2028 | 37200.37400.37500.38600.39600.44000.155200.541000 | Wall conduiting | 2.25d | 2027-01-25 | 2027-01-26 | 2023, 2027SS+1.12d |  | GC1 | 8821284 |
| 2029 | 37200.37400.37500.38600.39600.44000.155200.541100 | Formwork | 12.38d | 2027-01-26 | 2027-02-05 | 2027SS+2.25d |  | GC1 | 8821294 |
| 2030 | 37200.37400.37500.38600.39600.44000.155200.541200 | Concreting | 1.12d | 2027-02-06 | 2027-02-06 | 2029 |  | GC1 | 8821304 |
| 2031 | 37200.37400.37500.38600.39600.44000.155100 | **33rd floor slab** | 11.25d | 2027-02-07 | 2027-02-16 |  | start no earlier than 2027-02-07 | GC1 | 8809354 |
| 2032 | 37200.37400.37500.38600.39600.44000.155100.541300 | Reinforcement | 7.88d | 2027-02-07 | 2027-02-13 | 2030 |  | GC1 | 8821314 |
| 2033 | 37200.37400.37500.38600.39600.44000.155100.541400 | Wall conduiting | 2.25d | 2027-02-08 | 2027-02-09 | 2028, 2032SS+1.12d |  | GC1 | 8821324 |
| 2034 | 37200.37400.37500.38600.39600.44000.155100.541500 | Formwork | 7.88d | 2027-02-09 | 2027-02-15 | 2032SS+2.25d |  | GC1 | 8821334 |
| 2035 | 37200.37400.37500.38600.39600.44000.155100.541600 | Concreting | 1.12d | 2027-02-16 | 2027-02-16 | 2034 |  | GC1 | 8821344 |
| 2036 | 37200.37400.37500.38600.39600.44000.155000 | **34th floor slab** | 16.88d | 2027-02-17 | 2027-03-03 |  | start no earlier than 2027-02-17 | GC1 | 8809344 |
| 2037 | 37200.37400.37500.38600.39600.44000.155000.541700 | Reinforcement | 13.5d | 2027-02-17 | 2027-02-28 | 2035 |  | GC1 | 8821354 |
| 2038 | 37200.37400.37500.38600.39600.44000.155000.541800 | Wall conduiting | 2.25d | 2027-02-18 | 2027-02-19 | 2033, 2037SS+1.12d |  | GC1 | 8821364 |
| 2039 | 37200.37400.37500.38600.39600.44000.155000.541900 | Formwork | 13.5d | 2027-02-19 | 2027-03-02 | 2037SS+2.25d |  | GC1 | 8821374 |
| 2040 | 37200.37400.37500.38600.39600.44000.155000.542000 | Concreting | 1.12d | 2027-03-03 | 2027-03-03 | 2039 |  | GC1 | 8821384 |
| 2041 | 37200.37400.37500.38600.39600.44000.154900 | **35th floor slab** | 13.5d | 2027-03-04 | 2027-03-15 |  | start no earlier than 2027-03-04 | GC1 | 8809334 |
| 2042 | 37200.37400.37500.38600.39600.44000.154900.542100 | Reinforcement | 9d | 2027-03-04 | 2027-03-11 | 2040 |  | GC1 | 8821394 |
| 2043 | 37200.37400.37500.38600.39600.44000.154900.542200 | Wall conduiting | 2.25d | 2027-03-05 | 2027-03-06 | 2038, 2042SS+1.12d |  | GC1 | 8821404 |
| 2044 | 37200.37400.37500.38600.39600.44000.154900.542300 | Formwork | 9d | 2027-03-07 | 2027-03-14 | 2043SS+2.25d |  | GC1 | 8821414 |
| 2045 | 37200.37400.37500.38600.39600.44000.154900.542400 | Concreting | 1.12d | 2027-03-15 | 2027-03-15 | 2044 |  | GC1 | 8821424 |
| 2046 | 37200.37400.37500.38600.39600.44000.154800 | **Terrace floor slab** | 23.62d | 2027-03-16 | 2027-04-05 |  | start no earlier than 2027-03-16 | GC1 | 8809324 |
| 2047 | 37200.37400.37500.38600.39600.44000.154800.542500 | Reinforcement | 20.25d | 2027-03-16 | 2027-04-02 | 2045 |  | GC1 | 8821434 |
| 2048 | 37200.37400.37500.38600.39600.44000.154800.542600 | Wall conduiting | 2.25d | 2027-03-17 | 2027-03-18 | 2043, 2047SS+1.12d |  | GC1 | 8821444 |
| 2049 | 37200.37400.37500.38600.39600.44000.154800.542700 | Formwork | 20.25d | 2027-03-18 | 2027-04-04 | 2047SS+2.25d |  | GC1 | 8821454 |
| 2050 | 37200.37400.37500.38600.39600.44000.154800.542800 | Concreting | 1.12d | 2027-04-05 | 2027-04-05 | 2049 |  | GC1 | 8821464 |

| ID | WBS | Task | Duration | Start | Finish | Predecessors | Constraint | Calendar | Unique_Task_ID |
| --- | --- | --- | --- | --- | --- | --- | --- | --- | --- |
| 2051 | 37200.37400.37500.38600.39600.44000.154700 | **OHT & Mumty** | 45d | 2027-04-06 | 2027-05-15 |  | start no earlier than 2027-04-06 | GC1 | 8809314 |
| 2052 | 37200.37400.37500.38600.39600.44000.154700.542900 | Reinforcement | 37.12d | 2027-04-06 | 2027-05-08 | 2050 |  | GC1 | 8821474 |
| 2053 | 37200.37400.37500.38600.39600.44000.154700.543000 | Wall conduiting | 5.62d | 2027-04-07 | 2027-04-11 | 2048, 2052SS+1.12d |  | GC1 | 8821484 |
| 2054 | 37200.37400.37500.38600.39600.44000.154700.543100 | Formwork | 37.12d | 2027-04-10 | 2027-05-12 | 2052SS+4.5d |  | GC1 | 8821494 |
| 2055 | 37200.37400.37500.38600.39600.44000.154700.543200 | Concreting | 3.38d | 2027-05-13 | 2027-05-15 | 2054 |  | GC1 | 8821504 |
| 2056 | 37200.37400.37500.38600.39600.45100 | **Post Pour Activities** | 445.5d | 2026-03-02 | 2027-05-16 |  | start no earlier than 2026-03-02 | GC1 | 8806104 |
| 2057 | 37200.37400.37500.38600.39600.45100.347800 | 1st Floor | 12.38d | 2026-03-02 | 2026-03-12 | 1890 |  | GC1 | 8813474 |
| 2058 | 37200.37400.37500.38600.39600.45100.347900 | 2nd Floor | 12.38d | 2026-03-14 | 2026-03-24 | 2057, 1895 |  | GC1 | 8813484 |
| 2059 | 37200.37400.37500.38600.39600.45100.348000 | 3rd Floor | 12.38d | 2026-03-25 | 2026-04-04 | 2058, 1900 |  | GC1 | 8813494 |
| 2060 | 37200.37400.37500.38600.39600.45100.348100 | 4th Floor | 12.38d | 2026-04-05 | 2026-04-15 | 2059, 1905 |  | GC1 | 8813504 |
| 2061 | 37200.37400.37500.38600.39600.45100.348200 | 5th Floor | 12.38d | 2026-04-16 | 2026-04-26 | 2060, 1910 |  | GC1 | 8813514 |
| 2062 | 37200.37400.37500.38600.39600.45100.348300 | 6th Floor | 12.38d | 2026-04-27 | 2026-05-07 | 2061, 1915 |  | GC1 | 8813524 |
| 2063 | 37200.37400.37500.38600.39600.45100.348400 | 7th Floor | 12.38d | 2026-05-08 | 2026-05-18 | 2062, 1920 |  | GC1 | 8813534 |
| 2064 | 37200.37400.37500.38600.39600.45100.348500 | 8th Floor | 12.38d | 2026-05-19 | 2026-05-29 | 2063, 1925 |  | GC1 | 8813544 |
| 2065 | 37200.37400.37500.38600.39600.45100.348600 | 9th Floor | 12.38d | 2026-05-30 | 2026-06-09 | 2064, 1930 |  | GC1 | 8813554 |
| 2066 | 37200.37400.37500.38600.39600.45100.348700 | 10th Floor | 12.38d | 2026-06-10 | 2026-06-20 | 2065, 1935 |  | GC1 | 8813564 |
| 2067 | 37200.37400.37500.38600.39600.45100.348800 | 11th Floor | 12.38d | 2026-06-21 | 2026-07-01 | 2066, 1940 |  | GC1 | 8813574 |
| 2068 | 37200.37400.37500.38600.39600.45100.348900 | 12th Floor | 12.38d | 2026-07-02 | 2026-07-12 | 2067, 1945 |  | GC1 | 8813584 |
| 2069 | 37200.37400.37500.38600.39600.45100.349000 | 13th Floor | 12.38d | 2026-07-13 | 2026-07-23 | 2068, 1950 |  | GC1 | 8813594 |
| 2070 | 37200.37400.37500.38600.39600.45100.349100 | 14th Floor | 12.38d | 2026-07-24 | 2026-08-03 | 2069, 1955 |  | GC1 | 8813604 |
| 2071 | 37200.37400.37500.38600.39600.45100.349200 | 15th Floor | 12.38d | 2026-08-04 | 2026-08-14 | 2070, 1960 |  | GC1 | 8813614 |
| 2072 | 37200.37400.37500.38600.39600.45100.349300 | 16th Floor | 12.38d | 2026-08-15 | 2026-08-25 | 2071, 1965 |  | GC1 | 8813624 |
| 2073 | 37200.37400.37500.38600.39600.45100.349400 | 17th Floor | 12.38d | 2026-08-26 | 2026-09-05 | 2072, 1970 |  | GC1 | 8813634 |
| 2074 | 37200.37400.37500.38600.39600.45100.349500 | 18th Floor | 12.38d | 2026-09-06 | 2026-09-16 | 2073, 1975 |  | GC1 | 8813644 |
| 2075 | 37200.37400.37500.38600.39600.45100.349600 | 19th Floor | 12.38d | 2026-09-17 | 2026-09-27 | 2074, 1980 |  | GC1 | 8813654 |
| 2076 | 37200.37400.37500.38600.39600.45100.349700 | 20th Floor | 12.38d | 2026-09-28 | 2026-10-08 | 2075, 1985 |  | GC1 | 8813664 |
| 2077 | 37200.37400.37500.38600.39600.45100.349800 | 21st Floor | 12.38d | 2026-10-09 | 2026-10-19 | 2076, 1990 |  | GC1 | 8813674 |
| 2078 | 37200.37400.37500.38600.39600.45100.349900 | 22nd Floor | 12.38d | 2026-10-20 | 2026-10-30 | 2077, 1995 |  | GC1 | 8813684 |
| 2079 | 37200.37400.37500.38600.39600.45100.350000 | 23rd Floor | 12.38d | 2026-10-31 | 2026-12-25 | 2078, 2000 |  | GC1 | 8813694 |
| 2080 | 37200.37400.37500.38600.39600.45100.350100 | 24th Floor | 12.38d | 2026-12-26 | 2027-01-05 | 2079, 2005 |  | GC1 | 8813704 |
| 2081 | 37200.37400.37500.38600.39600.45100.350200 | 25th Floor | 12.38d | 2027-01-06 | 2027-01-16 | 2080, 2010 |  | GC1 | 8813714 |
| 2082 | 37200.37400.37500.38600.39600.45100.350300 | 26th Floor | 12.38d | 2027-01-17 | 2027-01-27 | 2081, 2015 |  | GC1 | 8813724 |
| 2083 | 37200.37400.37500.38600.39600.45100.350400 | 27th Floor | 12.38d | 2027-01-28 | 2027-02-07 | 2082, 2020 |  | GC1 | 8813734 |
| 2084 | 37200.37400.37500.38600.39600.45100.350500 | 28th Floor | 12.38d | 2027-02-08 | 2027-02-18 | 2083, 2025 |  | GC1 | 8813744 |
| 2085 | 37200.37400.37500.38600.39600.45100.350600 | 29th Floor | 12.38d | 2027-02-19 | 2027-03-01 | 2084, 2030 |  | GC1 | 8813754 |
| 2086 | 37200.37400.37500.38600.39600.45100.350700 | 30th Floor | 12.38d | 2027-03-02 | 2027-03-12 | 2085, 2035 |  | GC1 | 8813764 |
| 2087 | 37200.37400.37500.38600.39600.45100.350800 | 31st Floor | 12.38d | 2027-03-13 | 2027-03-23 | 2086, 2040 |  | GC1 | 8813774 |
| 2088 | 37200.37400.37500.38600.39600.45100.350900 | 32nd Flood | 12.38d | 2027-03-24 | 2027-04-03 | 2087, 2045 |  | GC1 | 8813784 |
| 2089 | 37200.37400.37500.38600.39600.45100.351000 | 33rd Floor | 12.38d | 2027-04-04 | 2027-04-14 | 2088 |  | GC1 | 8813794 |
| 2090 | 37200.37400.37500.38600.39600.45100.351100 | 34th Floor | 9d | 2027-04-15 | 2027-04-22 | 2089 |  | GC1 | 8813804 |
| 2091 | 37200.37400.37500.38600.39600.45100.351200 | 35th Floor | 9d | 2027-04-23 | 2027-04-30 | 2090 |  | GC1 | 8813814 |
| 2092 | 37200.37400.37500.38600.39600.45100.351300 | Terrace | 9d | 2027-05-01 | 2027-05-08 | 2091 |  | GC1 | 8813824 |
| 2093 | 37200.37400.37500.38600.39600.45100.351400 | Mumty & Machine Room | 9d | 2027-05-09 | 2027-05-16 | 2092 |  | GC1 | 8813834 |

| ID | WBS | Task | Duration | Start | Finish | Predecessors | Constraint | Calendar | Unique_Task_ID |
| --- | --- | --- | --- | --- | --- | --- | --- | --- | --- |
| 2094 | 37200.37400.37500.38600.39600.41000 | **Finishing work** | 1172.25d | 2026-03-13 | 2029-04-18 |  | start no earlier than 2026-03-13 | GC1 | 8805954 |
| 2095 | 37200.37400.37500.38600.39600.41000.42000 | **Flat finishing** | 1172.25d | 2026-03-13 | 2029-04-18 |  | start no earlier than 2026-03-13 | GC1 | 8806004 |
| 2096 | 37200.37400.37500.38600.39600.41000.42000.83900 | **1st Floor** | 707.62d | 2026-03-13 | 2028-03-01 |  | start no earlier than 2026-03-13 | GC1 | 8806894 |
| 2097 | 37200.37400.37500.38600.39600.41000.42000.83900.1183700 | Block Work | 9d | 2026-03-13 | 2026-03-21 | 2057FS+0.25d |  | GC1 | 8836654 |
| 2098 | 37200.37400.37500.38600.39600.41000.42000.83900.1183800 | Door Frame Fixing | 7.88d | 2026-03-21 | 2026-03-28 | 2097 |  | GC1 | 8836664 |
| 2099 | 37200.37400.37500.38600.39600.41000.42000.83900.1183900 | Internal Plumbing Works | 11.25d | 2026-03-21 | 2026-03-31 | 2097 |  | GC1 | 8836674 |
| 2100 | 37200.37400.37500.38600.39600.41000.42000.83900.1184000 | Waterproofing | 13.5d | 2026-03-31 | 2026-04-12 | 2099 |  | GC1 | 8836684 |
| 2101 | 37200.37400.37500.38600.39600.41000.42000.83900.1184100 | Internal Plaster | 4.5d | 2026-03-31 | 2026-04-04 | 2098FS+0.25d, 2099FS+0.25d |  | GC1 | 8836694 |
| 2102 | 37200.37400.37500.38600.39600.41000.42000.83900.1184200 | IPS flooring work | 10.12d | 2026-04-12 | 2026-04-21 | 2098, 2099, 2100 |  | GC1 | 8836704 |
| 2103 | 37200.37400.37500.38600.39600.41000.42000.83900.1184300 | Toilet dado work | 9d | 2027-02-21 | 2027-03-01 | 2100FS+303.75d, 2101FS+303.75d |  | GC1 | 8836714 |
| 2104 | 37200.37400.37500.38600.39600.41000.42000.83900.1184400 | Toilet flooring work | 7.88d | 2027-03-01 | 2027-03-08 | 2103 |  | GC1 | 8836724 |
| 2105 | 37200.37400.37500.38600.39600.41000.42000.83900.1184500 | Living dinning flooring | 4.5d | 2027-03-08 | 2027-03-12 | 2098, 2104 |  | GC1 | 8836734 |
| 2106 | 37200.37400.37500.38600.39600.41000.42000.83900.1184600 | Aluminium door-window fixing | 11.25d | 2028-02-20 | 2028-03-01 | 2102FS+337.5d, 2105FS+337.5d |  | GC1 | 8836744 |
| 2107 | 37200.37400.37500.38600.39600.41000.42000.83900.1184700 | Putty primer coat | 6.75d | 2027-03-12 | 2027-03-18 | 2105 |  | GC1 | 8836754 |
| 2108 | 37200.37400.37500.38600.39600.41000.42000.83900.1184800 | Door shutter fixing | 9d | 2027-03-12 | 2027-03-20 | 2105 |  | GC1 | 8836764 |
| 2109 | 37200.37400.37500.38600.39600.41000.42000.83900.1184900 | Electrical wiring work | 13.5d | 2027-03-30 | 2027-04-11 | 2108FS+11.25d |  | GC1 | 8836774 |
| 2110 | 37200.37400.37500.38600.39600.41000.42000.83900.1185000 | Painting 1st coat | 13.5d | 2027-04-11 | 2027-04-23 | 2107, 2108, 2109 |  | GC1 | 8836784 |
| 2111 | 37200.37400.37500.38600.39600.41000.42000.83900.1185100 | False ceiling | 11.25d | 2027-04-23 | 2027-05-03 | 2110 |  | GC1 | 8836794 |
| 2112 | 37200.37400.37500.38600.39600.41000.42000.84000 | **2nd Floor** | 709.88d | 2026-03-21 | 2028-03-11 |  | start no earlier than 2026-03-21 | GC1 | 8806904 |
| 2113 | 37200.37400.37500.38600.39600.41000.42000.84000.1185200 | Block Work | 9d | 2026-03-21 | 2026-03-29 | 2097FS+0.25d |  | GC1 | 8836804 |
| 2114 | 37200.37400.37500.38600.39600.41000.42000.84000.1185300 | Door Frame Fixing | 7.88d | 2026-03-29 | 2026-04-05 | 2098, 2113 |  | GC1 | 8836814 |
| 2115 | 37200.37400.37500.38600.39600.41000.42000.84000.1185400 | Internal Plumbing Works | 11.25d | 2026-03-31 | 2026-04-10 | 2099, 2113 |  | GC1 | 8836824 |
| 2116 | 37200.37400.37500.38600.39600.41000.42000.84000.1185500 | Waterproofing | 13.5d | 2026-04-12 | 2026-04-24 | 2100, 2115 |  | GC1 | 8836834 |
| 2117 | 37200.37400.37500.38600.39600.41000.42000.84000.1185600 | Internal Plaster | 4.5d | 2026-04-05 | 2026-04-09 | 2101FS+0.25d, 2114FS+0.25d |  | GC1 | 8836844 |
| 2118 | 37200.37400.37500.38600.39600.41000.42000.84000.1185700 | IPS flooring work | 10.12d | 2026-04-24 | 2026-05-03 | 2102, 2114, 2115, 2116 |  | GC1 | 8836854 |
| 2119 | 37200.37400.37500.38600.39600.41000.42000.84000.1185800 | Toilet dado work | 9d | 2027-03-01 | 2027-03-09 | 2103, 2116, 2117 |  | GC1 | 8836864 |
| 2120 | 37200.37400.37500.38600.39600.41000.42000.84000.1185900 | Toilet flooring work | 7.88d | 2027-03-09 | 2027-03-16 | 2104, 2119 |  | GC1 | 8836874 |
| 2121 | 37200.37400.37500.38600.39600.41000.42000.84000.1186000 | Living dinning flooring | 4.5d | 2027-03-12 | 2027-03-16 | 2105FS+0.25d, 2114FS+0.25d |  | GC1 | 8836884 |
| 2122 | 37200.37400.37500.38600.39600.41000.42000.84000.1186100 | Aluminium door-window fixing | 11.25d | 2028-03-01 | 2028-03-11 | 2106FS+0.25d, 2121FS+0.25d |  | GC1 | 8836894 |
| 2123 | 37200.37400.37500.38600.39600.41000.42000.84000.1186200 | Putty primer coat | 6.75d | 2027-03-18 | 2027-03-24 | 2107, 2121 |  | GC1 | 8836904 |
| 2124 | 37200.37400.37500.38600.39600.41000.42000.84000.1186300 | Door shutter fixing | 9d | 2027-03-20 | 2027-03-28 | 2108, 2121 |  | GC1 | 8836914 |
| 2125 | 37200.37400.37500.38600.39600.41000.42000.84000.1186400 | Electrical wiring work | 13.5d | 2027-04-11 | 2027-04-23 | 2109, 2124 |  | GC1 | 8836924 |
| 2126 | 37200.37400.37500.38600.39600.41000.42000.84000.1186500 | Painting 1st coat | 13.5d | 2027-04-23 | 2027-05-05 | 2110, 2123, 2124, 2125 |  | GC1 | 8836934 |
| 2127 | 37200.37400.37500.38600.39600.41000.42000.84000.1186600 | False ceiling | 11.25d | 2027-05-05 | 2027-05-15 | 2111, 2126 |  | GC1 | 8836944 |

| ID | WBS | Task | Duration | Start | Finish | Predecessors | Constraint | Calendar | Unique_Task_ID |
| --- | --- | --- | --- | --- | --- | --- | --- | --- | --- |
| 2128 | 37200.37400.37500.38600.39600.41000.42000.84100 | **3rd Floor** | 712.12d | 2026-03-29 | 2028-03-21 |  | start no earlier than 2026-03-29 | GC1 | 8806914 |
| 2129 | 37200.37400.37500.38600.39600.41000.42000.84100.1186700 | Block Work | 9d | 2026-03-29 | 2026-04-06 | 2113FS+0.25d |  | GC1 | 8836954 |
| 2130 | 37200.37400.37500.38600.39600.41000.42000.84100.1186800 | Door Frame Fixing | 7.88d | 2026-04-06 | 2026-04-13 | 2114, 2129 |  | GC1 | 8836964 |
| 2131 | 37200.37400.37500.38600.39600.41000.42000.84100.1186900 | Internal Plumbing Works | 11.25d | 2026-04-10 | 2026-04-20 | 2115, 2129 |  | GC1 | 8836974 |
| 2132 | 37200.37400.37500.38600.39600.41000.42000.84100.1187000 | Waterproofing | 13.5d | 2026-04-24 | 2026-05-06 | 2116, 2131 |  | GC1 | 8836984 |
| 2133 | 37200.37400.37500.38600.39600.41000.42000.84100.1187100 | Internal Plaster | 4.5d | 2026-04-13 | 2026-04-17 | 2117FS+0.25d, 2130FS+0.25d |  | GC1 | 8836994 |
| 2134 | 37200.37400.37500.38600.39600.41000.42000.84100.1187200 | IPS flooring work | 10.12d | 2026-05-06 | 2026-05-15 | 2118, 2130, 2132, 2133 |  | GC1 | 8837004 |
| 2135 | 37200.37400.37500.38600.39600.41000.42000.84100.1187300 | Toilet dado work | 9d | 2027-03-09 | 2027-03-17 | 2119, 2132, 2133 |  | GC1 | 8837014 |
| 2136 | 37200.37400.37500.38600.39600.41000.42000.84100.1187400 | Toilet flooring work | 7.88d | 2027-03-17 | 2027-03-24 | 2120, 2135 |  | GC1 | 8837024 |
| 2137 | 37200.37400.37500.38600.39600.41000.42000.84100.1187500 | Living dinning flooring | 4.5d | 2027-03-16 | 2027-03-20 | 2121FS+0.25d, 2130FS+0.25d |  | GC1 | 8837034 |
| 2138 | 37200.37400.37500.38600.39600.41000.42000.84100.1187600 | Aluminium door-window fixing | 11.25d | 2028-03-11 | 2028-03-21 | 2122FS+0.25d, 2137FS+0.25d |  | GC1 | 8837044 |
| 2139 | 37200.37400.37500.38600.39600.41000.42000.84100.1187700 | Putty primer coat | 6.75d | 2027-03-24 | 2027-03-30 | 2123, 2137 |  | GC1 | 8837054 |
| 2140 | 37200.37400.37500.38600.39600.41000.42000.84100.1187800 | Door shutter fixing | 9d | 2027-03-28 | 2027-04-05 | 2124, 2137 |  | GC1 | 8837064 |
| 2141 | 37200.37400.37500.38600.39600.41000.42000.84100.1187900 | Electrical wiring work | 13.5d | 2027-04-23 | 2027-05-05 | 2125, 2140 |  | GC1 | 8837074 |
| 2142 | 37200.37400.37500.38600.39600.41000.42000.84100.1188000 | Painting 1st coat | 13.5d | 2027-05-05 | 2027-05-17 | 2126, 2139, 2140, 2141 |  | GC1 | 8837084 |
| 2143 | 37200.37400.37500.38600.39600.41000.42000.84100.1188100 | False ceiling | 11.25d | 2027-05-17 | 2027-05-27 | 2127, 2142 |  | GC1 | 8837094 |
| 2144 | 37200.37400.37500.38600.39600.41000.42000.84200 | **4th Floor** | 714.38d | 2026-04-06 | 2028-03-31 |  | start no earlier than 2026-04-06 | GC1 | 8806924 |
| 2145 | 37200.37400.37500.38600.39600.41000.42000.84200.1188200 | Block Work | 9d | 2026-04-06 | 2026-04-14 | 2129FS+0.25d |  | GC1 | 8837104 |
| 2146 | 37200.37400.37500.38600.39600.41000.42000.84200.1188300 | Door Frame Fixing | 7.88d | 2026-04-14 | 2026-04-21 | 2130, 2145 |  | GC1 | 8837114 |
| 2147 | 37200.37400.37500.38600.39600.41000.42000.84200.1188400 | Internal Plumbing Works | 11.25d | 2026-04-20 | 2026-04-30 | 2131, 2145 |  | GC1 | 8837124 |
| 2148 | 37200.37400.37500.38600.39600.41000.42000.84200.1188500 | Waterproofing | 13.5d | 2026-05-06 | 2026-05-18 | 2132, 2147 |  | GC1 | 8837134 |
| 2149 | 37200.37400.37500.38600.39600.41000.42000.84200.1188600 | Internal Plaster | 4.5d | 2026-04-22 | 2026-04-26 | 2133FS+0.25d, 2146FS+0.25d |  | GC1 | 8837144 |
| 2150 | 37200.37400.37500.38600.39600.41000.42000.84200.1188700 | IPS flooring work | 10.12d | 2026-05-18 | 2026-05-27 | 2134, 2146, 2148, 2149 |  | GC1 | 8837154 |
| 2151 | 37200.37400.37500.38600.39600.41000.42000.84200.1188800 | Toilet dado work | 9d | 2027-03-17 | 2027-03-25 | 2135, 2148, 2149 |  | GC1 | 8837164 |
| 2152 | 37200.37400.37500.38600.39600.41000.42000.84200.1188900 | Toilet flooring work | 7.88d | 2027-03-25 | 2027-04-01 | 2136, 2151 |  | GC1 | 8837174 |
| 2153 | 37200.37400.37500.38600.39600.41000.42000.84200.1189000 | Living dinning flooring | 4.5d | 2027-03-20 | 2027-03-24 | 2137FS+0.25d, 2146FS+0.25d |  | GC1 | 8837184 |
| 2154 | 37200.37400.37500.38600.39600.41000.42000.84200.1189100 | Aluminium door-window fixing | 11.25d | 2028-03-21 | 2028-03-31 | 2138FS+0.25d, 2153FS+0.25d |  | GC1 | 8837194 |
| 2155 | 37200.37400.37500.38600.39600.41000.42000.84200.1189200 | Putty primer coat | 6.75d | 2027-03-30 | 2027-04-05 | 2139, 2153 |  | GC1 | 8837204 |
| 2156 | 37200.37400.37500.38600.39600.41000.42000.84200.1189300 | Door shutter fixing | 9d | 2027-04-05 | 2027-04-13 | 2140, 2153 |  | GC1 | 8837214 |
| 2157 | 37200.37400.37500.38600.39600.41000.42000.84200.1189400 | Electrical wiring work | 13.5d | 2027-05-05 | 2027-05-17 | 2141, 2156 |  | GC1 | 8837224 |
| 2158 | 37200.37400.37500.38600.39600.41000.42000.84200.1189500 | Painting 1st coat | 13.5d | 2027-05-17 | 2027-05-29 | 2142, 2155, 2156, 2157 |  | GC1 | 8837234 |
| 2159 | 37200.37400.37500.38600.39600.41000.42000.84200.1189600 | False ceiling | 11.25d | 2027-05-29 | 2027-06-08 | 2143, 2158 |  | GC1 | 8837244 |

| ID | WBS | Task | Duration | Start | Finish | Predecessors | Constraint | Calendar | Unique_Task_ID |
| --- | --- | --- | --- | --- | --- | --- | --- | --- | --- |
| 2160 | 37200.37400.37500.38600.39600.41000.42000.84300 | **5th Floor** | 716.62d | 2026-04-15 | 2028-04-11 |  | start no earlier than 2026-04-15 | GC1 | 8806934 |
| 2161 | 37200.37400.37500.38600.39600.41000.42000.84300.1189700 | Block Work | 9d | 2026-04-15 | 2026-04-23 | 2145FS+0.25d |  | GC1 | 8837254 |
| 2162 | 37200.37400.37500.38600.39600.41000.42000.84300.1189800 | Door Frame Fixing | 7.88d | 2026-04-23 | 2026-04-30 | 2146, 2161 |  | GC1 | 8837264 |
| 2163 | 37200.37400.37500.38600.39600.41000.42000.84300.1189900 | Internal Plumbing Works | 11.25d | 2026-04-30 | 2026-05-10 | 2147, 2161 |  | GC1 | 8837274 |
| 2164 | 37200.37400.37500.38600.39600.41000.42000.84300.1190000 | Waterproofing | 13.5d | 2026-05-18 | 2026-05-30 | 2148, 2163 |  | GC1 | 8837284 |
| 2165 | 37200.37400.37500.38600.39600.41000.42000.84300.1190100 | Internal Plaster | 4.5d | 2026-04-30 | 2026-05-04 | 2149FS+0.25d, 2162FS+0.25d |  | GC1 | 8837294 |
| 2166 | 37200.37400.37500.38600.39600.41000.42000.84300.1190200 | IPS flooring work | 10.12d | 2026-05-30 | 2026-06-08 | 2150, 2162, 2164, 2165 |  | GC1 | 8837304 |
| 2167 | 37200.37400.37500.38600.39600.41000.42000.84300.1190300 | Toilet dado work | 9d | 2027-03-25 | 2027-04-02 | 2151, 2164, 2165 |  | GC1 | 8837314 |
| 2168 | 37200.37400.37500.38600.39600.41000.42000.84300.1190400 | Toilet flooring work | 7.88d | 2027-04-02 | 2027-04-09 | 2152, 2167 |  | GC1 | 8837324 |
| 2169 | 37200.37400.37500.38600.39600.41000.42000.84300.1190500 | Living dinning flooring | 4.5d | 2027-03-25 | 2027-03-29 | 2153FS+0.25d, 2162FS+0.25d |  | GC1 | 8837334 |
| 2170 | 37200.37400.37500.38600.39600.41000.42000.84300.1190600 | Aluminium door-window fixing | 11.25d | 2028-04-01 | 2028-04-11 | 2154FS+0.25d, 2169FS+0.25d |  | GC1 | 8837344 |
| 2171 | 37200.37400.37500.38600.39600.41000.42000.84300.1190700 | Putty primer coat | 6.75d | 2027-04-05 | 2027-04-11 | 2155, 2169 |  | GC1 | 8837354 |
| 2172 | 37200.37400.37500.38600.39600.41000.42000.84300.1190800 | Door shutter fixing | 9d | 2027-04-13 | 2027-04-21 | 2156, 2169 |  | GC1 | 8837364 |
| 2173 | 37200.37400.37500.38600.39600.41000.42000.84300.1190900 | Electrical wiring work | 13.5d | 2027-05-17 | 2027-05-29 | 2157, 2172 |  | GC1 | 8837374 |
| 2174 | 37200.37400.37500.38600.39600.41000.42000.84300.1191000 | Painting 1st coat | 16.88d | 2027-05-29 | 2027-06-13 | 2158, 2171, 2172, 2173 |  | GC1 | 8837384 |
| 2175 | 37200.37400.37500.38600.39600.41000.42000.84300.1191100 | False ceiling | 11.25d | 2027-06-13 | 2027-06-23 | 2159, 2174 |  | GC1 | 8837394 |
| 2176 | 37200.37400.37500.38600.39600.41000.42000.84400 | **6th Floor** | 718.88d | 2026-04-23 | 2028-04-21 |  | start no earlier than 2026-04-23 | GC1 | 8806944 |
| 2177 | 37200.37400.37500.38600.39600.41000.42000.84400.1191200 | Block Work | 9d | 2026-04-23 | 2026-05-01 | 2161FS+0.25d |  | GC1 | 8837404 |
| 2178 | 37200.37400.37500.38600.39600.41000.42000.84400.1191300 | Door Frame Fixing | 7.88d | 2026-04-30 | 2026-05-07 | 1910, 2162 |  | GC1 | 8837414 |
| 2179 | 37200.37400.37500.38600.39600.41000.42000.84400.1191400 | Internal Plumbing Works | 11.25d | 2026-05-10 | 2026-05-20 | 2163, 2177 |  | GC1 | 8837424 |
| 2180 | 37200.37400.37500.38600.39600.41000.42000.84400.1191500 | Waterproofing | 13.5d | 2026-05-30 | 2026-06-11 | 2164, 2179 |  | GC1 | 8837434 |
| 2181 | 37200.37400.37500.38600.39600.41000.42000.84400.1191600 | Internal Plaster | 4.5d | 2026-05-07 | 2026-05-11 | 2165FS+0.25d, 2178FS+0.25d |  | GC1 | 8837444 |
| 2182 | 37200.37400.37500.38600.39600.41000.42000.84400.1191700 | IPS flooring work | 10.12d | 2026-06-11 | 2026-06-20 | 2166, 2178, 2180, 2181 |  | GC1 | 8837454 |
| 2183 | 37200.37400.37500.38600.39600.41000.42000.84400.1191800 | Toilet dado work | 9d | 2027-04-02 | 2027-04-10 | 2167, 2180, 2181 |  | GC1 | 8837464 |
| 2184 | 37200.37400.37500.38600.39600.41000.42000.84400.1191900 | Toilet flooring work | 7.88d | 2027-04-10 | 2027-04-17 | 2168, 2183 |  | GC1 | 8837474 |
| 2185 | 37200.37400.37500.38600.39600.41000.42000.84400.1192000 | Living dinning flooring | 4.5d | 2027-03-29 | 2027-04-02 | 2169FS+0.25d, 2178FS+0.25d |  | GC1 | 8837484 |
| 2186 | 37200.37400.37500.38600.39600.41000.42000.84400.1192100 | Aluminium door-window fixing | 11.25d | 2028-04-11 | 2028-04-21 | 2170FS+0.25d, 2185FS+0.25d |  | GC1 | 8837494 |
| 2187 | 37200.37400.37500.38600.39600.41000.42000.84400.1192200 | Putty primer coat | 6.75d | 2027-04-11 | 2027-04-17 | 2171, 2185 |  | GC1 | 8837504 |
| 2188 | 37200.37400.37500.38600.39600.41000.42000.84400.1192300 | Door shutter fixing | 9d | 2027-04-21 | 2027-04-29 | 2172, 2185 |  | GC1 | 8837514 |
| 2189 | 37200.37400.37500.38600.39600.41000.42000.84400.1192400 | Electrical wiring work | 13.5d | 2027-05-29 | 2027-06-10 | 2173, 2188 |  | GC1 | 8837524 |
| 2190 | 37200.37400.37500.38600.39600.41000.42000.84400.1192500 | Painting 1st coat | 13.5d | 2027-06-13 | 2027-06-25 | 2174, 2187, 2188, 2189 |  | GC1 | 8837534 |
| 2191 | 37200.37400.37500.38600.39600.41000.42000.84400.1192600 | False ceiling | 11.25d | 2027-06-25 | 2027-07-05 | 2175, 2190 |  | GC1 | 8837544 |

| ID | WBS | Task | Duration | Start | Finish | Predecessors | Constraint | Calendar | Unique_Task_ID |
| --- | --- | --- | --- | --- | --- | --- | --- | --- | --- |
| 2192 | 37200.37400.37500.38600.39600.41000.42000.84500 | **7th Floor** | 721.12d | 2026-05-01 | 2028-05-01 |  | start no earlier than 2026-05-01 | GC1 | 8806954 |
| 2193 | 37200.37400.37500.38600.39600.41000.42000.84500.1192700 | Block Work | 9d | 2026-05-01 | 2026-05-09 | 2177FS+0.25d |  | GC1 | 8837554 |
| 2194 | 37200.37400.37500.38600.39600.41000.42000.84500.1192800 | Door Frame Fixing | 7.88d | 2026-05-09 | 2026-05-16 | 2178, 2193 |  | GC1 | 8837564 |
| 2195 | 37200.37400.37500.38600.39600.41000.42000.84500.1192900 | Internal Plumbing Works | 11.25d | 2026-05-20 | 2026-05-30 | 2179, 2193 |  | GC1 | 8837574 |
| 2196 | 37200.37400.37500.38600.39600.41000.42000.84500.1193000 | Waterproofing | 13.5d | 2026-06-11 | 2026-06-23 | 2180, 2195 |  | GC1 | 8837584 |
| 2197 | 37200.37400.37500.38600.39600.41000.42000.84500.1193100 | Internal Plaster | 4.5d | 2026-05-16 | 2026-05-20 | 2181FS+0.25d, 2194FS+0.25d |  | GC1 | 8837594 |
| 2198 | 37200.37400.37500.38600.39600.41000.42000.84500.1193200 | IPS flooring work | 10.12d | 2026-06-20 | 2026-06-29 | 2182FS+0.25d, 2194FS+0.25d |  | GC1 | 8837604 |
| 2199 | 37200.37400.37500.38600.39600.41000.42000.84500.1193300 | Toilet dado work | 9d | 2027-04-10 | 2027-04-18 | 2183, 2196, 2197 |  | GC1 | 8837614 |
| 2200 | 37200.37400.37500.38600.39600.41000.42000.84500.1193400 | Toilet flooring work | 7.88d | 2027-04-18 | 2027-04-25 | 2184, 2199 |  | GC1 | 8837624 |
| 2201 | 37200.37400.37500.38600.39600.41000.42000.84500.1193500 | Living dinning flooring | 4.5d | 2027-04-02 | 2027-04-06 | 2185FS+0.25d, 2194FS+0.25d |  | GC1 | 8837634 |
| 2202 | 37200.37400.37500.38600.39600.41000.42000.84500.1193600 | Aluminium door-window fixing | 11.25d | 2028-04-21 | 2028-05-01 | 2186FS+0.25d, 2201FS+0.25d |  | GC1 | 8837644 |
| 2203 | 37200.37400.37500.38600.39600.41000.42000.84500.1193700 | Putty primer coat | 6.75d | 2027-04-17 | 2027-04-23 | 2187, 2201 |  | GC1 | 8837654 |
| 2204 | 37200.37400.37500.38600.39600.41000.42000.84500.1193800 | Door shutter fixing | 9d | 2027-04-29 | 2027-05-07 | 2188, 2201 |  | GC1 | 8837664 |
| 2205 | 37200.37400.37500.38600.39600.41000.42000.84500.1193900 | Electrical wiring work | 13.5d | 2027-06-10 | 2027-06-22 | 2189, 2204 |  | GC1 | 8837674 |
| 2206 | 37200.37400.37500.38600.39600.41000.42000.84500.1194000 | Painting 1st coat | 13.5d | 2027-06-25 | 2027-07-07 | 2190, 2203, 2204, 2205 |  | GC1 | 8837684 |
| 2207 | 37200.37400.37500.38600.39600.41000.42000.84500.1194100 | False ceiling | 11.25d | 2027-07-07 | 2027-07-17 | 2191, 2206 |  | GC1 | 8837694 |
| 2208 | 37200.37400.37500.38600.39600.41000.42000.84600 | **8th Floor** | 723.38d | 2026-05-09 | 2028-05-11 |  | start no earlier than 2026-05-09 | GC1 | 8806964 |
| 2209 | 37200.37400.37500.38600.39600.41000.42000.84600.1194200 | Block Work | 9d | 2026-05-09 | 2026-05-17 | 2193FS+0.25d |  | GC1 | 8837704 |
| 2210 | 37200.37400.37500.38600.39600.41000.42000.84600.1194300 | Door Frame Fixing | 7.88d | 2026-05-17 | 2026-05-24 | 2194, 2209 |  | GC1 | 8837714 |
| 2211 | 37200.37400.37500.38600.39600.41000.42000.84600.1194400 | Internal Plumbing Works | 11.25d | 2026-05-30 | 2026-06-09 | 2195, 2209 |  | GC1 | 8837724 |
| 2212 | 37200.37400.37500.38600.39600.41000.42000.84600.1194500 | Waterproofing | 13.5d | 2026-06-23 | 2026-07-05 | 2196, 2211 |  | GC1 | 8837734 |
| 2213 | 37200.37400.37500.38600.39600.41000.42000.84600.1194600 | Internal Plaster | 4.5d | 2026-05-25 | 2026-05-28 | 2197FS+0.25d, 2210FS+0.25d |  | GC1 | 8837744 |
| 2214 | 37200.37400.37500.38600.39600.41000.42000.84600.1194700 | IPS flooring work | 10.12d | 2026-07-05 | 2026-07-14 | 2198, 2210, 2212, 2213 |  | GC1 | 8837754 |
| 2215 | 37200.37400.37500.38600.39600.41000.42000.84600.1194800 | Toilet dado work | 9d | 2027-04-18 | 2027-04-26 | 2199, 2212, 2213 |  | GC1 | 8837764 |
| 2216 | 37200.37400.37500.38600.39600.41000.42000.84600.1194900 | Toilet flooring work | 7.88d | 2027-04-26 | 2027-05-03 | 2200, 2215 |  | GC1 | 8837774 |
| 2217 | 37200.37400.37500.38600.39600.41000.42000.84600.1195000 | Living dinning flooring | 4.5d | 2027-04-06 | 2027-04-10 | 2201FS+0.25d, 2210FS+0.25d |  | GC1 | 8837784 |
| 2218 | 37200.37400.37500.38600.39600.41000.42000.84600.1195100 | Aluminium door-window fixing | 11.25d | 2028-05-01 | 2028-05-11 | 2202FS+0.25d, 2217FS+0.25d |  | GC1 | 8837794 |
| 2219 | 37200.37400.37500.38600.39600.41000.42000.84600.1195200 | Putty primer coat | 6.75d | 2027-04-23 | 2027-04-29 | 2203, 2217 |  | GC1 | 8837804 |
| 2220 | 37200.37400.37500.38600.39600.41000.42000.84600.1195300 | Door shutter fixing | 9d | 2027-05-07 | 2027-05-15 | 2204, 2217 |  | GC1 | 8837814 |
| 2221 | 37200.37400.37500.38600.39600.41000.42000.84600.1195400 | Electrical wiring work | 13.5d | 2027-06-22 | 2027-07-04 | 2205, 2220 |  | GC1 | 8837824 |
| 2222 | 37200.37400.37500.38600.39600.41000.42000.84600.1195500 | Painting 1st coat | 13.5d | 2027-07-07 | 2027-07-19 | 2206, 2219, 2220, 2221 |  | GC1 | 8837834 |
| 2223 | 37200.37400.37500.38600.39600.41000.42000.84600.1195600 | False ceiling | 11.25d | 2027-07-19 | 2027-07-29 | 2207, 2222 |  | GC1 | 8837844 |

| ID | WBS | Task | Duration | Start | Finish | Predecessors | Constraint | Calendar | Unique_Task_ID |
| --- | --- | --- | --- | --- | --- | --- | --- | --- | --- |
| 2224 | 37200.37400.37500.38600.39600.41000.42000.84700 | **9th Floor** | 725.38d | 2026-05-18 | 2028-05-21 |  | start no earlier than 2026-05-18 | GC1 | 8806974 |
| 2225 | 37200.37400.37500.38600.39600.41000.42000.84700.1195700 | Block Work | 9d | 2026-05-18 | 2026-05-25 | 2209FS+0.25d |  | GC1 | 8837854 |
| 2226 | 37200.37400.37500.38600.39600.41000.42000.84700.1195800 | Door Frame Fixing | 7.88d | 2026-05-26 | 2026-06-01 | 2210, 2225 |  | GC1 | 8837864 |
| 2227 | 37200.37400.37500.38600.39600.41000.42000.84700.1195900 | Internal Plumbing Works | 11.25d | 2026-06-09 | 2026-06-19 | 2211, 2225 |  | GC1 | 8837874 |
| 2228 | 37200.37400.37500.38600.39600.41000.42000.84700.1196000 | Waterproofing | 13.5d | 2026-07-05 | 2026-07-17 | 2212, 2227 |  | GC1 | 8837884 |
| 2229 | 37200.37400.37500.38600.39600.41000.42000.84700.1196100 | Internal Plaster | 4.5d | 2026-06-02 | 2026-06-06 | 2213FS+0.25d, 2226FS+0.25d |  | GC1 | 8837894 |
| 2230 | 37200.37400.37500.38600.39600.41000.42000.84700.1196200 | IPS flooring work | 10.12d | 2026-07-17 | 2026-07-26 | 2214, 2226, 2228, 2229 |  | GC1 | 8837904 |
| 2231 | 37200.37400.37500.38600.39600.41000.42000.84700.1196300 | Toilet dado work | 9d | 2027-04-26 | 2027-05-04 | 2215, 2228, 2229 |  | GC1 | 8837914 |
| 2232 | 37200.37400.37500.38600.39600.41000.42000.84700.1196400 | Toilet flooring work | 7.88d | 2027-05-04 | 2027-05-11 | 2216, 2231 |  | GC1 | 8837924 |
| 2233 | 37200.37400.37500.38600.39600.41000.42000.84700.1196500 | Living dinning flooring | 4.5d | 2027-04-11 | 2027-04-14 | 2217FS+0.25d, 2226FS+0.25d |  | GC1 | 8837934 |
| 2234 | 37200.37400.37500.38600.39600.41000.42000.84700.1196600 | Aluminium door-window fixing | 11.25d | 2028-05-11 | 2028-05-21 | 2218, 2230, 2233 |  | GC1 | 8837944 |
| 2235 | 37200.37400.37500.38600.39600.41000.42000.84700.1196700 | Putty primer coat | 6.75d | 2027-04-29 | 2027-05-05 | 2219, 2233 |  | GC1 | 8837954 |
| 2236 | 37200.37400.37500.38600.39600.41000.42000.84700.1196800 | Door shutter fixing | 9d | 2027-05-15 | 2027-05-23 | 2220, 2233 |  | GC1 | 8837964 |
| 2237 | 37200.37400.37500.38600.39600.41000.42000.84700.1196900 | Electrical wiring work | 13.5d | 2027-07-04 | 2027-07-16 | 2221, 2236 |  | GC1 | 8837974 |
| 2238 | 37200.37400.37500.38600.39600.41000.42000.84700.1197000 | Painting 1st coat | 13.5d | 2027-07-19 | 2027-07-31 | 2222, 2235, 2236, 2237 |  | GC1 | 8837984 |
| 2239 | 37200.37400.37500.38600.39600.41000.42000.84700.1197100 | False ceiling | 11.25d | 2027-07-31 | 2027-08-10 | 2223, 2238 |  | GC1 | 8837994 |
| 2240 | 37200.37400.37500.38600.39600.41000.42000.84800 | **10th Floor** | 727.62d | 2026-05-26 | 2028-05-31 |  | start no earlier than 2026-05-26 | GC1 | 8806984 |
| 2241 | 37200.37400.37500.38600.39600.41000.42000.84800.1197200 | Block Work | 9d | 2026-05-26 | 2026-06-03 | 2225FS+0.25d |  | GC1 | 8838004 |
| 2242 | 37200.37400.37500.38600.39600.41000.42000.84800.1197300 | Door Frame Fixing | 7.88d | 2026-06-03 | 2026-06-10 | 2226, 2241 |  | GC1 | 8838014 |
| 2243 | 37200.37400.37500.38600.39600.41000.42000.84800.1197400 | Internal Plumbing Works | 11.25d | 2026-06-19 | 2026-06-29 | 2227, 2241 |  | GC1 | 8838024 |
| 2244 | 37200.37400.37500.38600.39600.41000.42000.84800.1197500 | Waterproofing | 13.5d | 2026-07-17 | 2026-07-29 | 2228, 2243 |  | GC1 | 8838034 |
| 2245 | 37200.37400.37500.38600.39600.41000.42000.84800.1197600 | Internal Plaster | 4.5d | 2026-06-10 | 2026-06-14 | 2229FS+0.25d, 2242FS+0.25d |  | GC1 | 8838044 |
| 2246 | 37200.37400.37500.38600.39600.41000.42000.84800.1197700 | IPS flooring work | 10.12d | 2026-07-29 | 2026-08-07 | 2230, 2242, 2244, 2245 |  | GC1 | 8838054 |
| 2247 | 37200.37400.37500.38600.39600.41000.42000.84800.1197800 | Toilet dado work | 9d | 2027-05-04 | 2027-05-12 | 2231, 2244, 2245 |  | GC1 | 8838064 |
| 2248 | 37200.37400.37500.38600.39600.41000.42000.84800.1197900 | Toilet flooring work | 7.88d | 2027-05-12 | 2027-05-19 | 2232, 2247 |  | GC1 | 8838074 |
| 2249 | 37200.37400.37500.38600.39600.41000.42000.84800.1198000 | Living dinning flooring | 4.5d | 2027-04-15 | 2027-04-19 | 2233FS+0.25d, 2242FS+0.25d |  | GC1 | 8838084 |
| 2250 | 37200.37400.37500.38600.39600.41000.42000.84800.1198100 | Aluminium door-window fixing | 11.25d | 2028-05-22 | 2028-05-31 | 2234FS+0.25d, 2249FS+0.25d |  | GC1 | 8838094 |
| 2251 | 37200.37400.37500.38600.39600.41000.42000.84800.1198200 | Putty primer coat | 6.75d | 2027-05-05 | 2027-05-11 | 2235, 2249 |  | GC1 | 8838104 |
| 2252 | 37200.37400.37500.38600.39600.41000.42000.84800.1198300 | Door shutter fixing | 9d | 2027-05-23 | 2027-05-31 | 2236, 2249 |  | GC1 | 8838114 |
| 2253 | 37200.37400.37500.38600.39600.41000.42000.84800.1198400 | Electrical wiring work | 13.5d | 2027-07-16 | 2027-07-28 | 2237, 2252 |  | GC1 | 8838124 |
| 2254 | 37200.37400.37500.38600.39600.41000.42000.84800.1198500 | Painting 1st coat | 13.5d | 2027-07-31 | 2027-08-12 | 2238, 2251, 2252, 2253 |  | GC1 | 8838134 |
| 2255 | 37200.37400.37500.38600.39600.41000.42000.84800.1198600 | False ceiling | 11.25d | 2027-08-12 | 2027-08-22 | 2239, 2254 |  | GC1 | 8838144 |

| ID | WBS | Task | Duration | Start | Finish | Predecessors | Constraint | Calendar | Unique_Task_ID |
| --- | --- | --- | --- | --- | --- | --- | --- | --- | --- |
| 2256 | 37200.37400.37500.38600.39600.41000.42000.84900 | **11th Floor** | 729.88d | 2026-06-03 | 2028-06-11 |  | start no earlier than 2026-06-03 | GC1 | 8806994 |
| 2257 | 37200.37400.37500.38600.39600.41000.42000.84900.1198700 | Block Work | 9d | 2026-06-03 | 2026-06-11 | 2241FS+0.25d |  | GC1 | 8838154 |
| 2258 | 37200.37400.37500.38600.39600.41000.42000.84900.1198800 | Door Frame Fixing | 7.88d | 2026-06-11 | 2026-06-18 | 2242, 2257 |  | GC1 | 8838164 |
| 2259 | 37200.37400.37500.38600.39600.41000.42000.84900.1198900 | Internal Plumbing Works | 11.25d | 2026-06-29 | 2026-07-09 | 2243, 2257 |  | GC1 | 8838174 |
| 2260 | 37200.37400.37500.38600.39600.41000.42000.84900.1199000 | Waterproofing | 13.5d | 2026-07-29 | 2026-08-10 | 2244, 2259 |  | GC1 | 8838184 |
| 2261 | 37200.37400.37500.38600.39600.41000.42000.84900.1199100 | Internal Plaster | 4.5d | 2026-06-18 | 2026-06-22 | 2245FS+0.25d, 2258FS+0.25d |  | GC1 | 8838194 |
| 2262 | 37200.37400.37500.38600.39600.41000.42000.84900.1199200 | IPS flooring work | 10.12d | 2026-08-10 | 2026-08-19 | 2246, 2258, 2259, 2260 |  | GC1 | 8838204 |
| 2263 | 37200.37400.37500.38600.39600.41000.42000.84900.1199300 | Toilet dado work | 9d | 2027-05-12 | 2027-05-20 | 2247, 2260, 2261 |  | GC1 | 8838214 |
| 2264 | 37200.37400.37500.38600.39600.41000.42000.84900.1199400 | Toilet flooring work | 7.88d | 2027-05-20 | 2027-05-27 | 2248, 2263 |  | GC1 | 8838224 |
| 2265 | 37200.37400.37500.38600.39600.41000.42000.84900.1199500 | Living dinning flooring | 4.5d | 2027-04-19 | 2027-04-23 | 2249FS+0.25d, 2258FS+0.25d |  | GC1 | 8838234 |
| 2266 | 37200.37400.37500.38600.39600.41000.42000.84900.1199600 | Aluminium door-window fixing | 11.25d | 2028-06-01 | 2028-06-11 | 2250FS+0.25d, 2265FS+0.25d |  | GC1 | 8838244 |
| 2267 | 37200.37400.37500.38600.39600.41000.42000.84900.1199700 | Putty primer coat | 6.75d | 2027-05-11 | 2027-05-17 | 2251, 2265 |  | GC1 | 8838254 |
| 2268 | 37200.37400.37500.38600.39600.41000.42000.84900.1199800 | Door shutter fixing | 9d | 2027-05-31 | 2027-06-08 | 2252, 2265 |  | GC1 | 8838264 |
| 2269 | 37200.37400.37500.38600.39600.41000.42000.84900.1199900 | Electrical wiring work | 13.5d | 2027-07-28 | 2027-08-09 | 2253, 2268 |  | GC1 | 8838274 |
| 2270 | 37200.37400.37500.38600.39600.41000.42000.84900.1200000 | Painting 1st coat | 13.5d | 2027-08-12 | 2027-08-24 | 2254, 2267, 2268, 2269 |  | GC1 | 8838284 |
| 2271 | 37200.37400.37500.38600.39600.41000.42000.84900.1200100 | False ceiling | 11.25d | 2027-08-24 | 2027-09-03 | 2255, 2270 |  | GC1 | 8838294 |
| 2272 | 37200.37400.37500.38600.39600.41000.42000.85000 | **12th Floor** | 731.88d | 2026-06-11 | 2028-06-21 |  | start no earlier than 2026-06-11 | GC1 | 8807004 |
| 2273 | 37200.37400.37500.38600.39600.41000.42000.85000.1200200 | Block Work | 9d | 2026-06-11 | 2026-06-19 | 2257FS+0.25d |  | GC1 | 8838304 |
| 2274 | 37200.37400.37500.38600.39600.41000.42000.85000.1200300 | Door Frame Fixing | 7.88d | 2026-06-19 | 2026-06-26 | 2258, 2273 |  | GC1 | 8838314 |
| 2275 | 37200.37400.37500.38600.39600.41000.42000.85000.1200400 | Internal Plumbing Works | 11.25d | 2026-07-09 | 2026-07-19 | 2259, 2273 |  | GC1 | 8838324 |
| 2276 | 37200.37400.37500.38600.39600.41000.42000.85000.1200500 | Waterproofing | 13.5d | 2026-08-10 | 2026-08-22 | 2260, 2275 |  | GC1 | 8838334 |
| 2277 | 37200.37400.37500.38600.39600.41000.42000.85000.1200600 | Internal Plaster | 4.5d | 2026-06-26 | 2026-06-30 | 2261FS+0.25d, 2274FS+0.25d |  | GC1 | 8838344 |
| 2278 | 37200.37400.37500.38600.39600.41000.42000.85000.1200700 | IPS flooring work | 10.12d | 2026-08-22 | 2026-08-31 | 2262, 2274, 2275, 2276 |  | GC1 | 8838354 |
| 2279 | 37200.37400.37500.38600.39600.41000.42000.85000.1200800 | Toilet dado work | 9d | 2027-05-20 | 2027-05-28 | 2263, 2276, 2277 |  | GC1 | 8838364 |
| 2280 | 37200.37400.37500.38600.39600.41000.42000.85000.1200900 | Toilet flooring work | 7.88d | 2027-05-28 | 2027-06-04 | 2264, 2279 |  | GC1 | 8838374 |
| 2281 | 37200.37400.37500.38600.39600.41000.42000.85000.1201000 | Living dinning flooring | 4.5d | 2027-04-23 | 2027-04-27 | 2265FS+0.25d, 2274FS+0.25d |  | GC1 | 8838384 |
| 2282 | 37200.37400.37500.38600.39600.41000.42000.85000.1201100 | Aluminium door-window fixing | 11.25d | 2028-06-11 | 2028-06-21 | 2266, 2278, 2281 |  | GC1 | 8838394 |
| 2283 | 37200.37400.37500.38600.39600.41000.42000.85000.1201200 | Putty primer coat | 6.75d | 2027-05-17 | 2027-05-23 | 2267, 2281 |  | GC1 | 8838404 |
| 2284 | 37200.37400.37500.38600.39600.41000.42000.85000.1201300 | Door shutter fixing | 9d | 2027-06-08 | 2027-06-16 | 2268, 2281 |  | GC1 | 8838414 |
| 2285 | 37200.37400.37500.38600.39600.41000.42000.85000.1201400 | Electrical wiring work | 13.5d | 2027-08-09 | 2027-08-21 | 2269, 2284 |  | GC1 | 8838424 |
| 2286 | 37200.37400.37500.38600.39600.41000.42000.85000.1201500 | Painting 1st coat | 13.5d | 2027-08-24 | 2027-09-05 | 2270, 2283, 2284, 2285 |  | GC1 | 8838434 |
| 2287 | 37200.37400.37500.38600.39600.41000.42000.85000.1201600 | False ceiling | 11.25d | 2027-09-05 | 2027-09-15 | 2271, 2286 |  | GC1 | 8838444 |

| ID | WBS | Task | Duration | Start | Finish | Predecessors | Constraint | Calendar | Unique_Task_ID |
| --- | --- | --- | --- | --- | --- | --- | --- | --- | --- |
| 2288 | 37200.37400.37500.38600.39600.41000.42000.85100 | **13th Floor** | 733.88d | 2026-06-19 | 2028-07-01 |  | start no earlier than 2026-06-19 | GC1 | 8807014 |
| 2289 | 37200.37400.37500.38600.39600.41000.42000.85100.1201700 | Block Work | 9d | 2026-06-19 | 2026-06-27 | 2273FS+0.25d |  | GC1 | 8838454 |
| 2290 | 37200.37400.37500.38600.39600.41000.42000.85100.1201800 | Door Frame Fixing | 7.88d | 2026-06-27 | 2026-07-04 | 2274, 2289 |  | GC1 | 8838464 |
| 2291 | 37200.37400.37500.38600.39600.41000.42000.85100.1201900 | Internal Plumbing Works | 11.25d | 2026-07-19 | 2026-07-29 | 2275, 2289 |  | GC1 | 8838474 |
| 2292 | 37200.37400.37500.38600.39600.41000.42000.85100.1202000 | Waterproofing | 13.5d | 2026-08-22 | 2026-09-03 | 2276, 2291 |  | GC1 | 8838484 |
| 2293 | 37200.37400.37500.38600.39600.41000.42000.85100.1202100 | Internal Plaster | 4.5d | 2026-07-05 | 2026-07-09 | 2277FS+0.25d, 2290FS+0.25d |  | GC1 | 8838494 |
| 2294 | 37200.37400.37500.38600.39600.41000.42000.85100.1202200 | IPS flooring work | 10.12d | 2026-09-03 | 2026-09-12 | 2278, 2290, 2292, 2293 |  | GC1 | 8838504 |
| 2295 | 37200.37400.37500.38600.39600.41000.42000.85100.1202300 | Toilet dado work | 9d | 2027-05-28 | 2027-06-05 | 2279, 2292, 2293 |  | GC1 | 8838514 |
| 2296 | 37200.37400.37500.38600.39600.41000.42000.85100.1202400 | Toilet flooring work | 7.88d | 2027-06-05 | 2027-06-12 | 2280, 2295 |  | GC1 | 8838524 |
| 2297 | 37200.37400.37500.38600.39600.41000.42000.85100.1202500 | Living dinning flooring | 10.12d | 2027-06-12 | 2027-06-21 | 2281, 2290, 2296 |  | GC1 | 8838534 |
| 2298 | 37200.37400.37500.38600.39600.41000.42000.85100.1202600 | Aluminium door-window fixing | 11.25d | 2028-06-21 | 2028-07-01 | 2282, 2294, 2297 |  | GC1 | 8838544 |
| 2299 | 37200.37400.37500.38600.39600.41000.42000.85100.1202700 | Putty primer coat | 6.75d | 2027-06-21 | 2027-06-27 | 2283, 2297 |  | GC1 | 8838554 |
| 2300 | 37200.37400.37500.38600.39600.41000.42000.85100.1202800 | Door shutter fixing | 9d | 2027-06-21 | 2027-06-29 | 2284, 2297 |  | GC1 | 8838564 |
| 2301 | 37200.37400.37500.38600.39600.41000.42000.85100.1202900 | Electrical wiring work | 13.5d | 2027-08-21 | 2027-09-02 | 2285, 2300 |  | GC1 | 8838574 |
| 2302 | 37200.37400.37500.38600.39600.41000.42000.85100.1203000 | Painting 1st coat | 13.5d | 2027-09-05 | 2027-09-17 | 2286, 2299, 2300, 2301 |  | GC1 | 8838584 |
| 2303 | 37200.37400.37500.38600.39600.41000.42000.85100.1203100 | False ceiling | 11.25d | 2027-09-17 | 2027-09-27 | 2287, 2302 |  | GC1 | 8838594 |
| 2304 | 37200.37400.37500.38600.39600.41000.42000.85200 | **14th Floor** | 735.88d | 2026-06-28 | 2028-07-11 |  | start no earlier than 2026-06-28 | GC1 | 8807024 |
| 2305 | 37200.37400.37500.38600.39600.41000.42000.85200.1203200 | Block Work | 9d | 2026-06-28 | 2026-07-06 | 2289FS+0.25d |  | GC1 | 8838604 |
| 2306 | 37200.37400.37500.38600.39600.41000.42000.85200.1203300 | Door Frame Fixing | 7.88d | 2026-07-06 | 2026-07-13 | 2290, 2305 |  | GC1 | 8838614 |
| 2307 | 37200.37400.37500.38600.39600.41000.42000.85200.1203400 | Internal Plumbing Works | 11.25d | 2026-07-29 | 2026-08-08 | 2291, 2305 |  | GC1 | 8838624 |
| 2308 | 37200.37400.37500.38600.39600.41000.42000.85200.1203500 | Waterproofing | 13.5d | 2026-09-03 | 2026-09-15 | 2292, 2307 |  | GC1 | 8838634 |
| 2309 | 37200.37400.37500.38600.39600.41000.42000.85200.1203600 | Internal Plaster | 4.5d | 2026-07-13 | 2026-07-17 | 2293FS+0.25d, 2306FS+0.25d |  | GC1 | 8838644 |
| 2310 | 37200.37400.37500.38600.39600.41000.42000.85200.1203700 | IPS flooring work | 10.12d | 2026-09-15 | 2026-09-24 | 2294, 2306, 2307, 2308 |  | GC1 | 8838654 |
| 2311 | 37200.37400.37500.38600.39600.41000.42000.85200.1203800 | Toilet dado work | 9d | 2027-06-05 | 2027-06-13 | 2295, 2308, 2309 |  | GC1 | 8838664 |
| 2312 | 37200.37400.37500.38600.39600.41000.42000.85200.1203900 | Toilet flooring work | 7.88d | 2027-06-13 | 2027-06-20 | 2296, 2311 |  | GC1 | 8838674 |
| 2313 | 37200.37400.37500.38600.39600.41000.42000.85200.1204000 | Living dinning flooring | 10.12d | 2027-06-21 | 2027-06-30 | 2297, 2306, 2312 |  | GC1 | 8838684 |
| 2314 | 37200.37400.37500.38600.39600.41000.42000.85200.1204100 | Aluminium door-window fixing | 11.25d | 2028-07-01 | 2028-07-11 | 2298, 2310, 2313 |  | GC1 | 8838694 |
| 2315 | 37200.37400.37500.38600.39600.41000.42000.85200.1204200 | Putty primer coat | 6.75d | 2027-06-30 | 2027-07-06 | 2299, 2313 |  | GC1 | 8838704 |
| 2316 | 37200.37400.37500.38600.39600.41000.42000.85200.1204300 | Door shutter fixing | 9d | 2027-06-30 | 2027-07-08 | 2300, 2313 |  | GC1 | 8838714 |
| 2317 | 37200.37400.37500.38600.39600.41000.42000.85200.1204400 | Electrical wiring work | 13.5d | 2027-09-02 | 2027-09-14 | 2301, 2316 |  | GC1 | 8838724 |
| 2318 | 37200.37400.37500.38600.39600.41000.42000.85200.1204500 | Painting 1st coat | 13.5d | 2027-09-17 | 2027-09-29 | 2302, 2315, 2316, 2317 |  | GC1 | 8838734 |
| 2319 | 37200.37400.37500.38600.39600.41000.42000.85200.1204600 | False ceiling | 11.25d | 2027-09-29 | 2027-10-09 | 2303, 2318 |  | GC1 | 8838744 |

| ID | WBS | Task | Duration | Start | Finish | Predecessors | Constraint | Calendar | Unique_Task_ID |
| --- | --- | --- | --- | --- | --- | --- | --- | --- | --- |
| 2320 | 37200.37400.37500.38600.39600.41000.42000.85300 | **15th Floor** | 737.88d | 2026-07-06 | 2028-07-21 |  | start no earlier than 2026-07-06 | GC1 | 8807034 |
| 2321 | 37200.37400.37500.38600.39600.41000.42000.85300.1204700 | Block Work | 9d | 2026-07-06 | 2026-07-14 | 2305FS+0.25d |  | GC1 | 8838754 |
| 2322 | 37200.37400.37500.38600.39600.41000.42000.85300.1204800 | Door Frame Fixing | 7.88d | 2026-07-14 | 2026-07-21 | 2306, 2321 |  | GC1 | 8838764 |
| 2323 | 37200.37400.37500.38600.39600.41000.42000.85300.1204900 | Internal Plumbing Works | 11.25d | 2026-08-08 | 2026-08-18 | 2307, 2321 |  | GC1 | 8838774 |
| 2324 | 37200.37400.37500.38600.39600.41000.42000.85300.1205000 | Waterproofing | 13.5d | 2026-09-15 | 2026-09-27 | 2308, 2323 |  | GC1 | 8838784 |
| 2325 | 37200.37400.37500.38600.39600.41000.42000.85300.1205100 | Internal Plaster | 4.5d | 2026-07-21 | 2026-07-25 | 2309FS+0.25d, 2322FS+0.25d |  | GC1 | 8838794 |
| 2326 | 37200.37400.37500.38600.39600.41000.42000.85300.1205200 | IPS flooring work | 10.12d | 2026-09-27 | 2026-10-06 | 2310, 2322, 2323, 2324 |  | GC1 | 8838804 |
| 2327 | 37200.37400.37500.38600.39600.41000.42000.85300.1205300 | Toilet dado work | 9d | 2027-06-13 | 2027-06-21 | 2311, 2324, 2325 |  | GC1 | 8838814 |
| 2328 | 37200.37400.37500.38600.39600.41000.42000.85300.1205400 | Toilet flooring work | 7.88d | 2027-06-21 | 2027-06-28 | 2312, 2327 |  | GC1 | 8838824 |
| 2329 | 37200.37400.37500.38600.39600.41000.42000.85300.1205500 | Living dinning flooring | 10.12d | 2027-06-30 | 2027-07-09 | 2313, 2322, 2328 |  | GC1 | 8838834 |
| 2330 | 37200.37400.37500.38600.39600.41000.42000.85300.1205600 | Aluminium door-window fixing | 11.25d | 2028-07-11 | 2028-07-21 | 2314, 2326, 2329 |  | GC1 | 8838844 |
| 2331 | 37200.37400.37500.38600.39600.41000.42000.85300.1205700 | Putty primer coat | 6.75d | 2027-07-09 | 2027-07-15 | 2315, 2329 |  | GC1 | 8838854 |
| 2332 | 37200.37400.37500.38600.39600.41000.42000.85300.1205800 | Door shutter fixing | 9d | 2027-07-09 | 2027-07-17 | 2316, 2329 |  | GC1 | 8838864 |
| 2333 | 37200.37400.37500.38600.39600.41000.42000.85300.1205900 | Electrical wiring work | 13.5d | 2027-09-14 | 2027-09-26 | 2317, 2332 |  | GC1 | 8838874 |
| 2334 | 37200.37400.37500.38600.39600.41000.42000.85300.1206000 | Painting 1st coat | 13.5d | 2027-09-29 | 2027-10-11 | 2318, 2331, 2332, 2333 |  | GC1 | 8838884 |
| 2335 | 37200.37400.37500.38600.39600.41000.42000.85300.1206100 | False ceiling | 11.25d | 2027-10-11 | 2027-10-21 | 2319, 2334 |  | GC1 | 8838894 |
| 2336 | 37200.37400.37500.38600.39600.41000.42000.85400 | **16th Floor** | 739.88d | 2026-07-14 | 2028-07-31 |  | start no earlier than 2026-07-14 | GC1 | 8807044 |
| 2337 | 37200.37400.37500.38600.39600.41000.42000.85400.1206200 | Block Work | 9d | 2026-07-14 | 2026-07-22 | 2321FS+0.25d |  | GC1 | 8838904 |
| 2338 | 37200.37400.37500.38600.39600.41000.42000.85400.1206300 | Door Frame Fixing | 10.12d | 2026-07-22 | 2026-07-31 | 2322, 2337 |  | GC1 | 8838914 |
| 2339 | 37200.37400.37500.38600.39600.41000.42000.85400.1206400 | Internal Plumbing Works | 11.25d | 2026-08-18 | 2026-08-28 | 2323, 2337 |  | GC1 | 8838924 |
| 2340 | 37200.37400.37500.38600.39600.41000.42000.85400.1206500 | Waterproofing | 13.5d | 2026-09-27 | 2026-10-09 | 2324, 2339 |  | GC1 | 8838934 |
| 2341 | 37200.37400.37500.38600.39600.41000.42000.85400.1206600 | Internal Plaster | 10.12d | 2026-10-09 | 2026-10-18 | 2325, 2338, 2339, 2340 |  | GC1 | 8838944 |
| 2342 | 37200.37400.37500.38600.39600.41000.42000.85400.1206700 | IPS flooring work | 10.12d | 2026-10-09 | 2026-10-18 | 2326, 2338, 2339, 2340 |  | GC1 | 8838954 |
| 2343 | 37200.37400.37500.38600.39600.41000.42000.85400.1206800 | Toilet dado work | 9d | 2027-06-21 | 2027-06-29 | 2327, 2340, 2341 |  | GC1 | 8838964 |
| 2344 | 37200.37400.37500.38600.39600.41000.42000.85400.1206900 | Toilet flooring work | 7.88d | 2027-06-29 | 2027-07-06 | 2328, 2343 |  | GC1 | 8838974 |
| 2345 | 37200.37400.37500.38600.39600.41000.42000.85400.1207000 | Living dinning flooring | 10.12d | 2027-07-09 | 2027-07-18 | 2329, 2338, 2344 |  | GC1 | 8838984 |
| 2346 | 37200.37400.37500.38600.39600.41000.42000.85400.1207100 | Aluminium door-window fixing | 11.25d | 2028-07-21 | 2028-07-31 | 2330, 2342, 2345 |  | GC1 | 8838994 |
| 2347 | 37200.37400.37500.38600.39600.41000.42000.85400.1207200 | Putty primer coat | 6.75d | 2027-07-18 | 2027-07-24 | 2331, 2345 |  | GC1 | 8839004 |
| 2348 | 37200.37400.37500.38600.39600.41000.42000.85400.1207300 | Door shutter fixing | 9d | 2027-07-18 | 2027-07-26 | 2332, 2345 |  | GC1 | 8839014 |
| 2349 | 37200.37400.37500.38600.39600.41000.42000.85400.1207400 | Electrical wiring work | 13.5d | 2027-09-26 | 2027-10-08 | 2333, 2348 |  | GC1 | 8839024 |
| 2350 | 37200.37400.37500.38600.39600.41000.42000.85400.1207500 | Painting 1st coat | 13.5d | 2027-10-11 | 2027-10-23 | 2334, 2347, 2348, 2349 |  | GC1 | 8839034 |
| 2351 | 37200.37400.37500.38600.39600.41000.42000.85400.1207600 | False ceiling | 11.25d | 2027-10-23 | 2027-12-17 | 2335, 2350 |  | GC1 | 8839044 |

| ID | WBS | Task | Duration | Start | Finish | Predecessors | Constraint | Calendar | Unique_Task_ID |
| --- | --- | --- | --- | --- | --- | --- | --- | --- | --- |
| 2352 | 37200.37400.37500.38600.39600.41000.42000.85500 | **17th Floor** | 668.5d | 2026-09-28 | 2028-08-12 |  | start no earlier than 2026-09-28 | GC1 | 8807054 |
| 2353 | 37200.37400.37500.38600.39600.41000.42000.85500.1207700 | Block Work | 9d | 2026-09-28 | 2026-10-05 | 2075, 2337 |  | GC1 | 8839054 |
| 2354 | 37200.37400.37500.38600.39600.41000.42000.85500.1207800 | Door Frame Fixing | 10.12d | 2026-10-06 | 2026-10-14 | 2338, 2353 |  | GC1 | 8839064 |
| 2355 | 37200.37400.37500.38600.39600.41000.42000.85500.1207900 | Internal Plumbing Works | 11.25d | 2026-10-06 | 2026-10-15 | 2339, 2353 |  | GC1 | 8839074 |
| 2356 | 37200.37400.37500.38600.39600.41000.42000.85500.1208000 | Waterproofing | 13.5d | 2026-10-16 | 2026-10-27 | 2340, 2355 |  | GC1 | 8839084 |
| 2357 | 37200.37400.37500.38600.39600.41000.42000.85500.1208100 | Internal Plaster | 10.12d | 2026-10-28 | 2026-12-20 | 2341, 2354, 2355, 2356 |  | GC1 | 8839094 |
| 2358 | 37200.37400.37500.38600.39600.41000.42000.85500.1208200 | IPS flooring work | 10.12d | 2026-10-28 | 2026-12-20 | 2342, 2354, 2355, 2356 |  | GC1 | 8839104 |
| 2359 | 37200.37400.37500.38600.39600.41000.42000.85500.1208300 | Toilet dado work | 9d | 2027-06-29 | 2027-07-07 | 2343, 2356, 2357 |  | GC1 | 8839114 |
| 2360 | 37200.37400.37500.38600.39600.41000.42000.85500.1208400 | Toilet flooring work | 7.88d | 2027-07-07 | 2027-07-14 | 2344, 2359 |  | GC1 | 8839124 |
| 2361 | 37200.37400.37500.38600.39600.41000.42000.85500.1208500 | Living dinning flooring | 13.5d | 2027-07-18 | 2027-07-30 | 2345, 2354, 2360 |  | GC1 | 8839134 |
| 2362 | 37200.37400.37500.38600.39600.41000.42000.85500.1208600 | Aluminium door-window fixing | 13.5d | 2028-07-31 | 2028-08-12 | 2346, 2358, 2361 |  | GC1 | 8839144 |
| 2363 | 37200.37400.37500.38600.39600.41000.42000.85500.1208700 | Putty primer coat | 6.75d | 2027-07-30 | 2027-08-05 | 2347, 2361 |  | GC1 | 8839154 |
| 2364 | 37200.37400.37500.38600.39600.41000.42000.85500.1208800 | Door shutter fixing | 9d | 2027-07-30 | 2027-08-07 | 2348, 2361 |  | GC1 | 8839164 |
| 2365 | 37200.37400.37500.38600.39600.41000.42000.85500.1208900 | Electrical wiring work | 13.5d | 2027-10-08 | 2027-10-20 | 2349, 2364 |  | GC1 | 8839174 |
| 2366 | 37200.37400.37500.38600.39600.41000.42000.85500.1209000 | Painting 1st coat | 13.5d | 2027-10-23 | 2027-12-19 | 2350, 2363, 2364, 2365 |  | GC1 | 8839184 |
| 2367 | 37200.37400.37500.38600.39600.41000.42000.85500.1209100 | False ceiling | 11.25d | 2027-12-19 | 2027-12-29 | 2351, 2366 |  | GC1 | 8839194 |
| 2368 | 37200.37400.37500.38600.39600.41000.42000.85600 | **18th Floor** | 669.62d | 2026-10-09 | 2028-08-24 |  | start no earlier than 2026-10-09 | GC1 | 8807064 |
| 2369 | 37200.37400.37500.38600.39600.41000.42000.85600.1209200 | Block Work | 9d | 2026-10-09 | 2026-10-16 | 2076, 2353 |  | GC1 | 8839204 |
| 2370 | 37200.37400.37500.38600.39600.41000.42000.85600.1209300 | Door Frame Fixing | 10.12d | 2026-10-17 | 2026-10-25 | 2354, 2369 |  | GC1 | 8839214 |
| 2371 | 37200.37400.37500.38600.39600.41000.42000.85600.1209400 | Internal Plumbing Works | 11.25d | 2026-10-17 | 2026-10-26 | 2355, 2369 |  | GC1 | 8839224 |
| 2372 | 37200.37400.37500.38600.39600.41000.42000.85600.1209500 | Waterproofing | 13.5d | 2026-10-28 | 2026-12-23 | 2356, 2371 |  | GC1 | 8839234 |
| 2373 | 37200.37400.37500.38600.39600.41000.42000.85600.1209600 | Internal Plaster | 10.12d | 2026-12-24 | 2027-01-01 | 2357, 2370, 2371, 2372 |  | GC1 | 8839244 |
| 2374 | 37200.37400.37500.38600.39600.41000.42000.85600.1209700 | IPS flooring work | 10.12d | 2026-12-24 | 2027-01-01 | 2358, 2370, 2371, 2372 |  | GC1 | 8839254 |
| 2375 | 37200.37400.37500.38600.39600.41000.42000.85600.1209800 | Toilet dado work | 9d | 2027-07-07 | 2027-07-15 | 2359, 2372, 2373 |  | GC1 | 8839264 |
| 2376 | 37200.37400.37500.38600.39600.41000.42000.85600.1209900 | Toilet flooring work | 7.88d | 2027-07-15 | 2027-07-22 | 2360, 2375 |  | GC1 | 8839274 |
| 2377 | 37200.37400.37500.38600.39600.41000.42000.85600.1210000 | Living dinning flooring | 13.5d | 2027-07-30 | 2027-08-11 | 2361, 2370, 2376 |  | GC1 | 8839284 |
| 2378 | 37200.37400.37500.38600.39600.41000.42000.85600.1210100 | Aluminium door-window fixing | 13.5d | 2028-08-12 | 2028-08-24 | 2362, 2374, 2377 |  | GC1 | 8839294 |
| 2379 | 37200.37400.37500.38600.39600.41000.42000.85600.1210200 | Putty primer coat | 6.75d | 2027-08-11 | 2027-08-17 | 2363, 2377 |  | GC1 | 8839304 |
| 2380 | 37200.37400.37500.38600.39600.41000.42000.85600.1210300 | Door shutter fixing | 9d | 2027-08-11 | 2027-08-19 | 2364, 2377 |  | GC1 | 8839314 |
| 2381 | 37200.37400.37500.38600.39600.41000.42000.85600.1210400 | Electrical wiring work | 13.5d | 2027-10-20 | 2027-12-16 | 2365, 2380 |  | GC1 | 8839324 |
| 2382 | 37200.37400.37500.38600.39600.41000.42000.85600.1210500 | Painting 1st coat | 13.5d | 2027-12-19 | 2027-12-31 | 2366, 2379, 2380, 2381 |  | GC1 | 8839334 |
| 2383 | 37200.37400.37500.38600.39600.41000.42000.85600.1210600 | False ceiling | 11.25d | 2027-12-31 | 2028-01-10 | 2367, 2382 |  | GC1 | 8839344 |

| ID | WBS | Task | Duration | Start | Finish | Predecessors | Constraint | Calendar | Unique_Task_ID |
| --- | --- | --- | --- | --- | --- | --- | --- | --- | --- |
| 2384 | 37200.37400.37500.38600.39600.41000.42000.85700 | **19th Floor** | 670.75d | 2026-10-20 | 2028-09-05 |  | start no earlier than 2026-10-20 | GC1 | 8807074 |
| 2385 | 37200.37400.37500.38600.39600.41000.42000.85700.1210700 | Block Work | 9d | 2026-10-20 | 2026-10-27 | 2077, 2369 |  | GC1 | 8839354 |
| 2386 | 37200.37400.37500.38600.39600.41000.42000.85700.1210800 | Door Frame Fixing | 10.12d | 2026-10-28 | 2026-12-20 | 2370, 2385 |  | GC1 | 8839364 |
| 2387 | 37200.37400.37500.38600.39600.41000.42000.85700.1210900 | Internal Plumbing Works | 11.25d | 2026-10-28 | 2026-12-21 | 2371, 2385 |  | GC1 | 8839374 |
| 2388 | 37200.37400.37500.38600.39600.41000.42000.85700.1211000 | Waterproofing | 13.5d | 2026-12-24 | 2027-01-04 | 2372, 2387 |  | GC1 | 8839384 |
| 2389 | 37200.37400.37500.38600.39600.41000.42000.85700.1211100 | Internal Plaster | 10.12d | 2027-01-05 | 2027-01-13 | 2373, 2386, 2387, 2388 |  | GC1 | 8839394 |
| 2390 | 37200.37400.37500.38600.39600.41000.42000.85700.1211200 | IPS flooring work | 10.12d | 2027-01-14 | 2027-01-22 | 2374, 2386, 2388, 2389 |  | GC1 | 8839404 |
| 2391 | 37200.37400.37500.38600.39600.41000.42000.85700.1211300 | Toilet dado work | 9d | 2027-07-15 | 2027-07-23 | 2375, 2388, 2389 |  | GC1 | 8839414 |
| 2392 | 37200.37400.37500.38600.39600.41000.42000.85700.1211400 | Toilet flooring work | 7.88d | 2027-07-23 | 2027-07-30 | 2376, 2391 |  | GC1 | 8839424 |
| 2393 | 37200.37400.37500.38600.39600.41000.42000.85700.1211500 | Living dinning flooring | 13.5d | 2027-08-11 | 2027-08-23 | 2377, 2386, 2392 |  | GC1 | 8839434 |
| 2394 | 37200.37400.37500.38600.39600.41000.42000.85700.1211600 | Aluminium door-window fixing | 13.5d | 2028-08-24 | 2028-09-05 | 2378, 2390, 2393 |  | GC1 | 8839444 |
| 2395 | 37200.37400.37500.38600.39600.41000.42000.85700.1211700 | Putty primer coat | 6.75d | 2027-08-23 | 2027-08-29 | 2379, 2393 |  | GC1 | 8839454 |
| 2396 | 37200.37400.37500.38600.39600.41000.42000.85700.1211800 | Door shutter fixing | 9d | 2027-08-23 | 2027-08-31 | 2380, 2393 |  | GC1 | 8839464 |
| 2397 | 37200.37400.37500.38600.39600.41000.42000.85700.1211900 | Electrical wiring work | 13.5d | 2027-12-16 | 2027-12-28 | 2381, 2396 |  | GC1 | 8839474 |
| 2398 | 37200.37400.37500.38600.39600.41000.42000.85700.1212000 | Painting 1st coat | 13.5d | 2027-12-31 | 2028-01-12 | 2382, 2395, 2396, 2397 |  | GC1 | 8839484 |
| 2399 | 37200.37400.37500.38600.39600.41000.42000.85700.1212100 | False ceiling | 11.25d | 2028-01-12 | 2028-01-22 | 2383, 2398 |  | GC1 | 8839494 |
| 2400 | 37200.37400.37500.38600.39600.41000.42000.85800 | **20th Floor** | 671.88d | 2026-10-31 | 2028-09-17 |  | start no earlier than 2026-10-31 | GC1 | 8807084 |
| 2401 | 37200.37400.37500.38600.39600.41000.42000.85800.1212200 | Block Work | 9d | 2026-10-31 | 2026-12-22 | 2078, 2385 |  | GC1 | 8839504 |
| 2402 | 37200.37400.37500.38600.39600.41000.42000.85800.1212300 | Door Frame Fixing | 10.12d | 2026-12-23 | 2026-12-31 | 2386, 2401 |  | GC1 | 8839514 |
| 2403 | 37200.37400.37500.38600.39600.41000.42000.85800.1212400 | Internal Plumbing Works | 11.25d | 2026-12-23 | 2027-01-01 | 2387, 2401 |  | GC1 | 8839524 |
| 2404 | 37200.37400.37500.38600.39600.41000.42000.85800.1212500 | Waterproofing | 13.5d | 2027-01-05 | 2027-01-16 | 2388, 2403 |  | GC1 | 8839534 |
| 2405 | 37200.37400.37500.38600.39600.41000.42000.85800.1212600 | Internal Plaster | 10.12d | 2027-01-17 | 2027-01-25 | 2389, 2402, 2403, 2404 |  | GC1 | 8839544 |
| 2406 | 37200.37400.37500.38600.39600.41000.42000.85800.1212700 | IPS flooring work | 10.12d | 2027-01-26 | 2027-02-03 | 2390, 2402, 2404, 2405 |  | GC1 | 8839554 |
| 2407 | 37200.37400.37500.38600.39600.41000.42000.85800.1212800 | Toilet dado work | 9d | 2027-07-23 | 2027-07-31 | 2391, 2404, 2405 |  | GC1 | 8839564 |
| 2408 | 37200.37400.37500.38600.39600.41000.42000.85800.1212900 | Toilet flooring work | 7.88d | 2027-07-31 | 2027-08-07 | 2392, 2407 |  | GC1 | 8839574 |
| 2409 | 37200.37400.37500.38600.39600.41000.42000.85800.1213000 | Living dinning flooring | 13.5d | 2027-08-23 | 2027-09-04 | 2393, 2402, 2408 |  | GC1 | 8839584 |
| 2410 | 37200.37400.37500.38600.39600.41000.42000.85800.1213100 | Aluminium door-window fixing | 13.5d | 2028-09-05 | 2028-09-17 | 2394, 2406, 2409 |  | GC1 | 8839594 |
| 2411 | 37200.37400.37500.38600.39600.41000.42000.85800.1213200 | Putty primer coat | 6.75d | 2027-09-04 | 2027-09-10 | 2395, 2409 |  | GC1 | 8839604 |
| 2412 | 37200.37400.37500.38600.39600.41000.42000.85800.1213300 | Door shutter fixing | 9d | 2027-09-04 | 2027-09-12 | 2396, 2409 |  | GC1 | 8839614 |
| 2413 | 37200.37400.37500.38600.39600.41000.42000.85800.1213400 | Electrical wiring work | 13.5d | 2027-12-28 | 2028-01-09 | 2397, 2412 |  | GC1 | 8839624 |
| 2414 | 37200.37400.37500.38600.39600.41000.42000.85800.1213500 | Painting 1st coat | 13.5d | 2028-01-12 | 2028-01-24 | 2398, 2411, 2412, 2413 |  | GC1 | 8839634 |
| 2415 | 37200.37400.37500.38600.39600.41000.42000.85800.1213600 | False ceiling | 11.25d | 2028-01-24 | 2028-02-03 | 2399, 2414 |  | GC1 | 8839644 |

| ID | WBS | Task | Duration | Start | Finish | Predecessors | Constraint | Calendar | Unique_Task_ID |
| --- | --- | --- | --- | --- | --- | --- | --- | --- | --- |
| 2416 | 37200.37400.37500.38600.39600.41000.42000.85900 | **21st Floor** | 673d | 2026-12-26 | 2028-09-29 |  | start no earlier than 2026-12-26 | GC1 | 8807094 |
| 2417 | 37200.37400.37500.38600.39600.41000.42000.85900.1213700 | Block Work | 9d | 2026-12-26 | 2027-01-02 | 2079, 2401 |  | GC1 | 8839654 |
| 2418 | 37200.37400.37500.38600.39600.41000.42000.85900.1213800 | Door Frame Fixing | 10.12d | 2027-01-03 | 2027-01-11 | 2402, 2417 |  | GC1 | 8839664 |
| 2419 | 37200.37400.37500.38600.39600.41000.42000.85900.1213900 | Internal Plumbing Works | 11.25d | 2027-01-03 | 2027-01-12 | 2403, 2417 |  | GC1 | 8839674 |
| 2420 | 37200.37400.37500.38600.39600.41000.42000.85900.1214000 | Waterproofing | 13.5d | 2027-01-17 | 2027-01-28 | 2404, 2419 |  | GC1 | 8839684 |
| 2421 | 37200.37400.37500.38600.39600.41000.42000.85900.1214100 | Internal Plaster | 10.12d | 2027-01-29 | 2027-02-06 | 2405, 2418, 2419, 2420 |  | GC1 | 8839694 |
| 2422 | 37200.37400.37500.38600.39600.41000.42000.85900.1214200 | IPS flooring work | 10.12d | 2027-02-07 | 2027-02-15 | 2406, 2418, 2420, 2421 |  | GC1 | 8839704 |
| 2423 | 37200.37400.37500.38600.39600.41000.42000.85900.1214300 | Toilet dado work | 9d | 2027-07-31 | 2027-08-08 | 2407, 2420, 2421 |  | GC1 | 8839714 |
| 2424 | 37200.37400.37500.38600.39600.41000.42000.85900.1214400 | Toilet flooring work | 7.88d | 2027-08-08 | 2027-08-15 | 2408, 2423 |  | GC1 | 8839724 |
| 2425 | 37200.37400.37500.38600.39600.41000.42000.85900.1214500 | Living dinning flooring | 13.5d | 2027-09-04 | 2027-09-16 | 2409, 2418, 2424 |  | GC1 | 8839734 |
| 2426 | 37200.37400.37500.38600.39600.41000.42000.85900.1214600 | Aluminium door-window fixing | 13.5d | 2028-09-17 | 2028-09-29 | 2410, 2422, 2425 |  | GC1 | 8839744 |
| 2427 | 37200.37400.37500.38600.39600.41000.42000.85900.1214700 | Putty primer coat | 6.75d | 2027-09-16 | 2027-09-22 | 2411, 2425 |  | GC1 | 8839754 |
| 2428 | 37200.37400.37500.38600.39600.41000.42000.85900.1214800 | Door shutter fixing | 9d | 2027-09-16 | 2027-09-24 | 2412, 2425 |  | GC1 | 8839764 |
| 2429 | 37200.37400.37500.38600.39600.41000.42000.85900.1214900 | Electrical wiring work | 13.5d | 2028-01-09 | 2028-01-21 | 2413, 2428 |  | GC1 | 8839774 |
| 2430 | 37200.37400.37500.38600.39600.41000.42000.85900.1215000 | Painting 1st coat | 13.5d | 2028-01-24 | 2028-02-05 | 2414, 2427, 2428, 2429 |  | GC1 | 8839784 |
| 2431 | 37200.37400.37500.38600.39600.41000.42000.85900.1215100 | False ceiling | 11.25d | 2028-02-05 | 2028-02-15 | 2415, 2430 |  | GC1 | 8839794 |
| 2432 | 37200.37400.37500.38600.39600.41000.42000.86000 | **22nd Floor** | 674.12d | 2027-01-06 | 2028-10-11 |  | start no earlier than 2027-01-06 | GC1 | 8807104 |
| 2433 | 37200.37400.37500.38600.39600.41000.42000.86000.1215200 | Block Work | 9d | 2027-01-06 | 2027-01-13 | 2080, 2417 |  | GC1 | 8839804 |
| 2434 | 37200.37400.37500.38600.39600.41000.42000.86000.1215300 | Door Frame Fixing | 10.12d | 2027-01-14 | 2027-01-22 | 2418, 2433 |  | GC1 | 8839814 |
| 2435 | 37200.37400.37500.38600.39600.41000.42000.86000.1215400 | Internal Plumbing Works | 11.25d | 2027-01-14 | 2027-01-23 | 2419, 2433 |  | GC1 | 8839824 |
| 2436 | 37200.37400.37500.38600.39600.41000.42000.86000.1215500 | Waterproofing | 13.5d | 2027-01-29 | 2027-02-09 | 2420, 2435 |  | GC1 | 8839834 |
| 2437 | 37200.37400.37500.38600.39600.41000.42000.86000.1215600 | Internal Plaster | 10.12d | 2027-02-10 | 2027-02-18 | 2421, 2434, 2435, 2436 |  | GC1 | 8839844 |
| 2438 | 37200.37400.37500.38600.39600.41000.42000.86000.1215700 | IPS flooring work | 10.12d | 2027-02-19 | 2027-02-27 | 2422, 2434, 2436, 2437 |  | GC1 | 8839854 |
| 2439 | 37200.37400.37500.38600.39600.41000.42000.86000.1215800 | Toilet dado work | 9d | 2027-08-08 | 2027-08-16 | 2423, 2436, 2437 |  | GC1 | 8839864 |
| 2440 | 37200.37400.37500.38600.39600.41000.42000.86000.1215900 | Toilet flooring work | 7.88d | 2027-08-16 | 2027-08-23 | 2424, 2439 |  | GC1 | 8839874 |
| 2441 | 37200.37400.37500.38600.39600.41000.42000.86000.1216000 | Living dinning flooring | 13.5d | 2027-09-16 | 2027-09-28 | 2425, 2434, 2440 |  | GC1 | 8839884 |
| 2442 | 37200.37400.37500.38600.39600.41000.42000.86000.1216100 | Aluminium door-window fixing | 13.5d | 2028-09-29 | 2028-10-11 | 2426, 2438, 2441 |  | GC1 | 8839894 |
| 2443 | 37200.37400.37500.38600.39600.41000.42000.86000.1216200 | Putty primer coat | 6.75d | 2027-09-28 | 2027-10-04 | 2427, 2441 |  | GC1 | 8839904 |
| 2444 | 37200.37400.37500.38600.39600.41000.42000.86000.1216300 | Door shutter fixing | 9d | 2027-09-28 | 2027-10-06 | 2428, 2441 |  | GC1 | 8839914 |
| 2445 | 37200.37400.37500.38600.39600.41000.42000.86000.1216400 | Electrical wiring work | 13.5d | 2028-01-21 | 2028-02-02 | 2429, 2444 |  | GC1 | 8839924 |
| 2446 | 37200.37400.37500.38600.39600.41000.42000.86000.1216500 | Painting 1st coat | 13.5d | 2028-02-05 | 2028-02-17 | 2430, 2443, 2444, 2445 |  | GC1 | 8839934 |
| 2447 | 37200.37400.37500.38600.39600.41000.42000.86000.1216600 | False ceiling | 11.25d | 2028-02-17 | 2028-02-27 | 2431, 2446 |  | GC1 | 8839944 |

| ID | WBS | Task | Duration | Start | Finish | Predecessors | Constraint | Calendar | Unique_Task_ID |
| --- | --- | --- | --- | --- | --- | --- | --- | --- | --- |
| 2448 | 37200.37400.37500.38600.39600.41000.42000.86100 | **23rd Floor** | 678.62d | 2027-01-17 | 2028-10-26 |  | start no earlier than 2027-01-17 | GC1 | 8807114 |
| 2449 | 37200.37400.37500.38600.39600.41000.42000.86100.1216700 | Block Work | 9d | 2027-01-17 | 2027-01-24 | 2081, 2433 |  | GC1 | 8839954 |
| 2450 | 37200.37400.37500.38600.39600.41000.42000.86100.1216800 | Door Frame Fixing | 10.12d | 2027-01-25 | 2027-02-02 | 2434, 2449 |  | GC1 | 8839964 |
| 2451 | 37200.37400.37500.38600.39600.41000.42000.86100.1216900 | Internal Plumbing Works | 11.25d | 2027-01-25 | 2027-02-03 | 2435, 2449 |  | GC1 | 8839974 |
| 2452 | 37200.37400.37500.38600.39600.41000.42000.86100.1217000 | Waterproofing | 13.5d | 2027-02-10 | 2027-02-21 | 2436, 2451 |  | GC1 | 8839984 |
| 2453 | 37200.37400.37500.38600.39600.41000.42000.86100.1217100 | Internal Plaster | 10.12d | 2027-02-22 | 2027-03-02 | 2437, 2450, 2451, 2452 |  | GC1 | 8839994 |
| 2454 | 37200.37400.37500.38600.39600.41000.42000.86100.1217200 | IPS flooring work | 10.12d | 2027-03-03 | 2027-03-11 | 2438, 2450, 2452, 2453 |  | GC1 | 8840004 |
| 2455 | 37200.37400.37500.38600.39600.41000.42000.86100.1217300 | Toilet dado work | 9d | 2027-08-16 | 2027-08-24 | 2439, 2452, 2453 |  | GC1 | 8840014 |
| 2456 | 37200.37400.37500.38600.39600.41000.42000.86100.1217400 | Toilet flooring work | 7.88d | 2027-08-24 | 2027-08-31 | 2440, 2455 |  | GC1 | 8840024 |
| 2457 | 37200.37400.37500.38600.39600.41000.42000.86100.1217500 | Living dinning flooring | 16.88d | 2027-09-28 | 2027-10-13 | 2441, 2450, 2456 |  | GC1 | 8840034 |
| 2458 | 37200.37400.37500.38600.39600.41000.42000.86100.1217600 | Aluminium door-window fixing | 16.88d | 2028-10-11 | 2028-10-26 | 2442, 2454, 2457 |  | GC1 | 8840044 |
| 2459 | 37200.37400.37500.38600.39600.41000.42000.86100.1217700 | Putty primer coat | 6.75d | 2027-10-13 | 2027-10-19 | 2443, 2457 |  | GC1 | 8840054 |
| 2460 | 37200.37400.37500.38600.39600.41000.42000.86100.1217800 | Door shutter fixing | 9d | 2027-10-13 | 2027-10-21 | 2444, 2457 |  | GC1 | 8840064 |
| 2461 | 37200.37400.37500.38600.39600.41000.42000.86100.1217900 | Electrical wiring work | 13.5d | 2028-02-02 | 2028-02-14 | 2445, 2460 |  | GC1 | 8840074 |
| 2462 | 37200.37400.37500.38600.39600.41000.42000.86100.1218000 | Painting 1st coat | 13.5d | 2028-02-17 | 2028-02-29 | 2446, 2459, 2460, 2461 |  | GC1 | 8840084 |
| 2463 | 37200.37400.37500.38600.39600.41000.42000.86100.1218100 | False ceiling | 11.25d | 2028-02-29 | 2028-03-10 | 2447, 2462 |  | GC1 | 8840094 |
| 2464 | 37200.37400.37500.38600.39600.41000.42000.86200 | **24th Floor** | 683.12d | 2027-01-28 | 2028-11-10 |  | start no earlier than 2027-01-28 | GC1 | 8807124 |
| 2465 | 37200.37400.37500.38600.39600.41000.42000.86200.1218200 | Block Work | 9d | 2027-01-28 | 2027-02-04 | 2082, 2449 |  | GC1 | 8840104 |
| 2466 | 37200.37400.37500.38600.39600.41000.42000.86200.1218300 | Door Frame Fixing | 10.12d | 2027-02-05 | 2027-02-13 | 2450, 2465 |  | GC1 | 8840114 |
| 2467 | 37200.37400.37500.38600.39600.41000.42000.86200.1218400 | Internal Plumbing Works | 11.25d | 2027-02-05 | 2027-02-14 | 2451, 2465 |  | GC1 | 8840124 |
| 2468 | 37200.37400.37500.38600.39600.41000.42000.86200.1218500 | Waterproofing | 13.5d | 2027-02-22 | 2027-03-05 | 2452, 2467 |  | GC1 | 8840134 |
| 2469 | 37200.37400.37500.38600.39600.41000.42000.86200.1218600 | Internal Plaster | 10.12d | 2027-03-06 | 2027-03-14 | 2453, 2466, 2467, 2468 |  | GC1 | 8840144 |
| 2470 | 37200.37400.37500.38600.39600.41000.42000.86200.1218700 | IPS flooring work | 10.12d | 2027-03-15 | 2027-03-23 | 2454, 2466, 2468, 2469 |  | GC1 | 8840154 |
| 2471 | 37200.37400.37500.38600.39600.41000.42000.86200.1218800 | Toilet dado work | 9d | 2027-08-24 | 2027-09-01 | 2455, 2468, 2469 |  | GC1 | 8840164 |
| 2472 | 37200.37400.37500.38600.39600.41000.42000.86200.1218900 | Toilet flooring work | 7.88d | 2027-09-01 | 2027-09-08 | 2456, 2471 |  | GC1 | 8840174 |
| 2473 | 37200.37400.37500.38600.39600.41000.42000.86200.1219000 | Living dinning flooring | 16.88d | 2027-10-13 | 2027-10-28 | 2457, 2466, 2472 |  | GC1 | 8840184 |
| 2474 | 37200.37400.37500.38600.39600.41000.42000.86200.1219100 | Aluminium door-window fixing | 16.88d | 2028-10-26 | 2028-11-10 | 2458, 2470, 2473 |  | GC1 | 8840194 |
| 2475 | 37200.37400.37500.38600.39600.41000.42000.86200.1219200 | Putty primer coat | 6.75d | 2027-10-28 | 2027-12-18 | 2459, 2473 |  | GC1 | 8840204 |
| 2476 | 37200.37400.37500.38600.39600.41000.42000.86200.1219300 | Door shutter fixing | 9d | 2027-10-28 | 2027-12-20 | 2460, 2473 |  | GC1 | 8840214 |
| 2477 | 37200.37400.37500.38600.39600.41000.42000.86200.1219400 | Electrical wiring work | 13.5d | 2028-02-14 | 2028-02-26 | 2461, 2476 |  | GC1 | 8840224 |
| 2478 | 37200.37400.37500.38600.39600.41000.42000.86200.1219500 | Painting 1st coat | 13.5d | 2028-02-29 | 2028-03-12 | 2462, 2475, 2476, 2477 |  | GC1 | 8840234 |
| 2479 | 37200.37400.37500.38600.39600.41000.42000.86200.1219600 | False ceiling | 11.25d | 2028-03-12 | 2028-03-22 | 2463, 2478 |  | GC1 | 8840244 |

| ID | WBS | Task | Duration | Start | Finish | Predecessors | Constraint | Calendar | Unique_Task_ID |
| --- | --- | --- | --- | --- | --- | --- | --- | --- | --- |
| 2480 | 37200.37400.37500.38600.39600.41000.42000.86300 | **25th Floor** | 687.62d | 2027-02-08 | 2028-11-25 |  | start no earlier than 2027-02-08 | GC1 | 8807134 |
| 2481 | 37200.37400.37500.38600.39600.41000.42000.86300.1219700 | Block Work | 9d | 2027-02-08 | 2027-02-15 | 2083, 2465 |  | GC1 | 8840254 |
| 2482 | 37200.37400.37500.38600.39600.41000.42000.86300.1219800 | Door Frame Fixing | 10.12d | 2027-02-16 | 2027-02-24 | 2466, 2481 |  | GC1 | 8840264 |
| 2483 | 37200.37400.37500.38600.39600.41000.42000.86300.1219900 | Internal Plumbing Works | 11.25d | 2027-02-16 | 2027-02-25 | 2467, 2481 |  | GC1 | 8840274 |
| 2484 | 37200.37400.37500.38600.39600.41000.42000.86300.1220000 | Waterproofing | 13.5d | 2027-03-06 | 2027-03-17 | 2468, 2483 |  | GC1 | 8840284 |
| 2485 | 37200.37400.37500.38600.39600.41000.42000.86300.1220100 | Internal Plaster | 10.12d | 2027-03-18 | 2027-03-26 | 2469, 2482, 2483, 2484 |  | GC1 | 8840294 |
| 2486 | 37200.37400.37500.38600.39600.41000.42000.86300.1220200 | IPS flooring work | 10.12d | 2027-03-27 | 2027-04-04 | 2470, 2482, 2484, 2485 |  | GC1 | 8840304 |
| 2487 | 37200.37400.37500.38600.39600.41000.42000.86300.1220300 | Toilet dado work | 9d | 2027-09-01 | 2027-09-09 | 2471, 2484, 2485 |  | GC1 | 8840314 |
| 2488 | 37200.37400.37500.38600.39600.41000.42000.86300.1220400 | Toilet flooring work | 7.88d | 2027-09-09 | 2027-09-16 | 2472, 2487 |  | GC1 | 8840324 |
| 2489 | 37200.37400.37500.38600.39600.41000.42000.86300.1220500 | Living dinning flooring | 16.88d | 2027-10-28 | 2027-12-27 | 2473, 2482, 2488 |  | GC1 | 8840334 |
| 2490 | 37200.37400.37500.38600.39600.41000.42000.86300.1220600 | Aluminium door-window fixing | 16.88d | 2028-11-10 | 2028-11-25 | 2474, 2486, 2489 |  | GC1 | 8840344 |
| 2491 | 37200.37400.37500.38600.39600.41000.42000.86300.1220700 | Putty primer coat | 6.75d | 2027-12-27 | 2028-01-02 | 2475, 2489 |  | GC1 | 8840354 |
| 2492 | 37200.37400.37500.38600.39600.41000.42000.86300.1220800 | Door shutter fixing | 9d | 2027-12-27 | 2028-01-04 | 2476, 2489 |  | GC1 | 8840364 |
| 2493 | 37200.37400.37500.38600.39600.41000.42000.86300.1220900 | Electrical wiring work | 13.5d | 2028-02-26 | 2028-03-09 | 2477, 2492 |  | GC1 | 8840374 |
| 2494 | 37200.37400.37500.38600.39600.41000.42000.86300.1221000 | Painting 1st coat | 13.5d | 2028-03-12 | 2028-03-24 | 2478, 2491, 2492, 2493 |  | GC1 | 8840384 |
| 2495 | 37200.37400.37500.38600.39600.41000.42000.86300.1221100 | False ceiling | 11.25d | 2028-03-24 | 2028-04-03 | 2479, 2494 |  | GC1 | 8840394 |
| 2496 | 37200.37400.37500.38600.39600.41000.42000.86400 | **26th Floor** | 692.12d | 2027-02-19 | 2028-12-10 |  | start no earlier than 2027-02-19 | GC1 | 8807144 |
| 2497 | 37200.37400.37500.38600.39600.41000.42000.86400.1221200 | Block Work | 9d | 2027-02-19 | 2027-02-26 | 2084, 2481 |  | GC1 | 8840404 |
| 2498 | 37200.37400.37500.38600.39600.41000.42000.86400.1221300 | Door Frame Fixing | 10.12d | 2027-02-27 | 2027-03-07 | 2482, 2497 |  | GC1 | 8840414 |
| 2499 | 37200.37400.37500.38600.39600.41000.42000.86400.1221400 | Internal Plumbing Works | 11.25d | 2027-02-27 | 2027-03-08 | 2483, 2497 |  | GC1 | 8840424 |
| 2500 | 37200.37400.37500.38600.39600.41000.42000.86400.1221500 | Waterproofing | 13.5d | 2027-03-18 | 2027-03-29 | 2484, 2499 |  | GC1 | 8840434 |
| 2501 | 37200.37400.37500.38600.39600.41000.42000.86400.1221600 | Internal Plaster | 10.12d | 2027-03-30 | 2027-04-07 | 2485, 2498, 2499, 2500 |  | GC1 | 8840444 |
| 2502 | 37200.37400.37500.38600.39600.41000.42000.86400.1221700 | IPS flooring work | 10.12d | 2027-04-08 | 2027-04-16 | 2486, 2498, 2500, 2501 |  | GC1 | 8840454 |
| 2503 | 37200.37400.37500.38600.39600.41000.42000.86400.1221800 | Toilet dado work | 9d | 2027-09-09 | 2027-09-17 | 2487, 2500, 2501 |  | GC1 | 8840464 |
| 2504 | 37200.37400.37500.38600.39600.41000.42000.86400.1221900 | Toilet flooring work | 7.88d | 2027-09-17 | 2027-09-24 | 2488, 2503 |  | GC1 | 8840474 |
| 2505 | 37200.37400.37500.38600.39600.41000.42000.86400.1222000 | Living dinning flooring | 16.88d | 2027-12-27 | 2028-01-11 | 2489, 2498, 2504 |  | GC1 | 8840484 |
| 2506 | 37200.37400.37500.38600.39600.41000.42000.86400.1222100 | Aluminium door-window fixing | 16.88d | 2028-11-25 | 2028-12-10 | 2490, 2502, 2505 |  | GC1 | 8840494 |
| 2507 | 37200.37400.37500.38600.39600.41000.42000.86400.1222200 | Putty primer coat | 6.75d | 2028-01-11 | 2028-01-17 | 2491, 2505 |  | GC1 | 8840504 |
| 2508 | 37200.37400.37500.38600.39600.41000.42000.86400.1222300 | Door shutter fixing | 9d | 2028-01-11 | 2028-01-19 | 2492, 2505 |  | GC1 | 8840514 |
| 2509 | 37200.37400.37500.38600.39600.41000.42000.86400.1222400 | Electrical wiring work | 13.5d | 2028-03-09 | 2028-03-21 | 2493, 2508 |  | GC1 | 8840524 |
| 2510 | 37200.37400.37500.38600.39600.41000.42000.86400.1222500 | Painting 1st coat | 13.5d | 2028-03-24 | 2028-04-05 | 2494, 2507, 2508, 2509 |  | GC1 | 8840534 |
| 2511 | 37200.37400.37500.38600.39600.41000.42000.86400.1222600 | False ceiling | 11.25d | 2028-04-05 | 2028-04-15 | 2495, 2510 |  | GC1 | 8840544 |

| ID | WBS | Task | Duration | Start | Finish | Predecessors | Constraint | Calendar | Unique_Task_ID |
| --- | --- | --- | --- | --- | --- | --- | --- | --- | --- |
| 2512 | 37200.37400.37500.38600.39600.41000.42000.86500 | **27th Floor** | 696.62d | 2027-03-02 | 2028-12-25 |  | start no earlier than 2027-03-02 | GC1 | 8807154 |
| 2513 | 37200.37400.37500.38600.39600.41000.42000.86500.1222700 | Block Work | 9d | 2027-03-02 | 2027-03-09 | 2085, 2497 |  | GC1 | 8840554 |
| 2514 | 37200.37400.37500.38600.39600.41000.42000.86500.1222800 | Door Frame Fixing | 10.12d | 2027-03-10 | 2027-03-18 | 2498, 2513 |  | GC1 | 8840564 |
| 2515 | 37200.37400.37500.38600.39600.41000.42000.86500.1222900 | Internal Plumbing Works | 11.25d | 2027-03-10 | 2027-03-19 | 2499, 2513 |  | GC1 | 8840574 |
| 2516 | 37200.37400.37500.38600.39600.41000.42000.86500.1223000 | Waterproofing | 13.5d | 2027-03-30 | 2027-04-10 | 2500, 2515 |  | GC1 | 8840584 |
| 2517 | 37200.37400.37500.38600.39600.41000.42000.86500.1223100 | Internal Plaster | 10.12d | 2027-04-11 | 2027-04-19 | 2501, 2514, 2515, 2516 |  | GC1 | 8840594 |
| 2518 | 37200.37400.37500.38600.39600.41000.42000.86500.1223200 | IPS flooring work | 10.12d | 2027-04-20 | 2027-04-28 | 2502, 2514, 2516, 2517 |  | GC1 | 8840604 |
| 2519 | 37200.37400.37500.38600.39600.41000.42000.86500.1223300 | Toilet dado work | 9d | 2027-09-17 | 2027-09-25 | 2503, 2516, 2517 |  | GC1 | 8840614 |
| 2520 | 37200.37400.37500.38600.39600.41000.42000.86500.1223400 | Toilet flooring work | 7.88d | 2027-09-25 | 2027-10-02 | 2504, 2519 |  | GC1 | 8840624 |
| 2521 | 37200.37400.37500.38600.39600.41000.42000.86500.1223500 | Living dinning flooring | 16.88d | 2028-01-11 | 2028-01-26 | 2505, 2514, 2520 |  | GC1 | 8840634 |
| 2522 | 37200.37400.37500.38600.39600.41000.42000.86500.1223600 | Aluminium door-window fixing | 16.88d | 2028-12-10 | 2028-12-25 | 2506, 2518, 2521 |  | GC1 | 8840644 |
| 2523 | 37200.37400.37500.38600.39600.41000.42000.86500.1223700 | Putty primer coat | 6.75d | 2028-01-26 | 2028-02-01 | 2507, 2521 |  | GC1 | 8840654 |
| 2524 | 37200.37400.37500.38600.39600.41000.42000.86500.1223800 | Door shutter fixing | 9d | 2028-01-26 | 2028-02-03 | 2508, 2521 |  | GC1 | 8840664 |
| 2525 | 37200.37400.37500.38600.39600.41000.42000.86500.1223900 | Electrical wiring work | 13.5d | 2028-03-21 | 2028-04-02 | 2509, 2524 |  | GC1 | 8840674 |
| 2526 | 37200.37400.37500.38600.39600.41000.42000.86500.1224000 | Painting 1st coat | 13.5d | 2028-04-05 | 2028-04-17 | 2510, 2523, 2524, 2525 |  | GC1 | 8840684 |
| 2527 | 37200.37400.37500.38600.39600.41000.42000.86500.1224100 | False ceiling | 11.25d | 2028-04-17 | 2028-04-27 | 2511, 2526 |  | GC1 | 8840694 |
| 2528 | 37200.37400.37500.38600.39600.41000.42000.86600 | **28th Floor** | 701.12d | 2027-03-13 | 2029-01-09 |  | start no earlier than 2027-03-13 | GC1 | 8807164 |
| 2529 | 37200.37400.37500.38600.39600.41000.42000.86600.1224200 | Block Work | 9d | 2027-03-13 | 2027-03-20 | 2086, 2513 |  | GC1 | 8840704 |
| 2530 | 37200.37400.37500.38600.39600.41000.42000.86600.1224300 | Door Frame Fixing | 10.12d | 2027-03-21 | 2027-03-29 | 2514, 2529 |  | GC1 | 8840714 |
| 2531 | 37200.37400.37500.38600.39600.41000.42000.86600.1224400 | Internal Plumbing Works | 11.25d | 2027-03-21 | 2027-03-30 | 2515, 2529 |  | GC1 | 8840724 |
| 2532 | 37200.37400.37500.38600.39600.41000.42000.86600.1224500 | Waterproofing | 13.5d | 2027-04-11 | 2027-04-22 | 2516, 2531 |  | GC1 | 8840734 |
| 2533 | 37200.37400.37500.38600.39600.41000.42000.86600.1224600 | Internal Plaster | 10.12d | 2027-04-23 | 2027-05-01 | 2517, 2530, 2531, 2532 |  | GC1 | 8840744 |
| 2534 | 37200.37400.37500.38600.39600.41000.42000.86600.1224700 | IPS flooring work | 10.12d | 2027-05-02 | 2027-05-10 | 2518, 2530, 2532, 2533 |  | GC1 | 8840754 |
| 2535 | 37200.37400.37500.38600.39600.41000.42000.86600.1224800 | Toilet dado work | 9d | 2027-09-25 | 2027-10-03 | 2519, 2532, 2533 |  | GC1 | 8840764 |
| 2536 | 37200.37400.37500.38600.39600.41000.42000.86600.1224900 | Toilet flooring work | 7.88d | 2027-10-03 | 2027-10-10 | 2520, 2535 |  | GC1 | 8840774 |
| 2537 | 37200.37400.37500.38600.39600.41000.42000.86600.1225000 | Living dinning flooring | 16.88d | 2028-01-26 | 2028-02-10 | 2521, 2530, 2536 |  | GC1 | 8840784 |
| 2538 | 37200.37400.37500.38600.39600.41000.42000.86600.1225100 | Aluminium door-window fixing | 16.88d | 2028-12-25 | 2029-01-09 | 2522, 2534, 2537 |  | GC1 | 8840794 |
| 2539 | 37200.37400.37500.38600.39600.41000.42000.86600.1225200 | Putty primer coat | 6.75d | 2028-02-10 | 2028-02-16 | 2523, 2537 |  | GC1 | 8840804 |
| 2540 | 37200.37400.37500.38600.39600.41000.42000.86600.1225300 | Door shutter fixing | 9d | 2028-02-10 | 2028-02-18 | 2524, 2537 |  | GC1 | 8840814 |
| 2541 | 37200.37400.37500.38600.39600.41000.42000.86600.1225400 | Electrical wiring work | 13.5d | 2028-04-02 | 2028-04-14 | 2525, 2540 |  | GC1 | 8840824 |
| 2542 | 37200.37400.37500.38600.39600.41000.42000.86600.1225500 | Painting 1st coat | 13.5d | 2028-04-17 | 2028-04-29 | 2526, 2539, 2540, 2541 |  | GC1 | 8840834 |
| 2543 | 37200.37400.37500.38600.39600.41000.42000.86600.1225600 | False ceiling | 11.25d | 2028-04-29 | 2028-05-09 | 2527, 2542 |  | GC1 | 8840844 |

| ID | WBS | Task | Duration | Start | Finish | Predecessors | Constraint | Calendar | Unique_Task_ID |
| --- | --- | --- | --- | --- | --- | --- | --- | --- | --- |
| 2544 | 37200.37400.37500.38600.39600.41000.42000.86700 | **29th Floor** | 705.62d | 2027-03-24 | 2029-01-24 |  | start no earlier than 2027-03-24 | GC1 | 8807174 |
| 2545 | 37200.37400.37500.38600.39600.41000.42000.86700.1225700 | Block Work | 9d | 2027-03-24 | 2027-03-31 | 2087, 2529 |  | GC1 | 8840854 |
| 2546 | 37200.37400.37500.38600.39600.41000.42000.86700.1225800 | Door Frame Fixing | 10.12d | 2027-04-01 | 2027-04-09 | 2530, 2545 |  | GC1 | 8840864 |
| 2547 | 37200.37400.37500.38600.39600.41000.42000.86700.1225900 | Internal Plumbing Works | 11.25d | 2027-04-01 | 2027-04-10 | 2531, 2545 |  | GC1 | 8840874 |
| 2548 | 37200.37400.37500.38600.39600.41000.42000.86700.1226000 | Waterproofing | 13.5d | 2027-04-23 | 2027-05-04 | 2532, 2547 |  | GC1 | 8840884 |
| 2549 | 37200.37400.37500.38600.39600.41000.42000.86700.1226100 | Internal Plaster | 10.12d | 2027-05-05 | 2027-05-13 | 2533, 2546, 2547, 2548 |  | GC1 | 8840894 |
| 2550 | 37200.37400.37500.38600.39600.41000.42000.86700.1226200 | IPS flooring work | 10.12d | 2027-05-14 | 2027-05-22 | 2534, 2546, 2548, 2549 |  | GC1 | 8840904 |
| 2551 | 37200.37400.37500.38600.39600.41000.42000.86700.1226300 | Toilet dado work | 9d | 2027-10-03 | 2027-10-11 | 2535, 2548, 2549 |  | GC1 | 8840914 |
| 2552 | 37200.37400.37500.38600.39600.41000.42000.86700.1226400 | Toilet flooring work | 7.88d | 2027-10-11 | 2027-10-18 | 2536, 2551 |  | GC1 | 8840924 |
| 2553 | 37200.37400.37500.38600.39600.41000.42000.86700.1226500 | Living dinning flooring | 16.88d | 2028-02-10 | 2028-02-25 | 2537, 2546, 2552 |  | GC1 | 8840934 |
| 2554 | 37200.37400.37500.38600.39600.41000.42000.86700.1226600 | Aluminium door-window fixing | 16.88d | 2029-01-09 | 2029-01-24 | 2538, 2550, 2553 |  | GC1 | 8840944 |
| 2555 | 37200.37400.37500.38600.39600.41000.42000.86700.1226700 | Putty primer coat | 6.75d | 2028-02-25 | 2028-03-02 | 2539, 2553 |  | GC1 | 8840954 |
| 2556 | 37200.37400.37500.38600.39600.41000.42000.86700.1226800 | Door shutter fixing | 9d | 2028-02-25 | 2028-03-04 | 2540, 2553 |  | GC1 | 8840964 |
| 2557 | 37200.37400.37500.38600.39600.41000.42000.86700.1226900 | Electrical wiring work | 13.5d | 2028-04-14 | 2028-04-26 | 2541, 2556 |  | GC1 | 8840974 |
| 2558 | 37200.37400.37500.38600.39600.41000.42000.86700.1227000 | Painting 1st coat | 13.5d | 2028-04-29 | 2028-05-11 | 2542, 2555, 2556, 2557 |  | GC1 | 8840984 |
| 2559 | 37200.37400.37500.38600.39600.41000.42000.86700.1227100 | False ceiling | 11.25d | 2028-05-11 | 2028-05-21 | 2543, 2558 |  | GC1 | 8840994 |
| 2560 | 37200.37400.37500.38600.39600.41000.42000.86800 | **30th Floor** | 710.12d | 2027-04-04 | 2029-02-08 |  | start no earlier than 2027-04-04 | GC1 | 8807184 |
| 2561 | 37200.37400.37500.38600.39600.41000.42000.86800.1227200 | Block Work | 9d | 2027-04-04 | 2027-04-11 | 2088, 2545 |  | GC1 | 8841004 |
| 2562 | 37200.37400.37500.38600.39600.41000.42000.86800.1227300 | Door Frame Fixing | 10.12d | 2027-04-12 | 2027-04-20 | 2546, 2561 |  | GC1 | 8841014 |
| 2563 | 37200.37400.37500.38600.39600.41000.42000.86800.1227400 | Internal Plumbing Works | 11.25d | 2027-04-12 | 2027-04-21 | 2547, 2561 |  | GC1 | 8841024 |
| 2564 | 37200.37400.37500.38600.39600.41000.42000.86800.1227500 | Waterproofing | 13.5d | 2027-05-05 | 2027-05-16 | 2548, 2563 |  | GC1 | 8841034 |
| 2565 | 37200.37400.37500.38600.39600.41000.42000.86800.1227600 | Internal Plaster | 10.12d | 2027-05-17 | 2027-05-25 | 2549, 2562, 2563, 2564 |  | GC1 | 8841044 |
| 2566 | 37200.37400.37500.38600.39600.41000.42000.86800.1227700 | IPS flooring work | 10.12d | 2027-05-26 | 2027-06-03 | 2550, 2562, 2564, 2565 |  | GC1 | 8841054 |
| 2567 | 37200.37400.37500.38600.39600.41000.42000.86800.1227800 | Toilet dado work | 9d | 2027-10-11 | 2027-10-19 | 2551, 2564, 2565 |  | GC1 | 8841064 |
| 2568 | 37200.37400.37500.38600.39600.41000.42000.86800.1227900 | Toilet flooring work | 7.88d | 2027-10-19 | 2027-10-26 | 2552, 2567 |  | GC1 | 8841074 |
| 2569 | 37200.37400.37500.38600.39600.41000.42000.86800.1228000 | Living dinning flooring | 16.88d | 2028-02-25 | 2028-03-11 | 2553, 2562, 2568 |  | GC1 | 8841084 |
| 2570 | 37200.37400.37500.38600.39600.41000.42000.86800.1228100 | Aluminium door-window fixing | 16.88d | 2029-01-24 | 2029-02-08 | 2554, 2566, 2569 |  | GC1 | 8841094 |
| 2571 | 37200.37400.37500.38600.39600.41000.42000.86800.1228200 | Putty primer coat | 6.75d | 2028-03-11 | 2028-03-17 | 2555, 2569 |  | GC1 | 8841104 |
| 2572 | 37200.37400.37500.38600.39600.41000.42000.86800.1228300 | Door shutter fixing | 9d | 2028-03-11 | 2028-03-19 | 2556, 2569 |  | GC1 | 8841114 |
| 2573 | 37200.37400.37500.38600.39600.41000.42000.86800.1228400 | Electrical wiring work | 16.88d | 2028-04-26 | 2028-05-11 | 2557, 2572 |  | GC1 | 8841124 |
| 2574 | 37200.37400.37500.38600.39600.41000.42000.86800.1228500 | Painting 1st coat | 16.88d | 2028-05-11 | 2028-05-26 | 2558, 2571, 2572, 2573 |  | GC1 | 8841134 |
| 2575 | 37200.37400.37500.38600.39600.41000.42000.86800.1228600 | False ceiling | 11.25d | 2028-05-26 | 2028-06-05 | 2559, 2574 |  | GC1 | 8841144 |

| ID | WBS | Task | Duration | Start | Finish | Predecessors | Constraint | Calendar | Unique_Task_ID |
| --- | --- | --- | --- | --- | --- | --- | --- | --- | --- |
| 2576 | 37200.37400.37500.38600.39600.41000.42000.86900 | **31st Floor** | 711.25d | 2027-04-15 | 2029-02-20 |  | start no earlier than 2027-04-15 | GC1 | 8807194 |
| 2577 | 37200.37400.37500.38600.39600.41000.42000.86900.1228700 | Block Work | 9d | 2027-04-15 | 2027-04-22 | 2089, 2561 |  | GC1 | 8841154 |
| 2578 | 37200.37400.37500.38600.39600.41000.42000.86900.1228800 | Door Frame Fixing | 10.12d | 2027-04-23 | 2027-05-01 | 2562, 2577 |  | GC1 | 8841164 |
| 2579 | 37200.37400.37500.38600.39600.41000.42000.86900.1228900 | Internal Plumbing Works | 11.25d | 2027-04-23 | 2027-05-02 | 2563, 2577 |  | GC1 | 8841174 |
| 2580 | 37200.37400.37500.38600.39600.41000.42000.86900.1229000 | Waterproofing | 11.25d | 2027-05-17 | 2027-05-26 | 2564, 2579 |  | GC1 | 8841184 |
| 2581 | 37200.37400.37500.38600.39600.41000.42000.86900.1229100 | Internal Plaster | 10.12d | 2027-05-27 | 2027-06-04 | 2565, 2578, 2579, 2580 |  | GC1 | 8841194 |
| 2582 | 37200.37400.37500.38600.39600.41000.42000.86900.1229200 | IPS flooring work | 10.12d | 2027-06-05 | 2027-06-13 | 2566, 2578, 2580, 2581 |  | GC1 | 8841204 |
| 2583 | 37200.37400.37500.38600.39600.41000.42000.86900.1229300 | Toilet dado work | 9d | 2027-10-19 | 2027-10-27 | 2567, 2580, 2581 |  | GC1 | 8841214 |
| 2584 | 37200.37400.37500.38600.39600.41000.42000.86900.1229400 | Toilet flooring work | 7.88d | 2027-10-27 | 2027-12-18 | 2568, 2583 |  | GC1 | 8841224 |
| 2585 | 37200.37400.37500.38600.39600.41000.42000.86900.1229500 | Living dinning flooring | 16.88d | 2028-03-11 | 2028-03-26 | 2569, 2578, 2584 |  | GC1 | 8841234 |
| 2586 | 37200.37400.37500.38600.39600.41000.42000.86900.1229600 | Aluminium door-window fixing | 13.5d | 2029-02-08 | 2029-02-20 | 2570, 2582, 2585 |  | GC1 | 8841244 |
| 2587 | 37200.37400.37500.38600.39600.41000.42000.86900.1229700 | Putty primer coat | 6.75d | 2028-03-26 | 2028-04-01 | 2571, 2585 |  | GC1 | 8841254 |
| 2588 | 37200.37400.37500.38600.39600.41000.42000.86900.1229800 | Door shutter fixing | 9d | 2028-03-26 | 2028-04-03 | 2572, 2585 |  | GC1 | 8841264 |
| 2589 | 37200.37400.37500.38600.39600.41000.42000.86900.1229900 | Electrical wiring work | 16.88d | 2028-05-11 | 2028-05-26 | 2573, 2588 |  | GC1 | 8841274 |
| 2590 | 37200.37400.37500.38600.39600.41000.42000.86900.1230000 | Painting 1st coat | 16.88d | 2028-05-26 | 2028-06-10 | 2574, 2587, 2588, 2589 |  | GC1 | 8841284 |
| 2591 | 37200.37400.37500.38600.39600.41000.42000.86900.1230100 | False ceiling | 11.25d | 2028-06-10 | 2028-06-20 | 2575, 2590 |  | GC1 | 8841294 |
| 2592 | 37200.37400.37500.38600.39600.41000.42000.87000 | **32nd Floor** | 715.75d | 2027-04-23 | 2029-03-04 |  | start no earlier than 2027-04-23 | GC1 | 8807204 |
| 2593 | 37200.37400.37500.38600.39600.41000.42000.87000.1230200 | Block Work | 9d | 2027-04-23 | 2027-04-30 | 2090, 2577 |  | GC1 | 8841304 |
| 2594 | 37200.37400.37500.38600.39600.41000.42000.87000.1230300 | Door Frame Fixing | 10.12d | 2027-05-02 | 2027-05-10 | 2578, 2593 |  | GC1 | 8841314 |
| 2595 | 37200.37400.37500.38600.39600.41000.42000.87000.1230400 | Internal Plumbing Works | 11.25d | 2027-05-03 | 2027-05-12 | 2579, 2593 |  | GC1 | 8841324 |
| 2596 | 37200.37400.37500.38600.39600.41000.42000.87000.1230500 | Waterproofing | 13.5d | 2027-05-13 | 2027-05-24 | 2595 |  | GC1 | 8841334 |
| 2597 | 37200.37400.37500.38600.39600.41000.42000.87000.1230600 | Internal Plaster | 10.12d | 2027-06-05 | 2027-06-13 | 2581, 2594, 2595, 2596 |  | GC1 | 8841344 |
| 2598 | 37200.37400.37500.38600.39600.41000.42000.87000.1230700 | IPS flooring work | 10.12d | 2027-06-14 | 2027-06-22 | 2582, 2594, 2596, 2597 |  | GC1 | 8841354 |
| 2599 | 37200.37400.37500.38600.39600.41000.42000.87000.1230800 | Toilet dado work | 9d | 2027-10-27 | 2027-12-19 | 2583, 2596, 2597 |  | GC1 | 8841364 |
| 2600 | 37200.37400.37500.38600.39600.41000.42000.87000.1230900 | Toilet flooring work | 7.88d | 2027-12-19 | 2027-12-26 | 2584, 2599 |  | GC1 | 8841374 |
| 2601 | 37200.37400.37500.38600.39600.41000.42000.87000.1231000 | Living dinning flooring | 16.88d | 2028-03-26 | 2028-04-10 | 2585, 2594, 2600 |  | GC1 | 8841384 |
| 2602 | 37200.37400.37500.38600.39600.41000.42000.87000.1231100 | Aluminium door-window fixing | 13.5d | 2029-02-20 | 2029-03-04 | 2586, 2598, 2601 |  | GC1 | 8841394 |
| 2603 | 37200.37400.37500.38600.39600.41000.42000.87000.1231200 | Putty primer coat | 6.75d | 2028-04-10 | 2028-04-16 | 2587, 2601 |  | GC1 | 8841404 |
| 2604 | 37200.37400.37500.38600.39600.41000.42000.87000.1231300 | Door shutter fixing | 9d | 2028-04-10 | 2028-04-18 | 2588, 2601 |  | GC1 | 8841414 |
| 2605 | 37200.37400.37500.38600.39600.41000.42000.87000.1231400 | Electrical wiring work | 16.88d | 2028-05-26 | 2028-06-10 | 2589, 2604 |  | GC1 | 8841424 |
| 2606 | 37200.37400.37500.38600.39600.41000.42000.87000.1231500 | Painting 1st coat | 16.88d | 2028-06-10 | 2028-06-25 | 2590, 2603, 2604, 2605 |  | GC1 | 8841434 |
| 2607 | 37200.37400.37500.38600.39600.41000.42000.87000.1231600 | False ceiling | 11.25d | 2028-06-25 | 2028-07-05 | 2591, 2606 |  | GC1 | 8841444 |

| ID | WBS | Task | Duration | Start | Finish | Predecessors | Constraint | Calendar | Unique_Task_ID |
| --- | --- | --- | --- | --- | --- | --- | --- | --- | --- |
| 2608 | 37200.37400.37500.38600.39600.41000.42000.87100 | **33rd Floor** | 723.62d | 2027-05-01 | 2029-03-19 |  | start no earlier than 2027-05-01 | GC1 | 8807214 |
| 2609 | 37200.37400.37500.38600.39600.41000.42000.87100.1231700 | Block Work | 9d | 2027-05-01 | 2027-05-08 | 2091, 2593 |  | GC1 | 8841454 |
| 2610 | 37200.37400.37500.38600.39600.41000.42000.87100.1231800 | Door Frame Fixing | 10.12d | 2027-05-11 | 2027-05-19 | 2594, 2609 |  | GC1 | 8841464 |
| 2611 | 37200.37400.37500.38600.39600.41000.42000.87100.1231900 | Internal Plumbing Works | 11.25d | 2027-05-13 | 2027-05-22 | 2595, 2609 |  | GC1 | 8841474 |
| 2612 | 37200.37400.37500.38600.39600.41000.42000.87100.1232000 | Waterproofing | 11.25d | 2027-05-25 | 2027-06-03 | 2596, 2611 |  | GC1 | 8841484 |
| 2613 | 37200.37400.37500.38600.39600.41000.42000.87100.1232100 | Internal Plaster | 9d | 2027-06-14 | 2027-06-21 | 2597, 2610, 2611, 2612 |  | GC1 | 8841494 |
| 2614 | 37200.37400.37500.38600.39600.41000.42000.87100.1232200 | IPS flooring work | 10.12d | 2027-06-23 | 2027-07-01 | 2598, 2610, 2612, 2613 |  | GC1 | 8841504 |
| 2615 | 37200.37400.37500.38600.39600.41000.42000.87100.1232300 | Toilet dado work | 9d | 2027-12-19 | 2027-12-27 | 2599, 2612, 2613 |  | GC1 | 8841514 |
| 2616 | 37200.37400.37500.38600.39600.41000.42000.87100.1232400 | Toilet flooring work | 7.88d | 2027-12-27 | 2028-01-03 | 2600, 2615 |  | GC1 | 8841524 |
| 2617 | 37200.37400.37500.38600.39600.41000.42000.87100.1232500 | Living dinning flooring | 13.5d | 2028-04-10 | 2028-04-22 | 2601, 2610, 2616 |  | GC1 | 8841534 |
| 2618 | 37200.37400.37500.38600.39600.41000.42000.87100.1232600 | Aluminium door-window fixing | 16.88d | 2029-03-04 | 2029-03-19 | 2602, 2614, 2617 |  | GC1 | 8841544 |
| 2619 | 37200.37400.37500.38600.39600.41000.42000.87100.1232700 | Putty primer coat | 6.75d | 2028-04-22 | 2028-04-28 | 2603, 2617 |  | GC1 | 8841554 |
| 2620 | 37200.37400.37500.38600.39600.41000.42000.87100.1232800 | Door shutter fixing | 9d | 2028-04-22 | 2028-04-30 | 2604, 2617 |  | GC1 | 8841564 |
| 2621 | 37200.37400.37500.38600.39600.41000.42000.87100.1232900 | Electrical wiring work | 13.5d | 2028-06-10 | 2028-06-22 | 2605, 2620 |  | GC1 | 8841574 |
| 2622 | 37200.37400.37500.38600.39600.41000.42000.87100.1233000 | Painting 1st coat | 13.5d | 2028-06-25 | 2028-07-07 | 2606, 2619, 2620, 2621 |  | GC1 | 8841584 |
| 2623 | 37200.37400.37500.38600.39600.41000.42000.87100.1233100 | False ceiling | 11.25d | 2028-07-07 | 2028-07-17 | 2607, 2622 |  | GC1 | 8841594 |
| 2624 | 37200.37400.37500.38600.39600.41000.42000.87200 | **34th Floor** | 731.5d | 2027-05-09 | 2029-04-03 |  | start no earlier than 2027-05-09 | GC1 | 8807224 |
| 2625 | 37200.37400.37500.38600.39600.41000.42000.87200.1233200 | Block Work | 9d | 2027-05-09 | 2027-05-16 | 2092, 2609 |  | GC1 | 8841604 |
| 2626 | 37200.37400.37500.38600.39600.41000.42000.87200.1233300 | Door Frame Fixing | 10.12d | 2027-05-20 | 2027-05-28 | 2610, 2625 |  | GC1 | 8841614 |
| 2627 | 37200.37400.37500.38600.39600.41000.42000.87200.1233400 | Internal Plumbing Works | 11.25d | 2027-05-23 | 2027-06-01 | 2611, 2625 |  | GC1 | 8841624 |
| 2628 | 37200.37400.37500.38600.39600.41000.42000.87200.1233500 | Waterproofing | 11.25d | 2027-06-04 | 2027-06-13 | 2612, 2627 |  | GC1 | 8841634 |
| 2629 | 37200.37400.37500.38600.39600.41000.42000.87200.1233600 | Internal Plaster | 9d | 2027-06-22 | 2027-06-29 | 2613, 2626, 2627, 2628 |  | GC1 | 8841644 |
| 2630 | 37200.37400.37500.38600.39600.41000.42000.87200.1233700 | IPS flooring work | 10.12d | 2027-07-02 | 2027-07-10 | 2614, 2626, 2628, 2629 |  | GC1 | 8841654 |
| 2631 | 37200.37400.37500.38600.39600.41000.42000.87200.1233800 | Toilet dado work | 9d | 2027-12-27 | 2028-01-04 | 2615, 2628, 2629 |  | GC1 | 8841664 |
| 2632 | 37200.37400.37500.38600.39600.41000.42000.87200.1233900 | Toilet flooring work | 7.88d | 2028-01-04 | 2028-01-11 | 2616, 2631 |  | GC1 | 8841674 |
| 2633 | 37200.37400.37500.38600.39600.41000.42000.87200.1234000 | Living dinning flooring | 13.5d | 2028-04-22 | 2028-05-04 | 2617, 2626, 2632 |  | GC1 | 8841684 |
| 2634 | 37200.37400.37500.38600.39600.41000.42000.87200.1234100 | Aluminium door-window fixing | 16.88d | 2029-03-19 | 2029-04-03 | 2618, 2630, 2633 |  | GC1 | 8841694 |
| 2635 | 37200.37400.37500.38600.39600.41000.42000.87200.1234200 | Putty primer coat | 6.75d | 2028-05-04 | 2028-05-10 | 2619, 2633 |  | GC1 | 8841704 |
| 2636 | 37200.37400.37500.38600.39600.41000.42000.87200.1234300 | Door shutter fixing | 9d | 2028-05-04 | 2028-05-12 | 2620, 2633 |  | GC1 | 8841714 |
| 2637 | 37200.37400.37500.38600.39600.41000.42000.87200.1234400 | Electrical wiring work | 13.5d | 2028-06-22 | 2028-07-04 | 2621, 2636 |  | GC1 | 8841724 |
| 2638 | 37200.37400.37500.38600.39600.41000.42000.87200.1234500 | Painting 1st coat | 13.5d | 2028-07-07 | 2028-07-19 | 2622, 2635, 2636, 2637 |  | GC1 | 8841734 |
| 2639 | 37200.37400.37500.38600.39600.41000.42000.87200.1234600 | False ceiling | 11.25d | 2028-07-19 | 2028-07-29 | 2623, 2638 |  | GC1 | 8841744 |

| ID | WBS | Task | Duration | Start | Finish | Predecessors | Constraint | Calendar | Unique_Task_ID |
| --- | --- | --- | --- | --- | --- | --- | --- | --- | --- |
| 2640 | 37200.37400.37500.38600.39600.41000.42000.87300 | **35th Floor** | 739.38d | 2027-05-17 | 2029-04-18 |  | start no earlier than 2027-05-17 | GC1 | 8807234 |
| 2641 | 37200.37400.37500.38600.39600.41000.42000.87300.1234700 | Block Work | 9d | 2027-05-17 | 2027-05-24 | 2093, 2625 |  | GC1 | 8841754 |
| 2642 | 37200.37400.37500.38600.39600.41000.42000.87300.1234800 | Door Frame Fixing | 10.12d | 2027-05-29 | 2027-06-06 | 2626, 2641 |  | GC1 | 8841764 |
| 2643 | 37200.37400.37500.38600.39600.41000.42000.87300.1234900 | Internal Plumbing Works | 10.12d | 2027-06-02 | 2027-06-10 | 2627, 2641 |  | GC1 | 8841774 |
| 2644 | 37200.37400.37500.38600.39600.41000.42000.87300.1235000 | Waterproofing | 11.25d | 2027-06-14 | 2027-06-23 | 2628, 2643 |  | GC1 | 8841784 |
| 2645 | 37200.37400.37500.38600.39600.41000.42000.87300.1235100 | Internal Plaster | 9d | 2027-07-27 | 2027-08-03 | 2050FF+135d, 2642FS+0.25d, 2643FS+0.25d, 2644FS+0.25d | start no earlier than 2027-06-24 | GC1 | 8841794 |
| 2646 | 37200.37400.37500.38600.39600.41000.42000.87300.1235200 | IPS flooring work | 10.12d | 2027-08-04 | 2027-08-12 | 2630, 2642, 2644, 2645 |  | GC1 | 8841804 |
| 2647 | 37200.37400.37500.38600.39600.41000.42000.87300.1235300 | Toilet dado work | 9d | 2028-01-04 | 2028-01-12 | 2631, 2644, 2645 |  | GC1 | 8841814 |
| 2648 | 37200.37400.37500.38600.39600.41000.42000.87300.1235400 | Toilet flooring work | 7.88d | 2028-01-12 | 2028-01-19 | 2632, 2647 |  | GC1 | 8841824 |
| 2649 | 37200.37400.37500.38600.39600.41000.42000.87300.1235500 | Living dinning flooring | 16.88d | 2028-05-04 | 2028-05-19 | 2633, 2642, 2648 |  | GC1 | 8841834 |
| 2650 | 37200.37400.37500.38600.39600.41000.42000.87300.1235600 | Aluminium door-window fixing | 16.88d | 2029-04-03 | 2029-04-18 | 2634, 2646, 2649 |  | GC1 | 8841844 |
| 2651 | 37200.37400.37500.38600.39600.41000.42000.87300.1235700 | Putty primer coat | 6.75d | 2028-05-19 | 2028-05-25 | 2635, 2649 |  | GC1 | 8841854 |
| 2652 | 37200.37400.37500.38600.39600.41000.42000.87300.1235800 | Door shutter fixing | 9d | 2028-05-19 | 2028-05-27 | 2636, 2649 |  | GC1 | 8841864 |
| 2653 | 37200.37400.37500.38600.39600.41000.42000.87300.1235900 | Electrical wiring work | 13.5d | 2028-07-04 | 2028-07-16 | 2637, 2652 |  | GC1 | 8841874 |
| 2654 | 37200.37400.37500.38600.39600.41000.42000.87300.1236000 | Painting 1st coat | 13.5d | 2028-07-19 | 2028-07-31 | 2638, 2651, 2652, 2653 |  | GC1 | 8841884 |
| 2655 | 37200.37400.37500.38600.39600.41000.42000.87300.1236100 | False ceiling | 11.25d | 2028-07-31 | 2028-08-10 | 2639, 2654 |  | GC1 | 8841894 |
| 2656 | 37200.37400.37500.38600.39600.41000.190600 | **Terrace Finishing** | 90d | 2027-04-06 | 2027-06-24 |  | start no earlier than 2027-04-06 | GC1 | 8810734 |
| 2657 | 37200.37400.37500.38600.39600.41000.190600.543300 | Terrace waterproofing | 45d | 2027-04-06 | 2027-05-15 | 2050 |  | GC1 | 8821514 |
| 2658 | 37200.37400.37500.38600.39600.41000.190600.543400 | Terrace finishing | 45d | 2027-05-16 | 2027-06-24 | 2657 |  | GC1 | 8821524 |
| 2659 | 37200.37400.37500.38600.39600.41000.100000 | **Common Area Finishing** | 331.88d | 2027-05-16 | 2028-04-19 |  | start no earlier than 2027-05-16 | GC1 | 8808054 |
| 2660 | 37200.37400.37500.38600.39600.41000.100000.543500 | Block Work | 45d | 2027-05-16 | 2027-06-24 | 2055 |  | GC1 | 8821534 |
| 2661 | 37200.37400.37500.38600.39600.41000.100000.543600 | Internal Plaster | 135d | 2027-06-25 | 2027-10-22 | 2666SS+22.5d |  | GC1 | 8821544 |
| 2662 | 37200.37400.37500.38600.39600.41000.100000.543700 | Staircase railing fixing | 168.75d | 2027-10-08 | 2028-04-19 | 2664SS+33.75d, 2663SS+33.75d |  | GC1 | 8821554 |
| 2663 | 37200.37400.37500.38600.39600.41000.100000.543800 | Main staircase flooring | 168.75d | 2027-09-08 | 2028-03-20 | 2664SS+16.88d |  | GC1 | 8821564 |
| 2664 | 37200.37400.37500.38600.39600.41000.100000.543900 | Fire staircase flooring | 168.75d | 2027-08-24 | 2028-03-05 | 2661SS+16.88d, 2668SS+33.75d |  | GC1 | 8821574 |
| 2665 | 37200.37400.37500.38600.39600.41000.100000.544000 | Fire door work | 67.5d | 2027-10-08 | 2028-01-20 | 2663SS+33.75d, 2664SS+33.75d |  | GC1 | 8821584 |
| 2666 | 37200.37400.37500.38600.39600.41000.100000.544100 | Electrical wiring work | 135d | 2027-06-05 | 2027-10-02 | 2660SS+22.5d |  | GC1 | 8821594 |
| 2667 | 37200.37400.37500.38600.39600.41000.100000.544200 | Lobby flooring | 168.75d | 2027-06-08 | 2027-12-20 | 2666SS+4.12d |  | GC1 | 8821604 |
| 2668 | 37200.37400.37500.38600.39600.41000.100000.544300 | Ceiling & wall putty-primer | 123.75d | 2027-07-25 | 2027-12-26 | 2661SS+33.75d |  | GC1 | 8821614 |
| 2669 | 37200.37400.37500.38600.39600.41000.100000.544400 | Ceiling & wall painting | 112.5d | 2027-08-14 | 2028-01-05 | 2668SS+22.5d |  | GC1 | 8821624 |
| 2670 | 37200.37400.37500.38600.39600.41000.100000.544500 | Light fixture supply & installation | 50.62d | 2027-10-13 | 2028-01-10 | 2669SS+67.5d |  | GC1 | 8821634 |

| ID | WBS | Task | Duration | Start | Finish | Predecessors | Constraint | Calendar | Unique_Task_ID |
| --- | --- | --- | --- | --- | --- | --- | --- | --- | --- |
| 2671 | 37200.37400.37500.38600.39600.41000.47000 | **Balcony Glass Railing** | 78.75d | 2027-12-30 | 2028-03-08 |  | start no earlier than 2027-12-30 | GC1 | 8806154 |
| 2672 | 37200.37400.37500.38600.39600.41000.47000.544600 | 1st Floor | 2.25d | 2027-12-30 | 2027-12-31 | 2740 |  | GC1 | 8821644 |
| 2673 | 37200.37400.37500.38600.39600.41000.47000.544700 | 2nd Floor | 2.25d | 2028-01-01 | 2028-01-02 | 2672 |  | GC1 | 8821654 |
| 2674 | 37200.37400.37500.38600.39600.41000.47000.544800 | 3rd Floor | 2.25d | 2028-01-03 | 2028-01-04 | 2673 |  | GC1 | 8821664 |
| 2675 | 37200.37400.37500.38600.39600.41000.47000.544900 | 4th Floor | 2.25d | 2028-01-05 | 2028-01-06 | 2674 |  | GC1 | 8821674 |
| 2676 | 37200.37400.37500.38600.39600.41000.47000.545000 | 5th Floor | 2.25d | 2028-01-07 | 2028-01-08 | 2675 |  | GC1 | 8821684 |
| 2677 | 37200.37400.37500.38600.39600.41000.47000.545100 | 6th Floor | 2.25d | 2028-01-09 | 2028-01-10 | 2676 |  | GC1 | 8821694 |
| 2678 | 37200.37400.37500.38600.39600.41000.47000.545200 | 7th Floor | 2.25d | 2028-01-11 | 2028-01-12 | 2677 |  | GC1 | 8821704 |
| 2679 | 37200.37400.37500.38600.39600.41000.47000.545300 | 8th Floor | 2.25d | 2028-01-13 | 2028-01-14 | 2678 |  | GC1 | 8821714 |
| 2680 | 37200.37400.37500.38600.39600.41000.47000.545400 | 9th Floor | 2.25d | 2028-01-15 | 2028-01-16 | 2679 |  | GC1 | 8821724 |
| 2681 | 37200.37400.37500.38600.39600.41000.47000.545500 | 10th Floor | 2.25d | 2028-01-17 | 2028-01-18 | 2680 |  | GC1 | 8821734 |
| 2682 | 37200.37400.37500.38600.39600.41000.47000.545600 | 11th Floor | 2.25d | 2028-01-19 | 2028-01-20 | 2681 |  | GC1 | 8821744 |
| 2683 | 37200.37400.37500.38600.39600.41000.47000.545700 | 12th Floor | 2.25d | 2028-01-21 | 2028-01-22 | 2682 |  | GC1 | 8821754 |
| 2684 | 37200.37400.37500.38600.39600.41000.47000.545800 | 13th Floor | 2.25d | 2028-01-23 | 2028-01-24 | 2683 |  | GC1 | 8821764 |
| 2685 | 37200.37400.37500.38600.39600.41000.47000.545900 | 14th Floor | 2.25d | 2028-01-25 | 2028-01-26 | 2684 |  | GC1 | 8821774 |
| 2686 | 37200.37400.37500.38600.39600.41000.47000.546000 | 15th Floor | 2.25d | 2028-01-27 | 2028-01-28 | 2685 |  | GC1 | 8821784 |
| 2687 | 37200.37400.37500.38600.39600.41000.47000.546100 | 16th Floor | 2.25d | 2028-01-29 | 2028-01-30 | 2686 |  | GC1 | 8821794 |
| 2688 | 37200.37400.37500.38600.39600.41000.47000.546200 | 17th Floor | 2.25d | 2028-01-31 | 2028-02-01 | 2687 |  | GC1 | 8821804 |
| 2689 | 37200.37400.37500.38600.39600.41000.47000.546300 | 18th Floor | 2.25d | 2028-02-02 | 2028-02-03 | 2688 |  | GC1 | 8821814 |
| 2690 | 37200.37400.37500.38600.39600.41000.47000.546400 | 19th Floor | 2.25d | 2028-02-04 | 2028-02-05 | 2689 |  | GC1 | 8821824 |
| 2691 | 37200.37400.37500.38600.39600.41000.47000.546500 | 20th Floor | 2.25d | 2028-02-06 | 2028-02-07 | 2690 |  | GC1 | 8821834 |
| 2692 | 37200.37400.37500.38600.39600.41000.47000.546600 | 21st Floor | 2.25d | 2028-02-08 | 2028-02-09 | 2691 |  | GC1 | 8821844 |
| 2693 | 37200.37400.37500.38600.39600.41000.47000.546700 | 22nd Floor | 2.25d | 2028-02-10 | 2028-02-11 | 2692 |  | GC1 | 8821854 |
| 2694 | 37200.37400.37500.38600.39600.41000.47000.546800 | 23rd Floor | 2.25d | 2028-02-12 | 2028-02-13 | 2693 |  | GC1 | 8821864 |
| 2695 | 37200.37400.37500.38600.39600.41000.47000.546900 | 24th Floor | 2.25d | 2028-02-14 | 2028-02-15 | 2694 |  | GC1 | 8821874 |
| 2696 | 37200.37400.37500.38600.39600.41000.47000.547000 | 25th Floor | 2.25d | 2028-02-16 | 2028-02-17 | 2695 |  | GC1 | 8821884 |
| 2697 | 37200.37400.37500.38600.39600.41000.47000.547100 | 26th Floor | 2.25d | 2028-02-18 | 2028-02-19 | 2696 |  | GC1 | 8821894 |
| 2698 | 37200.37400.37500.38600.39600.41000.47000.547200 | 27th Floor | 2.25d | 2028-02-20 | 2028-02-21 | 2697 |  | GC1 | 8821904 |
| 2699 | 37200.37400.37500.38600.39600.41000.47000.547300 | 28th Floor | 2.25d | 2028-02-22 | 2028-02-23 | 2698 |  | GC1 | 8821914 |
| 2700 | 37200.37400.37500.38600.39600.41000.47000.547400 | 29th Floor | 2.25d | 2028-02-24 | 2028-02-25 | 2699 |  | GC1 | 8821924 |
| 2701 | 37200.37400.37500.38600.39600.41000.47000.547500 | 30th Floor | 2.25d | 2028-02-26 | 2028-02-27 | 2700 |  | GC1 | 8821934 |
| 2702 | 37200.37400.37500.38600.39600.41000.47000.547600 | 31st Floor | 2.25d | 2028-02-28 | 2028-02-29 | 2701 |  | GC1 | 8821944 |
| 2703 | 37200.37400.37500.38600.39600.41000.47000.547700 | 32nd Floor | 2.25d | 2028-03-01 | 2028-03-02 | 2702 |  | GC1 | 8821954 |
| 2704 | 37200.37400.37500.38600.39600.41000.47000.547800 | 33rd Floor | 2.25d | 2028-03-03 | 2028-03-04 | 2703 |  | GC1 | 8821964 |
| 2705 | 37200.37400.37500.38600.39600.41000.47000.547900 | 34th Floor | 2.25d | 2028-03-05 | 2028-03-06 | 2704 |  | GC1 | 8821974 |
| 2706 | 37200.37400.37500.38600.39600.41000.47000.548000 | 35th Floor | 2.25d | 2028-03-07 | 2028-03-08 | 2705 |  | GC1 | 8821984 |

| ID | WBS | Task | Duration | Start | Finish | Predecessors | Constraint | Calendar | Unique_Task_ID |
| --- | --- | --- | --- | --- | --- | --- | --- | --- | --- |
| 2707 | 37200.37400.37500.38600.95900 | **MEP work** | 455.88d | 2027-05-16 | 2028-08-08 |  | start no earlier than 2027-05-16 | GC1 | 8807964 |
| 2708 | 37200.37400.37500.38600.95900.97100 | **Electrical work** | 270d | 2027-05-16 | 2028-02-24 |  | start no earlier than 2027-05-16 | GC1 | 8808034 |
| 2709 | 37200.37400.37500.38600.95900.97100.351500 | Cable Tray | 101.25d | 2027-05-16 | 2027-08-13 | 2055 |  | GC1 | 8813844 |
| 2710 | 37200.37400.37500.38600.95900.97100.351600 | Cable, main & sub main | 90d | 2027-06-30 | 2027-09-17 | 2709SS+50.62d |  | GC1 | 8813854 |
| 2711 | 37200.37400.37500.38600.95900.97100.351700 | LT panel & DB | 135d | 2027-08-14 | 2028-01-25 | 2709 |  | GC1 | 8813864 |
| 2712 | 37200.37400.37500.38600.95900.97100.351800 | Rising main | 101.25d | 2027-10-13 | 2028-02-24 | 2709FS+67.5d |  | GC1 | 8813874 |
| 2713 | 37200.37400.37500.38600.95900.97100.351900 | EARTHING Works | 67.5d | 2027-08-29 | 2027-10-27 | 2709FS+16.88d |  | GC1 | 8813884 |
| 2714 | 37200.37400.37500.38600.95900.97100.352000 | Advance lightening protection | 67.5d | 2027-06-25 | 2027-08-23 | 2658 |  | GC1 | 8813894 |
| 2715 | 37200.37400.37500.38600.95900.97100.352100 | Inverter | 39.38d | 2027-10-28 | 2028-01-15 | 2713 |  | GC1 | 8813904 |
| 2716 | 37200.37400.37500.38600.95900.97100.352200 | Energy meter | 67.5d | 2027-09-18 | 2027-12-31 | 2710 |  | GC1 | 8813914 |
| 2717 | 37200.37400.37500.38600.95900.97100.352300 | Exhast fan | 67.5d | 2027-10-18 | 2028-01-30 | 2716FF+33.75d |  | GC1 | 8813924 |
| 2718 | 37200.37400.37500.38600.95900.97100.352400 | FTTH | 67.5d | 2027-10-18 | 2028-01-30 | 2713FS-11.25d |  | GC1 | 8813934 |
| 2719 | 37200.37400.37500.38600.95900.97100.352500 | Security System - FA & PA | 61.88d | 2027-10-23 | 2028-01-30 | 2718FF |  | GC1 | 8813944 |
| 2720 | 37200.37400.37500.38600.95900.97100.352600 | Solar water heater | 67.5d | 2027-06-25 | 2027-08-23 | 2658 |  | GC1 | 8813954 |
| 2721 | 37200.37400.37500.38600.95900.129200 | **Plumbing wrok** | 380.5d | 2027-05-16 | 2028-06-02 |  | start no earlier than 2027-05-16 | GC1 | 8808404 |
| 2722 | 37200.37400.37500.38600.95900.129200.352700 | Terrace looping | 50.62d | 2027-05-16 | 2027-06-29 | 2657 |  | GC1 | 8813964 |
| 2723 | 37200.37400.37500.38600.95900.129200.352800 | Shaft Plumbing | 135d | 2027-06-30 | 2027-10-27 | 2722 |  | GC1 | 8813974 |
| 2724 | 37200.37400.37500.38600.95900.129200.352900 | CP sanitary fixture supply | 84.38d | 2028-03-19 | 2028-06-02 | 2645, 2648FS+67.5d |  | GC1 | 8813984 |
| 2725 | 37200.37400.37500.38600.95900.129200.353000 | Cold & flushing water supply | 101.25d | 2027-09-23 | 2028-02-04 | 2661SS+101.25d |  | GC1 | 8813994 |
| 2726 | 37200.37400.37500.38600.95900.129200.353100 | Misc work | 33.75d | 2028-01-26 | 2028-02-24 | 2725FS-11.25d |  | GC1 | 8814004 |
| 2727 | 37200.37400.37500.38600.95900.135600 | **Fire fighting work** | 225d | 2027-05-16 | 2028-01-15 |  | start no earlier than 2027-05-16 | GC1 | 8808524 |
| 2728 | 37200.37400.37500.38600.95900.135600.353200 | Fire hydrant work | 67.5d | 2027-07-05 | 2027-09-02 | 2661SS+11.25d |  | GC1 | 8814014 |
| 2729 | 37200.37400.37500.38600.95900.135600.353300 | Sprinkler & piping work | 67.5d | 2027-10-03 | 2028-01-15 | 2728FS+33.75d |  | GC1 | 8814024 |
| 2730 | 37200.37400.37500.38600.95900.135600.353400 | Shaft Downtake works | 101.25d | 2027-05-16 | 2027-08-13 | 2657 |  | GC1 | 8814034 |
| 2731 | 37200.37400.37500.38600.95900.135600.353500 | Connection to pump room | 33.75d | 2027-08-14 | 2027-09-12 | 2730 |  | GC1 | 8814044 |

| ID | WBS | Task | Duration | Start | Finish | Predecessors | Complete | Constraint | Calendar | Unique_Task_ID |
| --- | --- | --- | --- | --- | --- | --- | --- | --- | --- | --- |
| 2732 | 37200.37400.37500.38600.95900.187200 | **Lift work** | 191.25d | 2027-05-16 | 2027-12-16 |  |  | start no earlier than 2027-05-16 | GC1 | 8810684 |
| 2733 | 37200.37400.37500.38600.95900.187200.353600 | Lift Shaft Handover | 45d | 2027-05-16 | 2027-06-24 | 2055 |  |  | GC1 | 8814054 |
| 2734 | 37200.37400.37500.38600.95900.187200.353700 | Lift installation work | 50.62d | 2027-06-25 | 2027-08-08 | 2733 |  |  | GC1 | 8814064 |
| 2735 | 37200.37400.37500.38600.95900.187200.353800 | Lift testing and commissioning | 95.62d | 2027-08-09 | 2027-12-16 | 2734 |  |  | GC1 | 8814074 |
| 2736 | 37200.37400.37500.38600.95900.193700 | **AC work** | 112.5d | 2028-04-30 | 2028-08-08 |  |  | start no earlier than 2028-04-30 | GC1 | 8810844 |
| 2737 | 37200.37400.37500.38600.95900.193700.353900 | Split AC | 112.5d | 2028-04-30 | 2028-08-08 | 2753FS-33.75d |  |  | GC1 | 8814084 |
| 2738 | 37200.37400.37500.38600.140200 | **Tower Completion** | 303.75d | 2027-05-19 | 2028-03-28 |  |  | start no earlier than 2027-05-19 | GC1 | 8808444 |
| 2739 | 37200.37400.37500.38600.140200.272800 | SURFACE PREPARATION | 90d | 2027-05-19 | 2027-08-06 | 2093FS+2.25d |  |  | GC1 | 8811424 |
| 2740 | 37200.37400.37500.38600.140200.272900 | External Painting | 112.5d | 2027-08-07 | 2027-12-29 | 2739 |  |  | GC1 | 8811434 |
| 2741 | 37200.37400.37500.38600.140200.273000 | Final coat of painting | 101.25d | 2027-12-30 | 2028-03-28 | 2740 |  |  | GC1 | 8811444 |
| 2742 | 37200.37400.37500.38600.140200.273100 | Misc. work | 67.5d | 2027-12-30 | 2028-02-27 | 2740 |  |  | GC1 | 8811454 |
| 2743 | 37200.37400.37500.38600.192500 | **Basement lobby** | 67.5d | 2027-12-20 | 2028-02-18 |  |  | start no earlier than 2027-12-20 | GC1 | 8810894 |
| 2744 | 37200.37400.37500.38600.192500.273200 | Basement lobby | 67.5d | 2027-12-20 | 2028-02-18 | 2667 |  |  | GC1 | 8811464 |
| 2745 | 37200.37400.37500.38600.106500 | **Post OC activities** | 2032d | 2023-07-26 | 2028-11-13 |  | 50% | start no earlier than 2023-07-26 | GC1 | 8808254 |
| 2746 | 37200.37400.37500.38600.106500.273300 | Balcony Tile Flooring | 202.5d | 2028-04-30 | 2028-10-27 | 2753FS-33.75d |  |  | GC1 | 8811474 |
| 2747 | 37200.37400.37500.38600.106500.232000 | Waterproofing | 1046.25d | 2023-07-26 | 2028-08-31 | 2753FS-1881.25d, 2724FS-1847.5d | 90% |  | GC1 | 8811484 |
| 2748 | 37200.37400.37500.38600.106500.273400 | Wooden Flooring | 202.5d | 2028-04-30 | 2028-10-27 | 2753FS-33.75d |  |  | GC1 | 8811494 |
| 2749 | 37200.37400.37500.38600.106500.273500 | Electrical Fixtures And Fittings | 135d | 2028-07-16 | 2028-11-13 | 2653 |  |  | GC1 | 8811504 |
| 2750 | 37200.37400.37500.38600.106500.273600 | Modular Kitchen | 202.5d | 2028-04-30 | 2028-10-27 | 2746SS |  |  | GC1 | 8811514 |
| 2751 | 37200.37400.37500.38600.106500.273700 | External Paint | 101.25d | 2028-05-15 | 2028-08-13 | 2753FS-16.88d, 2670 |  |  | GC1 | 8811524 |
| 2752 | 37200.37400.37500.38600.257700 | OC Application/Readiness | 1.12d | 2028-03-29 | 2028-03-30 | 2706FS+0.25d, 2711FS+0.25d, 2712FS+0.25d, 2714FS+0.25d, 2715FS+0.25d, 2716FS+0.25d, 2717FS+0.25d, 2719FS+0.25d, 2720FS+0.25d, 2723FS+0.25d, 2726FS+0.25d, 2731FS+0.25d, 2729FS+0.25d, 2735FS+0.25d, 2741FS+0.25d, 2742FS+0.25d, 2744FS+0.25d |  |  | GC1 | 8811014 |
| 2753 | 37200.37400.37500.38600.257800 | OC Receipt | 1.12d | 2028-05-29 | 2028-05-30 | 2752FS+67.5d |  |  | GC1 | 8811024 |
| 2754 | 37200.37400.37500.38600.257900 | Offer To Possession | 33.75d | 2028-11-13 | 2028-12-13 | 2746, 2747, 2748, 2749, 2750, 2751, 2737 |  |  | GC1 | 8811034 |
| 2755 | 37200.37400.37500.38700 | **Tower 2** | 2042.89d | 2023-12-05 | 2029-04-03 |  | 14% | start no earlier than 2023-12-05 | GC1 | 8805864 |
| 2756 | 37200.37400.37500.38700.98900 | **Substructure** | 766.12d | 2024-05-14 | 2026-05-05 |  | 80% | start no earlier than 2024-05-14 | GC1 | 8808124 |
| 2757 | 37200.37400.37500.38700.98900.108900 | **Soil Bed Preparation** | 687.38d | 2024-05-14 | 2026-02-24 |  | 83% | start no earlier than 2024-05-14 | GC1 | 8808314 |
| 2758 | 37200.37400.37500.38700.98900.108900.215500 | Test Piling | 104.44d | 2024-05-14 | 2024-08-14 | 7SS | 100% | start no earlier than 2024-05-14 | GC1 | 8814094 |
| 2759 | 37200.37400.37500.38700.98900.108900.215400 | Excavation | 33.56d | 2024-06-26 | 2024-07-25 | 2758SS+43d | 100% | start no earlier than 2024-06-26 | GC1 | 8814104 |
| 2760 | 37200.37400.37500.38700.98900.108900.215300 | Main Piling Work | 185.62d | 2024-09-04 | 2025-03-25 | 2758FS+20d | 100% | start no earlier than 2024-09-04 | GC1 | 8814114 |
| 2761 | 37200.37400.37500.38700.98900.108900.354000 | Anti-termite | 5.62d | 2025-12-27 | 2025-12-31 | 2759, 2760FF+2d |  |  | GC1 | 8814124 |
| 2762 | 37200.37400.37500.38700.98900.108900.215200 | PCC | 57.38d | 2025-02-09 | 2025-03-31 | 2761SS-2.25d | 100% | start no earlier than 2025-02-09 | GC1 | 8814134 |
| 2763 | 37200.37400.37500.38700.98900.108900.354100 | Backfilling | 67.5d | 2025-12-27 | 2026-02-24 | 2776 |  |  | GC1 | 8814144 |

| ID | WBS | Task | Duration | Start | Finish | Predecessors | Complete | Constraint | Calendar | Unique_Task_ID |
| --- | --- | --- | --- | --- | --- | --- | --- | --- | --- | --- |
| 2764 | 37200.37400.37500.38700.98900.102600 | **RCC Structure** | 228.38d | 2025-03-24 | 2025-10-12 |  | 100% | start no earlier than 2025-03-24 | GC1 | 8808164 |
| 2765 | 37200.37400.37500.38700.98900.102600.154600 | **Raft Foundation** | 86.62d | 2025-03-24 | 2025-06-08 |  | 100% | start no earlier than 2025-03-24 | GC1 | 8810584 |
| 2766 | 37200.37400.37500.38700.98900.102600.154600.242000 | Reinforcement | 81d | 2025-03-24 | 2025-06-03 | 2762FS-9d | 100% | start no earlier than 2025-03-24 | GC1 | 8821994 |
| 2767 | 37200.37400.37500.38700.98900.102600.154600.242100 | Formwork | 10.12d | 2025-05-28 | 2025-06-05 | 2766FF+7.88d | 100% | start no earlier than 2025-05-28 | GC1 | 8822004 |
| 2768 | 37200.37400.37500.38700.98900.102600.154600.242200 | Concreting | 3.38d | 2025-06-06 | 2025-06-08 | 2767 | 100% | start no earlier than 2025-06-06 | GC1 | 8822014 |
| 2769 | 37200.37400.37500.38700.98900.102600.154500 | **Basement 1 Slab** | 75.38d | 2025-04-20 | 2025-06-25 |  | 100% | start no earlier than 2025-04-20 | GC1 | 8810594 |
| 2770 | 37200.37400.37500.38700.98900.102600.154500.242300 | Reinforcement | 22.5d | 2025-06-06 | 2025-06-25 | 2768 | 100% | start no earlier than 2025-06-06 | GC1 | 8822024 |
| 2771 | 37200.37400.37500.38700.98900.102600.154500.242400 | Formwork | 22.5d | 2025-04-20 | 2025-05-09 | 2770SS+1.12d | 100% | start no earlier than 2025-04-20 | GC1 | 8822034 |
| 2772 | 37200.37400.37500.38700.98900.102600.154500.242500 | Concreting | 4.5d | 2025-05-10 | 2025-05-13 | 2771 | 100% | start no earlier than 2025-05-10 | GC1 | 8822044 |
| 2773 | 37200.37400.37500.38700.98900.102600.154400 | **Basement 2 Slab/GF** | 132.75d | 2025-05-14 | 2025-09-08 |  | 100% | start no earlier than 2025-05-14 | GC1 | 8810604 |
| 2774 | 37200.37400.37500.38700.98900.102600.154400.243000 | Reinforcement | 130.5d | 2025-05-14 | 2025-09-06 | 2772 | 100% | start no earlier than 2025-05-14 | GC1 | 8822054 |
| 2775 | 37200.37400.37500.38700.98900.102600.154400.243100 | Formwork | 130.5d | 2025-05-15 | 2025-09-07 | 2774SS+1.12d | 100% | start no earlier than 2025-05-15 | GC1 | 8822064 |
| 2776 | 37200.37400.37500.38700.98900.102600.154400.243200 | Concreting | 109.12d | 2025-06-04 | 2025-09-08 | 2775 | 100% | start no earlier than 2025-06-04 | GC1 | 8822074 |
| 2777 | 37200.37400.37500.38700.98900.102600.154300 | **Podium /Ground Floor Slab** | 141.75d | 2025-06-09 | 2025-10-12 |  | 100% | start no earlier than 2025-06-09 | GC1 | 8810614 |
| 2778 | 37200.37400.37500.38700.98900.102600.154300.243300 | Reinforcement | 45d | 2025-09-01 | 2025-10-10 | 2776 | 100% | start no earlier than 2025-09-01 | GC1 | 8822084 |
| 2779 | 37200.37400.37500.38700.98900.102600.154300.243400 | Formwork | 140.62d | 2025-06-09 | 2025-10-11 | 2778SS+1.12d | 100% | start no earlier than 2025-06-09 | GC1 | 8822094 |
| 2780 | 37200.37400.37500.38700.98900.102600.154300.243500 | Concreting | 119.25d | 2025-06-29 | 2025-10-12 | 2779 | 100% | start no earlier than 2025-06-29 | GC1 | 8822104 |
| 2781 | 37200.37400.37500.38700.98900.133500 | **Substructure Finishing** | 146.25d | 2025-12-27 | 2026-05-05 |  |  | start no earlier than 2025-12-27 | GC1 | 8808534 |
| 2782 | 37200.37400.37500.38700.98900.133500.354200 | Masonary work | 50.62d | 2025-12-27 | 2026-02-09 | 2780FS+33.75d |  |  | GC1 | 8814154 |
| 2783 | 37200.37400.37500.38700.98900.133500.354300 | Plaster | 45d | 2026-02-10 | 2026-03-21 | 2782 |  |  | GC1 | 8814164 |
| 2784 | 37200.37400.37500.38700.98900.133500.354400 | Structural steel | 67.5d | 2026-01-26 | 2026-03-26 | 2780FS+67.5d |  |  | GC1 | 8814174 |
| 2785 | 37200.37400.37500.38700.98900.133500.354500 | White Wash | 50.62d | 2026-03-22 | 2026-05-05 | 2783 |  |  | GC1 | 8814184 |
| 2786 | 37200.37400.37500.38700.39700 | **Superstructure** | 1038.51d | 2025-10-07 | 2028-08-26 |  |  | start no earlier than 2025-10-07 | GC1 | 8805914 |
| 2787 | 37200.37400.37500.38700.39700.44100 | **RCC structure** | 578.14d | 2025-10-07 | 2027-05-29 |  | 5% | start no earlier than 2025-10-07 | GC1 | 8806064 |
| 2788 | 37200.37400.37500.38700.39700.44100.123300 | **1st floor slab** | 79.76d | 2025-10-07 | 2026-01-26 |  | 33% | start no earlier than 2025-10-07 | GC1 | 8809304 |
| 2789 | 37200.37400.37500.38700.39700.44100.123300.243600 | Reinforcement | 56.25d | 2025-10-07 | 2026-01-21 | 2780 | 48% | start no earlier than 2025-10-07 | GC1 | 8822114 |
| 2790 | 37200.37400.37500.38700.39700.44100.123300.243700 | Wall conduiting | 33.75d | 2025-10-14 | 2026-01-23 | 2789SS+10.12d | 6% | start no earlier than 2025-10-14 | GC1 | 8822124 |
| 2791 | 37200.37400.37500.38700.39700.44100.123300.243800 | Formwork | 52.88d | 2025-10-14 | 2026-01-25 | 2789SS+10.12d | 36% | start no earlier than 2025-10-14 | GC1 | 8822134 |
| 2792 | 37200.37400.37500.38700.39700.44100.123300.243900 | Concreting | 1.12d | 2025-10-15 | 2026-01-26 | 2791FS-69.75d | 10% |  | GC1 | 8822144 |

| ID | WBS | Task | Duration | Start | Finish | Predecessors | Complete | Constraint | Calendar | Unique_Task_ID |
| --- | --- | --- | --- | --- | --- | --- | --- | --- | --- | --- |
| 2793 | 37200.37400.37500.38700.39700.44100.154200 | **2nd floor slab** | 77.51d | 2025-11-08 | 2026-02-25 |  | 15% | start no earlier than 2025-11-08 | GC1 | 8809294 |
| 2794 | 37200.37400.37500.38700.39700.44100.154200.244000 | Reinforcement | 37.12d | 2025-11-08 | 2026-02-20 | 2792FS-43.76d | 30% | start no earlier than 2025-11-08 | GC1 | 8822154 |
| 2795 | 37200.37400.37500.38700.39700.44100.154200.548100 | Wall conduiting | 3.38d | 2026-01-27 | 2026-01-30 | 2790FS+0.25d, 2794SS+44.89d |  |  | GC1 | 8822164 |
| 2796 | 37200.37400.37500.38700.39700.44100.154200.548200 | Formwork | 30.38d | 2026-01-28 | 2026-02-24 | 2794SS+46.01d |  |  | GC1 | 8822174 |
| 2797 | 37200.37400.37500.38700.39700.44100.154200.548300 | Concreting | 1.12d | 2026-02-24 | 2026-02-25 | 2796 |  |  | GC1 | 8822184 |
| 2798 | 37200.37400.37500.38700.39700.44100.154100 | **3rd floor slab** | 11.25d | 2026-02-25 | 2026-03-07 |  |  | start no earlier than 2026-02-25 | GC1 | 8809284 |
| 2799 | 37200.37400.37500.38700.39700.44100.154100.548400 | Reinforcement | 7.88d | 2026-02-25 | 2026-03-04 | 2797 |  |  | GC1 | 8822194 |
| 2800 | 37200.37400.37500.38700.39700.44100.154100.548500 | Wall conduiting | 2.25d | 2026-02-28 | 2026-03-02 | 2795, 2799SS+3.38d |  |  | GC1 | 8822204 |
| 2801 | 37200.37400.37500.38700.39700.44100.154100.548600 | Formwork | 7.88d | 2026-02-27 | 2026-03-06 | 2799SS+2.25d |  |  | GC1 | 8822214 |
| 2802 | 37200.37400.37500.38700.39700.44100.154100.548700 | Concreting | 1.12d | 2026-03-06 | 2026-03-07 | 2801 |  |  | GC1 | 8822224 |
| 2803 | 37200.37400.37500.38700.39700.44100.154000 | **4th floor slab** | 11.25d | 2026-03-07 | 2026-03-17 |  |  | start no earlier than 2026-03-07 | GC1 | 8809274 |
| 2804 | 37200.37400.37500.38700.39700.44100.154000.548800 | Reinforcement | 7.88d | 2026-03-07 | 2026-03-14 | 2802 |  |  | GC1 | 8822234 |
| 2805 | 37200.37400.37500.38700.39700.44100.154000.548900 | Wall conduiting | 2.25d | 2026-03-08 | 2026-03-10 | 2800, 2804SS+1.12d |  |  | GC1 | 8822244 |
| 2806 | 37200.37400.37500.38700.39700.44100.154000.549000 | Formwork | 7.88d | 2026-03-09 | 2026-03-16 | 2804SS+2.25d |  |  | GC1 | 8822254 |
| 2807 | 37200.37400.37500.38700.39700.44100.154000.549100 | Concreting | 1.12d | 2026-03-16 | 2026-03-17 | 2806 |  |  | GC1 | 8822264 |
| 2808 | 37200.37400.37500.38700.39700.44100.153900 | **5th floor slab** | 11.25d | 2026-03-17 | 2026-03-27 |  |  | start no earlier than 2026-03-17 | GC1 | 8809264 |
| 2809 | 37200.37400.37500.38700.39700.44100.153900.549200 | Reinforcement | 7.88d | 2026-03-17 | 2026-03-24 | 2807 |  |  | GC1 | 8822274 |
| 2810 | 37200.37400.37500.38700.39700.44100.153900.549300 | Wall conduiting | 2.25d | 2026-03-18 | 2026-03-20 | 2805, 2809SS+1.12d |  |  | GC1 | 8822284 |
| 2811 | 37200.37400.37500.38700.39700.44100.153900.549400 | Formwork | 7.88d | 2026-03-19 | 2026-03-26 | 2809SS+2.25d |  |  | GC1 | 8822294 |
| 2812 | 37200.37400.37500.38700.39700.44100.153900.549500 | Concreting | 1.12d | 2026-03-26 | 2026-03-27 | 2811 |  |  | GC1 | 8822304 |
| 2813 | 37200.37400.37500.38700.39700.44100.153800 | **6th floor slab** | 11.25d | 2026-03-27 | 2026-04-06 |  |  | start no earlier than 2026-03-27 | GC1 | 8809254 |
| 2814 | 37200.37400.37500.38700.39700.44100.153800.549600 | Reinforcement | 7.88d | 2026-03-27 | 2026-04-03 | 2812 |  |  | GC1 | 8822314 |
| 2815 | 37200.37400.37500.38700.39700.44100.153800.549700 | Wall conduiting | 2.25d | 2026-03-28 | 2026-03-30 | 2810, 2814SS+1.12d |  |  | GC1 | 8822324 |
| 2816 | 37200.37400.37500.38700.39700.44100.153800.549800 | Formwork | 7.88d | 2026-03-29 | 2026-04-05 | 2814SS+2.25d |  |  | GC1 | 8822334 |
| 2817 | 37200.37400.37500.38700.39700.44100.153800.549900 | Concreting | 1.12d | 2026-04-05 | 2026-04-06 | 2816 |  |  | GC1 | 8822344 |

| ID | WBS | Task | Duration | Start | Finish | Predecessors | Constraint | Calendar | Unique_Task_ID |
| --- | --- | --- | --- | --- | --- | --- | --- | --- | --- |
| 2818 | 37200.37400.37500.38700.39700.44100.153700 | **7th floor slab** | 11.25d | 2026-04-06 | 2026-04-16 |  | start no earlier than 2026-04-06 | GC1 | 8809244 |
| 2819 | 37200.37400.37500.38700.39700.44100.153700.550000 | Reinforcement | 7.88d | 2026-04-06 | 2026-04-13 | 2817 |  | GC1 | 8822354 |
| 2820 | 37200.37400.37500.38700.39700.44100.153700.550100 | Wall conduiting | 2.25d | 2026-04-07 | 2026-04-09 | 2815, 2819SS+1.12d |  | GC1 | 8822364 |
| 2821 | 37200.37400.37500.38700.39700.44100.153700.550200 | Formwork | 7.88d | 2026-04-08 | 2026-04-15 | 2819SS+2.25d |  | GC1 | 8822374 |
| 2822 | 37200.37400.37500.38700.39700.44100.153700.550300 | Concreting | 1.12d | 2026-04-15 | 2026-04-16 | 2821 |  | GC1 | 8822384 |
| 2823 | 37200.37400.37500.38700.39700.44100.153600 | **8th floor slab** | 12.38d | 2026-04-16 | 2026-04-27 |  | start no earlier than 2026-04-16 | GC1 | 8809234 |
| 2824 | 37200.37400.37500.38700.39700.44100.153600.550400 | Reinforcement | 7.88d | 2026-04-16 | 2026-04-23 | 2822 |  | GC1 | 8822394 |
| 2825 | 37200.37400.37500.38700.39700.44100.153600.550500 | Wall conduiting | 2.25d | 2026-04-17 | 2026-04-19 | 2820, 2824SS+1.12d |  | GC1 | 8822404 |
| 2826 | 37200.37400.37500.38700.39700.44100.153600.550600 | Formwork | 9d | 2026-04-18 | 2026-04-26 | 2824SS+2.25d |  | GC1 | 8822414 |
| 2827 | 37200.37400.37500.38700.39700.44100.153600.550700 | Concreting | 1.12d | 2026-04-26 | 2026-04-27 | 2826 |  | GC1 | 8822424 |
| 2828 | 37200.37400.37500.38700.39700.44100.153500 | **9th floor slab** | 11.25d | 2026-04-27 | 2026-05-07 |  | start no earlier than 2026-04-27 | GC1 | 8809224 |
| 2829 | 37200.37400.37500.38700.39700.44100.153500.550800 | Reinforcement | 7.88d | 2026-04-27 | 2026-05-04 | 2827 |  | GC1 | 8822434 |
| 2830 | 37200.37400.37500.38700.39700.44100.153500.550900 | Wall conduiting | 2.25d | 2026-04-28 | 2026-04-30 | 2825, 2829SS+1.12d |  | GC1 | 8822444 |
| 2831 | 37200.37400.37500.38700.39700.44100.153500.551000 | Formwork | 7.88d | 2026-04-29 | 2026-05-06 | 2829SS+2.25d |  | GC1 | 8822454 |
| 2832 | 37200.37400.37500.38700.39700.44100.153500.551100 | Concreting | 1.12d | 2026-05-06 | 2026-05-07 | 2831 |  | GC1 | 8822464 |
| 2833 | 37200.37400.37500.38700.39700.44100.153400 | **10th floor slab** | 11.25d | 2026-05-07 | 2026-05-17 |  | start no earlier than 2026-05-07 | GC1 | 8809214 |
| 2834 | 37200.37400.37500.38700.39700.44100.153400.551200 | Reinforcement | 7.88d | 2026-05-07 | 2026-05-14 | 2832 |  | GC1 | 8822474 |
| 2835 | 37200.37400.37500.38700.39700.44100.153400.551300 | Wall conduiting | 2.25d | 2026-05-08 | 2026-05-10 | 2830, 2834SS+1.12d |  | GC1 | 8822484 |
| 2836 | 37200.37400.37500.38700.39700.44100.153400.551400 | Formwork | 7.88d | 2026-05-09 | 2026-05-16 | 2834SS+2.25d |  | GC1 | 8822494 |
| 2837 | 37200.37400.37500.38700.39700.44100.153400.551500 | Concreting | 1.12d | 2026-05-16 | 2026-05-17 | 2836 |  | GC1 | 8822504 |
| 2838 | 37200.37400.37500.38700.39700.44100.153300 | **11th floor slab** | 11.25d | 2026-05-17 | 2026-05-27 |  | start no earlier than 2026-05-17 | GC1 | 8809204 |
| 2839 | 37200.37400.37500.38700.39700.44100.153300.551600 | Reinforcement | 7.88d | 2026-05-17 | 2026-05-24 | 2837 |  | GC1 | 8822514 |
| 2840 | 37200.37400.37500.38700.39700.44100.153300.551700 | Wall conduiting | 2.25d | 2026-05-18 | 2026-05-20 | 2835, 2839SS+1.12d |  | GC1 | 8822524 |
| 2841 | 37200.37400.37500.38700.39700.44100.153300.551800 | Formwork | 7.88d | 2026-05-19 | 2026-05-26 | 2839SS+2.25d |  | GC1 | 8822534 |
| 2842 | 37200.37400.37500.38700.39700.44100.153300.551900 | Concreting | 1.12d | 2026-05-26 | 2026-05-27 | 2841 |  | GC1 | 8822544 |

| ID | WBS | Task | Duration | Start | Finish | Predecessors | Constraint | Calendar | Unique_Task_ID |
| --- | --- | --- | --- | --- | --- | --- | --- | --- | --- |
| 2843 | 37200.37400.37500.38700.39700.44100.153200 | **12th floor slab** | 11.25d | 2026-05-27 | 2026-06-06 |  | start no earlier than 2026-05-27 | GC1 | 8809194 |
| 2844 | 37200.37400.37500.38700.39700.44100.153200.552000 | Reinforcement | 7.88d | 2026-05-27 | 2026-06-03 | 2842 |  | GC1 | 8822554 |
| 2845 | 37200.37400.37500.38700.39700.44100.153200.552100 | Wall conduiting | 2.25d | 2026-05-28 | 2026-05-30 | 2840, 2844SS+1.12d |  | GC1 | 8822564 |
| 2846 | 37200.37400.37500.38700.39700.44100.153200.552200 | Formwork | 7.88d | 2026-05-29 | 2026-06-05 | 2844SS+2.25d |  | GC1 | 8822574 |
| 2847 | 37200.37400.37500.38700.39700.44100.153200.552300 | Concreting | 1.12d | 2026-06-05 | 2026-06-06 | 2846 |  | GC1 | 8822584 |
| 2848 | 37200.37400.37500.38700.39700.44100.153100 | **13th floor slab** | 11.25d | 2026-06-06 | 2026-06-16 |  | start no earlier than 2026-06-06 | GC1 | 8809184 |
| 2849 | 37200.37400.37500.38700.39700.44100.153100.552400 | Reinforcement | 7.88d | 2026-06-06 | 2026-06-13 | 2847 |  | GC1 | 8822594 |
| 2850 | 37200.37400.37500.38700.39700.44100.153100.552500 | Wall conduiting | 2.25d | 2026-06-07 | 2026-06-09 | 2845, 2849SS+1.12d |  | GC1 | 8822604 |
| 2851 | 37200.37400.37500.38700.39700.44100.153100.552600 | Formwork | 7.88d | 2026-06-08 | 2026-06-15 | 2849SS+2.25d |  | GC1 | 8822614 |
| 2852 | 37200.37400.37500.38700.39700.44100.153100.552700 | Concreting | 1.12d | 2026-06-15 | 2026-06-16 | 2851 |  | GC1 | 8822624 |
| 2853 | 37200.37400.37500.38700.39700.44100.153000 | **14th floor slab** | 11.25d | 2026-06-16 | 2026-06-26 |  | start no earlier than 2026-06-16 | GC1 | 8809174 |
| 2854 | 37200.37400.37500.38700.39700.44100.153000.552800 | Reinforcement | 7.88d | 2026-06-16 | 2026-06-23 | 2852 |  | GC1 | 8822634 |
| 2855 | 37200.37400.37500.38700.39700.44100.153000.552900 | Wall conduiting | 2.25d | 2026-06-17 | 2026-06-19 | 2850, 2854SS+1.12d |  | GC1 | 8822644 |
| 2856 | 37200.37400.37500.38700.39700.44100.153000.553000 | Formwork | 7.88d | 2026-06-18 | 2026-06-25 | 2854SS+2.25d |  | GC1 | 8822654 |
| 2857 | 37200.37400.37500.38700.39700.44100.153000.553100 | Concreting | 1.12d | 2026-06-25 | 2026-06-26 | 2856 |  | GC1 | 8822664 |
| 2858 | 37200.37400.37500.38700.39700.44100.152900 | **15th floor slab** | 11.25d | 2026-06-26 | 2026-07-06 |  | start no earlier than 2026-06-26 | GC1 | 8809164 |
| 2859 | 37200.37400.37500.38700.39700.44100.152900.553200 | Reinforcement | 7.88d | 2026-06-26 | 2026-07-03 | 2857 |  | GC1 | 8822674 |
| 2860 | 37200.37400.37500.38700.39700.44100.152900.553300 | Wall conduiting | 2.25d | 2026-06-27 | 2026-06-29 | 2855, 2859SS+1.12d |  | GC1 | 8822684 |
| 2861 | 37200.37400.37500.38700.39700.44100.152900.553400 | Formwork | 7.88d | 2026-06-28 | 2026-07-05 | 2859SS+2.25d |  | GC1 | 8822694 |
| 2862 | 37200.37400.37500.38700.39700.44100.152900.553500 | Concreting | 1.12d | 2026-07-05 | 2026-07-06 | 2861 |  | GC1 | 8822704 |
| 2863 | 37200.37400.37500.38700.39700.44100.152800 | **16th floor slab** | 12.38d | 2026-07-06 | 2026-07-17 |  | start no earlier than 2026-07-06 | GC1 | 8809154 |
| 2864 | 37200.37400.37500.38700.39700.44100.152800.553600 | Reinforcement | 9d | 2026-07-06 | 2026-07-14 | 2862 |  | GC1 | 8822714 |
| 2865 | 37200.37400.37500.38700.39700.44100.152800.553700 | Wall conduiting | 2.25d | 2026-07-07 | 2026-07-09 | 2860, 2864SS+1.12d |  | GC1 | 8822724 |
| 2866 | 37200.37400.37500.38700.39700.44100.152800.553800 | Formwork | 9d | 2026-07-08 | 2026-07-16 | 2864SS+2.25d |  | GC1 | 8822734 |
| 2867 | 37200.37400.37500.38700.39700.44100.152800.553900 | Concreting | 1.12d | 2026-07-16 | 2026-07-17 | 2866 |  | GC1 | 8822744 |

| ID | WBS | Task | Duration | Start | Finish | Predecessors | Constraint | Calendar | Unique_Task_ID |
| --- | --- | --- | --- | --- | --- | --- | --- | --- | --- |
| 2868 | 37200.37400.37500.38700.39700.44100.152700 | **17th floor slab** | 11.25d | 2026-07-17 | 2026-07-27 |  | start no earlier than 2026-07-17 | GC1 | 8809144 |
| 2869 | 37200.37400.37500.38700.39700.44100.152700.554000 | Reinforcement | 9d | 2026-07-17 | 2026-07-25 | 2867 |  | GC1 | 8822754 |
| 2870 | 37200.37400.37500.38700.39700.44100.152700.554100 | Wall conduiting | 2.25d | 2026-07-18 | 2026-07-20 | 2865, 2869SS+1.12d |  | GC1 | 8822764 |
| 2871 | 37200.37400.37500.38700.39700.44100.152700.554200 | Formwork | 7.88d | 2026-07-19 | 2026-07-26 | 2869SS+2.25d |  | GC1 | 8822774 |
| 2872 | 37200.37400.37500.38700.39700.44100.152700.554300 | Concreting | 1.12d | 2026-07-26 | 2026-07-27 | 2871 |  | GC1 | 8822784 |
| 2873 | 37200.37400.37500.38700.39700.44100.152600 | **18th floor slab** | 11.25d | 2026-07-27 | 2026-08-06 |  | start no earlier than 2026-07-27 | GC1 | 8809134 |
| 2874 | 37200.37400.37500.38700.39700.44100.152600.554400 | Reinforcement | 9d | 2026-07-27 | 2026-08-04 | 2872 |  | GC1 | 8822794 |
| 2875 | 37200.37400.37500.38700.39700.44100.152600.554500 | Wall conduiting | 2.25d | 2026-07-28 | 2026-07-30 | 2870, 2874SS+1.12d |  | GC1 | 8822804 |
| 2876 | 37200.37400.37500.38700.39700.44100.152600.554600 | Formwork | 7.88d | 2026-07-29 | 2026-08-05 | 2874SS+2.25d |  | GC1 | 8822814 |
| 2877 | 37200.37400.37500.38700.39700.44100.152600.554700 | Concreting | 1.12d | 2026-08-05 | 2026-08-06 | 2876 |  | GC1 | 8822824 |
| 2878 | 37200.37400.37500.38700.39700.44100.152500 | **19th floor slab** | 11.25d | 2026-08-06 | 2026-08-16 |  | start no earlier than 2026-08-06 | GC1 | 8809124 |
| 2879 | 37200.37400.37500.38700.39700.44100.152500.554800 | Reinforcement | 9d | 2026-08-06 | 2026-08-14 | 2877 |  | GC1 | 8822834 |
| 2880 | 37200.37400.37500.38700.39700.44100.152500.554900 | Wall conduiting | 2.25d | 2026-08-07 | 2026-08-09 | 2875, 2879SS+1.12d |  | GC1 | 8822844 |
| 2881 | 37200.37400.37500.38700.39700.44100.152500.555000 | Formwork | 9d | 2026-08-07 | 2026-08-15 | 2879SS+1.12d |  | GC1 | 8822854 |
| 2882 | 37200.37400.37500.38700.39700.44100.152500.555100 | Concreting | 1.12d | 2026-08-15 | 2026-08-16 | 2881 |  | GC1 | 8822864 |
| 2883 | 37200.37400.37500.38700.39700.44100.152400 | **20th floor slab** | 11.25d | 2026-08-16 | 2026-08-26 |  | start no earlier than 2026-08-16 | GC1 | 8809114 |
| 2884 | 37200.37400.37500.38700.39700.44100.152400.555200 | Reinforcement | 9d | 2026-08-16 | 2026-08-24 | 2882 |  | GC1 | 8822874 |
| 2885 | 37200.37400.37500.38700.39700.44100.152400.555300 | Wall conduiting | 2.25d | 2026-08-17 | 2026-08-19 | 2880, 2884SS+1.12d |  | GC1 | 8822884 |
| 2886 | 37200.37400.37500.38700.39700.44100.152400.555400 | Formwork | 9d | 2026-08-17 | 2026-08-25 | 2884SS+1.12d |  | GC1 | 8822894 |
| 2887 | 37200.37400.37500.38700.39700.44100.152400.555500 | Concreting | 1.12d | 2026-08-25 | 2026-08-26 | 2886 |  | GC1 | 8822904 |
| 2888 | 37200.37400.37500.38700.39700.44100.152300 | **21st floor slab** | 11.25d | 2026-08-26 | 2026-09-05 |  | start no earlier than 2026-08-26 | GC1 | 8809104 |
| 2889 | 37200.37400.37500.38700.39700.44100.152300.555600 | Reinforcement | 9d | 2026-08-26 | 2026-09-03 | 2887 |  | GC1 | 8822914 |
| 2890 | 37200.37400.37500.38700.39700.44100.152300.555700 | Wall conduiting | 2.25d | 2026-08-27 | 2026-08-29 | 2885, 2889SS+1.12d |  | GC1 | 8822924 |
| 2891 | 37200.37400.37500.38700.39700.44100.152300.555800 | Formwork | 7.88d | 2026-08-28 | 2026-09-04 | 2889SS+2.25d |  | GC1 | 8822934 |
| 2892 | 37200.37400.37500.38700.39700.44100.152300.555900 | Concreting | 1.12d | 2026-09-04 | 2026-09-05 | 2891 |  | GC1 | 8822944 |

| ID | WBS | Task | Duration | Start | Finish | Predecessors | Constraint | Calendar | Unique_Task_ID |
| --- | --- | --- | --- | --- | --- | --- | --- | --- | --- |
| 2893 | 37200.37400.37500.38700.39700.44100.152200 | **22nd floor slab** | 11.25d | 2026-09-05 | 2026-09-15 |  | start no earlier than 2026-09-05 | GC1 | 8809094 |
| 2894 | 37200.37400.37500.38700.39700.44100.152200.556000 | Reinforcement | 9d | 2026-09-05 | 2026-09-13 | 2892 |  | GC1 | 8822954 |
| 2895 | 37200.37400.37500.38700.39700.44100.152200.556100 | Wall conduiting | 2.25d | 2026-09-06 | 2026-09-08 | 2890, 2894SS+1.12d |  | GC1 | 8822964 |
| 2896 | 37200.37400.37500.38700.39700.44100.152200.556200 | Formwork | 7.88d | 2026-09-07 | 2026-09-14 | 2894SS+2.25d |  | GC1 | 8822974 |
| 2897 | 37200.37400.37500.38700.39700.44100.152200.556300 | Concreting | 1.12d | 2026-09-14 | 2026-09-15 | 2896 |  | GC1 | 8822984 |
| 2898 | 37200.37400.37500.38700.39700.44100.152100 | **23rd floor slab** | 11.25d | 2026-09-15 | 2026-09-25 |  | start no earlier than 2026-09-15 | GC1 | 8809084 |
| 2899 | 37200.37400.37500.38700.39700.44100.152100.556400 | Reinforcement | 9d | 2026-09-15 | 2026-09-23 | 2897 |  | GC1 | 8822994 |
| 2900 | 37200.37400.37500.38700.39700.44100.152100.556500 | Wall conduiting | 2.25d | 2026-09-16 | 2026-09-18 | 2895, 2899SS+1.12d |  | GC1 | 8823004 |
| 2901 | 37200.37400.37500.38700.39700.44100.152100.556600 | Formwork | 7.88d | 2026-09-17 | 2026-09-24 | 2899SS+2.25d |  | GC1 | 8823014 |
| 2902 | 37200.37400.37500.38700.39700.44100.152100.556700 | Concreting | 1.12d | 2026-09-24 | 2026-09-25 | 2901 |  | GC1 | 8823024 |
| 2903 | 37200.37400.37500.38700.39700.44100.152000 | **24th floor slab** | 15.75d | 2026-09-25 | 2026-10-09 |  | start no earlier than 2026-09-25 | GC1 | 8809074 |
| 2904 | 37200.37400.37500.38700.39700.44100.152000.556800 | Reinforcement | 12.38d | 2026-09-25 | 2026-10-06 | 2902 |  | GC1 | 8823034 |
| 2905 | 37200.37400.37500.38700.39700.44100.152000.556900 | Wall conduiting | 2.25d | 2026-09-26 | 2026-09-28 | 2900, 2904SS+1.12d |  | GC1 | 8823044 |
| 2906 | 37200.37400.37500.38700.39700.44100.152000.557000 | Formwork | 12.38d | 2026-09-27 | 2026-10-08 | 2904SS+2.25d |  | GC1 | 8823054 |
| 2907 | 37200.37400.37500.38700.39700.44100.152000.557100 | Concreting | 1.12d | 2026-10-08 | 2026-10-09 | 2906 |  | GC1 | 8823064 |
| 2908 | 37200.37400.37500.38700.39700.44100.151900 | **25th floor slab** | 16.88d | 2026-10-09 | 2026-10-24 |  | start no earlier than 2026-10-09 | GC1 | 8809064 |
| 2909 | 37200.37400.37500.38700.39700.44100.151900.557200 | Reinforcement | 13.5d | 2026-10-09 | 2026-10-21 | 2907 |  | GC1 | 8823074 |
| 2910 | 37200.37400.37500.38700.39700.44100.151900.557300 | Wall conduiting | 2.25d | 2026-10-10 | 2026-10-12 | 2905, 2909SS+1.12d |  | GC1 | 8823084 |
| 2911 | 37200.37400.37500.38700.39700.44100.151900.557400 | Formwork | 13.5d | 2026-10-11 | 2026-10-23 | 2909SS+2.25d |  | GC1 | 8823094 |
| 2912 | 37200.37400.37500.38700.39700.44100.151900.557500 | Concreting | 1.12d | 2026-10-23 | 2026-10-24 | 2911 |  | GC1 | 8823104 |
| 2913 | 37200.37400.37500.38700.39700.44100.151800 | **26th floor slab** | 11.25d | 2026-10-24 | 2026-12-18 |  | start no earlier than 2026-10-24 | GC1 | 8809054 |
| 2914 | 37200.37400.37500.38700.39700.44100.151800.557600 | Reinforcement | 9d | 2026-10-24 | 2026-12-16 | 2912 |  | GC1 | 8823114 |
| 2915 | 37200.37400.37500.38700.39700.44100.151800.557700 | Wall conduiting | 2.25d | 2026-10-25 | 2026-10-27 | 2910, 2914SS+1.12d |  | GC1 | 8823124 |
| 2916 | 37200.37400.37500.38700.39700.44100.151800.557800 | Formwork | 7.88d | 2026-10-26 | 2026-12-17 | 2914SS+2.25d |  | GC1 | 8823134 |
| 2917 | 37200.37400.37500.38700.39700.44100.151800.557900 | Concreting | 1.12d | 2026-12-17 | 2026-12-18 | 2916 |  | GC1 | 8823144 |

| ID | WBS | Task | Duration | Start | Finish | Predecessors | Constraint | Calendar | Unique_Task_ID |
| --- | --- | --- | --- | --- | --- | --- | --- | --- | --- |
| 2918 | 37200.37400.37500.38700.39700.44100.151700 | **27th floor slab** | 11.25d | 2026-12-18 | 2026-12-28 |  | start no earlier than 2026-12-18 | GC1 | 8809044 |
| 2919 | 37200.37400.37500.38700.39700.44100.151700.558000 | Reinforcement | 9d | 2026-12-18 | 2026-12-26 | 2917 |  | GC1 | 8823154 |
| 2920 | 37200.37400.37500.38700.39700.44100.151700.558100 | Wall conduiting | 2.25d | 2026-12-19 | 2026-12-21 | 2915, 2919SS+1.12d |  | GC1 | 8823164 |
| 2921 | 37200.37400.37500.38700.39700.44100.151700.558200 | Formwork | 7.88d | 2026-12-20 | 2026-12-27 | 2919SS+2.25d |  | GC1 | 8823174 |
| 2922 | 37200.37400.37500.38700.39700.44100.151700.558300 | Concreting | 1.12d | 2026-12-27 | 2026-12-28 | 2921 |  | GC1 | 8823184 |
| 2923 | 37200.37400.37500.38700.39700.44100.151600 | **28th floor slab** | 11.25d | 2026-12-28 | 2027-01-07 |  | start no earlier than 2026-12-28 | GC1 | 8809034 |
| 2924 | 37200.37400.37500.38700.39700.44100.151600.558400 | Reinforcement | 9d | 2026-12-28 | 2027-01-05 | 2922 |  | GC1 | 8823194 |
| 2925 | 37200.37400.37500.38700.39700.44100.151600.558500 | Wall conduiting | 2.25d | 2026-12-29 | 2026-12-31 | 2920, 2924SS+1.12d |  | GC1 | 8823204 |
| 2926 | 37200.37400.37500.38700.39700.44100.151600.558600 | Formwork | 7.88d | 2026-12-30 | 2027-01-06 | 2924SS+2.25d |  | GC1 | 8823214 |
| 2927 | 37200.37400.37500.38700.39700.44100.151600.558700 | Concreting | 1.12d | 2027-01-06 | 2027-01-07 | 2926 |  | GC1 | 8823224 |
| 2928 | 37200.37400.37500.38700.39700.44100.151500 | **29th floor slab** | 11.25d | 2027-01-07 | 2027-01-17 |  | start no earlier than 2027-01-07 | GC1 | 8809024 |
| 2929 | 37200.37400.37500.38700.39700.44100.151500.558800 | Reinforcement | 9d | 2027-01-07 | 2027-01-15 | 2927 |  | GC1 | 8823234 |
| 2930 | 37200.37400.37500.38700.39700.44100.151500.558900 | Wall conduiting | 2.25d | 2027-01-08 | 2027-01-10 | 2925, 2929SS+1.12d |  | GC1 | 8823244 |
| 2931 | 37200.37400.37500.38700.39700.44100.151500.559000 | Formwork | 7.88d | 2027-01-09 | 2027-01-16 | 2929SS+2.25d |  | GC1 | 8823254 |
| 2932 | 37200.37400.37500.38700.39700.44100.151500.559100 | Concreting | 1.12d | 2027-01-16 | 2027-01-17 | 2931 |  | GC1 | 8823264 |
| 2933 | 37200.37400.37500.38700.39700.44100.151400 | **30th floor slab** | 11.25d | 2027-01-17 | 2027-01-27 |  | start no earlier than 2027-01-17 | GC1 | 8809014 |
| 2934 | 37200.37400.37500.38700.39700.44100.151400.559200 | Reinforcement | 9d | 2027-01-17 | 2027-01-25 | 2932 |  | GC1 | 8823274 |
| 2935 | 37200.37400.37500.38700.39700.44100.151400.559300 | Wall conduiting | 2.25d | 2027-01-18 | 2027-01-20 | 2930, 2934SS+1.12d |  | GC1 | 8823284 |
| 2936 | 37200.37400.37500.38700.39700.44100.151400.559400 | Formwork | 7.88d | 2027-01-19 | 2027-01-26 | 2934SS+2.25d |  | GC1 | 8823294 |
| 2937 | 37200.37400.37500.38700.39700.44100.151400.559500 | Concreting | 1.12d | 2027-01-26 | 2027-01-27 | 2936 |  | GC1 | 8823304 |
| 2938 | 37200.37400.37500.38700.39700.44100.151300 | **31st floor slab** | 11.25d | 2027-01-27 | 2027-02-06 |  | start no earlier than 2027-01-27 | GC1 | 8809004 |
| 2939 | 37200.37400.37500.38700.39700.44100.151300.559600 | Reinforcement | 7.88d | 2027-01-27 | 2027-02-03 | 2937 |  | GC1 | 8823314 |
| 2940 | 37200.37400.37500.38700.39700.44100.151300.559700 | Wall conduiting | 2.25d | 2027-01-28 | 2027-01-30 | 2935, 2939SS+1.12d |  | GC1 | 8823324 |
| 2941 | 37200.37400.37500.38700.39700.44100.151300.559800 | Formwork | 7.88d | 2027-01-29 | 2027-02-05 | 2939SS+2.25d |  | GC1 | 8823334 |
| 2942 | 37200.37400.37500.38700.39700.44100.151300.559900 | Concreting | 1.12d | 2027-02-05 | 2027-02-06 | 2941 |  | GC1 | 8823344 |

| ID | WBS | Task | Duration | Start | Finish | Predecessors | Constraint | Calendar | Unique_Task_ID |
| --- | --- | --- | --- | --- | --- | --- | --- | --- | --- |
| 2943 | 37200.37400.37500.38700.39700.44100.151200 | **32nd floor slab** | 15.75d | 2027-02-06 | 2027-02-20 |  | start no earlier than 2027-02-06 | GC1 | 8808994 |
| 2944 | 37200.37400.37500.38700.39700.44100.151200.560000 | Reinforcement | 11.25d | 2027-02-06 | 2027-02-16 | 2942 |  | GC1 | 8823354 |
| 2945 | 37200.37400.37500.38700.39700.44100.151200.560100 | Wall conduiting | 2.25d | 2027-02-07 | 2027-02-09 | 2940, 2944SS+1.12d |  | GC1 | 8823364 |
| 2946 | 37200.37400.37500.38700.39700.44100.151200.560200 | Formwork | 12.38d | 2027-02-08 | 2027-02-19 | 2944SS+2.25d |  | GC1 | 8823374 |
| 2947 | 37200.37400.37500.38700.39700.44100.151200.560300 | Concreting | 1.12d | 2027-02-19 | 2027-02-20 | 2946 |  | GC1 | 8823384 |
| 2948 | 37200.37400.37500.38700.39700.44100.151100 | **33rd floor slab** | 11.25d | 2027-02-20 | 2027-03-02 |  | start no earlier than 2027-02-20 | GC1 | 8808984 |
| 2949 | 37200.37400.37500.38700.39700.44100.151100.560400 | Reinforcement | 7.88d | 2027-02-20 | 2027-02-27 | 2947 |  | GC1 | 8823394 |
| 2950 | 37200.37400.37500.38700.39700.44100.151100.560500 | Wall conduiting | 2.25d | 2027-02-21 | 2027-02-23 | 2945, 2949SS+1.12d |  | GC1 | 8823404 |
| 2951 | 37200.37400.37500.38700.39700.44100.151100.560600 | Formwork | 7.88d | 2027-02-22 | 2027-03-01 | 2949SS+2.25d |  | GC1 | 8823414 |
| 2952 | 37200.37400.37500.38700.39700.44100.151100.560700 | Concreting | 1.12d | 2027-03-01 | 2027-03-02 | 2951 |  | GC1 | 8823424 |
| 2953 | 37200.37400.37500.38700.39700.44100.151000 | **34th floor slab** | 16.88d | 2027-03-02 | 2027-03-17 |  | start no earlier than 2027-03-02 | GC1 | 8808974 |
| 2954 | 37200.37400.37500.38700.39700.44100.151000.560800 | Reinforcement | 13.5d | 2027-03-02 | 2027-03-14 | 2952 |  | GC1 | 8823434 |
| 2955 | 37200.37400.37500.38700.39700.44100.151000.560900 | Wall conduiting | 2.25d | 2027-03-03 | 2027-03-05 | 2950, 2954SS+1.12d |  | GC1 | 8823444 |
| 2956 | 37200.37400.37500.38700.39700.44100.151000.561000 | Formwork | 13.5d | 2027-03-04 | 2027-03-16 | 2954SS+2.25d |  | GC1 | 8823454 |
| 2957 | 37200.37400.37500.38700.39700.44100.151000.561100 | Concreting | 1.12d | 2027-03-16 | 2027-03-17 | 2956 |  | GC1 | 8823464 |
| 2958 | 37200.37400.37500.38700.39700.44100.150900 | **35th floor slab** | 13.5d | 2027-03-17 | 2027-03-29 |  | start no earlier than 2027-03-17 | GC1 | 8808964 |
| 2959 | 37200.37400.37500.38700.39700.44100.150900.561200 | Reinforcement | 9d | 2027-03-17 | 2027-03-25 | 2957 |  | GC1 | 8823474 |
| 2960 | 37200.37400.37500.38700.39700.44100.150900.561300 | Wall conduiting | 2.25d | 2027-03-18 | 2027-03-20 | 2955, 2959SS+1.12d |  | GC1 | 8823484 |
| 2961 | 37200.37400.37500.38700.39700.44100.150900.561400 | Formwork | 9d | 2027-03-20 | 2027-03-28 | 2960SS+2.25d |  | GC1 | 8823494 |
| 2962 | 37200.37400.37500.38700.39700.44100.150900.561500 | Concreting | 1.12d | 2027-03-28 | 2027-03-29 | 2961 |  | GC1 | 8823504 |
| 2963 | 37200.37400.37500.38700.39700.44100.150800 | **Terrace floor slab** | 23.62d | 2027-03-29 | 2027-04-19 |  | start no earlier than 2027-03-29 | GC1 | 8808954 |
| 2964 | 37200.37400.37500.38700.39700.44100.150800.561600 | Reinforcement | 20.25d | 2027-03-29 | 2027-04-16 | 2962 |  | GC1 | 8823514 |
| 2965 | 37200.37400.37500.38700.39700.44100.150800.561700 | Wall conduiting | 2.25d | 2027-03-30 | 2027-04-01 | 2960, 2964SS+1.12d |  | GC1 | 8823524 |
| 2966 | 37200.37400.37500.38700.39700.44100.150800.561800 | Formwork | 20.25d | 2027-03-31 | 2027-04-18 | 2964SS+2.25d |  | GC1 | 8823534 |
| 2967 | 37200.37400.37500.38700.39700.44100.150800.561900 | Concreting | 1.12d | 2027-04-18 | 2027-04-19 | 2966 |  | GC1 | 8823544 |

| ID | WBS | Task | Duration | Start | Finish | Predecessors | Constraint | Calendar | Unique_Task_ID |
| --- | --- | --- | --- | --- | --- | --- | --- | --- | --- |
| 2968 | 37200.37400.37500.38700.39700.44100.150700 | **OHT & Mumty** | 45d | 2027-04-19 | 2027-05-29 |  | start no earlier than 2027-04-19 | GC1 | 8808944 |
| 2969 | 37200.37400.37500.38700.39700.44100.150700.562000 | Reinforcement | 34.88d | 2027-04-19 | 2027-05-20 | 2967 |  | GC1 | 8823554 |
| 2970 | 37200.37400.37500.38700.39700.44100.150700.562100 | Wall conduiting | 5.62d | 2027-04-20 | 2027-04-25 | 2965, 2969SS+1.12d |  | GC1 | 8823564 |
| 2971 | 37200.37400.37500.38700.39700.44100.150700.562200 | Formwork | 34.88d | 2027-04-25 | 2027-05-26 | 2969SS+4.5d, 2970 |  | GC1 | 8823574 |
| 2972 | 37200.37400.37500.38700.39700.44100.150700.562300 | Concreting | 3.38d | 2027-05-26 | 2027-05-29 | 2971 |  | GC1 | 8823584 |
| 2973 | 37200.37400.37500.38700.39700.45400 | **Post Pour Activities** | 439.88d | 2026-03-17 | 2027-05-27 |  | start no earlier than 2026-03-17 | GC1 | 8806114 |
| 2974 | 37200.37400.37500.38700.39700.45400.354600 | 1st Floor | 12.38d | 2026-03-17 | 2026-03-28 | 2807 |  | GC1 | 8814194 |
| 2975 | 37200.37400.37500.38700.39700.45400.354700 | 2nd Floor | 12.38d | 2026-03-28 | 2026-04-08 | 2974, 2812 |  | GC1 | 8814204 |
| 2976 | 37200.37400.37500.38700.39700.45400.354800 | 3rd Floor | 12.38d | 2026-04-08 | 2026-04-19 | 2975, 2817 |  | GC1 | 8814214 |
| 2977 | 37200.37400.37500.38700.39700.45400.354900 | 4th Floor | 12.38d | 2026-04-19 | 2026-04-30 | 2976, 2822 |  | GC1 | 8814224 |
| 2978 | 37200.37400.37500.38700.39700.45400.355000 | 5th Floor | 12.38d | 2026-04-30 | 2026-05-11 | 2977, 2827 |  | GC1 | 8814234 |
| 2979 | 37200.37400.37500.38700.39700.45400.355100 | 6th Floor | 12.38d | 2026-05-11 | 2026-05-22 | 2978, 2832 |  | GC1 | 8814244 |
| 2980 | 37200.37400.37500.38700.39700.45400.355200 | 7th Floor | 12.38d | 2026-05-22 | 2026-06-02 | 2979, 2837 |  | GC1 | 8814254 |
| 2981 | 37200.37400.37500.38700.39700.45400.355300 | 8th Floor | 12.38d | 2026-06-02 | 2026-06-13 | 2980, 2842 |  | GC1 | 8814264 |
| 2982 | 37200.37400.37500.38700.39700.45400.355400 | 9th Floor | 12.38d | 2026-06-13 | 2026-06-24 | 2981, 2847 |  | GC1 | 8814274 |
| 2983 | 37200.37400.37500.38700.39700.45400.355500 | 10th Floor | 11.25d | 2026-06-24 | 2026-07-04 | 2982, 2852 |  | GC1 | 8814284 |
| 2984 | 37200.37400.37500.38700.39700.45400.355600 | 11th Floor | 11.25d | 2026-07-04 | 2026-07-14 | 2983, 2857 |  | GC1 | 8814294 |
| 2985 | 37200.37400.37500.38700.39700.45400.355700 | 12th Floor | 11.25d | 2026-07-14 | 2026-07-24 | 2984, 2862 |  | GC1 | 8814304 |
| 2986 | 37200.37400.37500.38700.39700.45400.355800 | 13th Floor | 11.25d | 2026-07-24 | 2026-08-03 | 2985, 2867 |  | GC1 | 8814314 |
| 2987 | 37200.37400.37500.38700.39700.45400.355900 | 14th Floor | 12.38d | 2026-08-03 | 2026-08-14 | 2986, 2872 |  | GC1 | 8814324 |
| 2988 | 37200.37400.37500.38700.39700.45400.356000 | 15th Floor | 12.38d | 2026-08-14 | 2026-08-25 | 2987, 2877 |  | GC1 | 8814334 |
| 2989 | 37200.37400.37500.38700.39700.45400.356100 | 16th Floor | 12.38d | 2026-08-25 | 2026-09-05 | 2988, 2882 |  | GC1 | 8814344 |
| 2990 | 37200.37400.37500.38700.39700.45400.356200 | 17th Floor | 12.38d | 2026-09-05 | 2026-09-16 | 2989, 2887 |  | GC1 | 8814354 |
| 2991 | 37200.37400.37500.38700.39700.45400.356300 | 18th Floor | 12.38d | 2026-09-16 | 2026-09-27 | 2990, 2892 |  | GC1 | 8814364 |
| 2992 | 37200.37400.37500.38700.39700.45400.356400 | 19th Floor | 12.38d | 2026-09-27 | 2026-10-08 | 2991, 2897 |  | GC1 | 8814374 |
| 2993 | 37200.37400.37500.38700.39700.45400.356500 | 20th Floor | 12.38d | 2026-10-08 | 2026-10-19 | 2992, 2902 |  | GC1 | 8814384 |
| 2994 | 37200.37400.37500.38700.39700.45400.356600 | 21st Floor | 12.38d | 2026-10-19 | 2026-10-30 | 2993, 2907 |  | GC1 | 8814394 |
| 2995 | 37200.37400.37500.38700.39700.45400.356700 | 22nd Floor | 12.38d | 2026-10-30 | 2026-12-25 | 2994, 2912 |  | GC1 | 8814404 |
| 2996 | 37200.37400.37500.38700.39700.45400.356800 | 23rd Floor | 12.38d | 2026-12-25 | 2027-01-05 | 2995, 2917 |  | GC1 | 8814414 |
| 2997 | 37200.37400.37500.38700.39700.45400.356900 | 24th Floor | 12.38d | 2027-01-05 | 2027-01-16 | 2996, 2922 |  | GC1 | 8814424 |
| 2998 | 37200.37400.37500.38700.39700.45400.357000 | 25th Floor | 12.38d | 2027-01-16 | 2027-01-27 | 2997, 2927 |  | GC1 | 8814434 |
| 2999 | 37200.37400.37500.38700.39700.45400.357100 | 26th Floor | 12.38d | 2027-01-27 | 2027-02-07 | 2998, 2932 |  | GC1 | 8814444 |
| 3000 | 37200.37400.37500.38700.39700.45400.357200 | 27th Floor | 12.38d | 2027-02-07 | 2027-02-18 | 2999, 2937 |  | GC1 | 8814454 |
| 3001 | 37200.37400.37500.38700.39700.45400.357300 | 28th Floor | 12.38d | 2027-02-18 | 2027-03-01 | 3000, 2942 |  | GC1 | 8814464 |
| 3002 | 37200.37400.37500.38700.39700.45400.357400 | 29th Floor | 12.38d | 2027-03-01 | 2027-03-12 | 3001, 2947 |  | GC1 | 8814474 |
| 3003 | 37200.37400.37500.38700.39700.45400.357500 | 30th Floor | 12.38d | 2027-03-12 | 2027-03-23 | 3002, 2952 |  | GC1 | 8814484 |
| 3004 | 37200.37400.37500.38700.39700.45400.357600 | 31st Floor | 12.38d | 2027-03-23 | 2027-04-03 | 3003, 2957 |  | GC1 | 8814494 |
| 3005 | 37200.37400.37500.38700.39700.45400.357700 | 32nd Flood | 12.38d | 2027-04-03 | 2027-04-14 | 3004, 2962 |  | GC1 | 8814504 |
| 3006 | 37200.37400.37500.38700.39700.45400.357800 | 33rd Floor | 12.38d | 2027-04-14 | 2027-04-25 | 3005 |  | GC1 | 8814514 |
| 3007 | 37200.37400.37500.38700.39700.45400.357900 | 34th Floor | 9d | 2027-04-25 | 2027-05-03 | 3006 |  | GC1 | 8814524 |
| 3008 | 37200.37400.37500.38700.39700.45400.358000 | 35th Floor | 9d | 2027-05-03 | 2027-05-11 | 3007 |  | GC1 | 8814534 |
| 3009 | 37200.37400.37500.38700.39700.45400.358100 | Terrace | 9d | 2027-05-11 | 2027-05-19 | 3008 |  | GC1 | 8814544 |
| 3010 | 37200.37400.37500.38700.39700.45400.358200 | Mumty & Machine Room | 9d | 2027-05-19 | 2027-05-27 | 3009 |  | GC1 | 8814554 |

| ID | WBS | Task | Duration | Start | Finish | Predecessors | Constraint | Calendar | Unique_Task_ID |
| --- | --- | --- | --- | --- | --- | --- | --- | --- | --- |
| 3011 | 37200.37400.37500.38700.39700.41100 | **Finishing work** | 889.88d | 2026-03-29 | 2028-08-26 |  | start no earlier than 2026-03-29 | GC1 | 8805964 |
| 3012 | 37200.37400.37500.38700.39700.41100.42100 | **Flat finishing** | 889.88d | 2026-03-29 | 2028-08-26 |  | start no earlier than 2026-03-29 | GC1 | 8806014 |
| 3013 | 37200.37400.37500.38700.39700.41100.42100.87400 | **1st Floor** | 417.38d | 2026-03-29 | 2027-05-19 |  | start no earlier than 2026-03-29 | GC1 | 8807244 |
| 3014 | 37200.37400.37500.38700.39700.41100.42100.87400.1236200 | Block Work | 9d | 2026-03-29 | 2026-04-06 | 2974FS+0.25d, 2807 |  | GC1 | 8841904 |
| 3015 | 37200.37400.37500.38700.39700.41100.42100.87400.1236300 | Door Frame Fixing | 5.62d | 2026-04-06 | 2026-04-11 | 3014 |  | GC1 | 8841914 |
| 3016 | 37200.37400.37500.38700.39700.41100.42100.87400.1236400 | Internal Plumbing Works | 11.25d | 2026-04-06 | 2026-04-16 | 3014 |  | GC1 | 8841924 |
| 3017 | 37200.37400.37500.38700.39700.41100.42100.87400.1236500 | Waterproofing | 13.5d | 2026-04-16 | 2026-04-28 | 3016 |  | GC1 | 8841934 |
| 3018 | 37200.37400.37500.38700.39700.41100.42100.87400.1236600 | Internal Plaster | 10.12d | 2026-04-11 | 2026-04-20 | 3015FS+0.25d |  | GC1 | 8841944 |
| 3019 | 37200.37400.37500.38700.39700.41100.42100.87400.1236700 | IPS flooring work | 10.12d | 2026-04-28 | 2026-05-07 | 3015, 3016, 3017 |  | GC1 | 8841954 |
| 3020 | 37200.37400.37500.38700.39700.41100.42100.87400.1236800 | Toilet dado work | 9d | 2027-03-09 | 2027-03-17 | 3017FS+303.75d, 3018FS+303.75d |  | GC1 | 8841964 |
| 3021 | 37200.37400.37500.38700.39700.41100.42100.87400.1236900 | Toilet flooring work | 7.88d | 2027-03-17 | 2027-03-24 | 3020 |  | GC1 | 8841974 |
| 3022 | 37200.37400.37500.38700.39700.41100.42100.87400.1237000 | Living dinning flooring | 4.5d | 2027-03-24 | 2027-03-28 | 3015, 3021 |  | GC1 | 8841984 |
| 3023 | 37200.37400.37500.38700.39700.41100.42100.87400.1237100 | Aluminium door-window fixing | 9d | 2027-03-28 | 2027-04-05 | 2822, 3022FS+0.25d |  | GC1 | 8841994 |
| 3024 | 37200.37400.37500.38700.39700.41100.42100.87400.1237200 | Putty primer coat | 10.12d | 2027-03-28 | 2027-04-06 | 3022 |  | GC1 | 8842004 |
| 3025 | 37200.37400.37500.38700.39700.41100.42100.87400.1237300 | Door shutter fixing | 9d | 2027-03-28 | 2027-04-05 | 3022 |  | GC1 | 8842014 |
| 3026 | 37200.37400.37500.38700.39700.41100.42100.87400.1237400 | Electrical wiring work | 13.5d | 2027-04-15 | 2027-04-27 | 3025FS+11.25d |  | GC1 | 8842024 |
| 3027 | 37200.37400.37500.38700.39700.41100.42100.87400.1237500 | Painting 1st coat | 13.5d | 2027-04-27 | 2027-05-09 | 3024, 3025, 3026 |  | GC1 | 8842034 |
| 3028 | 37200.37400.37500.38700.39700.41100.42100.87400.1237600 | False ceiling | 11.25d | 2027-05-09 | 2027-05-19 | 3027 |  | GC1 | 8842044 |
| 3029 | 37200.37400.37500.38700.39700.41100.42100.87500 | **2nd Floor** | 421.62d | 2026-04-06 | 2027-05-31 |  | start no earlier than 2026-04-06 | GC1 | 8807254 |
| 3030 | 37200.37400.37500.38700.39700.41100.42100.87500.1237700 | Block Work | 9d | 2026-04-06 | 2026-04-14 | 3014FS+0.25d |  | GC1 | 8842054 |
| 3031 | 37200.37400.37500.38700.39700.41100.42100.87500.1237800 | Door Frame Fixing | 5.62d | 2026-04-14 | 2026-04-19 | 3015, 3030 |  | GC1 | 8842064 |
| 3032 | 37200.37400.37500.38700.39700.41100.42100.87500.1237900 | Internal Plumbing Works | 11.25d | 2026-04-16 | 2026-04-26 | 3016, 3030 |  | GC1 | 8842074 |
| 3033 | 37200.37400.37500.38700.39700.41100.42100.87500.1238000 | Waterproofing | 13.5d | 2026-04-28 | 2026-05-10 | 3017, 3032 |  | GC1 | 8842084 |
| 3034 | 37200.37400.37500.38700.39700.41100.42100.87500.1238100 | Internal Plaster | 10.12d | 2026-04-20 | 2026-04-29 | 3018FS+0.25d, 3031FS+0.25d |  | GC1 | 8842094 |
| 3035 | 37200.37400.37500.38700.39700.41100.42100.87500.1238200 | IPS flooring work | 10.12d | 2026-05-10 | 2026-05-19 | 3019, 3031, 3032, 3033 |  | GC1 | 8842104 |
| 3036 | 37200.37400.37500.38700.39700.41100.42100.87500.1238300 | Toilet dado work | 9d | 2027-03-17 | 2027-03-25 | 3020, 3033, 3034 |  | GC1 | 8842114 |
| 3037 | 37200.37400.37500.38700.39700.41100.42100.87500.1238400 | Toilet flooring work | 7.88d | 2027-03-25 | 2027-04-01 | 3021, 3036 |  | GC1 | 8842124 |
| 3038 | 37200.37400.37500.38700.39700.41100.42100.87500.1238500 | Living dinning flooring | 4.5d | 2027-04-01 | 2027-04-05 | 3022FS+0.25d, 3037FS+0.25d |  | GC1 | 8842134 |
| 3039 | 37200.37400.37500.38700.39700.41100.42100.87500.1238600 | Aluminium door-window fixing | 9d | 2027-04-05 | 2027-04-13 | 3023FS+0.25d, 3038FS+0.25d |  | GC1 | 8842144 |
| 3040 | 37200.37400.37500.38700.39700.41100.42100.87500.1238700 | Putty primer coat | 6.75d | 2027-04-06 | 2027-04-12 | 3024, 3038 |  | GC1 | 8842154 |
| 3041 | 37200.37400.37500.38700.39700.41100.42100.87500.1238800 | Door shutter fixing | 9d | 2027-04-05 | 2027-04-13 | 3025, 3038 |  | GC1 | 8842164 |
| 3042 | 37200.37400.37500.38700.39700.41100.42100.87500.1238900 | Electrical wiring work | 13.5d | 2027-04-27 | 2027-05-09 | 3026, 3041 |  | GC1 | 8842174 |
| 3043 | 37200.37400.37500.38700.39700.41100.42100.87500.1239000 | Painting 1st coat | 13.5d | 2027-05-09 | 2027-05-21 | 3027, 3040, 3041, 3042 |  | GC1 | 8842184 |
| 3044 | 37200.37400.37500.38700.39700.41100.42100.87500.1239100 | False ceiling | 11.25d | 2027-05-21 | 2027-05-31 | 3028, 3043 |  | GC1 | 8842194 |

| ID | WBS | Task | Duration | Start | Finish | Predecessors | Constraint | Calendar | Unique_Task_ID |
| --- | --- | --- | --- | --- | --- | --- | --- | --- | --- |
| 3045 | 37200.37400.37500.38700.39700.41100.42100.87600 | **3rd Floor** | 425.88d | 2026-04-14 | 2027-06-12 |  | start no earlier than 2026-04-14 | GC1 | 8807264 |
| 3046 | 37200.37400.37500.38700.39700.41100.42100.87600.1239200 | Block Work | 9d | 2026-04-14 | 2026-04-22 | 3030FS+0.25d |  | GC1 | 8842204 |
| 3047 | 37200.37400.37500.38700.39700.41100.42100.87600.1239300 | Door Frame Fixing | 5.62d | 2026-04-22 | 2026-04-27 | 3031, 3046 |  | GC1 | 8842214 |
| 3048 | 37200.37400.37500.38700.39700.41100.42100.87600.1239400 | Internal Plumbing Works | 11.25d | 2026-04-26 | 2026-05-06 | 3032, 3046 |  | GC1 | 8842224 |
| 3049 | 37200.37400.37500.38700.39700.41100.42100.87600.1239500 | Waterproofing | 13.5d | 2026-05-10 | 2026-05-22 | 3033, 3048 |  | GC1 | 8842234 |
| 3050 | 37200.37400.37500.38700.39700.41100.42100.87600.1239600 | Internal Plaster | 10.12d | 2026-04-29 | 2026-05-08 | 3034FS+0.25d, 3047FS+0.25d |  | GC1 | 8842244 |
| 3051 | 37200.37400.37500.38700.39700.41100.42100.87600.1239700 | IPS flooring work | 10.12d | 2026-05-22 | 2026-05-31 | 3035, 3047, 3049, 3050 |  | GC1 | 8842254 |
| 3052 | 37200.37400.37500.38700.39700.41100.42100.87600.1239800 | Toilet dado work | 9d | 2027-03-25 | 2027-04-02 | 3036, 3049, 3050 |  | GC1 | 8842264 |
| 3053 | 37200.37400.37500.38700.39700.41100.42100.87600.1239900 | Toilet flooring work | 7.88d | 2027-04-02 | 2027-04-09 | 3037, 3052 |  | GC1 | 8842274 |
| 3054 | 37200.37400.37500.38700.39700.41100.42100.87600.1240000 | Living dinning flooring | 4.5d | 2027-04-09 | 2027-04-13 | 3038FS+0.25d, 3053FS+0.25d |  | GC1 | 8842284 |
| 3055 | 37200.37400.37500.38700.39700.41100.42100.87600.1240100 | Aluminium door-window fixing | 9d | 2027-04-13 | 2027-04-21 | 3039FS+0.25d, 3054FS+0.25d |  | GC1 | 8842294 |
| 3056 | 37200.37400.37500.38700.39700.41100.42100.87600.1240200 | Putty primer coat | 6.75d | 2027-04-13 | 2027-04-19 | 3040, 3054 |  | GC1 | 8842304 |
| 3057 | 37200.37400.37500.38700.39700.41100.42100.87600.1240300 | Door shutter fixing | 9d | 2027-04-13 | 2027-04-21 | 3041, 3054 |  | GC1 | 8842314 |
| 3058 | 37200.37400.37500.38700.39700.41100.42100.87600.1240400 | Electrical wiring work | 13.5d | 2027-05-09 | 2027-05-21 | 3042, 3057 |  | GC1 | 8842324 |
| 3059 | 37200.37400.37500.38700.39700.41100.42100.87600.1240500 | Painting 1st coat | 13.5d | 2027-05-21 | 2027-06-02 | 3043, 3056, 3057, 3058 |  | GC1 | 8842334 |
| 3060 | 37200.37400.37500.38700.39700.41100.42100.87600.1240600 | False ceiling | 11.25d | 2027-06-02 | 2027-06-12 | 3044, 3059 |  | GC1 | 8842344 |
| 3061 | 37200.37400.37500.38700.39700.41100.42100.87700 | **4th Floor** | 430.12d | 2026-04-22 | 2027-06-24 |  | start no earlier than 2026-04-22 | GC1 | 8807274 |
| 3062 | 37200.37400.37500.38700.39700.41100.42100.87700.1240700 | Block Work | 9d | 2026-04-22 | 2026-04-30 | 3046FS+0.25d |  | GC1 | 8842354 |
| 3063 | 37200.37400.37500.38700.39700.41100.42100.87700.1240800 | Door Frame Fixing | 5.62d | 2026-04-30 | 2026-05-05 | 3047, 3062 |  | GC1 | 8842364 |
| 3064 | 37200.37400.37500.38700.39700.41100.42100.87700.1240900 | Internal Plumbing Works | 11.25d | 2026-05-06 | 2026-05-16 | 3048, 3062 |  | GC1 | 8842374 |
| 3065 | 37200.37400.37500.38700.39700.41100.42100.87700.1241000 | Waterproofing | 13.5d | 2026-05-22 | 2026-06-03 | 3049, 3064 |  | GC1 | 8842384 |
| 3066 | 37200.37400.37500.38700.39700.41100.42100.87700.1241100 | Internal Plaster | 10.12d | 2026-05-09 | 2026-05-18 | 3050FS+0.25d, 3063FS+0.25d |  | GC1 | 8842394 |
| 3067 | 37200.37400.37500.38700.39700.41100.42100.87700.1241200 | IPS flooring work | 10.12d | 2026-06-03 | 2026-06-12 | 3051, 3063, 3065, 3066 |  | GC1 | 8842404 |
| 3068 | 37200.37400.37500.38700.39700.41100.42100.87700.1241300 | Toilet dado work | 9d | 2027-04-02 | 2027-04-10 | 3052, 3065, 3066 |  | GC1 | 8842414 |
| 3069 | 37200.37400.37500.38700.39700.41100.42100.87700.1241400 | Toilet flooring work | 7.88d | 2027-04-10 | 2027-04-17 | 3053, 3068 |  | GC1 | 8842424 |
| 3070 | 37200.37400.37500.38700.39700.41100.42100.87700.1241500 | Living dinning flooring | 4.5d | 2027-04-17 | 2027-04-21 | 3054FS+0.25d, 3069FS+0.25d |  | GC1 | 8842434 |
| 3071 | 37200.37400.37500.38700.39700.41100.42100.87700.1241600 | Aluminium door-window fixing | 9d | 2027-04-22 | 2027-04-30 | 3055FS+0.25d, 3070FS+0.25d |  | GC1 | 8842444 |
| 3072 | 37200.37400.37500.38700.39700.41100.42100.87700.1241700 | Putty primer coat | 6.75d | 2027-04-21 | 2027-04-27 | 3056, 3070 |  | GC1 | 8842454 |
| 3073 | 37200.37400.37500.38700.39700.41100.42100.87700.1241800 | Door shutter fixing | 9d | 2027-04-21 | 2027-04-29 | 3057, 3070 |  | GC1 | 8842464 |
| 3074 | 37200.37400.37500.38700.39700.41100.42100.87700.1241900 | Electrical wiring work | 13.5d | 2027-05-21 | 2027-06-02 | 3058, 3073 |  | GC1 | 8842474 |
| 3075 | 37200.37400.37500.38700.39700.41100.42100.87700.1242000 | Painting 1st coat | 13.5d | 2027-06-02 | 2027-06-14 | 3059, 3072, 3073, 3074 |  | GC1 | 8842484 |
| 3076 | 37200.37400.37500.38700.39700.41100.42100.87700.1242100 | False ceiling | 11.25d | 2027-06-14 | 2027-06-24 | 3060, 3075 |  | GC1 | 8842494 |

| ID | WBS | Task | Duration | Start | Finish | Predecessors | Constraint | Calendar | Unique_Task_ID |
| --- | --- | --- | --- | --- | --- | --- | --- | --- | --- |
| 3077 | 37200.37400.37500.38700.39700.41100.42100.87800 | **5th Floor** | 437.75d | 2026-05-01 | 2027-07-09 |  | start no earlier than 2026-05-01 | GC1 | 8807284 |
| 3078 | 37200.37400.37500.38700.39700.41100.42100.87800.1242200 | Block Work | 9d | 2026-05-01 | 2026-05-09 | 3062FS+0.25d |  | GC1 | 8842504 |
| 3079 | 37200.37400.37500.38700.39700.41100.42100.87800.1242300 | Door Frame Fixing | 5.62d | 2026-05-09 | 2026-05-14 | 3063, 3078 |  | GC1 | 8842514 |
| 3080 | 37200.37400.37500.38700.39700.41100.42100.87800.1242400 | Internal Plumbing Works | 11.25d | 2026-05-16 | 2026-05-26 | 3064, 3078 |  | GC1 | 8842524 |
| 3081 | 37200.37400.37500.38700.39700.41100.42100.87800.1242500 | Waterproofing | 13.5d | 2026-06-03 | 2026-06-15 | 3065, 3080 |  | GC1 | 8842534 |
| 3082 | 37200.37400.37500.38700.39700.41100.42100.87800.1242600 | Internal Plaster | 10.12d | 2026-05-18 | 2026-05-27 | 3066FS+0.25d, 3079FS+0.25d |  | GC1 | 8842544 |
| 3083 | 37200.37400.37500.38700.39700.41100.42100.87800.1242700 | IPS flooring work | 10.12d | 2026-06-15 | 2026-06-24 | 3067, 3079, 3081, 3082 |  | GC1 | 8842554 |
| 3084 | 37200.37400.37500.38700.39700.41100.42100.87800.1242800 | Toilet dado work | 9d | 2027-04-10 | 2027-04-18 | 3068, 3081, 3082 |  | GC1 | 8842564 |
| 3085 | 37200.37400.37500.38700.39700.41100.42100.87800.1242900 | Toilet flooring work | 7.88d | 2027-04-18 | 2027-04-25 | 3069, 3084 |  | GC1 | 8842574 |
| 3086 | 37200.37400.37500.38700.39700.41100.42100.87800.1243000 | Living dinning flooring | 4.5d | 2027-04-25 | 2027-04-29 | 3070FS+0.25d, 3085FS+0.25d |  | GC1 | 8842584 |
| 3087 | 37200.37400.37500.38700.39700.41100.42100.87800.1243100 | Aluminium door-window fixing | 9d | 2027-04-30 | 2027-05-08 | 3071FS+0.25d, 3086FS+0.25d |  | GC1 | 8842594 |
| 3088 | 37200.37400.37500.38700.39700.41100.42100.87800.1243200 | Putty primer coat | 6.75d | 2027-04-29 | 2027-05-05 | 3072, 3086 |  | GC1 | 8842604 |
| 3089 | 37200.37400.37500.38700.39700.41100.42100.87800.1243300 | Door shutter fixing | 9d | 2027-04-29 | 2027-05-07 | 3073, 3086 |  | GC1 | 8842614 |
| 3090 | 37200.37400.37500.38700.39700.41100.42100.87800.1243400 | Electrical wiring work | 13.5d | 2027-06-02 | 2027-06-14 | 3074, 3089 |  | GC1 | 8842624 |
| 3091 | 37200.37400.37500.38700.39700.41100.42100.87800.1243500 | Painting 1st coat | 16.88d | 2027-06-14 | 2027-06-29 | 3075, 3088, 3089, 3090 |  | GC1 | 8842634 |
| 3092 | 37200.37400.37500.38700.39700.41100.42100.87800.1243600 | False ceiling | 11.25d | 2027-06-29 | 2027-07-09 | 3076, 3091 |  | GC1 | 8842644 |
| 3093 | 37200.37400.37500.38700.39700.41100.42100.87900 | **6th Floor** | 442d | 2026-05-09 | 2027-07-21 |  | start no earlier than 2026-05-09 | GC1 | 8807294 |
| 3094 | 37200.37400.37500.38700.39700.41100.42100.87900.1243700 | Block Work | 9d | 2026-05-09 | 2026-05-17 | 3078FS+0.25d |  | GC1 | 8842654 |
| 3095 | 37200.37400.37500.38700.39700.41100.42100.87900.1243800 | Door Frame Fixing | 5.62d | 2026-05-14 | 2026-05-19 | 2827, 3079 |  | GC1 | 8842664 |
| 3096 | 37200.37400.37500.38700.39700.41100.42100.87900.1243900 | Internal Plumbing Works | 11.25d | 2026-05-26 | 2026-06-05 | 3080, 3094 |  | GC1 | 8842674 |
| 3097 | 37200.37400.37500.38700.39700.41100.42100.87900.1244000 | Waterproofing | 13.5d | 2026-06-15 | 2026-06-27 | 3081, 3096 |  | GC1 | 8842684 |
| 3098 | 37200.37400.37500.38700.39700.41100.42100.87900.1244100 | Internal Plaster | 10.12d | 2026-05-27 | 2026-06-05 | 3082FS+0.25d, 3095FS+0.25d |  | GC1 | 8842694 |
| 3099 | 37200.37400.37500.38700.39700.41100.42100.87900.1244200 | IPS flooring work | 10.12d | 2026-06-27 | 2026-07-06 | 3083, 3095, 3097, 3098 |  | GC1 | 8842704 |
| 3100 | 37200.37400.37500.38700.39700.41100.42100.87900.1244300 | Toilet dado work | 9d | 2027-04-18 | 2027-04-26 | 3084, 3097, 3098 |  | GC1 | 8842714 |
| 3101 | 37200.37400.37500.38700.39700.41100.42100.87900.1244400 | Toilet flooring work | 7.88d | 2027-04-26 | 2027-05-03 | 3085, 3100 |  | GC1 | 8842724 |
| 3102 | 37200.37400.37500.38700.39700.41100.42100.87900.1244500 | Living dinning flooring | 4.5d | 2027-05-03 | 2027-05-07 | 3086FS+0.25d, 3101FS+0.25d |  | GC1 | 8842734 |
| 3103 | 37200.37400.37500.38700.39700.41100.42100.87900.1244600 | Aluminium door-window fixing | 9d | 2027-05-08 | 2027-05-16 | 3087FS+0.25d, 3102FS+0.25d |  | GC1 | 8842744 |
| 3104 | 37200.37400.37500.38700.39700.41100.42100.87900.1244700 | Putty primer coat | 6.75d | 2027-05-07 | 2027-05-13 | 3088, 3102 |  | GC1 | 8842754 |
| 3105 | 37200.37400.37500.38700.39700.41100.42100.87900.1244800 | Door shutter fixing | 9d | 2027-05-07 | 2027-05-15 | 3089, 3102 |  | GC1 | 8842764 |
| 3106 | 37200.37400.37500.38700.39700.41100.42100.87900.1244900 | Electrical wiring work | 13.5d | 2027-06-14 | 2027-06-26 | 3090, 3105 |  | GC1 | 8842774 |
| 3107 | 37200.37400.37500.38700.39700.41100.42100.87900.1245000 | Painting 1st coat | 13.5d | 2027-06-29 | 2027-07-11 | 3091, 3104, 3105, 3106 |  | GC1 | 8842784 |
| 3108 | 37200.37400.37500.38700.39700.41100.42100.87900.1245100 | False ceiling | 11.25d | 2027-07-11 | 2027-07-21 | 3092, 3107 |  | GC1 | 8842794 |

| ID | WBS | Task | Duration | Start | Finish | Predecessors | Constraint | Calendar | Unique_Task_ID |
| --- | --- | --- | --- | --- | --- | --- | --- | --- | --- |
| 3109 | 37200.37400.37500.38700.39700.41100.42100.88000 | **7th Floor** | 446.25d | 2026-05-17 | 2027-08-02 |  | start no earlier than 2026-05-17 | GC1 | 8807304 |
| 3110 | 37200.37400.37500.38700.39700.41100.42100.88000.1245200 | Block Work | 9d | 2026-05-17 | 2026-05-25 | 3094FS+0.25d |  | GC1 | 8842804 |
| 3111 | 37200.37400.37500.38700.39700.41100.42100.88000.1245300 | Door Frame Fixing | 5.62d | 2026-05-25 | 2026-05-30 | 3095, 3110 |  | GC1 | 8842814 |
| 3112 | 37200.37400.37500.38700.39700.41100.42100.88000.1245400 | Internal Plumbing Works | 11.25d | 2026-06-05 | 2026-06-15 | 3096, 3110 |  | GC1 | 8842824 |
| 3113 | 37200.37400.37500.38700.39700.41100.42100.88000.1245500 | Waterproofing | 13.5d | 2026-06-27 | 2026-07-09 | 3097, 3112 |  | GC1 | 8842834 |
| 3114 | 37200.37400.37500.38700.39700.41100.42100.88000.1245600 | Internal Plaster | 10.12d | 2026-06-05 | 2026-06-14 | 3098FS+0.25d, 3111FS+0.25d |  | GC1 | 8842844 |
| 3115 | 37200.37400.37500.38700.39700.41100.42100.88000.1245700 | IPS flooring work | 10.12d | 2026-07-09 | 2026-07-18 | 3099, 3111, 3113, 3114 |  | GC1 | 8842854 |
| 3116 | 37200.37400.37500.38700.39700.41100.42100.88000.1245800 | Toilet dado work | 9d | 2027-04-26 | 2027-05-04 | 3100, 3113, 3114 |  | GC1 | 8842864 |
| 3117 | 37200.37400.37500.38700.39700.41100.42100.88000.1245900 | Toilet flooring work | 7.88d | 2027-05-04 | 2027-05-11 | 3101, 3116 |  | GC1 | 8842874 |
| 3118 | 37200.37400.37500.38700.39700.41100.42100.88000.1246000 | Living dinning flooring | 3.38d | 2027-05-07 | 2027-05-10 | 3102FS+0.25d, 3111 |  | GC1 | 8842884 |
| 3119 | 37200.37400.37500.38700.39700.41100.42100.88000.1246100 | Aluminium door-window fixing | 9d | 2027-05-16 | 2027-05-24 | 3103FS+0.25d |  | GC1 | 8842894 |
| 3120 | 37200.37400.37500.38700.39700.41100.42100.88000.1246200 | Putty primer coat | 6.75d | 2027-05-13 | 2027-05-19 | 3104, 3118 |  | GC1 | 8842904 |
| 3121 | 37200.37400.37500.38700.39700.41100.42100.88000.1246300 | Door shutter fixing | 9d | 2027-05-15 | 2027-05-23 | 3105, 3118 |  | GC1 | 8842914 |
| 3122 | 37200.37400.37500.38700.39700.41100.42100.88000.1246400 | Electrical wiring work | 13.5d | 2027-06-26 | 2027-07-08 | 3106, 3121 |  | GC1 | 8842924 |
| 3123 | 37200.37400.37500.38700.39700.41100.42100.88000.1246500 | Painting 1st coat | 13.5d | 2027-07-11 | 2027-07-23 | 3107, 3120, 3121, 3122 |  | GC1 | 8842934 |
| 3124 | 37200.37400.37500.38700.39700.41100.42100.88000.1246600 | False ceiling | 11.25d | 2027-07-23 | 2027-08-02 | 3108, 3123 |  | GC1 | 8842944 |
| 3125 | 37200.37400.37500.38700.39700.41100.42100.88100 | **8th Floor** | 450.5d | 2026-05-25 | 2027-08-14 |  | start no earlier than 2026-05-25 | GC1 | 8807314 |
| 3126 | 37200.37400.37500.38700.39700.41100.42100.88100.1246700 | Block Work | 9d | 2026-05-25 | 2026-06-02 | 3110FS+0.25d |  | GC1 | 8842954 |
| 3127 | 37200.37400.37500.38700.39700.41100.42100.88100.1246800 | Door Frame Fixing | 5.62d | 2026-06-02 | 2026-06-07 | 3111, 3126 |  | GC1 | 8842964 |
| 3128 | 37200.37400.37500.38700.39700.41100.42100.88100.1246900 | Internal Plumbing Works | 11.25d | 2026-06-15 | 2026-06-25 | 3112, 3126 |  | GC1 | 8842974 |
| 3129 | 37200.37400.37500.38700.39700.41100.42100.88100.1247000 | Waterproofing | 13.5d | 2026-07-09 | 2026-07-21 | 3113, 3128 |  | GC1 | 8842984 |
| 3130 | 37200.37400.37500.38700.39700.41100.42100.88100.1247100 | Internal Plaster | 10.12d | 2026-06-14 | 2026-06-23 | 3114FS+0.25d, 3127FS+0.25d |  | GC1 | 8842994 |
| 3131 | 37200.37400.37500.38700.39700.41100.42100.88100.1247200 | IPS flooring work | 10.12d | 2026-07-21 | 2026-07-30 | 3115, 3127, 3129, 3130 |  | GC1 | 8843004 |
| 3132 | 37200.37400.37500.38700.39700.41100.42100.88100.1247300 | Toilet dado work | 9d | 2027-05-04 | 2027-05-12 | 3116, 3129, 3130 |  | GC1 | 8843014 |
| 3133 | 37200.37400.37500.38700.39700.41100.42100.88100.1247400 | Toilet flooring work | 7.88d | 2027-05-12 | 2027-05-19 | 3117, 3132 |  | GC1 | 8843024 |
| 3134 | 37200.37400.37500.38700.39700.41100.42100.88100.1247500 | Living dinning flooring | 3.38d | 2027-05-10 | 2027-05-13 | 3118FS+0.25d |  | GC1 | 8843034 |
| 3135 | 37200.37400.37500.38700.39700.41100.42100.88100.1247600 | Aluminium door-window fixing | 13.5d | 2027-05-24 | 2027-06-05 | 3119FS+0.25d, 3134FS+0.25d |  | GC1 | 8843044 |
| 3136 | 37200.37400.37500.38700.39700.41100.42100.88100.1247700 | Putty primer coat | 6.75d | 2027-05-19 | 2027-05-25 | 3120, 3134 |  | GC1 | 8843054 |
| 3137 | 37200.37400.37500.38700.39700.41100.42100.88100.1247800 | Door shutter fixing | 9d | 2027-05-23 | 2027-05-31 | 3121, 3134 |  | GC1 | 8843064 |
| 3138 | 37200.37400.37500.38700.39700.41100.42100.88100.1247900 | Electrical wiring work | 13.5d | 2027-07-08 | 2027-07-20 | 3122, 3137 |  | GC1 | 8843074 |
| 3139 | 37200.37400.37500.38700.39700.41100.42100.88100.1248000 | Painting 1st coat | 13.5d | 2027-07-23 | 2027-08-04 | 3123, 3136, 3137, 3138 |  | GC1 | 8843084 |
| 3140 | 37200.37400.37500.38700.39700.41100.42100.88100.1248100 | False ceiling | 11.25d | 2027-08-04 | 2027-08-14 | 3124, 3139 |  | GC1 | 8843094 |

| ID | WBS | Task | Duration | Start | Finish | Predecessors | Constraint | Calendar | Unique_Task_ID |
| --- | --- | --- | --- | --- | --- | --- | --- | --- | --- |
| 3141 | 37200.37400.37500.38700.39700.41100.42100.88200 | **9th Floor** | 454.75d | 2026-06-02 | 2027-08-26 |  | start no earlier than 2026-06-02 | GC1 | 8807324 |
| 3142 | 37200.37400.37500.38700.39700.41100.42100.88200.1248200 | Block Work | 9d | 2026-06-02 | 2026-06-10 | 3126FS+0.25d |  | GC1 | 8843104 |
| 3143 | 37200.37400.37500.38700.39700.41100.42100.88200.1248300 | Door Frame Fixing | 5.62d | 2026-06-10 | 2026-06-15 | 3127, 3142 |  | GC1 | 8843114 |
| 3144 | 37200.37400.37500.38700.39700.41100.42100.88200.1248400 | Internal Plumbing Works | 11.25d | 2026-06-25 | 2026-07-05 | 3128, 3142 |  | GC1 | 8843124 |
| 3145 | 37200.37400.37500.38700.39700.41100.42100.88200.1248500 | Waterproofing | 13.5d | 2026-07-21 | 2026-08-02 | 3129, 3144 |  | GC1 | 8843134 |
| 3146 | 37200.37400.37500.38700.39700.41100.42100.88200.1248600 | Internal Plaster | 10.12d | 2026-06-24 | 2026-07-03 | 3130FS+0.25d, 3143FS+0.25d |  | GC1 | 8843144 |
| 3147 | 37200.37400.37500.38700.39700.41100.42100.88200.1248700 | IPS flooring work | 10.12d | 2026-08-02 | 2026-08-11 | 3131, 3143, 3145, 3146 |  | GC1 | 8843154 |
| 3148 | 37200.37400.37500.38700.39700.41100.42100.88200.1248800 | Toilet dado work | 9d | 2027-05-12 | 2027-05-20 | 3132, 3145, 3146 |  | GC1 | 8843164 |
| 3149 | 37200.37400.37500.38700.39700.41100.42100.88200.1248900 | Toilet flooring work | 7.88d | 2027-05-20 | 2027-05-27 | 3133, 3148 |  | GC1 | 8843174 |
| 3150 | 37200.37400.37500.38700.39700.41100.42100.88200.1249000 | Living dinning flooring | 3.38d | 2027-05-14 | 2027-05-17 | 3134FS+0.25d |  | GC1 | 8843184 |
| 3151 | 37200.37400.37500.38700.39700.41100.42100.88200.1249100 | Aluminium door-window fixing | 13.5d | 2027-06-06 | 2027-06-18 | 3135FS+0.25d, 3150FS+0.25d |  | GC1 | 8843194 |
| 3152 | 37200.37400.37500.38700.39700.41100.42100.88200.1249200 | Putty primer coat | 6.75d | 2027-05-25 | 2027-05-31 | 3136, 3150 |  | GC1 | 8843204 |
| 3153 | 37200.37400.37500.38700.39700.41100.42100.88200.1249300 | Door shutter fixing | 9d | 2027-05-31 | 2027-06-08 | 3137, 3150 |  | GC1 | 8843214 |
| 3154 | 37200.37400.37500.38700.39700.41100.42100.88200.1249400 | Electrical wiring work | 13.5d | 2027-07-20 | 2027-08-01 | 3138, 3153 |  | GC1 | 8843224 |
| 3155 | 37200.37400.37500.38700.39700.41100.42100.88200.1249500 | Painting 1st coat | 13.5d | 2027-08-04 | 2027-08-16 | 3139, 3152, 3153, 3154 |  | GC1 | 8843234 |
| 3156 | 37200.37400.37500.38700.39700.41100.42100.88200.1249600 | False ceiling | 11.25d | 2027-08-16 | 2027-08-26 | 3140, 3155 |  | GC1 | 8843244 |
| 3157 | 37200.37400.37500.38700.39700.41100.42100.88300 | **10th Floor** | 459d | 2026-06-11 | 2027-09-07 |  | start no earlier than 2026-06-11 | GC1 | 8807334 |
| 3158 | 37200.37400.37500.38700.39700.41100.42100.88300.1249700 | Block Work | 9d | 2026-06-11 | 2026-06-19 | 3142FS+0.25d |  | GC1 | 8843254 |
| 3159 | 37200.37400.37500.38700.39700.41100.42100.88300.1249800 | Door Frame Fixing | 5.62d | 2026-06-19 | 2026-06-24 | 3143, 3158 |  | GC1 | 8843264 |
| 3160 | 37200.37400.37500.38700.39700.41100.42100.88300.1249900 | Internal Plumbing Works | 11.25d | 2026-07-05 | 2026-07-15 | 3144, 3158 |  | GC1 | 8843274 |
| 3161 | 37200.37400.37500.38700.39700.41100.42100.88300.1250000 | Waterproofing | 13.5d | 2026-08-02 | 2026-08-14 | 3145, 3160 |  | GC1 | 8843284 |
| 3162 | 37200.37400.37500.38700.39700.41100.42100.88300.1250100 | Internal Plaster | 10.12d | 2026-07-03 | 2026-07-12 | 3146FS+0.25d, 3159FS+0.25d |  | GC1 | 8843294 |
| 3163 | 37200.37400.37500.38700.39700.41100.42100.88300.1250200 | IPS flooring work | 10.12d | 2026-08-14 | 2026-08-23 | 3147, 3159, 3161, 3162 |  | GC1 | 8843304 |
| 3164 | 37200.37400.37500.38700.39700.41100.42100.88300.1250300 | Toilet dado work | 9d | 2027-05-20 | 2027-05-28 | 3148, 3161, 3162 |  | GC1 | 8843314 |
| 3165 | 37200.37400.37500.38700.39700.41100.42100.88300.1250400 | Toilet flooring work | 7.88d | 2027-05-28 | 2027-06-04 | 3149, 3164 |  | GC1 | 8843324 |
| 3166 | 37200.37400.37500.38700.39700.41100.42100.88300.1250500 | Living dinning flooring | 3.38d | 2027-05-17 | 2027-05-20 | 3150FS+0.25d |  | GC1 | 8843334 |
| 3167 | 37200.37400.37500.38700.39700.41100.42100.88300.1250600 | Aluminium door-window fixing | 13.5d | 2027-06-18 | 2027-06-30 | 3151FS+0.25d, 3166FS+0.25d |  | GC1 | 8843344 |
| 3168 | 37200.37400.37500.38700.39700.41100.42100.88300.1250700 | Putty primer coat | 6.75d | 2027-05-31 | 2027-06-06 | 3152, 3166 |  | GC1 | 8843354 |
| 3169 | 37200.37400.37500.38700.39700.41100.42100.88300.1250800 | Door shutter fixing | 9d | 2027-06-08 | 2027-06-16 | 3153, 3166 |  | GC1 | 8843364 |
| 3170 | 37200.37400.37500.38700.39700.41100.42100.88300.1250900 | Electrical wiring work | 13.5d | 2027-08-01 | 2027-08-13 | 3154, 3169 |  | GC1 | 8843374 |
| 3171 | 37200.37400.37500.38700.39700.41100.42100.88300.1251000 | Painting 1st coat | 13.5d | 2027-08-16 | 2027-08-28 | 3155, 3168, 3169, 3170 |  | GC1 | 8843384 |
| 3172 | 37200.37400.37500.38700.39700.41100.42100.88300.1251100 | False ceiling | 11.25d | 2027-08-28 | 2027-09-07 | 3156, 3171 |  | GC1 | 8843394 |

| ID | WBS | Task | Duration | Start | Finish | Predecessors | Constraint | Calendar | Unique_Task_ID |
| --- | --- | --- | --- | --- | --- | --- | --- | --- | --- |
| 3173 | 37200.37400.37500.38700.39700.41100.42100.88400 | **11th Floor** | 463.25d | 2026-06-19 | 2027-09-19 |  | start no earlier than 2026-06-19 | GC1 | 8807344 |
| 3174 | 37200.37400.37500.38700.39700.41100.42100.88400.1251200 | Block Work | 9d | 2026-06-19 | 2026-06-27 | 3158FS+0.25d |  | GC1 | 8843404 |
| 3175 | 37200.37400.37500.38700.39700.41100.42100.88400.1251300 | Door Frame Fixing | 5.62d | 2026-06-27 | 2026-07-02 | 3159, 3174 |  | GC1 | 8843414 |
| 3176 | 37200.37400.37500.38700.39700.41100.42100.88400.1251400 | Internal Plumbing Works | 11.25d | 2026-07-15 | 2026-07-25 | 3160, 3174 |  | GC1 | 8843424 |
| 3177 | 37200.37400.37500.38700.39700.41100.42100.88400.1251500 | Waterproofing | 13.5d | 2026-08-14 | 2026-08-26 | 3161, 3176 |  | GC1 | 8843434 |
| 3178 | 37200.37400.37500.38700.39700.41100.42100.88400.1251600 | Internal Plaster | 10.12d | 2026-07-12 | 2026-07-21 | 3162FS+0.25d, 3175FS+0.25d |  | GC1 | 8843444 |
| 3179 | 37200.37400.37500.38700.39700.41100.42100.88400.1251700 | IPS flooring work | 10.12d | 2026-08-26 | 2026-09-04 | 3163, 3175, 3176, 3177 |  | GC1 | 8843454 |
| 3180 | 37200.37400.37500.38700.39700.41100.42100.88400.1251800 | Toilet dado work | 9d | 2027-05-28 | 2027-06-05 | 3164, 3177, 3178 |  | GC1 | 8843464 |
| 3181 | 37200.37400.37500.38700.39700.41100.42100.88400.1251900 | Toilet flooring work | 7.88d | 2027-06-05 | 2027-06-12 | 3165, 3180 |  | GC1 | 8843474 |
| 3182 | 37200.37400.37500.38700.39700.41100.42100.88400.1252000 | Living dinning flooring | 4.5d | 2027-05-20 | 2027-05-24 | 3166FS+0.25d |  | GC1 | 8843484 |
| 3183 | 37200.37400.37500.38700.39700.41100.42100.88400.1252100 | Aluminium door-window fixing | 13.5d | 2027-06-30 | 2027-07-12 | 3167FS+0.25d, 3182FS+0.25d |  | GC1 | 8843494 |
| 3184 | 37200.37400.37500.38700.39700.41100.42100.88400.1252200 | Putty primer coat | 6.75d | 2027-06-06 | 2027-06-12 | 3168, 3182 |  | GC1 | 8843504 |
| 3185 | 37200.37400.37500.38700.39700.41100.42100.88400.1252300 | Door shutter fixing | 9d | 2027-06-16 | 2027-06-24 | 3169, 3182 |  | GC1 | 8843514 |
| 3186 | 37200.37400.37500.38700.39700.41100.42100.88400.1252400 | Electrical wiring work | 13.5d | 2027-08-13 | 2027-08-25 | 3170, 3185 |  | GC1 | 8843524 |
| 3187 | 37200.37400.37500.38700.39700.41100.42100.88400.1252500 | Painting 1st coat | 13.5d | 2027-08-28 | 2027-09-09 | 3171, 3184, 3185, 3186 |  | GC1 | 8843534 |
| 3188 | 37200.37400.37500.38700.39700.41100.42100.88400.1252600 | False ceiling | 11.25d | 2027-09-09 | 2027-09-19 | 3172, 3187 |  | GC1 | 8843544 |
| 3189 | 37200.37400.37500.38700.39700.41100.42100.88500 | **12th Floor** | 467.5d | 2026-06-27 | 2027-10-01 |  | start no earlier than 2026-06-27 | GC1 | 8807354 |
| 3190 | 37200.37400.37500.38700.39700.41100.42100.88500.1252700 | Block Work | 9d | 2026-06-27 | 2026-07-05 | 3174FS+0.25d |  | GC1 | 8843554 |
| 3191 | 37200.37400.37500.38700.39700.41100.42100.88500.1252800 | Door Frame Fixing | 5.62d | 2026-07-05 | 2026-07-10 | 3175, 3190 |  | GC1 | 8843564 |
| 3192 | 37200.37400.37500.38700.39700.41100.42100.88500.1252900 | Internal Plumbing Works | 11.25d | 2026-07-25 | 2026-08-04 | 3176, 3190 |  | GC1 | 8843574 |
| 3193 | 37200.37400.37500.38700.39700.41100.42100.88500.1253000 | Waterproofing | 13.5d | 2026-08-26 | 2026-09-07 | 3177, 3192 |  | GC1 | 8843584 |
| 3194 | 37200.37400.37500.38700.39700.41100.42100.88500.1253100 | Internal Plaster | 7.88d | 2026-07-21 | 2026-07-28 | 3178FS+0.25d, 3191FS+0.25d |  | GC1 | 8843594 |
| 3195 | 37200.37400.37500.38700.39700.41100.42100.88500.1253200 | IPS flooring work | 10.12d | 2026-09-07 | 2026-09-16 | 3179, 3191, 3192, 3193 |  | GC1 | 8843604 |
| 3196 | 37200.37400.37500.38700.39700.41100.42100.88500.1253300 | Toilet dado work | 9d | 2027-06-05 | 2027-06-13 | 3180, 3193, 3194 |  | GC1 | 8843614 |
| 3197 | 37200.37400.37500.38700.39700.41100.42100.88500.1253400 | Toilet flooring work | 7.88d | 2027-06-13 | 2027-06-20 | 3181, 3196 |  | GC1 | 8843624 |
| 3198 | 37200.37400.37500.38700.39700.41100.42100.88500.1253500 | Living dinning flooring | 13.5d | 2027-05-24 | 2027-06-05 | 3182FS+0.25d, 3191FS+0.25d |  | GC1 | 8843634 |
| 3199 | 37200.37400.37500.38700.39700.41100.42100.88500.1253600 | Aluminium door-window fixing | 13.5d | 2027-07-12 | 2027-07-24 | 3183, 3195, 3198 |  | GC1 | 8843644 |
| 3200 | 37200.37400.37500.38700.39700.41100.42100.88500.1253700 | Putty primer coat | 6.75d | 2027-06-12 | 2027-06-18 | 3184, 3198 |  | GC1 | 8843654 |
| 3201 | 37200.37400.37500.38700.39700.41100.42100.88500.1253800 | Door shutter fixing | 9d | 2027-06-24 | 2027-07-02 | 3185, 3198 |  | GC1 | 8843664 |
| 3202 | 37200.37400.37500.38700.39700.41100.42100.88500.1253900 | Electrical wiring work | 13.5d | 2027-08-25 | 2027-09-06 | 3186, 3201 |  | GC1 | 8843674 |
| 3203 | 37200.37400.37500.38700.39700.41100.42100.88500.1254000 | Painting 1st coat | 13.5d | 2027-09-09 | 2027-09-21 | 3187, 3200, 3201, 3202 |  | GC1 | 8843684 |
| 3204 | 37200.37400.37500.38700.39700.41100.42100.88500.1254100 | False ceiling | 11.25d | 2027-09-21 | 2027-10-01 | 3188, 3203 |  | GC1 | 8843694 |

| ID | WBS | Task | Duration | Start | Finish | Predecessors | Constraint | Calendar | Unique_Task_ID |
| --- | --- | --- | --- | --- | --- | --- | --- | --- | --- |
| 3205 | 37200.37400.37500.38700.39700.41100.42100.88600 | **13th Floor** | 471.75d | 2026-07-05 | 2027-10-13 |  | start no earlier than 2026-07-05 | GC1 | 8807364 |
| 3206 | 37200.37400.37500.38700.39700.41100.42100.88600.1254200 | Block Work | 9d | 2026-07-05 | 2026-07-13 | 3190FS+0.25d |  | GC1 | 8843704 |
| 3207 | 37200.37400.37500.38700.39700.41100.42100.88600.1254300 | Door Frame Fixing | 10.12d | 2026-07-13 | 2026-07-22 | 3191, 3206 |  | GC1 | 8843714 |
| 3208 | 37200.37400.37500.38700.39700.41100.42100.88600.1254400 | Internal Plumbing Works | 11.25d | 2026-08-04 | 2026-08-14 | 3192, 3206 |  | GC1 | 8843724 |
| 3209 | 37200.37400.37500.38700.39700.41100.42100.88600.1254500 | Waterproofing | 13.5d | 2026-09-07 | 2026-09-19 | 3193, 3208 |  | GC1 | 8843734 |
| 3210 | 37200.37400.37500.38700.39700.41100.42100.88600.1254600 | Internal Plaster | 5.62d | 2026-07-29 | 2026-08-03 | 3194FS+0.25d, 3207FS+0.25d |  | GC1 | 8843744 |
| 3211 | 37200.37400.37500.38700.39700.41100.42100.88600.1254700 | IPS flooring work | 10.12d | 2026-09-19 | 2026-09-28 | 3195, 3207, 3209, 3210 |  | GC1 | 8843754 |
| 3212 | 37200.37400.37500.38700.39700.41100.42100.88600.1254800 | Toilet dado work | 9d | 2027-06-13 | 2027-06-21 | 3196, 3209, 3210 |  | GC1 | 8843764 |
| 3213 | 37200.37400.37500.38700.39700.41100.42100.88600.1254900 | Toilet flooring work | 7.88d | 2027-06-21 | 2027-06-28 | 3197, 3212 |  | GC1 | 8843774 |
| 3214 | 37200.37400.37500.38700.39700.41100.42100.88600.1255000 | Living dinning flooring | 16.88d | 2027-06-28 | 2027-07-13 | 3198, 3207, 3213 |  | GC1 | 8843784 |
| 3215 | 37200.37400.37500.38700.39700.41100.42100.88600.1255100 | Aluminium door-window fixing | 16.88d | 2027-07-24 | 2027-08-08 | 3199, 3211, 3214 |  | GC1 | 8843794 |
| 3216 | 37200.37400.37500.38700.39700.41100.42100.88600.1255200 | Putty primer coat | 6.75d | 2027-07-13 | 2027-07-19 | 3200, 3214 |  | GC1 | 8843804 |
| 3217 | 37200.37400.37500.38700.39700.41100.42100.88600.1255300 | Door shutter fixing | 9d | 2027-07-13 | 2027-07-21 | 3201, 3214 |  | GC1 | 8843814 |
| 3218 | 37200.37400.37500.38700.39700.41100.42100.88600.1255400 | Electrical wiring work | 13.5d | 2027-09-06 | 2027-09-18 | 3202, 3217 |  | GC1 | 8843824 |
| 3219 | 37200.37400.37500.38700.39700.41100.42100.88600.1255500 | Painting 1st coat | 13.5d | 2027-09-21 | 2027-10-03 | 3203, 3216, 3217, 3218 |  | GC1 | 8843834 |
| 3220 | 37200.37400.37500.38700.39700.41100.42100.88600.1255600 | False ceiling | 11.25d | 2027-10-03 | 2027-10-13 | 3204, 3219 |  | GC1 | 8843844 |
| 3221 | 37200.37400.37500.38700.39700.41100.42100.88700 | **14th Floor** | 476d | 2026-07-14 | 2027-10-25 |  | start no earlier than 2026-07-14 | GC1 | 8807374 |
| 3222 | 37200.37400.37500.38700.39700.41100.42100.88700.1255700 | Block Work | 9d | 2026-07-14 | 2026-07-22 | 3206FS+0.25d |  | GC1 | 8843854 |
| 3223 | 37200.37400.37500.38700.39700.41100.42100.88700.1255800 | Door Frame Fixing | 10.12d | 2026-07-22 | 2026-07-31 | 3207, 3222 |  | GC1 | 8843864 |
| 3224 | 37200.37400.37500.38700.39700.41100.42100.88700.1255900 | Internal Plumbing Works | 11.25d | 2026-08-14 | 2026-08-24 | 3208, 3222 |  | GC1 | 8843874 |
| 3225 | 37200.37400.37500.38700.39700.41100.42100.88700.1256000 | Waterproofing | 13.5d | 2026-09-19 | 2026-10-01 | 3209, 3224 |  | GC1 | 8843884 |
| 3226 | 37200.37400.37500.38700.39700.41100.42100.88700.1256100 | Internal Plaster | 5.62d | 2026-08-03 | 2026-08-08 | 3210FS+0.25d, 3223FS+0.25d |  | GC1 | 8843894 |
| 3227 | 37200.37400.37500.38700.39700.41100.42100.88700.1256200 | IPS flooring work | 10.12d | 2026-10-01 | 2026-10-10 | 3211, 3223, 3224, 3225 |  | GC1 | 8843904 |
| 3228 | 37200.37400.37500.38700.39700.41100.42100.88700.1256300 | Toilet dado work | 9d | 2027-06-21 | 2027-06-29 | 3212, 3225, 3226 |  | GC1 | 8843914 |
| 3229 | 37200.37400.37500.38700.39700.41100.42100.88700.1256400 | Toilet flooring work | 7.88d | 2027-06-29 | 2027-07-06 | 3213, 3228 |  | GC1 | 8843924 |
| 3230 | 37200.37400.37500.38700.39700.41100.42100.88700.1256500 | Living dinning flooring | 16.88d | 2027-07-13 | 2027-07-28 | 3214, 3223, 3229 |  | GC1 | 8843934 |
| 3231 | 37200.37400.37500.38700.39700.41100.42100.88700.1256600 | Aluminium door-window fixing | 16.88d | 2027-08-08 | 2027-08-23 | 3215, 3227, 3230 |  | GC1 | 8843944 |
| 3232 | 37200.37400.37500.38700.39700.41100.42100.88700.1256700 | Putty primer coat | 6.75d | 2027-07-28 | 2027-08-03 | 3216, 3230 |  | GC1 | 8843954 |
| 3233 | 37200.37400.37500.38700.39700.41100.42100.88700.1256800 | Door shutter fixing | 9d | 2027-07-28 | 2027-08-05 | 3217, 3230 |  | GC1 | 8843964 |
| 3234 | 37200.37400.37500.38700.39700.41100.42100.88700.1256900 | Electrical wiring work | 13.5d | 2027-09-18 | 2027-09-30 | 3218, 3233 |  | GC1 | 8843974 |
| 3235 | 37200.37400.37500.38700.39700.41100.42100.88700.1257000 | Painting 1st coat | 13.5d | 2027-10-03 | 2027-10-15 | 3219, 3232, 3233, 3234 |  | GC1 | 8843984 |
| 3236 | 37200.37400.37500.38700.39700.41100.42100.88700.1257100 | False ceiling | 11.25d | 2027-10-15 | 2027-10-25 | 3220, 3235 |  | GC1 | 8843994 |

| ID | WBS | Task | Duration | Start | Finish | Predecessors | Constraint | Calendar | Unique_Task_ID |
| --- | --- | --- | --- | --- | --- | --- | --- | --- | --- |
| 3237 | 37200.37400.37500.38700.39700.41100.42100.88800 | **15th Floor** | 480.25d | 2026-07-22 | 2027-12-21 |  | start no earlier than 2026-07-22 | GC1 | 8807384 |
| 3238 | 37200.37400.37500.38700.39700.41100.42100.88800.1257200 | Block Work | 9d | 2026-07-22 | 2026-07-30 | 3222FS+0.25d |  | GC1 | 8844004 |
| 3239 | 37200.37400.37500.38700.39700.41100.42100.88800.1257300 | Door Frame Fixing | 10.12d | 2026-07-31 | 2026-08-09 | 3223, 3238 |  | GC1 | 8844014 |
| 3240 | 37200.37400.37500.38700.39700.41100.42100.88800.1257400 | Internal Plumbing Works | 11.25d | 2026-08-24 | 2026-09-03 | 3224, 3238 |  | GC1 | 8844024 |
| 3241 | 37200.37400.37500.38700.39700.41100.42100.88800.1257500 | Waterproofing | 13.5d | 2026-10-01 | 2026-10-13 | 3225, 3240 |  | GC1 | 8844034 |
| 3242 | 37200.37400.37500.38700.39700.41100.42100.88800.1257600 | Internal Plaster | 10.12d | 2026-10-13 | 2026-10-22 | 3226, 3239, 3240, 3241 |  | GC1 | 8844044 |
| 3243 | 37200.37400.37500.38700.39700.41100.42100.88800.1257700 | IPS flooring work | 10.12d | 2026-10-13 | 2026-10-22 | 3227, 3239, 3240, 3241 |  | GC1 | 8844054 |
| 3244 | 37200.37400.37500.38700.39700.41100.42100.88800.1257800 | Toilet dado work | 9d | 2027-06-29 | 2027-07-07 | 3228, 3241, 3242 |  | GC1 | 8844064 |
| 3245 | 37200.37400.37500.38700.39700.41100.42100.88800.1257900 | Toilet flooring work | 7.88d | 2027-07-07 | 2027-07-14 | 3229, 3244 |  | GC1 | 8844074 |
| 3246 | 37200.37400.37500.38700.39700.41100.42100.88800.1258000 | Living dinning flooring | 13.5d | 2027-07-28 | 2027-08-09 | 3230, 3239, 3245 |  | GC1 | 8844084 |
| 3247 | 37200.37400.37500.38700.39700.41100.42100.88800.1258100 | Aluminium door-window fixing | 13.5d | 2027-08-23 | 2027-09-04 | 3231, 3243, 3246 |  | GC1 | 8844094 |
| 3248 | 37200.37400.37500.38700.39700.41100.42100.88800.1258200 | Putty primer coat | 6.75d | 2027-08-09 | 2027-08-15 | 3232, 3246 |  | GC1 | 8844104 |
| 3249 | 37200.37400.37500.38700.39700.41100.42100.88800.1258300 | Door shutter fixing | 9d | 2027-08-09 | 2027-08-17 | 3233, 3246 |  | GC1 | 8844114 |
| 3250 | 37200.37400.37500.38700.39700.41100.42100.88800.1258400 | Electrical wiring work | 13.5d | 2027-09-30 | 2027-10-12 | 3234, 3249 |  | GC1 | 8844124 |
| 3251 | 37200.37400.37500.38700.39700.41100.42100.88800.1258500 | Painting 1st coat | 13.5d | 2027-10-15 | 2027-10-27 | 3235, 3248, 3249, 3250 |  | GC1 | 8844134 |
| 3252 | 37200.37400.37500.38700.39700.41100.42100.88800.1258600 | False ceiling | 11.25d | 2027-10-27 | 2027-12-21 | 3236, 3251 |  | GC1 | 8844144 |
| 3253 | 37200.37400.37500.38700.39700.41100.42100.88900 | **16th Floor** | 417.62d | 2026-09-27 | 2028-01-02 |  | start no earlier than 2026-09-27 | GC1 | 8807394 |
| 3254 | 37200.37400.37500.38700.39700.41100.42100.88900.1258700 | Block Work | 9d | 2026-09-27 | 2026-10-05 | 2991, 3238 |  | GC1 | 8844154 |
| 3255 | 37200.37400.37500.38700.39700.41100.42100.88900.1258800 | Door Frame Fixing | 10.12d | 2026-10-05 | 2026-10-14 | 3239, 3254 |  | GC1 | 8844164 |
| 3256 | 37200.37400.37500.38700.39700.41100.42100.88900.1258900 | Internal Plumbing Works | 11.25d | 2026-10-05 | 2026-10-15 | 3240, 3254 |  | GC1 | 8844174 |
| 3257 | 37200.37400.37500.38700.39700.41100.42100.88900.1259000 | Waterproofing | 13.5d | 2026-10-15 | 2026-10-27 | 3241, 3256 |  | GC1 | 8844184 |
| 3258 | 37200.37400.37500.38700.39700.41100.42100.88900.1259100 | Internal Plaster | 10.12d | 2026-10-27 | 2026-12-20 | 3242, 3255, 3256, 3257 |  | GC1 | 8844194 |
| 3259 | 37200.37400.37500.38700.39700.41100.42100.88900.1259200 | IPS flooring work | 10.12d | 2026-10-27 | 2026-12-20 | 3243, 3255, 3256, 3257 |  | GC1 | 8844204 |
| 3260 | 37200.37400.37500.38700.39700.41100.42100.88900.1259300 | Toilet dado work | 9d | 2027-07-07 | 2027-07-15 | 3244, 3257, 3258 |  | GC1 | 8844214 |
| 3261 | 37200.37400.37500.38700.39700.41100.42100.88900.1259400 | Toilet flooring work | 7.88d | 2027-07-15 | 2027-07-22 | 3245, 3260 |  | GC1 | 8844224 |
| 3262 | 37200.37400.37500.38700.39700.41100.42100.88900.1259500 | Living dinning flooring | 13.5d | 2027-08-09 | 2027-08-21 | 3246, 3255, 3261 |  | GC1 | 8844234 |
| 3263 | 37200.37400.37500.38700.39700.41100.42100.88900.1259600 | Aluminium door-window fixing | 13.5d | 2027-09-04 | 2027-09-16 | 3247, 3259, 3262 |  | GC1 | 8844244 |
| 3264 | 37200.37400.37500.38700.39700.41100.42100.88900.1259700 | Putty primer coat | 6.75d | 2027-08-21 | 2027-08-27 | 3248, 3262 |  | GC1 | 8844254 |
| 3265 | 37200.37400.37500.38700.39700.41100.42100.88900.1259800 | Door shutter fixing | 9d | 2027-08-21 | 2027-08-29 | 3249, 3262 |  | GC1 | 8844264 |
| 3266 | 37200.37400.37500.38700.39700.41100.42100.88900.1259900 | Electrical wiring work | 13.5d | 2027-10-12 | 2027-10-24 | 3250, 3265 |  | GC1 | 8844274 |
| 3267 | 37200.37400.37500.38700.39700.41100.42100.88900.1260000 | Painting 1st coat | 13.5d | 2027-10-27 | 2027-12-23 | 3251, 3264, 3265, 3266 |  | GC1 | 8844284 |
| 3268 | 37200.37400.37500.38700.39700.41100.42100.88900.1260100 | False ceiling | 11.25d | 2027-12-23 | 2028-01-02 | 3252, 3267 |  | GC1 | 8844294 |

| ID | WBS | Task | Duration | Start | Finish | Predecessors | Constraint | Calendar | Unique_Task_ID |
| --- | --- | --- | --- | --- | --- | --- | --- | --- | --- |
| 3269 | 37200.37400.37500.38700.39700.41100.42100.89000 | **17th Floor** | 418.75d | 2026-10-08 | 2028-01-14 |  | start no earlier than 2026-10-08 | GC1 | 8807404 |
| 3270 | 37200.37400.37500.38700.39700.41100.42100.89000.1260200 | Block Work | 9d | 2026-10-08 | 2026-10-16 | 2992, 3254 |  | GC1 | 8844304 |
| 3271 | 37200.37400.37500.38700.39700.41100.42100.89000.1260300 | Door Frame Fixing | 10.12d | 2026-10-16 | 2026-10-25 | 3255, 3270 |  | GC1 | 8844314 |
| 3272 | 37200.37400.37500.38700.39700.41100.42100.89000.1260400 | Internal Plumbing Works | 11.25d | 2026-10-16 | 2026-10-26 | 3256, 3270 |  | GC1 | 8844324 |
| 3273 | 37200.37400.37500.38700.39700.41100.42100.89000.1260500 | Waterproofing | 13.5d | 2026-10-27 | 2026-12-23 | 3257, 3272 |  | GC1 | 8844334 |
| 3274 | 37200.37400.37500.38700.39700.41100.42100.89000.1260600 | Internal Plaster | 10.12d | 2026-12-23 | 2027-01-01 | 3258, 3271, 3272, 3273 |  | GC1 | 8844344 |
| 3275 | 37200.37400.37500.38700.39700.41100.42100.89000.1260700 | IPS flooring work | 10.12d | 2026-12-23 | 2027-01-01 | 3259, 3271, 3272, 3273 |  | GC1 | 8844354 |
| 3276 | 37200.37400.37500.38700.39700.41100.42100.89000.1260800 | Toilet dado work | 9d | 2027-07-15 | 2027-07-23 | 3260, 3273, 3274 |  | GC1 | 8844364 |
| 3277 | 37200.37400.37500.38700.39700.41100.42100.89000.1260900 | Toilet flooring work | 7.88d | 2027-07-23 | 2027-07-30 | 3261, 3276 |  | GC1 | 8844374 |
| 3278 | 37200.37400.37500.38700.39700.41100.42100.89000.1261000 | Living dinning flooring | 13.5d | 2027-08-21 | 2027-09-02 | 3262, 3271, 3277 |  | GC1 | 8844384 |
| 3279 | 37200.37400.37500.38700.39700.41100.42100.89000.1261100 | Aluminium door-window fixing | 13.5d | 2027-09-16 | 2027-09-28 | 3263, 3275, 3278 |  | GC1 | 8844394 |
| 3280 | 37200.37400.37500.38700.39700.41100.42100.89000.1261200 | Putty primer coat | 6.75d | 2027-09-02 | 2027-09-08 | 3264, 3278 |  | GC1 | 8844404 |
| 3281 | 37200.37400.37500.38700.39700.41100.42100.89000.1261300 | Door shutter fixing | 9d | 2027-09-02 | 2027-09-10 | 3265, 3278 |  | GC1 | 8844414 |
| 3282 | 37200.37400.37500.38700.39700.41100.42100.89000.1261400 | Electrical wiring work | 13.5d | 2027-10-24 | 2027-12-20 | 3266, 3281 |  | GC1 | 8844424 |
| 3283 | 37200.37400.37500.38700.39700.41100.42100.89000.1261500 | Painting 1st coat | 13.5d | 2027-12-23 | 2028-01-04 | 3267, 3280, 3281, 3282 |  | GC1 | 8844434 |
| 3284 | 37200.37400.37500.38700.39700.41100.42100.89000.1261600 | False ceiling | 11.25d | 2028-01-04 | 2028-01-14 | 3268, 3283 |  | GC1 | 8844444 |
| 3285 | 37200.37400.37500.38700.39700.41100.42100.89100 | **18th Floor** | 419.88d | 2026-10-19 | 2028-01-26 |  | start no earlier than 2026-10-19 | GC1 | 8807414 |
| 3286 | 37200.37400.37500.38700.39700.41100.42100.89100.1261700 | Block Work | 9d | 2026-10-19 | 2026-10-27 | 2993, 3270 |  | GC1 | 8844454 |
| 3287 | 37200.37400.37500.38700.39700.41100.42100.89100.1261800 | Door Frame Fixing | 10.12d | 2026-10-27 | 2026-12-20 | 3271, 3286 |  | GC1 | 8844464 |
| 3288 | 37200.37400.37500.38700.39700.41100.42100.89100.1261900 | Internal Plumbing Works | 11.25d | 2026-10-27 | 2026-12-21 | 3272, 3286 |  | GC1 | 8844474 |
| 3289 | 37200.37400.37500.38700.39700.41100.42100.89100.1262000 | Waterproofing | 13.5d | 2026-12-23 | 2027-01-04 | 3273, 3288 |  | GC1 | 8844484 |
| 3290 | 37200.37400.37500.38700.39700.41100.42100.89100.1262100 | Internal Plaster | 10.12d | 2027-01-04 | 2027-01-13 | 3274, 3287, 3288, 3289 |  | GC1 | 8844494 |
| 3291 | 37200.37400.37500.38700.39700.41100.42100.89100.1262200 | IPS flooring work | 10.12d | 2027-01-04 | 2027-01-13 | 3275, 3287, 3288, 3289 |  | GC1 | 8844504 |
| 3292 | 37200.37400.37500.38700.39700.41100.42100.89100.1262300 | Toilet dado work | 9d | 2027-07-23 | 2027-07-31 | 3276, 3289, 3290 |  | GC1 | 8844514 |
| 3293 | 37200.37400.37500.38700.39700.41100.42100.89100.1262400 | Toilet flooring work | 7.88d | 2027-07-31 | 2027-08-07 | 3277, 3292 |  | GC1 | 8844524 |
| 3294 | 37200.37400.37500.38700.39700.41100.42100.89100.1262500 | Living dinning flooring | 13.5d | 2027-09-02 | 2027-09-14 | 3278, 3287, 3293 |  | GC1 | 8844534 |
| 3295 | 37200.37400.37500.38700.39700.41100.42100.89100.1262600 | Aluminium door-window fixing | 13.5d | 2027-09-28 | 2027-10-10 | 3279, 3291, 3294 |  | GC1 | 8844544 |
| 3296 | 37200.37400.37500.38700.39700.41100.42100.89100.1262700 | Putty primer coat | 6.75d | 2027-09-14 | 2027-09-20 | 3280, 3294 |  | GC1 | 8844554 |
| 3297 | 37200.37400.37500.38700.39700.41100.42100.89100.1262800 | Door shutter fixing | 9d | 2027-09-14 | 2027-09-22 | 3281, 3294 |  | GC1 | 8844564 |
| 3298 | 37200.37400.37500.38700.39700.41100.42100.89100.1262900 | Electrical wiring work | 13.5d | 2027-12-20 | 2028-01-01 | 3282, 3297 |  | GC1 | 8844574 |
| 3299 | 37200.37400.37500.38700.39700.41100.42100.89100.1263000 | Painting 1st coat | 13.5d | 2028-01-04 | 2028-01-16 | 3283, 3296, 3297, 3298 |  | GC1 | 8844584 |
| 3300 | 37200.37400.37500.38700.39700.41100.42100.89100.1263100 | False ceiling | 11.25d | 2028-01-16 | 2028-01-26 | 3284, 3299 |  | GC1 | 8844594 |

| ID | WBS | Task | Duration | Start | Finish | Predecessors | Constraint | Calendar | Unique_Task_ID |
| --- | --- | --- | --- | --- | --- | --- | --- | --- | --- |
| 3301 | 37200.37400.37500.38700.39700.41100.42100.89200 | **19th Floor** | 421d | 2026-10-30 | 2028-02-07 |  | start no earlier than 2026-10-30 | GC1 | 8807424 |
| 3302 | 37200.37400.37500.38700.39700.41100.42100.89200.1263200 | Block Work | 9d | 2026-10-30 | 2026-12-22 | 2994, 3286 |  | GC1 | 8844604 |
| 3303 | 37200.37400.37500.38700.39700.41100.42100.89200.1263300 | Door Frame Fixing | 10.12d | 2026-12-22 | 2026-12-31 | 3287, 3302 |  | GC1 | 8844614 |
| 3304 | 37200.37400.37500.38700.39700.41100.42100.89200.1263400 | Internal Plumbing Works | 11.25d | 2026-12-22 | 2027-01-01 | 3288, 3302 |  | GC1 | 8844624 |
| 3305 | 37200.37400.37500.38700.39700.41100.42100.89200.1263500 | Waterproofing | 13.5d | 2027-01-04 | 2027-01-16 | 3289, 3304 |  | GC1 | 8844634 |
| 3306 | 37200.37400.37500.38700.39700.41100.42100.89200.1263600 | Internal Plaster | 10.12d | 2027-01-16 | 2027-01-25 | 3290, 3303, 3304, 3305 |  | GC1 | 8844644 |
| 3307 | 37200.37400.37500.38700.39700.41100.42100.89200.1263700 | IPS flooring work | 10.12d | 2027-01-25 | 2027-02-03 | 3291, 3303, 3305, 3306 |  | GC1 | 8844654 |
| 3308 | 37200.37400.37500.38700.39700.41100.42100.89200.1263800 | Toilet dado work | 9d | 2027-07-31 | 2027-08-08 | 3292, 3305, 3306 |  | GC1 | 8844664 |
| 3309 | 37200.37400.37500.38700.39700.41100.42100.89200.1263900 | Toilet flooring work | 7.88d | 2027-08-08 | 2027-08-15 | 3293, 3308 |  | GC1 | 8844674 |
| 3310 | 37200.37400.37500.38700.39700.41100.42100.89200.1264000 | Living dinning flooring | 13.5d | 2027-09-14 | 2027-09-26 | 3294, 3303, 3309 |  | GC1 | 8844684 |
| 3311 | 37200.37400.37500.38700.39700.41100.42100.89200.1264100 | Aluminium door-window fixing | 13.5d | 2027-10-10 | 2027-10-22 | 3295, 3307, 3310 |  | GC1 | 8844694 |
| 3312 | 37200.37400.37500.38700.39700.41100.42100.89200.1264200 | Putty primer coat | 6.75d | 2027-09-26 | 2027-10-02 | 3296, 3310 |  | GC1 | 8844704 |
| 3313 | 37200.37400.37500.38700.39700.41100.42100.89200.1264300 | Door shutter fixing | 9d | 2027-09-26 | 2027-10-04 | 3297, 3310 |  | GC1 | 8844714 |
| 3314 | 37200.37400.37500.38700.39700.41100.42100.89200.1264400 | Electrical wiring work | 13.5d | 2028-01-01 | 2028-01-13 | 3298, 3313 |  | GC1 | 8844724 |
| 3315 | 37200.37400.37500.38700.39700.41100.42100.89200.1264500 | Painting 1st coat | 13.5d | 2028-01-16 | 2028-01-28 | 3299, 3312, 3313, 3314 |  | GC1 | 8844734 |
| 3316 | 37200.37400.37500.38700.39700.41100.42100.89200.1264600 | False ceiling | 11.25d | 2028-01-28 | 2028-02-07 | 3300, 3315 |  | GC1 | 8844744 |
| 3317 | 37200.37400.37500.38700.39700.41100.42100.89300 | **20th Floor** | 422.12d | 2026-12-25 | 2028-02-19 |  | start no earlier than 2026-12-25 | GC1 | 8807434 |
| 3318 | 37200.37400.37500.38700.39700.41100.42100.89300.1264700 | Block Work | 9d | 2026-12-25 | 2027-01-02 | 2995, 3302 |  | GC1 | 8844754 |
| 3319 | 37200.37400.37500.38700.39700.41100.42100.89300.1264800 | Door Frame Fixing | 10.12d | 2027-01-02 | 2027-01-11 | 3303, 3318 |  | GC1 | 8844764 |
| 3320 | 37200.37400.37500.38700.39700.41100.42100.89300.1264900 | Internal Plumbing Works | 11.25d | 2027-01-02 | 2027-01-12 | 3304, 3318 |  | GC1 | 8844774 |
| 3321 | 37200.37400.37500.38700.39700.41100.42100.89300.1265000 | Waterproofing | 13.5d | 2027-01-16 | 2027-01-28 | 3305, 3320 |  | GC1 | 8844784 |
| 3322 | 37200.37400.37500.38700.39700.41100.42100.89300.1265100 | Internal Plaster | 10.12d | 2027-01-28 | 2027-02-06 | 3306, 3319, 3320, 3321 |  | GC1 | 8844794 |
| 3323 | 37200.37400.37500.38700.39700.41100.42100.89300.1265200 | IPS flooring work | 10.12d | 2027-02-06 | 2027-02-15 | 3307, 3319, 3321, 3322 |  | GC1 | 8844804 |
| 3324 | 37200.37400.37500.38700.39700.41100.42100.89300.1265300 | Toilet dado work | 9d | 2027-08-08 | 2027-08-16 | 3308, 3321, 3322 |  | GC1 | 8844814 |
| 3325 | 37200.37400.37500.38700.39700.41100.42100.89300.1265400 | Toilet flooring work | 7.88d | 2027-08-16 | 2027-08-23 | 3309, 3324 |  | GC1 | 8844824 |
| 3326 | 37200.37400.37500.38700.39700.41100.42100.89300.1265500 | Living dinning flooring | 13.5d | 2027-09-26 | 2027-10-08 | 3310, 3319, 3325 |  | GC1 | 8844834 |
| 3327 | 37200.37400.37500.38700.39700.41100.42100.89300.1265600 | Aluminium door-window fixing | 13.5d | 2027-10-22 | 2027-12-18 | 3311, 3323, 3326 |  | GC1 | 8844844 |
| 3328 | 37200.37400.37500.38700.39700.41100.42100.89300.1265700 | Putty primer coat | 6.75d | 2027-10-08 | 2027-10-14 | 3312, 3326 |  | GC1 | 8844854 |
| 3329 | 37200.37400.37500.38700.39700.41100.42100.89300.1265800 | Door shutter fixing | 9d | 2027-10-08 | 2027-10-16 | 3313, 3326 |  | GC1 | 8844864 |
| 3330 | 37200.37400.37500.38700.39700.41100.42100.89300.1265900 | Electrical wiring work | 13.5d | 2028-01-13 | 2028-01-25 | 3314, 3329 |  | GC1 | 8844874 |
| 3331 | 37200.37400.37500.38700.39700.41100.42100.89300.1266000 | Painting 1st coat | 13.5d | 2028-01-28 | 2028-02-09 | 3315, 3328, 3329, 3330 |  | GC1 | 8844884 |
| 3332 | 37200.37400.37500.38700.39700.41100.42100.89300.1266100 | False ceiling | 11.25d | 2028-02-09 | 2028-02-19 | 3316, 3331 |  | GC1 | 8844894 |

| ID | WBS | Task | Duration | Start | Finish | Predecessors | Constraint | Calendar | Unique_Task_ID |
| --- | --- | --- | --- | --- | --- | --- | --- | --- | --- |
| 3333 | 37200.37400.37500.38700.39700.41100.42100.89400 | **21st Floor** | 423.25d | 2027-01-05 | 2028-03-02 |  | start no earlier than 2027-01-05 | GC1 | 8807444 |
| 3334 | 37200.37400.37500.38700.39700.41100.42100.89400.1266200 | Block Work | 9d | 2027-01-05 | 2027-01-13 | 2996, 3318 |  | GC1 | 8844904 |
| 3335 | 37200.37400.37500.38700.39700.41100.42100.89400.1266300 | Door Frame Fixing | 10.12d | 2027-01-13 | 2027-01-22 | 3319, 3334 |  | GC1 | 8844914 |
| 3336 | 37200.37400.37500.38700.39700.41100.42100.89400.1266400 | Internal Plumbing Works | 11.25d | 2027-01-13 | 2027-01-23 | 3320, 3334 |  | GC1 | 8844924 |
| 3337 | 37200.37400.37500.38700.39700.41100.42100.89400.1266500 | Waterproofing | 13.5d | 2027-01-28 | 2027-02-09 | 3321, 3336 |  | GC1 | 8844934 |
| 3338 | 37200.37400.37500.38700.39700.41100.42100.89400.1266600 | Internal Plaster | 10.12d | 2027-02-09 | 2027-02-18 | 3322, 3335, 3336, 3337 |  | GC1 | 8844944 |
| 3339 | 37200.37400.37500.38700.39700.41100.42100.89400.1266700 | IPS flooring work | 10.12d | 2027-02-18 | 2027-02-27 | 3323, 3335, 3337, 3338 |  | GC1 | 8844954 |
| 3340 | 37200.37400.37500.38700.39700.41100.42100.89400.1266800 | Toilet dado work | 9d | 2027-08-16 | 2027-08-24 | 3324, 3337, 3338 |  | GC1 | 8844964 |
| 3341 | 37200.37400.37500.38700.39700.41100.42100.89400.1266900 | Toilet flooring work | 7.88d | 2027-08-24 | 2027-08-31 | 3325, 3340 |  | GC1 | 8844974 |
| 3342 | 37200.37400.37500.38700.39700.41100.42100.89400.1267000 | Living dinning flooring | 13.5d | 2027-10-08 | 2027-10-20 | 3326, 3335, 3341 |  | GC1 | 8844984 |
| 3343 | 37200.37400.37500.38700.39700.41100.42100.89400.1267100 | Aluminium door-window fixing | 13.5d | 2027-12-18 | 2027-12-30 | 3327, 3339, 3342 |  | GC1 | 8844994 |
| 3344 | 37200.37400.37500.38700.39700.41100.42100.89400.1267200 | Putty primer coat | 6.75d | 2027-10-20 | 2027-10-26 | 3328, 3342 |  | GC1 | 8845004 |
| 3345 | 37200.37400.37500.38700.39700.41100.42100.89400.1267300 | Door shutter fixing | 9d | 2027-10-20 | 2027-10-28 | 3329, 3342 |  | GC1 | 8845014 |
| 3346 | 37200.37400.37500.38700.39700.41100.42100.89400.1267400 | Electrical wiring work | 13.5d | 2028-01-25 | 2028-02-06 | 3330, 3345 |  | GC1 | 8845024 |
| 3347 | 37200.37400.37500.38700.39700.41100.42100.89400.1267500 | Painting 1st coat | 13.5d | 2028-02-09 | 2028-02-21 | 3331, 3344, 3345, 3346 |  | GC1 | 8845034 |
| 3348 | 37200.37400.37500.38700.39700.41100.42100.89400.1267600 | False ceiling | 11.25d | 2028-02-21 | 2028-03-02 | 3332, 3347 |  | GC1 | 8845044 |
| 3349 | 37200.37400.37500.38700.39700.41100.42100.89500 | **22nd Floor** | 424.38d | 2027-01-16 | 2028-03-14 |  | start no earlier than 2027-01-16 | GC1 | 8807454 |
| 3350 | 37200.37400.37500.38700.39700.41100.42100.89500.1267700 | Block Work | 9d | 2027-01-16 | 2027-01-24 | 2997, 3334 |  | GC1 | 8845054 |
| 3351 | 37200.37400.37500.38700.39700.41100.42100.89500.1267800 | Door Frame Fixing | 10.12d | 2027-01-24 | 2027-02-02 | 3335, 3350 |  | GC1 | 8845064 |
| 3352 | 37200.37400.37500.38700.39700.41100.42100.89500.1267900 | Internal Plumbing Works | 11.25d | 2027-01-24 | 2027-02-03 | 3336, 3350 |  | GC1 | 8845074 |
| 3353 | 37200.37400.37500.38700.39700.41100.42100.89500.1268000 | Waterproofing | 13.5d | 2027-02-09 | 2027-02-21 | 3337, 3352 |  | GC1 | 8845084 |
| 3354 | 37200.37400.37500.38700.39700.41100.42100.89500.1268100 | Internal Plaster | 10.12d | 2027-02-21 | 2027-03-02 | 3338, 3351, 3352, 3353 |  | GC1 | 8845094 |
| 3355 | 37200.37400.37500.38700.39700.41100.42100.89500.1268200 | IPS flooring work | 10.12d | 2027-03-02 | 2027-03-11 | 3339, 3351, 3353, 3354 |  | GC1 | 8845104 |
| 3356 | 37200.37400.37500.38700.39700.41100.42100.89500.1268300 | Toilet dado work | 9d | 2027-08-24 | 2027-09-01 | 3340, 3353, 3354 |  | GC1 | 8845114 |
| 3357 | 37200.37400.37500.38700.39700.41100.42100.89500.1268400 | Toilet flooring work | 7.88d | 2027-09-01 | 2027-09-08 | 3341, 3356 |  | GC1 | 8845124 |
| 3358 | 37200.37400.37500.38700.39700.41100.42100.89500.1268500 | Living dinning flooring | 13.5d | 2027-10-20 | 2027-12-16 | 3342, 3351, 3357 |  | GC1 | 8845134 |
| 3359 | 37200.37400.37500.38700.39700.41100.42100.89500.1268600 | Aluminium door-window fixing | 13.5d | 2027-12-30 | 2028-01-11 | 3343, 3355, 3358 |  | GC1 | 8845144 |
| 3360 | 37200.37400.37500.38700.39700.41100.42100.89500.1268700 | Putty primer coat | 6.75d | 2027-12-16 | 2027-12-22 | 3344, 3358 |  | GC1 | 8845154 |
| 3361 | 37200.37400.37500.38700.39700.41100.42100.89500.1268800 | Door shutter fixing | 9d | 2027-12-16 | 2027-12-24 | 3345, 3358 |  | GC1 | 8845164 |
| 3362 | 37200.37400.37500.38700.39700.41100.42100.89500.1268900 | Electrical wiring work | 13.5d | 2028-02-06 | 2028-02-18 | 3346, 3361 |  | GC1 | 8845174 |
| 3363 | 37200.37400.37500.38700.39700.41100.42100.89500.1269000 | Painting 1st coat | 13.5d | 2028-02-21 | 2028-03-04 | 3347, 3360, 3361, 3362 |  | GC1 | 8845184 |
| 3364 | 37200.37400.37500.38700.39700.41100.42100.89500.1269100 | False ceiling | 11.25d | 2028-03-04 | 2028-03-14 | 3348, 3363 |  | GC1 | 8845194 |

| ID | WBS | Task | Duration | Start | Finish | Predecessors | Constraint | Calendar | Unique_Task_ID |
| --- | --- | --- | --- | --- | --- | --- | --- | --- | --- |
| 3365 | 37200.37400.37500.38700.39700.41100.42100.89600 | **23rd Floor** | 425.5d | 2027-01-27 | 2028-03-26 |  | start no earlier than 2027-01-27 | GC1 | 8807464 |
| 3366 | 37200.37400.37500.38700.39700.41100.42100.89600.1269200 | Block Work | 9d | 2027-01-27 | 2027-02-04 | 2998, 3350 |  | GC1 | 8845204 |
| 3367 | 37200.37400.37500.38700.39700.41100.42100.89600.1269300 | Door Frame Fixing | 10.12d | 2027-02-04 | 2027-02-13 | 3351, 3366 |  | GC1 | 8845214 |
| 3368 | 37200.37400.37500.38700.39700.41100.42100.89600.1269400 | Internal Plumbing Works | 11.25d | 2027-02-04 | 2027-02-14 | 3352, 3366 |  | GC1 | 8845224 |
| 3369 | 37200.37400.37500.38700.39700.41100.42100.89600.1269500 | Waterproofing | 13.5d | 2027-02-21 | 2027-03-05 | 3353, 3368 |  | GC1 | 8845234 |
| 3370 | 37200.37400.37500.38700.39700.41100.42100.89600.1269600 | Internal Plaster | 10.12d | 2027-03-05 | 2027-03-14 | 3354, 3367, 3368, 3369 |  | GC1 | 8845244 |
| 3371 | 37200.37400.37500.38700.39700.41100.42100.89600.1269700 | IPS flooring work | 10.12d | 2027-03-14 | 2027-03-23 | 3355, 3367, 3369, 3370 |  | GC1 | 8845254 |
| 3372 | 37200.37400.37500.38700.39700.41100.42100.89600.1269800 | Toilet dado work | 9d | 2027-09-01 | 2027-09-09 | 3356, 3369, 3370 |  | GC1 | 8845264 |
| 3373 | 37200.37400.37500.38700.39700.41100.42100.89600.1269900 | Toilet flooring work | 7.88d | 2027-09-09 | 2027-09-16 | 3357, 3372 |  | GC1 | 8845274 |
| 3374 | 37200.37400.37500.38700.39700.41100.42100.89600.1270000 | Living dinning flooring | 16.88d | 2027-12-16 | 2027-12-31 | 3358, 3367, 3373 |  | GC1 | 8845284 |
| 3375 | 37200.37400.37500.38700.39700.41100.42100.89600.1270100 | Aluminium door-window fixing | 16.88d | 2028-01-11 | 2028-01-26 | 3359, 3371, 3374 |  | GC1 | 8845294 |
| 3376 | 37200.37400.37500.38700.39700.41100.42100.89600.1270200 | Putty primer coat | 6.75d | 2027-12-31 | 2028-01-06 | 3360, 3374 |  | GC1 | 8845304 |
| 3377 | 37200.37400.37500.38700.39700.41100.42100.89600.1270300 | Door shutter fixing | 9d | 2027-12-31 | 2028-01-08 | 3361, 3374 |  | GC1 | 8845314 |
| 3378 | 37200.37400.37500.38700.39700.41100.42100.89600.1270400 | Electrical wiring work | 13.5d | 2028-02-18 | 2028-03-01 | 3362, 3377 |  | GC1 | 8845324 |
| 3379 | 37200.37400.37500.38700.39700.41100.42100.89600.1270500 | Painting 1st coat | 13.5d | 2028-03-04 | 2028-03-16 | 3363, 3376, 3377, 3378 |  | GC1 | 8845334 |
| 3380 | 37200.37400.37500.38700.39700.41100.42100.89600.1270600 | False ceiling | 11.25d | 2028-03-16 | 2028-03-26 | 3364, 3379 |  | GC1 | 8845344 |
| 3381 | 37200.37400.37500.38700.39700.41100.42100.89700 | **24th Floor** | 426.62d | 2027-02-07 | 2028-04-07 |  | start no earlier than 2027-02-07 | GC1 | 8807474 |
| 3382 | 37200.37400.37500.38700.39700.41100.42100.89700.1270700 | Block Work | 9d | 2027-02-07 | 2027-02-15 | 2999, 3366 |  | GC1 | 8845354 |
| 3383 | 37200.37400.37500.38700.39700.41100.42100.89700.1270800 | Door Frame Fixing | 10.12d | 2027-02-15 | 2027-02-24 | 3367, 3382 |  | GC1 | 8845364 |
| 3384 | 37200.37400.37500.38700.39700.41100.42100.89700.1270900 | Internal Plumbing Works | 11.25d | 2027-02-15 | 2027-02-25 | 3368, 3382 |  | GC1 | 8845374 |
| 3385 | 37200.37400.37500.38700.39700.41100.42100.89700.1271000 | Waterproofing | 13.5d | 2027-03-05 | 2027-03-17 | 3369, 3384 |  | GC1 | 8845384 |
| 3386 | 37200.37400.37500.38700.39700.41100.42100.89700.1271100 | Internal Plaster | 10.12d | 2027-03-17 | 2027-03-26 | 3370, 3383, 3384, 3385 |  | GC1 | 8845394 |
| 3387 | 37200.37400.37500.38700.39700.41100.42100.89700.1271200 | IPS flooring work | 10.12d | 2027-03-26 | 2027-04-04 | 3371, 3383, 3385, 3386 |  | GC1 | 8845404 |
| 3388 | 37200.37400.37500.38700.39700.41100.42100.89700.1271300 | Toilet dado work | 9d | 2027-09-09 | 2027-09-17 | 3372, 3385, 3386 |  | GC1 | 8845414 |
| 3389 | 37200.37400.37500.38700.39700.41100.42100.89700.1271400 | Toilet flooring work | 7.88d | 2027-09-17 | 2027-09-24 | 3373, 3388 |  | GC1 | 8845424 |
| 3390 | 37200.37400.37500.38700.39700.41100.42100.89700.1271500 | Living dinning flooring | 16.88d | 2027-12-31 | 2028-01-15 | 3374, 3383, 3389 |  | GC1 | 8845434 |
| 3391 | 37200.37400.37500.38700.39700.41100.42100.89700.1271600 | Aluminium door-window fixing | 16.88d | 2028-01-26 | 2028-02-10 | 3375, 3387, 3390 |  | GC1 | 8845444 |
| 3392 | 37200.37400.37500.38700.39700.41100.42100.89700.1271700 | Putty primer coat | 6.75d | 2028-01-15 | 2028-01-21 | 3376, 3390 |  | GC1 | 8845454 |
| 3393 | 37200.37400.37500.38700.39700.41100.42100.89700.1271800 | Door shutter fixing | 9d | 2028-01-15 | 2028-01-23 | 3377, 3390 |  | GC1 | 8845464 |
| 3394 | 37200.37400.37500.38700.39700.41100.42100.89700.1271900 | Electrical wiring work | 13.5d | 2028-03-01 | 2028-03-13 | 3378, 3393 |  | GC1 | 8845474 |
| 3395 | 37200.37400.37500.38700.39700.41100.42100.89700.1272000 | Painting 1st coat | 13.5d | 2028-03-16 | 2028-03-28 | 3379, 3392, 3393, 3394 |  | GC1 | 8845484 |
| 3396 | 37200.37400.37500.38700.39700.41100.42100.89700.1272100 | False ceiling | 11.25d | 2028-03-28 | 2028-04-07 | 3380, 3395 |  | GC1 | 8845494 |

| ID | WBS | Task | Duration | Start | Finish | Predecessors | Constraint | Calendar | Unique_Task_ID |
| --- | --- | --- | --- | --- | --- | --- | --- | --- | --- |
| 3397 | 37200.37400.37500.38700.39700.41100.42100.89800 | **25th Floor** | 427.75d | 2027-02-18 | 2028-04-19 |  | start no earlier than 2027-02-18 | GC1 | 8807484 |
| 3398 | 37200.37400.37500.38700.39700.41100.42100.89800.1272200 | Block Work | 9d | 2027-02-18 | 2027-02-26 | 3000, 3382 |  | GC1 | 8845504 |
| 3399 | 37200.37400.37500.38700.39700.41100.42100.89800.1272300 | Door Frame Fixing | 10.12d | 2027-02-26 | 2027-03-07 | 3383, 3398 |  | GC1 | 8845514 |
| 3400 | 37200.37400.37500.38700.39700.41100.42100.89800.1272400 | Internal Plumbing Works | 11.25d | 2027-02-26 | 2027-03-08 | 3384, 3398 |  | GC1 | 8845524 |
| 3401 | 37200.37400.37500.38700.39700.41100.42100.89800.1272500 | Waterproofing | 13.5d | 2027-03-17 | 2027-03-29 | 3385, 3400 |  | GC1 | 8845534 |
| 3402 | 37200.37400.37500.38700.39700.41100.42100.89800.1272600 | Internal Plaster | 10.12d | 2027-03-29 | 2027-04-07 | 3386, 3399, 3400, 3401 |  | GC1 | 8845544 |
| 3403 | 37200.37400.37500.38700.39700.41100.42100.89800.1272700 | IPS flooring work | 10.12d | 2027-04-07 | 2027-04-16 | 3387, 3399, 3401, 3402 |  | GC1 | 8845554 |
| 3404 | 37200.37400.37500.38700.39700.41100.42100.89800.1272800 | Toilet dado work | 9d | 2027-09-17 | 2027-09-25 | 3388, 3401, 3402 |  | GC1 | 8845564 |
| 3405 | 37200.37400.37500.38700.39700.41100.42100.89800.1272900 | Toilet flooring work | 7.88d | 2027-09-25 | 2027-10-02 | 3389, 3404 |  | GC1 | 8845574 |
| 3406 | 37200.37400.37500.38700.39700.41100.42100.89800.1273000 | Living dinning flooring | 16.88d | 2028-01-15 | 2028-01-30 | 3390, 3399, 3405 |  | GC1 | 8845584 |
| 3407 | 37200.37400.37500.38700.39700.41100.42100.89800.1273100 | Aluminium door-window fixing | 16.88d | 2028-02-10 | 2028-02-25 | 3391, 3403, 3406 |  | GC1 | 8845594 |
| 3408 | 37200.37400.37500.38700.39700.41100.42100.89800.1273200 | Putty primer coat | 6.75d | 2028-01-30 | 2028-02-05 | 3392, 3406 |  | GC1 | 8845604 |
| 3409 | 37200.37400.37500.38700.39700.41100.42100.89800.1273300 | Door shutter fixing | 9d | 2028-01-30 | 2028-02-07 | 3393, 3406 |  | GC1 | 8845614 |
| 3410 | 37200.37400.37500.38700.39700.41100.42100.89800.1273400 | Electrical wiring work | 13.5d | 2028-03-13 | 2028-03-25 | 3394, 3409 |  | GC1 | 8845624 |
| 3411 | 37200.37400.37500.38700.39700.41100.42100.89800.1273500 | Painting 1st coat | 13.5d | 2028-03-28 | 2028-04-09 | 3395, 3408, 3409, 3410 |  | GC1 | 8845634 |
| 3412 | 37200.37400.37500.38700.39700.41100.42100.89800.1273600 | False ceiling | 11.25d | 2028-04-09 | 2028-04-19 | 3396, 3411 |  | GC1 | 8845644 |
| 3413 | 37200.37400.37500.38700.39700.41100.42100.89900 | **26th Floor** | 428.88d | 2027-03-01 | 2028-05-01 |  | start no earlier than 2027-03-01 | GC1 | 8807494 |
| 3414 | 37200.37400.37500.38700.39700.41100.42100.89900.1273700 | Block Work | 9d | 2027-03-01 | 2027-03-09 | 3001, 3398 |  | GC1 | 8845654 |
| 3415 | 37200.37400.37500.38700.39700.41100.42100.89900.1273800 | Door Frame Fixing | 10.12d | 2027-03-09 | 2027-03-18 | 3399, 3414 |  | GC1 | 8845664 |
| 3416 | 37200.37400.37500.38700.39700.41100.42100.89900.1273900 | Internal Plumbing Works | 11.25d | 2027-03-09 | 2027-03-19 | 3400, 3414 |  | GC1 | 8845674 |
| 3417 | 37200.37400.37500.38700.39700.41100.42100.89900.1274000 | Waterproofing | 13.5d | 2027-03-29 | 2027-04-10 | 3401, 3416 |  | GC1 | 8845684 |
| 3418 | 37200.37400.37500.38700.39700.41100.42100.89900.1274100 | Internal Plaster | 10.12d | 2027-04-10 | 2027-04-19 | 3402, 3415, 3416, 3417 |  | GC1 | 8845694 |
| 3419 | 37200.37400.37500.38700.39700.41100.42100.89900.1274200 | IPS flooring work | 10.12d | 2027-04-19 | 2027-04-28 | 3403, 3415, 3417, 3418 |  | GC1 | 8845704 |
| 3420 | 37200.37400.37500.38700.39700.41100.42100.89900.1274300 | Toilet dado work | 9d | 2027-09-25 | 2027-10-03 | 3404, 3417, 3418 |  | GC1 | 8845714 |
| 3421 | 37200.37400.37500.38700.39700.41100.42100.89900.1274400 | Toilet flooring work | 7.88d | 2027-10-03 | 2027-10-10 | 3405, 3420 |  | GC1 | 8845724 |
| 3422 | 37200.37400.37500.38700.39700.41100.42100.89900.1274500 | Living dinning flooring | 16.88d | 2028-01-30 | 2028-02-14 | 3406, 3415, 3421 |  | GC1 | 8845734 |
| 3423 | 37200.37400.37500.38700.39700.41100.42100.89900.1274600 | Aluminium door-window fixing | 16.88d | 2028-02-25 | 2028-03-11 | 3407, 3419, 3422 |  | GC1 | 8845744 |
| 3424 | 37200.37400.37500.38700.39700.41100.42100.89900.1274700 | Putty primer coat | 6.75d | 2028-02-14 | 2028-02-20 | 3408, 3422 |  | GC1 | 8845754 |
| 3425 | 37200.37400.37500.38700.39700.41100.42100.89900.1274800 | Door shutter fixing | 9d | 2028-02-14 | 2028-02-22 | 3409, 3422 |  | GC1 | 8845764 |
| 3426 | 37200.37400.37500.38700.39700.41100.42100.89900.1274900 | Electrical wiring work | 13.5d | 2028-03-25 | 2028-04-06 | 3410, 3425 |  | GC1 | 8845774 |
| 3427 | 37200.37400.37500.38700.39700.41100.42100.89900.1275000 | Painting 1st coat | 13.5d | 2028-04-09 | 2028-04-21 | 3411, 3424, 3425, 3426 |  | GC1 | 8845784 |
| 3428 | 37200.37400.37500.38700.39700.41100.42100.89900.1275100 | False ceiling | 11.25d | 2028-04-21 | 2028-05-01 | 3412, 3427 |  | GC1 | 8845794 |

| ID | WBS | Task | Duration | Start | Finish | Predecessors | Constraint | Calendar | Unique_Task_ID |
| --- | --- | --- | --- | --- | --- | --- | --- | --- | --- |
| 3429 | 37200.37400.37500.38700.39700.41100.42100.90000 | **27th Floor** | 430d | 2027-03-12 | 2028-05-13 |  | start no earlier than 2027-03-12 | GC1 | 8807504 |
| 3430 | 37200.37400.37500.38700.39700.41100.42100.90000.1275200 | Block Work | 9d | 2027-03-12 | 2027-03-20 | 3002, 3414 |  | GC1 | 8845804 |
| 3431 | 37200.37400.37500.38700.39700.41100.42100.90000.1275300 | Door Frame Fixing | 10.12d | 2027-03-20 | 2027-03-29 | 3415, 3430 |  | GC1 | 8845814 |
| 3432 | 37200.37400.37500.38700.39700.41100.42100.90000.1275400 | Internal Plumbing Works | 11.25d | 2027-03-20 | 2027-03-30 | 3416, 3430 |  | GC1 | 8845824 |
| 3433 | 37200.37400.37500.38700.39700.41100.42100.90000.1275500 | Waterproofing | 13.5d | 2027-04-10 | 2027-04-22 | 3417, 3432 |  | GC1 | 8845834 |
| 3434 | 37200.37400.37500.38700.39700.41100.42100.90000.1275600 | Internal Plaster | 10.12d | 2027-04-22 | 2027-05-01 | 3418, 3431, 3432, 3433 |  | GC1 | 8845844 |
| 3435 | 37200.37400.37500.38700.39700.41100.42100.90000.1275700 | IPS flooring work | 10.12d | 2027-05-01 | 2027-05-10 | 3419, 3431, 3433, 3434 |  | GC1 | 8845854 |
| 3436 | 37200.37400.37500.38700.39700.41100.42100.90000.1275800 | Toilet dado work | 9d | 2027-10-03 | 2027-10-11 | 3420, 3433, 3434 |  | GC1 | 8845864 |
| 3437 | 37200.37400.37500.38700.39700.41100.42100.90000.1275900 | Toilet flooring work | 7.88d | 2027-10-11 | 2027-10-18 | 3421, 3436 |  | GC1 | 8845874 |
| 3438 | 37200.37400.37500.38700.39700.41100.42100.90000.1276000 | Living dinning flooring | 16.88d | 2028-02-14 | 2028-02-29 | 3422, 3431, 3437 |  | GC1 | 8845884 |
| 3439 | 37200.37400.37500.38700.39700.41100.42100.90000.1276100 | Aluminium door-window fixing | 16.88d | 2028-03-11 | 2028-03-26 | 3423, 3435, 3438 |  | GC1 | 8845894 |
| 3440 | 37200.37400.37500.38700.39700.41100.42100.90000.1276200 | Putty primer coat | 6.75d | 2028-02-29 | 2028-03-06 | 3424, 3438 |  | GC1 | 8845904 |
| 3441 | 37200.37400.37500.38700.39700.41100.42100.90000.1276300 | Door shutter fixing | 9d | 2028-02-29 | 2028-03-08 | 3425, 3438 |  | GC1 | 8845914 |
| 3442 | 37200.37400.37500.38700.39700.41100.42100.90000.1276400 | Electrical wiring work | 13.5d | 2028-04-06 | 2028-04-18 | 3426, 3441 |  | GC1 | 8845924 |
| 3443 | 37200.37400.37500.38700.39700.41100.42100.90000.1276500 | Painting 1st coat | 13.5d | 2028-04-21 | 2028-05-03 | 3427, 3440, 3441, 3442 |  | GC1 | 8845934 |
| 3444 | 37200.37400.37500.38700.39700.41100.42100.90000.1276600 | False ceiling | 11.25d | 2028-05-03 | 2028-05-13 | 3428, 3443 |  | GC1 | 8845944 |
| 3445 | 37200.37400.37500.38700.39700.41100.42100.90100 | **28th Floor** | 431.12d | 2027-03-23 | 2028-05-25 |  | start no earlier than 2027-03-23 | GC1 | 8807514 |
| 3446 | 37200.37400.37500.38700.39700.41100.42100.90100.1276700 | Block Work | 9d | 2027-03-23 | 2027-03-31 | 3003, 3430 |  | GC1 | 8845954 |
| 3447 | 37200.37400.37500.38700.39700.41100.42100.90100.1276800 | Door Frame Fixing | 10.12d | 2027-03-31 | 2027-04-09 | 3431, 3446 |  | GC1 | 8845964 |
| 3448 | 37200.37400.37500.38700.39700.41100.42100.90100.1276900 | Internal Plumbing Works | 11.25d | 2027-03-31 | 2027-04-10 | 3432, 3446 |  | GC1 | 8845974 |
| 3449 | 37200.37400.37500.38700.39700.41100.42100.90100.1277000 | Waterproofing | 13.5d | 2027-04-22 | 2027-05-04 | 3433, 3448 |  | GC1 | 8845984 |
| 3450 | 37200.37400.37500.38700.39700.41100.42100.90100.1277100 | Internal Plaster | 10.12d | 2027-05-04 | 2027-05-13 | 3434, 3447, 3448, 3449 |  | GC1 | 8845994 |
| 3451 | 37200.37400.37500.38700.39700.41100.42100.90100.1277200 | IPS flooring work | 10.12d | 2027-05-13 | 2027-05-22 | 3435, 3447, 3449, 3450 |  | GC1 | 8846004 |
| 3452 | 37200.37400.37500.38700.39700.41100.42100.90100.1277300 | Toilet dado work | 9d | 2027-10-11 | 2027-10-19 | 3436, 3449, 3450 |  | GC1 | 8846014 |
| 3453 | 37200.37400.37500.38700.39700.41100.42100.90100.1277400 | Toilet flooring work | 7.88d | 2027-10-19 | 2027-10-26 | 3437, 3452 |  | GC1 | 8846024 |
| 3454 | 37200.37400.37500.38700.39700.41100.42100.90100.1277500 | Living dinning flooring | 16.88d | 2028-02-29 | 2028-03-15 | 3438, 3447, 3453 |  | GC1 | 8846034 |
| 3455 | 37200.37400.37500.38700.39700.41100.42100.90100.1277600 | Aluminium door-window fixing | 16.88d | 2028-03-26 | 2028-04-10 | 3439, 3451, 3454 |  | GC1 | 8846044 |
| 3456 | 37200.37400.37500.38700.39700.41100.42100.90100.1277700 | Putty primer coat | 6.75d | 2028-03-15 | 2028-03-21 | 3440, 3454 |  | GC1 | 8846054 |
| 3457 | 37200.37400.37500.38700.39700.41100.42100.90100.1277800 | Door shutter fixing | 9d | 2028-03-15 | 2028-03-23 | 3441, 3454 |  | GC1 | 8846064 |
| 3458 | 37200.37400.37500.38700.39700.41100.42100.90100.1277900 | Electrical wiring work | 13.5d | 2028-04-18 | 2028-04-30 | 3442, 3457 |  | GC1 | 8846074 |
| 3459 | 37200.37400.37500.38700.39700.41100.42100.90100.1278000 | Painting 1st coat | 13.5d | 2028-05-03 | 2028-05-15 | 3443, 3456, 3457, 3458 |  | GC1 | 8846084 |
| 3460 | 37200.37400.37500.38700.39700.41100.42100.90100.1278100 | False ceiling | 11.25d | 2028-05-15 | 2028-05-25 | 3444, 3459 |  | GC1 | 8846094 |

| ID | WBS | Task | Duration | Start | Finish | Predecessors | Constraint | Calendar | Unique_Task_ID |
| --- | --- | --- | --- | --- | --- | --- | --- | --- | --- |
| 3461 | 37200.37400.37500.38700.39700.41100.42100.90200 | **29th Floor** | 432.25d | 2027-04-03 | 2028-06-06 |  | start no earlier than 2027-04-03 | GC1 | 8807524 |
| 3462 | 37200.37400.37500.38700.39700.41100.42100.90200.1278200 | Block Work | 9d | 2027-04-03 | 2027-04-11 | 3004, 3446 |  | GC1 | 8846104 |
| 3463 | 37200.37400.37500.38700.39700.41100.42100.90200.1278300 | Door Frame Fixing | 10.12d | 2027-04-11 | 2027-04-20 | 3447, 3462 |  | GC1 | 8846114 |
| 3464 | 37200.37400.37500.38700.39700.41100.42100.90200.1278400 | Internal Plumbing Works | 11.25d | 2027-04-11 | 2027-04-21 | 3448, 3462 |  | GC1 | 8846124 |
| 3465 | 37200.37400.37500.38700.39700.41100.42100.90200.1278500 | Waterproofing | 13.5d | 2027-05-04 | 2027-05-16 | 3449, 3464 |  | GC1 | 8846134 |
| 3466 | 37200.37400.37500.38700.39700.41100.42100.90200.1278600 | Internal Plaster | 10.12d | 2027-05-16 | 2027-05-25 | 3450, 3463, 3464, 3465 |  | GC1 | 8846144 |
| 3467 | 37200.37400.37500.38700.39700.41100.42100.90200.1278700 | IPS flooring work | 10.12d | 2027-05-25 | 2027-06-03 | 3451, 3463, 3465, 3466 |  | GC1 | 8846154 |
| 3468 | 37200.37400.37500.38700.39700.41100.42100.90200.1278800 | Toilet dado work | 9d | 2027-10-19 | 2027-10-27 | 3452, 3465, 3466 |  | GC1 | 8846164 |
| 3469 | 37200.37400.37500.38700.39700.41100.42100.90200.1278900 | Toilet flooring work | 7.88d | 2027-10-27 | 2027-12-18 | 3453, 3468 |  | GC1 | 8846174 |
| 3470 | 37200.37400.37500.38700.39700.41100.42100.90200.1279000 | Living dinning flooring | 16.88d | 2028-03-15 | 2028-03-30 | 3454, 3463, 3469 |  | GC1 | 8846184 |
| 3471 | 37200.37400.37500.38700.39700.41100.42100.90200.1279100 | Aluminium door-window fixing | 16.88d | 2028-04-10 | 2028-04-25 | 3455, 3467, 3470 |  | GC1 | 8846194 |
| 3472 | 37200.37400.37500.38700.39700.41100.42100.90200.1279200 | Putty primer coat | 6.75d | 2028-03-30 | 2028-04-05 | 3456, 3470 |  | GC1 | 8846204 |
| 3473 | 37200.37400.37500.38700.39700.41100.42100.90200.1279300 | Door shutter fixing | 9d | 2028-03-30 | 2028-04-07 | 3457, 3470 |  | GC1 | 8846214 |
| 3474 | 37200.37400.37500.38700.39700.41100.42100.90200.1279400 | Electrical wiring work | 13.5d | 2028-04-30 | 2028-05-12 | 3458, 3473 |  | GC1 | 8846224 |
| 3475 | 37200.37400.37500.38700.39700.41100.42100.90200.1279500 | Painting 1st coat | 13.5d | 2028-05-15 | 2028-05-27 | 3459, 3472, 3473, 3474 |  | GC1 | 8846234 |
| 3476 | 37200.37400.37500.38700.39700.41100.42100.90200.1279600 | False ceiling | 11.25d | 2028-05-27 | 2028-06-06 | 3460, 3475 |  | GC1 | 8846244 |
| 3477 | 37200.37400.37500.38700.39700.41100.42100.90300 | **30th Floor** | 436.75d | 2027-04-14 | 2028-06-21 |  | start no earlier than 2027-04-14 | GC1 | 8807534 |
| 3478 | 37200.37400.37500.38700.39700.41100.42100.90300.1279700 | Block Work | 9d | 2027-04-14 | 2027-04-22 | 3005, 3462 |  | GC1 | 8846254 |
| 3479 | 37200.37400.37500.38700.39700.41100.42100.90300.1279800 | Door Frame Fixing | 10.12d | 2027-04-22 | 2027-05-01 | 3463, 3478 |  | GC1 | 8846264 |
| 3480 | 37200.37400.37500.38700.39700.41100.42100.90300.1279900 | Internal Plumbing Works | 11.25d | 2027-04-22 | 2027-05-02 | 3464, 3478 |  | GC1 | 8846274 |
| 3481 | 37200.37400.37500.38700.39700.41100.42100.90300.1280000 | Waterproofing | 13.5d | 2027-05-16 | 2027-05-28 | 3465, 3480 |  | GC1 | 8846284 |
| 3482 | 37200.37400.37500.38700.39700.41100.42100.90300.1280100 | Internal Plaster | 10.12d | 2027-05-28 | 2027-06-06 | 3466, 3479, 3480, 3481 |  | GC1 | 8846294 |
| 3483 | 37200.37400.37500.38700.39700.41100.42100.90300.1280200 | IPS flooring work | 10.12d | 2027-06-06 | 2027-06-15 | 3467, 3479, 3481, 3482 |  | GC1 | 8846304 |
| 3484 | 37200.37400.37500.38700.39700.41100.42100.90300.1280300 | Toilet dado work | 9d | 2027-10-27 | 2027-12-19 | 3468, 3481, 3482 |  | GC1 | 8846314 |
| 3485 | 37200.37400.37500.38700.39700.41100.42100.90300.1280400 | Toilet flooring work | 7.88d | 2027-12-19 | 2027-12-26 | 3469, 3484 |  | GC1 | 8846324 |
| 3486 | 37200.37400.37500.38700.39700.41100.42100.90300.1280500 | Living dinning flooring | 16.88d | 2028-03-30 | 2028-04-14 | 3470, 3479, 3485 |  | GC1 | 8846334 |
| 3487 | 37200.37400.37500.38700.39700.41100.42100.90300.1280600 | Aluminium door-window fixing | 16.88d | 2028-04-25 | 2028-05-10 | 3471, 3483, 3486 |  | GC1 | 8846344 |
| 3488 | 37200.37400.37500.38700.39700.41100.42100.90300.1280700 | Putty primer coat | 6.75d | 2028-04-14 | 2028-04-20 | 3472, 3486 |  | GC1 | 8846354 |
| 3489 | 37200.37400.37500.38700.39700.41100.42100.90300.1280800 | Door shutter fixing | 9d | 2028-04-14 | 2028-04-22 | 3473, 3486 |  | GC1 | 8846364 |
| 3490 | 37200.37400.37500.38700.39700.41100.42100.90300.1280900 | Electrical wiring work | 16.88d | 2028-05-12 | 2028-05-27 | 3474, 3489 |  | GC1 | 8846374 |
| 3491 | 37200.37400.37500.38700.39700.41100.42100.90300.1281000 | Painting 1st coat | 16.88d | 2028-05-27 | 2028-06-11 | 3475, 3488, 3489, 3490 |  | GC1 | 8846384 |
| 3492 | 37200.37400.37500.38700.39700.41100.42100.90300.1281100 | False ceiling | 11.25d | 2028-06-11 | 2028-06-21 | 3476, 3491 |  | GC1 | 8846394 |

| ID | WBS | Task | Duration | Start | Finish | Predecessors | Constraint | Calendar | Unique_Task_ID |
| --- | --- | --- | --- | --- | --- | --- | --- | --- | --- |
| 3493 | 37200.37400.37500.38700.39700.41100.42100.90400 | **31st Floor** | 441.25d | 2027-04-25 | 2028-07-06 |  | start no earlier than 2027-04-25 | GC1 | 8807544 |
| 3494 | 37200.37400.37500.38700.39700.41100.42100.90400.1281200 | Block Work | 9d | 2027-04-25 | 2027-05-03 | 3006, 3478 |  | GC1 | 8846404 |
| 3495 | 37200.37400.37500.38700.39700.41100.42100.90400.1281300 | Door Frame Fixing | 10.12d | 2027-05-03 | 2027-05-12 | 3479, 3494 |  | GC1 | 8846414 |
| 3496 | 37200.37400.37500.38700.39700.41100.42100.90400.1281400 | Internal Plumbing Works | 11.25d | 2027-05-03 | 2027-05-13 | 3480, 3494 |  | GC1 | 8846424 |
| 3497 | 37200.37400.37500.38700.39700.41100.42100.90400.1281500 | Waterproofing | 13.5d | 2027-05-13 | 2027-05-25 | 3496 |  | GC1 | 8846434 |
| 3498 | 37200.37400.37500.38700.39700.41100.42100.90400.1281600 | Internal Plaster | 10.12d | 2027-06-06 | 2027-06-15 | 3482, 3495, 3496, 3497 |  | GC1 | 8846444 |
| 3499 | 37200.37400.37500.38700.39700.41100.42100.90400.1281700 | IPS flooring work | 10.12d | 2027-06-15 | 2027-06-24 | 3483, 3495, 3497, 3498 |  | GC1 | 8846454 |
| 3500 | 37200.37400.37500.38700.39700.41100.42100.90400.1281800 | Toilet dado work | 9d | 2027-12-19 | 2027-12-27 | 3484, 3497, 3498 |  | GC1 | 8846464 |
| 3501 | 37200.37400.37500.38700.39700.41100.42100.90400.1281900 | Toilet flooring work | 7.88d | 2027-12-27 | 2028-01-03 | 3485, 3500 |  | GC1 | 8846474 |
| 3502 | 37200.37400.37500.38700.39700.41100.42100.90400.1282000 | Living dinning flooring | 16.88d | 2028-04-14 | 2028-04-29 | 3486, 3495, 3501 |  | GC1 | 8846484 |
| 3503 | 37200.37400.37500.38700.39700.41100.42100.90400.1282100 | Aluminium door-window fixing | 13.5d | 2028-05-10 | 2028-05-22 | 3487, 3499, 3502 |  | GC1 | 8846494 |
| 3504 | 37200.37400.37500.38700.39700.41100.42100.90400.1282200 | Putty primer coat | 6.75d | 2028-04-29 | 2028-05-05 | 3488, 3502 |  | GC1 | 8846504 |
| 3505 | 37200.37400.37500.38700.39700.41100.42100.90400.1282300 | Door shutter fixing | 9d | 2028-04-29 | 2028-05-07 | 3489, 3502 |  | GC1 | 8846514 |
| 3506 | 37200.37400.37500.38700.39700.41100.42100.90400.1282400 | Electrical wiring work | 16.88d | 2028-05-27 | 2028-06-11 | 3490, 3505 |  | GC1 | 8846524 |
| 3507 | 37200.37400.37500.38700.39700.41100.42100.90400.1282500 | Painting 1st coat | 16.88d | 2028-06-11 | 2028-06-26 | 3491, 3504, 3505, 3506 |  | GC1 | 8846534 |
| 3508 | 37200.37400.37500.38700.39700.41100.42100.90400.1282600 | False ceiling | 11.25d | 2028-06-26 | 2028-07-06 | 3492, 3507 |  | GC1 | 8846544 |
| 3509 | 37200.37400.37500.38700.39700.41100.42100.90500 | **32nd Floor** | 449.12d | 2027-05-03 | 2028-07-21 |  | start no earlier than 2027-05-03 | GC1 | 8807554 |
| 3510 | 37200.37400.37500.38700.39700.41100.42100.90500.1282700 | Block Work | 9d | 2027-05-03 | 2027-05-11 | 3007, 3494 |  | GC1 | 8846554 |
| 3511 | 37200.37400.37500.38700.39700.41100.42100.90500.1282800 | Door Frame Fixing | 10.12d | 2027-05-12 | 2027-05-21 | 3495, 3510 |  | GC1 | 8846564 |
| 3512 | 37200.37400.37500.38700.39700.41100.42100.90500.1282900 | Internal Plumbing Works | 11.25d | 2027-05-13 | 2027-05-23 | 3496, 3510 |  | GC1 | 8846574 |
| 3513 | 37200.37400.37500.38700.39700.41100.42100.90500.1283000 | Waterproofing | 13.5d | 2027-05-25 | 2027-06-06 | 3497, 3512 |  | GC1 | 8846584 |
| 3514 | 37200.37400.37500.38700.39700.41100.42100.90500.1283100 | Internal Plaster | 10.12d | 2027-06-15 | 2027-06-24 | 3498, 3511, 3512, 3513 |  | GC1 | 8846594 |
| 3515 | 37200.37400.37500.38700.39700.41100.42100.90500.1283200 | IPS flooring work | 10.12d | 2027-06-24 | 2027-07-03 | 3499, 3511, 3513, 3514 |  | GC1 | 8846604 |
| 3516 | 37200.37400.37500.38700.39700.41100.42100.90500.1283300 | Toilet dado work | 9d | 2027-12-27 | 2028-01-04 | 3500, 3513, 3514 |  | GC1 | 8846614 |
| 3517 | 37200.37400.37500.38700.39700.41100.42100.90500.1283400 | Toilet flooring work | 7.88d | 2028-01-04 | 2028-01-11 | 3501, 3516 |  | GC1 | 8846624 |
| 3518 | 37200.37400.37500.38700.39700.41100.42100.90500.1283500 | Living dinning flooring | 16.88d | 2028-04-29 | 2028-05-14 | 3502, 3511, 3517 |  | GC1 | 8846634 |
| 3519 | 37200.37400.37500.38700.39700.41100.42100.90500.1283600 | Aluminium door-window fixing | 13.5d | 2028-05-22 | 2028-06-03 | 3503, 3515, 3518 |  | GC1 | 8846644 |
| 3520 | 37200.37400.37500.38700.39700.41100.42100.90500.1283700 | Putty primer coat | 6.75d | 2028-05-14 | 2028-05-20 | 3504, 3518 |  | GC1 | 8846654 |
| 3521 | 37200.37400.37500.38700.39700.41100.42100.90500.1283800 | Door shutter fixing | 9d | 2028-05-14 | 2028-05-22 | 3505, 3518 |  | GC1 | 8846664 |
| 3522 | 37200.37400.37500.38700.39700.41100.42100.90500.1283900 | Electrical wiring work | 16.88d | 2028-06-11 | 2028-06-26 | 3506, 3521 |  | GC1 | 8846674 |
| 3523 | 37200.37400.37500.38700.39700.41100.42100.90500.1284000 | Painting 1st coat | 16.88d | 2028-06-26 | 2028-07-11 | 3507, 3520, 3521, 3522 |  | GC1 | 8846684 |
| 3524 | 37200.37400.37500.38700.39700.41100.42100.90500.1284100 | False ceiling | 11.25d | 2028-07-11 | 2028-07-21 | 3508, 3523 |  | GC1 | 8846694 |

| ID | WBS | Task | Duration | Start | Finish | Predecessors | Constraint | Calendar | Unique_Task_ID |
| --- | --- | --- | --- | --- | --- | --- | --- | --- | --- |
| 3525 | 37200.37400.37500.38700.39700.41100.42100.90600 | **33rd Floor** | 453.62d | 2027-05-11 | 2028-08-02 |  | start no earlier than 2027-05-11 | GC1 | 8807564 |
| 3526 | 37200.37400.37500.38700.39700.41100.42100.90600.1284200 | Block Work | 9d | 2027-05-11 | 2027-05-19 | 3008, 3510 |  | GC1 | 8846704 |
| 3527 | 37200.37400.37500.38700.39700.41100.42100.90600.1284300 | Door Frame Fixing | 10.12d | 2027-05-21 | 2027-05-30 | 3511, 3526 |  | GC1 | 8846714 |
| 3528 | 37200.37400.37500.38700.39700.41100.42100.90600.1284400 | Internal Plumbing Works | 11.25d | 2027-05-23 | 2027-06-02 | 3512, 3526 |  | GC1 | 8846724 |
| 3529 | 37200.37400.37500.38700.39700.41100.42100.90600.1284500 | Waterproofing | 13.5d | 2027-06-06 | 2027-06-18 | 3513, 3528 |  | GC1 | 8846734 |
| 3530 | 37200.37400.37500.38700.39700.41100.42100.90600.1284600 | Internal Plaster | 10.12d | 2027-06-18 | 2027-06-27 | 3527, 3528, 3529 |  | GC1 | 8846744 |
| 3531 | 37200.37400.37500.38700.39700.41100.42100.90600.1284700 | IPS flooring work | 10.12d | 2027-07-03 | 2027-07-12 | 3515, 3527, 3529, 3530 |  | GC1 | 8846754 |
| 3532 | 37200.37400.37500.38700.39700.41100.42100.90600.1284800 | Toilet dado work | 9d | 2028-01-04 | 2028-01-12 | 3516, 3529, 3530 |  | GC1 | 8846764 |
| 3533 | 37200.37400.37500.38700.39700.41100.42100.90600.1284900 | Toilet flooring work | 7.88d | 2028-01-12 | 2028-01-19 | 3517, 3532 |  | GC1 | 8846774 |
| 3534 | 37200.37400.37500.38700.39700.41100.42100.90600.1285000 | Living dinning flooring | 16.88d | 2028-05-14 | 2028-05-29 | 3518, 3527, 3533 |  | GC1 | 8846784 |
| 3535 | 37200.37400.37500.38700.39700.41100.42100.90600.1285100 | Aluminium door-window fixing | 16.88d | 2028-06-03 | 2028-06-18 | 3519, 3531, 3534 |  | GC1 | 8846794 |
| 3536 | 37200.37400.37500.38700.39700.41100.42100.90600.1285200 | Putty primer coat | 6.75d | 2028-05-29 | 2028-06-04 | 3520, 3534 |  | GC1 | 8846804 |
| 3537 | 37200.37400.37500.38700.39700.41100.42100.90600.1285300 | Door shutter fixing | 9d | 2028-05-29 | 2028-06-06 | 3521, 3534 |  | GC1 | 8846814 |
| 3538 | 37200.37400.37500.38700.39700.41100.42100.90600.1285400 | Electrical wiring work | 13.5d | 2028-06-26 | 2028-07-08 | 3522, 3537 |  | GC1 | 8846824 |
| 3539 | 37200.37400.37500.38700.39700.41100.42100.90600.1285500 | Painting 1st coat | 13.5d | 2028-07-11 | 2028-07-23 | 3523, 3536, 3537, 3538 |  | GC1 | 8846834 |
| 3540 | 37200.37400.37500.38700.39700.41100.42100.90600.1285600 | False ceiling | 11.25d | 2028-07-23 | 2028-08-02 | 3524, 3539 |  | GC1 | 8846844 |
| 3541 | 37200.37400.37500.38700.39700.41100.42100.90700 | **34th Floor** | 458.12d | 2027-05-19 | 2028-08-14 |  | start no earlier than 2027-05-19 | GC1 | 8807574 |
| 3542 | 37200.37400.37500.38700.39700.41100.42100.90700.1285700 | Block Work | 9d | 2027-05-19 | 2027-05-27 | 3009, 3526 |  | GC1 | 8846854 |
| 3543 | 37200.37400.37500.38700.39700.41100.42100.90700.1285800 | Door Frame Fixing | 10.12d | 2027-05-30 | 2027-06-08 | 3527, 3542 |  | GC1 | 8846864 |
| 3544 | 37200.37400.37500.38700.39700.41100.42100.90700.1285900 | Internal Plumbing Works | 11.25d | 2027-06-02 | 2027-06-12 | 3528, 3542 |  | GC1 | 8846874 |
| 3545 | 37200.37400.37500.38700.39700.41100.42100.90700.1286000 | Waterproofing | 11.25d | 2027-06-12 | 2027-06-22 | 3544 |  | GC1 | 8846884 |
| 3546 | 37200.37400.37500.38700.39700.41100.42100.90700.1286100 | Internal Plaster | 10.12d | 2027-06-27 | 2027-07-06 | 3530, 3543, 3544, 3545 |  | GC1 | 8846894 |
| 3547 | 37200.37400.37500.38700.39700.41100.42100.90700.1286200 | IPS flooring work | 10.12d | 2027-07-12 | 2027-07-21 | 3531, 3543, 3545, 3546 |  | GC1 | 8846904 |
| 3548 | 37200.37400.37500.38700.39700.41100.42100.90700.1286300 | Toilet dado work | 9d | 2028-01-12 | 2028-01-20 | 3532, 3545, 3546 |  | GC1 | 8846914 |
| 3549 | 37200.37400.37500.38700.39700.41100.42100.90700.1286400 | Toilet flooring work | 7.88d | 2028-01-20 | 2028-01-27 | 3533, 3548 |  | GC1 | 8846924 |
| 3550 | 37200.37400.37500.38700.39700.41100.42100.90700.1286500 | Living dinning flooring | 13.5d | 2028-05-29 | 2028-06-10 | 3534, 3543, 3549 |  | GC1 | 8846934 |
| 3551 | 37200.37400.37500.38700.39700.41100.42100.90700.1286600 | Aluminium door-window fixing | 16.88d | 2028-06-18 | 2028-07-03 | 3535, 3547, 3550 |  | GC1 | 8846944 |
| 3552 | 37200.37400.37500.38700.39700.41100.42100.90700.1286700 | Putty primer coat | 6.75d | 2028-06-10 | 2028-06-16 | 3536, 3550 |  | GC1 | 8846954 |
| 3553 | 37200.37400.37500.38700.39700.41100.42100.90700.1286800 | Door shutter fixing | 9d | 2028-06-10 | 2028-06-18 | 3537, 3550 |  | GC1 | 8846964 |
| 3554 | 37200.37400.37500.38700.39700.41100.42100.90700.1286900 | Electrical wiring work | 13.5d | 2028-07-08 | 2028-07-20 | 3538, 3553 |  | GC1 | 8846974 |
| 3555 | 37200.37400.37500.38700.39700.41100.42100.90700.1287000 | Painting 1st coat | 13.5d | 2028-07-23 | 2028-08-04 | 3539, 3552, 3553, 3554 |  | GC1 | 8846984 |
| 3556 | 37200.37400.37500.38700.39700.41100.42100.90700.1287100 | False ceiling | 11.25d | 2028-08-04 | 2028-08-14 | 3540, 3555 |  | GC1 | 8846994 |

| ID | WBS | Task | Duration | Start | Finish | Predecessors | Constraint | Calendar | Unique_Task_ID |
| --- | --- | --- | --- | --- | --- | --- | --- | --- | --- |
| 3557 | 37200.37400.37500.38700.39700.41100.42100.90800 | **35th Floor** | 462.62d | 2027-05-27 | 2028-08-26 |  | start no earlier than 2027-05-27 | GC1 | 8807584 |
| 3558 | 37200.37400.37500.38700.39700.41100.42100.90800.1287200 | Block Work | 9d | 2027-05-27 | 2027-06-04 | 3010, 3542 |  | GC1 | 8847004 |
| 3559 | 37200.37400.37500.38700.39700.41100.42100.90800.1287300 | Door Frame Fixing | 10.12d | 2027-06-08 | 2027-06-17 | 3543, 3558 |  | GC1 | 8847014 |
| 3560 | 37200.37400.37500.38700.39700.41100.42100.90800.1287400 | Internal Plumbing Works | 11.25d | 2027-06-12 | 2027-06-22 | 3544, 3558 |  | GC1 | 8847024 |
| 3561 | 37200.37400.37500.38700.39700.41100.42100.90800.1287500 | Waterproofing | 13.5d | 2027-06-22 | 2027-07-04 | 3545, 3560 |  | GC1 | 8847034 |
| 3562 | 37200.37400.37500.38700.39700.41100.42100.90800.1287600 | Internal Plaster | 10.12d | 2027-08-08 | 2027-08-17 | 2967FF+135d, 3546FS+0.25d, 3559FS+0.25d, 3560FS+0.25d, 3561FS+0.25d |  | GC1 | 8847044 |
| 3563 | 37200.37400.37500.38700.39700.41100.42100.90800.1287700 | IPS flooring work | 10.12d | 2027-08-17 | 2027-08-26 | 3547, 3559, 3561, 3562 |  | GC1 | 8847054 |
| 3564 | 37200.37400.37500.38700.39700.41100.42100.90800.1287800 | Toilet dado work | 9d | 2028-01-20 | 2028-01-28 | 3548, 3561, 3562 |  | GC1 | 8847064 |
| 3565 | 37200.37400.37500.38700.39700.41100.42100.90800.1287900 | Toilet flooring work | 7.88d | 2028-01-28 | 2028-02-04 | 3549, 3564 |  | GC1 | 8847074 |
| 3566 | 37200.37400.37500.38700.39700.41100.42100.90800.1288000 | Living dinning flooring | 14.62d | 2028-06-10 | 2028-06-23 | 2967FS+168.75d, 3550FS+0.25d, 3559FS+0.25d, 3565FS+0.25d |  | GC1 | 8847084 |
| 3567 | 37200.37400.37500.38700.39700.41100.42100.90800.1288100 | Aluminium door-window fixing | 16.88d | 2028-07-03 | 2028-07-18 | 3551, 3563, 3566 |  | GC1 | 8847094 |
| 3568 | 37200.37400.37500.38700.39700.41100.42100.90800.1288200 | Putty primer coat | 6.75d | 2028-06-23 | 2028-06-29 | 3552, 3566 |  | GC1 | 8847104 |
| 3569 | 37200.37400.37500.38700.39700.41100.42100.90800.1288300 | Door shutter fixing | 9d | 2028-06-23 | 2028-07-01 | 3553, 3566 |  | GC1 | 8847114 |
| 3570 | 37200.37400.37500.38700.39700.41100.42100.90800.1288400 | Electrical wiring work | 13.5d | 2028-07-20 | 2028-08-01 | 3554, 3569 |  | GC1 | 8847124 |
| 3571 | 37200.37400.37500.38700.39700.41100.42100.90800.1288500 | Painting 1st coat | 13.5d | 2028-08-04 | 2028-08-16 | 3555, 3568, 3569, 3570 |  | GC1 | 8847134 |
| 3572 | 37200.37400.37500.38700.39700.41100.42100.90800.1288600 | False ceiling | 11.25d | 2028-08-16 | 2028-08-26 | 3556, 3571 |  | GC1 | 8847144 |
| 3573 | 37200.37400.37500.38700.39700.41100.190800 | **Terrace Finishing** | 90d | 2027-04-19 | 2027-07-08 |  | start no earlier than 2027-04-19 | GC1 | 8810744 |
| 3574 | 37200.37400.37500.38700.39700.41100.190800.562400 | Terrace waterproofing | 45d | 2027-04-19 | 2027-05-29 | 2967 |  | GC1 | 8823594 |
| 3575 | 37200.37400.37500.38700.39700.41100.190800.562500 | Terrace finishing | 45d | 2027-05-29 | 2027-07-08 | 3574 |  | GC1 | 8823604 |
| 3576 | 37200.37400.37500.38700.39700.41100.99900 | **Common Area Finishing** | 331.88d | 2027-05-29 | 2028-05-03 |  | start no earlier than 2027-05-29 | GC1 | 8808064 |
| 3577 | 37200.37400.37500.38700.39700.41100.99900.562600 | Block Work | 45d | 2027-05-29 | 2027-07-08 | 2972 |  | GC1 | 8823614 |
| 3578 | 37200.37400.37500.38700.39700.41100.99900.562700 | Tile Cladding & Lift Lobby Granite Wall | 135d | 2027-07-08 | 2027-12-20 | 3583SS+22.5d |  | GC1 | 8823624 |
| 3579 | 37200.37400.37500.38700.39700.41100.99900.562800 | Staircase railing fixing | 168.75d | 2027-10-21 | 2028-05-03 | 3581SS+33.75d, 3580SS+33.75d |  | GC1 | 8823634 |
| 3580 | 37200.37400.37500.38700.39700.41100.99900.562900 | Main staircase flooring | 168.75d | 2027-09-21 | 2028-04-03 | 3581SS+16.88d |  | GC1 | 8823644 |
| 3581 | 37200.37400.37500.38700.39700.41100.99900.563000 | Fire staircase flooring | 168.75d | 2027-09-06 | 2028-03-19 | 3578SS+16.88d, 3585SS+33.75d |  | GC1 | 8823654 |
| 3582 | 37200.37400.37500.38700.39700.41100.99900.563100 | Fire door work | 67.5d | 2027-10-21 | 2028-02-03 | 3580SS+33.75d, 3581SS+33.75d |  | GC1 | 8823664 |
| 3583 | 37200.37400.37500.38700.39700.41100.99900.563200 | Electrical wiring work | 135d | 2027-06-18 | 2027-10-16 | 3577SS+22.5d |  | GC1 | 8823674 |
| 3584 | 37200.37400.37500.38700.39700.41100.99900.563300 | Lobby flooring | 168.75d | 2027-06-22 | 2028-01-03 | 3583SS+4.12d |  | GC1 | 8823684 |
| 3585 | 37200.37400.37500.38700.39700.41100.99900.563400 | Ceiling & wall putty-primer | 123.75d | 2027-08-07 | 2028-01-09 | 3578SS+33.75d |  | GC1 | 8823694 |
| 3586 | 37200.37400.37500.38700.39700.41100.99900.563500 | Ceiling & wall painting | 112.5d | 2027-08-27 | 2028-01-19 | 3585SS+22.5d |  | GC1 | 8823704 |
| 3587 | 37200.37400.37500.38700.39700.41100.99900.563600 | Light fixture supply & installation | 50.62d | 2027-10-26 | 2028-01-24 | 3586SS+67.5d |  | GC1 | 8823714 |

| ID | WBS | Task | Duration | Start | Finish | Predecessors | Constraint | Calendar | Unique_Task_ID |
| --- | --- | --- | --- | --- | --- | --- | --- | --- | --- |
| 3588 | 37200.37400.37500.38700.39700.41100.47100 | **Balcony Glass Railing** | 78.75d | 2028-01-09 | 2028-03-19 |  | start no earlier than 2028-01-09 | GC1 | 8806144 |
| 3589 | 37200.37400.37500.38700.39700.41100.47100.563700 | 1st Floor | 2.25d | 2028-01-09 | 2028-01-11 | 3657 |  | GC1 | 8823724 |
| 3590 | 37200.37400.37500.38700.39700.41100.47100.563800 | 2nd Floor | 2.25d | 2028-01-11 | 2028-01-13 | 3589 |  | GC1 | 8823734 |
| 3591 | 37200.37400.37500.38700.39700.41100.47100.563900 | 3rd Floor | 2.25d | 2028-01-13 | 2028-01-15 | 3590 |  | GC1 | 8823744 |
| 3592 | 37200.37400.37500.38700.39700.41100.47100.564000 | 4th Floor | 2.25d | 2028-01-15 | 2028-01-17 | 3591 |  | GC1 | 8823754 |
| 3593 | 37200.37400.37500.38700.39700.41100.47100.564100 | 5th Floor | 2.25d | 2028-01-17 | 2028-01-19 | 3592 |  | GC1 | 8823764 |
| 3594 | 37200.37400.37500.38700.39700.41100.47100.564200 | 6th Floor | 2.25d | 2028-01-19 | 2028-01-21 | 3593 |  | GC1 | 8823774 |
| 3595 | 37200.37400.37500.38700.39700.41100.47100.564300 | 7th Floor | 2.25d | 2028-01-21 | 2028-01-23 | 3594 |  | GC1 | 8823784 |
| 3596 | 37200.37400.37500.38700.39700.41100.47100.564400 | 8th Floor | 2.25d | 2028-01-23 | 2028-01-25 | 3595 |  | GC1 | 8823794 |
| 3597 | 37200.37400.37500.38700.39700.41100.47100.564500 | 9th Floor | 2.25d | 2028-01-25 | 2028-01-27 | 3596 |  | GC1 | 8823804 |
| 3598 | 37200.37400.37500.38700.39700.41100.47100.564600 | 10th Floor | 2.25d | 2028-01-27 | 2028-01-29 | 3597 |  | GC1 | 8823814 |
| 3599 | 37200.37400.37500.38700.39700.41100.47100.564700 | 11th Floor | 2.25d | 2028-01-29 | 2028-01-31 | 3598 |  | GC1 | 8823824 |
| 3600 | 37200.37400.37500.38700.39700.41100.47100.564800 | 12th Floor | 2.25d | 2028-01-31 | 2028-02-02 | 3599 |  | GC1 | 8823834 |
| 3601 | 37200.37400.37500.38700.39700.41100.47100.564900 | 13th Floor | 2.25d | 2028-02-02 | 2028-02-04 | 3600 |  | GC1 | 8823844 |
| 3602 | 37200.37400.37500.38700.39700.41100.47100.565000 | 14th Floor | 2.25d | 2028-02-04 | 2028-02-06 | 3601 |  | GC1 | 8823854 |
| 3603 | 37200.37400.37500.38700.39700.41100.47100.565100 | 15th Floor | 2.25d | 2028-02-06 | 2028-02-08 | 3602 |  | GC1 | 8823864 |
| 3604 | 37200.37400.37500.38700.39700.41100.47100.565200 | 16th Floor | 2.25d | 2028-02-08 | 2028-02-10 | 3603 |  | GC1 | 8823874 |
| 3605 | 37200.37400.37500.38700.39700.41100.47100.565300 | 17th Floor | 2.25d | 2028-02-10 | 2028-02-12 | 3604 |  | GC1 | 8823884 |
| 3606 | 37200.37400.37500.38700.39700.41100.47100.565400 | 18th Floor | 2.25d | 2028-02-12 | 2028-02-14 | 3605 |  | GC1 | 8823894 |
| 3607 | 37200.37400.37500.38700.39700.41100.47100.565500 | 19th Floor | 2.25d | 2028-02-14 | 2028-02-16 | 3606 |  | GC1 | 8823904 |
| 3608 | 37200.37400.37500.38700.39700.41100.47100.565600 | 20th Floor | 2.25d | 2028-02-16 | 2028-02-18 | 3607 |  | GC1 | 8823914 |
| 3609 | 37200.37400.37500.38700.39700.41100.47100.565700 | 21st Floor | 2.25d | 2028-02-18 | 2028-02-20 | 3608 |  | GC1 | 8823924 |
| 3610 | 37200.37400.37500.38700.39700.41100.47100.565800 | 22nd Floor | 2.25d | 2028-02-20 | 2028-02-22 | 3609 |  | GC1 | 8823934 |
| 3611 | 37200.37400.37500.38700.39700.41100.47100.565900 | 23rd Floor | 2.25d | 2028-02-22 | 2028-02-24 | 3610 |  | GC1 | 8823944 |
| 3612 | 37200.37400.37500.38700.39700.41100.47100.566000 | 24th Floor | 2.25d | 2028-02-24 | 2028-02-26 | 3611 |  | GC1 | 8823954 |
| 3613 | 37200.37400.37500.38700.39700.41100.47100.566100 | 25th Floor | 2.25d | 2028-02-26 | 2028-02-28 | 3612 |  | GC1 | 8823964 |
| 3614 | 37200.37400.37500.38700.39700.41100.47100.566200 | 26th Floor | 2.25d | 2028-02-28 | 2028-03-01 | 3613 |  | GC1 | 8823974 |
| 3615 | 37200.37400.37500.38700.39700.41100.47100.566300 | 27th Floor | 2.25d | 2028-03-01 | 2028-03-03 | 3614 |  | GC1 | 8823984 |
| 3616 | 37200.37400.37500.38700.39700.41100.47100.566400 | 28th Floor | 2.25d | 2028-03-03 | 2028-03-05 | 3615 |  | GC1 | 8823994 |
| 3617 | 37200.37400.37500.38700.39700.41100.47100.566500 | 29th Floor | 2.25d | 2028-03-05 | 2028-03-07 | 3616 |  | GC1 | 8824004 |
| 3618 | 37200.37400.37500.38700.39700.41100.47100.566600 | 30th Floor | 2.25d | 2028-03-07 | 2028-03-09 | 3617 |  | GC1 | 8824014 |
| 3619 | 37200.37400.37500.38700.39700.41100.47100.566700 | 31st Floor | 2.25d | 2028-03-09 | 2028-03-11 | 3618 |  | GC1 | 8824024 |
| 3620 | 37200.37400.37500.38700.39700.41100.47100.566800 | 32nd Floor | 2.25d | 2028-03-11 | 2028-03-13 | 3619 |  | GC1 | 8824034 |
| 3621 | 37200.37400.37500.38700.39700.41100.47100.566900 | 33rd Floor | 2.25d | 2028-03-13 | 2028-03-15 | 3620 |  | GC1 | 8824044 |
| 3622 | 37200.37400.37500.38700.39700.41100.47100.567000 | 34th Floor | 2.25d | 2028-03-15 | 2028-03-17 | 3621 |  | GC1 | 8824054 |
| 3623 | 37200.37400.37500.38700.39700.41100.47100.567100 | 35th Floor | 2.25d | 2028-03-17 | 2028-03-19 | 3622 |  | GC1 | 8824064 |

| ID | WBS | Task | Duration | Start | Finish | Predecessors | Constraint | Calendar | Unique_Task_ID |
| --- | --- | --- | --- | --- | --- | --- | --- | --- | --- |
| 3624 | 37200.37400.37500.38700.96000 | **MEP work** | 506.25d | 2027-05-29 | 2028-10-05 |  | start no earlier than 2027-05-29 | GC1 | 8807954 |
| 3625 | 37200.37400.37500.38700.96000.97300 | **Electrical work** | 270d | 2027-05-29 | 2028-03-09 |  | start no earlier than 2027-05-29 | GC1 | 8808024 |
| 3626 | 37200.37400.37500.38700.96000.97300.358300 | Cable Tray | 101.25d | 2027-05-29 | 2027-08-27 | 2972 |  | GC1 | 8814564 |
| 3627 | 37200.37400.37500.38700.96000.97300.358400 | Cable, main & sub main | 90d | 2027-07-13 | 2027-10-01 | 3626SS+50.62d |  | GC1 | 8814574 |
| 3628 | 37200.37400.37500.38700.96000.97300.358500 | LT panel & DB | 135d | 2027-08-27 | 2028-02-08 | 3626 |  | GC1 | 8814584 |
| 3629 | 37200.37400.37500.38700.96000.97300.358600 | Rising main | 101.25d | 2027-10-26 | 2028-03-09 | 3626FS+67.5d |  | GC1 | 8814594 |
| 3630 | 37200.37400.37500.38700.96000.97300.358700 | EARTHING Works | 67.5d | 2027-09-11 | 2027-12-25 | 3626FS+16.88d |  | GC1 | 8814604 |
| 3631 | 37200.37400.37500.38700.96000.97300.358800 | Advance lightening protection | 67.5d | 2027-07-08 | 2027-09-06 | 3575 |  | GC1 | 8814614 |
| 3632 | 37200.37400.37500.38700.96000.97300.358900 | Inverter | 39.38d | 2027-12-25 | 2028-01-29 | 3630 |  | GC1 | 8814624 |
| 3633 | 37200.37400.37500.38700.96000.97300.359000 | Energy meter | 67.5d | 2027-10-01 | 2028-01-14 | 3627 |  | GC1 | 8814634 |
| 3634 | 37200.37400.37500.38700.96000.97300.359100 | Exhast fan | 67.5d | 2027-10-06 | 2028-01-19 | 3633FF+5.62d |  | GC1 | 8814644 |
| 3635 | 37200.37400.37500.38700.96000.97300.359200 | FTTH | 67.5d | 2027-10-31 | 2028-02-13 | 3630FS-11.25d |  | GC1 | 8814654 |
| 3636 | 37200.37400.37500.38700.96000.97300.359300 | Security System - FA & PA | 61.88d | 2027-12-20 | 2028-02-13 | 3635FF |  | GC1 | 8814664 |
| 3637 | 37200.37400.37500.38700.96000.97300.359400 | Solar water heater | 67.5d | 2027-07-08 | 2027-09-06 | 3575 |  | GC1 | 8814674 |
| 3638 | 37200.37400.37500.38700.96000.129300 | **Plumbing wrok** | 382.75d | 2027-05-29 | 2028-06-18 |  | start no earlier than 2027-05-29 | GC1 | 8808394 |
| 3639 | 37200.37400.37500.38700.96000.129300.359500 | Terrace looping | 50.62d | 2027-05-29 | 2027-07-13 | 3574 |  | GC1 | 8814684 |
| 3640 | 37200.37400.37500.38700.96000.129300.359600 | Shaft Plumbing | 135d | 2027-07-13 | 2027-12-25 | 3639 |  | GC1 | 8814694 |
| 3641 | 37200.37400.37500.38700.96000.129300.359700 | CP sanitary fixture supply | 84.38d | 2028-04-04 | 2028-06-18 | 3562, 3565FS+67.5d |  | GC1 | 8814704 |
| 3642 | 37200.37400.37500.38700.96000.129300.359800 | Cold & flushing water supply | 101.25d | 2027-10-06 | 2028-02-18 | 3578SS+101.25d |  | GC1 | 8814714 |
| 3643 | 37200.37400.37500.38700.96000.129300.359900 | Misc work | 33.75d | 2028-02-08 | 2028-03-09 | 3642FS-11.25d |  | GC1 | 8814724 |
| 3644 | 37200.37400.37500.38700.96000.133200 | **Fire fighting work** | 225d | 2027-05-29 | 2028-01-29 |  | start no earlier than 2027-05-29 | GC1 | 8808544 |
| 3645 | 37200.37400.37500.38700.96000.133200.360000 | Fire hydrant work | 67.5d | 2027-07-18 | 2027-09-16 | 3578SS+11.25d |  | GC1 | 8814734 |
| 3646 | 37200.37400.37500.38700.96000.133200.360100 | Sprinkler & piping work | 67.5d | 2027-10-16 | 2028-01-29 | 3645FS+33.75d |  | GC1 | 8814744 |
| 3647 | 37200.37400.37500.38700.96000.133200.360200 | Shaft Downtake works | 101.25d | 2027-05-29 | 2027-08-27 | 3574 |  | GC1 | 8814754 |
| 3648 | 37200.37400.37500.38700.96000.133200.360300 | Connection to pump room | 33.75d | 2027-08-27 | 2027-09-26 | 3647 |  | GC1 | 8814764 |

| ID | WBS | Task | Duration | Start | Finish | Predecessors | Complete | Constraint | Calendar | Unique_Task_ID |
| --- | --- | --- | --- | --- | --- | --- | --- | --- | --- | --- |
| 3649 | 37200.37400.37500.38700.96000.187300 | **Lift work** | 191.25d | 2027-05-29 | 2027-12-30 |  |  | start no earlier than 2027-05-29 | GC1 | 8810674 |
| 3650 | 37200.37400.37500.38700.96000.187300.360400 | Lift Shaft Handover | 45d | 2027-05-29 | 2027-07-08 | 2972 |  |  | GC1 | 8814774 |
| 3651 | 37200.37400.37500.38700.96000.187300.360500 | Lift installation work | 50.62d | 2027-07-08 | 2027-08-22 | 3650 |  |  | GC1 | 8814784 |
| 3652 | 37200.37400.37500.38700.96000.187300.360600 | Lift testing and commissioning | 95.62d | 2027-08-22 | 2027-12-30 | 3651 |  |  | GC1 | 8814794 |
| 3653 | 37200.37400.37500.38700.96000.193600 | **AC work** | 112.5d | 2028-06-27 | 2028-10-05 |  |  | start no earlier than 2028-06-27 | GC1 | 8810834 |
| 3654 | 37200.37400.37500.38700.96000.193600.360700 | Split AC | 112.5d | 2028-06-27 | 2028-10-05 | 3652FS+202.5d |  |  | GC1 | 8814804 |
| 3655 | 37200.37400.37500.38700.140300 | **Tower Completion** | 1613.14d | 2023-12-05 | 2028-03-17 |  | 69% | start no earlier than 2023-12-05 | GC1 | 8808434 |
| 3656 | 37200.37400.37500.38700.140300.273800 | SURFACE PREPARATION | 90d | 2027-05-29 | 2027-08-17 | 3010FS+2.25d |  |  | GC1 | 8811534 |
| 3657 | 37200.37400.37500.38700.140300.273900 | External Painting | 112.5d | 2027-08-17 | 2028-01-09 | 3656 |  |  | GC1 | 8811544 |
| 3658 | 37200.37400.37500.38700.140300.231800 | Waterproofing | 873d | 2023-12-05 | 2028-03-17 | 3657FS-1536.64d | 91% |  | GC1 | 8811554 |
| 3659 | 37200.37400.37500.38700.140300.274000 | Misc. work | 67.5d | 2028-01-09 | 2028-03-09 | 3657 |  |  | GC1 | 8811564 |
| 3660 | 37200.37400.37500.38700.192400 | **Basement lobby** | 67.5d | 2028-01-03 | 2028-03-03 |  |  | start no earlier than 2028-01-03 | GC1 | 8810904 |
| 3661 | 37200.37400.37500.38700.192400.274100 | Basement lobby | 67.5d | 2028-01-03 | 2028-03-03 | 3584 |  |  | GC1 | 8811574 |
| 3662 | 37200.37400.37500.38700.106400 | **Post OC activities** | 438.75d | 2028-03-09 | 2029-04-03 |  |  | start no earlier than 2028-03-09 | GC1 | 8808274 |
| 3663 | 37200.37400.37500.38700.106400.274200 | Wooden Flooring | 202.5d | 2028-05-09 | 2028-11-05 | 3670FS-33.75d |  |  | GC1 | 8811584 |
| 3664 | 37200.37400.37500.38700.106400.274300 | Fixtures SITC | 135d | 2028-06-18 | 2028-10-16 | 3670FS-33.75d, 3641 |  |  | GC1 | 8811594 |
| 3665 | 37200.37400.37500.38700.106400.274400 | Balcony Flooring & Kitchen Counter | 202.5d | 2028-03-09 | 2028-09-05 | 3654FF-33.75d |  |  | GC1 | 8811604 |
| 3666 | 37200.37400.37500.38700.106400.274500 | Misc. Fixtures And Fittings | 135d | 2028-08-01 | 2028-11-29 | 3570 |  |  | GC1 | 8811614 |
| 3667 | 37200.37400.37500.38700.106400.274600 | Modular Kitchen | 202.5d | 2028-03-09 | 2028-09-05 | 3665SS |  |  | GC1 | 8811624 |
| 3668 | 37200.37400.37500.38700.106400.274700 | Final Coat Paint | 101.25d | 2029-01-03 | 2029-04-03 | 3665FS+135d |  |  | GC1 | 8811634 |
| 3669 | 37200.37400.37500.38700.258000 | OC Application/Readiness | 11.25d | 2028-03-19 | 2028-03-29 | 3623, 3631, 3632, 3634, 3636, 3637, 3640, 3643, 3646, 3648, 3652, 3659 |  |  | GC1 | 8811044 |
| 3670 | 37200.37400.37500.38700.258100 | OC Receipt | 67.5d | 2028-04-09 | 2028-06-08 | 4586FS+11.25d |  |  | GC1 | 8811054 |
| 3671 | 37200.37400.37500.38700.258200 | Offer To Possession | 24.75d | 2028-04-09 | 2028-05-01 | 4586FS+11.25d |  |  | GC1 | 8811064 |
| 3672 | 37200.37400.37500.38800 | **Tower 1** | 2286.75d | 2023-11-28 | 2029-10-30 |  | 12% | start no earlier than 2023-11-28 | GC1 | 8805874 |
| 3673 | 37200.37400.37500.38800.99000 | **Substructure** | 766.12d | 2024-05-14 | 2026-05-05 |  | 74% | start no earlier than 2024-05-14 | GC1 | 8808134 |
| 3674 | 37200.37400.37500.38800.99000.109000 | **Soil Bed Preparation** | 687.38d | 2024-05-14 | 2026-02-24 |  | 79% | start no earlier than 2024-05-14 | GC1 | 8808304 |
| 3675 | 37200.37400.37500.38800.99000.109000.211200 | Test Piling | 104.44d | 2024-05-14 | 2024-08-14 |  | 100% | start no earlier than 2024-05-14 | GC1 | 8814814 |
| 3676 | 37200.37400.37500.38800.99000.109000.211100 | Excavation | 33.56d | 2024-06-26 | 2024-07-25 | 3675SS+43d | 100% | start no earlier than 2024-06-26 | GC1 | 8814824 |
| 3677 | 37200.37400.37500.38800.99000.109000.211000 | Main Piling Work | 135d | 2024-09-26 | 2025-03-07 | 3675FS+42d | 100% | start no earlier than 2024-09-26 | GC1 | 8814834 |
| 3678 | 37200.37400.37500.38800.99000.109000.360800 | Anti-termite | 5.62d | 2025-12-27 | 2025-12-31 | 3677FF+2d |  |  | GC1 | 8814844 |
| 3679 | 37200.37400.37500.38800.99000.109000.210900 | PCC | 7.69d | 2025-03-10 | 2025-03-31 | 3677FS-22.5d | 100% | start no earlier than 2025-03-10 | GC1 | 8814854 |
| 3680 | 37200.37400.37500.38800.99000.109000.360900 | Backfilling | 67.5d | 2025-12-27 | 2026-02-24 | 3693 |  |  | GC1 | 8814864 |

| ID | WBS | Task | Duration | Start | Finish | Predecessors | Complete | Constraint | Calendar | Unique_Task_ID |
| --- | --- | --- | --- | --- | --- | --- | --- | --- | --- | --- |
| 3681 | 37200.37400.37500.38800.99000.102800 | **RCC Structure** | 223.88d | 2025-03-15 | 2025-09-29 |  | 100% | start no earlier than 2025-03-15 | GC1 | 8808214 |
| 3682 | 37200.37400.37500.38800.99000.102800.150600 | **Raft Foundation** | 72d | 2025-03-15 | 2025-05-17 |  | 100% | start no earlier than 2025-03-15 | GC1 | 8810624 |
| 3683 | 37200.37400.37500.38800.99000.102800.150600.248200 | Reinforcement | 19.12d | 2025-03-15 | 2025-03-31 | 3679FS-11.25d | 100% | start no earlier than 2025-03-15 | GC1 | 8824074 |
| 3684 | 37200.37400.37500.38800.99000.102800.150600.248100 | Formwork | 9d | 2025-05-06 | 2025-05-13 | 3683FF+7.88d | 100% | start no earlier than 2025-05-06 | GC1 | 8824084 |
| 3685 | 37200.37400.37500.38800.99000.102800.150600.248000 | Concreting | 3.38d | 2025-05-15 | 2025-05-17 | 3684 | 100% | start no earlier than 2025-05-15 | GC1 | 8824094 |
| 3686 | 37200.37400.37500.38800.99000.102800.150500 | **Basement 1 Slab** | 57.38d | 2025-04-16 | 2025-06-05 |  | 100% | start no earlier than 2025-04-16 | GC1 | 8810634 |
| 3687 | 37200.37400.37500.38800.99000.102800.150500.247900 | Reinforcement | 22.5d | 2025-05-17 | 2025-06-05 | 3685 | 100% | start no earlier than 2025-05-17 | GC1 | 8824104 |
| 3688 | 37200.37400.37500.38800.99000.102800.150500.247800 | Formwork | 22.5d | 2025-04-16 | 2025-05-05 | 3687SS+1.12d | 100% | start no earlier than 2025-04-16 | GC1 | 8824114 |
| 3689 | 37200.37400.37500.38800.99000.102800.150500.247700 | Concreting | 4.5d | 2025-05-06 | 2025-05-09 | 3688 | 100% | start no earlier than 2025-05-06 | GC1 | 8824124 |
| 3690 | 37200.37400.37500.38800.99000.102800.150400 | **Basement 2 Slab/GF** | 121.5d | 2025-05-10 | 2025-08-25 |  | 100% | start no earlier than 2025-05-10 | GC1 | 8810644 |
| 3691 | 37200.37400.37500.38800.99000.102800.150400.247600 | Reinforcement | 118.12d | 2025-05-10 | 2025-08-22 | 3689 | 100% | start no earlier than 2025-05-10 | GC1 | 8824134 |
| 3692 | 37200.37400.37500.38800.99000.102800.150400.247500 | Formwork | 117d | 2025-05-11 | 2025-08-22 | 3691SS+1.12d | 100% | start no earlier than 2025-05-11 | GC1 | 8824144 |
| 3693 | 37200.37400.37500.38800.99000.102800.150400.247400 | Concreting | 97.88d | 2025-05-31 | 2025-08-25 | 3692 | 100% | start no earlier than 2025-05-31 | GC1 | 8824154 |
| 3694 | 37200.37400.37500.38800.99000.102800.150300 | **Podium /Ground Floor Slab** | 46.12d | 2025-08-20 | 2025-09-29 |  | 100% | start no earlier than 2025-08-20 | GC1 | 8810654 |
| 3695 | 37200.37400.37500.38800.99000.102800.150300.247300 | Reinforcement | 45d | 2025-08-20 | 2025-09-28 | 3693 | 100% | start no earlier than 2025-08-20 | GC1 | 8824164 |
| 3696 | 37200.37400.37500.38800.99000.102800.150300.247200 | Formwork | 43.88d | 2025-08-21 | 2025-09-28 | 3695SS+1.12d | 100% | start no earlier than 2025-08-21 | GC1 | 8824174 |
| 3697 | 37200.37400.37500.38800.99000.102800.150300.247100 | Concreting | 43.88d | 2025-08-22 | 2025-09-29 | 3696 | 100% | start no earlier than 2025-08-22 | GC1 | 8824184 |
| 3698 | 37200.37400.37500.38800.99000.132400 | **Substructure Finishing** | 146.25d | 2025-12-27 | 2026-05-05 |  |  | start no earlier than 2025-12-27 | GC1 | 8808554 |
| 3699 | 37200.37400.37500.38800.99000.132400.361000 | Masonary work | 50.62d | 2025-12-27 | 2026-02-09 | 3697FS+33.75d |  |  | GC1 | 8814874 |
| 3700 | 37200.37400.37500.38800.99000.132400.361100 | Plaster | 45d | 2026-02-10 | 2026-03-21 | 3699 |  |  | GC1 | 8814884 |
| 3701 | 37200.37400.37500.38800.99000.132400.361200 | Structural steel | 67.5d | 2026-01-13 | 2026-03-13 | 3697FS+67.5d |  |  | GC1 | 8814894 |
| 3702 | 37200.37400.37500.38800.99000.132400.361300 | White Wash | 50.62d | 2026-03-22 | 2026-05-05 | 3700 |  |  | GC1 | 8814904 |
| 3703 | 37200.37400.37500.38800.39800 | **Superstructure** | 1422.75d | 2025-09-25 | 2029-07-21 |  |  | start no earlier than 2025-09-25 | GC1 | 8805924 |
| 3704 | 37200.37400.37500.38800.39800.44200 | **RCC structure** | 573.75d | 2025-09-25 | 2027-05-13 |  | 6% | start no earlier than 2025-09-25 | GC1 | 8806074 |
| 3705 | 37200.37400.37500.38800.39800.44200.124200 | **1st floor slab** | 75.26d | 2025-09-25 | 2026-01-10 |  | 57% | start no earlier than 2025-09-25 | GC1 | 8808934 |
| 3706 | 37200.37400.37500.38800.39800.44200.124200.247000 | Reinforcement | 34.88d | 2025-09-25 | 2026-01-08 | 3697 | 58% | start no earlier than 2025-09-25 | GC1 | 8824194 |
| 3707 | 37200.37400.37500.38800.39800.44200.124200.246900 | Wall conduiting | 3.38d | 2025-10-07 | 2025-12-27 | 3706SS+3.38d | 88% | start no earlier than 2025-10-07 | GC1 | 8824204 |
| 3708 | 37200.37400.37500.38800.39800.44200.124200.246800 | Formwork | 36d | 2025-10-03 | 2026-01-09 | 3706SS+5.62d | 56% | start no earlier than 2025-10-03 | GC1 | 8824214 |
| 3709 | 37200.37400.37500.38800.39800.44200.124200.246700 | Concreting | 1.12d | 2025-10-07 | 2026-01-10 | 3708FS-60.75d | 10% |  | GC1 | 8824224 |

| ID | WBS | Task | Duration | Start | Finish | Predecessors | Complete | Constraint | Calendar | Unique_Task_ID |
| --- | --- | --- | --- | --- | --- | --- | --- | --- | --- | --- |
| 3710 | 37200.37400.37500.38800.39800.44200.150200 | **2nd floor slab** | 68.51d | 2025-10-31 | 2026-02-09 |  | 20% | start no earlier than 2025-10-31 | GC1 | 8808924 |
| 3711 | 37200.37400.37500.38800.39800.44200.150200.246600 | Reinforcement | 34.88d | 2025-10-31 | 2026-02-09 | 3709FS-34.76d | 16% | start no earlier than 2025-10-31 | GC1 | 8824234 |
| 3712 | 37200.37400.37500.38800.39800.44200.150200.567200 | Wall conduiting | 3.38d | 2025-12-28 | 2025-12-30 | 3707FS+0.25d, 3711SS+19.12d |  |  | GC1 | 8824244 |
| 3713 | 37200.37400.37500.38800.39800.44200.150200.246500 | Formwork | 50.62d | 2025-11-09 | 2026-02-02 | 3711SS+19.12d | 24% | start no earlier than 2025-11-09 | GC1 | 8824254 |
| 3714 | 37200.37400.37500.38800.39800.44200.150200.567300 | Concreting | 1.12d | 2026-02-03 | 2026-02-03 | 3713 |  |  | GC1 | 8824264 |
| 3715 | 37200.37400.37500.38800.39800.44200.150100 | **3rd floor slab** | 18d | 2026-02-04 | 2026-02-19 |  |  | start no earlier than 2026-02-04 | GC1 | 8808914 |
| 3716 | 37200.37400.37500.38800.39800.44200.150100.567400 | Reinforcement | 12.38d | 2026-02-04 | 2026-02-14 | 3714 |  |  | GC1 | 8824274 |
| 3717 | 37200.37400.37500.38800.39800.44200.150100.567500 | Wall conduiting | 2.25d | 2026-02-07 | 2026-02-08 | 3712, 3716SS+3.38d |  |  | GC1 | 8824284 |
| 3718 | 37200.37400.37500.38800.39800.44200.150100.567600 | Formwork | 12.38d | 2026-02-08 | 2026-02-18 | 3716SS+4.5d |  |  | GC1 | 8824294 |
| 3719 | 37200.37400.37500.38800.39800.44200.150100.567700 | Concreting | 1.12d | 2026-02-19 | 2026-02-19 | 3718 |  |  | GC1 | 8824304 |
| 3720 | 37200.37400.37500.38800.39800.44200.150000 | **4th floor slab** | 11.25d | 2026-02-20 | 2026-03-01 |  |  | start no earlier than 2026-02-20 | GC1 | 8808904 |
| 3721 | 37200.37400.37500.38800.39800.44200.150000.567800 | Reinforcement | 7.88d | 2026-02-20 | 2026-02-26 | 3719 |  |  | GC1 | 8824314 |
| 3722 | 37200.37400.37500.38800.39800.44200.150000.567900 | Wall conduiting | 2.25d | 2026-02-21 | 2026-02-22 | 3717, 3721SS+1.12d |  |  | GC1 | 8824324 |
| 3723 | 37200.37400.37500.38800.39800.44200.150000.568000 | Formwork | 7.88d | 2026-02-22 | 2026-02-28 | 3721SS+2.25d |  |  | GC1 | 8824334 |
| 3724 | 37200.37400.37500.38800.39800.44200.150000.568100 | Concreting | 1.12d | 2026-03-01 | 2026-03-01 | 3723 |  |  | GC1 | 8824344 |
| 3725 | 37200.37400.37500.38800.39800.44200.149900 | **5th floor slab** | 11.25d | 2026-03-02 | 2026-03-11 |  |  | start no earlier than 2026-03-02 | GC1 | 8808894 |
| 3726 | 37200.37400.37500.38800.39800.44200.149900.568200 | Reinforcement | 7.88d | 2026-03-02 | 2026-03-08 | 3724 |  |  | GC1 | 8824354 |
| 3727 | 37200.37400.37500.38800.39800.44200.149900.568300 | Wall conduiting | 2.25d | 2026-03-03 | 2026-03-04 | 3722, 3726SS+1.12d |  |  | GC1 | 8824364 |
| 3728 | 37200.37400.37500.38800.39800.44200.149900.568400 | Formwork | 7.88d | 2026-03-04 | 2026-03-10 | 3726SS+2.25d |  |  | GC1 | 8824374 |
| 3729 | 37200.37400.37500.38800.39800.44200.149900.568500 | Concreting | 1.12d | 2026-03-11 | 2026-03-11 | 3728 |  |  | GC1 | 8824384 |
| 3730 | 37200.37400.37500.38800.39800.44200.149800 | **6th floor slab** | 11.25d | 2026-03-12 | 2026-03-21 |  |  | start no earlier than 2026-03-12 | GC1 | 8808884 |
| 3731 | 37200.37400.37500.38800.39800.44200.149800.568600 | Reinforcement | 7.88d | 2026-03-12 | 2026-03-18 | 3729 |  |  | GC1 | 8824394 |
| 3732 | 37200.37400.37500.38800.39800.44200.149800.568700 | Wall conduiting | 2.25d | 2026-03-13 | 2026-03-14 | 3727, 3731SS+1.12d |  |  | GC1 | 8824404 |
| 3733 | 37200.37400.37500.38800.39800.44200.149800.568800 | Formwork | 7.88d | 2026-03-14 | 2026-03-20 | 3731SS+2.25d |  |  | GC1 | 8824414 |
| 3734 | 37200.37400.37500.38800.39800.44200.149800.568900 | Concreting | 1.12d | 2026-03-21 | 2026-03-21 | 3733 |  |  | GC1 | 8824424 |

| ID | WBS | Task | Duration | Start | Finish | Predecessors | Constraint | Calendar | Unique_Task_ID |
| --- | --- | --- | --- | --- | --- | --- | --- | --- | --- |
| 3735 | 37200.37400.37500.38800.39800.44200.149700 | **7th floor slab** | 11.25d | 2026-03-22 | 2026-03-31 |  | start no earlier than 2026-03-22 | GC1 | 8808874 |
| 3736 | 37200.37400.37500.38800.39800.44200.149700.569000 | Reinforcement | 7.88d | 2026-03-22 | 2026-03-28 | 3734 |  | GC1 | 8824434 |
| 3737 | 37200.37400.37500.38800.39800.44200.149700.569100 | Wall conduiting | 2.25d | 2026-03-23 | 2026-03-24 | 3732, 3736SS+1.12d |  | GC1 | 8824444 |
| 3738 | 37200.37400.37500.38800.39800.44200.149700.569200 | Formwork | 7.88d | 2026-03-24 | 2026-03-30 | 3736SS+2.25d |  | GC1 | 8824454 |
| 3739 | 37200.37400.37500.38800.39800.44200.149700.569300 | Concreting | 1.12d | 2026-03-31 | 2026-03-31 | 3738 |  | GC1 | 8824464 |
| 3740 | 37200.37400.37500.38800.39800.44200.149600 | **8th floor slab** | 12.38d | 2026-04-01 | 2026-04-11 |  | start no earlier than 2026-04-01 | GC1 | 8808864 |
| 3741 | 37200.37400.37500.38800.39800.44200.149600.569400 | Reinforcement | 7.88d | 2026-04-01 | 2026-04-07 | 3739 |  | GC1 | 8824474 |
| 3742 | 37200.37400.37500.38800.39800.44200.149600.569500 | Wall conduiting | 2.25d | 2026-04-02 | 2026-04-03 | 3737, 3741SS+1.12d |  | GC1 | 8824484 |
| 3743 | 37200.37400.37500.38800.39800.44200.149600.569600 | Formwork | 9d | 2026-04-03 | 2026-04-10 | 3741SS+2.25d |  | GC1 | 8824494 |
| 3744 | 37200.37400.37500.38800.39800.44200.149600.569700 | Concreting | 1.12d | 2026-04-11 | 2026-04-11 | 3743 |  | GC1 | 8824504 |
| 3745 | 37200.37400.37500.38800.39800.44200.149500 | **9th floor slab** | 11.25d | 2026-04-12 | 2026-04-21 |  | start no earlier than 2026-04-12 | GC1 | 8808854 |
| 3746 | 37200.37400.37500.38800.39800.44200.149500.569800 | Reinforcement | 7.88d | 2026-04-12 | 2026-04-18 | 3744 |  | GC1 | 8824514 |
| 3747 | 37200.37400.37500.38800.39800.44200.149500.569900 | Wall conduiting | 2.25d | 2026-04-13 | 2026-04-14 | 3742, 3746SS+1.12d |  | GC1 | 8824524 |
| 3748 | 37200.37400.37500.38800.39800.44200.149500.570000 | Formwork | 7.88d | 2026-04-14 | 2026-04-20 | 3746SS+2.25d |  | GC1 | 8824534 |
| 3749 | 37200.37400.37500.38800.39800.44200.149500.570100 | Concreting | 1.12d | 2026-04-21 | 2026-04-21 | 3748 |  | GC1 | 8824544 |
| 3750 | 37200.37400.37500.38800.39800.44200.149400 | **10th floor slab** | 11.25d | 2026-04-22 | 2026-05-01 |  | start no earlier than 2026-04-22 | GC1 | 8808844 |
| 3751 | 37200.37400.37500.38800.39800.44200.149400.570200 | Reinforcement | 7.88d | 2026-04-22 | 2026-04-28 | 3749 |  | GC1 | 8824554 |
| 3752 | 37200.37400.37500.38800.39800.44200.149400.570300 | Wall conduiting | 2.25d | 2026-04-23 | 2026-04-24 | 3747, 3751SS+1.12d |  | GC1 | 8824564 |
| 3753 | 37200.37400.37500.38800.39800.44200.149400.570400 | Formwork | 7.88d | 2026-04-24 | 2026-04-30 | 3751SS+2.25d |  | GC1 | 8824574 |
| 3754 | 37200.37400.37500.38800.39800.44200.149400.570500 | Concreting | 1.12d | 2026-05-01 | 2026-05-01 | 3753 |  | GC1 | 8824584 |
| 3755 | 37200.37400.37500.38800.39800.44200.149300 | **11th floor slab** | 11.25d | 2026-05-02 | 2026-05-11 |  | start no earlier than 2026-05-02 | GC1 | 8808834 |
| 3756 | 37200.37400.37500.38800.39800.44200.149300.570600 | Reinforcement | 7.88d | 2026-05-02 | 2026-05-08 | 3754 |  | GC1 | 8824594 |
| 3757 | 37200.37400.37500.38800.39800.44200.149300.570700 | Wall conduiting | 2.25d | 2026-05-03 | 2026-05-04 | 3752, 3756SS+1.12d |  | GC1 | 8824604 |
| 3758 | 37200.37400.37500.38800.39800.44200.149300.570800 | Formwork | 7.88d | 2026-05-04 | 2026-05-10 | 3756SS+2.25d |  | GC1 | 8824614 |
| 3759 | 37200.37400.37500.38800.39800.44200.149300.570900 | Concreting | 1.12d | 2026-05-11 | 2026-05-11 | 3758 |  | GC1 | 8824624 |

| ID | WBS | Task | Duration | Start | Finish | Predecessors | Constraint | Calendar | Unique_Task_ID |
| --- | --- | --- | --- | --- | --- | --- | --- | --- | --- |
| 3760 | 37200.37400.37500.38800.39800.44200.149200 | **12th floor slab** | 11.25d | 2026-05-12 | 2026-05-21 |  | start no earlier than 2026-05-12 | GC1 | 8808824 |
| 3761 | 37200.37400.37500.38800.39800.44200.149200.571000 | Reinforcement | 7.88d | 2026-05-12 | 2026-05-18 | 3759 |  | GC1 | 8824634 |
| 3762 | 37200.37400.37500.38800.39800.44200.149200.571100 | Wall conduiting | 2.25d | 2026-05-13 | 2026-05-14 | 3757, 3761SS+1.12d |  | GC1 | 8824644 |
| 3763 | 37200.37400.37500.38800.39800.44200.149200.571200 | Formwork | 7.88d | 2026-05-14 | 2026-05-20 | 3761SS+2.25d |  | GC1 | 8824654 |
| 3764 | 37200.37400.37500.38800.39800.44200.149200.571300 | Concreting | 1.12d | 2026-05-21 | 2026-05-21 | 3763 |  | GC1 | 8824664 |
| 3765 | 37200.37400.37500.38800.39800.44200.149100 | **13th floor slab** | 11.25d | 2026-05-22 | 2026-05-31 |  | start no earlier than 2026-05-22 | GC1 | 8808814 |
| 3766 | 37200.37400.37500.38800.39800.44200.149100.571400 | Reinforcement | 7.88d | 2026-05-22 | 2026-05-28 | 3764 |  | GC1 | 8824674 |
| 3767 | 37200.37400.37500.38800.39800.44200.149100.571500 | Wall conduiting | 2.25d | 2026-05-23 | 2026-05-24 | 3762, 3766SS+1.12d |  | GC1 | 8824684 |
| 3768 | 37200.37400.37500.38800.39800.44200.149100.571600 | Formwork | 7.88d | 2026-05-24 | 2026-05-30 | 3766SS+2.25d |  | GC1 | 8824694 |
| 3769 | 37200.37400.37500.38800.39800.44200.149100.571700 | Concreting | 1.12d | 2026-05-31 | 2026-05-31 | 3768 |  | GC1 | 8824704 |
| 3770 | 37200.37400.37500.38800.39800.44200.149000 | **14th floor slab** | 11.25d | 2026-06-01 | 2026-06-10 |  | start no earlier than 2026-06-01 | GC1 | 8808804 |
| 3771 | 37200.37400.37500.38800.39800.44200.149000.571800 | Reinforcement | 7.88d | 2026-06-01 | 2026-06-07 | 3769 |  | GC1 | 8824714 |
| 3772 | 37200.37400.37500.38800.39800.44200.149000.571900 | Wall conduiting | 2.25d | 2026-06-02 | 2026-06-03 | 3767, 3771SS+1.12d |  | GC1 | 8824724 |
| 3773 | 37200.37400.37500.38800.39800.44200.149000.572000 | Formwork | 7.88d | 2026-06-03 | 2026-06-09 | 3771SS+2.25d |  | GC1 | 8824734 |
| 3774 | 37200.37400.37500.38800.39800.44200.149000.572100 | Concreting | 1.12d | 2026-06-10 | 2026-06-10 | 3773 |  | GC1 | 8824744 |
| 3775 | 37200.37400.37500.38800.39800.44200.148900 | **15th floor slab** | 11.25d | 2026-06-11 | 2026-06-20 |  | start no earlier than 2026-06-11 | GC1 | 8808794 |
| 3776 | 37200.37400.37500.38800.39800.44200.148900.572200 | Reinforcement | 7.88d | 2026-06-11 | 2026-06-17 | 3774 |  | GC1 | 8824754 |
| 3777 | 37200.37400.37500.38800.39800.44200.148900.572300 | Wall conduiting | 2.25d | 2026-06-12 | 2026-06-13 | 3772, 3776SS+1.12d |  | GC1 | 8824764 |
| 3778 | 37200.37400.37500.38800.39800.44200.148900.572400 | Formwork | 7.88d | 2026-06-13 | 2026-06-19 | 3776SS+2.25d |  | GC1 | 8824774 |
| 3779 | 37200.37400.37500.38800.39800.44200.148900.572500 | Concreting | 1.12d | 2026-06-20 | 2026-06-20 | 3778 |  | GC1 | 8824784 |
| 3780 | 37200.37400.37500.38800.39800.44200.148800 | **16th floor slab** | 12.38d | 2026-06-21 | 2026-07-01 |  | start no earlier than 2026-06-21 | GC1 | 8808784 |
| 3781 | 37200.37400.37500.38800.39800.44200.148800.572600 | Reinforcement | 9d | 2026-06-21 | 2026-06-28 | 3779 |  | GC1 | 8824794 |
| 3782 | 37200.37400.37500.38800.39800.44200.148800.572700 | Wall conduiting | 2.25d | 2026-06-22 | 2026-06-23 | 3777, 3781SS+1.12d |  | GC1 | 8824804 |
| 3783 | 37200.37400.37500.38800.39800.44200.148800.572800 | Formwork | 9d | 2026-06-23 | 2026-06-30 | 3781SS+2.25d |  | GC1 | 8824814 |
| 3784 | 37200.37400.37500.38800.39800.44200.148800.572900 | Concreting | 1.12d | 2026-07-01 | 2026-07-01 | 3783 |  | GC1 | 8824824 |

| ID | WBS | Task | Duration | Start | Finish | Predecessors | Constraint | Calendar | Unique_Task_ID |
| --- | --- | --- | --- | --- | --- | --- | --- | --- | --- |
| 3785 | 37200.37400.37500.38800.39800.44200.148700 | **17th floor slab** | 11.25d | 2026-07-02 | 2026-07-11 |  | start no earlier than 2026-07-02 | GC1 | 8808774 |
| 3786 | 37200.37400.37500.38800.39800.44200.148700.573000 | Reinforcement | 9d | 2026-07-02 | 2026-07-09 | 3784 |  | GC1 | 8824834 |
| 3787 | 37200.37400.37500.38800.39800.44200.148700.573100 | Wall conduiting | 2.25d | 2026-07-03 | 2026-07-04 | 3782, 3786SS+1.12d |  | GC1 | 8824844 |
| 3788 | 37200.37400.37500.38800.39800.44200.148700.573200 | Formwork | 7.88d | 2026-07-04 | 2026-07-10 | 3786SS+2.25d |  | GC1 | 8824854 |
| 3789 | 37200.37400.37500.38800.39800.44200.148700.573300 | Concreting | 1.12d | 2026-07-11 | 2026-07-11 | 3788 |  | GC1 | 8824864 |
| 3790 | 37200.37400.37500.38800.39800.44200.148600 | **18th floor slab** | 11.25d | 2026-07-12 | 2026-07-21 |  | start no earlier than 2026-07-12 | GC1 | 8808764 |
| 3791 | 37200.37400.37500.38800.39800.44200.148600.573400 | Reinforcement | 9d | 2026-07-12 | 2026-07-19 | 3789 |  | GC1 | 8824874 |
| 3792 | 37200.37400.37500.38800.39800.44200.148600.573500 | Wall conduiting | 2.25d | 2026-07-13 | 2026-07-14 | 3787, 3791SS+1.12d |  | GC1 | 8824884 |
| 3793 | 37200.37400.37500.38800.39800.44200.148600.573600 | Formwork | 7.88d | 2026-07-14 | 2026-07-20 | 3791SS+2.25d |  | GC1 | 8824894 |
| 3794 | 37200.37400.37500.38800.39800.44200.148600.573700 | Concreting | 1.12d | 2026-07-21 | 2026-07-21 | 3793 |  | GC1 | 8824904 |
| 3795 | 37200.37400.37500.38800.39800.44200.148500 | **19th floor slab** | 11.25d | 2026-07-22 | 2026-07-31 |  | start no earlier than 2026-07-22 | GC1 | 8808754 |
| 3796 | 37200.37400.37500.38800.39800.44200.148500.573800 | Reinforcement | 9d | 2026-07-22 | 2026-07-29 | 3794 |  | GC1 | 8824914 |
| 3797 | 37200.37400.37500.38800.39800.44200.148500.573900 | Wall conduiting | 2.25d | 2026-07-23 | 2026-07-24 | 3792, 3796SS+1.12d |  | GC1 | 8824924 |
| 3798 | 37200.37400.37500.38800.39800.44200.148500.574000 | Formwork | 9d | 2026-07-23 | 2026-07-30 | 3796SS+1.12d |  | GC1 | 8824934 |
| 3799 | 37200.37400.37500.38800.39800.44200.148500.574100 | Concreting | 1.12d | 2026-07-31 | 2026-07-31 | 3798 |  | GC1 | 8824944 |
| 3800 | 37200.37400.37500.38800.39800.44200.148400 | **20th floor slab** | 11.25d | 2026-08-01 | 2026-08-10 |  | start no earlier than 2026-08-01 | GC1 | 8808744 |
| 3801 | 37200.37400.37500.38800.39800.44200.148400.574200 | Reinforcement | 9d | 2026-08-01 | 2026-08-08 | 3799 |  | GC1 | 8824954 |
| 3802 | 37200.37400.37500.38800.39800.44200.148400.574300 | Wall conduiting | 2.25d | 2026-08-02 | 2026-08-03 | 3797, 3801SS+1.12d |  | GC1 | 8824964 |
| 3803 | 37200.37400.37500.38800.39800.44200.148400.574400 | Formwork | 9d | 2026-08-02 | 2026-08-09 | 3801SS+1.12d |  | GC1 | 8824974 |
| 3804 | 37200.37400.37500.38800.39800.44200.148400.574500 | Concreting | 1.12d | 2026-08-10 | 2026-08-10 | 3803 |  | GC1 | 8824984 |
| 3805 | 37200.37400.37500.38800.39800.44200.148300 | **21st floor slab** | 11.25d | 2026-08-11 | 2026-08-20 |  | start no earlier than 2026-08-11 | GC1 | 8808734 |
| 3806 | 37200.37400.37500.38800.39800.44200.148300.574600 | Reinforcement | 9d | 2026-08-11 | 2026-08-18 | 3804 |  | GC1 | 8824994 |
| 3807 | 37200.37400.37500.38800.39800.44200.148300.574700 | Wall conduiting | 2.25d | 2026-08-12 | 2026-08-13 | 3802, 3806SS+1.12d |  | GC1 | 8825004 |
| 3808 | 37200.37400.37500.38800.39800.44200.148300.574800 | Formwork | 7.88d | 2026-08-13 | 2026-08-19 | 3806SS+2.25d |  | GC1 | 8825014 |
| 3809 | 37200.37400.37500.38800.39800.44200.148300.574900 | Concreting | 1.12d | 2026-08-20 | 2026-08-20 | 3808 |  | GC1 | 8825024 |

| ID | WBS | Task | Duration | Start | Finish | Predecessors | Constraint | Calendar | Unique_Task_ID |
| --- | --- | --- | --- | --- | --- | --- | --- | --- | --- |
| 3810 | 37200.37400.37500.38800.39800.44200.148200 | **22nd floor slab** | 11.25d | 2026-08-21 | 2026-08-30 |  | start no earlier than 2026-08-21 | GC1 | 8808724 |
| 3811 | 37200.37400.37500.38800.39800.44200.148200.575000 | Reinforcement | 9d | 2026-08-21 | 2026-08-28 | 3809 |  | GC1 | 8825034 |
| 3812 | 37200.37400.37500.38800.39800.44200.148200.575100 | Wall conduiting | 2.25d | 2026-08-22 | 2026-08-23 | 3807, 3811SS+1.12d |  | GC1 | 8825044 |
| 3813 | 37200.37400.37500.38800.39800.44200.148200.575200 | Formwork | 7.88d | 2026-08-23 | 2026-08-29 | 3811SS+2.25d |  | GC1 | 8825054 |
| 3814 | 37200.37400.37500.38800.39800.44200.148200.575300 | Concreting | 1.12d | 2026-08-30 | 2026-08-30 | 3813 |  | GC1 | 8825064 |
| 3815 | 37200.37400.37500.38800.39800.44200.148100 | **23rd floor slab** | 11.25d | 2026-08-31 | 2026-09-09 |  | start no earlier than 2026-08-31 | GC1 | 8808714 |
| 3816 | 37200.37400.37500.38800.39800.44200.148100.575400 | Reinforcement | 9d | 2026-08-31 | 2026-09-07 | 3814 |  | GC1 | 8825074 |
| 3817 | 37200.37400.37500.38800.39800.44200.148100.575500 | Wall conduiting | 2.25d | 2026-09-01 | 2026-09-02 | 3812, 3816SS+1.12d |  | GC1 | 8825084 |
| 3818 | 37200.37400.37500.38800.39800.44200.148100.575600 | Formwork | 7.88d | 2026-09-02 | 2026-09-08 | 3816SS+2.25d |  | GC1 | 8825094 |
| 3819 | 37200.37400.37500.38800.39800.44200.148100.575700 | Concreting | 1.12d | 2026-09-09 | 2026-09-09 | 3818 |  | GC1 | 8825104 |
| 3820 | 37200.37400.37500.38800.39800.44200.148000 | **24th floor slab** | 15.75d | 2026-09-10 | 2026-09-23 |  | start no earlier than 2026-09-10 | GC1 | 8808704 |
| 3821 | 37200.37400.37500.38800.39800.44200.148000.575800 | Reinforcement | 12.38d | 2026-09-10 | 2026-09-20 | 3819 |  | GC1 | 8825114 |
| 3822 | 37200.37400.37500.38800.39800.44200.148000.575900 | Wall conduiting | 2.25d | 2026-09-11 | 2026-09-12 | 3817, 3821SS+1.12d |  | GC1 | 8825124 |
| 3823 | 37200.37400.37500.38800.39800.44200.148000.576000 | Formwork | 12.38d | 2026-09-12 | 2026-09-22 | 3821SS+2.25d |  | GC1 | 8825134 |
| 3824 | 37200.37400.37500.38800.39800.44200.148000.576100 | Concreting | 1.12d | 2026-09-23 | 2026-09-23 | 3823 |  | GC1 | 8825144 |
| 3825 | 37200.37400.37500.38800.39800.44200.147900 | **25th floor slab** | 16.88d | 2026-09-24 | 2026-10-08 |  | start no earlier than 2026-09-24 | GC1 | 8808694 |
| 3826 | 37200.37400.37500.38800.39800.44200.147900.576200 | Reinforcement | 13.5d | 2026-09-24 | 2026-10-05 | 3824 |  | GC1 | 8825154 |
| 3827 | 37200.37400.37500.38800.39800.44200.147900.576300 | Wall conduiting | 2.25d | 2026-09-25 | 2026-09-26 | 3822, 3826SS+1.12d |  | GC1 | 8825164 |
| 3828 | 37200.37400.37500.38800.39800.44200.147900.576400 | Formwork | 13.5d | 2026-09-26 | 2026-10-07 | 3826SS+2.25d |  | GC1 | 8825174 |
| 3829 | 37200.37400.37500.38800.39800.44200.147900.576500 | Concreting | 1.12d | 2026-10-08 | 2026-10-08 | 3828 |  | GC1 | 8825184 |
| 3830 | 37200.37400.37500.38800.39800.44200.147800 | **26th floor slab** | 11.25d | 2026-10-09 | 2026-10-18 |  | start no earlier than 2026-10-09 | GC1 | 8808684 |
| 3831 | 37200.37400.37500.38800.39800.44200.147800.576600 | Reinforcement | 9d | 2026-10-09 | 2026-10-16 | 3829 |  | GC1 | 8825194 |
| 3832 | 37200.37400.37500.38800.39800.44200.147800.576700 | Wall conduiting | 2.25d | 2026-10-10 | 2026-10-11 | 3827, 3831SS+1.12d |  | GC1 | 8825204 |
| 3833 | 37200.37400.37500.38800.39800.44200.147800.576800 | Formwork | 7.88d | 2026-10-11 | 2026-10-17 | 3831SS+2.25d |  | GC1 | 8825214 |
| 3834 | 37200.37400.37500.38800.39800.44200.147800.576900 | Concreting | 1.12d | 2026-10-18 | 2026-10-18 | 3833 |  | GC1 | 8825224 |

| ID | WBS | Task | Duration | Start | Finish | Predecessors | Constraint | Calendar | Unique_Task_ID |
| --- | --- | --- | --- | --- | --- | --- | --- | --- | --- |
| 3835 | 37200.37400.37500.38800.39800.44200.147700 | **27th floor slab** | 11.25d | 2026-10-19 | 2026-10-28 |  | start no earlier than 2026-10-19 | GC1 | 8808674 |
| 3836 | 37200.37400.37500.38800.39800.44200.147700.577000 | Reinforcement | 9d | 2026-10-19 | 2026-10-26 | 3834 |  | GC1 | 8825234 |
| 3837 | 37200.37400.37500.38800.39800.44200.147700.577100 | Wall conduiting | 2.25d | 2026-10-20 | 2026-10-21 | 3832, 3836SS+1.12d |  | GC1 | 8825244 |
| 3838 | 37200.37400.37500.38800.39800.44200.147700.577200 | Formwork | 7.88d | 2026-10-21 | 2026-10-27 | 3836SS+2.25d |  | GC1 | 8825254 |
| 3839 | 37200.37400.37500.38800.39800.44200.147700.577300 | Concreting | 1.12d | 2026-10-28 | 2026-10-28 | 3838 |  | GC1 | 8825264 |
| 3840 | 37200.37400.37500.38800.39800.44200.147600 | **28th floor slab** | 11.25d | 2026-10-29 | 2026-12-22 |  | start no earlier than 2026-10-29 | GC1 | 8808664 |
| 3841 | 37200.37400.37500.38800.39800.44200.147600.577400 | Reinforcement | 9d | 2026-10-29 | 2026-12-20 | 3839 |  | GC1 | 8825274 |
| 3842 | 37200.37400.37500.38800.39800.44200.147600.577500 | Wall conduiting | 2.25d | 2026-10-30 | 2026-10-31 | 3837, 3841SS+1.12d |  | GC1 | 8825284 |
| 3843 | 37200.37400.37500.38800.39800.44200.147600.577600 | Formwork | 7.88d | 2026-10-31 | 2026-12-21 | 3841SS+2.25d |  | GC1 | 8825294 |
| 3844 | 37200.37400.37500.38800.39800.44200.147600.577700 | Concreting | 1.12d | 2026-12-22 | 2026-12-22 | 3843 |  | GC1 | 8825304 |
| 3845 | 37200.37400.37500.38800.39800.44200.147500 | **29th floor slab** | 11.25d | 2026-12-23 | 2027-01-01 |  | start no earlier than 2026-12-23 | GC1 | 8808654 |
| 3846 | 37200.37400.37500.38800.39800.44200.147500.577800 | Reinforcement | 9d | 2026-12-23 | 2026-12-30 | 3844 |  | GC1 | 8825314 |
| 3847 | 37200.37400.37500.38800.39800.44200.147500.577900 | Wall conduiting | 2.25d | 2026-12-24 | 2026-12-25 | 3842, 3846SS+1.12d |  | GC1 | 8825324 |
| 3848 | 37200.37400.37500.38800.39800.44200.147500.578000 | Formwork | 7.88d | 2026-12-25 | 2026-12-31 | 3846SS+2.25d |  | GC1 | 8825334 |
| 3849 | 37200.37400.37500.38800.39800.44200.147500.578100 | Concreting | 1.12d | 2027-01-01 | 2027-01-01 | 3848 |  | GC1 | 8825344 |
| 3850 | 37200.37400.37500.38800.39800.44200.147400 | **30th floor slab** | 11.25d | 2027-01-02 | 2027-01-11 |  | start no earlier than 2027-01-02 | GC1 | 8808644 |
| 3851 | 37200.37400.37500.38800.39800.44200.147400.578200 | Reinforcement | 9d | 2027-01-02 | 2027-01-09 | 3849 |  | GC1 | 8825354 |
| 3852 | 37200.37400.37500.38800.39800.44200.147400.578300 | Wall conduiting | 2.25d | 2027-01-03 | 2027-01-04 | 3847, 3851SS+1.12d |  | GC1 | 8825364 |
| 3853 | 37200.37400.37500.38800.39800.44200.147400.578400 | Formwork | 7.88d | 2027-01-04 | 2027-01-10 | 3851SS+2.25d |  | GC1 | 8825374 |
| 3854 | 37200.37400.37500.38800.39800.44200.147400.578500 | Concreting | 1.12d | 2027-01-11 | 2027-01-11 | 3853 |  | GC1 | 8825384 |
| 3855 | 37200.37400.37500.38800.39800.44200.147200 | **31st floor slab** | 11.25d | 2027-01-12 | 2027-01-21 |  | start no earlier than 2027-01-12 | GC1 | 8808634 |
| 3856 | 37200.37400.37500.38800.39800.44200.147200.578600 | Reinforcement | 7.88d | 2027-01-12 | 2027-01-18 | 3854 |  | GC1 | 8825394 |
| 3857 | 37200.37400.37500.38800.39800.44200.147200.578700 | Wall conduiting | 2.25d | 2027-01-13 | 2027-01-14 | 3852, 3856SS+1.12d |  | GC1 | 8825404 |
| 3858 | 37200.37400.37500.38800.39800.44200.147200.578800 | Formwork | 7.88d | 2027-01-14 | 2027-01-20 | 3856SS+2.25d |  | GC1 | 8825414 |
| 3859 | 37200.37400.37500.38800.39800.44200.147200.578900 | Concreting | 1.12d | 2027-01-21 | 2027-01-21 | 3858 |  | GC1 | 8825424 |

| ID | WBS | Task | Duration | Start | Finish | Predecessors | Constraint | Calendar | Unique_Task_ID |
| --- | --- | --- | --- | --- | --- | --- | --- | --- | --- |
| 3860 | 37200.37400.37500.38800.39800.44200.147100 | **32nd floor slab** | 15.75d | 2027-01-22 | 2027-02-04 |  | start no earlier than 2027-01-22 | GC1 | 8808624 |
| 3861 | 37200.37400.37500.38800.39800.44200.147100.579000 | Reinforcement | 11.25d | 2027-01-22 | 2027-01-31 | 3859 |  | GC1 | 8825434 |
| 3862 | 37200.37400.37500.38800.39800.44200.147100.579100 | Wall conduiting | 2.25d | 2027-01-23 | 2027-01-24 | 3857, 3861SS+1.12d |  | GC1 | 8825444 |
| 3863 | 37200.37400.37500.38800.39800.44200.147100.579200 | Formwork | 12.38d | 2027-01-24 | 2027-02-03 | 3861SS+2.25d |  | GC1 | 8825454 |
| 3864 | 37200.37400.37500.38800.39800.44200.147100.579300 | Concreting | 1.12d | 2027-02-04 | 2027-02-04 | 3863 |  | GC1 | 8825464 |
| 3865 | 37200.37400.37500.38800.39800.44200.147000 | **33rd floor slab** | 11.25d | 2027-02-05 | 2027-02-14 |  | start no earlier than 2027-02-05 | GC1 | 8808614 |
| 3866 | 37200.37400.37500.38800.39800.44200.147000.579400 | Reinforcement | 7.88d | 2027-02-05 | 2027-02-11 | 3864 |  | GC1 | 8825474 |
| 3867 | 37200.37400.37500.38800.39800.44200.147000.579500 | Wall conduiting | 2.25d | 2027-02-06 | 2027-02-07 | 3862, 3866SS+1.12d |  | GC1 | 8825484 |
| 3868 | 37200.37400.37500.38800.39800.44200.147000.579600 | Formwork | 7.88d | 2027-02-07 | 2027-02-13 | 3866SS+2.25d |  | GC1 | 8825494 |
| 3869 | 37200.37400.37500.38800.39800.44200.147000.579700 | Concreting | 1.12d | 2027-02-14 | 2027-02-14 | 3868 |  | GC1 | 8825504 |
| 3870 | 37200.37400.37500.38800.39800.44200.146900 | **34th floor slab** | 16.88d | 2027-02-15 | 2027-03-01 |  | start no earlier than 2027-02-15 | GC1 | 8808604 |
| 3871 | 37200.37400.37500.38800.39800.44200.146900.579800 | Reinforcement | 13.5d | 2027-02-15 | 2027-02-26 | 3869 |  | GC1 | 8825514 |
| 3872 | 37200.37400.37500.38800.39800.44200.146900.579900 | Wall conduiting | 2.25d | 2027-02-16 | 2027-02-17 | 3867, 3871SS+1.12d |  | GC1 | 8825524 |
| 3873 | 37200.37400.37500.38800.39800.44200.146900.580000 | Formwork | 13.5d | 2027-02-17 | 2027-02-28 | 3871SS+2.25d |  | GC1 | 8825534 |
| 3874 | 37200.37400.37500.38800.39800.44200.146900.580100 | Concreting | 1.12d | 2027-03-01 | 2027-03-01 | 3873 |  | GC1 | 8825544 |
| 3875 | 37200.37400.37500.38800.39800.44200.146700 | **35th floor slab** | 13.5d | 2027-03-02 | 2027-03-13 |  | start no earlier than 2027-03-02 | GC1 | 8808594 |
| 3876 | 37200.37400.37500.38800.39800.44200.146700.580200 | Reinforcement | 9d | 2027-03-02 | 2027-03-09 | 3874 |  | GC1 | 8825554 |
| 3877 | 37200.37400.37500.38800.39800.44200.146700.580300 | Wall conduiting | 2.25d | 2027-03-03 | 2027-03-04 | 3872, 3876SS+1.12d |  | GC1 | 8825564 |
| 3878 | 37200.37400.37500.38800.39800.44200.146700.580400 | Formwork | 9d | 2027-03-05 | 2027-03-12 | 3877SS+2.25d |  | GC1 | 8825574 |
| 3879 | 37200.37400.37500.38800.39800.44200.146700.580500 | Concreting | 1.12d | 2027-03-13 | 2027-03-13 | 3878 |  | GC1 | 8825584 |
| 3880 | 37200.37400.37500.38800.39800.44200.146600 | **Terrace floor slab** | 23.62d | 2027-03-14 | 2027-04-03 |  | start no earlier than 2027-03-14 | GC1 | 8808584 |
| 3881 | 37200.37400.37500.38800.39800.44200.146600.580600 | Reinforcement | 20.25d | 2027-03-14 | 2027-03-31 | 3879 |  | GC1 | 8825594 |
| 3882 | 37200.37400.37500.38800.39800.44200.146600.580700 | Wall conduiting | 2.25d | 2027-03-15 | 2027-03-16 | 3877, 3881SS+1.12d |  | GC1 | 8825604 |
| 3883 | 37200.37400.37500.38800.39800.44200.146600.580800 | Formwork | 20.25d | 2027-03-16 | 2027-04-02 | 3881SS+2.25d |  | GC1 | 8825614 |
| 3884 | 37200.37400.37500.38800.39800.44200.146600.580900 | Concreting | 1.12d | 2027-04-03 | 2027-04-03 | 3883 |  | GC1 | 8825624 |

| ID | WBS | Task | Duration | Start | Finish | Predecessors | Constraint | Calendar | Unique_Task_ID |
| --- | --- | --- | --- | --- | --- | --- | --- | --- | --- |
| 3885 | 37200.37400.37500.38800.39800.44200.146500 | **OHT & Mumty** | 45d | 2027-04-04 | 2027-05-13 |  | start no earlier than 2027-04-04 | GC1 | 8808574 |
| 3886 | 37200.37400.37500.38800.39800.44200.146500.581000 | Reinforcement | 37.12d | 2027-04-04 | 2027-05-06 | 3884 |  | GC1 | 8825634 |
| 3887 | 37200.37400.37500.38800.39800.44200.146500.581100 | Wall conduiting | 5.62d | 2027-04-05 | 2027-04-09 | 3882, 3886SS+1.12d |  | GC1 | 8825644 |
| 3888 | 37200.37400.37500.38800.39800.44200.146500.581200 | Formwork | 37.12d | 2027-04-08 | 2027-05-10 | 3886SS+4.5d |  | GC1 | 8825654 |
| 3889 | 37200.37400.37500.38800.39800.44200.146500.581300 | Concreting | 3.38d | 2027-05-11 | 2027-05-13 | 3888 |  | GC1 | 8825664 |
| 3890 | 37200.37400.37500.38800.39800.45700 | **Post Pour Activities** | 450.88d | 2026-02-20 | 2027-05-11 |  | start no earlier than 2026-02-20 | GC1 | 8806124 |
| 3891 | 37200.37400.37500.38800.39800.45700.361400 | 1st Floor | 12.38d | 2026-02-20 | 2026-03-03 | 3719FS+0.25d |  | GC1 | 8814914 |
| 3892 | 37200.37400.37500.38800.39800.45700.361500 | 2nd Floor | 12.38d | 2026-03-12 | 2026-03-22 | 3891, 3729 |  | GC1 | 8814924 |
| 3893 | 37200.37400.37500.38800.39800.45700.361600 | 3rd Floor | 12.38d | 2026-03-23 | 2026-04-02 | 3892, 3734 |  | GC1 | 8814934 |
| 3894 | 37200.37400.37500.38800.39800.45700.361700 | 4th Floor | 12.38d | 2026-04-03 | 2026-04-13 | 3893, 3739 |  | GC1 | 8814944 |
| 3895 | 37200.37400.37500.38800.39800.45700.361800 | 5th Floor | 12.38d | 2026-04-14 | 2026-04-24 | 3894, 3744 |  | GC1 | 8814954 |
| 3896 | 37200.37400.37500.38800.39800.45700.361900 | 6th Floor | 12.38d | 2026-04-25 | 2026-05-05 | 3895, 3749 |  | GC1 | 8814964 |
| 3897 | 37200.37400.37500.38800.39800.45700.362000 | 7th Floor | 12.38d | 2026-05-06 | 2026-05-16 | 3896, 3754 |  | GC1 | 8814974 |
| 3898 | 37200.37400.37500.38800.39800.45700.362100 | 8th Floor | 12.38d | 2026-05-17 | 2026-05-27 | 3897, 3759 |  | GC1 | 8814984 |
| 3899 | 37200.37400.37500.38800.39800.45700.362200 | 9th Floor | 12.38d | 2026-05-28 | 2026-06-07 | 3898, 3764 |  | GC1 | 8814994 |
| 3900 | 37200.37400.37500.38800.39800.45700.362300 | 10th Floor | 12.38d | 2026-06-08 | 2026-06-18 | 3899, 3769 |  | GC1 | 8815004 |
| 3901 | 37200.37400.37500.38800.39800.45700.362400 | 11th Floor | 12.38d | 2026-06-19 | 2026-06-29 | 3900, 3774 |  | GC1 | 8815014 |
| 3902 | 37200.37400.37500.38800.39800.45700.362500 | 12th Floor | 12.38d | 2026-06-30 | 2026-07-10 | 3901, 3779 |  | GC1 | 8815024 |
| 3903 | 37200.37400.37500.38800.39800.45700.362600 | 13th Floor | 12.38d | 2026-07-11 | 2026-07-21 | 3902, 3784 |  | GC1 | 8815034 |
| 3904 | 37200.37400.37500.38800.39800.45700.362700 | 14th Floor | 12.38d | 2026-07-22 | 2026-08-01 | 3903, 3789 |  | GC1 | 8815044 |
| 3905 | 37200.37400.37500.38800.39800.45700.362800 | 15th Floor | 12.38d | 2026-08-02 | 2026-08-12 | 3904, 3794 |  | GC1 | 8815054 |
| 3906 | 37200.37400.37500.38800.39800.45700.362900 | 16th Floor | 12.38d | 2026-08-13 | 2026-08-23 | 3905, 3799 |  | GC1 | 8815064 |
| 3907 | 37200.37400.37500.38800.39800.45700.363000 | 17th Floor | 12.38d | 2026-08-24 | 2026-09-03 | 3906, 3804 |  | GC1 | 8815074 |
| 3908 | 37200.37400.37500.38800.39800.45700.363100 | 18th Floor | 12.38d | 2026-09-04 | 2026-09-14 | 3907, 3809 |  | GC1 | 8815084 |
| 3909 | 37200.37400.37500.38800.39800.45700.363200 | 19th Floor | 12.38d | 2026-09-15 | 2026-09-25 | 3908, 3814 |  | GC1 | 8815094 |
| 3910 | 37200.37400.37500.38800.39800.45700.363300 | 20th Floor | 12.38d | 2026-09-26 | 2026-10-06 | 3909, 3819 |  | GC1 | 8815104 |
| 3911 | 37200.37400.37500.38800.39800.45700.363400 | 21st Floor | 12.38d | 2026-10-07 | 2026-10-17 | 3910, 3824 |  | GC1 | 8815114 |
| 3912 | 37200.37400.37500.38800.39800.45700.363500 | 22nd Floor | 12.38d | 2026-10-18 | 2026-10-28 | 3911, 3829 |  | GC1 | 8815124 |
| 3913 | 37200.37400.37500.38800.39800.45700.363600 | 23rd Floor | 12.38d | 2026-10-29 | 2026-12-23 | 3912, 3834 |  | GC1 | 8815134 |
| 3914 | 37200.37400.37500.38800.39800.45700.363700 | 24th Floor | 12.38d | 2026-12-24 | 2027-01-03 | 3913, 3839 |  | GC1 | 8815144 |
| 3915 | 37200.37400.37500.38800.39800.45700.363800 | 25th Floor | 12.38d | 2027-01-04 | 2027-01-14 | 3914, 3844 |  | GC1 | 8815154 |
| 3916 | 37200.37400.37500.38800.39800.45700.363900 | 26th Floor | 12.38d | 2027-01-15 | 2027-01-25 | 3915, 3849 |  | GC1 | 8815164 |
| 3917 | 37200.37400.37500.38800.39800.45700.364000 | 27th Floor | 12.38d | 2027-01-26 | 2027-02-05 | 3916, 3854 |  | GC1 | 8815174 |
| 3918 | 37200.37400.37500.38800.39800.45700.364100 | 28th Floor | 12.38d | 2027-02-06 | 2027-02-16 | 3917, 3859 |  | GC1 | 8815184 |
| 3919 | 37200.37400.37500.38800.39800.45700.364200 | 29th Floor | 12.38d | 2027-02-17 | 2027-02-27 | 3918, 3864 |  | GC1 | 8815194 |
| 3920 | 37200.37400.37500.38800.39800.45700.364300 | 30th Floor | 12.38d | 2027-02-28 | 2027-03-10 | 3919, 3869 |  | GC1 | 8815204 |
| 3921 | 37200.37400.37500.38800.39800.45700.364400 | 31st Floor | 12.38d | 2027-03-11 | 2027-03-21 | 3920, 3874 |  | GC1 | 8815214 |
| 3922 | 37200.37400.37500.38800.39800.45700.364500 | 32nd Flood | 12.38d | 2027-03-22 | 2027-04-01 | 3921, 3879 |  | GC1 | 8815224 |
| 3923 | 37200.37400.37500.38800.39800.45700.364600 | 33rd Floor | 9d | 2027-04-02 | 2027-04-09 | 3922 |  | GC1 | 8815234 |
| 3924 | 37200.37400.37500.38800.39800.45700.364700 | 34th Floor | 9d | 2027-04-10 | 2027-04-17 | 3923 |  | GC1 | 8815244 |
| 3925 | 37200.37400.37500.38800.39800.45700.364800 | 35th Floor | 9d | 2027-04-18 | 2027-04-25 | 3924 |  | GC1 | 8815254 |
| 3926 | 37200.37400.37500.38800.39800.45700.364900 | Terrace | 9d | 2027-04-26 | 2027-05-03 | 3925 |  | GC1 | 8815264 |
| 3927 | 37200.37400.37500.38800.39800.45700.365000 | Mumty & Machine Room | 9d | 2027-05-04 | 2027-05-11 | 3926, 3887 |  | GC1 | 8815274 |

| ID | WBS | Task | Duration | Start | Finish | Predecessors | Constraint | Calendar | Unique_Task_ID |
| --- | --- | --- | --- | --- | --- | --- | --- | --- | --- |
| 3928 | 37200.37400.37500.38800.39800.41200 | **Finishing work** | 1289.5d | 2026-03-03 | 2029-07-21 |  | start no earlier than 2026-03-03 | GC1 | 8805974 |
| 3929 | 37200.37400.37500.38800.39800.41200.42200 | **Flat finishing** | 1218.88d | 2026-03-03 | 2029-05-19 |  | start no earlier than 2026-03-03 | GC1 | 8806024 |
| 3930 | 37200.37400.37500.38800.39800.41200.42200.90900 | **1st Floor** | 703.12d | 2026-03-03 | 2028-02-16 |  | start no earlier than 2026-03-03 | GC1 | 8807594 |
| 3931 | 37200.37400.37500.38800.39800.41200.42200.90900.1288700 | Block Work | 7.88d | 2026-03-03 | 2026-03-10 | 3891FS+0.25d |  | GC1 | 8847154 |
| 3932 | 37200.37400.37500.38800.39800.41200.42200.90900.1288800 | Door Frame Fixing | 5.62d | 2026-03-10 | 2026-03-15 | 3931 |  | GC1 | 8847164 |
| 3933 | 37200.37400.37500.38800.39800.41200.42200.90900.1288900 | Internal Plumbing Works | 7.88d | 2026-03-10 | 2026-03-17 | 3931 |  | GC1 | 8847174 |
| 3934 | 37200.37400.37500.38800.39800.41200.42200.90900.1289000 | Waterproofing | 7.88d | 2026-03-17 | 2026-03-24 | 3933 |  | GC1 | 8847184 |
| 3935 | 37200.37400.37500.38800.39800.41200.42200.90900.1289100 | Internal Plaster | 5.62d | 2026-03-15 | 2026-03-20 | 3932FS+0.25d |  | GC1 | 8847194 |
| 3936 | 37200.37400.37500.38800.39800.41200.42200.90900.1289200 | IPS flooring work | 7.88d | 2026-03-24 | 2026-03-31 | 3932, 3933, 3934 |  | GC1 | 8847204 |
| 3937 | 37200.37400.37500.38800.39800.41200.42200.90900.1289300 | Toilet dado work | 7.88d | 2027-02-02 | 2027-02-09 | 3934FS+303.75d, 3935FS+303.75d |  | GC1 | 8847214 |
| 3938 | 37200.37400.37500.38800.39800.41200.42200.90900.1289400 | Toilet flooring work | 6.75d | 2027-02-09 | 2027-02-15 | 3937 |  | GC1 | 8847224 |
| 3939 | 37200.37400.37500.38800.39800.41200.42200.90900.1289500 | Living dinning flooring | 10.12d | 2027-02-15 | 2027-02-24 | 3932, 3938 |  | GC1 | 8847234 |
| 3940 | 37200.37400.37500.38800.39800.41200.42200.90900.1289600 | Aluminium door-window fixing | 13.5d | 2028-02-04 | 2028-02-16 | 3939FS+337.5d |  | GC1 | 8847244 |
| 3941 | 37200.37400.37500.38800.39800.41200.42200.90900.1289700 | Putty primer coat | 6.75d | 2027-02-24 | 2027-03-02 | 3939 |  | GC1 | 8847254 |
| 3942 | 37200.37400.37500.38800.39800.41200.42200.90900.1289800 | Door shutter fixing | 9d | 2027-12-16 | 2027-12-24 | 3939FS+281.25d |  | GC1 | 8847264 |
| 3943 | 37200.37400.37500.38800.39800.41200.42200.90900.1289900 | Electrical wiring work | 13.5d | 2028-01-03 | 2028-01-15 | 3942FS+11.25d |  | GC1 | 8847274 |
| 3944 | 37200.37400.37500.38800.39800.41200.42200.90900.1290000 | Painting 1st coat | 13.5d | 2027-03-03 | 2027-03-15 | 3941FS+1.12d |  | GC1 | 8847284 |
| 3945 | 37200.37400.37500.38800.39800.41200.42200.90900.1290100 | False ceiling | 11.25d | 2027-03-16 | 2027-03-26 | 3944FS+1.12d |  | GC1 | 8847294 |
| 3946 | 37200.37400.37500.38800.39800.41200.42200.91000 | **2nd Floor** | 708.75d | 2026-03-10 | 2028-02-28 |  | start no earlier than 2026-03-10 | GC1 | 8807604 |
| 3947 | 37200.37400.37500.38800.39800.41200.42200.91000.1290200 | Block Work | 7.88d | 2026-03-10 | 2026-03-17 | 3931FS+0.25d |  | GC1 | 8847304 |
| 3948 | 37200.37400.37500.38800.39800.41200.42200.91000.1290300 | Door Frame Fixing | 5.62d | 2026-03-17 | 2026-03-22 | 3932, 3947 |  | GC1 | 8847314 |
| 3949 | 37200.37400.37500.38800.39800.41200.42200.91000.1290400 | Internal Plumbing Works | 7.88d | 2026-03-17 | 2026-03-24 | 3933, 3947 |  | GC1 | 8847324 |
| 3950 | 37200.37400.37500.38800.39800.41200.42200.91000.1290500 | Waterproofing | 7.88d | 2026-03-24 | 2026-03-31 | 3934, 3949 |  | GC1 | 8847334 |
| 3951 | 37200.37400.37500.38800.39800.41200.42200.91000.1290600 | Internal Plaster | 5.62d | 2026-03-22 | 2026-03-27 | 3935FS+0.25d, 3948 |  | GC1 | 8847344 |
| 3952 | 37200.37400.37500.38800.39800.41200.42200.91000.1290700 | IPS flooring work | 7.88d | 2026-03-31 | 2026-04-07 | 3936, 3948, 3949, 3950 |  | GC1 | 8847354 |
| 3953 | 37200.37400.37500.38800.39800.41200.42200.91000.1290800 | Toilet dado work | 7.88d | 2027-02-09 | 2027-02-16 | 3937, 3950, 3951 |  | GC1 | 8847364 |
| 3954 | 37200.37400.37500.38800.39800.41200.42200.91000.1290900 | Toilet flooring work | 6.75d | 2027-02-16 | 2027-02-22 | 3938, 3953 |  | GC1 | 8847374 |
| 3955 | 37200.37400.37500.38800.39800.41200.42200.91000.1291000 | Living dinning flooring | 10.12d | 2027-02-24 | 2027-03-05 | 3939, 3948, 3954 |  | GC1 | 8847384 |
| 3956 | 37200.37400.37500.38800.39800.41200.42200.91000.1291100 | Aluminium door-window fixing | 13.5d | 2028-02-16 | 2028-02-28 | 3940FS+0.25d, 3955FS+0.25d |  | GC1 | 8847394 |
| 3957 | 37200.37400.37500.38800.39800.41200.42200.91000.1291200 | Putty primer coat | 6.75d | 2027-03-05 | 2027-03-11 | 3941, 3955 |  | GC1 | 8847404 |
| 3958 | 37200.37400.37500.38800.39800.41200.42200.91000.1291300 | Door shutter fixing | 9d | 2027-12-24 | 2028-01-01 | 3942, 3955 |  | GC1 | 8847414 |
| 3959 | 37200.37400.37500.38800.39800.41200.42200.91000.1291400 | Electrical wiring work | 13.5d | 2028-01-16 | 2028-01-28 | 3943FS+1.12d, 3958FS+1.12d |  | GC1 | 8847424 |
| 3960 | 37200.37400.37500.38800.39800.41200.42200.91000.1291500 | Painting 1st coat | 13.5d | 2028-01-29 | 2028-02-10 | 3944FS+1.12d, 3957FS+1.12d, 3958FS+1.12d, 3959FS+1.12d |  | GC1 | 8847434 |
| 3961 | 37200.37400.37500.38800.39800.41200.42200.91000.1291600 | False ceiling | 11.25d | 2028-02-11 | 2028-02-21 | 3945FS+1.12d, 3960FS+1.12d |  | GC1 | 8847444 |

| ID | WBS | Task | Duration | Start | Finish | Predecessors | Constraint | Calendar | Unique_Task_ID |
| --- | --- | --- | --- | --- | --- | --- | --- | --- | --- |
| 3962 | 37200.37400.37500.38800.39800.41200.42200.91100 | **3rd Floor** | 714.38d | 2026-03-17 | 2028-03-11 |  | start no earlier than 2026-03-17 | GC1 | 8807614 |
| 3963 | 37200.37400.37500.38800.39800.41200.42200.91100.1291700 | Block Work | 7.88d | 2026-03-17 | 2026-03-24 | 3947FS+0.25d |  | GC1 | 8847454 |
| 3964 | 37200.37400.37500.38800.39800.41200.42200.91100.1291800 | Door Frame Fixing | 5.62d | 2026-03-24 | 2026-03-29 | 3948, 3963 |  | GC1 | 8847464 |
| 3965 | 37200.37400.37500.38800.39800.41200.42200.91100.1291900 | Internal Plumbing Works | 7.88d | 2026-03-24 | 2026-03-31 | 3949, 3963 |  | GC1 | 8847474 |
| 3966 | 37200.37400.37500.38800.39800.41200.42200.91100.1292000 | Waterproofing | 7.88d | 2026-03-31 | 2026-04-07 | 3950, 3965 |  | GC1 | 8847484 |
| 3967 | 37200.37400.37500.38800.39800.41200.42200.91100.1292100 | Internal Plaster | 5.62d | 2026-03-29 | 2026-04-03 | 3951FS+0.25d, 3964 |  | GC1 | 8847494 |
| 3968 | 37200.37400.37500.38800.39800.41200.42200.91100.1292200 | IPS flooring work | 7.88d | 2026-04-07 | 2026-04-14 | 3952FS+0.25d, 3964FS+0.25d |  | GC1 | 8847504 |
| 3969 | 37200.37400.37500.38800.39800.41200.42200.91100.1292300 | Toilet dado work | 7.88d | 2027-02-16 | 2027-02-23 | 3953, 3966, 3967 |  | GC1 | 8847514 |
| 3970 | 37200.37400.37500.38800.39800.41200.42200.91100.1292400 | Toilet flooring work | 6.75d | 2027-02-23 | 2027-03-01 | 3954, 3969 |  | GC1 | 8847524 |
| 3971 | 37200.37400.37500.38800.39800.41200.42200.91100.1292500 | Living dinning flooring | 10.12d | 2027-03-05 | 2027-03-14 | 3955, 3964, 3970 |  | GC1 | 8847534 |
| 3972 | 37200.37400.37500.38800.39800.41200.42200.91100.1292600 | Aluminium door-window fixing | 13.5d | 2028-02-28 | 2028-03-11 | 3956FS+0.25d, 3971FS+0.25d |  | GC1 | 8847544 |
| 3973 | 37200.37400.37500.38800.39800.41200.42200.91100.1292700 | Putty primer coat | 6.75d | 2027-03-14 | 2027-03-20 | 3957, 3971 |  | GC1 | 8847554 |
| 3974 | 37200.37400.37500.38800.39800.41200.42200.91100.1292800 | Door shutter fixing | 9d | 2028-01-01 | 2028-01-09 | 3958, 3971 |  | GC1 | 8847564 |
| 3975 | 37200.37400.37500.38800.39800.41200.42200.91100.1292900 | Electrical wiring work | 13.5d | 2028-01-29 | 2028-02-10 | 3959FS+1.12d, 3974FS+1.12d |  | GC1 | 8847574 |
| 3976 | 37200.37400.37500.38800.39800.41200.42200.91100.1293000 | Painting 1st coat | 13.5d | 2028-02-11 | 2028-02-23 | 3960FS+1.12d, 3973FS+1.12d, 3974FS+1.12d, 3975FS+1.12d |  | GC1 | 8847584 |
| 3977 | 37200.37400.37500.38800.39800.41200.42200.91100.1293100 | False ceiling | 11.25d | 2028-02-24 | 2028-03-05 | 3961FS+1.12d, 3976FS+1.12d |  | GC1 | 8847594 |
| 3978 | 37200.37400.37500.38800.39800.41200.42200.91200 | **4th Floor** | 720d | 2026-03-25 | 2028-03-24 |  | start no earlier than 2026-03-25 | GC1 | 8807624 |
| 3979 | 37200.37400.37500.38800.39800.41200.42200.91200.1293200 | Block Work | 7.88d | 2026-03-25 | 2026-04-01 | 3963FS+0.25d |  | GC1 | 8847604 |
| 3980 | 37200.37400.37500.38800.39800.41200.42200.91200.1293300 | Door Frame Fixing | 5.62d | 2026-04-01 | 2026-04-06 | 3964, 3979 |  | GC1 | 8847614 |
| 3981 | 37200.37400.37500.38800.39800.41200.42200.91200.1293400 | Internal Plumbing Works | 7.88d | 2026-04-01 | 2026-04-08 | 3965, 3979 |  | GC1 | 8847624 |
| 3982 | 37200.37400.37500.38800.39800.41200.42200.91200.1293500 | Waterproofing | 7.88d | 2026-04-08 | 2026-04-15 | 3966, 3981 |  | GC1 | 8847634 |
| 3983 | 37200.37400.37500.38800.39800.41200.42200.91200.1293600 | Internal Plaster | 5.62d | 2026-04-06 | 2026-04-11 | 3967FS+0.25d, 3980FS+0.25d |  | GC1 | 8847644 |
| 3984 | 37200.37400.37500.38800.39800.41200.42200.91200.1293700 | IPS flooring work | 7.88d | 2026-04-15 | 2026-04-22 | 3968, 3980, 3982, 3983 |  | GC1 | 8847654 |
| 3985 | 37200.37400.37500.38800.39800.41200.42200.91200.1293800 | Toilet dado work | 7.88d | 2027-02-23 | 2027-03-02 | 3969, 3982, 3983 |  | GC1 | 8847664 |
| 3986 | 37200.37400.37500.38800.39800.41200.42200.91200.1293900 | Toilet flooring work | 6.75d | 2027-03-02 | 2027-03-08 | 3970, 3985 |  | GC1 | 8847674 |
| 3987 | 37200.37400.37500.38800.39800.41200.42200.91200.1294000 | Living dinning flooring | 10.12d | 2027-03-14 | 2027-03-23 | 3971, 3980, 3986 |  | GC1 | 8847684 |
| 3988 | 37200.37400.37500.38800.39800.41200.42200.91200.1294100 | Aluminium door-window fixing | 13.5d | 2028-03-12 | 2028-03-24 | 3972FS+0.25d, 3987FS+0.25d |  | GC1 | 8847694 |
| 3989 | 37200.37400.37500.38800.39800.41200.42200.91200.1294200 | Putty primer coat | 6.75d | 2027-03-23 | 2027-03-29 | 3973, 3987 |  | GC1 | 8847704 |
| 3990 | 37200.37400.37500.38800.39800.41200.42200.91200.1294300 | Door shutter fixing | 9d | 2028-01-09 | 2028-01-17 | 3974, 3987 |  | GC1 | 8847714 |
| 3991 | 37200.37400.37500.38800.39800.41200.42200.91200.1294400 | Electrical wiring work | 13.5d | 2028-02-11 | 2028-02-23 | 3975FS+1.12d, 3990FS+1.12d |  | GC1 | 8847724 |
| 3992 | 37200.37400.37500.38800.39800.41200.42200.91200.1294500 | Painting 1st coat | 13.5d | 2028-02-24 | 2028-03-07 | 3976FS+1.12d, 3989FS+1.12d, 3990FS+1.12d, 3991FS+1.12d |  | GC1 | 8847734 |
| 3993 | 37200.37400.37500.38800.39800.41200.42200.91200.1294600 | False ceiling | 11.25d | 2028-03-08 | 2028-03-18 | 3977FS+1.12d, 3992FS+1.12d |  | GC1 | 8847744 |

| ID | WBS | Task | Duration | Start | Finish | Predecessors | Constraint | Calendar | Unique_Task_ID |
| --- | --- | --- | --- | --- | --- | --- | --- | --- | --- |
| 3994 | 37200.37400.37500.38800.39800.41200.42200.91300 | **5th Floor** | 725.62d | 2026-04-01 | 2028-04-05 |  | start no earlier than 2026-04-01 | GC1 | 8807634 |
| 3995 | 37200.37400.37500.38800.39800.41200.42200.91300.1294700 | Block Work | 7.88d | 2026-04-01 | 2026-04-08 | 3979FS+0.25d |  | GC1 | 8847754 |
| 3996 | 37200.37400.37500.38800.39800.41200.42200.91300.1294800 | Door Frame Fixing | 5.62d | 2026-04-08 | 2026-04-13 | 3980, 3995 |  | GC1 | 8847764 |
| 3997 | 37200.37400.37500.38800.39800.41200.42200.91300.1294900 | Internal Plumbing Works | 7.88d | 2026-04-08 | 2026-04-15 | 3981, 3995 |  | GC1 | 8847774 |
| 3998 | 37200.37400.37500.38800.39800.41200.42200.91300.1295000 | Waterproofing | 7.88d | 2026-04-15 | 2026-04-22 | 3982, 3997 |  | GC1 | 8847784 |
| 3999 | 37200.37400.37500.38800.39800.41200.42200.91300.1295100 | Internal Plaster | 5.62d | 2026-04-13 | 2026-04-18 | 3983FS+0.25d, 3996FS+0.25d |  | GC1 | 8847794 |
| 4000 | 37200.37400.37500.38800.39800.41200.42200.91300.1295200 | IPS flooring work | 7.88d | 2026-04-22 | 2026-04-29 | 3984, 3996, 3998, 3999 |  | GC1 | 8847804 |
| 4001 | 37200.37400.37500.38800.39800.41200.42200.91300.1295300 | Toilet dado work | 7.88d | 2027-03-02 | 2027-03-09 | 3985, 3998, 3999 |  | GC1 | 8847814 |
| 4002 | 37200.37400.37500.38800.39800.41200.42200.91300.1295400 | Toilet flooring work | 6.75d | 2027-03-09 | 2027-03-15 | 3986, 4001 |  | GC1 | 8847824 |
| 4003 | 37200.37400.37500.38800.39800.41200.42200.91300.1295500 | Living dinning flooring | 10.12d | 2027-03-23 | 2027-04-01 | 3987, 3996, 4002 |  | GC1 | 8847834 |
| 4004 | 37200.37400.37500.38800.39800.41200.42200.91300.1295600 | Aluminium door-window fixing | 13.5d | 2028-03-24 | 2028-04-05 | 3988FS+0.25d, 4003FS+0.25d |  | GC1 | 8847844 |
| 4005 | 37200.37400.37500.38800.39800.41200.42200.91300.1295700 | Putty primer coat | 6.75d | 2027-04-01 | 2027-04-07 | 3989, 4003 |  | GC1 | 8847854 |
| 4006 | 37200.37400.37500.38800.39800.41200.42200.91300.1295800 | Door shutter fixing | 9d | 2028-01-17 | 2028-01-25 | 3990, 4003 |  | GC1 | 8847864 |
| 4007 | 37200.37400.37500.38800.39800.41200.42200.91300.1295900 | Electrical wiring work | 13.5d | 2028-02-24 | 2028-03-07 | 3991FS+1.12d, 4006FS+1.12d |  | GC1 | 8847874 |
| 4008 | 37200.37400.37500.38800.39800.41200.42200.91300.1296000 | Painting 1st coat | 13.5d | 2028-03-08 | 2028-03-20 | 3992FS+1.12d, 4005FS+1.12d, 4006FS+1.12d, 4007FS+1.12d |  | GC1 | 8847884 |
| 4009 | 37200.37400.37500.38800.39800.41200.42200.91300.1296100 | False ceiling | 11.25d | 2028-03-21 | 2028-03-31 | 3993FS+1.12d, 4008FS+1.12d |  | GC1 | 8847894 |
| 4010 | 37200.37400.37500.38800.39800.41200.42200.91400 | **6th Floor** | 731.25d | 2026-04-08 | 2028-04-17 |  | start no earlier than 2026-04-08 | GC1 | 8807644 |
| 4011 | 37200.37400.37500.38800.39800.41200.42200.91400.1296200 | Block Work | 7.88d | 2026-04-08 | 2026-04-15 | 3995FS+0.25d |  | GC1 | 8847904 |
| 4012 | 37200.37400.37500.38800.39800.41200.42200.91400.1296300 | Door Frame Fixing | 5.62d | 2026-04-13 | 2026-04-18 | 3744, 3996 |  | GC1 | 8847914 |
| 4013 | 37200.37400.37500.38800.39800.41200.42200.91400.1296400 | Internal Plumbing Works | 7.88d | 2026-04-15 | 2026-04-22 | 3997, 4011 |  | GC1 | 8847924 |
| 4014 | 37200.37400.37500.38800.39800.41200.42200.91400.1296500 | Waterproofing | 7.88d | 2026-04-22 | 2026-04-29 | 3998, 4013 |  | GC1 | 8847934 |
| 4015 | 37200.37400.37500.38800.39800.41200.42200.91400.1296600 | Internal Plaster | 5.62d | 2026-04-18 | 2026-04-23 | 3999FS+0.25d, 4012FS+0.25d |  | GC1 | 8847944 |
| 4016 | 37200.37400.37500.38800.39800.41200.42200.91400.1296700 | IPS flooring work | 7.88d | 2026-04-29 | 2026-05-06 | 4000, 4012, 4014, 4015 |  | GC1 | 8847954 |
| 4017 | 37200.37400.37500.38800.39800.41200.42200.91400.1296800 | Toilet dado work | 7.88d | 2027-03-09 | 2027-03-16 | 4001, 4014, 4015 |  | GC1 | 8847964 |
| 4018 | 37200.37400.37500.38800.39800.41200.42200.91400.1296900 | Toilet flooring work | 6.75d | 2027-03-16 | 2027-03-22 | 4002, 4017 |  | GC1 | 8847974 |
| 4019 | 37200.37400.37500.38800.39800.41200.42200.91400.1297000 | Living dinning flooring | 10.12d | 2027-04-01 | 2027-04-10 | 4003FS+0.25d, 4012FS+0.25d |  | GC1 | 8847984 |
| 4020 | 37200.37400.37500.38800.39800.41200.42200.91400.1297100 | Aluminium door-window fixing | 13.5d | 2028-04-05 | 2028-04-17 | 4004FS+0.25d, 4019FS+0.25d |  | GC1 | 8847994 |
| 4021 | 37200.37400.37500.38800.39800.41200.42200.91400.1297200 | Putty primer coat | 6.75d | 2027-04-10 | 2027-04-16 | 4005, 4019 |  | GC1 | 8848004 |
| 4022 | 37200.37400.37500.38800.39800.41200.42200.91400.1297300 | Door shutter fixing | 9d | 2028-01-25 | 2028-02-02 | 4006, 4019 |  | GC1 | 8848014 |
| 4023 | 37200.37400.37500.38800.39800.41200.42200.91400.1297400 | Electrical wiring work | 13.5d | 2028-03-08 | 2028-03-20 | 4007FS+1.12d, 4022FS+1.12d |  | GC1 | 8848024 |
| 4024 | 37200.37400.37500.38800.39800.41200.42200.91400.1297500 | Painting 1st coat | 13.5d | 2028-03-21 | 2028-04-02 | 4008FS+1.12d, 4021FS+1.12d, 4022FS+1.12d, 4023FS+1.12d |  | GC1 | 8848034 |
| 4025 | 37200.37400.37500.38800.39800.41200.42200.91400.1297600 | False ceiling | 11.25d | 2028-04-03 | 2028-04-13 | 4009FS+1.12d, 4024FS+1.12d |  | GC1 | 8848044 |

| ID | WBS | Task | Duration | Start | Finish | Predecessors | Constraint | Calendar | Unique_Task_ID |
| --- | --- | --- | --- | --- | --- | --- | --- | --- | --- |
| 4026 | 37200.37400.37500.38800.39800.41200.42200.91500 | **7th Floor** | 736.88d | 2026-04-15 | 2028-04-29 |  | start no earlier than 2026-04-15 | GC1 | 8807654 |
| 4027 | 37200.37400.37500.38800.39800.41200.42200.91500.1297700 | Block Work | 7.88d | 2026-04-15 | 2026-04-22 | 4011FS+0.25d |  | GC1 | 8848054 |
| 4028 | 37200.37400.37500.38800.39800.41200.42200.91500.1297800 | Door Frame Fixing | 5.62d | 2026-04-22 | 2026-04-27 | 4012, 4027 |  | GC1 | 8848064 |
| 4029 | 37200.37400.37500.38800.39800.41200.42200.91500.1297900 | Internal Plumbing Works | 7.88d | 2026-04-22 | 2026-04-29 | 4013, 4027 |  | GC1 | 8848074 |
| 4030 | 37200.37400.37500.38800.39800.41200.42200.91500.1298000 | Waterproofing | 7.88d | 2026-04-29 | 2026-05-06 | 4014, 4029 |  | GC1 | 8848084 |
| 4031 | 37200.37400.37500.38800.39800.41200.42200.91500.1298100 | Internal Plaster | 5.62d | 2026-04-28 | 2026-05-02 | 4015FS+0.25d, 4028FS+0.25d |  | GC1 | 8848094 |
| 4032 | 37200.37400.37500.38800.39800.41200.42200.91500.1298200 | IPS flooring work | 7.88d | 2026-05-06 | 2026-05-13 | 4016, 4028, 4030, 4031 |  | GC1 | 8848104 |
| 4033 | 37200.37400.37500.38800.39800.41200.42200.91500.1298300 | Toilet dado work | 7.88d | 2027-03-16 | 2027-03-23 | 4017, 4030, 4031 |  | GC1 | 8848114 |
| 4034 | 37200.37400.37500.38800.39800.41200.42200.91500.1298400 | Toilet flooring work | 6.75d | 2027-03-23 | 2027-03-29 | 4018, 4033 |  | GC1 | 8848124 |
| 4035 | 37200.37400.37500.38800.39800.41200.42200.91500.1298500 | Living dinning flooring | 10.12d | 2027-04-10 | 2027-04-19 | 4019FS+0.25d, 4028FS+0.25d |  | GC1 | 8848134 |
| 4036 | 37200.37400.37500.38800.39800.41200.42200.91500.1298600 | Aluminium door-window fixing | 13.5d | 2028-04-17 | 2028-04-29 | 4020FS+0.25d, 4035FS+0.25d |  | GC1 | 8848144 |
| 4037 | 37200.37400.37500.38800.39800.41200.42200.91500.1298700 | Putty primer coat | 6.75d | 2027-04-19 | 2027-04-25 | 4021, 4035 |  | GC1 | 8848154 |
| 4038 | 37200.37400.37500.38800.39800.41200.42200.91500.1298800 | Door shutter fixing | 9d | 2028-02-02 | 2028-02-10 | 4022, 4035 |  | GC1 | 8848164 |
| 4039 | 37200.37400.37500.38800.39800.41200.42200.91500.1298900 | Electrical wiring work | 13.5d | 2028-03-21 | 2028-04-02 | 4023FS+1.12d, 4038FS+1.12d |  | GC1 | 8848174 |
| 4040 | 37200.37400.37500.38800.39800.41200.42200.91500.1299000 | Painting 1st coat | 13.5d | 2028-04-03 | 2028-04-15 | 4024FS+1.12d, 4037FS+1.12d, 4038FS+1.12d, 4039FS+1.12d |  | GC1 | 8848184 |
| 4041 | 37200.37400.37500.38800.39800.41200.42200.91500.1299100 | False ceiling | 11.25d | 2028-04-16 | 2028-04-26 | 4025FS+1.12d, 4040FS+1.12d |  | GC1 | 8848194 |
| 4042 | 37200.37400.37500.38800.39800.41200.42200.91600 | **8th Floor** | 742.5d | 2026-04-23 | 2028-05-11 |  | start no earlier than 2026-04-23 | GC1 | 8807664 |
| 4043 | 37200.37400.37500.38800.39800.41200.42200.91600.1299200 | Block Work | 7.88d | 2026-04-23 | 2026-04-29 | 4027FS+0.25d |  | GC1 | 8848204 |
| 4044 | 37200.37400.37500.38800.39800.41200.42200.91600.1299300 | Door Frame Fixing | 5.62d | 2026-04-30 | 2026-05-04 | 4028, 4043 |  | GC1 | 8848214 |
| 4045 | 37200.37400.37500.38800.39800.41200.42200.91600.1299400 | Internal Plumbing Works | 7.88d | 2026-04-30 | 2026-05-06 | 4029, 4043 |  | GC1 | 8848224 |
| 4046 | 37200.37400.37500.38800.39800.41200.42200.91600.1299500 | Waterproofing | 10.12d | 2026-05-07 | 2026-05-15 | 4030, 4045 |  | GC1 | 8848234 |
| 4047 | 37200.37400.37500.38800.39800.41200.42200.91600.1299600 | Internal Plaster | 7.88d | 2026-05-05 | 2026-05-12 | 4031FS+0.25d, 4044FS+0.25d |  | GC1 | 8848244 |
| 4048 | 37200.37400.37500.38800.39800.41200.42200.91600.1299700 | IPS flooring work | 5.62d | 2026-05-16 | 2026-05-20 | 4032, 4044, 4046, 4047 |  | GC1 | 8848254 |
| 4049 | 37200.37400.37500.38800.39800.41200.42200.91600.1299800 | Toilet dado work | 7.88d | 2027-03-23 | 2027-03-30 | 4033, 4046, 4047 |  | GC1 | 8848264 |
| 4050 | 37200.37400.37500.38800.39800.41200.42200.91600.1299900 | Toilet flooring work | 6.75d | 2027-03-30 | 2027-04-05 | 4034, 4049 |  | GC1 | 8848274 |
| 4051 | 37200.37400.37500.38800.39800.41200.42200.91600.1300000 | Living dinning flooring | 10.12d | 2027-04-20 | 2027-04-29 | 4035FS+0.25d, 4044FS+0.25d |  | GC1 | 8848284 |
| 4052 | 37200.37400.37500.38800.39800.41200.42200.91600.1300100 | Aluminium door-window fixing | 13.5d | 2028-04-30 | 2028-05-11 | 4036FS+0.25d, 4051FS+0.25d |  | GC1 | 8848294 |
| 4053 | 37200.37400.37500.38800.39800.41200.42200.91600.1300200 | Putty primer coat | 6.75d | 2027-04-29 | 2027-05-05 | 4037, 4051 |  | GC1 | 8848304 |
| 4054 | 37200.37400.37500.38800.39800.41200.42200.91600.1300300 | Door shutter fixing | 9d | 2028-02-10 | 2028-02-18 | 4038, 4051 |  | GC1 | 8848314 |
| 4055 | 37200.37400.37500.38800.39800.41200.42200.91600.1300400 | Electrical wiring work | 13.5d | 2028-04-02 | 2028-04-14 | 4039, 4054 |  | GC1 | 8848324 |
| 4056 | 37200.37400.37500.38800.39800.41200.42200.91600.1300500 | Painting 1st coat | 13.5d | 2028-04-15 | 2028-04-27 | 4040, 4053, 4054, 4055 |  | GC1 | 8848334 |
| 4057 | 37200.37400.37500.38800.39800.41200.42200.91600.1300600 | False ceiling | 11.25d | 2028-04-27 | 2028-05-07 | 4041, 4056 |  | GC1 | 8848344 |

| ID | WBS | Task | Duration | Start | Finish | Predecessors | Constraint | Calendar | Unique_Task_ID |
| --- | --- | --- | --- | --- | --- | --- | --- | --- | --- |
| 4058 | 37200.37400.37500.38800.39800.41200.42200.91700 | **9th Floor** | 751.5d | 2026-04-30 | 2028-05-27 |  | start no earlier than 2026-04-30 | GC1 | 8807674 |
| 4059 | 37200.37400.37500.38800.39800.41200.42200.91700.1300700 | Block Work | 7.88d | 2026-04-30 | 2026-05-07 | 4043FS+0.25d |  | GC1 | 8848354 |
| 4060 | 37200.37400.37500.38800.39800.41200.42200.91700.1300800 | Door Frame Fixing | 5.62d | 2026-05-07 | 2026-05-12 | 4044, 4059 |  | GC1 | 8848364 |
| 4061 | 37200.37400.37500.38800.39800.41200.42200.91700.1300900 | Internal Plumbing Works | 7.88d | 2026-05-07 | 2026-05-14 | 4045, 4059 |  | GC1 | 8848374 |
| 4062 | 37200.37400.37500.38800.39800.41200.42200.91700.1301000 | Waterproofing | 7.88d | 2026-05-16 | 2026-05-22 | 4046, 4061 |  | GC1 | 8848384 |
| 4063 | 37200.37400.37500.38800.39800.41200.42200.91700.1301100 | Internal Plaster | 5.62d | 2026-05-23 | 2026-05-27 | 4047, 4060, 4061, 4062 |  | GC1 | 8848394 |
| 4064 | 37200.37400.37500.38800.39800.41200.42200.91700.1301200 | IPS flooring work | 7.88d | 2026-05-28 | 2026-06-03 | 4048, 4060, 4062, 4063 |  | GC1 | 8848404 |
| 4065 | 37200.37400.37500.38800.39800.41200.42200.91700.1301300 | Toilet dado work | 7.88d | 2027-03-30 | 2027-04-06 | 4049, 4062, 4063 |  | GC1 | 8848414 |
| 4066 | 37200.37400.37500.38800.39800.41200.42200.91700.1301400 | Toilet flooring work | 6.75d | 2027-04-06 | 2027-04-12 | 4050, 4065 |  | GC1 | 8848424 |
| 4067 | 37200.37400.37500.38800.39800.41200.42200.91700.1301500 | Living dinning flooring | 10.12d | 2027-04-29 | 2027-05-08 | 4051FS+0.25d, 4060FS+0.25d |  | GC1 | 8848434 |
| 4068 | 37200.37400.37500.38800.39800.41200.42200.91700.1301600 | Aluminium door-window fixing | 16.88d | 2028-05-12 | 2028-05-27 | 4052FS+0.25d, 4067FS+0.25d |  | GC1 | 8848444 |
| 4069 | 37200.37400.37500.38800.39800.41200.42200.91700.1301700 | Putty primer coat | 6.75d | 2027-05-08 | 2027-05-14 | 4053, 4067 |  | GC1 | 8848454 |
| 4070 | 37200.37400.37500.38800.39800.41200.42200.91700.1301800 | Door shutter fixing | 9d | 2028-02-18 | 2028-02-26 | 4054, 4067 |  | GC1 | 8848464 |
| 4071 | 37200.37400.37500.38800.39800.41200.42200.91700.1301900 | Electrical wiring work | 13.5d | 2028-04-14 | 2028-04-26 | 4055, 4070 |  | GC1 | 8848474 |
| 4072 | 37200.37400.37500.38800.39800.41200.42200.91700.1302000 | Painting 1st coat | 13.5d | 2028-04-27 | 2028-05-09 | 4056, 4069, 4070, 4071 |  | GC1 | 8848484 |
| 4073 | 37200.37400.37500.38800.39800.41200.42200.91700.1302100 | False ceiling | 11.25d | 2028-05-09 | 2028-05-19 | 4057, 4072 |  | GC1 | 8848494 |
| 4074 | 37200.37400.37500.38800.39800.41200.42200.91800 | **10th Floor** | 760.5d | 2026-05-07 | 2028-06-11 |  | start no earlier than 2026-05-07 | GC1 | 8807684 |
| 4075 | 37200.37400.37500.38800.39800.41200.42200.91800.1302200 | Block Work | 7.88d | 2026-05-07 | 2026-05-14 | 4059FS+0.25d |  | GC1 | 8848504 |
| 4076 | 37200.37400.37500.38800.39800.41200.42200.91800.1302300 | Door Frame Fixing | 5.62d | 2026-05-14 | 2026-05-19 | 4060, 4075 |  | GC1 | 8848514 |
| 4077 | 37200.37400.37500.38800.39800.41200.42200.91800.1302400 | Internal Plumbing Works | 7.88d | 2026-05-14 | 2026-05-21 | 4061, 4075 |  | GC1 | 8848524 |
| 4078 | 37200.37400.37500.38800.39800.41200.42200.91800.1302500 | Waterproofing | 7.88d | 2026-05-23 | 2026-05-29 | 4062, 4077 |  | GC1 | 8848534 |
| 4079 | 37200.37400.37500.38800.39800.41200.42200.91800.1302600 | Internal Plaster | 5.62d | 2026-05-30 | 2026-06-03 | 4063, 4076, 4077, 4078 |  | GC1 | 8848544 |
| 4080 | 37200.37400.37500.38800.39800.41200.42200.91800.1302700 | IPS flooring work | 7.88d | 2026-06-04 | 2026-06-10 | 4064, 4076, 4078, 4079 |  | GC1 | 8848554 |
| 4081 | 37200.37400.37500.38800.39800.41200.42200.91800.1302800 | Toilet dado work | 7.88d | 2027-04-06 | 2027-04-13 | 4065, 4078, 4079 |  | GC1 | 8848564 |
| 4082 | 37200.37400.37500.38800.39800.41200.42200.91800.1302900 | Toilet flooring work | 6.75d | 2027-04-13 | 2027-04-19 | 4066, 4081 |  | GC1 | 8848574 |
| 4083 | 37200.37400.37500.38800.39800.41200.42200.91800.1303000 | Living dinning flooring | 10.12d | 2027-05-08 | 2027-05-17 | 4067FS+0.25d, 4076FS+0.25d |  | GC1 | 8848584 |
| 4084 | 37200.37400.37500.38800.39800.41200.42200.91800.1303100 | Aluminium door-window fixing | 16.88d | 2028-05-27 | 2028-06-11 | 4068FS+0.25d, 4083FS+0.25d |  | GC1 | 8848594 |
| 4085 | 37200.37400.37500.38800.39800.41200.42200.91800.1303200 | Putty primer coat | 6.75d | 2027-05-17 | 2027-05-23 | 4069, 4083 |  | GC1 | 8848604 |
| 4086 | 37200.37400.37500.38800.39800.41200.42200.91800.1303300 | Door shutter fixing | 9d | 2028-02-26 | 2028-03-05 | 4070, 4083 |  | GC1 | 8848614 |
| 4087 | 37200.37400.37500.38800.39800.41200.42200.91800.1303400 | Electrical wiring work | 13.5d | 2028-04-26 | 2028-05-08 | 4071, 4086 |  | GC1 | 8848624 |
| 4088 | 37200.37400.37500.38800.39800.41200.42200.91800.1303500 | Painting 1st coat | 13.5d | 2028-05-09 | 2028-05-21 | 4072, 4085, 4086, 4087 |  | GC1 | 8848634 |
| 4089 | 37200.37400.37500.38800.39800.41200.42200.91800.1303600 | False ceiling | 11.25d | 2028-05-21 | 2028-05-31 | 4073, 4088 |  | GC1 | 8848644 |

| ID | WBS | Task | Duration | Start | Finish | Predecessors | Constraint | Calendar | Unique_Task_ID |
| --- | --- | --- | --- | --- | --- | --- | --- | --- | --- |
| 4090 | 37200.37400.37500.38800.39800.41200.42200.91900 | **11th Floor** | 769.5d | 2026-05-14 | 2028-06-26 |  | start no earlier than 2026-05-14 | GC1 | 8807694 |
| 4091 | 37200.37400.37500.38800.39800.41200.42200.91900.1303700 | Block Work | 7.88d | 2026-05-14 | 2026-05-21 | 4075FS+0.25d |  | GC1 | 8848654 |
| 4092 | 37200.37400.37500.38800.39800.41200.42200.91900.1303800 | Door Frame Fixing | 5.62d | 2026-05-21 | 2026-05-26 | 4076, 4091 |  | GC1 | 8848664 |
| 4093 | 37200.37400.37500.38800.39800.41200.42200.91900.1303900 | Internal Plumbing Works | 7.88d | 2026-05-21 | 2026-05-28 | 4077, 4091 |  | GC1 | 8848674 |
| 4094 | 37200.37400.37500.38800.39800.41200.42200.91900.1304000 | Waterproofing | 7.88d | 2026-05-30 | 2026-06-05 | 4078, 4093 |  | GC1 | 8848684 |
| 4095 | 37200.37400.37500.38800.39800.41200.42200.91900.1304100 | Internal Plaster | 5.62d | 2026-06-06 | 2026-06-10 | 4079, 4092, 4093, 4094 |  | GC1 | 8848694 |
| 4096 | 37200.37400.37500.38800.39800.41200.42200.91900.1304200 | IPS flooring work | 7.88d | 2026-06-11 | 2026-06-17 | 4080, 4092, 4093, 4094 |  | GC1 | 8848704 |
| 4097 | 37200.37400.37500.38800.39800.41200.42200.91900.1304300 | Toilet dado work | 7.88d | 2027-04-13 | 2027-04-20 | 4081, 4094, 4095 |  | GC1 | 8848714 |
| 4098 | 37200.37400.37500.38800.39800.41200.42200.91900.1304400 | Toilet flooring work | 6.75d | 2027-04-20 | 2027-04-26 | 4082, 4097 |  | GC1 | 8848724 |
| 4099 | 37200.37400.37500.38800.39800.41200.42200.91900.1304500 | Living dinning flooring | 10.12d | 2027-05-17 | 2027-05-26 | 4083FS+0.25d, 4092FS+0.25d |  | GC1 | 8848734 |
| 4100 | 37200.37400.37500.38800.39800.41200.42200.91900.1304600 | Aluminium door-window fixing | 16.88d | 2028-06-11 | 2028-06-26 | 4084FS+0.25d, 4099FS+0.25d |  | GC1 | 8848744 |
| 4101 | 37200.37400.37500.38800.39800.41200.42200.91900.1304700 | Putty primer coat | 6.75d | 2027-05-26 | 2027-06-01 | 4085, 4099 |  | GC1 | 8848754 |
| 4102 | 37200.37400.37500.38800.39800.41200.42200.91900.1304800 | Door shutter fixing | 9d | 2028-03-05 | 2028-03-13 | 4086, 4099 |  | GC1 | 8848764 |
| 4103 | 37200.37400.37500.38800.39800.41200.42200.91900.1304900 | Electrical wiring work | 13.5d | 2028-05-08 | 2028-05-20 | 4087, 4102 |  | GC1 | 8848774 |
| 4104 | 37200.37400.37500.38800.39800.41200.42200.91900.1305000 | Painting 1st coat | 13.5d | 2028-05-21 | 2028-06-02 | 4088, 4101, 4102, 4103 |  | GC1 | 8848784 |
| 4105 | 37200.37400.37500.38800.39800.41200.42200.91900.1305100 | False ceiling | 11.25d | 2028-06-02 | 2028-06-12 | 4089, 4104 |  | GC1 | 8848794 |
| 4106 | 37200.37400.37500.38800.39800.41200.42200.92000 | **12th Floor** | 775.12d | 2026-05-21 | 2028-07-08 |  | start no earlier than 2026-05-21 | GC1 | 8807704 |
| 4107 | 37200.37400.37500.38800.39800.41200.42200.92000.1305200 | Block Work | 9d | 2026-05-21 | 2026-05-29 | 4091FS+0.25d |  | GC1 | 8848804 |
| 4108 | 37200.37400.37500.38800.39800.41200.42200.92000.1305300 | Door Frame Fixing | 10.12d | 2026-05-29 | 2026-06-07 | 4092, 4107 |  | GC1 | 8848814 |
| 4109 | 37200.37400.37500.38800.39800.41200.42200.92000.1305400 | Internal Plumbing Works | 11.25d | 2026-05-29 | 2026-06-08 | 4093, 4107 |  | GC1 | 8848824 |
| 4110 | 37200.37400.37500.38800.39800.41200.42200.92000.1305500 | Waterproofing | 7.88d | 2026-06-08 | 2026-06-15 | 4094, 4109 |  | GC1 | 8848834 |
| 4111 | 37200.37400.37500.38800.39800.41200.42200.92000.1305600 | Internal Plaster | 5.62d | 2026-06-15 | 2026-06-20 | 4095, 4108, 4109, 4110 |  | GC1 | 8848844 |
| 4112 | 37200.37400.37500.38800.39800.41200.42200.92000.1305700 | IPS flooring work | 10.12d | 2026-06-18 | 2026-06-26 | 4096, 4108, 4109, 4110 |  | GC1 | 8848854 |
| 4113 | 37200.37400.37500.38800.39800.41200.42200.92000.1305800 | Toilet dado work | 9d | 2027-04-20 | 2027-04-28 | 4097, 4110, 4111 |  | GC1 | 8848864 |
| 4114 | 37200.37400.37500.38800.39800.41200.42200.92000.1305900 | Toilet flooring work | 7.88d | 2027-04-28 | 2027-05-05 | 4098, 4113 |  | GC1 | 8848874 |
| 4115 | 37200.37400.37500.38800.39800.41200.42200.92000.1306000 | Living dinning flooring | 11.25d | 2027-05-27 | 2027-06-05 | 4099FS+0.25d, 4108FS+0.25d |  | GC1 | 8848884 |
| 4116 | 37200.37400.37500.38800.39800.41200.42200.92000.1306100 | Aluminium door-window fixing | 13.5d | 2028-06-26 | 2028-07-08 | 4100FS+0.25d, 4112FS+0.25d |  | GC1 | 8848894 |
| 4117 | 37200.37400.37500.38800.39800.41200.42200.92000.1306200 | Putty primer coat | 6.75d | 2027-06-06 | 2027-06-11 | 4101, 4115 |  | GC1 | 8848904 |
| 4118 | 37200.37400.37500.38800.39800.41200.42200.92000.1306300 | Door shutter fixing | 9d | 2028-03-13 | 2028-03-21 | 4102, 4115 |  | GC1 | 8848914 |
| 4119 | 37200.37400.37500.38800.39800.41200.42200.92000.1306400 | Electrical wiring work | 13.5d | 2028-05-20 | 2028-06-01 | 4103, 4118 |  | GC1 | 8848924 |
| 4120 | 37200.37400.37500.38800.39800.41200.42200.92000.1306500 | Painting 1st coat | 13.5d | 2028-06-02 | 2028-06-14 | 4104, 4117, 4118, 4119 |  | GC1 | 8848934 |
| 4121 | 37200.37400.37500.38800.39800.41200.42200.92000.1306600 | False ceiling | 11.25d | 2028-06-14 | 2028-06-24 | 4105, 4120 |  | GC1 | 8848944 |

| ID | WBS | Task | Duration | Start | Finish | Predecessors | Constraint | Calendar | Unique_Task_ID |
| --- | --- | --- | --- | --- | --- | --- | --- | --- | --- |
| 4122 | 37200.37400.37500.38800.39800.41200.42200.92100 | **13th Floor** | 782.75d | 2026-05-30 | 2028-07-23 |  | start no earlier than 2026-05-30 | GC1 | 8807714 |
| 4123 | 37200.37400.37500.38800.39800.41200.42200.92100.1306700 | Block Work | 9d | 2026-05-30 | 2026-06-07 | 4107FS+0.25d |  | GC1 | 8848954 |
| 4124 | 37200.37400.37500.38800.39800.41200.42200.92100.1306800 | Door Frame Fixing | 10.12d | 2026-06-07 | 2026-06-16 | 4108, 4123 |  | GC1 | 8848964 |
| 4125 | 37200.37400.37500.38800.39800.41200.42200.92100.1306900 | Internal Plumbing Works | 11.25d | 2026-06-08 | 2026-06-18 | 4109, 4123 |  | GC1 | 8848974 |
| 4126 | 37200.37400.37500.38800.39800.41200.42200.92100.1307000 | Waterproofing | 7.88d | 2026-06-18 | 2026-06-25 | 4110, 4125 |  | GC1 | 8848984 |
| 4127 | 37200.37400.37500.38800.39800.41200.42200.92100.1307100 | Internal Plaster | 5.62d | 2026-06-21 | 2026-06-26 | 4111FS+0.25d, 4124FS+0.25d |  | GC1 | 8848994 |
| 4128 | 37200.37400.37500.38800.39800.41200.42200.92100.1307200 | IPS flooring work | 10.12d | 2026-06-27 | 2026-07-05 | 4112, 4124, 4126, 4127 |  | GC1 | 8849004 |
| 4129 | 37200.37400.37500.38800.39800.41200.42200.92100.1307300 | Toilet dado work | 9d | 2027-04-28 | 2027-05-06 | 4113, 4126, 4127 |  | GC1 | 8849014 |
| 4130 | 37200.37400.37500.38800.39800.41200.42200.92100.1307400 | Toilet flooring work | 7.88d | 2027-05-06 | 2027-05-13 | 4114, 4129 |  | GC1 | 8849024 |
| 4131 | 37200.37400.37500.38800.39800.41200.42200.92100.1307500 | Living dinning flooring | 5.62d | 2027-06-06 | 2027-06-10 | 4115, 4124, 4130 |  | GC1 | 8849034 |
| 4132 | 37200.37400.37500.38800.39800.41200.42200.92100.1307600 | Aluminium door-window fixing | 16.88d | 2028-07-08 | 2028-07-23 | 4116, 4128, 4131 |  | GC1 | 8849044 |
| 4133 | 37200.37400.37500.38800.39800.41200.42200.92100.1307700 | Putty primer coat | 6.75d | 2027-06-12 | 2027-06-17 | 4117, 4131 |  | GC1 | 8849054 |
| 4134 | 37200.37400.37500.38800.39800.41200.42200.92100.1307800 | Door shutter fixing | 9d | 2028-03-21 | 2028-03-29 | 4118, 4131 |  | GC1 | 8849064 |
| 4135 | 37200.37400.37500.38800.39800.41200.42200.92100.1307900 | Electrical wiring work | 13.5d | 2028-06-01 | 2028-06-13 | 4119, 4134 |  | GC1 | 8849074 |
| 4136 | 37200.37400.37500.38800.39800.41200.42200.92100.1308000 | Painting 1st coat | 13.5d | 2028-06-14 | 2028-06-26 | 4120, 4133, 4134, 4135 |  | GC1 | 8849084 |
| 4137 | 37200.37400.37500.38800.39800.41200.42200.92100.1308100 | False ceiling | 11.25d | 2028-06-26 | 2028-07-06 | 4121, 4136 |  | GC1 | 8849094 |
| 4138 | 37200.37400.37500.38800.39800.41200.42200.92200 | **14th Floor** | 790.38d | 2026-06-07 | 2028-08-07 |  | start no earlier than 2026-06-07 | GC1 | 8807724 |
| 4139 | 37200.37400.37500.38800.39800.41200.42200.92200.1308200 | Block Work | 9d | 2026-06-07 | 2026-06-15 | 4123FS+0.25d |  | GC1 | 8849104 |
| 4140 | 37200.37400.37500.38800.39800.41200.42200.92200.1308300 | Door Frame Fixing | 10.12d | 2026-06-16 | 2026-06-25 | 4124, 4139 |  | GC1 | 8849114 |
| 4141 | 37200.37400.37500.38800.39800.41200.42200.92200.1308400 | Internal Plumbing Works | 11.25d | 2026-06-18 | 2026-06-28 | 4125, 4139 |  | GC1 | 8849124 |
| 4142 | 37200.37400.37500.38800.39800.41200.42200.92200.1308500 | Waterproofing | 7.88d | 2026-06-28 | 2026-07-05 | 4126, 4141 |  | GC1 | 8849134 |
| 4143 | 37200.37400.37500.38800.39800.41200.42200.92200.1308600 | Internal Plaster | 5.62d | 2026-06-26 | 2026-07-01 | 4127FS+0.25d, 4140FS+0.25d |  | GC1 | 8849144 |
| 4144 | 37200.37400.37500.38800.39800.41200.42200.92200.1308700 | IPS flooring work | 10.12d | 2026-07-06 | 2026-07-14 | 4128, 4140, 4141, 4142 |  | GC1 | 8849154 |
| 4145 | 37200.37400.37500.38800.39800.41200.42200.92200.1308800 | Toilet dado work | 9d | 2027-05-06 | 2027-05-14 | 4129, 4142, 4143 |  | GC1 | 8849164 |
| 4146 | 37200.37400.37500.38800.39800.41200.42200.92200.1308900 | Toilet flooring work | 7.88d | 2027-05-14 | 2027-05-21 | 4130, 4145 |  | GC1 | 8849174 |
| 4147 | 37200.37400.37500.38800.39800.41200.42200.92200.1309000 | Living dinning flooring | 16.88d | 2027-06-11 | 2027-06-25 | 4131, 4140, 4146 |  | GC1 | 8849184 |
| 4148 | 37200.37400.37500.38800.39800.41200.42200.92200.1309100 | Aluminium door-window fixing | 16.88d | 2028-07-23 | 2028-08-07 | 4132, 4144, 4147 |  | GC1 | 8849194 |
| 4149 | 37200.37400.37500.38800.39800.41200.42200.92200.1309200 | Putty primer coat | 6.75d | 2027-06-26 | 2027-07-01 | 4133, 4147 |  | GC1 | 8849204 |
| 4150 | 37200.37400.37500.38800.39800.41200.42200.92200.1309300 | Door shutter fixing | 9d | 2028-03-29 | 2028-04-06 | 4134, 4147 |  | GC1 | 8849214 |
| 4151 | 37200.37400.37500.38800.39800.41200.42200.92200.1309400 | Electrical wiring work | 13.5d | 2028-06-13 | 2028-06-25 | 4135, 4150 |  | GC1 | 8849224 |
| 4152 | 37200.37400.37500.38800.39800.41200.42200.92200.1309500 | Painting 1st coat | 13.5d | 2028-06-26 | 2028-07-08 | 4136, 4149, 4150, 4151 |  | GC1 | 8849234 |
| 4153 | 37200.37400.37500.38800.39800.41200.42200.92200.1309600 | False ceiling | 11.25d | 2028-07-08 | 2028-07-18 | 4137, 4152 |  | GC1 | 8849244 |

| ID | WBS | Task | Duration | Start | Finish | Predecessors | Constraint | Calendar | Unique_Task_ID |
| --- | --- | --- | --- | --- | --- | --- | --- | --- | --- |
| 4154 | 37200.37400.37500.38800.39800.41200.42200.92300 | **15th Floor** | 794.62d | 2026-06-15 | 2028-08-19 |  | start no earlier than 2026-06-15 | GC1 | 8807734 |
| 4155 | 37200.37400.37500.38800.39800.41200.42200.92300.1309700 | Block Work | 9d | 2026-06-15 | 2026-06-23 | 4139FS+0.25d |  | GC1 | 8849254 |
| 4156 | 37200.37400.37500.38800.39800.41200.42200.92300.1309800 | Door Frame Fixing | 10.12d | 2026-06-25 | 2026-07-04 | 4140, 4155 |  | GC1 | 8849264 |
| 4157 | 37200.37400.37500.38800.39800.41200.42200.92300.1309900 | Internal Plumbing Works | 11.25d | 2026-06-28 | 2026-07-08 | 4141, 4155 |  | GC1 | 8849274 |
| 4158 | 37200.37400.37500.38800.39800.41200.42200.92300.1310000 | Waterproofing | 7.88d | 2026-07-08 | 2026-07-15 | 4142, 4157 |  | GC1 | 8849284 |
| 4159 | 37200.37400.37500.38800.39800.41200.42200.92300.1310100 | Internal Plaster | 5.62d | 2026-07-05 | 2026-07-10 | 4143FS+0.25d, 4156FS+0.25d |  | GC1 | 8849294 |
| 4160 | 37200.37400.37500.38800.39800.41200.42200.92300.1310200 | IPS flooring work | 10.12d | 2026-07-15 | 2026-07-24 | 4144, 4156, 4157, 4158 |  | GC1 | 8849304 |
| 4161 | 37200.37400.37500.38800.39800.41200.42200.92300.1310300 | Toilet dado work | 9d | 2027-05-14 | 2027-05-22 | 4145, 4158, 4159 |  | GC1 | 8849314 |
| 4162 | 37200.37400.37500.38800.39800.41200.42200.92300.1310400 | Toilet flooring work | 7.88d | 2027-05-22 | 2027-05-29 | 4146, 4161 |  | GC1 | 8849324 |
| 4163 | 37200.37400.37500.38800.39800.41200.42200.92300.1310500 | Living dinning flooring | 13.5d | 2027-06-26 | 2027-07-07 | 4147, 4156, 4162 |  | GC1 | 8849334 |
| 4164 | 37200.37400.37500.38800.39800.41200.42200.92300.1310600 | Aluminium door-window fixing | 13.5d | 2028-08-07 | 2028-08-19 | 4148, 4160, 4163 |  | GC1 | 8849344 |
| 4165 | 37200.37400.37500.38800.39800.41200.42200.92300.1310700 | Putty primer coat | 6.75d | 2027-07-08 | 2027-07-13 | 4149, 4163 |  | GC1 | 8849354 |
| 4166 | 37200.37400.37500.38800.39800.41200.42200.92300.1310800 | Door shutter fixing | 9d | 2028-04-06 | 2028-04-14 | 4150, 4163 |  | GC1 | 8849364 |
| 4167 | 37200.37400.37500.38800.39800.41200.42200.92300.1310900 | Electrical wiring work | 13.5d | 2028-06-25 | 2028-07-07 | 4151, 4166 |  | GC1 | 8849374 |
| 4168 | 37200.37400.37500.38800.39800.41200.42200.92300.1311000 | Painting 1st coat | 13.5d | 2028-07-08 | 2028-07-20 | 4152, 4165, 4166, 4167 |  | GC1 | 8849384 |
| 4169 | 37200.37400.37500.38800.39800.41200.42200.92300.1311100 | False ceiling | 11.25d | 2028-07-20 | 2028-07-30 | 4153, 4168 |  | GC1 | 8849394 |
| 4170 | 37200.37400.37500.38800.39800.41200.42200.92400 | **16th Floor** | 798.88d | 2026-06-23 | 2028-08-31 |  | start no earlier than 2026-06-23 | GC1 | 8807744 |
| 4171 | 37200.37400.37500.38800.39800.41200.42200.92400.1311200 | Block Work | 9d | 2026-06-23 | 2026-07-01 | 4155FS+0.25d |  | GC1 | 8849404 |
| 4172 | 37200.37400.37500.38800.39800.41200.42200.92400.1311300 | Door Frame Fixing | 10.12d | 2026-07-04 | 2026-07-13 | 4156, 4171 |  | GC1 | 8849414 |
| 4173 | 37200.37400.37500.38800.39800.41200.42200.92400.1311400 | Internal Plumbing Works | 11.25d | 2026-07-08 | 2026-07-18 | 4157, 4171 |  | GC1 | 8849424 |
| 4174 | 37200.37400.37500.38800.39800.41200.42200.92400.1311500 | Waterproofing | 13.5d | 2026-07-18 | 2026-07-30 | 4158, 4173 |  | GC1 | 8849434 |
| 4175 | 37200.37400.37500.38800.39800.41200.42200.92400.1311600 | Internal Plaster | 10.12d | 2026-07-30 | 2026-08-08 | 4159, 4172, 4173, 4174 |  | GC1 | 8849444 |
| 4176 | 37200.37400.37500.38800.39800.41200.42200.92400.1311700 | IPS flooring work | 10.12d | 2026-07-30 | 2026-08-08 | 4160, 4172, 4173, 4174 |  | GC1 | 8849454 |
| 4177 | 37200.37400.37500.38800.39800.41200.42200.92400.1311800 | Toilet dado work | 9d | 2027-05-22 | 2027-05-30 | 4161, 4174, 4175 |  | GC1 | 8849464 |
| 4178 | 37200.37400.37500.38800.39800.41200.42200.92400.1311900 | Toilet flooring work | 7.88d | 2027-05-30 | 2027-06-06 | 4162, 4177 |  | GC1 | 8849474 |
| 4179 | 37200.37400.37500.38800.39800.41200.42200.92400.1312000 | Living dinning flooring | 13.5d | 2027-07-08 | 2027-07-19 | 4163, 4172, 4178 |  | GC1 | 8849484 |
| 4180 | 37200.37400.37500.38800.39800.41200.42200.92400.1312100 | Aluminium door-window fixing | 13.5d | 2028-08-19 | 2028-08-31 | 4164, 4176, 4179 |  | GC1 | 8849494 |
| 4181 | 37200.37400.37500.38800.39800.41200.42200.92400.1312200 | Putty primer coat | 6.75d | 2027-07-20 | 2027-07-25 | 4165, 4179 |  | GC1 | 8849504 |
| 4182 | 37200.37400.37500.38800.39800.41200.42200.92400.1312300 | Door shutter fixing | 9d | 2028-04-14 | 2028-04-22 | 4166, 4179 |  | GC1 | 8849514 |
| 4183 | 37200.37400.37500.38800.39800.41200.42200.92400.1312400 | Electrical wiring work | 13.5d | 2028-07-07 | 2028-07-19 | 4167, 4182 |  | GC1 | 8849524 |
| 4184 | 37200.37400.37500.38800.39800.41200.42200.92400.1312500 | Painting 1st coat | 13.5d | 2028-07-20 | 2028-08-01 | 4168, 4181, 4182, 4183 |  | GC1 | 8849534 |
| 4185 | 37200.37400.37500.38800.39800.41200.42200.92400.1312600 | False ceiling | 11.25d | 2028-08-01 | 2028-08-11 | 4169, 4184 |  | GC1 | 8849544 |

| ID | WBS | Task | Duration | Start | Finish | Predecessors | Constraint | Calendar | Unique_Task_ID |
| --- | --- | --- | --- | --- | --- | --- | --- | --- | --- |
| 4186 | 37200.37400.37500.38800.39800.41200.42200.92500 | **17th Floor** | 706.38d | 2026-09-26 | 2028-09-12 |  | start no earlier than 2026-09-26 | GC1 | 8807754 |
| 4187 | 37200.37400.37500.38800.39800.41200.42200.92500.1312700 | Block Work | 9d | 2026-09-26 | 2026-10-03 | 3909, 4171 |  | GC1 | 8849554 |
| 4188 | 37200.37400.37500.38800.39800.41200.42200.92500.1312800 | Door Frame Fixing | 10.12d | 2026-10-04 | 2026-10-12 | 4172, 4187 |  | GC1 | 8849564 |
| 4189 | 37200.37400.37500.38800.39800.41200.42200.92500.1312900 | Internal Plumbing Works | 11.25d | 2026-10-04 | 2026-10-13 | 4173, 4187 |  | GC1 | 8849574 |
| 4190 | 37200.37400.37500.38800.39800.41200.42200.92500.1313000 | Waterproofing | 13.5d | 2026-10-14 | 2026-10-25 | 4174, 4189 |  | GC1 | 8849584 |
| 4191 | 37200.37400.37500.38800.39800.41200.42200.92500.1313100 | Internal Plaster | 10.12d | 2026-10-26 | 2026-12-18 | 4175, 4188, 4189, 4190 |  | GC1 | 8849594 |
| 4192 | 37200.37400.37500.38800.39800.41200.42200.92500.1313200 | IPS flooring work | 10.12d | 2026-10-26 | 2026-12-18 | 4176, 4188, 4189, 4190 |  | GC1 | 8849604 |
| 4193 | 37200.37400.37500.38800.39800.41200.42200.92500.1313300 | Toilet dado work | 9d | 2027-05-30 | 2027-06-07 | 4177, 4190, 4191 |  | GC1 | 8849614 |
| 4194 | 37200.37400.37500.38800.39800.41200.42200.92500.1313400 | Toilet flooring work | 7.88d | 2027-06-07 | 2027-06-14 | 4178, 4193 |  | GC1 | 8849624 |
| 4195 | 37200.37400.37500.38800.39800.41200.42200.92500.1313500 | Living dinning flooring | 13.5d | 2027-07-20 | 2027-07-31 | 4179, 4188, 4194 |  | GC1 | 8849634 |
| 4196 | 37200.37400.37500.38800.39800.41200.42200.92500.1313600 | Aluminium door-window fixing | 13.5d | 2028-08-31 | 2028-09-12 | 4180, 4192, 4195 |  | GC1 | 8849644 |
| 4197 | 37200.37400.37500.38800.39800.41200.42200.92500.1313700 | Putty primer coat | 6.75d | 2027-08-01 | 2027-08-06 | 4181, 4195 |  | GC1 | 8849654 |
| 4198 | 37200.37400.37500.38800.39800.41200.42200.92500.1313800 | Door shutter fixing | 9d | 2028-04-22 | 2028-04-30 | 4182, 4195 |  | GC1 | 8849664 |
| 4199 | 37200.37400.37500.38800.39800.41200.42200.92500.1313900 | Electrical wiring work | 13.5d | 2028-07-19 | 2028-07-31 | 4183, 4198 |  | GC1 | 8849674 |
| 4200 | 37200.37400.37500.38800.39800.41200.42200.92500.1314000 | Painting 1st coat | 13.5d | 2028-08-01 | 2028-08-13 | 4184, 4197, 4198, 4199 |  | GC1 | 8849684 |
| 4201 | 37200.37400.37500.38800.39800.41200.42200.92500.1314100 | False ceiling | 11.25d | 2028-08-13 | 2028-08-23 | 4185, 4200 |  | GC1 | 8849694 |
| 4202 | 37200.37400.37500.38800.39800.41200.42200.92600 | **18th Floor** | 707.5d | 2026-10-07 | 2028-09-24 |  | start no earlier than 2026-10-07 | GC1 | 8807764 |
| 4203 | 37200.37400.37500.38800.39800.41200.42200.92600.1314200 | Block Work | 9d | 2026-10-07 | 2026-10-14 | 3910, 4187 |  | GC1 | 8849704 |
| 4204 | 37200.37400.37500.38800.39800.41200.42200.92600.1314300 | Door Frame Fixing | 10.12d | 2026-10-15 | 2026-10-23 | 4188, 4203 |  | GC1 | 8849714 |
| 4205 | 37200.37400.37500.38800.39800.41200.42200.92600.1314400 | Internal Plumbing Works | 11.25d | 2026-10-15 | 2026-10-24 | 4189, 4203 |  | GC1 | 8849724 |
| 4206 | 37200.37400.37500.38800.39800.41200.42200.92600.1314500 | Waterproofing | 13.5d | 2026-10-26 | 2026-12-21 | 4190, 4205 |  | GC1 | 8849734 |
| 4207 | 37200.37400.37500.38800.39800.41200.42200.92600.1314600 | Internal Plaster | 10.12d | 2026-12-22 | 2026-12-30 | 4191, 4204, 4205, 4206 |  | GC1 | 8849744 |
| 4208 | 37200.37400.37500.38800.39800.41200.42200.92600.1314700 | IPS flooring work | 10.12d | 2026-12-22 | 2026-12-30 | 4192, 4204, 4205, 4206 |  | GC1 | 8849754 |
| 4209 | 37200.37400.37500.38800.39800.41200.42200.92600.1314800 | Toilet dado work | 9d | 2027-06-07 | 2027-06-15 | 4193, 4206, 4207 |  | GC1 | 8849764 |
| 4210 | 37200.37400.37500.38800.39800.41200.42200.92600.1314900 | Toilet flooring work | 7.88d | 2027-06-15 | 2027-06-22 | 4194, 4209 |  | GC1 | 8849774 |
| 4211 | 37200.37400.37500.38800.39800.41200.42200.92600.1315000 | Living dinning flooring | 13.5d | 2027-08-01 | 2027-08-12 | 4195, 4204, 4210 |  | GC1 | 8849784 |
| 4212 | 37200.37400.37500.38800.39800.41200.42200.92600.1315100 | Aluminium door-window fixing | 13.5d | 2028-09-12 | 2028-09-24 | 4196, 4208, 4211 |  | GC1 | 8849794 |
| 4213 | 37200.37400.37500.38800.39800.41200.42200.92600.1315200 | Putty primer coat | 6.75d | 2027-08-13 | 2027-08-18 | 4197, 4211 |  | GC1 | 8849804 |
| 4214 | 37200.37400.37500.38800.39800.41200.42200.92600.1315300 | Door shutter fixing | 9d | 2028-04-30 | 2028-05-08 | 4198, 4211 |  | GC1 | 8849814 |
| 4215 | 37200.37400.37500.38800.39800.41200.42200.92600.1315400 | Electrical wiring work | 13.5d | 2028-07-31 | 2028-08-12 | 4199, 4214 |  | GC1 | 8849824 |
| 4216 | 37200.37400.37500.38800.39800.41200.42200.92600.1315500 | Painting 1st coat | 13.5d | 2028-08-13 | 2028-08-25 | 4200, 4213, 4214, 4215 |  | GC1 | 8849834 |
| 4217 | 37200.37400.37500.38800.39800.41200.42200.92600.1315600 | False ceiling | 11.25d | 2028-08-25 | 2028-09-04 | 4201, 4216 |  | GC1 | 8849844 |

| ID | WBS | Task | Duration | Start | Finish | Predecessors | Constraint | Calendar | Unique_Task_ID |
| --- | --- | --- | --- | --- | --- | --- | --- | --- | --- |
| 4218 | 37200.37400.37500.38800.39800.41200.42200.92700 | **19th Floor** | 708.62d | 2026-10-18 | 2028-10-06 |  | start no earlier than 2026-10-18 | GC1 | 8807774 |
| 4219 | 37200.37400.37500.38800.39800.41200.42200.92700.1315700 | Block Work | 9d | 2026-10-18 | 2026-10-25 | 3911, 4203 |  | GC1 | 8849854 |
| 4220 | 37200.37400.37500.38800.39800.41200.42200.92700.1315800 | Door Frame Fixing | 10.12d | 2026-10-26 | 2026-12-18 | 4204, 4219 |  | GC1 | 8849864 |
| 4221 | 37200.37400.37500.38800.39800.41200.42200.92700.1315900 | Internal Plumbing Works | 11.25d | 2026-10-26 | 2026-12-19 | 4205, 4219 |  | GC1 | 8849874 |
| 4222 | 37200.37400.37500.38800.39800.41200.42200.92700.1316000 | Waterproofing | 13.5d | 2026-12-22 | 2027-01-02 | 4206, 4221 |  | GC1 | 8849884 |
| 4223 | 37200.37400.37500.38800.39800.41200.42200.92700.1316100 | Internal Plaster | 10.12d | 2027-01-03 | 2027-01-11 | 4207, 4220, 4221, 4222 |  | GC1 | 8849894 |
| 4224 | 37200.37400.37500.38800.39800.41200.42200.92700.1316200 | IPS flooring work | 10.12d | 2027-01-12 | 2027-01-20 | 4208, 4220, 4222, 4223 |  | GC1 | 8849904 |
| 4225 | 37200.37400.37500.38800.39800.41200.42200.92700.1316300 | Toilet dado work | 9d | 2027-06-15 | 2027-06-23 | 4209, 4222, 4223 |  | GC1 | 8849914 |
| 4226 | 37200.37400.37500.38800.39800.41200.42200.92700.1316400 | Toilet flooring work | 7.88d | 2027-06-23 | 2027-06-30 | 4210, 4225 |  | GC1 | 8849924 |
| 4227 | 37200.37400.37500.38800.39800.41200.42200.92700.1316500 | Living dinning flooring | 13.5d | 2027-08-13 | 2027-08-24 | 4211, 4220, 4226 |  | GC1 | 8849934 |
| 4228 | 37200.37400.37500.38800.39800.41200.42200.92700.1316600 | Aluminium door-window fixing | 13.5d | 2028-09-24 | 2028-10-06 | 4212, 4224, 4227 |  | GC1 | 8849944 |
| 4229 | 37200.37400.37500.38800.39800.41200.42200.92700.1316700 | Putty primer coat | 6.75d | 2027-08-25 | 2027-08-30 | 4213, 4227 |  | GC1 | 8849954 |
| 4230 | 37200.37400.37500.38800.39800.41200.42200.92700.1316800 | Door shutter fixing | 9d | 2028-05-08 | 2028-05-16 | 4214, 4227 |  | GC1 | 8849964 |
| 4231 | 37200.37400.37500.38800.39800.41200.42200.92700.1316900 | Electrical wiring work | 13.5d | 2028-08-12 | 2028-08-24 | 4215, 4230 |  | GC1 | 8849974 |
| 4232 | 37200.37400.37500.38800.39800.41200.42200.92700.1317000 | Painting 1st coat | 13.5d | 2028-08-25 | 2028-09-06 | 4216, 4229, 4230, 4231 |  | GC1 | 8849984 |
| 4233 | 37200.37400.37500.38800.39800.41200.42200.92700.1317100 | False ceiling | 11.25d | 2028-09-06 | 2028-09-16 | 4217, 4232 |  | GC1 | 8849994 |
| 4234 | 37200.37400.37500.38800.39800.41200.42200.92800 | **20th Floor** | 709.75d | 2026-10-29 | 2028-10-18 |  | start no earlier than 2026-10-29 | GC1 | 8807784 |
| 4235 | 37200.37400.37500.38800.39800.41200.42200.92800.1317200 | Block Work | 9d | 2026-10-29 | 2026-12-20 | 3912, 4219 |  | GC1 | 8850004 |
| 4236 | 37200.37400.37500.38800.39800.41200.42200.92800.1317300 | Door Frame Fixing | 10.12d | 2026-12-21 | 2026-12-29 | 4220, 4235 |  | GC1 | 8850014 |
| 4237 | 37200.37400.37500.38800.39800.41200.42200.92800.1317400 | Internal Plumbing Works | 11.25d | 2026-12-21 | 2026-12-30 | 4221, 4235 |  | GC1 | 8850024 |
| 4238 | 37200.37400.37500.38800.39800.41200.42200.92800.1317500 | Waterproofing | 13.5d | 2027-01-03 | 2027-01-14 | 4222, 4237 |  | GC1 | 8850034 |
| 4239 | 37200.37400.37500.38800.39800.41200.42200.92800.1317600 | Internal Plaster | 10.12d | 2027-01-15 | 2027-01-23 | 4223, 4236, 4237, 4238 |  | GC1 | 8850044 |
| 4240 | 37200.37400.37500.38800.39800.41200.42200.92800.1317700 | IPS flooring work | 10.12d | 2027-01-24 | 2027-02-01 | 4224, 4236, 4238, 4239 |  | GC1 | 8850054 |
| 4241 | 37200.37400.37500.38800.39800.41200.42200.92800.1317800 | Toilet dado work | 9d | 2027-06-23 | 2027-07-01 | 4225, 4238, 4239 |  | GC1 | 8850064 |
| 4242 | 37200.37400.37500.38800.39800.41200.42200.92800.1317900 | Toilet flooring work | 7.88d | 2027-07-01 | 2027-07-08 | 4226, 4241 |  | GC1 | 8850074 |
| 4243 | 37200.37400.37500.38800.39800.41200.42200.92800.1318000 | Living dinning flooring | 13.5d | 2027-08-25 | 2027-09-05 | 4227, 4236, 4242 |  | GC1 | 8850084 |
| 4244 | 37200.37400.37500.38800.39800.41200.42200.92800.1318100 | Aluminium door-window fixing | 13.5d | 2028-10-06 | 2028-10-18 | 4228, 4240, 4243 |  | GC1 | 8850094 |
| 4245 | 37200.37400.37500.38800.39800.41200.42200.92800.1318200 | Putty primer coat | 6.75d | 2027-09-06 | 2027-09-11 | 4229, 4243 |  | GC1 | 8850104 |
| 4246 | 37200.37400.37500.38800.39800.41200.42200.92800.1318300 | Door shutter fixing | 9d | 2028-05-16 | 2028-05-24 | 4230, 4243 |  | GC1 | 8850114 |
| 4247 | 37200.37400.37500.38800.39800.41200.42200.92800.1318400 | Electrical wiring work | 13.5d | 2028-08-24 | 2028-09-05 | 4231, 4246 |  | GC1 | 8850124 |
| 4248 | 37200.37400.37500.38800.39800.41200.42200.92800.1318500 | Painting 1st coat | 13.5d | 2028-09-06 | 2028-09-18 | 4232, 4245, 4246, 4247 |  | GC1 | 8850134 |
| 4249 | 37200.37400.37500.38800.39800.41200.42200.92800.1318600 | False ceiling | 11.25d | 2028-09-18 | 2028-09-28 | 4233, 4248 |  | GC1 | 8850144 |

| ID | WBS | Task | Duration | Start | Finish | Predecessors | Constraint | Calendar | Unique_Task_ID |
| --- | --- | --- | --- | --- | --- | --- | --- | --- | --- |
| 4250 | 37200.37400.37500.38800.39800.41200.42200.92900 | **21st Floor** | 710.88d | 2026-12-24 | 2028-10-30 |  | start no earlier than 2026-12-24 | GC1 | 8807794 |
| 4251 | 37200.37400.37500.38800.39800.41200.42200.92900.1318700 | Block Work | 9d | 2026-12-24 | 2026-12-31 | 3913, 4235 |  | GC1 | 8850154 |
| 4252 | 37200.37400.37500.38800.39800.41200.42200.92900.1318800 | Door Frame Fixing | 10.12d | 2027-01-01 | 2027-01-09 | 4236, 4251 |  | GC1 | 8850164 |
| 4253 | 37200.37400.37500.38800.39800.41200.42200.92900.1318900 | Internal Plumbing Works | 11.25d | 2027-01-01 | 2027-01-10 | 4237, 4251 |  | GC1 | 8850174 |
| 4254 | 37200.37400.37500.38800.39800.41200.42200.92900.1319000 | Waterproofing | 13.5d | 2027-01-15 | 2027-01-26 | 4238, 4253 |  | GC1 | 8850184 |
| 4255 | 37200.37400.37500.38800.39800.41200.42200.92900.1319100 | Internal Plaster | 10.12d | 2027-01-27 | 2027-02-04 | 4239, 4252, 4253, 4254 |  | GC1 | 8850194 |
| 4256 | 37200.37400.37500.38800.39800.41200.42200.92900.1319200 | IPS flooring work | 10.12d | 2027-02-05 | 2027-02-13 | 4240, 4252, 4254, 4255 |  | GC1 | 8850204 |
| 4257 | 37200.37400.37500.38800.39800.41200.42200.92900.1319300 | Toilet dado work | 9d | 2027-07-01 | 2027-07-09 | 4241, 4254, 4255 |  | GC1 | 8850214 |
| 4258 | 37200.37400.37500.38800.39800.41200.42200.92900.1319400 | Toilet flooring work | 7.88d | 2027-07-09 | 2027-07-16 | 4242, 4257 |  | GC1 | 8850224 |
| 4259 | 37200.37400.37500.38800.39800.41200.42200.92900.1319500 | Living dinning flooring | 13.5d | 2027-09-06 | 2027-09-17 | 4243, 4252, 4258 |  | GC1 | 8850234 |
| 4260 | 37200.37400.37500.38800.39800.41200.42200.92900.1319600 | Aluminium door-window fixing | 13.5d | 2028-10-18 | 2028-10-30 | 4244, 4256, 4259 |  | GC1 | 8850244 |
| 4261 | 37200.37400.37500.38800.39800.41200.42200.92900.1319700 | Putty primer coat | 6.75d | 2027-09-18 | 2027-09-23 | 4245, 4259 |  | GC1 | 8850254 |
| 4262 | 37200.37400.37500.38800.39800.41200.42200.92900.1319800 | Door shutter fixing | 9d | 2028-05-24 | 2028-06-01 | 4246, 4259 |  | GC1 | 8850264 |
| 4263 | 37200.37400.37500.38800.39800.41200.42200.92900.1319900 | Electrical wiring work | 13.5d | 2028-09-05 | 2028-09-17 | 4247, 4262 |  | GC1 | 8850274 |
| 4264 | 37200.37400.37500.38800.39800.41200.42200.92900.1320000 | Painting 1st coat | 13.5d | 2028-09-18 | 2028-09-30 | 4248, 4261, 4262, 4263 |  | GC1 | 8850284 |
| 4265 | 37200.37400.37500.38800.39800.41200.42200.92900.1320100 | False ceiling | 11.25d | 2028-09-30 | 2028-10-10 | 4249, 4264 |  | GC1 | 8850294 |
| 4266 | 37200.37400.37500.38800.39800.41200.42200.93000 | **22nd Floor** | 712d | 2027-01-04 | 2028-11-11 |  | start no earlier than 2027-01-04 | GC1 | 8807804 |
| 4267 | 37200.37400.37500.38800.39800.41200.42200.93000.1320200 | Block Work | 9d | 2027-01-04 | 2027-01-11 | 3914, 4251 |  | GC1 | 8850304 |
| 4268 | 37200.37400.37500.38800.39800.41200.42200.93000.1320300 | Door Frame Fixing | 10.12d | 2027-01-12 | 2027-01-20 | 4252, 4267 |  | GC1 | 8850314 |
| 4269 | 37200.37400.37500.38800.39800.41200.42200.93000.1320400 | Internal Plumbing Works | 11.25d | 2027-01-12 | 2027-01-21 | 4253, 4267 |  | GC1 | 8850324 |
| 4270 | 37200.37400.37500.38800.39800.41200.42200.93000.1320500 | Waterproofing | 13.5d | 2027-01-27 | 2027-02-07 | 4254, 4269 |  | GC1 | 8850334 |
| 4271 | 37200.37400.37500.38800.39800.41200.42200.93000.1320600 | Internal Plaster | 10.12d | 2027-02-08 | 2027-02-16 | 4255, 4268, 4269, 4270 |  | GC1 | 8850344 |
| 4272 | 37200.37400.37500.38800.39800.41200.42200.93000.1320700 | IPS flooring work | 10.12d | 2027-02-17 | 2027-02-25 | 4256, 4268, 4270, 4271 |  | GC1 | 8850354 |
| 4273 | 37200.37400.37500.38800.39800.41200.42200.93000.1320800 | Toilet dado work | 9d | 2027-07-09 | 2027-07-17 | 4257, 4270, 4271 |  | GC1 | 8850364 |
| 4274 | 37200.37400.37500.38800.39800.41200.42200.93000.1320900 | Toilet flooring work | 7.88d | 2027-07-17 | 2027-07-24 | 4258, 4273 |  | GC1 | 8850374 |
| 4275 | 37200.37400.37500.38800.39800.41200.42200.93000.1321000 | Living dinning flooring | 13.5d | 2027-09-18 | 2027-09-29 | 4259, 4268, 4274 |  | GC1 | 8850384 |
| 4276 | 37200.37400.37500.38800.39800.41200.42200.93000.1321100 | Aluminium door-window fixing | 13.5d | 2028-10-30 | 2028-11-11 | 4260, 4272, 4275 |  | GC1 | 8850394 |
| 4277 | 37200.37400.37500.38800.39800.41200.42200.93000.1321200 | Putty primer coat | 6.75d | 2027-09-30 | 2027-10-05 | 4261, 4275 |  | GC1 | 8850404 |
| 4278 | 37200.37400.37500.38800.39800.41200.42200.93000.1321300 | Door shutter fixing | 9d | 2028-06-01 | 2028-06-09 | 4262, 4275 |  | GC1 | 8850414 |
| 4279 | 37200.37400.37500.38800.39800.41200.42200.93000.1321400 | Electrical wiring work | 13.5d | 2028-09-17 | 2028-09-29 | 4263, 4278 |  | GC1 | 8850424 |
| 4280 | 37200.37400.37500.38800.39800.41200.42200.93000.1321500 | Painting 1st coat | 13.5d | 2028-09-30 | 2028-10-12 | 4264, 4277, 4278, 4279 |  | GC1 | 8850434 |
| 4281 | 37200.37400.37500.38800.39800.41200.42200.93000.1321600 | False ceiling | 11.25d | 2028-10-12 | 2028-10-22 | 4265, 4280 |  | GC1 | 8850444 |

| ID | WBS | Task | Duration | Start | Finish | Predecessors | Constraint | Calendar | Unique_Task_ID |
| --- | --- | --- | --- | --- | --- | --- | --- | --- | --- |
| 4282 | 37200.37400.37500.38800.39800.41200.42200.93100 | **23rd Floor** | 716.5d | 2027-01-15 | 2028-11-26 |  | start no earlier than 2027-01-15 | GC1 | 8807814 |
| 4283 | 37200.37400.37500.38800.39800.41200.42200.93100.1321700 | Block Work | 9d | 2027-01-15 | 2027-01-22 | 3915, 4267 |  | GC1 | 8850454 |
| 4284 | 37200.37400.37500.38800.39800.41200.42200.93100.1321800 | Door Frame Fixing | 10.12d | 2027-01-23 | 2027-01-31 | 4268, 4283 |  | GC1 | 8850464 |
| 4285 | 37200.37400.37500.38800.39800.41200.42200.93100.1321900 | Internal Plumbing Works | 11.25d | 2027-01-23 | 2027-02-01 | 4269, 4283 |  | GC1 | 8850474 |
| 4286 | 37200.37400.37500.38800.39800.41200.42200.93100.1322000 | Waterproofing | 13.5d | 2027-02-08 | 2027-02-19 | 4270, 4285 |  | GC1 | 8850484 |
| 4287 | 37200.37400.37500.38800.39800.41200.42200.93100.1322100 | Internal Plaster | 10.12d | 2027-02-20 | 2027-02-28 | 4271, 4284, 4285, 4286 |  | GC1 | 8850494 |
| 4288 | 37200.37400.37500.38800.39800.41200.42200.93100.1322200 | IPS flooring work | 10.12d | 2027-03-01 | 2027-03-09 | 4272, 4284, 4286, 4287 |  | GC1 | 8850504 |
| 4289 | 37200.37400.37500.38800.39800.41200.42200.93100.1322300 | Toilet dado work | 9d | 2027-07-17 | 2027-07-25 | 4273, 4286, 4287 |  | GC1 | 8850514 |
| 4290 | 37200.37400.37500.38800.39800.41200.42200.93100.1322400 | Toilet flooring work | 7.88d | 2027-07-25 | 2027-08-01 | 4274, 4289 |  | GC1 | 8850524 |
| 4291 | 37200.37400.37500.38800.39800.41200.42200.93100.1322500 | Living dinning flooring | 16.88d | 2027-09-30 | 2027-10-14 | 4275, 4284, 4290 |  | GC1 | 8850534 |
| 4292 | 37200.37400.37500.38800.39800.41200.42200.93100.1322600 | Aluminium door-window fixing | 16.88d | 2028-11-11 | 2028-11-26 | 4276, 4288, 4291 |  | GC1 | 8850544 |
| 4293 | 37200.37400.37500.38800.39800.41200.42200.93100.1322700 | Putty primer coat | 6.75d | 2027-10-15 | 2027-10-20 | 4277, 4291 |  | GC1 | 8850554 |
| 4294 | 37200.37400.37500.38800.39800.41200.42200.93100.1322800 | Door shutter fixing | 9d | 2028-06-09 | 2028-06-17 | 4278, 4291 |  | GC1 | 8850564 |
| 4295 | 37200.37400.37500.38800.39800.41200.42200.93100.1322900 | Electrical wiring work | 13.5d | 2028-09-29 | 2028-10-11 | 4279, 4294 |  | GC1 | 8850574 |
| 4296 | 37200.37400.37500.38800.39800.41200.42200.93100.1323000 | Painting 1st coat | 13.5d | 2028-10-12 | 2028-10-24 | 4280, 4293, 4294, 4295 |  | GC1 | 8850584 |
| 4297 | 37200.37400.37500.38800.39800.41200.42200.93100.1323100 | False ceiling | 11.25d | 2028-10-24 | 2028-11-03 | 4281, 4296 |  | GC1 | 8850594 |
| 4298 | 37200.37400.37500.38800.39800.41200.42200.93200 | **24th Floor** | 721d | 2027-01-26 | 2028-12-11 |  | start no earlier than 2027-01-26 | GC1 | 8807824 |
| 4299 | 37200.37400.37500.38800.39800.41200.42200.93200.1323200 | Block Work | 9d | 2027-01-26 | 2027-02-02 | 3916, 4283 |  | GC1 | 8850604 |
| 4300 | 37200.37400.37500.38800.39800.41200.42200.93200.1323300 | Door Frame Fixing | 10.12d | 2027-02-03 | 2027-02-11 | 4284, 4299 |  | GC1 | 8850614 |
| 4301 | 37200.37400.37500.38800.39800.41200.42200.93200.1323400 | Internal Plumbing Works | 11.25d | 2027-02-03 | 2027-02-12 | 4285, 4299 |  | GC1 | 8850624 |
| 4302 | 37200.37400.37500.38800.39800.41200.42200.93200.1323500 | Waterproofing | 13.5d | 2027-02-20 | 2027-03-03 | 4286, 4301 |  | GC1 | 8850634 |
| 4303 | 37200.37400.37500.38800.39800.41200.42200.93200.1323600 | Internal Plaster | 10.12d | 2027-03-04 | 2027-03-12 | 4287, 4300, 4301, 4302 |  | GC1 | 8850644 |
| 4304 | 37200.37400.37500.38800.39800.41200.42200.93200.1323700 | IPS flooring work | 10.12d | 2027-03-13 | 2027-03-21 | 4288, 4300, 4302, 4303 |  | GC1 | 8850654 |
| 4305 | 37200.37400.37500.38800.39800.41200.42200.93200.1323800 | Toilet dado work | 9d | 2027-07-25 | 2027-08-02 | 4289, 4302, 4303 |  | GC1 | 8850664 |
| 4306 | 37200.37400.37500.38800.39800.41200.42200.93200.1323900 | Toilet flooring work | 7.88d | 2027-08-02 | 2027-08-09 | 4290, 4305 |  | GC1 | 8850674 |
| 4307 | 37200.37400.37500.38800.39800.41200.42200.93200.1324000 | Living dinning flooring | 16.88d | 2027-10-15 | 2027-10-29 | 4291, 4300, 4306 |  | GC1 | 8850684 |
| 4308 | 37200.37400.37500.38800.39800.41200.42200.93200.1324100 | Aluminium door-window fixing | 16.88d | 2028-11-26 | 2028-12-11 | 4292, 4304, 4307 |  | GC1 | 8850694 |
| 4309 | 37200.37400.37500.38800.39800.41200.42200.93200.1324200 | Putty primer coat | 6.75d | 2027-10-30 | 2027-12-19 | 4293, 4307 |  | GC1 | 8850704 |
| 4310 | 37200.37400.37500.38800.39800.41200.42200.93200.1324300 | Door shutter fixing | 9d | 2028-06-17 | 2028-06-25 | 4294, 4307 |  | GC1 | 8850714 |
| 4311 | 37200.37400.37500.38800.39800.41200.42200.93200.1324400 | Electrical wiring work | 13.5d | 2028-10-11 | 2028-10-23 | 4295, 4310 |  | GC1 | 8850724 |
| 4312 | 37200.37400.37500.38800.39800.41200.42200.93200.1324500 | Painting 1st coat | 13.5d | 2028-10-24 | 2028-11-05 | 4296, 4309, 4310, 4311 |  | GC1 | 8850734 |
| 4313 | 37200.37400.37500.38800.39800.41200.42200.93200.1324600 | False ceiling | 11.25d | 2028-11-05 | 2028-11-15 | 4297, 4312 |  | GC1 | 8850744 |

| ID | WBS | Task | Duration | Start | Finish | Predecessors | Constraint | Calendar | Unique_Task_ID |
| --- | --- | --- | --- | --- | --- | --- | --- | --- | --- |
| 4314 | 37200.37400.37500.38800.39800.41200.42200.93300 | **25th Floor** | 725.5d | 2027-02-06 | 2028-12-26 |  | start no earlier than 2027-02-06 | GC1 | 8807834 |
| 4315 | 37200.37400.37500.38800.39800.41200.42200.93300.1324700 | Block Work | 9d | 2027-02-06 | 2027-02-13 | 3917, 4299 |  | GC1 | 8850754 |
| 4316 | 37200.37400.37500.38800.39800.41200.42200.93300.1324800 | Door Frame Fixing | 10.12d | 2027-02-14 | 2027-02-22 | 4300, 4315 |  | GC1 | 8850764 |
| 4317 | 37200.37400.37500.38800.39800.41200.42200.93300.1324900 | Internal Plumbing Works | 11.25d | 2027-02-14 | 2027-02-23 | 4301, 4315 |  | GC1 | 8850774 |
| 4318 | 37200.37400.37500.38800.39800.41200.42200.93300.1325000 | Waterproofing | 13.5d | 2027-03-04 | 2027-03-15 | 4302, 4317 |  | GC1 | 8850784 |
| 4319 | 37200.37400.37500.38800.39800.41200.42200.93300.1325100 | Internal Plaster | 10.12d | 2027-03-16 | 2027-03-24 | 4303, 4316, 4317, 4318 |  | GC1 | 8850794 |
| 4320 | 37200.37400.37500.38800.39800.41200.42200.93300.1325200 | IPS flooring work | 10.12d | 2027-03-25 | 2027-04-02 | 4304, 4316, 4318, 4319 |  | GC1 | 8850804 |
| 4321 | 37200.37400.37500.38800.39800.41200.42200.93300.1325300 | Toilet dado work | 9d | 2027-08-02 | 2027-08-10 | 4305, 4318, 4319 |  | GC1 | 8850814 |
| 4322 | 37200.37400.37500.38800.39800.41200.42200.93300.1325400 | Toilet flooring work | 7.88d | 2027-08-10 | 2027-08-17 | 4306, 4321 |  | GC1 | 8850824 |
| 4323 | 37200.37400.37500.38800.39800.41200.42200.93300.1325500 | Living dinning flooring | 16.88d | 2027-10-30 | 2027-12-28 | 4307, 4316, 4322 |  | GC1 | 8850834 |
| 4324 | 37200.37400.37500.38800.39800.41200.42200.93300.1325600 | Aluminium door-window fixing | 16.88d | 2028-12-11 | 2028-12-26 | 4308, 4320, 4323 |  | GC1 | 8850844 |
| 4325 | 37200.37400.37500.38800.39800.41200.42200.93300.1325700 | Putty primer coat | 6.75d | 2027-12-29 | 2028-01-03 | 4309, 4323 |  | GC1 | 8850854 |
| 4326 | 37200.37400.37500.38800.39800.41200.42200.93300.1325800 | Door shutter fixing | 9d | 2028-06-25 | 2028-07-03 | 4310, 4323 |  | GC1 | 8850864 |
| 4327 | 37200.37400.37500.38800.39800.41200.42200.93300.1325900 | Electrical wiring work | 13.5d | 2028-10-23 | 2028-11-04 | 4311, 4326 |  | GC1 | 8850874 |
| 4328 | 37200.37400.37500.38800.39800.41200.42200.93300.1326000 | Painting 1st coat | 13.5d | 2028-11-05 | 2028-11-17 | 4312, 4325, 4326, 4327 |  | GC1 | 8850884 |
| 4329 | 37200.37400.37500.38800.39800.41200.42200.93300.1326100 | False ceiling | 11.25d | 2028-11-17 | 2028-11-27 | 4313, 4328 |  | GC1 | 8850894 |
| 4330 | 37200.37400.37500.38800.39800.41200.42200.93400 | **26th Floor** | 730d | 2027-02-17 | 2029-01-10 |  | start no earlier than 2027-02-17 | GC1 | 8807844 |
| 4331 | 37200.37400.37500.38800.39800.41200.42200.93400.1326200 | Block Work | 9d | 2027-02-17 | 2027-02-24 | 3918, 4315 |  | GC1 | 8850904 |
| 4332 | 37200.37400.37500.38800.39800.41200.42200.93400.1326300 | Door Frame Fixing | 10.12d | 2027-02-25 | 2027-03-05 | 4316, 4331 |  | GC1 | 8850914 |
| 4333 | 37200.37400.37500.38800.39800.41200.42200.93400.1326400 | Internal Plumbing Works | 11.25d | 2027-02-25 | 2027-03-06 | 4317, 4331 |  | GC1 | 8850924 |
| 4334 | 37200.37400.37500.38800.39800.41200.42200.93400.1326500 | Waterproofing | 13.5d | 2027-03-16 | 2027-03-27 | 4318, 4333 |  | GC1 | 8850934 |
| 4335 | 37200.37400.37500.38800.39800.41200.42200.93400.1326600 | Internal Plaster | 10.12d | 2027-03-28 | 2027-04-05 | 4319, 4332, 4333, 4334 |  | GC1 | 8850944 |
| 4336 | 37200.37400.37500.38800.39800.41200.42200.93400.1326700 | IPS flooring work | 10.12d | 2027-04-06 | 2027-04-14 | 4320, 4332, 4334, 4335 |  | GC1 | 8850954 |
| 4337 | 37200.37400.37500.38800.39800.41200.42200.93400.1326800 | Toilet dado work | 9d | 2027-08-10 | 2027-08-18 | 4321, 4334, 4335 |  | GC1 | 8850964 |
| 4338 | 37200.37400.37500.38800.39800.41200.42200.93400.1326900 | Toilet flooring work | 7.88d | 2027-08-18 | 2027-08-25 | 4322, 4337 |  | GC1 | 8850974 |
| 4339 | 37200.37400.37500.38800.39800.41200.42200.93400.1327000 | Living dinning flooring | 16.88d | 2027-12-29 | 2028-01-12 | 4323, 4332, 4338 |  | GC1 | 8850984 |
| 4340 | 37200.37400.37500.38800.39800.41200.42200.93400.1327100 | Aluminium door-window fixing | 16.88d | 2028-12-26 | 2029-01-10 | 4324, 4336, 4339 |  | GC1 | 8850994 |
| 4341 | 37200.37400.37500.38800.39800.41200.42200.93400.1327200 | Putty primer coat | 6.75d | 2028-01-13 | 2028-01-18 | 4325, 4339 |  | GC1 | 8851004 |
| 4342 | 37200.37400.37500.38800.39800.41200.42200.93400.1327300 | Door shutter fixing | 9d | 2028-07-03 | 2028-07-11 | 4326, 4339 |  | GC1 | 8851014 |
| 4343 | 37200.37400.37500.38800.39800.41200.42200.93400.1327400 | Electrical wiring work | 13.5d | 2028-11-04 | 2028-11-16 | 4327, 4342 |  | GC1 | 8851024 |
| 4344 | 37200.37400.37500.38800.39800.41200.42200.93400.1327500 | Painting 1st coat | 13.5d | 2028-11-17 | 2028-11-29 | 4328, 4341, 4342, 4343 |  | GC1 | 8851034 |
| 4345 | 37200.37400.37500.38800.39800.41200.42200.93400.1327600 | False ceiling | 11.25d | 2028-11-29 | 2028-12-09 | 4329, 4344 |  | GC1 | 8851044 |

| ID | WBS | Task | Duration | Start | Finish | Predecessors | Constraint | Calendar | Unique_Task_ID |
| --- | --- | --- | --- | --- | --- | --- | --- | --- | --- |
| 4346 | 37200.37400.37500.38800.39800.41200.42200.93500 | **27th Floor** | 734.5d | 2027-02-28 | 2029-01-25 |  | start no earlier than 2027-02-28 | GC1 | 8807854 |
| 4347 | 37200.37400.37500.38800.39800.41200.42200.93500.1327700 | Block Work | 9d | 2027-02-28 | 2027-03-07 | 3919, 4331 |  | GC1 | 8851054 |
| 4348 | 37200.37400.37500.38800.39800.41200.42200.93500.1327800 | Door Frame Fixing | 10.12d | 2027-03-08 | 2027-03-16 | 4332, 4347 |  | GC1 | 8851064 |
| 4349 | 37200.37400.37500.38800.39800.41200.42200.93500.1327900 | Internal Plumbing Works | 11.25d | 2027-03-08 | 2027-03-17 | 4333, 4347 |  | GC1 | 8851074 |
| 4350 | 37200.37400.37500.38800.39800.41200.42200.93500.1328000 | Waterproofing | 13.5d | 2027-03-28 | 2027-04-08 | 4334, 4349 |  | GC1 | 8851084 |
| 4351 | 37200.37400.37500.38800.39800.41200.42200.93500.1328100 | Internal Plaster | 10.12d | 2027-04-09 | 2027-04-17 | 4335, 4348, 4349, 4350 |  | GC1 | 8851094 |
| 4352 | 37200.37400.37500.38800.39800.41200.42200.93500.1328200 | IPS flooring work | 10.12d | 2027-04-18 | 2027-04-26 | 4336, 4348, 4350, 4351 |  | GC1 | 8851104 |
| 4353 | 37200.37400.37500.38800.39800.41200.42200.93500.1328300 | Toilet dado work | 9d | 2027-08-18 | 2027-08-26 | 4337, 4350, 4351 |  | GC1 | 8851114 |
| 4354 | 37200.37400.37500.38800.39800.41200.42200.93500.1328400 | Toilet flooring work | 7.88d | 2027-08-26 | 2027-09-02 | 4338, 4353 |  | GC1 | 8851124 |
| 4355 | 37200.37400.37500.38800.39800.41200.42200.93500.1328500 | Living dinning flooring | 16.88d | 2028-01-13 | 2028-01-27 | 4339, 4348, 4354 |  | GC1 | 8851134 |
| 4356 | 37200.37400.37500.38800.39800.41200.42200.93500.1328600 | Aluminium door-window fixing | 16.88d | 2029-01-10 | 2029-01-25 | 4340, 4352, 4355 |  | GC1 | 8851144 |
| 4357 | 37200.37400.37500.38800.39800.41200.42200.93500.1328700 | Putty primer coat | 6.75d | 2028-01-28 | 2028-02-02 | 4341, 4355 |  | GC1 | 8851154 |
| 4358 | 37200.37400.37500.38800.39800.41200.42200.93500.1328800 | Door shutter fixing | 9d | 2028-07-11 | 2028-07-19 | 4342, 4355 |  | GC1 | 8851164 |
| 4359 | 37200.37400.37500.38800.39800.41200.42200.93500.1328900 | Electrical wiring work | 13.5d | 2028-11-16 | 2028-11-28 | 4343, 4358 |  | GC1 | 8851174 |
| 4360 | 37200.37400.37500.38800.39800.41200.42200.93500.1329000 | Painting 1st coat | 13.5d | 2028-11-29 | 2028-12-11 | 4344, 4357, 4358, 4359 |  | GC1 | 8851184 |
| 4361 | 37200.37400.37500.38800.39800.41200.42200.93500.1329100 | False ceiling | 11.25d | 2028-12-11 | 2028-12-21 | 4345, 4360 |  | GC1 | 8851194 |
| 4362 | 37200.37400.37500.38800.39800.41200.42200.93600 | **28th Floor** | 739d | 2027-03-11 | 2029-02-09 |  | start no earlier than 2027-03-11 | GC1 | 8807864 |
| 4363 | 37200.37400.37500.38800.39800.41200.42200.93600.1329200 | Block Work | 9d | 2027-03-11 | 2027-03-18 | 3920, 4347 |  | GC1 | 8851204 |
| 4364 | 37200.37400.37500.38800.39800.41200.42200.93600.1329300 | Door Frame Fixing | 10.12d | 2027-03-19 | 2027-03-27 | 4348, 4363 |  | GC1 | 8851214 |
| 4365 | 37200.37400.37500.38800.39800.41200.42200.93600.1329400 | Internal Plumbing Works | 11.25d | 2027-03-19 | 2027-03-28 | 4349, 4363 |  | GC1 | 8851224 |
| 4366 | 37200.37400.37500.38800.39800.41200.42200.93600.1329500 | Waterproofing | 13.5d | 2027-04-09 | 2027-04-20 | 4350, 4365 |  | GC1 | 8851234 |
| 4367 | 37200.37400.37500.38800.39800.41200.42200.93600.1329600 | Internal Plaster | 10.12d | 2027-04-21 | 2027-04-29 | 4351, 4364, 4365, 4366 |  | GC1 | 8851244 |
| 4368 | 37200.37400.37500.38800.39800.41200.42200.93600.1329700 | IPS flooring work | 10.12d | 2027-04-30 | 2027-05-08 | 4352, 4364, 4366, 4367 |  | GC1 | 8851254 |
| 4369 | 37200.37400.37500.38800.39800.41200.42200.93600.1329800 | Toilet dado work | 9d | 2027-08-26 | 2027-09-03 | 4353, 4366, 4367 |  | GC1 | 8851264 |
| 4370 | 37200.37400.37500.38800.39800.41200.42200.93600.1329900 | Toilet flooring work | 7.88d | 2027-09-03 | 2027-09-10 | 4354, 4369 |  | GC1 | 8851274 |
| 4371 | 37200.37400.37500.38800.39800.41200.42200.93600.1330000 | Living dinning flooring | 16.88d | 2028-01-28 | 2028-02-11 | 4355, 4364, 4370 |  | GC1 | 8851284 |
| 4372 | 37200.37400.37500.38800.39800.41200.42200.93600.1330100 | Aluminium door-window fixing | 16.88d | 2029-01-25 | 2029-02-09 | 4356, 4368, 4371 |  | GC1 | 8851294 |
| 4373 | 37200.37400.37500.38800.39800.41200.42200.93600.1330200 | Putty primer coat | 6.75d | 2028-02-12 | 2028-02-17 | 4357, 4371 |  | GC1 | 8851304 |
| 4374 | 37200.37400.37500.38800.39800.41200.42200.93600.1330300 | Door shutter fixing | 9d | 2028-07-19 | 2028-07-27 | 4358, 4371 |  | GC1 | 8851314 |
| 4375 | 37200.37400.37500.38800.39800.41200.42200.93600.1330400 | Electrical wiring work | 13.5d | 2028-11-28 | 2028-12-10 | 4359, 4374 |  | GC1 | 8851324 |
| 4376 | 37200.37400.37500.38800.39800.41200.42200.93600.1330500 | Painting 1st coat | 13.5d | 2028-12-11 | 2028-12-23 | 4360, 4373, 4374, 4375 |  | GC1 | 8851334 |
| 4377 | 37200.37400.37500.38800.39800.41200.42200.93600.1330600 | False ceiling | 11.25d | 2028-12-23 | 2029-01-02 | 4361, 4376 |  | GC1 | 8851344 |

| ID | WBS | Task | Duration | Start | Finish | Predecessors | Constraint | Calendar | Unique_Task_ID |
| --- | --- | --- | --- | --- | --- | --- | --- | --- | --- |
| 4378 | 37200.37400.37500.38800.39800.41200.42200.93700 | **29th Floor** | 743.5d | 2027-03-22 | 2029-02-24 |  | start no earlier than 2027-03-22 | GC1 | 8807874 |
| 4379 | 37200.37400.37500.38800.39800.41200.42200.93700.1330700 | Block Work | 9d | 2027-03-22 | 2027-03-29 | 3921, 4363 |  | GC1 | 8851354 |
| 4380 | 37200.37400.37500.38800.39800.41200.42200.93700.1330800 | Door Frame Fixing | 10.12d | 2027-03-30 | 2027-04-07 | 4364, 4379 |  | GC1 | 8851364 |
| 4381 | 37200.37400.37500.38800.39800.41200.42200.93700.1330900 | Internal Plumbing Works | 11.25d | 2027-03-30 | 2027-04-08 | 4365, 4379 |  | GC1 | 8851374 |
| 4382 | 37200.37400.37500.38800.39800.41200.42200.93700.1331000 | Waterproofing | 13.5d | 2027-04-21 | 2027-05-02 | 4366, 4381 |  | GC1 | 8851384 |
| 4383 | 37200.37400.37500.38800.39800.41200.42200.93700.1331100 | Internal Plaster | 10.12d | 2027-05-03 | 2027-05-11 | 4367, 4380, 4381, 4382 |  | GC1 | 8851394 |
| 4384 | 37200.37400.37500.38800.39800.41200.42200.93700.1331200 | IPS flooring work | 10.12d | 2027-05-12 | 2027-05-20 | 4368, 4380, 4382, 4383 |  | GC1 | 8851404 |
| 4385 | 37200.37400.37500.38800.39800.41200.42200.93700.1331300 | Toilet dado work | 9d | 2027-09-03 | 2027-09-11 | 4369, 4382, 4383 |  | GC1 | 8851414 |
| 4386 | 37200.37400.37500.38800.39800.41200.42200.93700.1331400 | Toilet flooring work | 7.88d | 2027-09-11 | 2027-09-18 | 4370, 4385 |  | GC1 | 8851424 |
| 4387 | 37200.37400.37500.38800.39800.41200.42200.93700.1331500 | Living dinning flooring | 16.88d | 2028-02-12 | 2028-02-26 | 4371, 4380, 4386 |  | GC1 | 8851434 |
| 4388 | 37200.37400.37500.38800.39800.41200.42200.93700.1331600 | Aluminium door-window fixing | 16.88d | 2029-02-09 | 2029-02-24 | 4372, 4384, 4387 |  | GC1 | 8851444 |
| 4389 | 37200.37400.37500.38800.39800.41200.42200.93700.1331700 | Putty primer coat | 6.75d | 2028-02-27 | 2028-03-03 | 4373, 4387 |  | GC1 | 8851454 |
| 4390 | 37200.37400.37500.38800.39800.41200.42200.93700.1331800 | Door shutter fixing | 9d | 2028-07-27 | 2028-08-04 | 4374, 4387 |  | GC1 | 8851464 |
| 4391 | 37200.37400.37500.38800.39800.41200.42200.93700.1331900 | Electrical wiring work | 13.5d | 2028-12-10 | 2028-12-22 | 4375, 4390 |  | GC1 | 8851474 |
| 4392 | 37200.37400.37500.38800.39800.41200.42200.93700.1332000 | Painting 1st coat | 13.5d | 2028-12-23 | 2029-01-04 | 4376, 4389, 4390, 4391 |  | GC1 | 8851484 |
| 4393 | 37200.37400.37500.38800.39800.41200.42200.93700.1332100 | False ceiling | 11.25d | 2029-01-04 | 2029-01-14 | 4377, 4392 |  | GC1 | 8851494 |
| 4394 | 37200.37400.37500.38800.39800.41200.42200.93800 | **30th Floor** | 748d | 2027-04-02 | 2029-03-11 |  | start no earlier than 2027-04-02 | GC1 | 8807884 |
| 4395 | 37200.37400.37500.38800.39800.41200.42200.93800.1332200 | Block Work | 9d | 2027-04-02 | 2027-04-09 | 3922, 4379 |  | GC1 | 8851504 |
| 4396 | 37200.37400.37500.38800.39800.41200.42200.93800.1332300 | Door Frame Fixing | 10.12d | 2027-04-10 | 2027-04-18 | 4380, 4395 |  | GC1 | 8851514 |
| 4397 | 37200.37400.37500.38800.39800.41200.42200.93800.1332400 | Internal Plumbing Works | 11.25d | 2027-04-10 | 2027-04-19 | 4381, 4395 |  | GC1 | 8851524 |
| 4398 | 37200.37400.37500.38800.39800.41200.42200.93800.1332500 | Waterproofing | 13.5d | 2027-05-03 | 2027-05-14 | 4382, 4397 |  | GC1 | 8851534 |
| 4399 | 37200.37400.37500.38800.39800.41200.42200.93800.1332600 | Internal Plaster | 10.12d | 2027-05-15 | 2027-05-23 | 4383, 4396, 4397, 4398 |  | GC1 | 8851544 |
| 4400 | 37200.37400.37500.38800.39800.41200.42200.93800.1332700 | IPS flooring work | 10.12d | 2027-05-24 | 2027-06-01 | 4384, 4396, 4398, 4399 |  | GC1 | 8851554 |
| 4401 | 37200.37400.37500.38800.39800.41200.42200.93800.1332800 | Toilet dado work | 9d | 2027-09-11 | 2027-09-19 | 4385, 4398, 4399 |  | GC1 | 8851564 |
| 4402 | 37200.37400.37500.38800.39800.41200.42200.93800.1332900 | Toilet flooring work | 7.88d | 2027-09-19 | 2027-09-26 | 4386, 4401 |  | GC1 | 8851574 |
| 4403 | 37200.37400.37500.38800.39800.41200.42200.93800.1333000 | Living dinning flooring | 16.88d | 2028-02-27 | 2028-03-12 | 4387, 4396, 4402 |  | GC1 | 8851584 |
| 4404 | 37200.37400.37500.38800.39800.41200.42200.93800.1333100 | Aluminium door-window fixing | 16.88d | 2029-02-24 | 2029-03-11 | 4388, 4400, 4403 |  | GC1 | 8851594 |
| 4405 | 37200.37400.37500.38800.39800.41200.42200.93800.1333200 | Putty primer coat | 6.75d | 2028-03-13 | 2028-03-18 | 4389, 4403 |  | GC1 | 8851604 |
| 4406 | 37200.37400.37500.38800.39800.41200.42200.93800.1333300 | Door shutter fixing | 9d | 2028-08-04 | 2028-08-12 | 4390, 4403 |  | GC1 | 8851614 |
| 4407 | 37200.37400.37500.38800.39800.41200.42200.93800.1333400 | Electrical wiring work | 16.88d | 2028-12-22 | 2029-01-06 | 4391, 4406 |  | GC1 | 8851624 |
| 4408 | 37200.37400.37500.38800.39800.41200.42200.93800.1333500 | Painting 1st coat | 16.88d | 2029-01-06 | 2029-01-21 | 4392, 4405, 4406, 4407 |  | GC1 | 8851634 |
| 4409 | 37200.37400.37500.38800.39800.41200.42200.93800.1333600 | False ceiling | 11.25d | 2029-01-21 | 2029-01-31 | 4393, 4408 |  | GC1 | 8851644 |

| ID | WBS | Task | Duration | Start | Finish | Predecessors | Constraint | Calendar | Unique_Task_ID |
| --- | --- | --- | --- | --- | --- | --- | --- | --- | --- |
| 4410 | 37200.37400.37500.38800.39800.41200.42200.93900 | **31st Floor** | 752.5d | 2027-04-10 | 2029-03-23 |  | start no earlier than 2027-04-10 | GC1 | 8807894 |
| 4411 | 37200.37400.37500.38800.39800.41200.42200.93900.1333700 | Block Work | 9d | 2027-04-10 | 2027-04-17 | 3923, 4395 |  | GC1 | 8851654 |
| 4412 | 37200.37400.37500.38800.39800.41200.42200.93900.1333800 | Door Frame Fixing | 10.12d | 2027-04-19 | 2027-04-27 | 4396, 4411 |  | GC1 | 8851664 |
| 4413 | 37200.37400.37500.38800.39800.41200.42200.93900.1333900 | Internal Plumbing Works | 11.25d | 2027-04-20 | 2027-04-29 | 4397, 4411 |  | GC1 | 8851674 |
| 4414 | 37200.37400.37500.38800.39800.41200.42200.93900.1334000 | Waterproofing | 13.5d | 2027-05-15 | 2027-05-26 | 4398, 4413 |  | GC1 | 8851684 |
| 4415 | 37200.37400.37500.38800.39800.41200.42200.93900.1334100 | Internal Plaster | 10.12d | 2027-05-27 | 2027-06-04 | 4399, 4412, 4413, 4414 |  | GC1 | 8851694 |
| 4416 | 37200.37400.37500.38800.39800.41200.42200.93900.1334200 | IPS flooring work | 10.12d | 2027-06-05 | 2027-06-13 | 4400, 4412, 4414, 4415 |  | GC1 | 8851704 |
| 4417 | 37200.37400.37500.38800.39800.41200.42200.93900.1334300 | Toilet dado work | 9d | 2027-09-19 | 2027-09-27 | 4401, 4414, 4415 |  | GC1 | 8851714 |
| 4418 | 37200.37400.37500.38800.39800.41200.42200.93900.1334400 | Toilet flooring work | 7.88d | 2027-09-27 | 2027-10-04 | 4402, 4417 |  | GC1 | 8851724 |
| 4419 | 37200.37400.37500.38800.39800.41200.42200.93900.1334500 | Living dinning flooring | 16.88d | 2028-03-13 | 2028-03-27 | 4403, 4412, 4418 |  | GC1 | 8851734 |
| 4420 | 37200.37400.37500.38800.39800.41200.42200.93900.1334600 | Aluminium door-window fixing | 13.5d | 2029-03-11 | 2029-03-23 | 4404, 4416, 4419 |  | GC1 | 8851744 |
| 4421 | 37200.37400.37500.38800.39800.41200.42200.93900.1334700 | Putty primer coat | 6.75d | 2028-03-28 | 2028-04-02 | 4405, 4419 |  | GC1 | 8851754 |
| 4422 | 37200.37400.37500.38800.39800.41200.42200.93900.1334800 | Door shutter fixing | 9d | 2028-08-12 | 2028-08-20 | 4406, 4419 |  | GC1 | 8851764 |
| 4423 | 37200.37400.37500.38800.39800.41200.42200.93900.1334900 | Electrical wiring work | 16.88d | 2029-01-06 | 2029-01-21 | 4407, 4422 |  | GC1 | 8851774 |
| 4424 | 37200.37400.37500.38800.39800.41200.42200.93900.1335000 | Painting 1st coat | 16.88d | 2029-01-21 | 2029-02-05 | 4408, 4421, 4422, 4423 |  | GC1 | 8851784 |
| 4425 | 37200.37400.37500.38800.39800.41200.42200.93900.1335100 | False ceiling | 11.25d | 2029-02-05 | 2029-02-15 | 4409, 4424 |  | GC1 | 8851794 |
| 4426 | 37200.37400.37500.38800.39800.41200.42200.94000 | **32nd Floor** | 757d | 2027-04-18 | 2029-04-04 |  | start no earlier than 2027-04-18 | GC1 | 8807904 |
| 4427 | 37200.37400.37500.38800.39800.41200.42200.94000.1335200 | Block Work | 9d | 2027-04-18 | 2027-04-25 | 3924, 4411 |  | GC1 | 8851804 |
| 4428 | 37200.37400.37500.38800.39800.41200.42200.94000.1335300 | Door Frame Fixing | 10.12d | 2027-04-28 | 2027-05-06 | 4412, 4427 |  | GC1 | 8851814 |
| 4429 | 37200.37400.37500.38800.39800.41200.42200.94000.1335400 | Internal Plumbing Works | 11.25d | 2027-04-30 | 2027-05-09 | 4413, 4427 |  | GC1 | 8851824 |
| 4430 | 37200.37400.37500.38800.39800.41200.42200.94000.1335500 | Waterproofing | 13.5d | 2027-05-27 | 2027-06-07 | 4414, 4429 |  | GC1 | 8851834 |
| 4431 | 37200.37400.37500.38800.39800.41200.42200.94000.1335600 | Internal Plaster | 10.12d | 2027-06-08 | 2027-06-16 | 4415, 4428, 4429, 4430 |  | GC1 | 8851844 |
| 4432 | 37200.37400.37500.38800.39800.41200.42200.94000.1335700 | IPS flooring work | 10.12d | 2027-06-17 | 2027-06-25 | 4416, 4428, 4430, 4431 |  | GC1 | 8851854 |
| 4433 | 37200.37400.37500.38800.39800.41200.42200.94000.1335800 | Toilet dado work | 9d | 2027-09-27 | 2027-10-05 | 4417, 4430, 4431 |  | GC1 | 8851864 |
| 4434 | 37200.37400.37500.38800.39800.41200.42200.94000.1335900 | Toilet flooring work | 7.88d | 2027-10-05 | 2027-10-12 | 4418, 4433 |  | GC1 | 8851874 |
| 4435 | 37200.37400.37500.38800.39800.41200.42200.94000.1336000 | Living dinning flooring | 16.88d | 2028-03-28 | 2028-04-11 | 4419, 4428, 4434 |  | GC1 | 8851884 |
| 4436 | 37200.37400.37500.38800.39800.41200.42200.94000.1336100 | Aluminium door-window fixing | 13.5d | 2029-03-23 | 2029-04-04 | 4420, 4432, 4435 |  | GC1 | 8851894 |
| 4437 | 37200.37400.37500.38800.39800.41200.42200.94000.1336200 | Putty primer coat | 6.75d | 2028-04-12 | 2028-04-17 | 4421, 4435 |  | GC1 | 8851904 |
| 4438 | 37200.37400.37500.38800.39800.41200.42200.94000.1336300 | Door shutter fixing | 9d | 2028-08-20 | 2028-08-28 | 4422, 4435 |  | GC1 | 8851914 |
| 4439 | 37200.37400.37500.38800.39800.41200.42200.94000.1336400 | Electrical wiring work | 16.88d | 2029-01-21 | 2029-02-05 | 4423, 4438 |  | GC1 | 8851924 |
| 4440 | 37200.37400.37500.38800.39800.41200.42200.94000.1336500 | Painting 1st coat | 16.88d | 2029-02-05 | 2029-02-20 | 4424, 4437, 4438, 4439 |  | GC1 | 8851934 |
| 4441 | 37200.37400.37500.38800.39800.41200.42200.94000.1336600 | False ceiling | 11.25d | 2029-02-20 | 2029-03-02 | 4425, 4440 |  | GC1 | 8851944 |

| ID | WBS | Task | Duration | Start | Finish | Predecessors | Constraint | Calendar | Unique_Task_ID |
| --- | --- | --- | --- | --- | --- | --- | --- | --- | --- |
| 4442 | 37200.37400.37500.38800.39800.41200.42200.94100 | **33rd Floor** | 764.88d | 2027-04-26 | 2029-04-19 |  | start no earlier than 2027-04-26 | GC1 | 8807914 |
| 4443 | 37200.37400.37500.38800.39800.41200.42200.94100.1336700 | Block Work | 9d | 2027-04-26 | 2027-05-03 | 3925, 4427 |  | GC1 | 8851954 |
| 4444 | 37200.37400.37500.38800.39800.41200.42200.94100.1336800 | Door Frame Fixing | 10.12d | 2027-05-07 | 2027-05-15 | 4428, 4443 |  | GC1 | 8851964 |
| 4445 | 37200.37400.37500.38800.39800.41200.42200.94100.1336900 | Internal Plumbing Works | 11.25d | 2027-05-10 | 2027-05-19 | 4429, 4443 |  | GC1 | 8851974 |
| 4446 | 37200.37400.37500.38800.39800.41200.42200.94100.1337000 | Waterproofing | 13.5d | 2027-06-08 | 2027-06-19 | 4430, 4445 |  | GC1 | 8851984 |
| 4447 | 37200.37400.37500.38800.39800.41200.42200.94100.1337100 | Internal Plaster | 10.12d | 2027-06-20 | 2027-06-28 | 4431, 4444, 4445, 4446 |  | GC1 | 8851994 |
| 4448 | 37200.37400.37500.38800.39800.41200.42200.94100.1337200 | IPS flooring work | 10.12d | 2027-06-29 | 2027-07-07 | 4432, 4444, 4446, 4447 |  | GC1 | 8852004 |
| 4449 | 37200.37400.37500.38800.39800.41200.42200.94100.1337300 | Toilet dado work | 9d | 2027-10-05 | 2027-10-13 | 4433, 4446, 4447 |  | GC1 | 8852014 |
| 4450 | 37200.37400.37500.38800.39800.41200.42200.94100.1337400 | Toilet flooring work | 7.88d | 2027-10-13 | 2027-10-20 | 4434, 4449 |  | GC1 | 8852024 |
| 4451 | 37200.37400.37500.38800.39800.41200.42200.94100.1337500 | Living dinning flooring | 14.62d | 2028-04-12 | 2028-04-24 | 4435, 4444, 4450 |  | GC1 | 8852034 |
| 4452 | 37200.37400.37500.38800.39800.41200.42200.94100.1337600 | Aluminium door-window fixing | 16.88d | 2029-04-04 | 2029-04-19 | 4436, 4448, 4451 |  | GC1 | 8852044 |
| 4453 | 37200.37400.37500.38800.39800.41200.42200.94100.1337700 | Putty primer coat | 6.75d | 2028-04-25 | 2028-04-30 | 4437, 4451 |  | GC1 | 8852054 |
| 4454 | 37200.37400.37500.38800.39800.41200.42200.94100.1337800 | Door shutter fixing | 9d | 2028-08-28 | 2028-09-05 | 4438, 4451 |  | GC1 | 8852064 |
| 4455 | 37200.37400.37500.38800.39800.41200.42200.94100.1337900 | Electrical wiring work | 13.5d | 2029-02-05 | 2029-02-17 | 4439, 4454 |  | GC1 | 8852074 |
| 4456 | 37200.37400.37500.38800.39800.41200.42200.94100.1338000 | Painting 1st coat | 13.5d | 2029-02-20 | 2029-03-04 | 4440, 4453, 4454, 4455 |  | GC1 | 8852084 |
| 4457 | 37200.37400.37500.38800.39800.41200.42200.94100.1338100 | False ceiling | 11.25d | 2029-03-04 | 2029-03-14 | 4441, 4456 |  | GC1 | 8852094 |
| 4458 | 37200.37400.37500.38800.39800.41200.42200.94200 | **34th Floor** | 772.75d | 2027-05-04 | 2029-05-04 |  | start no earlier than 2027-05-04 | GC1 | 8807924 |
| 4459 | 37200.37400.37500.38800.39800.41200.42200.94200.1338200 | Block Work | 9d | 2027-05-04 | 2027-05-11 | 3926, 4443 |  | GC1 | 8852104 |
| 4460 | 37200.37400.37500.38800.39800.41200.42200.94200.1338300 | Door Frame Fixing | 10.12d | 2027-05-16 | 2027-05-24 | 4444, 4459 |  | GC1 | 8852114 |
| 4461 | 37200.37400.37500.38800.39800.41200.42200.94200.1338400 | Internal Plumbing Works | 11.25d | 2027-05-20 | 2027-05-29 | 4445, 4459 |  | GC1 | 8852124 |
| 4462 | 37200.37400.37500.38800.39800.41200.42200.94200.1338500 | Waterproofing | 13.5d | 2027-06-20 | 2027-07-01 | 4446, 4461 |  | GC1 | 8852134 |
| 4463 | 37200.37400.37500.38800.39800.41200.42200.94200.1338600 | Internal Plaster | 10.12d | 2027-07-02 | 2027-07-10 | 4447, 4460, 4461, 4462 |  | GC1 | 8852144 |
| 4464 | 37200.37400.37500.38800.39800.41200.42200.94200.1338700 | IPS flooring work | 10.12d | 2027-07-11 | 2027-07-19 | 4448, 4460, 4462, 4463 |  | GC1 | 8852154 |
| 4465 | 37200.37400.37500.38800.39800.41200.42200.94200.1338800 | Toilet dado work | 9d | 2027-10-13 | 2027-10-21 | 4449, 4462, 4463 |  | GC1 | 8852164 |
| 4466 | 37200.37400.37500.38800.39800.41200.42200.94200.1338900 | Toilet flooring work | 7.88d | 2027-10-21 | 2027-10-28 | 4450, 4465 |  | GC1 | 8852174 |
| 4467 | 37200.37400.37500.38800.39800.41200.42200.94200.1339000 | Living dinning flooring | 13.5d | 2028-04-25 | 2028-05-06 | 4451, 4460, 4466 |  | GC1 | 8852184 |
| 4468 | 37200.37400.37500.38800.39800.41200.42200.94200.1339100 | Aluminium door-window fixing | 16.88d | 2029-04-19 | 2029-05-04 | 4452, 4464, 4467 |  | GC1 | 8852194 |
| 4469 | 37200.37400.37500.38800.39800.41200.42200.94200.1339200 | Putty primer coat | 6.75d | 2028-05-07 | 2028-05-12 | 4453, 4467 |  | GC1 | 8852204 |
| 4470 | 37200.37400.37500.38800.39800.41200.42200.94200.1339300 | Door shutter fixing | 9d | 2028-09-05 | 2028-09-13 | 4454, 4467 |  | GC1 | 8852214 |
| 4471 | 37200.37400.37500.38800.39800.41200.42200.94200.1339400 | Electrical wiring work | 13.5d | 2029-02-17 | 2029-03-01 | 4455, 4470 |  | GC1 | 8852224 |
| 4472 | 37200.37400.37500.38800.39800.41200.42200.94200.1339500 | Painting 1st coat | 13.5d | 2029-03-04 | 2029-03-16 | 4456, 4469, 4470, 4471 |  | GC1 | 8852234 |
| 4473 | 37200.37400.37500.38800.39800.41200.42200.94200.1339600 | False ceiling | 11.25d | 2029-03-16 | 2029-03-26 | 4457, 4472 |  | GC1 | 8852244 |

| ID | WBS | Task | Duration | Start | Finish | Predecessors | Constraint | Calendar | Unique_Task_ID |
| --- | --- | --- | --- | --- | --- | --- | --- | --- | --- |
| 4474 | 37200.37400.37500.38800.39800.41200.42200.94300 | **35th Floor** | 780.62d | 2027-05-12 | 2029-05-19 |  | start no earlier than 2027-05-12 | GC1 | 8807934 |
| 4475 | 37200.37400.37500.38800.39800.41200.42200.94300.1339700 | Block Work | 9d | 2027-05-12 | 2027-05-19 | 3927, 4459 |  | GC1 | 8852254 |
| 4476 | 37200.37400.37500.38800.39800.41200.42200.94300.1339800 | Door Frame Fixing | 10.12d | 2027-05-25 | 2027-06-02 | 4460, 4475 |  | GC1 | 8852264 |
| 4477 | 37200.37400.37500.38800.39800.41200.42200.94300.1339900 | Internal Plumbing Works | 11.25d | 2027-05-30 | 2027-06-08 | 4461, 4475 |  | GC1 | 8852274 |
| 4478 | 37200.37400.37500.38800.39800.41200.42200.94300.1340000 | Waterproofing | 11.25d | 2027-06-09 | 2027-06-18 | 4477 |  | GC1 | 8852284 |
| 4479 | 37200.37400.37500.38800.39800.41200.42200.94300.1340100 | Internal Plaster | 10.12d | 2027-07-24 | 2027-08-01 | 3884FF+135d, 4476FS+0.25d, 4477FS+0.25d, 4478FS+0.25d |  | GC1 | 8852294 |
| 4480 | 37200.37400.37500.38800.39800.41200.42200.94300.1340200 | IPS flooring work | 10.12d | 2027-08-02 | 2027-08-10 | 4464, 4476, 4478, 4479 |  | GC1 | 8852304 |
| 4481 | 37200.37400.37500.38800.39800.41200.42200.94300.1340300 | Toilet dado work | 9d | 2027-10-21 | 2027-10-29 | 4465, 4478, 4479 |  | GC1 | 8852314 |
| 4482 | 37200.37400.37500.38800.39800.41200.42200.94300.1340400 | Toilet flooring work | 7.88d | 2027-10-29 | 2027-12-20 | 4466, 4481 |  | GC1 | 8852324 |
| 4483 | 37200.37400.37500.38800.39800.41200.42200.94300.1340500 | Living dinning flooring | 14.62d | 2028-05-07 | 2028-05-20 | 3884FF+135d, 4467FS+0.25d, 4476FS+0.25d, 4482FS+0.25d |  | GC1 | 8852334 |
| 4484 | 37200.37400.37500.38800.39800.41200.42200.94300.1340600 | Aluminium door-window fixing | 16.88d | 2029-05-04 | 2029-05-19 | 4468, 4480, 4483 |  | GC1 | 8852344 |
| 4485 | 37200.37400.37500.38800.39800.41200.42200.94300.1340700 | Putty primer coat | 6.75d | 2028-05-20 | 2028-05-26 | 4469, 4483 |  | GC1 | 8852354 |
| 4486 | 37200.37400.37500.38800.39800.41200.42200.94300.1340800 | Door shutter fixing | 9d | 2028-09-13 | 2028-09-21 | 4470, 4483 |  | GC1 | 8852364 |
| 4487 | 37200.37400.37500.38800.39800.41200.42200.94300.1340900 | Electrical wiring work | 13.5d | 2029-03-01 | 2029-03-13 | 4471, 4486 |  | GC1 | 8852374 |
| 4488 | 37200.37400.37500.38800.39800.41200.42200.94300.1341000 | Painting 1st coat | 13.5d | 2029-03-16 | 2029-03-28 | 4472, 4485, 4486, 4487 |  | GC1 | 8852384 |
| 4489 | 37200.37400.37500.38800.39800.41200.42200.94300.1341100 | False ceiling | 11.25d | 2029-03-28 | 2029-04-07 | 4488FS+0.25d |  | GC1 | 8852394 |
| 4490 | 37200.37400.37500.38800.39800.41200.190900 | **Terrace Finishing** | 90d | 2027-04-04 | 2027-06-22 |  | start no earlier than 2027-04-04 | GC1 | 8810754 |
| 4491 | 37200.37400.37500.38800.39800.41200.190900.581400 | Terrace waterproofing | 45d | 2027-04-04 | 2027-05-13 | 3884 |  | GC1 | 8825674 |
| 4492 | 37200.37400.37500.38800.39800.41200.190900.581500 | Terrace finishing | 45d | 2027-05-14 | 2027-06-22 | 4491 |  | GC1 | 8825684 |
| 4493 | 37200.37400.37500.38800.39800.41200.99700 | **Common Area Finishing** | 849d | 2027-05-14 | 2029-07-21 |  | start no earlier than 2027-05-14 | GC1 | 8808084 |
| 4494 | 37200.37400.37500.38800.39800.41200.99700.581600 | Block Work | 84.38d | 2027-05-14 | 2027-07-27 | 3889 |  | GC1 | 8825694 |
| 4495 | 37200.37400.37500.38800.39800.41200.99700.581700 | Tile Cladding & Lift Lobby Granite Wall | 135d | 2027-07-03 | 2027-10-30 | 4500SS+33.75d |  | GC1 | 8825704 |
| 4496 | 37200.37400.37500.38800.39800.41200.99700.581800 | Staircase railing fixing | 101.25d | 2027-10-16 | 2028-02-27 | 4498SS+33.75d, 4497SS+33.75d |  | GC1 | 8825714 |
| 4497 | 37200.37400.37500.38800.39800.41200.99700.581900 | Main staircase flooring | 101.25d | 2027-09-16 | 2028-01-28 | 4498SS+16.88d |  | GC1 | 8825724 |
| 4498 | 37200.37400.37500.38800.39800.41200.99700.582000 | Fire staircase flooring | 101.25d | 2027-09-01 | 2028-01-13 | 4495SS+16.88d, 4502SS+33.75d |  | GC1 | 8825734 |
| 4499 | 37200.37400.37500.38800.39800.41200.99700.582100 | Fire door work | 67.5d | 2027-10-16 | 2028-01-28 | 4497SS+33.75d, 4498SS+33.75d |  | GC1 | 8825744 |
| 4500 | 37200.37400.37500.38800.39800.41200.99700.582200 | Electrical wiring work | 135d | 2027-06-03 | 2027-09-30 | 4494SS+22.5d |  | GC1 | 8825754 |
| 4501 | 37200.37400.37500.38800.39800.41200.99700.582300 | Lobby flooring | 135d | 2027-06-06 | 2027-10-04 | 4500SS+4.12d |  | GC1 | 8825764 |
| 4502 | 37200.37400.37500.38800.39800.41200.99700.582400 | Ceiling & wall putty-primer | 123.75d | 2027-08-02 | 2028-01-03 | 4495SS+33.75d |  | GC1 | 8825774 |
| 4503 | 37200.37400.37500.38800.39800.41200.99700.582500 | Ceiling & wall painting | 112.5d | 2029-04-07 | 2029-07-16 | 4502SS+22.5d, 4489 |  | GC1 | 8825784 |
| 4504 | 37200.37400.37500.38800.39800.41200.99700.582600 | Light fixture supply & installation | 50.62d | 2029-06-06 | 2029-07-21 | 4503SS+67.5d |  | GC1 | 8825794 |

| ID | WBS | Task | Duration | Start | Finish | Predecessors | Constraint | Calendar | Unique_Task_ID |
| --- | --- | --- | --- | --- | --- | --- | --- | --- | --- |
| 4505 | 37200.37400.37500.38800.39800.41200.47200 | **Balcony Glass Railing** | 78.75d | 2027-12-25 | 2028-03-03 |  | start no earlier than 2027-12-25 | GC1 | 8806134 |
| 4506 | 37200.37400.37500.38800.39800.41200.47200.582700 | 1st Floor | 2.25d | 2027-12-25 | 2027-12-26 | 4574 |  | GC1 | 8825804 |
| 4507 | 37200.37400.37500.38800.39800.41200.47200.582800 | 2nd Floor | 2.25d | 2027-12-27 | 2027-12-28 | 4506 |  | GC1 | 8825814 |
| 4508 | 37200.37400.37500.38800.39800.41200.47200.582900 | 3rd Floor | 2.25d | 2027-12-29 | 2027-12-30 | 4507 |  | GC1 | 8825824 |
| 4509 | 37200.37400.37500.38800.39800.41200.47200.583000 | 4th Floor | 2.25d | 2027-12-31 | 2028-01-01 | 4508 |  | GC1 | 8825834 |
| 4510 | 37200.37400.37500.38800.39800.41200.47200.583100 | 5th Floor | 2.25d | 2028-01-02 | 2028-01-03 | 4509 |  | GC1 | 8825844 |
| 4511 | 37200.37400.37500.38800.39800.41200.47200.583200 | 6th Floor | 2.25d | 2028-01-04 | 2028-01-05 | 4510 |  | GC1 | 8825854 |
| 4512 | 37200.37400.37500.38800.39800.41200.47200.583300 | 7th Floor | 2.25d | 2028-01-06 | 2028-01-07 | 4511 |  | GC1 | 8825864 |
| 4513 | 37200.37400.37500.38800.39800.41200.47200.583400 | 8th Floor | 2.25d | 2028-01-08 | 2028-01-09 | 4512 |  | GC1 | 8825874 |
| 4514 | 37200.37400.37500.38800.39800.41200.47200.583500 | 9th Floor | 2.25d | 2028-01-10 | 2028-01-11 | 4513 |  | GC1 | 8825884 |
| 4515 | 37200.37400.37500.38800.39800.41200.47200.583600 | 10th Floor | 2.25d | 2028-01-12 | 2028-01-13 | 4514 |  | GC1 | 8825894 |
| 4516 | 37200.37400.37500.38800.39800.41200.47200.583700 | 11th Floor | 2.25d | 2028-01-14 | 2028-01-15 | 4515 |  | GC1 | 8825904 |
| 4517 | 37200.37400.37500.38800.39800.41200.47200.583800 | 12th Floor | 2.25d | 2028-01-16 | 2028-01-17 | 4516 |  | GC1 | 8825914 |
| 4518 | 37200.37400.37500.38800.39800.41200.47200.583900 | 13th Floor | 2.25d | 2028-01-18 | 2028-01-19 | 4517 |  | GC1 | 8825924 |
| 4519 | 37200.37400.37500.38800.39800.41200.47200.584000 | 14th Floor | 2.25d | 2028-01-20 | 2028-01-21 | 4518 |  | GC1 | 8825934 |
| 4520 | 37200.37400.37500.38800.39800.41200.47200.584100 | 15th Floor | 2.25d | 2028-01-22 | 2028-01-23 | 4519 |  | GC1 | 8825944 |
| 4521 | 37200.37400.37500.38800.39800.41200.47200.584200 | 16th Floor | 2.25d | 2028-01-24 | 2028-01-25 | 4520 |  | GC1 | 8825954 |
| 4522 | 37200.37400.37500.38800.39800.41200.47200.584300 | 17th Floor | 2.25d | 2028-01-26 | 2028-01-27 | 4521 |  | GC1 | 8825964 |
| 4523 | 37200.37400.37500.38800.39800.41200.47200.584400 | 18th Floor | 2.25d | 2028-01-28 | 2028-01-29 | 4522 |  | GC1 | 8825974 |
| 4524 | 37200.37400.37500.38800.39800.41200.47200.584500 | 19th Floor | 2.25d | 2028-01-30 | 2028-01-31 | 4523 |  | GC1 | 8825984 |
| 4525 | 37200.37400.37500.38800.39800.41200.47200.584600 | 20th Floor | 2.25d | 2028-02-01 | 2028-02-02 | 4524 |  | GC1 | 8825994 |
| 4526 | 37200.37400.37500.38800.39800.41200.47200.584700 | 21st Floor | 2.25d | 2028-02-03 | 2028-02-04 | 4525 |  | GC1 | 8826004 |
| 4527 | 37200.37400.37500.38800.39800.41200.47200.584800 | 22nd Floor | 2.25d | 2028-02-05 | 2028-02-06 | 4526 |  | GC1 | 8826014 |
| 4528 | 37200.37400.37500.38800.39800.41200.47200.584900 | 23rd Floor | 2.25d | 2028-02-07 | 2028-02-08 | 4527 |  | GC1 | 8826024 |
| 4529 | 37200.37400.37500.38800.39800.41200.47200.585000 | 24th Floor | 2.25d | 2028-02-09 | 2028-02-10 | 4528 |  | GC1 | 8826034 |
| 4530 | 37200.37400.37500.38800.39800.41200.47200.585100 | 25th Floor | 2.25d | 2028-02-11 | 2028-02-12 | 4529 |  | GC1 | 8826044 |
| 4531 | 37200.37400.37500.38800.39800.41200.47200.585200 | 26th Floor | 2.25d | 2028-02-13 | 2028-02-14 | 4530 |  | GC1 | 8826054 |
| 4532 | 37200.37400.37500.38800.39800.41200.47200.585300 | 27th Floor | 2.25d | 2028-02-15 | 2028-02-16 | 4531 |  | GC1 | 8826064 |
| 4533 | 37200.37400.37500.38800.39800.41200.47200.585400 | 28th Floor | 2.25d | 2028-02-17 | 2028-02-18 | 4532 |  | GC1 | 8826074 |
| 4534 | 37200.37400.37500.38800.39800.41200.47200.585500 | 29th Floor | 2.25d | 2028-02-19 | 2028-02-20 | 4533 |  | GC1 | 8826084 |
| 4535 | 37200.37400.37500.38800.39800.41200.47200.585600 | 30th Floor | 2.25d | 2028-02-21 | 2028-02-22 | 4534 |  | GC1 | 8826094 |
| 4536 | 37200.37400.37500.38800.39800.41200.47200.585700 | 31st Floor | 2.25d | 2028-02-23 | 2028-02-24 | 4535 |  | GC1 | 8826104 |
| 4537 | 37200.37400.37500.38800.39800.41200.47200.585800 | 32nd Floor | 2.25d | 2028-02-25 | 2028-02-26 | 4536 |  | GC1 | 8826114 |
| 4538 | 37200.37400.37500.38800.39800.41200.47200.585900 | 33rd Floor | 2.25d | 2028-02-27 | 2028-02-28 | 4537 |  | GC1 | 8826124 |
| 4539 | 37200.37400.37500.38800.39800.41200.47200.586000 | 34th Floor | 2.25d | 2028-02-29 | 2028-03-01 | 4538 |  | GC1 | 8826134 |
| 4540 | 37200.37400.37500.38800.39800.41200.47200.586100 | 35th Floor | 2.25d | 2028-03-02 | 2028-03-03 | 4539 |  | GC1 | 8826144 |

| ID | WBS | Task | Duration | Start | Finish | Predecessors | Constraint | Calendar | Unique_Task_ID |
| --- | --- | --- | --- | --- | --- | --- | --- | --- | --- |
| 4541 | 37200.37400.37500.38800.96100 | **MEP work** | 524.5d | 2027-05-14 | 2028-10-06 |  | start no earlier than 2027-05-14 | GC1 | 8807944 |
| 4542 | 37200.37400.37500.38800.96100.97400 | **Electrical work** | 309.38d | 2027-05-14 | 2028-03-28 |  | start no earlier than 2027-05-14 | GC1 | 8808014 |
| 4543 | 37200.37400.37500.38800.96100.97400.365100 | Cable Tray | 101.25d | 2027-05-14 | 2027-08-11 | 3889 |  | GC1 | 8815284 |
| 4544 | 37200.37400.37500.38800.96100.97400.365200 | Cable, main & sub main | 135d | 2027-06-28 | 2027-10-25 | 4543SS+50.62d |  | GC1 | 8815294 |
| 4545 | 37200.37400.37500.38800.96100.97400.365300 | LT panel & DB | 135d | 2027-08-22 | 2028-02-02 | 4543FS+11.25d |  | GC1 | 8815304 |
| 4546 | 37200.37400.37500.38800.96100.97400.365400 | Rising main | 135d | 2027-10-11 | 2028-03-23 | 4543FS+67.5d |  | GC1 | 8815314 |
| 4547 | 37200.37400.37500.38800.96100.97400.365500 | EARTHING Works | 67.5d | 2027-08-27 | 2027-10-25 | 4543FS+16.88d |  | GC1 | 8815324 |
| 4548 | 37200.37400.37500.38800.96100.97400.365600 | Advance lightening protection | 67.5d | 2027-06-23 | 2027-08-21 | 4492 |  | GC1 | 8815334 |
| 4549 | 37200.37400.37500.38800.96100.97400.365700 | Inverter | 39.38d | 2027-10-26 | 2028-01-13 | 4547 |  | GC1 | 8815344 |
| 4550 | 37200.37400.37500.38800.96100.97400.365800 | Energy meter | 67.5d | 2027-10-26 | 2028-02-07 | 4544 |  | GC1 | 8815354 |
| 4551 | 37200.37400.37500.38800.96100.97400.365900 | Exhast fan | 67.5d | 2027-10-31 | 2028-02-12 | 4550FF+5.62d |  | GC1 | 8815364 |
| 4552 | 37200.37400.37500.38800.96100.97400.366000 | FTTH | 67.5d | 2027-10-16 | 2028-01-28 | 4547FS-11.25d |  | GC1 | 8815374 |
| 4553 | 37200.37400.37500.38800.96100.97400.366100 | Security System - FA & PA | 61.88d | 2027-10-21 | 2028-01-28 | 4552FF |  | GC1 | 8815384 |
| 4554 | 37200.37400.37500.38800.96100.97400.366200 | Solar water heater | 67.5d | 2028-01-29 | 2028-03-28 | 4553 |  | GC1 | 8815394 |
| 4555 | 37200.37400.37500.38800.96100.129500 | **Plumbing work** | 349.25d | 2027-05-14 | 2028-05-03 |  | start no earlier than 2027-05-14 | GC1 | 8808384 |
| 4556 | 37200.37400.37500.38800.96100.129500.366300 | Terrace looping | 50.62d | 2027-05-14 | 2027-06-27 | 4491 |  | GC1 | 8815404 |
| 4557 | 37200.37400.37500.38800.96100.129500.366400 | Shaft Plumbing | 135d | 2027-06-28 | 2027-10-25 | 4556 |  | GC1 | 8815414 |
| 4558 | 37200.37400.37500.38800.96100.129500.366500 | CP sanitary fixture supply | 84.38d | 2028-02-18 | 2028-05-03 | 4479, 4482FS+67.5d |  | GC1 | 8815424 |
| 4559 | 37200.37400.37500.38800.96100.129500.366600 | Cold & flushing water supply | 101.25d | 2027-10-01 | 2028-02-12 | 4495SS+101.25d |  | GC1 | 8815434 |
| 4560 | 37200.37400.37500.38800.96100.129500.366700 | Misc work | 33.75d | 2028-02-03 | 2028-03-03 | 4559FS-11.25d |  | GC1 | 8815444 |
| 4561 | 37200.37400.37500.38800.96100.132300 | **Fire fighting work** | 236.25d | 2027-05-14 | 2028-01-23 |  | start no earlier than 2027-05-14 | GC1 | 8808564 |
| 4562 | 37200.37400.37500.38800.96100.132300.366800 | Fire hydrant work | 67.5d | 2027-07-13 | 2027-09-10 | 4495SS+11.25d |  | GC1 | 8815454 |
| 4563 | 37200.37400.37500.38800.96100.132300.366900 | Sprinkler & piping work | 67.5d | 2027-10-11 | 2028-01-23 | 4562FS+33.75d |  | GC1 | 8815464 |
| 4564 | 37200.37400.37500.38800.96100.132300.367000 | Shaft Downtake works | 101.25d | 2027-05-14 | 2027-08-11 | 4491 |  | GC1 | 8815474 |
| 4565 | 37200.37400.37500.38800.96100.132300.367100 | Connection to pump room | 33.75d | 2027-08-12 | 2027-09-10 | 4564 |  | GC1 | 8815484 |

| ID | WBS | Task | Duration | Start | Finish | Predecessors | Complete | Constraint | Calendar | Unique_Task_ID |
| --- | --- | --- | --- | --- | --- | --- | --- | --- | --- | --- |
| 4566 | 37200.37400.37500.38800.96100.187600 | **Lift work** | 191.25d | 2027-05-14 | 2027-10-30 |  |  | start no earlier than 2027-05-14 | GC1 | 8810664 |
| 4567 | 37200.37400.37500.38800.96100.187600.367200 | Lift Shaft Handover | 45d | 2027-05-14 | 2027-06-22 | 3889 |  |  | GC1 | 8815494 |
| 4568 | 37200.37400.37500.38800.96100.187600.367300 | Lift installation work | 50.62d | 2027-06-23 | 2027-08-06 | 4567 |  |  | GC1 | 8815504 |
| 4569 | 37200.37400.37500.38800.96100.187600.367400 | Lift testing and commissioning | 95.62d | 2027-08-07 | 2027-10-30 | 4568 |  |  | GC1 | 8815514 |
| 4570 | 37200.37400.37500.38800.96100.193500 | **AC work** | 112.5d | 2028-06-28 | 2028-10-06 |  |  | start no earlier than 2028-06-28 | GC1 | 8810824 |
| 4571 | 37200.37400.37500.38800.96100.193500.367500 | Split AC | 112.5d | 2028-06-28 | 2028-10-06 | 4587FS-33.75d |  |  | GC1 | 8815524 |
| 4572 | 37200.37400.37500.38800.140400 | **Tower Completion** | 1603.12d | 2023-11-28 | 2028-03-01 |  | 69% | start no earlier than 2023-11-28 | GC1 | 8808424 |
| 4573 | 37200.37400.37500.38800.140400.274800 | SURFACE PREPARATION | 90d | 2027-05-14 | 2027-08-01 | 3927FS+2.25d |  |  | GC1 | 8811644 |
| 4574 | 37200.37400.37500.38800.140400.274900 | External Painting | 112.5d | 2027-08-02 | 2027-12-24 | 4573 |  |  | GC1 | 8811654 |
| 4575 | 37200.37400.37500.38800.140400.231100 | Waterproofing | 880.88d | 2023-11-28 | 2028-03-01 | 4574FS-1526.62d | 91% |  | GC1 | 8811664 |
| 4576 | 37200.37400.37500.38800.140400.275000 | Misc. work | 67.5d | 2027-12-25 | 2028-02-22 | 4574 |  |  | GC1 | 8811674 |
| 4577 | 37200.37400.37500.38800.192300 | **Basement lobby** | 67.5d | 2027-10-04 | 2028-01-17 |  |  | start no earlier than 2027-10-04 | GC1 | 8810914 |
| 4578 | 37200.37400.37500.38800.192300.275100 | Basement lobby | 67.5d | 2027-10-04 | 2028-01-17 | 4501 |  |  | GC1 | 8811684 |
| 4579 | 37200.37400.37500.38800.106300 | **Post OC activities** | 538.25d | 2028-06-28 | 2029-10-19 |  |  | start no earlier than 2028-06-28 | GC1 | 8808284 |
| 4580 | 37200.37400.37500.38800.106300.275200 | Wooden Flooring | 202.5d | 2028-06-28 | 2028-12-25 | 4587FS-33.75d |  |  | GC1 | 8811694 |
| 4581 | 37200.37400.37500.38800.106300.275300 | Fixtures SITC | 135d | 2028-06-28 | 2028-10-26 | 4587FS-33.75d, 4558 |  |  | GC1 | 8811704 |
| 4582 | 37200.37400.37500.38800.106300.275400 | Balcony Flooring & Kitchen Counter | 202.5d | 2028-06-28 | 2028-12-25 | 4587FS-33.75d |  |  | GC1 | 8811714 |
| 4583 | 37200.37400.37500.38800.106300.275500 | Misc. Fixtures And Fittings | 135d | 2029-03-13 | 2029-07-11 | 4487 |  |  | GC1 | 8811724 |
| 4584 | 37200.37400.37500.38800.106300.275600 | Modular Kitchen | 202.5d | 2028-06-28 | 2028-12-25 | 4580SS |  |  | GC1 | 8811734 |
| 4585 | 37200.37400.37500.38800.106300.275700 | Final Coat Paint | 101.25d | 2029-07-21 | 2029-10-19 | 4587FS-16.88d, 4504 |  |  | GC1 | 8811744 |
| 4586 | 37200.37400.37500.38800.258300 | OC Application/Readiness | 1.12d | 2028-03-29 | 2028-03-30 | 4540FS+0.25d, 4545FS+0.25d, 4546FS+0.25d, 4548FS+0.25d, 4549FS+0.25d, 4550FS+0.25d, 4551FS+0.25d, 4553FS+0.25d, 4554FS+0.25d, 4557FS+0.25d, 4560FS+0.25d, 4563FS+0.25d, 4565FS+0.25d, 4569FS+0.25d, 4576FS+0.25d, 4575FS+0.25d, 4578FS+0.25d |  |  | GC1 | 8811074 |
| 4587 | 37200.37400.37500.38800.258400 | OC Receipt | 67.5d | 2028-05-29 | 2028-07-28 | 4586FS+67.5d |  |  | GC1 | 8811084 |
| 4588 | 37200.37400.37500.38800.258500 | Offer To Possession | 12.38d | 2029-10-19 | 2029-10-30 | 4660FF-33.75d, 4580, 4581, 4582, 4583, 4584, 4585, 4571 |  |  | GC1 | 8811094 |
| 4589 | 37200.37400.37500.102300 | **External Infrastructure** | 591.75d | 2027-04-04 | 2028-10-25 |  |  | start no earlier than 2027-04-04 | GC1 | 8808154 |
| 4590 | 37200.37400.37500.102300.192200 | **External Firefightning Work** | 236.25d | 2027-04-24 | 2028-01-03 |  |  | start no earlier than 2027-04-24 | GC1 | 8810924 |
| 4591 | 37200.37400.37500.102300.192200.275800 | Excavation, Pipe Laying, Hyderent errection , Fitting , Testing & Commissioning | 236.25d | 2027-04-24 | 2028-01-03 | 4598FF |  |  | GC1 | 8811754 |

| ID | WBS | Task | Duration | Start | Finish | Predecessors | Complete | Constraint | Calendar | Unique_Task_ID |
| --- | --- | --- | --- | --- | --- | --- | --- | --- | --- | --- |
| 4592 | 37200.37400.37500.102300.106200 | **External Plumbing** | 270d | 2027-04-04 | 2028-01-13 |  |  | start no earlier than 2027-04-04 | GC1 | 8808294 |
| 4593 | 37200.37400.37500.102300.106200.193400 | **External Plumbing - Sewer** | 236.25d | 2027-04-04 | 2027-10-30 |  |  | start no earlier than 2027-04-04 | GC1 | 8810764 |
| 4594 | 37200.37400.37500.102300.106200.193400.367600 | Excavation, Pipe Laying, Filling , Testing & Commissioning | 236.25d | 2027-04-04 | 2027-10-30 | 3884 |  |  | GC1 | 8815534 |
| 4595 | 37200.37400.37500.102300.106200.193300 | **External Plumbing - Watersupply** | 236.25d | 2027-05-04 | 2028-01-13 |  |  | start no earlier than 2027-05-04 | GC1 | 8810774 |
| 4596 | 37200.37400.37500.102300.106200.193300.367700 | Excavation, Pipe Laying, Filling , Testing & Commissioning | 236.25d | 2027-05-04 | 2028-01-13 | 4591FF+11.25d |  |  | GC1 | 8815544 |
| 4597 | 37200.37400.37500.102300.106200.193200 | **External Plumbing - Storm Water** | 236.25d | 2027-04-24 | 2028-01-03 |  |  | start no earlier than 2027-04-24 | GC1 | 8810784 |
| 4598 | 37200.37400.37500.102300.106200.193200.367800 | Excavation, PCC, BBM , IPS, Cover fixing, Curing | 236.25d | 2027-04-24 | 2028-01-03 | 4594SS+22.5d |  |  | GC1 | 8815554 |
| 4599 | 37200.37400.37500.102300.106200.193100 | **Rain water Harvesting work** | 236.25d | 2027-04-24 | 2028-01-03 |  |  | start no earlier than 2027-04-24 | GC1 | 8810794 |
| 4600 | 37200.37400.37500.102300.106200.193100.367900 | Rain water Harvesting work | 236.25d | 2027-04-24 | 2028-01-03 | 4598FF |  |  | GC1 | 8815564 |
| 4601 | 37200.37400.37500.102300.129700 | **External Electrical Work** | 558d | 2027-05-04 | 2028-10-25 |  |  | start no earlier than 2027-05-04 | GC1 | 8808334 |
| 4602 | 37200.37400.37500.102300.129700.275900 | HV INSTALLATION | 101.25d | 2027-05-04 | 2027-08-01 | 3884FS+33.75d |  |  | GC1 | 8811764 |
| 4603 | 37200.37400.37500.102300.129700.276000 | HT CABLES & LT CONTROL CABLES | 135d | 2027-08-02 | 2028-01-13 | 4602 |  |  | GC1 | 8811774 |
| 4604 | 37200.37400.37500.102300.129700.276100 | Street Light Fixing | 236.25d | 2027-10-16 | 2028-06-26 | 4603SS+84.38d, 929, 1846, 2763 |  |  | GC1 | 8811784 |
| 4605 | 37200.37400.37500.102300.129700.276200 | External Road | 101.25d | 2028-07-27 | 2028-10-24 | 4608FF, 12 |  |  | GC1 | 8811794 |
| 4606 | 37200.37400.37500.102300.129700.276300 | Completion of External Infrastructure | 1.12d | 2028-10-25 | 2028-10-25 | 4607, 4605, 4596, 4600 |  |  | GC1 | 8811804 |
| 4607 | 37200.37400.37500.102300.258600 | Soft Scape Work | 258.75d | 2028-02-08 | 2028-09-24 | 4604FF+101.25d |  |  | GC1 | 8811104 |
| 4608 | 37200.37400.37500.102300.258700 | Hard Scape Work | 286.88d | 2028-02-13 | 2028-10-24 | 4607FF+33.75d |  |  | GC1 | 8811114 |
| 4609 | 37200.37400.37500.94400 | **NTA works** | 1307.25d | 2024-12-26 | 2028-07-10 |  | 15% | start no earlier than 2024-12-26 | GC1 | 8806184 |
| 4610 | 37200.37400.37500.94400.202800 | Excavation | 101.06d | 2024-12-26 | 2025-12-30 | 3677FS-108d | 95% | start no earlier than 2024-12-26 | GC1 | 8811124 |
| 4611 | 37200.37400.37500.94400.258800 | Backfilling | 10.12d | 2025-12-27 | 2026-01-04 | 4624SS-67.5d |  |  | GC1 | 8811134 |
| 4612 | 37200.37400.37500.94400.258900 | Boundary Wall | 7.88d | 2026-01-05 | 2026-01-11 | 4611 |  |  | GC1 | 8811144 |
| 4613 | 37200.37400.37500.94400.102900 | **RCC Works - Nontower area** | 1059.75d | 2025-01-25 | 2028-01-02 |  | 14% | start no earlier than 2025-01-25 | GC1 | 8808144 |
| 4614 | 37200.37400.37500.94400.102900.109100 | **NTA Raft/Footing** | 590.62d | 2025-01-25 | 2026-08-13 |  | 41% | start no earlier than 2025-01-25 | GC1 | 8808374 |
| 4615 | 37200.37400.37500.94400.102900.109100.368000 | Anti Termite | 16.88d | 2026-07-30 | 2026-08-13 | 4619SS+500.62d |  |  | GC1 | 8815574 |
| 4616 | 37200.37400.37500.94400.102900.109100.208700 | PCC | 111.94d | 2025-01-25 | 2026-01-23 | 4610FF+22.5d, 1851FS-22.5d | 73% |  | GC1 | 8815584 |
| 4617 | 37200.37400.37500.94400.102900.109100.208600 | Reinforcement | 135d | 2025-03-21 | 2026-03-13 | 4616SS+61.88d | 36% | start no earlier than 2025-03-21 | GC1 | 8815594 |
| 4618 | 37200.37400.37500.94400.102900.109100.208500 | Shuttering | 135d | 2025-03-31 | 2026-03-24 | 4617FF+11.25d | 31% |  | GC1 | 8815604 |
| 4619 | 37200.37400.37500.94400.102900.109100.208400 | Concreting | 99d | 2025-03-31 | 2026-03-26 | 4618FF+2.25d | 30% |  | GC1 | 8815614 |

| ID | WBS | Task | Duration | Start | Finish | Predecessors | Complete | Constraint | Calendar | Unique_Task_ID |
| --- | --- | --- | --- | --- | --- | --- | --- | --- | --- | --- |
| 4620 | 37200.37400.37500.94400.102900.132100 | **Retaining wall** | 514.12d | 2025-03-14 | 2026-07-24 |  | 14% | start no earlier than 2025-03-14 | GC1 | 8810424 |
| 4621 | 37200.37400.37500.94400.102900.132100.208300 | Reinforcement | 236.25d | 2025-03-14 | 2026-05-24 | 4616SS+60d | 29% | start no earlier than 2025-03-14 | GC1 | 8815624 |
| 4622 | 37200.37400.37500.94400.102900.132100.208200 | Shuttering | 236.25d | 2025-09-11 | 2026-06-27 | 4621SS+5.62d | 14% | start no earlier than 2025-09-11 | GC1 | 8815634 |
| 4623 | 37200.37400.37500.94400.102900.132100.208100 | Concreting | 236.25d | 2025-09-12 | 2026-06-30 | 4622FF+3.38d | 13% |  | GC1 | 8815644 |
| 4624 | 37200.37400.37500.94400.102900.132100.368100 | Retaining wall waterproofing | 236.25d | 2025-12-27 | 2026-07-24 | 4623SS+7.88d |  | must start on 2025-10-03 | GC1 | 8815654 |
| 4625 | 37200.37400.37500.94400.102900.132000 | **NTA Basement B2 slab** | 526.5d | 2025-03-11 | 2026-08-01 |  | 26% | start no earlier than 2025-03-11 | GC1 | 8810454 |
| 4626 | 37200.37400.37500.94400.102900.132000.208000 | Reinforcement | 303.75d | 2025-03-11 | 2026-06-26 | 4623SS-181.12d | 32% | must start on 2025-10-01 | GC1 | 8815664 |
| 4627 | 37200.37400.37500.94400.102900.132000.207900 | Shuttering | 303.75d | 2025-09-16 | 2026-07-27 | 4626FF-3.38d | 21% | must start on 2025-10-06 | GC1 | 8815674 |
| 4628 | 37200.37400.37500.94400.102900.132000.207800 | Concreting | 303.75d | 2025-09-03 | 2026-08-01 | 4627FF+5.62d | 25% | must start on 2025-10-03 | GC1 | 8815684 |
| 4629 | 37200.37400.37500.94400.102900.188300 | **NTA Basement B1 slab** | 219.38d | 2027-01-01 | 2027-07-14 |  |  | start no earlier than 2027-01-01 | GC1 | 8810444 |
| 4630 | 37200.37400.37500.94400.102900.188300.368200 | Reinforcement | 213.75d | 2027-01-04 | 2027-07-12 | 4628FF+337.5d |  |  | GC1 | 8815694 |
| 4631 | 37200.37400.37500.94400.102900.188300.368300 | Shuttering | 213.75d | 2027-01-01 | 2027-07-09 | 4630FF-3.38d |  |  | GC1 | 8815704 |
| 4632 | 37200.37400.37500.94400.102900.188300.368400 | Concreting | 213.75d | 2027-01-06 | 2027-07-14 | 4631FF+5.62d |  |  | GC1 | 8815714 |
| 4633 | 37200.37400.37500.94400.102900.188400 | **NTA Podium slab** | 309.38d | 2027-02-17 | 2028-01-02 |  |  | start no earlier than 2027-02-17 | GC1 | 8810434 |
| 4634 | 37200.37400.37500.94400.102900.188400.368500 | Reinforcement | 303.75d | 2027-02-20 | 2027-12-31 | 4632SS+50.62d |  |  | GC1 | 8815724 |
| 4635 | 37200.37400.37500.94400.102900.188400.368600 | Shuttering | 303.75d | 2027-02-17 | 2027-12-28 | 4634FF-3.38d |  |  | GC1 | 8815734 |
| 4636 | 37200.37400.37500.94400.102900.188400.368700 | Concreting | 303.75d | 2027-02-22 | 2028-01-02 | 4612FS+0.25d, 4635FF+5.62d, 221FF |  |  | GC1 | 8815744 |
| 4637 | 37200.37400.37500.94400.143500 | **Basement and Podium Block work and Plaster finishing** | 450d | 2026-04-07 | 2027-06-25 |  |  | start no earlier than 2026-04-07 | GC1 | 8808414 |
| 4638 | 37200.37400.37500.94400.143500.276400 | Brick work/plaster | 112.5d | 2026-04-07 | 2026-07-15 | 4632SS+33.75d |  | must start on 2026-04-07 | GC1 | 8811814 |
| 4639 | 37200.37400.37500.94400.143500.276500 | Finishing work-White Goods | 67.5d | 2026-07-16 | 2026-09-13 | 4638 |  |  | GC1 | 8811824 |
| 4640 | 37200.37400.37500.94400.143500.276600 | Painting (1st Coat) | 67.5d | 2026-07-16 | 2026-09-13 | 4638 |  |  | GC1 | 8811834 |
| 4641 | 37200.37400.37500.94400.143500.276700 | Vacuum Dewatered Flooring | 236.25d | 2026-10-14 | 2027-06-25 | 4638FF+337.5d |  |  | GC1 | 8811844 |
| 4642 | 37200.37400.37500.94400.104900 | **Basement and Podium Services** | 1249.96d | 2025-02-14 | 2028-07-10 |  | 18% | start no earlier than 2025-02-14 | GC1 | 8808204 |
| 4643 | 37200.37400.37500.94400.104900.222600 | Waterproofing | 470.25d | 2025-02-14 | 2028-01-23 | 4632FS-893.34d | 64% |  | GC1 | 8811854 |
| 4644 | 37200.37400.37500.94400.104900.276800 | Plumbing | 236.25d | 2027-02-16 | 2027-09-13 | 4638SS+303.75d |  |  | GC1 | 8811864 |
| 4645 | 37200.37400.37500.94400.104900.276900 | Fire fighting | 236.25d | 2027-02-16 | 2027-09-13 | 4638SS+303.75d |  |  | GC1 | 8811874 |
| 4646 | 37200.37400.37500.94400.104900.277000 | Ventilation | 202.5d | 2027-02-16 | 2027-08-14 | 4638SS+303.75d |  |  | GC1 | 8811884 |
| 4647 | 37200.37400.37500.94400.104900.277100 | Electrification | 303.75d | 2027-03-18 | 2028-01-26 | 4645SS+33.75d |  |  | GC1 | 8811894 |
| 4648 | 37200.37400.37500.94400.104900.277200 | Security installations | 101.25d | 2028-01-27 | 2028-04-25 | 4647 |  |  | GC1 | 8811904 |
| 4649 | 37200.37400.37500.94400.104900.277300 | Stack parking (no of car parks) | 135d | 2028-03-12 | 2028-07-09 | 4647FS+50.62d |  |  | GC1 | 8811914 |
| 4650 | 37200.37400.37500.94400.104900.277400 | Completion of NTA | 1.12d | 2028-07-10 | 2028-07-10 | 4639, 4643, 4644, 4646, 4648, 4649 |  |  | GC1 | 8811924 |

| ID | WBS | Task | Duration | Start | Finish | Predecessors | Complete | Constraint | Calendar | Unique_Task_ID |
| --- | --- | --- | --- | --- | --- | --- | --- | --- | --- | --- |
| 4651 | 37200.37400.37500.125500 | **Club House** | 551.25d | 2027-09-13 | 2029-02-28 |  |  | start no earlier than 2027-09-13 | GC1 | 8808354 |
| 4652 | 37200.37400.37500.125500.259000 | Structure Work | 101.25d | 2027-09-13 | 2028-01-25 | 4632FS+67.5d |  |  | GC1 | 8811154 |
| 4653 | 37200.37400.37500.125500.259100 | Finishing Work | 337.5d | 2028-03-11 | 2029-01-04 | 4652FS+50.62d |  |  | GC1 | 8811164 |
| 4654 | 37200.37400.37500.125500.259200 | Mep Work | 337.5d | 2028-04-25 | 2029-02-18 | 4652FS+101.25d |  |  | GC1 | 8811174 |
| 4655 | 37200.37400.37500.125500.259300 | Furnitures | 1.12d | 2029-02-19 | 2029-02-19 | 4653, 4654 |  |  | GC1 | 8811184 |
| 4656 | 37200.37400.37500.125500.259400 | Gym equipments | 10.12d | 2029-02-20 | 2029-02-28 | 4653, 4655 |  |  | GC1 | 8811194 |
| 4657 | 37200.37400.195300 | **Fire NOC** | 2.25d | 2029-03-01 | 2029-03-02 |  |  | start no earlier than 2029-03-01 | GC1 | 8810814 |
| 4658 | 37200.37400.195300.254400 | Fire NOC | 2.25d | 2029-03-01 | 2029-03-02 | 4596FF, 4656, 4650, 4640, 4641 |  |  | GC1 | 8810934 |
| 4659 | 37200.37400.195200 | **OC of Whole Project** | 305.12d | 2028-06-06 | 2029-03-04 |  |  | start no earlier than 2028-06-06 | GC1 | 8810804 |
| 4660 | 37200.37400.195200.254500 | OC of Plot B all 5 Towers | 1.12d | 2029-03-03 | 2029-03-04 | 4658FS+0.25d |  |  | GC1 | 8810944 |
| 4661 | 37200.37400.195200.1343100 | Possession | 13.5d | 2028-06-06 | 2028-06-17 |  |  | start no earlier than 2028-06-06 | GC1 | 9323584 |
| 4662 | 37200.37400.249100 | Escalation | 11.25d | 2025-12-27 | 2026-01-05 |  |  | start no earlier than 2025-12-27 | GC1 | 9446004 |
| 4663 | 37200.37400.245200 | Additional Pile | 146.62d | 2024-11-22 | 2025-04-07 |  | 100% | start no earlier than 2024-11-22 | GC1 | 9446014 |
| 4664 | 37200.37400.244700 | Solider Piling | 282.31d | 2024-12-05 | 2026-04-06 |  | 59% | start no earlier than 2024-12-05 | GC1 | 9446024 |
| 4665 | 37200.37400.1343800 | Solider Piling | 1d | 2025-11-19 | 2025-11-19 |  |  | start no earlier than 2025-11-19 | Indian Calendar | 9446025 |
| 4666 | 37200.37400.232700 | MS Bucket | 275.44d | 2024-08-29 | 2026-01-23 | 4664SS-110.06d | 92% |  | GC1 | 9446034 |
| 4668 | 37200.40100 | **Milestones** | 1411.81d | 2025-04-28 | 2029-10-30 |  | 23% | start no earlier than 2025-04-28 | Indian Calendar | 9446035 |
| 4669 | 37200.40100.232400 | On Completion of Tower Raft for Tower 1 | 2d | 2025-05-16 | 2025-05-17 | 3685FF | 100% | start no earlier than 2025-05-16 | Indian Calendar | 9837106 |
| 4670 | 37200.40100.219000 | On Completion of Tower Raft for Tower 2 | 1d | 2025-06-07 | 2025-06-08 | 2768FF | 100% | start no earlier than 2025-06-07 | Indian Calendar | 9837116 |
| 4671 | 37200.40100.214900 | On Completion of Tower Raft for Tower 3 | 2d | 2025-04-28 | 2025-04-29 | 1851FF | 100% | start no earlier than 2025-04-28 | Indian Calendar | 9837126 |
| 4672 | 37200.40100.209600 | On Completion of Tower Raft for Tower 4 | 3d | 2025-05-22 | 2025-05-24 | 934FF | 100% | start no earlier than 2025-05-22 | Indian Calendar | 9837136 |
| 4673 | 37200.40100.209500 | On Completion of Tower Raft for Tower 5 | 1d | 2025-06-14 | 2025-06-15 | 17FF | 100% | start no earlier than 2025-06-14 | Indian Calendar | 9837146 |
| 4674 | 37200.40100.209400 | On Completion of Ground Floor for Tower 1 | 1d | 2025-08-25 | 2025-08-25 | 3693FF | 100% | start no earlier than 2025-08-25 | Indian Calendar | 9837156 |
| 4675 | 37200.40100.208900 | On Completion of Ground Floor for Tower 2 | 1d | 2025-09-08 | 2025-09-08 | 2776FF | 100% | start no earlier than 2025-09-08 | Indian Calendar | 9837166 |
| 4676 | 37200.40100.203000 | On Completion of Ground Floor for Tower 3 | 1d | 2025-08-18 | 2025-08-18 | 1859FF | 100% | start no earlier than 2025-08-18 | Indian Calendar | 9837176 |
| 4677 | 37200.40100.202900 | On Completion of Ground Floor for Tower 4 | 1d | 2025-09-04 | 2025-09-04 | 942FF | 100% | start no earlier than 2025-09-04 | Indian Calendar | 9837186 |
| 4678 | 37200.40100.202700 | On Completion of Ground Floor for Tower 5 | 1d | 2025-09-10 | 2025-09-10 | 25FF-1d | 100% | start no earlier than 2025-09-10 | Indian Calendar | 9837196 |
| 4679 | 37200.40100.249200 | On Completion of 10th Floor Slab for Tower 1 | 1d | 2026-05-01 | 2026-05-01 | 3754FF |  |  | Indian Calendar | 9837206 |
| 4680 | 37200.40100.249300 | On Completion of 10th Floor Slab for Tower 2 | 1d | 2026-05-16 | 2026-05-18 | 2837FF+0.95d |  |  | Indian Calendar | 9837216 |
| 4681 | 37200.40100.249400 | On Completion of 10th Floor Slab for Tower 3 | 1d | 2026-05-04 | 2026-05-04 | 1920FF+1d |  |  | Indian Calendar | 9837226 |
| 4682 | 37200.40100.249500 | On Completion of 10th Floor Slab for Tower 4 | 1d | 2026-05-16 | 2026-05-16 | 1003FF |  |  | Indian Calendar | 9837236 |
| 4683 | 37200.40100.249600 | On Completion of 10th Floor Slab for Tower 5 | 1d | 2026-05-16 | 2026-05-18 | 86FF |  |  | Indian Calendar | 9837246 |
| 4684 | 37200.40100.249700 | On Completion of 15th Floor slab for Tower 1 | 1d | 2026-06-20 | 2026-06-20 | 3779FF |  |  | Indian Calendar | 9837256 |
| 4685 | 37200.40100.249800 | On Completion of 15th Floor slab for Tower 2 | 1d | 2026-07-06 | 2026-07-06 | 2862FF |  |  | Indian Calendar | 9837266 |
| 4686 | 37200.40100.249900 | On Completion of 15th Floor slab for Tower 3 | 1d | 2026-06-22 | 2026-06-22 | 1945FF |  |  | Indian Calendar | 9837276 |
| 4687 | 37200.40100.250000 | On Completion of 15th Floor slab for Tower 4 | 1d | 2026-07-04 | 2026-07-06 | 1028FF+0.95d |  |  | Indian Calendar | 9837286 |
| 4688 | 37200.40100.250100 | On Completion of 15th Floor slab for Tower 5 | 1d | 2026-07-06 | 2026-07-07 | 111FF |  |  | Indian Calendar | 9837296 |
| 4689 | 37200.40100.250200 | On Completion of 20th Floor slab for Tower 1 | 1d | 2026-08-10 | 2026-08-10 | 3804FF |  |  | Indian Calendar | 9837306 |
| 4690 | 37200.40100.250300 | On Completion of 20th Floor slab for Tower 2 | 1d | 2026-08-26 | 2026-08-26 | 2887FF |  |  | Indian Calendar | 9837316 |
| 4691 | 37200.40100.250400 | On Completion of 20th Floor slab for Tower 3 | 1d | 2026-08-12 | 2026-08-12 | 1970FF |  |  | Indian Calendar | 9837326 |
| 4692 | 37200.40100.250500 | On Completion of 20th Floor slab for Tower 4 | 1d | 2026-08-25 | 2026-08-25 | 1053FF |  |  | Indian Calendar | 9837336 |
| 4693 | 37200.40100.250600 | On Completion of 20th Floor slab for Tower 5 | 1d | 2026-08-26 | 2026-08-27 | 136FF |  |  | Indian Calendar | 9837346 |
| 4694 | 37200.40100.250700 | On Completion of 25th Floor Slab for Tower 1 | 1d | 2026-10-08 | 2026-10-08 | 3829FF |  |  | Indian Calendar | 9837356 |
| 4695 | 37200.40100.250800 | On Completion of 25th Floor Slab for Tower 2 | 1d | 2026-10-24 | 2026-10-24 | 2912FF |  |  | Indian Calendar | 9837366 |
| 4696 | 37200.40100.250900 | On Completion of 25th Floor Slab for Tower 3 | 1d | 2026-10-10 | 2026-10-10 | 1995FF |  |  | Indian Calendar | 9837376 |
| 4697 | 37200.40100.251000 | On Completion of 25th Floor Slab for Tower 4 | 1d | 2026-10-23 | 2026-10-23 | 1078FF |  |  | Indian Calendar | 9837386 |
| 4698 | 37200.40100.251100 | On Completion of 25th Floor Slab for Tower 5 | 1d | 2026-10-24 | 2026-10-26 | 161FF+0.84d |  |  | Indian Calendar | 9837396 |
| 4699 | 37200.40100.251200 | On Completion of Terrace Slab for Tower 1 | 1d | 2027-04-03 | 2027-04-03 | 3884FF |  |  | Indian Calendar | 9837406 |
| 4700 | 37200.40100.251300 | On Completion of Terrace Slab for Tower 2 | 1d | 2027-04-19 | 2027-04-19 | 2967FF |  |  | Indian Calendar | 9837416 |
| 4701 | 37200.40100.251400 | On Completion of Terrace Slab for Tower 3 | 1d | 2027-04-05 | 2027-04-05 | 2050FF |  |  | Indian Calendar | 9837426 |
| 4702 | 37200.40100.251500 | On Completion of Terrace Slab for Tower 4 | 1d | 2027-04-17 | 2027-04-19 | 1133FF+0.95d |  |  | Indian Calendar | 9837436 |
| 4703 | 37200.40100.251600 | On Completion of Terrace Slab for Tower 5 | 1d | 2027-04-19 | 2027-04-20 | 216FF |  |  | Indian Calendar | 9837446 |
| 4704 | 37200.40100.251700 | On Completion of Unit Internal plaster for Tower 1 | 1d | 2027-07-31 | 2027-07-31 | 4479FF |  |  | Indian Calendar | 9837456 |
| 4705 | 37200.40100.251800 | On Completion of Unit Internal plaster for Tower 2 | 1d | 2027-08-17 | 2027-08-17 | 3562FF |  |  | Indian Calendar | 9837466 |
| 4706 | 37200.40100.251900 | On Completion of Unit Internal plaster for Tower 3 | 1d | 2027-08-03 | 2027-08-03 | 2645FF |  |  | Indian Calendar | 9837476 |
| 4707 | 37200.40100.252000 | On Completion of Unit Internal plaster for Tower 4 | 1d | 2027-08-16 | 2027-08-16 | 1728FF |  |  | Indian Calendar | 9837486 |
| 4708 | 37200.40100.252100 | On Completion of Unit Internal plaster for Tower 5 | 1d | 2027-08-17 | 2027-08-18 | 811FF |  |  | Indian Calendar | 9837496 |
| 4709 | 37200.40100.252200 | On Completion of unit Flooring for Tower 1 | 1d | 2028-05-19 | 2028-05-20 | 4483FF |  |  | Indian Calendar | 9837506 |
| 4710 | 37200.40100.252300 | On Completion of unit Flooring for Tower 2 | 1d | 2028-06-22 | 2028-06-23 | 3566FF |  |  | Indian Calendar | 9837516 |
| 4711 | 37200.40100.252400 | On Completion of unit Flooring for Tower 3 | 1d | 2028-05-18 | 2028-05-19 | 2649FF |  |  | Indian Calendar | 9837526 |
| 4712 | 37200.40100.252500 | On Completion of unit Flooring for Tower 4 | 1d | 2028-05-30 | 2028-05-31 | 1732FF |  |  | Indian Calendar | 9837536 |
| 4713 | 37200.40100.252600 | On Completion of unit Flooring for Tower 5 | 1d | 2028-06-26 | 2028-06-27 | 815FF |  |  | Indian Calendar | 9837546 |
| 4714 | 37200.40100.252700 | On Application of Occupancy Certificate for Tower 1 | 1d | 2028-03-29 | 2028-03-30 | 4586FF |  |  | Indian Calendar | 9837556 |
| 4715 | 37200.40100.252800 | On Application of Occupancy Certificate for Tower 2 | 1d | 2028-03-29 | 2028-03-29 | 3669FF |  |  | Indian Calendar | 9837566 |
| 4716 | 37200.40100.252900 | On Application of Occupancy Certificate for Tower 3 | 1d | 2028-03-29 | 2028-03-30 | 2752FF |  |  | Indian Calendar | 9837576 |
| 4717 | 37200.40100.253000 | On Application of Occupancy Certificate for Tower 4 | 1d | 2028-03-25 | 2028-03-27 | 1835FF |  |  | Indian Calendar | 9837586 |
| 4718 | 37200.40100.253100 | On Application of Occupancy Certificate for Tower 5 | 1d | 2028-03-30 | 2028-03-31 | 918FF |  |  | Indian Calendar | 9837596 |
| 4719 | 37200.40100.253200 | On Offer of Possession for Tower 1 | 1d | 2029-10-29 | 2029-10-30 | 4588FF |  |  | Indian Calendar | 9837606 |
| 4720 | 37200.40100.253300 | On Offer of Possession for Tower 2 | 1d | 2028-04-29 | 2028-05-01 | 3671FF |  |  | Indian Calendar | 9837616 |
| 4721 | 37200.40100.253400 | On Offer of Possession for Tower 3 | 1d | 2028-12-12 | 2028-12-13 | 2754FF |  |  | Indian Calendar | 9837626 |

| ID | WBS | Task | Duration | Start | Finish | Predecessors | Calendar | Unique_Task_ID |
| --- | --- | --- | --- | --- | --- | --- | --- | --- |
| 4722 | 37200.40100.253500 | On Offer of Possession for Tower 4 | 1d | 2028-12-29 | 2028-12-30 | 1837FF | Indian Calendar | 9837636 |
| 4723 | 37200.40100.253600 | On Offer of Possession for Tower 5 | 1d | 2029-01-01 | 2029-01-02 | 920FF | Indian Calendar | 9837646 |
