Schedule from MS Project XML, 2025-01-02 to 2029-09-06.

## Calendars

- Standard: Mon-Fri 08:00-12:00, 13:00-17:00; Sat-Sun off. Exceptions (off unless hours are given): 2024-12-24 to 2025-01-05, 2025-04-18 to 2025-04-21, 2025-05-05, 2025-05-26, 2025-08-25, 2025-12-22 to 2026-01-04, 2026-03-27 to 2026-03-30, 2026-05-04, 2026-05-23 to 2026-05-25, 2026-08-29 to 2026-08-31, 2026-12-21 to 2027-01-03, 2027-04-16 to 2027-04-19, 2027-05-01 to 2027-05-03, 2027-05-29 to 2027-05-31, 2027-08-30, 2027-12-25 to 2028-01-09, 2028-03-31 to 2028-04-03, 2028-04-29 to 2028-05-01, 2028-05-27 to 2028-05-29, 2028-08-26 to 2028-08-28, 2028-12-23 to 2029-01-07, 2029-03-23 to 2029-03-26, 2029-05-07, 2029-05-28, 2029-08-27.
- Indian Calendar: Mon-Sat 08:00-12:00, 13:00-17:00; Sun off.
- Yashwantpur Finshing: Mon-Fri 08:00-12:00, 13:00-17:00; Sat-Sun off.
- Sector 54: Mon-Sun 08:00-12:00, 13:00-17:00. Exceptions (off unless hours are given): 2025-11-01 to 2025-12-15, 2026-11-01 to 2026-12-15, 2027-11-01 to 2027-12-15, 2028-11-01 to 2028-12-15.
- Sector 43: Mon-Sun 08:00-12:00, 13:00-17:00. Exceptions (off unless hours are given): 2025-11-01 to 2025-11-09 00:00-00:00, 2025-11-11 to 2025-11-29, 2026-11-01 to 2026-12-15, 2027-11-01 to 2027-12-15, 2028-11-01 to 2028-12-15.

## Resources

| Resource |
| --- |
| Zenith |
| Project Costs |
| Aristocrat |
| GPL Revenue |
| Project Costs |

## Schedule

| ID | WBS | Task | Type | Duration | Start | Finish | Predecessors | Complete | Constraint | Calendar | Unique_Task_ID |
| --- | --- | --- | --- | --- | --- | --- | --- | --- | --- | --- | --- |
| 1 | 37300 | **Miraya / Sec 43** |  | 1221d | 2025-01-02 | 2029-09-06 |  | 2% | start no earlier than 2025-01-02 | Yashwantpur Finshing | 9697366 |
| 2 | 37300.37500 | **Godrej Miraya** |  | 1573d | 2025-01-02 | 2029-09-06 |  | 2% | start no earlier than 2025-01-02 | Sector 43 | 9697376 |
| 3 | 37300.37500.46000 | **Project Snapshot** |  | 1484d | 2025-04-01 | 2029-09-06 |  | 44% | start no earlier than 2025-04-01 | Sector 43 | 9698906 |
| 4 | 37300.37500.46000.221600 | **Project data** |  | 1242d | 2025-11-30 | 2029-09-06 |  |  | start no earlier than 2025-11-30 | Sector 43 | 9700456 |
| 5 | 37300.37500.46000.221600.949200 | Start of project | milestone | 0d | 2025-11-30 | 2025-11-30 |  |  | start no earlier than 2025-11-30 | Sector 43 | 9706466 |
| 6 | 37300.37500.46000.221600.949100 | Completion of project | milestone | 0d | 2029-09-06 | 2029-09-06 | 1956, 1087, 2849 |  |  | Sector 43 | 9706456 |
| 7 | 37300.37500.46000.48100 | **Intermediate milestones** |  | 1341d | 2025-04-01 | 2029-04-16 |  | 44% | start no earlier than 2025-04-01 | Sector 43 | 9699116 |
| 8 | 37300.37500.46000.48100.949000 | Removal of soldier piles | milestone | 0d | 2027-03-21 | 2027-03-21 | 106, 107, 139 |  |  | Sector 43 | 9706446 |
| 9 | 37300.37500.46000.48100.246800 | Excavation Completion of Tower A |  | 1d | 2025-06-30 | 2025-06-30 | 67FS-26d | 100% | start no earlier than 2025-06-30 | Indian Calendar | 9700547 |
| 10 | 37300.37500.46000.48100.246900 | Excavation Completion of Tower B |  | 1d | 2025-04-15 | 2025-04-15 | 66FS-26d | 100% | start no earlier than 2025-04-15 | Indian Calendar | 9700548 |
| 11 | 37300.37500.46000.48100.247000 | Excavation Completion of Tower C |  | 23d | 2025-04-01 | 2025-04-27 | 66FS-26d | 100% | start no earlier than 2025-04-01 | Indian Calendar | 9700549 |
| 12 | 37300.37500.46000.48100.317200 | Ground Floor Completion of Tower A |  | 1d | 2026-03-12 | 2026-03-12 | 77FS+23d |  |  | Indian Calendar | 9700550 |
| 13 | 37300.37500.46000.48100.317300 | Ground Floor Completion of Tower B |  | 1d | 2026-01-29 | 2026-01-29 | 1111FS-1d |  |  | Indian Calendar | 9700551 |
| 14 | 37300.37500.46000.48100.317400 | Ground Floor Completion of Tower C |  | 1d | 2026-01-26 | 2026-01-26 | 1980FS-1d |  |  | Indian Calendar | 9700552 |
| 15 | 37300.37500.46000.48100.317500 | Completion of 3rd Slab of Tower B |  | 1d | 2026-04-29 | 2026-04-29 | 2016FS+3d |  |  | Indian Calendar | 9700562 |
| 16 | 37300.37500.46000.48100.317600 | Completion of 3rd Slab of Tower C |  | 1d | 2026-04-24 | 2026-04-24 | 2016FS-1d |  |  | Indian Calendar | 9700572 |
| 17 | 37300.37500.46000.48100.317700 | Completion of 5th Slab of Tower A |  | 1d | 2026-06-10 | 2026-06-10 | 289FS-1d |  |  | Indian Calendar | 9700553 |
| 18 | 37300.37500.46000.48100.317800 | Completion of 5th Slab of Tower B |  | 1d | 2026-06-01 | 2026-06-01 | 289FS-9d |  |  | Indian Calendar | 9700554 |
| 19 | 37300.37500.46000.48100.317900 | Completion of 5th Slab of Tower C |  | 1d | 2026-05-26 | 2026-05-26 | 289FS-14d |  |  | Indian Calendar | 9700555 |
| 20 | 37300.37500.46000.48100.318000 | Completion of 10th Slab of Tower A |  | 1d | 2026-08-15 | 2026-08-15 | 314 |  |  | Indian Calendar | 9700565 |
| 21 | 37300.37500.46000.48100.318100 | Completion of 10th Slab of Tower B |  | 1d | 2026-08-04 | 2026-08-04 | 314FS-10d |  |  | Indian Calendar | 9700575 |
| 22 | 37300.37500.46000.48100.318200 | Completion of 10th Slab of Tower C |  | 1d | 2026-07-30 | 2026-07-30 | 314FS-14d |  |  | Indian Calendar | 9700585 |
| 23 | 37300.37500.46000.48100.318300 | Completion of 15th Slab of Tower B |  | 1d | 2026-10-08 | 2026-10-08 | 1207FS-1d |  |  | Indian Calendar | 10032289 |
| 24 | 37300.37500.46000.48100.318400 | Completion of 15th Slab of Tower C |  | 1d | 2026-10-03 | 2026-10-03 | 339FS-13d |  |  | Indian Calendar | 10032299 |
| 25 | 37300.37500.46000.48100.318500 | Completion of 20th Slab of Tower A |  | 1d | 2027-02-08 | 2027-02-08 | 364FS-1d |  |  | Indian Calendar | 9700595 |
| 26 | 37300.37500.46000.48100.318600 | Completion of 20th Slab of Tower B |  | 1d | 2027-01-29 | 2027-01-29 | 1232FS-1d |  |  | Indian Calendar | 9700605 |
| 27 | 37300.37500.46000.48100.318700 | Completion of 20th Slab of Tower C |  | 1d | 2027-01-25 | 2027-01-25 | 364FS-13d |  |  | Indian Calendar | 9700615 |
| 28 | 37300.37500.46000.48100.318800 | Completion of Terrace Slab of Tower A |  | 1d | 2027-07-22 | 2027-07-22 | 424FS-2d |  |  | Indian Calendar | 9700625 |
| 29 | 37300.37500.46000.48100.318900 | Completion of Terrace Slab of Tower B |  | 1d | 2027-07-13 | 2027-07-13 | 424FS-10d |  |  | Indian Calendar | 9700635 |
| 30 | 37300.37500.46000.48100.319000 | Completion of Terrace Slab of Tower C |  | 1d | 2027-07-22 | 2027-07-22 | 424FS-2d |  |  | Indian Calendar | 9700645 |
| 31 | 37300.37500.46000.48100.319100 | Completion of Internal Plaster Tower A |  | 1d | 2028-01-04 | 2028-01-04 | 982FS+81d |  |  | Indian Calendar | 9700655 |
| 32 | 37300.37500.46000.48100.319200 | Completion of Internal Plaster Tower B |  | 1d | 2027-12-27 | 2027-12-27 | 1851FS+82d |  |  | Indian Calendar | 9700665 |
| 33 | 37300.37500.46000.48100.319300 | Completion of Internal Plaster Tower C |  | 1d | 2028-01-03 | 2028-01-03 | 982FS+80d |  |  | Indian Calendar | 9700675 |
| 34 | 37300.37500.46000.48100.319400 | Completion of Unit Flooring Tower A |  | 1d | 2028-02-23 | 2028-02-23 | 986FS+30d |  |  | Indian Calendar | 9700685 |
| 35 | 37300.37500.46000.48100.319500 | Completion of Unit Flooring Tower B |  | 1d | 2028-02-14 | 2028-02-14 | 986FS+22d |  |  | Indian Calendar | 9700695 |
| 36 | 37300.37500.46000.48100.319600 | Completion of Unit Flooring Tower C |  | 1d | 2028-02-22 | 2028-02-22 | 986FS+29d |  |  | Indian Calendar | 9700705 |
| 37 | 37300.37500.46000.48100.319700 | OC Application of Tower A |  | 1d | 2028-08-20 | 2028-08-20 | 1079FS+44d |  |  | Sector 43 | 9700546 |
| 38 | 37300.37500.46000.48100.319800 | OC Application of Tower B |  | 1d | 2028-08-10 | 2028-08-10 | 1079FS+34d |  |  | Sector 43 | 9700556 |
| 39 | 37300.37500.46000.48100.319900 | OC Application of Tower C |  | 1d | 2028-08-19 | 2028-08-19 | 1079FS+43d |  |  | Sector 43 | 9700566 |
| 40 | 37300.37500.46000.48100.320000 | On application of Possession Tower A |  | 1d | 2029-02-17 | 2029-02-17 | 1079FS+193d |  |  | Indian Calendar | 9700567 |
| 41 | 37300.37500.46000.48100.320100 | On application of Possession Tower B |  | 1d | 2029-04-07 | 2029-04-07 | 38FS+205d |  |  | Indian Calendar | 9700568 |
| 42 | 37300.37500.46000.48100.320200 | On application of Possession Tower C |  | 1d | 2029-04-16 | 2029-04-16 | 39FS+204d |  |  | Indian Calendar | 9700569 |
| 43 | 37300.37500.46000.48100.948900 | Completion of Landscape works | milestone | 0d | 2028-10-13 | 2028-10-13 | 212, 213, 214, 216, 217, 218 |  |  | Sector 43 | 9706436 |

| ID | WBS | Task | Duration | Start | Finish | Predecessors | Complete | Constraint | Calendar | Unique_Task_ID |
| --- | --- | --- | --- | --- | --- | --- | --- | --- | --- | --- |
| 46 | 37300.37500.117800 | **Soldier Piling & Excavation works** | 505d | 2025-01-02 | 2026-05-22 |  | 90% | start no earlier than 2025-01-02 | Sector 43 | 9698716 |
| 47 | 37300.37500.117800.124400 | **Phase 01 - Area excluding downramp for construction** | 186d | 2025-01-02 | 2025-07-06 |  | 100% | start no earlier than 2025-01-02 | Sector 43 | 9698816 |
| 48 | 37300.37500.117800.124400.216300 | **till 2m** | 88d | 2025-01-02 | 2025-03-30 |  | 100% | start no earlier than 2025-01-02 | Sector 43 | 9700436 |
| 49 | 37300.37500.117800.124400.216300.239000 | H beam pile driving - 15m | 30d | 2025-01-02 | 2025-02-27 | 5SS-28d | 100% | start no earlier than 2025-01-02 | Sector 43 | 9700816 |
| 50 | 37300.37500.117800.124400.216300.238900 | Excavation from NGL to 2m | 33d | 2025-01-08 | 2025-02-27 | 49FS-51d | 100% | start no earlier than 2025-01-08 | Sector 43 | 9700826 |
| 51 | 37300.37500.117800.124400.216300.238800 | Plank installation & anchoring till 2m | 31d | 2025-01-10 | 2025-03-30 | 50FS-53d | 100% | start no earlier than 2025-01-10 | Sector 43 | 9700836 |
| 52 | 37300.37500.117800.124400.221100 | **2 mts till 4 mts** | 60d | 2025-01-20 | 2025-03-20 |  | 100% | start no earlier than 2025-01-20 | Sector 43 | 9700466 |
| 53 | 37300.37500.117800.124400.221100.238700 | Excavation from 2m till 4m | 49d | 2025-01-31 | 2025-03-20 | 51FS-40d | 100% | start no earlier than 2025-01-31 | Sector 43 | 9700846 |
| 54 | 37300.37500.117800.124400.221100.238600 | Plank installation & anchoring - 2m till 4m | 58d | 2025-01-20 | 2025-03-18 | 53FS-50d | 100% | start no earlier than 2025-01-20 | Sector 43 | 9700856 |
| 55 | 37300.37500.117800.124400.221200 | **4 mts till 6 mts** | 89d | 2025-03-09 | 2025-06-05 |  | 100% | start no earlier than 2025-03-09 | Sector 43 | 9700476 |
| 56 | 37300.37500.117800.124400.221200.238500 | Excavation from 4m to 6m | 32d | 2025-03-09 | 2025-06-05 | 54FS-10d | 100% | start no earlier than 2025-03-09 | Sector 43 | 9700866 |
| 57 | 37300.37500.117800.124400.221200.238400 | Plank installation & anchoring - 4m till 6m | 24d | 2025-03-14 | 2025-06-05 | 56FS-83.9d | 100% | start no earlier than 2025-03-14 | Sector 43 | 9700876 |
| 58 | 37300.37500.117800.124400.221300 | **6 mts till 8 mts** | 75d | 2025-03-25 | 2025-06-07 |  | 100% | start no earlier than 2025-03-25 | Sector 43 | 9700486 |
| 59 | 37300.37500.117800.124400.221300.238300 | Excavation from 6m to 8m | 43d | 2025-03-25 | 2025-06-07 | 57FS-72d | 100% | start no earlier than 2025-03-25 | Sector 43 | 9700886 |
| 60 | 37300.37500.117800.124400.221300.238200 | Plank installation & anchoring - 6m till 8m | 20d | 2025-04-20 | 2025-06-07 | 59FS-48.3d | 100% | start no earlier than 2025-04-20 | Sector 43 | 9700896 |
| 61 | 37300.37500.117800.124400.216400 | **8 mts till NTA footing bottom** | 105.1d | 2025-03-09 | 2025-06-22 |  | 100% | start no earlier than 2025-03-09 | Sector 43 | 9700426 |
| 62 | 37300.37500.117800.124400.216400.238100 | Excavation from 8m to footing PCC bottom | 50d | 2025-03-09 | 2025-06-15 | 60FS-91d | 100% | start no earlier than 2025-03-09 | Sector 43 | 9700906 |
| 63 | 37300.37500.117800.124400.216400.238000 | Plank installation & anchoring from 8m to footing PCC bottom | 13d | 2025-05-27 | 2025-06-19 | 62FS-71d | 100% | start no earlier than 2025-05-27 | Sector 43 | 9700916 |
| 64 | 37300.37500.117800.124400.216400.237900 | Surface dressing & compaction for grade slab area | 3d | 2025-05-25 | 2025-06-22 | 63FS-28d | 100% | start no earlier than 2025-05-25 | Sector 43 | 9700926 |
| 65 | 37300.37500.117800.124400.221400 | **NTA footing bottom till Raft footing bottom** | 137d | 2025-02-20 | 2025-07-06 |  | 100% | start no earlier than 2025-02-20 | Sector 43 | 9700496 |
| 66 | 37300.37500.117800.124400.221400.237800 | TC & TB | 55d | 2025-02-20 | 2025-05-04 | 62FS-75d | 100% | start no earlier than 2025-02-20 | Sector 43 | 9700936 |
| 67 | 37300.37500.117800.124400.221400.237700 | TA | 10d | 2025-06-13 | 2025-07-06 | 66FS-9d | 100% | start no earlier than 2025-06-13 | Sector 43 | 9700946 |
| 68 | 37300.37500.117800.165300 | **Phase 02 - Area for downramp & CEC for construction** | 36d | 2026-04-17 | 2026-05-22 |  |  | start no earlier than 2026-04-17 | Sector 43 | 9699896 |
| 69 | 37300.37500.117800.165300.320300 | Demolition of CEC | 1d | 2026-04-17 | 2026-04-17 | 63FS+300d |  |  | Sector 43 | 9700576 |
| 70 | 37300.37500.117800.165300.320400 | 2 mts till 4 mts | 15d | 2026-04-18 | 2026-05-02 | 69 |  |  | Sector 43 | 9700586 |
| 71 | 37300.37500.117800.165300.320500 | 6 mts till 8 mts | 15d | 2026-05-03 | 2026-05-17 | 70 |  |  | Sector 43 | 9700596 |
| 72 | 37300.37500.117800.165300.320600 | 8 mts till NTA fotting bottom | 15d | 2026-05-08 | 2026-05-22 | 71FS-10d |  |  | Sector 43 | 9700606 |

| ID | WBS | Task | Duration | Start | Finish | Predecessors | Complete | Constraint | Calendar | Unique_Task_ID |
| --- | --- | --- | --- | --- | --- | --- | --- | --- | --- | --- |
| 73 | 37300.37500.51900 | **NTA works** | 1165d | 2025-07-13 | 2029-02-02 |  | 1% | start no earlier than 2025-07-13 | Sector 43 | 9697606 |
| 74 | 37300.37500.51900.52300 | **RCC works** | 895d | 2025-07-13 | 2028-03-24 |  | 3% | start no earlier than 2025-07-13 | Sector 43 | 9697616 |
| 75 | 37300.37500.51900.52300.64000 | **Phase 01 - Area excluding downramp for construction** | 895d | 2025-07-13 | 2028-03-24 |  | 6% | start no earlier than 2025-07-13 | Sector 43 | 9698596 |
| 76 | 37300.37500.51900.52300.64000.134100 | **Footings including grade slab** | 519d | 2025-07-13 | 2027-01-28 |  | 14% | start no earlier than 2025-07-13 | Sector 43 | 9699076 |
| 77 | 37300.37500.51900.52300.64000.134100.232200 | Excavation for isolated fottings of NTA | 120d | 2025-07-13 | 2026-03-12 | 225FS-99d | 14% | start no earlier than 2025-07-13 | Sector 43 | 9701386 |
| 78 | 37300.37500.51900.52300.64000.134100.232300 | ATT | 60d | 2025-07-27 | 2026-07-06 | 77FS-228d | 6% |  | Sector 43 | 9701396 |
| 79 | 37300.37500.51900.52300.64000.134100.232400 | PCC | 10d | 2025-07-27 | 2026-07-14 | 78FS-344d | 20% |  | Sector 43 | 9701406 |
| 80 | 37300.37500.51900.52300.64000.134100.232500 | Reinforcement | 150d | 2025-07-27 | 2026-07-10 | 79FS-306d | 6% | start no earlier than 2025-07-27 | Sector 43 | 9701416 |
| 81 | 37300.37500.51900.52300.64000.134100.232600 | Shuttering | 265d | 2025-10-23 | 2026-07-15 | 80FS-496.64d | 13% | start no earlier than 2025-10-23 | Sector 43 | 9701426 |
| 82 | 37300.37500.51900.52300.64000.134100.232700 | Concreting - B2 stitch slab | 95d | 2025-10-27 | 2027-01-28 | 81FS-261d | 34% |  | Sector 43 | 9701436 |
| 83 | 37300.37500.51900.52300.64000.218600 | **Retaining walls - till 300mm below B1 slab bottom** | 262d | 2026-01-25 | 2026-10-13 |  |  | start no earlier than 2026-01-25 | Sector 43 | 9700406 |
| 84 | 37300.37500.51900.52300.64000.218600.861600 | Reinforcement | 150d | 2026-01-25 | 2026-06-23 | 80FS-166.64d |  |  | Sector 43 | 9701446 |
| 85 | 37300.37500.51900.52300.64000.218600.861700 | Shuttering | 55d | 2026-05-15 | 2026-07-08 | 84FS-40d |  |  | Sector 43 | 9701456 |
| 86 | 37300.37500.51900.52300.64000.218600.861800 | Concreting | 7d | 2026-10-07 | 2026-10-13 | 85FS+90d |  |  | Sector 43 | 9701466 |
| 87 | 37300.37500.51900.52300.64000.218500 | **B1 slab** | 45d | 2027-02-03 | 2027-03-19 |  |  | start no earlier than 2027-02-03 | Sector 43 | 9700396 |
| 88 | 37300.37500.51900.52300.64000.218500.861900 | Shuttering | 30d | 2027-02-18 | 2027-03-19 | 82FS+20d, 86 |  |  | Sector 43 | 9701476 |
| 89 | 37300.37500.51900.52300.64000.218500.862000 | Reinforcement | 25d | 2027-02-03 | 2027-02-27 | 88FS-45d |  |  | Sector 43 | 9701486 |
| 90 | 37300.37500.51900.52300.64000.218500.862100 | Concreting | 5d | 2027-02-28 | 2027-03-04 | 89 |  |  | Sector 43 | 9701496 |
| 91 | 37300.37500.51900.52300.64000.218400 | **Retaining walls - B1 slab till 300mm below GF slab bottom** | 235d | 2027-03-06 | 2027-10-26 |  |  | start no earlier than 2027-03-06 | Sector 43 | 9700386 |
| 92 | 37300.37500.51900.52300.64000.218400.862200 | Reinforcement | 90d | 2027-03-06 | 2027-06-03 | 90FS+1d |  |  | Sector 43 | 9701506 |
| 93 | 37300.37500.51900.52300.64000.218400.862300 | Shuttering | 90d | 2027-05-15 | 2027-08-12 | 92FS-20d |  |  | Sector 43 | 9701516 |
| 94 | 37300.37500.51900.52300.64000.218400.862400 | Concreting | 95d | 2027-07-24 | 2027-10-26 | 93FS-20d |  |  | Sector 43 | 9701526 |
| 95 | 37300.37500.51900.52300.64000.218300 | **Ground floor slab (NTA top)** | 105d | 2027-10-27 | 2028-03-24 |  |  | start no earlier than 2027-10-27 | Sector 43 | 9700376 |
| 96 | 37300.37500.51900.52300.64000.218300.862500 | Shuttering | 50d | 2027-10-27 | 2028-01-29 | 94 |  |  | Sector 43 | 9701536 |
| 97 | 37300.37500.51900.52300.64000.218300.862600 | Reinforcement | 55d | 2028-01-25 | 2028-03-19 | 96FS-5d |  |  | Sector 43 | 9701546 |
| 98 | 37300.37500.51900.52300.64000.218300.862700 | Concreting | 5d | 2028-03-20 | 2028-03-24 | 97 |  |  | Sector 43 | 9701556 |

| ID | WBS | Task | Duration | Start | Finish | Predecessors | Constraint | Calendar | Unique_Task_ID |
| --- | --- | --- | --- | --- | --- | --- | --- | --- | --- |
| 99 | 37300.37500.51900.52300.64000.128700 | **W/P, Soldier piling de-stressing & backfilling** | 126d | 2027-01-27 | 2027-06-01 |  | start no earlier than 2027-01-27 | Sector 43 | 9698916 |
| 100 | 37300.37500.51900.52300.64000.128700.862800 | W/P of raft and retaining wall till 2nd level of anchoring | 35d | 2027-01-27 | 2027-03-02 | 82FS-2d |  | Sector 43 | 9701566 |
| 101 | 37300.37500.51900.52300.64000.128700.862900 | Backfilling till 2nd level of anchoring | 30d | 2027-02-20 | 2027-03-21 | 100FS-11d |  | Sector 43 | 9701576 |
| 102 | 37300.37500.51900.52300.64000.128700.863000 | De-stressing of 2nd level of anchoring of soldier piling | 20d | 2027-03-10 | 2027-03-29 | 101FS-12d |  | Sector 43 | 9701586 |
| 103 | 37300.37500.51900.52300.64000.128700.863100 | W/P of balance Retaining wall till B1 slab | 35d | 2027-03-20 | 2027-04-23 | 102FS-10d |  | Sector 43 | 9701596 |
| 104 | 37300.37500.51900.52300.64000.128700.863200 | Backfilling till B1 slab | 20d | 2027-04-12 | 2027-05-01 | 103FS-12d |  | Sector 43 | 9701606 |
| 105 | 37300.37500.51900.52300.64000.128700.863300 | De-stressing of top anchor of soldier piling | 20d | 2027-04-20 | 2027-05-09 | 104FS-12d |  | Sector 43 | 9701616 |
| 106 | 37300.37500.51900.52300.64000.128700.863400 | Removal of soldier piles | 15d | 2027-04-28 | 2027-05-12 | 105FS-12d |  | Sector 43 | 9701626 |
| 107 | 37300.37500.51900.52300.64000.128700.863500 | W/P of Retaining wall till NTA top | 30d | 2027-05-03 | 2027-06-01 | 106FS-10d |  | Sector 43 | 9701636 |
| 108 | 37300.37500.51900.52300.114400 | **Phase 02 -Area for downramp & CEC for construction** | 306d | 2026-06-22 | 2027-06-07 |  | start no earlier than 2026-06-22 | Sector 43 | 9698616 |
| 109 | 37300.37500.51900.52300.114400.141700 | **Footings including grade slab** | 43d | 2026-06-22 | 2026-08-03 |  | start no earlier than 2026-06-22 | Sector 43 | 9699066 |
| 110 | 37300.37500.51900.52300.114400.141700.863600 | Excavation for isolated fottings of NTA | 5d | 2026-06-22 | 2026-06-26 | 72FS+30d |  | Sector 43 | 9701646 |
| 111 | 37300.37500.51900.52300.114400.141700.863700 | ATT | 5d | 2026-06-27 | 2026-07-01 | 110 |  | Sector 43 | 9701656 |
| 112 | 37300.37500.51900.52300.114400.141700.863800 | PCC | 5d | 2026-07-02 | 2026-07-06 | 111 |  | Sector 43 | 9701666 |
| 113 | 37300.37500.51900.52300.114400.141700.863900 | Reinforcement | 15d | 2026-07-07 | 2026-07-21 | 112 |  | Sector 43 | 9701676 |
| 114 | 37300.37500.51900.52300.114400.141700.864000 | Shuttering | 10d | 2026-07-22 | 2026-07-31 | 113 |  | Sector 43 | 9701686 |
| 115 | 37300.37500.51900.52300.114400.141700.864100 | Concreting - B2 slab | 3d | 2026-08-01 | 2026-08-03 | 114 |  | Sector 43 | 9701696 |
| 116 | 37300.37500.51900.52300.114400.218200 | **Retaining walls - till 300mm below B1 slab bottom** | 50d | 2026-10-12 | 2027-01-14 |  | start no earlier than 2026-10-12 | Sector 43 | 9700366 |
| 117 | 37300.37500.51900.52300.114400.218200.864200 | Reinforcement | 25d | 2026-10-12 | 2026-12-20 | 115FS+69d |  | Sector 43 | 9701706 |
| 118 | 37300.37500.51900.52300.114400.218200.864300 | Shuttering | 25d | 2026-12-16 | 2027-01-09 | 117FS-5d |  | Sector 43 | 9701716 |
| 119 | 37300.37500.51900.52300.114400.218200.864400 | Concreting | 10d | 2027-01-05 | 2027-01-14 | 118FS-5d |  | Sector 43 | 9701726 |
| 120 | 37300.37500.51900.52300.114400.218100 | **B1 slab** | 50d | 2027-01-10 | 2027-02-28 |  | start no earlier than 2027-01-10 | Sector 43 | 9700356 |
| 121 | 37300.37500.51900.52300.114400.218100.864500 | Shuttering | 25d | 2027-01-10 | 2027-02-03 | 119FS-5d |  | Sector 43 | 9701736 |
| 122 | 37300.37500.51900.52300.114400.218100.864600 | Reinforcement | 25d | 2027-01-30 | 2027-02-23 | 121FS-5d |  | Sector 43 | 9701746 |
| 123 | 37300.37500.51900.52300.114400.218100.864700 | Concreting | 10d | 2027-02-19 | 2027-02-28 | 122FS-5d |  | Sector 43 | 9701756 |

| ID | WBS | Task | Duration | Start | Finish | Predecessors | Constraint | Calendar | Unique_Task_ID |
| --- | --- | --- | --- | --- | --- | --- | --- | --- | --- |
| 124 | 37300.37500.51900.52300.114400.218000 | **Retaining walls - till 300mm below GF slab bottom** | 176d | 2026-09-09 | 2027-04-17 |  | start no earlier than 2026-09-09 | Sector 43 | 9700346 |
| 125 | 37300.37500.51900.52300.114400.218000.864800 | Reinforcement | 170d | 2026-09-09 | 2027-04-11 | 123FS-128d |  | Sector 43 | 9701766 |
| 126 | 37300.37500.51900.52300.114400.218000.864900 | Shuttering | 150d | 2026-10-03 | 2027-04-15 | 125FS-146d |  | Sector 43 | 9701776 |
| 127 | 37300.37500.51900.52300.114400.218000.865000 | Concreting | 150d | 2026-10-05 | 2027-04-17 | 126FS-148d |  | Sector 43 | 9701786 |
| 128 | 37300.37500.51900.52300.114400.217900 | **GF slab (NTA top)** | 180d | 2026-10-06 | 2027-05-18 |  | start no earlier than 2026-10-06 | Sector 43 | 9700336 |
| 129 | 37300.37500.51900.52300.114400.217900.865100 | Shuttering | 150d | 2026-10-06 | 2027-04-18 | 127FS-149d |  | Sector 43 | 9701796 |
| 130 | 37300.37500.51900.52300.114400.217900.865200 | Reinforcement | 150d | 2026-10-21 | 2027-05-03 | 129FS-135d |  | Sector 43 | 9701806 |
| 131 | 37300.37500.51900.52300.114400.217900.865300 | Concreting | 150d | 2026-12-20 | 2027-05-18 | 130FS-135d |  | Sector 43 | 9701816 |
| 132 | 37300.37500.51900.52300.114400.134200 | **W/P, Soldier piling de-stressing & backfilling** | 199d | 2026-10-07 | 2027-06-07 |  | start no earlier than 2026-10-07 | Sector 43 | 9698996 |
| 133 | 37300.37500.51900.52300.114400.134200.865400 | W/P of retaining wall till 2nd level of anchoring | 130d | 2026-10-07 | 2027-03-30 | 123FS-100d |  | Sector 43 | 9701826 |
| 134 | 37300.37500.51900.52300.114400.134200.865500 | Backfilling till 2nd level of anchoring - B1 slab | 130d | 2026-10-12 | 2027-04-04 | 133FS-125d |  | Sector 43 | 9701836 |
| 135 | 37300.37500.51900.52300.114400.134200.865600 | De-stressing of 2nd level of anchoring of soldier piling | 28d | 2027-03-11 | 2027-04-07 | 134FS-25d |  | Sector 43 | 9701846 |
| 136 | 37300.37500.51900.52300.114400.134200.865700 | W/P of balance Retaining wall till NTA slab | 130d | 2027-01-19 | 2027-05-28 | 131FS-120d |  | Sector 43 | 9701856 |
| 137 | 37300.37500.51900.52300.114400.134200.865800 | De-stressing of top anchor of soldier piling - 2m from NTA top | 28d | 2027-05-04 | 2027-05-31 | 136FS-25d |  | Sector 43 | 9701866 |
| 138 | 37300.37500.51900.52300.114400.134200.865900 | Backfilling till NTA top slab | 130d | 2027-01-24 | 2027-06-02 | 136FS-125d |  | Sector 43 | 9701876 |
| 139 | 37300.37500.51900.52300.114400.134200.866000 | Removal of soldier piles | 20d | 2027-05-19 | 2027-06-07 | 135, 137FS-15d, 138FS-15d |  | Sector 43 | 9701886 |
| 140 | 37300.37500.51900.117700 | **Finishing works** | 566d | 2027-04-19 | 2029-02-02 |  | start no earlier than 2027-04-19 | Sector 43 | 9698636 |
| 141 | 37300.37500.51900.117700.123400 | **Phase 01 - Area excluding downramp for construction** | 566d | 2027-04-19 | 2029-02-02 |  | start no earlier than 2027-04-19 | Sector 43 | 9698706 |
| 142 | 37300.37500.51900.117700.123400.128600 | **Basement 2** | 225d | 2027-04-19 | 2028-01-13 |  | start no earlier than 2027-04-19 | Sector 43 | 9698926 |
| 143 | 37300.37500.51900.117700.123400.128600.866100 | Masonary work | 30d | 2027-04-19 | 2027-05-18 | 90FS+45d |  | Sector 43 | 9701896 |
| 144 | 37300.37500.51900.117700.123400.128600.866200 | Structural steel | 45d | 2027-04-19 | 2027-06-02 | 90FS+45d |  | Sector 43 | 9701906 |
| 145 | 37300.37500.51900.117700.123400.128600.866300 | Plaster | 45d | 2027-05-19 | 2027-07-02 | 143, 144FS-15d |  | Sector 43 | 9701916 |
| 146 | 37300.37500.51900.117700.123400.128600.866400 | White Wash | 30d | 2027-07-03 | 2027-08-01 | 145 |  | Sector 43 | 9701926 |
| 147 | 37300.37500.51900.117700.123400.128600.866500 | VDF | 90d | 2027-05-19 | 2027-08-16 | 145FS-45d |  | Sector 43 | 9701936 |
| 148 | 37300.37500.51900.117700.123400.128600.866600 | Drain & Sump (incl. gratings) | 90d | 2027-07-18 | 2027-10-15 | 147FS-30d |  | Sector 43 | 9701946 |
| 149 | 37300.37500.51900.117700.123400.128600.866700 | Car parking marking | 45d | 2027-10-16 | 2028-01-13 | 146FS-15d, 148 |  | Sector 43 | 9701956 |
| 150 | 37300.37500.51900.117700.123400.128600.866800 | Signages | 45d | 2027-07-23 | 2027-09-05 | 146FS-10d |  | Sector 43 | 9701966 |

| ID | WBS | Task | Duration | Start | Finish | Predecessors | Constraint | Calendar | Unique_Task_ID |
| --- | --- | --- | --- | --- | --- | --- | --- | --- | --- |
| 151 | 37300.37500.51900.117700.123400.128500 | **Basement 1** | 336d | 2028-01-19 | 2029-02-02 |  | start no earlier than 2028-01-19 | Sector 43 | 9698936 |
| 152 | 37300.37500.51900.117700.123400.128500.866900 | Masonary work | 30d | 2028-05-09 | 2028-06-07 | 98FS+45d |  | Sector 43 | 9701976 |
| 153 | 37300.37500.51900.117700.123400.128500.867000 | Structural steel | 45d | 2028-05-09 | 2028-06-22 | 98FS+45d |  | Sector 43 | 9701986 |
| 154 | 37300.37500.51900.117700.123400.128500.867100 | Plaster | 45d | 2028-06-08 | 2028-07-22 | 152, 153FS-15d |  | Sector 43 | 9701996 |
| 155 | 37300.37500.51900.117700.123400.128500.867200 | White Wash | 30d | 2028-07-23 | 2028-08-21 | 154 |  | Sector 43 | 9702006 |
| 156 | 37300.37500.51900.117700.123400.128500.867300 | VDF | 90d | 2028-06-08 | 2028-09-05 | 154FS-45d |  | Sector 43 | 9702016 |
| 157 | 37300.37500.51900.117700.123400.128500.867400 | Drain & Sump (incl. gratings) | 90d | 2028-08-07 | 2028-12-19 | 156FS-30d |  | Sector 43 | 9702026 |
| 158 | 37300.37500.51900.117700.123400.128500.867500 | Car parking marking | 45d | 2028-12-20 | 2029-02-02 | 155FS-15d, 157 |  | Sector 43 | 9702036 |
| 159 | 37300.37500.51900.117700.123400.128500.867600 | Signages | 45d | 2028-01-19 | 2028-03-03 | 204FS-10d |  | Sector 43 | 9702046 |
| 160 | 37300.37500.51900.117700.129800 | **Phase 02 - Area of downramp for construction** | 175d | 2027-07-03 | 2028-02-07 |  | start no earlier than 2027-07-03 | Sector 43 | 9698826 |
| 161 | 37300.37500.51900.117700.129800.414600 | Masonary work | 25d | 2027-07-03 | 2027-07-27 | 131FS+45d |  | Sector 43 | 9700956 |
| 162 | 37300.37500.51900.117700.129800.414700 | Structural steel | 25d | 2027-07-03 | 2027-07-27 | 131FS+45d |  | Sector 43 | 9700966 |
| 163 | 37300.37500.51900.117700.129800.414800 | Plaster | 45d | 2027-07-28 | 2027-09-10 | 161, 162 |  | Sector 43 | 9700976 |
| 164 | 37300.37500.51900.117700.129800.414900 | White Wash | 20d | 2027-09-11 | 2027-09-30 | 163 |  | Sector 54 | 9700986 |
| 165 | 37300.37500.51900.117700.129800.415000 | VDF | 60d | 2027-07-28 | 2027-09-25 | 163FS-45d |  | Sector 43 | 9700996 |
| 166 | 37300.37500.51900.117700.129800.415100 | Drain & Sump (incl. gratings) | 60d | 2027-08-27 | 2027-10-25 | 165FS-30d |  | Sector 43 | 9701006 |
| 167 | 37300.37500.51900.117700.129800.415200 | Car parking marking | 20d | 2027-09-26 | 2027-10-15 | 164FS-15d, 166FS-30d |  | Sector 43 | 9701016 |
| 168 | 37300.37500.51900.117700.129800.415300 | Signages | 20d | 2028-01-19 | 2028-02-07 | 204FS-10d |  | Sector 43 | 9701026 |
| 169 | 37300.37500.51900.116200 | **Tanks, DG & Trafo yard works** | 277d | 2027-09-02 | 2028-07-19 |  | start no earlier than 2027-09-02 | Sector 43 | 9698606 |
| 170 | 37300.37500.51900.116200.143600 | **STP WTP RWH RW tanks & plant rooms works** | 277d | 2027-09-02 | 2028-07-19 |  | start no earlier than 2027-09-02 | Sector 43 | 9699156 |
| 171 | 37300.37500.51900.116200.143600.415400 | STP Works incl pumping station | 150d | 2027-10-17 | 2028-04-28 | 2818 |  | Sector 43 | 9701036 |
| 172 | 37300.37500.51900.116200.143600.415500 | WTP works incl Plant room | 150d | 2027-10-17 | 2028-04-28 | 2818 |  | Sector 43 | 9701046 |
| 173 | 37300.37500.51900.116200.143600.415600 | Raw water tank works | 150d | 2027-10-17 | 2028-04-28 | 2818 |  | Sector 43 | 9701056 |
| 174 | 37300.37500.51900.116200.143600.415700 | Fire fighting tank works incl Plant room | 150d | 2028-02-21 | 2028-07-19 | 2828FS-60d |  | Sector 43 | 9701066 |
| 175 | 37300.37500.51900.116200.143600.415800 | Rain water harvesting works incl Plant room | 150d | 2027-09-02 | 2028-03-14 | 2205 |  | Sector 43 | 9701076 |

| ID | WBS | Task | Duration | Start | Finish | Predecessors | Constraint | Calendar | Unique_Task_ID |
| --- | --- | --- | --- | --- | --- | --- | --- | --- | --- |
| 176 | 37300.37500.51900.116200.123500 | **DG & Trafo yard works** | 210d | 2027-09-02 | 2028-05-13 |  | start no earlier than 2027-09-02 | Sector 43 | 9698696 |
| 177 | 37300.37500.51900.116200.123500.128400 | **DG room (double height at Basement 2)** | 210d | 2027-09-02 | 2028-05-13 |  | start no earlier than 2027-09-02 | Sector 43 | 9698956 |
| 178 | 37300.37500.51900.116200.123500.128400.143100 | **DG installation works** | 210d | 2027-09-02 | 2028-05-13 |  | start no earlier than 2027-09-02 | Sector 43 | 9699096 |
| 179 | 37300.37500.51900.116200.123500.128400.143100.1087600 | DG foundation works | 15d | 2027-09-02 | 2027-09-16 | 2205 |  | Sector 43 | 9705346 |
| 180 | 37300.37500.51900.116200.123500.128400.143100.1087700 | DG room epoxy flooring | 10d | 2027-09-17 | 2027-09-26 | 179 |  | Sector 43 | 9705356 |
| 181 | 37300.37500.51900.116200.123500.128400.143100.1087800 | DG room acoustics | 90d | 2027-09-17 | 2028-01-29 | 179 |  | Sector 43 | 9705366 |
| 182 | 37300.37500.51900.116200.123500.128400.143100.1087900 | DG installation including day tank & motor | 30d | 2027-09-27 | 2027-10-26 | 180 |  | Sector 43 | 9705376 |
| 183 | 37300.37500.51900.116200.123500.128400.143100.1088000 | DG stack works including frame fabrication + frame erection + pipe erection + insulation wrapping + cladding (to be taken 1.5m above the highest point of the buidling) | 210d | 2027-09-02 | 2028-05-13 | 2205 |  | Sector 43 | 9705386 |
| 184 | 37300.37500.51900.116200.123500.128400.143100.1088100 | DG earthing | 30d | 2027-10-20 | 2028-01-02 | 182FS-7d |  | Sector 43 | 9705396 |
| 185 | 37300.37500.51900.116200.123500.128400.199500 | **DG T&C** | 137d | 2027-12-16 | 2028-04-30 |  | start no earlier than 2027-12-16 | Sector 43 | 9699736 |
| 186 | 37300.37500.51900.116200.123500.128400.199500.1088200 | DG stack joint radiography | 100d | 2027-12-16 | 2028-03-24 | 183FS-150d |  | Sector 43 | 9705406 |
| 187 | 37300.37500.51900.116200.123500.128400.199500.1088300 | DG sync panel installation | 30d | 2028-02-14 | 2028-03-14 | 181, 182, 183FS-90d, 184 |  | Sector 43 | 9705416 |
| 188 | 37300.37500.51900.116200.123500.128400.199500.1088400 | DG cranking (DG standalone testing) | 7d | 2028-03-25 | 2028-03-31 | 186, 187 |  | Sector 43 | 9705426 |
| 189 | 37300.37500.51900.116200.123500.128400.199500.1088500 | DG intergrated T&C with full load setting | 30d | 2028-04-01 | 2028-04-30 | 188 |  | Sector 43 | 9705436 |
| 190 | 37300.37500.51900.116200.123500.128300 | **Transformer room & VCB (Basement 1)** | 182d | 2027-09-02 | 2028-04-15 |  | start no earlier than 2027-09-02 | Sector 43 | 9698966 |
| 191 | 37300.37500.51900.116200.123500.128300.143200 | **Transformer & HT panel installation works** | 175d | 2027-09-02 | 2028-04-08 |  | start no earlier than 2027-09-02 | Sector 43 | 9699086 |
| 192 | 37300.37500.51900.116200.123500.128300.143200.1088600 | Transformer foundation works | 15d | 2027-09-02 | 2027-09-16 | 2205 |  | Sector 43 | 9705446 |
| 193 | 37300.37500.51900.116200.123500.128300.143200.1088700 | Room epoxy flooring | 10d | 2027-09-17 | 2027-09-26 | 192 |  | Sector 43 | 9705456 |
| 194 | 37300.37500.51900.116200.123500.128300.143200.1088800 | Room finishings | 30d | 2027-09-17 | 2027-10-16 | 192 |  | Sector 43 | 9705466 |
| 195 | 37300.37500.51900.116200.123500.128300.143200.1088900 | Tranformer & HT / LT panels installation | 30d | 2027-09-27 | 2027-10-26 | 193 |  | Sector 43 | 9705476 |
| 196 | 37300.37500.51900.116200.123500.128300.143200.1089000 | Transformer connection to HT / LT panels including cable laying | 120d | 2027-10-27 | 2028-04-08 | 195 |  | Sector 43 | 9705486 |
| 197 | 37300.37500.51900.116200.123500.128300.143200.1089100 | Equipment earthing | 30d | 2027-10-20 | 2028-01-02 | 195FS-7d |  | Sector 43 | 9705496 |
| 198 | 37300.37500.51900.116200.123500.128300.225000 | **Transformer T&C** | 37d | 2028-03-10 | 2028-04-15 |  | start no earlier than 2028-03-10 | Sector 43 | 9700536 |
| 199 | 37300.37500.51900.116200.123500.128300.225000.1089200 | HT / LT panel installation & terminations | 30d | 2028-03-10 | 2028-04-08 | 194, 195, 196FS-30d, 197 |  | Sector 43 | 9705506 |
| 200 | 37300.37500.51900.116200.123500.128300.225000.1089300 | Panel charging | 7d | 2028-04-09 | 2028-04-15 | 2807, 199 |  | Sector 43 | 9705516 |

| ID | WBS | Task | Duration | Start | Finish | Predecessors | Complete | Constraint | Calendar | Unique_Task_ID |
| --- | --- | --- | --- | --- | --- | --- | --- | --- | --- | --- |
| 201 | 37300.37500.51900.216800 | **Basement Services** | 110d | 2027-08-27 | 2028-01-28 |  |  | start no earlier than 2027-08-27 | Sector 43 | 9700446 |
| 202 | 37300.37500.51900.216800.320700 | Fire | 100d | 2027-08-27 | 2028-01-18 | 161FS+30d |  |  | Sector 43 | 9700616 |
| 203 | 37300.37500.51900.216800.320800 | HVAC | 100d | 2027-08-27 | 2028-01-18 | 161FS+30d |  |  | Sector 43 | 9700626 |
| 204 | 37300.37500.51900.216800.320900 | Electrical | 100d | 2027-09-06 | 2028-01-28 | 202FS-90d, 203FS-90d, 161FS+30d |  |  | Sector 43 | 9700636 |
| 205 | 37300.37500.51900.165200 | **Boundary wall works** | 165d | 2027-09-19 | 2028-04-15 |  |  | start no earlier than 2027-09-19 | Sector 43 | 9699106 |
| 206 | 37300.37500.51900.165200.321000 | Removal of Temporary barricading | 60d | 2027-09-19 | 2028-01-01 | 2166FS+30d |  |  | Sector 43 | 9700646 |
| 207 | 37300.37500.51900.165200.321100 | Excavation works | 60d | 2027-09-24 | 2028-01-06 | 206FS-55d |  |  | Sector 43 | 9700656 |
| 208 | 37300.37500.51900.165200.321200 | Foundation works | 75d | 2027-09-29 | 2028-01-26 | 207FS-55d |  |  | Sector 43 | 9700666 |
| 209 | 37300.37500.51900.165200.321300 | Columns | 90d | 2027-10-19 | 2028-03-01 | 208FS-55d |  |  | Sector 43 | 9700676 |
| 210 | 37300.37500.51900.165200.321400 | Boundary wall erection works | 100d | 2028-01-07 | 2028-04-15 | 209FS-55d |  |  | Sector 43 | 9700686 |
| 211 | 37300.37500.51900.130000 | **Landscape works including Hardscaping, irrigation line installations, etc.** | 250d | 2028-02-06 | 2028-10-12 |  |  | start no earlier than 2028-02-06 | Sector 43 | 9698976 |
| 212 | 37300.37500.51900.130000.321500 | Landscape | 220d | 2028-02-06 | 2028-09-12 | 210FS-70d |  |  | Sector 43 | 9700696 |
| 213 | 37300.37500.51900.130000.321600 | Hardscape | 220d | 2028-02-06 | 2028-09-12 | 210FS-70d |  |  | Sector 43 | 9700706 |
| 214 | 37300.37500.51900.130000.321700 | Softscape | 240d | 2028-02-06 | 2028-10-02 | 210FS-70d |  |  | Sector 43 | 9700716 |
| 215 | 37300.37500.51900.130000.221500 | **External Services** | 250d | 2028-02-06 | 2028-10-12 |  |  | start no earlier than 2028-02-06 | Sector 43 | 9700416 |
| 216 | 37300.37500.51900.130000.221500.415900 | PHE | 160d | 2028-05-06 | 2028-10-12 | 218FS-120d |  |  | Sector 43 | 9701086 |
| 217 | 37300.37500.51900.130000.221500.416000 | Electrical | 160d | 2028-05-06 | 2028-10-12 | 218FS-120d |  |  | Sector 43 | 9701096 |
| 218 | 37300.37500.51900.130000.221500.416100 | Fire | 210d | 2028-02-06 | 2028-09-02 | 210FS-70d |  |  | Sector 43 | 9701106 |
| 219 | 37300.37500.38800 | **Tower area** | 1450d | 2025-05-05 | 2029-09-06 |  | 1% | start no earlier than 2025-05-05 | Sector 43 | 9697386 |
| 220 | 37300.37500.38800.40500 | **Tower A (2B+G+31)** | 1423d | 2025-05-05 | 2029-08-10 |  | 1% | start no earlier than 2025-05-05 | Sector 43 | 9697416 |
| 221 | 37300.37500.38800.40500.64100 | **Sub structure Works** | 371d | 2025-05-05 | 2026-05-11 |  | 17% | start no earlier than 2025-05-05 | Sector 43 | 9698586 |
| 222 | 37300.37500.38800.40500.64100.210100 | **Soil bed preparation** | 87d | 2025-05-05 | 2025-07-30 |  | 100% | start no earlier than 2025-05-05 | Sector 43 | 9700326 |
| 223 | 37300.37500.38800.40500.64100.210100.232800 | Surface dressing | 1d | 2025-05-05 | 2025-05-05 | 67FS-39d | 100% | start no earlier than 2025-05-05 | Sector 43 | 9702056 |
| 224 | 37300.37500.38800.40500.64100.210100.232900 | ATT | 2.4d | 2025-07-03 | 2025-07-28 | 223 | 100% | start no earlier than 2025-07-03 | Sector 43 | 9702066 |
| 225 | 37300.37500.38800.40500.64100.210100.233000 | PCC | 7d | 2025-07-05 | 2025-07-30 | 224FS-16.8d | 100% | start no earlier than 2025-07-05 | Sector 43 | 9702076 |

| ID | WBS | Task | Duration | Start | Finish | Predecessors | Complete | Constraint | Calendar | Unique_Task_ID |
| --- | --- | --- | --- | --- | --- | --- | --- | --- | --- | --- |
| 226 | 37300.37500.38800.40500.64100.124600 | **RCC works** | 205.8d | 2025-07-19 | 2026-02-10 |  | 34% | start no earlier than 2025-07-19 | Sector 43 | 9698796 |
| 227 | 37300.37500.38800.40500.64100.124600.128200 | **Raft including B2 slab** | 184.8d | 2025-07-19 | 2026-01-20 |  | 31% | start no earlier than 2025-07-19 | Sector 43 | 9698856 |
| 228 | 37300.37500.38800.40500.64100.124600.128200.250200 | Reinforcement | 18d | 2025-07-19 | 2025-09-19 | 225FS-11.8d | 100% | start no earlier than 2025-07-19 | Sector 43 | 9705526 |
| 229 | 37300.37500.38800.40500.64100.124600.128200.250100 | Shuttering | 15d | 2025-08-11 | 2025-09-24 | 228FS-61.8d | 100% | start no earlier than 2025-08-11 | Sector 43 | 9705536 |
| 230 | 37300.37500.38800.40500.64100.124600.128200.250000 | Concreting of Raft | 9d | 2025-09-15 | 2025-10-12 | 229FS-37d | 100% | start no earlier than 2025-09-15 | Sector 43 | 9705546 |
| 231 | 37300.37500.38800.40500.64100.124600.128200.249900 | Column till bottom of B2 slab (stitch slab) | 50d | 2025-09-24 | 2025-12-14 | 230FS-28d | 14% | start no earlier than 2025-09-24 | Sector 43 | 9705556 |
| 232 | 37300.37500.38800.40500.64100.124600.128200.249800 | Backfilling till bottom of B2 slab | 50d | 2025-09-18 | 2026-01-20 | 231FS-87d | 22% |  | Sector 43 | 9705566 |
| 233 | 37300.37500.38800.40500.64100.124600.128200.249700 | Reinforcement | 15d | 2025-09-20 | 2026-01-12 | 232FS-122d | 86% |  | Sector 43 | 9705576 |
| 234 | 37300.37500.38800.40500.64100.124600.128200.249600 | Shuttering | 75d | 2025-10-06 | 2026-01-14 | 233FS-60d | 1% | start no earlier than 2025-10-06 | Sector 43 | 9705586 |
| 235 | 37300.37500.38800.40500.64100.124600.128200.1089400 | Concreting of B2 Slab | 2d | 2026-01-13 | 2026-01-14 | 234FS-2d |  |  | Sector 43 | 9705596 |
| 236 | 37300.37500.38800.40500.64100.124600.199600 | **B1 slab** | 139d | 2025-08-14 | 2025-12-31 |  | 71% | start no earlier than 2025-08-14 | Sector 43 | 9700266 |
| 237 | 37300.37500.38800.40500.64100.124600.199600.249500 | Shuttering | 17d | 2025-10-26 | 2025-12-20 | 235FS-80d | 17% | start no earlier than 2025-10-26 | Sector 43 | 9705606 |
| 238 | 37300.37500.38800.40500.64100.124600.199600.249400 | Reinforcement | 35d | 2025-10-12 | 2025-12-31 | 237FS-69d | 34% | start no earlier than 2025-10-12 | Sector 43 | 9705616 |
| 239 | 37300.37500.38800.40500.64100.124600.199600.249300 | Concreting | 78d | 2025-08-14 | 2025-10-30 | 238FS-72d | 100% | start no earlier than 2025-08-14 | Sector 43 | 9705626 |
| 240 | 37300.37500.38800.40500.64100.124600.217200 | **Ground Floor Slab / NTA top (6.5 m height)** | 101d | 2025-11-01 | 2026-02-10 |  |  | start no earlier than 2025-11-01 | Sector 43 | 9700256 |
| 241 | 37300.37500.38800.40500.64100.124600.217200.1089500 | Shuttering | 98d | 2025-11-01 | 2026-02-07 | 239 |  |  | Sector 43 | 9705636 |
| 242 | 37300.37500.38800.40500.64100.124600.217200.1089600 | Reinforcement | 23d | 2026-01-19 | 2026-02-10 | 241FS-20d |  |  | Sector 43 | 9705646 |
| 243 | 37300.37500.38800.40500.64100.124600.217200.1089700 | Concreting | 2d | 2026-02-09 | 2026-02-10 | 242FS-2d |  |  | Sector 43 | 9705656 |
| 244 | 37300.37500.38800.40500.64100.123600 | **Sub structure finishing works** | 182d | 2025-11-04 | 2026-05-11 |  |  | start no earlier than 2025-11-04 | Sector 43 | 9698726 |
| 245 | 37300.37500.38800.40500.64100.123600.128100 | **Basement 2** | 90d | 2025-11-04 | 2026-02-08 |  |  | start no earlier than 2025-11-04 | Sector 43 | 9698846 |
| 246 | 37300.37500.38800.40500.64100.123600.128100.1089800 | Masonary | 30d | 2025-12-16 | 2026-01-14 | 239FS+45d |  |  | Sector 43 | 9705666 |
| 247 | 37300.37500.38800.40500.64100.123600.128100.1089900 | Structural steel | 20d | 2025-12-16 | 2026-01-04 | 239FS+45d |  |  | Sector 43 | 9705676 |
| 248 | 37300.37500.38800.40500.64100.123600.128100.1090000 | Plaster | 10d | 2025-12-26 | 2026-01-04 | 246FS-20d, 247FS-20d |  |  | Sector 43 | 9705686 |
| 249 | 37300.37500.38800.40500.64100.123600.128100.1090100 | White wash | 30d | 2025-12-06 | 2026-01-04 | 248FS-30d |  |  | Sector 43 | 9705696 |
| 250 | 37300.37500.38800.40500.64100.123600.128100.1090200 | VDF | 20d | 2025-11-07 | 2025-12-10 | 248FS-45d |  |  | Sector 43 | 9705706 |
| 251 | 37300.37500.38800.40500.64100.123600.128100.1090300 | Drain & Sump (incl. gratings) | 60d | 2025-11-04 | 2026-01-09 | 250FS-30d |  |  | Sector 43 | 9705716 |
| 252 | 37300.37500.38800.40500.64100.123600.128100.1090400 | Car parking marking | 30d | 2026-01-10 | 2026-02-08 | 249FS-15d, 251 |  |  | Sector 43 | 9705726 |
| 253 | 37300.37500.38800.40500.64100.123600.128100.1090500 | Signages | 30d | 2025-12-26 | 2026-01-24 | 249FS-10d |  |  | Sector 43 | 9705736 |

| ID | WBS | Task | Duration | Start | Finish | Predecessors | Constraint | Calendar | Unique_Task_ID |
| --- | --- | --- | --- | --- | --- | --- | --- | --- | --- |
| 254 | 37300.37500.38800.40500.64100.123600.128000 | **Basement 1** | 120d | 2026-01-12 | 2026-05-11 |  | start no earlier than 2026-01-12 | Sector 43 | 9698836 |
| 255 | 37300.37500.38800.40500.64100.123600.128000.1090600 | Masonary | 30d | 2026-03-28 | 2026-04-26 | 243FS+45d |  | Sector 43 | 9705746 |
| 256 | 37300.37500.38800.40500.64100.123600.128000.1090700 | Structural steel | 30d | 2026-03-28 | 2026-04-26 | 243FS+45d |  | Sector 43 | 9705756 |
| 257 | 37300.37500.38800.40500.64100.123600.128000.1090800 | Plaster | 30d | 2026-01-27 | 2026-02-25 | 255FS-90d, 256FS-90d |  | Sector 43 | 9705766 |
| 258 | 37300.37500.38800.40500.64100.123600.128000.1090900 | White wash | 30d | 2026-02-16 | 2026-03-17 | 257FS-10d |  | Sector 43 | 9705776 |
| 259 | 37300.37500.38800.40500.64100.123600.128000.1091000 | VDF | 60d | 2026-01-12 | 2026-03-12 | 257FS-45d |  | Sector 43 | 9705786 |
| 260 | 37300.37500.38800.40500.64100.123600.128000.1091100 | Drain & Sump (incl. gratings) | 60d | 2026-02-11 | 2026-04-11 | 259FS-30d |  | Sector 43 | 9705796 |
| 261 | 37300.37500.38800.40500.64100.123600.128000.1091200 | Car parking marking | 30d | 2026-04-12 | 2026-05-11 | 258FS-15d, 260 |  | Sector 43 | 9705806 |
| 262 | 37300.37500.38800.40500.64100.123600.128000.1091300 | Signages | 30d | 2026-03-08 | 2026-04-06 | 258FS-10d |  | Sector 43 | 9705816 |
| 263 | 37300.37500.38800.40500.45600 | **Super structure works** | 528d | 2026-02-11 | 2027-09-06 |  | start no earlier than 2026-02-11 | Sector 43 | 9697506 |
| 264 | 37300.37500.38800.40500.45600.46400 | **RCC works** | 528d | 2026-02-11 | 2027-09-06 |  | start no earlier than 2026-02-11 | Sector 43 | 9697536 |
| 265 | 37300.37500.38800.40500.45600.46400.199700 | **1st floor (Double ht)** | 39d | 2026-02-11 | 2026-03-21 |  | start no earlier than 2026-02-11 | Sector 43 | 9699966 |
| 266 | 37300.37500.38800.40500.45600.46400.199700.1091400 | Reinforcement | 32d | 2026-02-11 | 2026-03-14 | 243 |  | Sector 43 | 9705826 |
| 267 | 37300.37500.38800.40500.45600.46400.199700.1091500 | Wall/slab conduiting | 10d | 2026-03-05 | 2026-03-14 | 266FS-10d |  | Sector 43 | 9705836 |
| 268 | 37300.37500.38800.40500.45600.46400.199700.1091600 | Shuttering | 10d | 2026-03-10 | 2026-03-19 | 266FS-5d |  | Sector 43 | 9705846 |
| 269 | 37300.37500.38800.40500.45600.46400.199700.1091700 | Concreting | 2d | 2026-03-20 | 2026-03-21 | 266, 267, 268 |  | Sector 43 | 9705856 |
| 270 | 37300.37500.38800.40500.45600.46400.199800 | **2nd floor** | 19d | 2026-03-22 | 2026-04-09 |  | start no earlier than 2026-03-22 | Sector 43 | 9700026 |
| 271 | 37300.37500.38800.40500.45600.46400.199800.1091800 | Reinforcement | 10d | 2026-03-22 | 2026-03-31 | 269 |  | Sector 43 | 9705866 |
| 272 | 37300.37500.38800.40500.45600.46400.199800.1091900 | Wall/slab conduiting | 8d | 2026-03-30 | 2026-04-06 | 271FS-2d |  | Sector 43 | 9705876 |
| 273 | 37300.37500.38800.40500.45600.46400.199800.1092000 | Shuttering | 9d | 2026-03-30 | 2026-04-07 | 271FS-2d |  | Sector 43 | 9705886 |
| 274 | 37300.37500.38800.40500.45600.46400.199800.1092100 | Concreting | 2d | 2026-04-08 | 2026-04-09 | 271, 272, 273 |  | Sector 43 | 9705896 |
| 275 | 37300.37500.38800.40500.45600.46400.199900 | **3rd floor** | 30d | 2026-04-10 | 2026-05-09 |  | start no earlier than 2026-04-10 | Sector 43 | 9700076 |
| 276 | 37300.37500.38800.40500.45600.46400.199900.1092200 | Reinforcement | 28d | 2026-04-10 | 2026-05-07 | 274 |  | Sector 43 | 9705906 |
| 277 | 37300.37500.38800.40500.45600.46400.199900.1092300 | Wall/slab conduiting | 19d | 2026-04-19 | 2026-05-07 | 276FS-19d |  | Sector 43 | 9705916 |
| 278 | 37300.37500.38800.40500.45600.46400.199900.1092400 | Shuttering | 19d | 2026-04-19 | 2026-05-07 | 276FS-19d |  | Sector 43 | 9705926 |
| 279 | 37300.37500.38800.40500.45600.46400.199900.1092500 | Concreting | 2d | 2026-05-08 | 2026-05-09 | 276, 277, 278 |  | Sector 43 | 9705936 |

| ID | WBS | Task | Duration | Start | Finish | Predecessors | Constraint | Calendar | Unique_Task_ID |
| --- | --- | --- | --- | --- | --- | --- | --- | --- | --- |
| 280 | 37300.37500.38800.40500.45600.46400.200000 | **4th floor** | 21d | 2026-05-10 | 2026-05-30 |  | start no earlier than 2026-05-10 | Sector 43 | 9700096 |
| 281 | 37300.37500.38800.40500.45600.46400.200000.1092600 | Reinforcement | 18d | 2026-05-10 | 2026-05-27 | 279 |  | Sector 43 | 9705946 |
| 282 | 37300.37500.38800.40500.45600.46400.200000.1092700 | Wall/slab conduiting | 12d | 2026-05-16 | 2026-05-27 | 281FS-12d |  | Sector 43 | 9705956 |
| 283 | 37300.37500.38800.40500.45600.46400.200000.1092800 | Shuttering | 13d | 2026-05-16 | 2026-05-28 | 281FS-12d |  | Sector 43 | 9705966 |
| 284 | 37300.37500.38800.40500.45600.46400.200000.1092900 | Concreting | 2d | 2026-05-29 | 2026-05-30 | 281, 282, 283 |  | Sector 43 | 9705976 |
| 285 | 37300.37500.38800.40500.45600.46400.200100 | **5th floor** | 11d | 2026-05-31 | 2026-06-10 |  | start no earlier than 2026-05-31 | Sector 43 | 9700116 |
| 286 | 37300.37500.38800.40500.45600.46400.200100.1093000 | Reinforcement | 8d | 2026-05-31 | 2026-06-07 | 284 |  | Sector 43 | 9700117 |
| 287 | 37300.37500.38800.40500.45600.46400.200100.1093100 | Wall/slab conduiting | 5d | 2026-06-03 | 2026-06-07 | 286FS-5d |  | Sector 43 | 9705996 |
| 288 | 37300.37500.38800.40500.45600.46400.200100.1093200 | Shuttering | 6d | 2026-06-03 | 2026-06-08 | 286FS-5d |  | Sector 43 | 9705997 |
| 289 | 37300.37500.38800.40500.45600.46400.200100.1093300 | Concreting | 2d | 2026-06-09 | 2026-06-10 | 287, 288 |  | Sector 43 | 9706016 |
| 290 | 37300.37500.38800.40500.45600.46400.200200 | **6th floor** | 13d | 2026-06-11 | 2026-06-23 |  | start no earlier than 2026-06-11 | Sector 43 | 9699926 |
| 291 | 37300.37500.38800.40500.45600.46400.200200.1093400 | Reinforcement | 9d | 2026-06-11 | 2026-06-19 | 289 |  | Sector 43 | 9706026 |
| 292 | 37300.37500.38800.40500.45600.46400.200200.1093500 | Wall/slab conduiting | 5d | 2026-06-15 | 2026-06-19 | 291FS-5d |  | Sector 43 | 9706036 |
| 293 | 37300.37500.38800.40500.45600.46400.200200.1093600 | Shuttering | 7d | 2026-06-15 | 2026-06-21 | 291FS-5d |  | Sector 43 | 9706046 |
| 294 | 37300.37500.38800.40500.45600.46400.200200.1093700 | Concreting | 2d | 2026-06-22 | 2026-06-23 | 291, 292, 293 |  | Sector 43 | 9706056 |
| 295 | 37300.37500.38800.40500.45600.46400.200300 | **7th floor** | 13d | 2026-06-24 | 2026-07-06 |  | start no earlier than 2026-06-24 | Sector 43 | 9699916 |
| 296 | 37300.37500.38800.40500.45600.46400.200300.1093800 | Reinforcement | 9d | 2026-06-24 | 2026-07-02 | 294 |  | Sector 43 | 9706066 |
| 297 | 37300.37500.38800.40500.45600.46400.200300.1093900 | Wall/slab conduiting | 5d | 2026-06-28 | 2026-07-02 | 296FS-5d |  | Sector 43 | 9706076 |
| 298 | 37300.37500.38800.40500.45600.46400.200300.1094000 | Shuttering | 7d | 2026-06-28 | 2026-07-04 | 296FS-5d |  | Sector 43 | 9706086 |
| 299 | 37300.37500.38800.40500.45600.46400.200300.1094100 | Concreting | 2d | 2026-07-05 | 2026-07-06 | 296, 297, 298 |  | Sector 43 | 9706096 |
| 300 | 37300.37500.38800.40500.45600.46400.200400 | **8th floor** | 13d | 2026-07-07 | 2026-07-19 |  | start no earlier than 2026-07-07 | Sector 43 | 9699906 |
| 301 | 37300.37500.38800.40500.45600.46400.200400.1094200 | Reinforcement | 9d | 2026-07-07 | 2026-07-15 | 299 |  | Sector 43 | 9706106 |
| 302 | 37300.37500.38800.40500.45600.46400.200400.1094300 | Wall/slab conduiting | 5d | 2026-07-11 | 2026-07-15 | 301FS-5d |  | Sector 43 | 9706116 |
| 303 | 37300.37500.38800.40500.45600.46400.200400.1094400 | Shuttering | 7d | 2026-07-11 | 2026-07-17 | 301FS-5d |  | Sector 43 | 9706126 |
| 304 | 37300.37500.38800.40500.45600.46400.200400.1094500 | Concreting | 2d | 2026-07-18 | 2026-07-19 | 301, 302, 303 |  | Sector 43 | 9706136 |

| ID | WBS | Task | Duration | Start | Finish | Predecessors | Constraint | Calendar | Unique_Task_ID |
| --- | --- | --- | --- | --- | --- | --- | --- | --- | --- |
| 305 | 37300.37500.38800.40500.45600.46400.200500 | **9th floor** | 13d | 2026-07-20 | 2026-08-01 |  | start no earlier than 2026-07-20 | Sector 43 | 9699776 |
| 306 | 37300.37500.38800.40500.45600.46400.200500.1094600 | Reinforcement | 9d | 2026-07-20 | 2026-07-28 | 304 |  | Sector 43 | 9706146 |
| 307 | 37300.37500.38800.40500.45600.46400.200500.1094700 | Wall/slab conduiting | 5d | 2026-07-24 | 2026-07-28 | 306FS-5d |  | Sector 43 | 9706156 |
| 308 | 37300.37500.38800.40500.45600.46400.200500.1094800 | Shuttering | 7d | 2026-07-24 | 2026-07-30 | 306FS-5d |  | Sector 43 | 9706166 |
| 309 | 37300.37500.38800.40500.45600.46400.200500.1094900 | Concreting | 2d | 2026-07-31 | 2026-08-01 | 306, 307, 308 |  | Sector 43 | 9706176 |
| 310 | 37300.37500.38800.40500.45600.46400.200600 | **10th floor** | 13d | 2026-08-02 | 2026-08-14 |  | start no earlier than 2026-08-02 | Sector 43 | 9699766 |
| 311 | 37300.37500.38800.40500.45600.46400.200600.1095000 | Reinforcement | 9d | 2026-08-02 | 2026-08-10 | 309 |  | Sector 43 | 9706186 |
| 312 | 37300.37500.38800.40500.45600.46400.200600.1095100 | Wall/slab conduiting | 5d | 2026-08-06 | 2026-08-10 | 311FS-5d |  | Sector 43 | 9706196 |
| 313 | 37300.37500.38800.40500.45600.46400.200600.1095200 | Shuttering | 7d | 2026-08-06 | 2026-08-12 | 311FS-5d |  | Sector 43 | 9706206 |
| 314 | 37300.37500.38800.40500.45600.46400.200600.1095300 | Concreting | 2d | 2026-08-13 | 2026-08-14 | 311, 312, 313 |  | Sector 43 | 9706216 |
| 315 | 37300.37500.38800.40500.45600.46400.200700 | **11th floor** | 13d | 2026-08-15 | 2026-08-27 |  | start no earlier than 2026-08-15 | Sector 43 | 9699756 |
| 316 | 37300.37500.38800.40500.45600.46400.200700.1095400 | Reinforcement | 9d | 2026-08-15 | 2026-08-23 | 314 |  | Sector 43 | 9706226 |
| 317 | 37300.37500.38800.40500.45600.46400.200700.1095500 | Wall/slab conduiting | 5d | 2026-08-19 | 2026-08-23 | 316FS-5d |  | Sector 43 | 9706236 |
| 318 | 37300.37500.38800.40500.45600.46400.200700.1095600 | Shuttering | 7d | 2026-08-19 | 2026-08-25 | 316FS-5d |  | Sector 43 | 9706246 |
| 319 | 37300.37500.38800.40500.45600.46400.200700.1095700 | Concreting | 2d | 2026-08-26 | 2026-08-27 | 316, 317, 318 |  | Sector 43 | 9706256 |
| 320 | 37300.37500.38800.40500.45600.46400.200800 | **12th floor** | 13d | 2026-08-28 | 2026-09-09 |  | start no earlier than 2026-08-28 | Sector 43 | 9699746 |
| 321 | 37300.37500.38800.40500.45600.46400.200800.1095800 | Reinforcement | 9d | 2026-08-28 | 2026-09-05 | 319 |  | Sector 43 | 9706266 |
| 322 | 37300.37500.38800.40500.45600.46400.200800.1095900 | Wall/slab conduiting | 5d | 2026-09-01 | 2026-09-05 | 321FS-5d |  | Sector 43 | 9706276 |
| 323 | 37300.37500.38800.40500.45600.46400.200800.1096000 | Shuttering | 7d | 2026-09-01 | 2026-09-07 | 321FS-5d |  | Sector 43 | 9706286 |
| 324 | 37300.37500.38800.40500.45600.46400.200800.1096100 | Concreting | 2d | 2026-09-08 | 2026-09-09 | 321, 322, 323 |  | Sector 43 | 9706296 |
| 325 | 37300.37500.38800.40500.45600.46400.200900 | **13th floor** | 13d | 2026-09-10 | 2026-09-22 |  | start no earlier than 2026-09-10 | Sector 43 | 9699706 |
| 326 | 37300.37500.38800.40500.45600.46400.200900.1096200 | Reinforcement | 9d | 2026-09-10 | 2026-09-18 | 324 |  | Sector 43 | 9706306 |
| 327 | 37300.37500.38800.40500.45600.46400.200900.1096300 | Wall/slab conduiting | 5d | 2026-09-14 | 2026-09-18 | 326FS-5d |  | Sector 43 | 9706316 |
| 328 | 37300.37500.38800.40500.45600.46400.200900.1096400 | Shuttering | 7d | 2026-09-14 | 2026-09-20 | 326FS-5d |  | Sector 43 | 9706326 |
| 329 | 37300.37500.38800.40500.45600.46400.200900.1096500 | Concreting | 2d | 2026-09-21 | 2026-09-22 | 326, 327, 328 |  | Sector 43 | 9706336 |

| ID | WBS | Task | Duration | Start | Finish | Predecessors | Constraint | Calendar | Unique_Task_ID |
| --- | --- | --- | --- | --- | --- | --- | --- | --- | --- |
| 330 | 37300.37500.38800.40500.45600.46400.201000 | **14th floor** | 13d | 2026-09-23 | 2026-10-05 |  | start no earlier than 2026-09-23 | Sector 43 | 9699696 |
| 331 | 37300.37500.38800.40500.45600.46400.201000.1096600 | Reinforcement | 9d | 2026-09-23 | 2026-10-01 | 329 |  | Sector 43 | 9706346 |
| 332 | 37300.37500.38800.40500.45600.46400.201000.1096700 | Wall/slab conduiting | 5d | 2026-09-27 | 2026-10-01 | 331FS-5d |  | Sector 43 | 9706356 |
| 333 | 37300.37500.38800.40500.45600.46400.201000.1096800 | Shuttering | 7d | 2026-09-27 | 2026-10-03 | 331FS-5d |  | Sector 43 | 9706366 |
| 334 | 37300.37500.38800.40500.45600.46400.201000.1096900 | Concreting | 2d | 2026-10-04 | 2026-10-05 | 331, 332, 333 |  | Sector 43 | 9706376 |
| 335 | 37300.37500.38800.40500.45600.46400.201100 | **15th floor** | 13d | 2026-10-06 | 2026-10-18 |  | start no earlier than 2026-10-06 | Sector 43 | 9699686 |
| 336 | 37300.37500.38800.40500.45600.46400.201100.1097000 | Reinforcement | 9d | 2026-10-06 | 2026-10-14 | 334 |  | Sector 43 | 9706386 |
| 337 | 37300.37500.38800.40500.45600.46400.201100.1097100 | Wall/slab conduiting | 5d | 2026-10-10 | 2026-10-14 | 336FS-5d |  | Sector 43 | 9706396 |
| 338 | 37300.37500.38800.40500.45600.46400.201100.1097200 | Shuttering | 7d | 2026-10-10 | 2026-10-16 | 336FS-5d |  | Sector 43 | 9706406 |
| 339 | 37300.37500.38800.40500.45600.46400.201100.1097300 | Concreting | 2d | 2026-10-17 | 2026-10-18 | 336, 337, 338 |  | Sector 43 | 9706416 |
| 340 | 37300.37500.38800.40500.45600.46400.201200 | **16th floor** | 13d | 2026-10-19 | 2026-10-31 |  | start no earlier than 2026-10-19 | Sector 43 | 9699676 |
| 341 | 37300.37500.38800.40500.45600.46400.201200.1097400 | Reinforcement | 9d | 2026-10-19 | 2026-10-27 | 339 |  | Sector 43 | 9706426 |
| 342 | 37300.37500.38800.40500.45600.46400.201200.1097500 | Wall/slab conduiting | 5d | 2026-10-23 | 2026-10-27 | 341FS-5d |  | Sector 43 | 9706476 |
| 343 | 37300.37500.38800.40500.45600.46400.201200.1097600 | Shuttering | 7d | 2026-10-23 | 2026-10-29 | 341FS-5d |  | Sector 43 | 9706486 |
| 344 | 37300.37500.38800.40500.45600.46400.201200.1097700 | Concreting | 2d | 2026-10-30 | 2026-10-31 | 341, 342, 343 |  | Sector 43 | 9706496 |
| 345 | 37300.37500.38800.40500.45600.46400.201300 | **17th floor - Refuge Floor** | 18d | 2026-12-16 | 2027-01-02 |  | start no earlier than 2026-12-16 | Sector 43 | 9699666 |
| 346 | 37300.37500.38800.40500.45600.46400.201300.1097800 | Reinforcement | 16d | 2026-12-16 | 2026-12-31 | 344 |  | Sector 43 | 9706506 |
| 347 | 37300.37500.38800.40500.45600.46400.201300.1097900 | Wall/slab conduiting | 9d | 2026-12-23 | 2026-12-31 | 346FS-9d |  | Sector 43 | 9706516 |
| 348 | 37300.37500.38800.40500.45600.46400.201300.1098000 | Shuttering | 9d | 2026-12-23 | 2026-12-31 | 346FS-9d |  | Sector 43 | 9706526 |
| 349 | 37300.37500.38800.40500.45600.46400.201300.1098100 | Concreting | 2d | 2027-01-01 | 2027-01-02 | 346, 347, 348 |  | Sector 43 | 9706536 |
| 350 | 37300.37500.38800.40500.45600.46400.201400 | **18th floor** | 13d | 2027-01-03 | 2027-01-15 |  | start no earlier than 2027-01-03 | Sector 43 | 9699656 |
| 351 | 37300.37500.38800.40500.45600.46400.201400.1098200 | Reinforcement | 9d | 2027-01-03 | 2027-01-11 | 349 |  | Sector 43 | 9706546 |
| 352 | 37300.37500.38800.40500.45600.46400.201400.1098300 | Wall/slab conduiting | 5d | 2027-01-07 | 2027-01-11 | 351FS-5d |  | Sector 43 | 9706556 |
| 353 | 37300.37500.38800.40500.45600.46400.201400.1098400 | Shuttering | 7d | 2027-01-07 | 2027-01-13 | 351FS-5d |  | Sector 43 | 9706566 |
| 354 | 37300.37500.38800.40500.45600.46400.201400.1098500 | Concreting | 2d | 2027-01-14 | 2027-01-15 | 351, 352, 353 |  | Sector 43 | 9706576 |

| ID | WBS | Task | Duration | Start | Finish | Predecessors | Constraint | Calendar | Unique_Task_ID |
| --- | --- | --- | --- | --- | --- | --- | --- | --- | --- |
| 355 | 37300.37500.38800.40500.45600.46400.201500 | **19th floor** | 12d | 2027-01-16 | 2027-01-27 |  | start no earlier than 2027-01-16 | Sector 43 | 9699646 |
| 356 | 37300.37500.38800.40500.45600.46400.201500.1098600 | Reinforcement | 10d | 2027-01-16 | 2027-01-25 | 354 |  | Sector 43 | 9706586 |
| 357 | 37300.37500.38800.40500.45600.46400.201500.1098700 | Wall/slab conduiting | 6d | 2027-01-20 | 2027-01-25 | 356FS-6d |  | Sector 43 | 9706596 |
| 358 | 37300.37500.38800.40500.45600.46400.201500.1098800 | Shuttering | 6d | 2027-01-20 | 2027-01-25 | 356FS-6d |  | Sector 43 | 9706606 |
| 359 | 37300.37500.38800.40500.45600.46400.201500.1098900 | Concreting | 2d | 2027-01-26 | 2027-01-27 | 356, 357, 358 |  | Sector 43 | 9706616 |
| 360 | 37300.37500.38800.40500.45600.46400.201600 | **20th floor** | 12d | 2027-01-28 | 2027-02-08 |  | start no earlier than 2027-01-28 | Sector 43 | 9699616 |
| 361 | 37300.37500.38800.40500.45600.46400.201600.1099000 | Reinforcement | 10d | 2027-01-28 | 2027-02-06 | 359 |  | Sector 43 | 9706626 |
| 362 | 37300.37500.38800.40500.45600.46400.201600.1099100 | Wall/slab conduiting | 6d | 2027-02-01 | 2027-02-06 | 361FS-6d |  | Sector 43 | 9706636 |
| 363 | 37300.37500.38800.40500.45600.46400.201600.1099200 | Shuttering | 6d | 2027-02-01 | 2027-02-06 | 361FS-6d |  | Sector 43 | 9706646 |
| 364 | 37300.37500.38800.40500.45600.46400.201600.1099300 | Concreting | 2d | 2027-02-07 | 2027-02-08 | 361, 362, 363 |  | Sector 43 | 9706656 |
| 365 | 37300.37500.38800.40500.45600.46400.201700 | **21st floor** | 12d | 2027-02-09 | 2027-02-20 |  | start no earlier than 2027-02-09 | Sector 43 | 9699606 |
| 366 | 37300.37500.38800.40500.45600.46400.201700.1099400 | Reinforcement | 10d | 2027-02-09 | 2027-02-18 | 364 |  | Sector 43 | 9706666 |
| 367 | 37300.37500.38800.40500.45600.46400.201700.1099500 | Wall/slab conduiting | 6d | 2027-02-13 | 2027-02-18 | 366FS-6d |  | Sector 43 | 9706676 |
| 368 | 37300.37500.38800.40500.45600.46400.201700.1099600 | Shuttering | 6d | 2027-02-13 | 2027-02-18 | 366FS-6d |  | Sector 43 | 9706686 |
| 369 | 37300.37500.38800.40500.45600.46400.201700.1099700 | Concreting | 2d | 2027-02-19 | 2027-02-20 | 366, 367, 368 |  | Sector 43 | 9706696 |
| 370 | 37300.37500.38800.40500.45600.46400.201800 | **22nd floor** | 12d | 2027-02-21 | 2027-03-04 |  | start no earlier than 2027-02-21 | Sector 43 | 9699596 |
| 371 | 37300.37500.38800.40500.45600.46400.201800.1099800 | Reinforcement | 10d | 2027-02-21 | 2027-03-02 | 369 |  | Sector 43 | 9706706 |
| 372 | 37300.37500.38800.40500.45600.46400.201800.1099900 | Wall/slab conduiting | 6d | 2027-02-25 | 2027-03-02 | 371FS-6d |  | Sector 43 | 9706716 |
| 373 | 37300.37500.38800.40500.45600.46400.201800.1100000 | Shuttering | 6d | 2027-02-25 | 2027-03-02 | 371FS-6d |  | Sector 43 | 9706726 |
| 374 | 37300.37500.38800.40500.45600.46400.201800.1100100 | Concreting | 2d | 2027-03-03 | 2027-03-04 | 371, 372, 373 |  | Sector 43 | 9706736 |
| 375 | 37300.37500.38800.40500.45600.46400.201900 | **23rd floor** | 12d | 2027-03-05 | 2027-03-16 |  | start no earlier than 2027-03-05 | Sector 43 | 9699586 |
| 376 | 37300.37500.38800.40500.45600.46400.201900.1100200 | Reinforcement | 10d | 2027-03-05 | 2027-03-14 | 374 |  | Sector 43 | 9706746 |
| 377 | 37300.37500.38800.40500.45600.46400.201900.1100300 | Wall/slab conduiting | 6d | 2027-03-09 | 2027-03-14 | 376FS-6d |  | Sector 43 | 9706756 |
| 378 | 37300.37500.38800.40500.45600.46400.201900.1100400 | Shuttering | 6d | 2027-03-09 | 2027-03-14 | 376FS-6d |  | Sector 43 | 9706766 |
| 379 | 37300.37500.38800.40500.45600.46400.201900.1100500 | Concreting | 2d | 2027-03-15 | 2027-03-16 | 376, 377, 378 |  | Sector 43 | 9706776 |

| ID | WBS | Task | Duration | Start | Finish | Predecessors | Constraint | Calendar | Unique_Task_ID |
| --- | --- | --- | --- | --- | --- | --- | --- | --- | --- |
| 380 | 37300.37500.38800.40500.45600.46400.202000 | **24th floor** | 12d | 2027-03-17 | 2027-03-28 |  | start no earlier than 2027-03-17 | Sector 43 | 9699456 |
| 381 | 37300.37500.38800.40500.45600.46400.202000.1100600 | Reinforcement | 10d | 2027-03-17 | 2027-03-26 | 379 |  | Sector 43 | 9706786 |
| 382 | 37300.37500.38800.40500.45600.46400.202000.1100700 | Wall/slab conduiting | 6d | 2027-03-21 | 2027-03-26 | 381FS-6d |  | Sector 43 | 9706796 |
| 383 | 37300.37500.38800.40500.45600.46400.202000.1100800 | Shuttering | 6d | 2027-03-21 | 2027-03-26 | 381FS-6d |  | Sector 43 | 9706806 |
| 384 | 37300.37500.38800.40500.45600.46400.202000.1100900 | Concreting | 2d | 2027-03-27 | 2027-03-28 | 381, 382, 383 |  | Sector 43 | 9706816 |
| 385 | 37300.37500.38800.40500.45600.46400.202100 | **25th floor - Refuge Floor** | 18d | 2027-03-29 | 2027-04-15 |  | start no earlier than 2027-03-29 | Sector 43 | 9699436 |
| 386 | 37300.37500.38800.40500.45600.46400.202100.1101000 | Reinforcement | 16d | 2027-03-29 | 2027-04-13 | 384 |  | Sector 43 | 9706826 |
| 387 | 37300.37500.38800.40500.45600.46400.202100.1101100 | Wall/slab conduiting | 6d | 2027-04-05 | 2027-04-10 | 386FS-9d |  | Sector 43 | 9706836 |
| 388 | 37300.37500.38800.40500.45600.46400.202100.1101200 | Shuttering | 8d | 2027-04-05 | 2027-04-12 | 386FS-9d |  | Sector 43 | 9706846 |
| 389 | 37300.37500.38800.40500.45600.46400.202100.1101300 | Concreting | 2d | 2027-04-14 | 2027-04-15 | 386, 387, 388 |  | Sector 43 | 9706856 |
| 390 | 37300.37500.38800.40500.45600.46400.202200 | **26th floor** | 12d | 2027-04-16 | 2027-04-27 |  | start no earlier than 2027-04-16 | Sector 43 | 9699426 |
| 391 | 37300.37500.38800.40500.45600.46400.202200.1101400 | Reinforcement | 10d | 2027-04-16 | 2027-04-25 | 389 |  | Sector 43 | 9706866 |
| 392 | 37300.37500.38800.40500.45600.46400.202200.1101500 | Wall/slab conduiting | 6d | 2027-04-20 | 2027-04-25 | 391FS-6d |  | Sector 43 | 9706876 |
| 393 | 37300.37500.38800.40500.45600.46400.202200.1101600 | Shuttering | 6d | 2027-04-20 | 2027-04-25 | 391FS-6d |  | Sector 43 | 9706886 |
| 394 | 37300.37500.38800.40500.45600.46400.202200.1101700 | Concreting | 2d | 2027-04-26 | 2027-04-27 | 391, 392, 393 |  | Sector 43 | 9706896 |
| 395 | 37300.37500.38800.40500.45600.46400.202300 | **27th floor** | 12d | 2027-04-28 | 2027-05-09 |  | start no earlier than 2027-04-28 | Sector 43 | 9699396 |
| 396 | 37300.37500.38800.40500.45600.46400.202300.1101800 | Reinforcement | 10d | 2027-04-28 | 2027-05-07 | 394 |  | Sector 43 | 9706906 |
| 397 | 37300.37500.38800.40500.45600.46400.202300.1101900 | Wall/slab conduiting | 6d | 2027-05-02 | 2027-05-07 | 396FS-6d |  | Sector 43 | 9706916 |
| 398 | 37300.37500.38800.40500.45600.46400.202300.1102000 | Shuttering | 6d | 2027-05-02 | 2027-05-07 | 396FS-6d |  | Sector 43 | 9706926 |
| 399 | 37300.37500.38800.40500.45600.46400.202300.1102100 | Concreting | 2d | 2027-05-08 | 2027-05-09 | 396, 397, 398 |  | Sector 43 | 9706936 |
| 400 | 37300.37500.38800.40500.45600.46400.202400 | **28th floor** | 12d | 2027-05-10 | 2027-05-21 |  | start no earlier than 2027-05-10 | Sector 43 | 9699366 |
| 401 | 37300.37500.38800.40500.45600.46400.202400.1102200 | Reinforcement | 10d | 2027-05-10 | 2027-05-19 | 399 |  | Sector 43 | 9706946 |
| 402 | 37300.37500.38800.40500.45600.46400.202400.1102300 | Wall/slab conduiting | 6d | 2027-05-14 | 2027-05-19 | 401FS-6d |  | Sector 43 | 9706956 |
| 403 | 37300.37500.38800.40500.45600.46400.202400.1102400 | Shuttering | 6d | 2027-05-14 | 2027-05-19 | 401FS-6d |  | Sector 43 | 9706966 |
| 404 | 37300.37500.38800.40500.45600.46400.202400.1102500 | Concreting | 2d | 2027-05-20 | 2027-05-21 | 401, 402, 403 |  | Sector 43 | 9706976 |

| ID | WBS | Task | Duration | Start | Finish | Predecessors | Constraint | Calendar | Unique_Task_ID |
| --- | --- | --- | --- | --- | --- | --- | --- | --- | --- |
| 405 | 37300.37500.38800.40500.45600.46400.202500 | **29th floor** | 12d | 2027-05-22 | 2027-06-02 |  | start no earlier than 2027-05-22 | Sector 43 | 9699306 |
| 406 | 37300.37500.38800.40500.45600.46400.202500.1102600 | Reinforcement | 10d | 2027-05-22 | 2027-05-31 | 404 |  | Sector 43 | 9706986 |
| 407 | 37300.37500.38800.40500.45600.46400.202500.1102700 | Wall/slab conduiting | 6d | 2027-05-26 | 2027-05-31 | 406FS-6d |  | Sector 43 | 9706996 |
| 408 | 37300.37500.38800.40500.45600.46400.202500.1102800 | Shuttering | 6d | 2027-05-26 | 2027-05-31 | 406FS-6d |  | Sector 43 | 9707006 |
| 409 | 37300.37500.38800.40500.45600.46400.202500.1102900 | Concreting | 2d | 2027-06-01 | 2027-06-02 | 406, 407, 408 |  | Sector 43 | 9707016 |
| 410 | 37300.37500.38800.40500.45600.46400.202600 | **30th floor** | 12d | 2027-06-03 | 2027-06-14 |  | start no earlier than 2027-06-03 | Sector 43 | 9699286 |
| 411 | 37300.37500.38800.40500.45600.46400.202600.1103000 | Reinforcement | 10d | 2027-06-03 | 2027-06-12 | 409 |  | Sector 43 | 9707026 |
| 412 | 37300.37500.38800.40500.45600.46400.202600.1103100 | Wall/slab conduiting | 6d | 2027-06-07 | 2027-06-12 | 411FS-6d |  | Sector 43 | 9707036 |
| 413 | 37300.37500.38800.40500.45600.46400.202600.1103200 | Shuttering | 6d | 2027-06-07 | 2027-06-12 | 411FS-6d |  | Sector 43 | 9707046 |
| 414 | 37300.37500.38800.40500.45600.46400.202600.1103300 | Concreting | 2d | 2027-06-13 | 2027-06-14 | 411, 412, 413 |  | Sector 43 | 9707056 |
| 415 | 37300.37500.38800.40500.45600.46400.202700 | **31st floor** | 14d | 2027-06-15 | 2027-06-28 |  | start no earlier than 2027-06-15 | Sector 43 | 9699196 |
| 416 | 37300.37500.38800.40500.45600.46400.202700.1103400 | Reinforcement | 10d | 2027-06-15 | 2027-06-24 | 414 |  | Sector 43 | 9707066 |
| 417 | 37300.37500.38800.40500.45600.46400.202700.1103500 | Wall/slab conduiting | 6d | 2027-06-19 | 2027-06-24 | 416FS-6d |  | Sector 43 | 9707076 |
| 418 | 37300.37500.38800.40500.45600.46400.202700.1103600 | Shuttering | 8d | 2027-06-19 | 2027-06-26 | 417FS-6d |  | Sector 43 | 9707086 |
| 419 | 37300.37500.38800.40500.45600.46400.202700.1103700 | Concreting | 2d | 2027-06-27 | 2027-06-28 | 416, 417, 418 |  | Sector 43 | 9707096 |
| 420 | 37300.37500.38800.40500.45600.46400.202800 | **Terrace floor** | 25d | 2027-06-29 | 2027-07-23 |  | start no earlier than 2027-06-29 | Sector 43 | 9699186 |
| 421 | 37300.37500.38800.40500.45600.46400.202800.1103800 | Reinforcement | 23d | 2027-06-29 | 2027-07-21 | 419 |  | Sector 43 | 9707106 |
| 422 | 37300.37500.38800.40500.45600.46400.202800.1103900 | Wall/slab conduiting | 20d | 2027-07-01 | 2027-07-20 | 421FS-21d |  | Sector 43 | 9707116 |
| 423 | 37300.37500.38800.40500.45600.46400.202800.1104000 | Shuttering | 20d | 2027-07-01 | 2027-07-20 | 421FS-21d |  | Sector 43 | 9707126 |
| 424 | 37300.37500.38800.40500.45600.46400.202800.1104100 | Concreting | 2d | 2027-07-22 | 2027-07-23 | 421, 422, 423 |  | Sector 43 | 9707136 |
| 425 | 37300.37500.38800.40500.45600.46400.202900 | **LMR, OHT & Mumty** | 45d | 2027-07-24 | 2027-09-06 |  | start no earlier than 2027-07-24 | Sector 43 | 9699166 |
| 426 | 37300.37500.38800.40500.45600.46400.202900.1104200 | Reinforcement | 41d | 2027-07-24 | 2027-09-02 | 424 |  | Sector 43 | 9707146 |
| 427 | 37300.37500.38800.40500.45600.46400.202900.1104300 | Wall conduiting | 20d | 2027-08-04 | 2027-08-23 | 426FS-30d |  | Sector 43 | 9707156 |
| 428 | 37300.37500.38800.40500.45600.46400.202900.1104400 | Shuttering | 20d | 2027-08-04 | 2027-08-23 | 426FS-30d |  | Sector 43 | 9707166 |
| 429 | 37300.37500.38800.40500.45600.46400.202900.1104500 | Concreting | 4d | 2027-09-03 | 2027-09-06 | 426, 427, 428 |  | Sector 43 | 9707176 |

| ID | WBS | Task | Duration | Start | Finish | Predecessors | Constraint | Calendar | Unique_Task_ID |
| --- | --- | --- | --- | --- | --- | --- | --- | --- | --- |
| 430 | 37300.37500.38800.40500.45600.49300 | **Post pour works** | 397d | 2026-05-31 | 2027-08-15 |  | start no earlier than 2026-05-31 | Sector 43 | 9697566 |
| 431 | 37300.37500.38800.40500.45600.49300.867700 | 1st floor | 7d | 2026-05-31 | 2026-06-06 | 284 |  | Sector 43 | 9702086 |
| 432 | 37300.37500.38800.40500.45600.49300.867800 | 2nd floor | 7d | 2026-06-11 | 2026-06-17 | 431, 289 |  | Sector 43 | 9702096 |
| 433 | 37300.37500.38800.40500.45600.49300.867900 | 3rd floor | 7d | 2026-06-24 | 2026-06-30 | 432, 294 |  | Sector 43 | 9702106 |
| 434 | 37300.37500.38800.40500.45600.49300.868000 | 4th floor | 7d | 2026-07-07 | 2026-07-13 | 433, 299 |  | Sector 43 | 9702116 |
| 435 | 37300.37500.38800.40500.45600.49300.868100 | 5th floor | 7d | 2026-07-20 | 2026-07-26 | 434, 304 |  | Sector 43 | 9702126 |
| 436 | 37300.37500.38800.40500.45600.49300.868200 | 6th floor | 7d | 2026-08-02 | 2026-08-08 | 435, 309 |  | Sector 43 | 9702136 |
| 437 | 37300.37500.38800.40500.45600.49300.868300 | 7th floor | 7d | 2026-08-15 | 2026-08-21 | 436, 314 |  | Sector 43 | 9702146 |
| 438 | 37300.37500.38800.40500.45600.49300.868400 | 8th floor | 7d | 2026-08-28 | 2026-09-03 | 437, 319 |  | Sector 43 | 9702156 |
| 439 | 37300.37500.38800.40500.45600.49300.868500 | 9th floor | 7d | 2026-09-10 | 2026-09-16 | 438, 324 |  | Sector 43 | 9702166 |
| 440 | 37300.37500.38800.40500.45600.49300.868600 | 10th floor | 7d | 2026-09-23 | 2026-09-29 | 439, 329 |  | Sector 43 | 9702176 |
| 441 | 37300.37500.38800.40500.45600.49300.868700 | 11th floor | 7d | 2026-10-06 | 2026-10-12 | 440, 334 |  | Sector 43 | 9702186 |
| 442 | 37300.37500.38800.40500.45600.49300.868800 | 12th floor | 7d | 2026-10-19 | 2026-10-25 | 441, 339 |  | Sector 43 | 9702196 |
| 443 | 37300.37500.38800.40500.45600.49300.868900 | 13th floor | 7d | 2026-12-16 | 2026-12-22 | 442, 344 |  | Sector 43 | 9702206 |
| 444 | 37300.37500.38800.40500.45600.49300.869000 | 14th floor | 7d | 2027-01-03 | 2027-01-09 | 443, 349 |  | Sector 43 | 9702216 |
| 445 | 37300.37500.38800.40500.45600.49300.869100 | 15th floor | 7d | 2027-01-16 | 2027-01-22 | 444, 354 |  | Sector 43 | 9702226 |
| 446 | 37300.37500.38800.40500.45600.49300.869200 | 16th floor | 7d | 2027-01-28 | 2027-02-03 | 445, 359 |  | Sector 43 | 9702236 |
| 447 | 37300.37500.38800.40500.45600.49300.869300 | 17th floor - Refuge Floor | 7d | 2027-02-09 | 2027-02-15 | 446, 364 |  | Sector 43 | 9702246 |
| 448 | 37300.37500.38800.40500.45600.49300.869400 | 18th floor | 7d | 2027-02-21 | 2027-02-27 | 447, 369 |  | Sector 43 | 9702256 |
| 449 | 37300.37500.38800.40500.45600.49300.869500 | 19th floor | 7d | 2027-03-05 | 2027-03-11 | 448, 374 |  | Sector 43 | 9702266 |
| 450 | 37300.37500.38800.40500.45600.49300.869600 | 20th floor | 7d | 2027-03-17 | 2027-03-23 | 449, 379 |  | Sector 43 | 9702276 |
| 451 | 37300.37500.38800.40500.45600.49300.869700 | 21st floor | 7d | 2027-03-29 | 2027-04-04 | 450, 384 |  | Sector 43 | 9702286 |
| 452 | 37300.37500.38800.40500.45600.49300.869800 | 22nd floor | 7d | 2027-04-16 | 2027-04-22 | 451, 389 |  | Sector 43 | 9702296 |
| 453 | 37300.37500.38800.40500.45600.49300.869900 | 23rd floor | 7d | 2027-04-28 | 2027-05-04 | 452, 394 |  | Sector 43 | 9702306 |
| 454 | 37300.37500.38800.40500.45600.49300.870000 | 24th floor | 7d | 2027-05-10 | 2027-05-16 | 453, 399 |  | Sector 43 | 9702316 |
| 455 | 37300.37500.38800.40500.45600.49300.870100 | 25th floor - Refuge Floor | 7d | 2027-05-22 | 2027-05-28 | 454, 404 |  | Sector 43 | 9702326 |
| 456 | 37300.37500.38800.40500.45600.49300.870200 | 26th floor | 7d | 2027-06-03 | 2027-06-09 | 455, 409 |  | Sector 43 | 9702336 |
| 457 | 37300.37500.38800.40500.45600.49300.870300 | 27th floor | 7d | 2027-06-15 | 2027-06-21 | 456, 414 |  | Sector 43 | 9702346 |
| 458 | 37300.37500.38800.40500.45600.49300.870400 | 28th floor | 7d | 2027-06-29 | 2027-07-05 | 457, 419 |  | Sector 43 | 9702356 |
| 459 | 37300.37500.38800.40500.45600.49300.870500 | 29th floor | 7d | 2027-07-06 | 2027-07-12 | 458 |  | Sector 43 | 9702366 |
| 460 | 37300.37500.38800.40500.45600.49300.870600 | 30th floor | 7d | 2027-07-13 | 2027-07-19 | 459 |  | Sector 43 | 9702376 |
| 461 | 37300.37500.38800.40500.45600.49300.870700 | 31st floor | 7d | 2027-07-20 | 2027-07-26 | 460 |  | Sector 43 | 9702386 |
| 462 | 37300.37500.38800.40500.45600.49300.870800 | Terrace floor | 10d | 2027-07-27 | 2027-08-05 | 461 |  | Sector 43 | 9702396 |
| 463 | 37300.37500.38800.40500.45600.49300.870900 | LMR, OHT & Mumty | 10d | 2027-08-06 | 2027-08-15 | 462 |  | Sector 43 | 9702406 |

| ID | WBS | Task | Duration | Start | Finish | Predecessors | Constraint | Calendar | Unique_Task_ID |
| --- | --- | --- | --- | --- | --- | --- | --- | --- | --- |
| 464 | 37300.37500.38800.40500.43000 | **Finishing works** | 877d | 2025-11-01 | 2028-06-25 |  | start no earlier than 2025-11-01 | Sector 43 | 9697436 |
| 465 | 37300.37500.38800.40500.43000.43900 | **Flat finishings** | 802d | 2025-11-01 | 2028-04-11 |  | start no earlier than 2025-11-01 | Sector 43 | 9697466 |
| 466 | 37300.37500.38800.40500.43000.43900.58300 | **1st floor** | 112d | 2026-06-10 | 2026-09-29 |  | start no earlier than 2026-06-10 | Sector 43 | 9697626 |
| 467 | 37300.37500.38800.40500.43000.43900.58300.1104600 | Blockwork | 20d | 2026-06-10 | 2026-07-02 | 284FS+8d |  | Indian Calendar | 9697627 |
| 468 | 37300.37500.38800.40500.43000.43900.58300.1104700 | Installation of temporary Main door | 4d | 2026-07-03 | 2026-07-06 | 467 |  | Sector 43 | 9707196 |
| 469 | 37300.37500.38800.40500.43000.43900.58300.1104800 | Fire sprinkler pipe fixing | 10d | 2026-07-03 | 2026-07-12 | 467 |  | Sector 43 | 9707206 |
| 470 | 37300.37500.38800.40500.43000.43900.58300.1104900 | Internal Plumbing Works | 10d | 2026-06-27 | 2026-07-06 | 467FS-6d |  | Sector 43 | 9707216 |
| 471 | 37300.37500.38800.40500.43000.43900.58300.1105000 | Waterproofing | 21d | 2026-07-02 | 2026-07-22 | 470FS-5d |  | Sector 43 | 9707226 |
| 472 | 37300.37500.38800.40500.43000.43900.58300.1105100 | Internal Plaster | 11d | 2026-07-02 | 2026-07-12 | 470FS-5d |  | Sector 43 | 9707236 |
| 473 | 37300.37500.38800.40500.43000.43900.58300.1105200 | IPS flooring work | 13d | 2026-07-03 | 2026-07-15 | 467 |  | Sector 43 | 9707246 |
| 474 | 37300.37500.38800.40500.43000.43900.58300.1105300 | Toilet dado work | 12d | 2026-07-21 | 2026-08-01 | 471FS-2d, 472 |  | Sector 43 | 9707256 |
| 475 | 37300.37500.38800.40500.43000.43900.58300.1105400 | Toilet flooring work | 15d | 2026-08-02 | 2026-08-16 | 474 |  | Sector 43 | 9707266 |
| 476 | 37300.37500.38800.40500.43000.43900.58300.1105500 | Living dinning flooring | 12d | 2026-07-28 | 2026-08-08 | 473, 475FS-20d |  | Sector 43 | 9707276 |
| 477 | 37300.37500.38800.40500.43000.43900.58300.1105600 | Electrical wiring work | 12d | 2026-08-09 | 2026-08-20 | 476 |  | Sector 43 | 9707286 |
| 478 | 37300.37500.38800.40500.43000.43900.58300.1105700 | Aluminium door-window fixing | 10d | 2026-09-20 | 2026-09-29 | 477FS+30d |  | Sector 43 | 9707296 |
| 479 | 37300.37500.38800.40500.43000.43900.58300.1105800 | Putty primer coat | 10d | 2026-08-13 | 2026-08-22 | 477FS-8d |  | Sector 43 | 9707306 |
| 480 | 37300.37500.38800.40500.43000.43900.58300.1105900 | Prehung door fixing | 8d | 2026-08-18 | 2026-08-25 | 479FS-5d |  | Sector 43 | 9707316 |
| 481 | 37300.37500.38800.40500.43000.43900.58300.1106000 | Painting 1st coat | 12d | 2026-08-26 | 2026-09-06 | 480 |  | Sector 43 | 9707326 |
| 482 | 37300.37500.38800.40500.43000.43900.58300.1106100 | False Cieling panel fixing | 10d | 2026-09-07 | 2026-09-16 | 481 |  | Sector 43 | 9707336 |
| 483 | 37300.37500.38800.40500.43000.43900.58400 | **2nd floor** | 342d | 2025-11-01 | 2026-10-09 |  | start no earlier than 2025-11-01 | Sector 43 | 9697636 |
| 484 | 37300.37500.38800.40500.43000.43900.58400.1106200 | Block Work | 20d | 2026-07-08 | 2026-07-27 | 434FS-6d |  | Sector 43 | 9707346 |
| 485 | 37300.37500.38800.40500.43000.43900.58400.1106300 | Installation of temporary Main door | 4d | 2026-07-28 | 2026-07-31 | 484 |  | Sector 43 | 9707356 |
| 486 | 37300.37500.38800.40500.43000.43900.58400.1106400 | Fire sprinkler pipe fixing | 10d | 2026-07-28 | 2026-08-06 | 469, 484 |  | Sector 43 | 9707366 |
| 487 | 37300.37500.38800.40500.43000.43900.58400.1106500 | Internal Plumbing Works | 10d | 2026-07-23 | 2026-08-01 | 484FS-5d |  | Sector 43 | 9707376 |
| 488 | 37300.37500.38800.40500.43000.43900.58400.1106600 | Waterproofing | 21d | 2026-07-28 | 2026-08-17 | 487FS-5d |  | Sector 43 | 9707386 |
| 489 | 37300.37500.38800.40500.43000.43900.58400.1106700 | Internal Plaster | 11d | 2026-07-28 | 2026-08-07 | 487FS-5d |  | Sector 43 | 9707396 |
| 490 | 37300.37500.38800.40500.43000.43900.58400.1106800 | IPS flooring work | 13d | 2026-07-28 | 2026-08-09 | 484 |  | Sector 43 | 9707406 |
| 491 | 37300.37500.38800.40500.43000.43900.58400.1106900 | Toilet dado work | 12d | 2026-08-16 | 2026-08-27 | 488FS-2d, 489 |  | Sector 43 | 9707416 |
| 492 | 37300.37500.38800.40500.43000.43900.58400.1107000 | Toilet flooring work | 15d | 2026-08-28 | 2026-09-11 | 491 |  | Sector 43 | 9707426 |
| 493 | 37300.37500.38800.40500.43000.43900.58400.1107100 | Living dinning flooring | 12d | 2026-08-26 | 2026-09-06 | 490, 492FS-17d |  | Sector 43 | 9707436 |
| 494 | 37300.37500.38800.40500.43000.43900.58400.1107200 | Electrical wiring work | 12d | 2026-09-07 | 2026-09-18 | 493, 496FS-5d |  | Sector 43 | 9707446 |
| 495 | 37300.37500.38800.40500.43000.43900.58400.1107300 | Aluminium door-window fixing | 10d | 2026-09-30 | 2026-10-09 | 478 |  | Sector 43 | 9707456 |
| 496 | 37300.37500.38800.40500.43000.43900.58400.1107400 | Putty primer coat | 10d | 2025-11-01 | 2025-11-04 |  | start no earlier than 2025-11-01 | Sector 43 | 9707466 |
| 497 | 37300.37500.38800.40500.43000.43900.58400.1107500 | Prehung door fixing | 8d | 2025-11-01 | 2025-11-03 |  | start no earlier than 2025-11-01 | Sector 43 | 9707476 |
| 498 | 37300.37500.38800.40500.43000.43900.58400.1107600 | Painting 1st coat | 12d | 2025-11-03 | 2025-11-07 | 497 |  | Sector 43 | 9707486 |
| 499 | 37300.37500.38800.40500.43000.43900.58400.1107700 | False Cieling panel fixing | 10d | 2026-09-17 | 2026-09-26 | 482, 498 |  | Sector 43 | 9707496 |

| ID | WBS | Task | Duration | Start | Finish | Predecessors | Constraint | Calendar | Unique_Task_ID |
| --- | --- | --- | --- | --- | --- | --- | --- | --- | --- |
| 500 | 37300.37500.38800.40500.43000.43900.58500 | **3rd Floor** | 163d | 2026-07-21 | 2027-01-26 |  | start no earlier than 2026-07-21 | Indian Calendar | 9707506 |
| 501 | 37300.37500.38800.40500.43000.43900.58500.1107800 | Blockwork | 20d | 2026-07-21 | 2026-08-12 | 435FS-5d |  | Indian Calendar | 9707516 |
| 502 | 37300.37500.38800.40500.43000.43900.58500.1107900 | Installation of temporary Main door | 4d | 2026-08-13 | 2026-08-17 | 501 |  | Indian Calendar | 9707526 |
| 503 | 37300.37500.38800.40500.43000.43900.58500.1108000 | Fire Sprinkler pipe ficing | 10d | 2026-08-13 | 2026-08-24 | 486, 501 |  | Indian Calendar | 9707536 |
| 504 | 37300.37500.38800.40500.43000.43900.58500.1108100 | Internal Plumbing Works | 10d | 2026-08-07 | 2026-08-18 | 501FS-5d |  | Indian Calendar | 9707546 |
| 505 | 37300.37500.38800.40500.43000.43900.58500.1108200 | Waterproofing | 21d | 2026-08-13 | 2026-09-05 | 504FS-5d |  | Indian Calendar | 9707556 |
| 506 | 37300.37500.38800.40500.43000.43900.58500.1108300 | Internal Plaster | 11d | 2026-08-13 | 2026-08-25 | 504FS-5d |  | Indian Calendar | 9707566 |
| 507 | 37300.37500.38800.40500.43000.43900.58500.1108400 | IPS flooring work | 13d | 2026-08-13 | 2026-08-27 | 501 |  | Indian Calendar | 9707576 |
| 508 | 37300.37500.38800.40500.43000.43900.58500.1108500 | Toilet dado work | 12d | 2026-09-04 | 2026-09-17 | 505FS-2d, 506 |  | Indian Calendar | 9707586 |
| 509 | 37300.37500.38800.40500.43000.43900.58500.1108600 | Toilet flooring work | 15d | 2026-09-18 | 2026-10-02 | 508 |  | Sector 43 | 9707596 |
| 510 | 37300.37500.38800.40500.43000.43900.58500.1108700 | Living dining flooring | 12d | 2026-09-13 | 2026-09-24 | 507, 509FS-20d |  | Sector 43 | 9707606 |
| 511 | 37300.37500.38800.40500.43000.43900.58500.1108800 | Electrical wiring work | 12d | 2026-09-25 | 2026-10-06 | 510 |  | Sector 43 | 9707616 |
| 512 | 37300.37500.38800.40500.43000.43900.58500.1108900 | Aluminium door-window fixing | 10d | 2026-12-21 | 2026-12-30 | 511FS+30d |  | Sector 43 | 9707626 |
| 513 | 37300.37500.38800.40500.43000.43900.58500.1109000 | Putty primer coat | 10d | 2026-12-23 | 2027-01-01 | 512FS-8d |  | Sector 43 | 9707636 |
| 514 | 37300.37500.38800.40500.43000.43900.58500.1109100 | Prehung door fixing | 8d | 2026-12-28 | 2027-01-04 | 513FS-5d |  | Sector 43 | 9707646 |
| 515 | 37300.37500.38800.40500.43000.43900.58500.1109200 | Painting 1st coat | 12d | 2027-01-05 | 2027-01-16 | 514 |  | Sector 43 | 9707656 |
| 516 | 37300.37500.38800.40500.43000.43900.58500.1109300 | False Ceiling panel fixing | 10d | 2027-01-17 | 2027-01-26 | 499, 515 |  | Sector 43 | 10039949 |
| 517 | 37300.37500.38800.40500.43000.43900.58700 | **4th floor** | 139d | 2026-08-06 | 2027-02-05 |  | start no earlier than 2026-08-06 | Sector 43 | 9697656 |
| 518 | 37300.37500.38800.40500.43000.43900.58700.1109400 | Block Work | 20d | 2026-08-06 | 2026-08-25 | 436FS-3d |  | Sector 43 | 9707666 |
| 519 | 37300.37500.38800.40500.43000.43900.58700.1109500 | Installation of temporary Main door | 4d | 2026-08-26 | 2026-08-29 | 518 |  | Sector 43 | 9707676 |
| 520 | 37300.37500.38800.40500.43000.43900.58700.1109600 | Fire sprinkler pipe fixing | 10d | 2026-08-26 | 2026-09-04 | 503, 518 |  | Sector 43 | 9707686 |
| 521 | 37300.37500.38800.40500.43000.43900.58700.1109700 | Internal Plumbing Works | 10d | 2026-08-21 | 2026-08-30 | 518FS-5d |  | Sector 43 | 9707696 |
| 522 | 37300.37500.38800.40500.43000.43900.58700.1109800 | Waterproofing | 21d | 2026-08-26 | 2026-09-15 | 521FS-5d |  | Sector 43 | 9707706 |
| 523 | 37300.37500.38800.40500.43000.43900.58700.1109900 | Internal Plaster | 11d | 2026-08-28 | 2026-09-07 | 521FS-3d |  | Sector 43 | 9707716 |
| 524 | 37300.37500.38800.40500.43000.43900.58700.1110000 | IPS flooring work | 13d | 2026-08-26 | 2026-09-07 | 518 |  | Sector 43 | 9707726 |
| 525 | 37300.37500.38800.40500.43000.43900.58700.1110100 | Toilet dado work | 12d | 2026-09-14 | 2026-09-25 | 522FS-2d, 523 |  | Sector 43 | 9707736 |
| 526 | 37300.37500.38800.40500.43000.43900.58700.1110200 | Toilet flooring work | 15d | 2026-09-26 | 2026-10-10 | 525 |  | Sector 43 | 9707746 |
| 527 | 37300.37500.38800.40500.43000.43900.58700.1110300 | Living dinning flooring | 12d | 2026-09-27 | 2026-10-08 | 524, 526FS-14d |  | Sector 43 | 9707756 |
| 528 | 37300.37500.38800.40500.43000.43900.58700.1110400 | Electrical wiring work | 12d | 2026-10-09 | 2026-10-20 | 527 |  | Sector 43 | 9707766 |
| 529 | 37300.37500.38800.40500.43000.43900.58700.1110500 | Aluminium door-window fixing | 10d | 2026-10-21 | 2026-10-30 | 528 |  | Sector 43 | 9707776 |
| 530 | 37300.37500.38800.40500.43000.43900.58700.1110600 | Putty primer coat | 10d | 2026-10-23 | 2026-12-16 | 529FS-8d |  | Sector 43 | 9707786 |
| 531 | 37300.37500.38800.40500.43000.43900.58700.1110700 | Prehung door fixing | 8d | 2026-10-28 | 2026-12-19 | 530FS-5d |  | Sector 43 | 9707796 |
| 532 | 37300.37500.38800.40500.43000.43900.58700.1110800 | Painting 1st coat | 12d | 2026-12-20 | 2026-12-31 | 531 |  | Sector 43 | 9707806 |
| 533 | 37300.37500.38800.40500.43000.43900.58700.1110900 | False Cieling panel fixing | 10d | 2027-01-27 | 2027-02-05 | 516, 532 |  | Sector 43 | 9707816 |

| ID | WBS | Task | Duration | Start | Finish | Predecessors | Constraint | Calendar | Unique_Task_ID |
| --- | --- | --- | --- | --- | --- | --- | --- | --- | --- |
| 534 | 37300.37500.38800.40500.43000.43900.58800 | **5th floor** | 135d | 2026-08-20 | 2027-02-15 |  | start no earlier than 2026-08-20 | Sector 43 | 9697666 |
| 535 | 37300.37500.38800.40500.43000.43900.58800.1111000 | Block Work | 20d | 2026-08-20 | 2026-09-08 | 437FS-2d |  | Sector 43 | 9707826 |
| 536 | 37300.37500.38800.40500.43000.43900.58800.1111100 | Installation of temporary Main door | 4d | 2026-09-09 | 2026-09-12 | 535 |  | Sector 43 | 9707836 |
| 537 | 37300.37500.38800.40500.43000.43900.58800.1111200 | Fire sprinkler pipe fixing | 10d | 2026-09-09 | 2026-09-18 | 520, 535 |  | Sector 43 | 9707846 |
| 538 | 37300.37500.38800.40500.43000.43900.58800.1111300 | Internal Plumbing Works | 10d | 2026-09-04 | 2026-09-13 | 535FS-5d |  | Sector 43 | 9707856 |
| 539 | 37300.37500.38800.40500.43000.43900.58800.1111400 | Waterproofing | 21d | 2026-09-09 | 2026-09-29 | 538FS-5d |  | Sector 43 | 9707866 |
| 540 | 37300.37500.38800.40500.43000.43900.58800.1111500 | Internal Plaster | 11d | 2026-09-12 | 2026-09-22 | 538FS-2d |  | Sector 43 | 9707876 |
| 541 | 37300.37500.38800.40500.43000.43900.58800.1111600 | IPS flooring work | 13d | 2026-09-09 | 2026-09-21 | 535 |  | Sector 43 | 9707886 |
| 542 | 37300.37500.38800.40500.43000.43900.58800.1111700 | Toilet dado work | 12d | 2026-09-28 | 2026-10-09 | 539FS-2d, 540 |  | Sector 43 | 9707896 |
| 543 | 37300.37500.38800.40500.43000.43900.58800.1111800 | Toilet flooring work | 15d | 2026-10-10 | 2026-10-24 | 542 |  | Sector 43 | 9707906 |
| 544 | 37300.37500.38800.40500.43000.43900.58800.1111900 | Living dinning flooring | 12d | 2026-09-29 | 2026-10-10 | 535FS+20d |  | Sector 43 | 9707916 |
| 545 | 37300.37500.38800.40500.43000.43900.58800.1112000 | Electrical wiring work | 12d | 2026-10-11 | 2026-10-22 | 544 |  | Sector 43 | 9707926 |
| 546 | 37300.37500.38800.40500.43000.43900.58800.1112100 | Aluminium door-window fixing | 10d | 2026-10-23 | 2026-12-16 | 545 |  | Sector 43 | 9707936 |
| 547 | 37300.37500.38800.40500.43000.43900.58800.1112200 | Putty primer coat | 10d | 2026-10-25 | 2026-12-18 | 546FS-8d |  | Sector 43 | 9707946 |
| 548 | 37300.37500.38800.40500.43000.43900.58800.1112300 | Prehung door fixing | 8d | 2026-10-30 | 2026-12-21 | 547FS-5d |  | Sector 43 | 9707956 |
| 549 | 37300.37500.38800.40500.43000.43900.58800.1112400 | Painting 1st coat | 12d | 2026-12-22 | 2027-01-02 | 548 |  | Sector 43 | 9707966 |
| 550 | 37300.37500.38800.40500.43000.43900.58800.1112500 | False Cieling panel fixing | 10d | 2027-02-06 | 2027-02-15 | 533, 549 |  | Sector 43 | 9707976 |
| 551 | 37300.37500.38800.40500.43000.43900.58900 | **6th floor** | 125d | 2026-09-09 | 2027-02-25 |  | start no earlier than 2026-09-09 | Sector 43 | 9697676 |
| 552 | 37300.37500.38800.40500.43000.43900.58900.1112600 | Block Work | 20d | 2026-09-09 | 2026-09-28 | 535 |  | Sector 43 | 9707986 |
| 553 | 37300.37500.38800.40500.43000.43900.58900.1112700 | Installation of temporary Main door | 4d | 2026-09-29 | 2026-10-02 | 552 |  | Sector 43 | 9707996 |
| 554 | 37300.37500.38800.40500.43000.43900.58900.1112800 | Fire sprinkler pipe fixing | 10d | 2026-09-29 | 2026-10-08 | 537, 552 |  | Sector 43 | 9708006 |
| 555 | 37300.37500.38800.40500.43000.43900.58900.1112900 | Internal Plumbing Works | 10d | 2026-09-24 | 2026-10-03 | 552FS-5d |  | Sector 43 | 9708016 |
| 556 | 37300.37500.38800.40500.43000.43900.58900.1113000 | Waterproofing | 21d | 2026-09-29 | 2026-10-19 | 555FS-5d |  | Sector 43 | 9708026 |
| 557 | 37300.37500.38800.40500.43000.43900.58900.1113100 | Internal Plaster | 11d | 2026-10-04 | 2026-10-14 | 555 |  | Sector 43 | 9708036 |
| 558 | 37300.37500.38800.40500.43000.43900.58900.1113200 | IPS flooring work | 13d | 2026-09-29 | 2026-10-11 | 552 |  | Sector 43 | 9708046 |
| 559 | 37300.37500.38800.40500.43000.43900.58900.1113300 | Toilet dado work | 12d | 2026-10-18 | 2026-10-29 | 556FS-2d, 557 |  | Sector 43 | 9708056 |
| 560 | 37300.37500.38800.40500.43000.43900.58900.1113400 | Toilet flooring work | 12d | 2026-10-30 | 2026-12-25 | 559 |  | Sector 43 | 9708066 |
| 561 | 37300.37500.38800.40500.43000.43900.58900.1113500 | Living dinning flooring | 12d | 2026-10-09 | 2026-10-20 | 552FS+10d |  | Sector 43 | 9708076 |
| 562 | 37300.37500.38800.40500.43000.43900.58900.1113600 | Electrical wiring work | 12d | 2026-10-21 | 2026-12-16 | 561 |  | Sector 43 | 9708086 |
| 563 | 37300.37500.38800.40500.43000.43900.58900.1113700 | Aluminium door-window fixing | 10d | 2026-12-17 | 2026-12-26 | 562 |  | Sector 43 | 9708096 |
| 564 | 37300.37500.38800.40500.43000.43900.58900.1113800 | Putty primer coat | 10d | 2026-12-19 | 2026-12-28 | 563FS-8d |  | Sector 43 | 9708106 |
| 565 | 37300.37500.38800.40500.43000.43900.58900.1113900 | Prehung door fixing | 8d | 2026-12-24 | 2026-12-31 | 564FS-5d |  | Sector 43 | 9708116 |
| 566 | 37300.37500.38800.40500.43000.43900.58900.1114000 | Painting 1st coat | 12d | 2027-01-01 | 2027-01-12 | 565 |  | Sector 43 | 9708126 |
| 567 | 37300.37500.38800.40500.43000.43900.58900.1114100 | False Cieling panel fixing | 10d | 2027-02-16 | 2027-02-25 | 550, 566 |  | Sector 43 | 9708136 |

| ID | WBS | Task | Duration | Start | Finish | Predecessors | Constraint | Calendar | Unique_Task_ID |
| --- | --- | --- | --- | --- | --- | --- | --- | --- | --- |
| 568 | 37300.37500.38800.40500.43000.43900.59000 | **7th floor** | 122d | 2026-09-22 | 2027-03-07 |  | start no earlier than 2026-09-22 | Sector 43 | 9697686 |
| 569 | 37300.37500.38800.40500.43000.43900.59000.1114200 | Block Work | 10d | 2026-09-29 | 2026-10-08 | 552 |  | Sector 43 | 9708146 |
| 570 | 37300.37500.38800.40500.43000.43900.59000.1114300 | Installation of temporary Main door | 4d | 2026-10-09 | 2026-10-12 | 569 |  | Sector 43 | 9708156 |
| 571 | 37300.37500.38800.40500.43000.43900.59000.1114400 | Fire sprinkler pipe fixing | 10d | 2026-10-09 | 2026-10-18 | 554, 569 |  | Sector 43 | 9708166 |
| 572 | 37300.37500.38800.40500.43000.43900.59000.1114500 | Internal Plumbing Works | 15d | 2026-10-09 | 2026-10-23 | 569 |  | Sector 43 | 9708176 |
| 573 | 37300.37500.38800.40500.43000.43900.59000.1114600 | Waterproofing | 21d | 2026-10-24 | 2026-12-28 | 572 |  | Sector 43 | 9708186 |
| 574 | 37300.37500.38800.40500.43000.43900.59000.1114700 | Internal Plaster | 15d | 2026-10-09 | 2026-10-23 | 572FS-15d |  | Sector 43 | 9708196 |
| 575 | 37300.37500.38800.40500.43000.43900.59000.1114800 | IPS flooring work | 13d | 2026-10-09 | 2026-10-21 | 569 |  | Sector 43 | 9708206 |
| 576 | 37300.37500.38800.40500.43000.43900.59000.1114900 | Toilet dado work | 25d | 2026-12-27 | 2027-01-20 | 573FS-2d, 574 |  | Sector 43 | 9708216 |
| 577 | 37300.37500.38800.40500.43000.43900.59000.1115000 | Toilet flooring work | 25d | 2027-01-21 | 2027-02-14 | 576 |  | Sector 43 | 9708226 |
| 578 | 37300.37500.38800.40500.43000.43900.59000.1115100 | Living dinning flooring | 31d | 2026-09-22 | 2026-10-22 | 569FS-17d |  | Sector 43 | 9708236 |
| 579 | 37300.37500.38800.40500.43000.43900.59000.1115200 | Electrical wiring work | 12d | 2026-10-13 | 2026-10-24 | 578FS-10d |  | Sector 43 | 9708246 |
| 580 | 37300.37500.38800.40500.43000.43900.59000.1115300 | Aluminium door-window fixing | 19d | 2027-01-08 | 2027-01-26 | 579FS+30d |  | Sector 43 | 9708256 |
| 581 | 37300.37500.38800.40500.43000.43900.59000.1115400 | Putty primer coat | 10d | 2026-10-17 | 2026-10-26 | 579FS-8d |  | Sector 43 | 9708266 |
| 582 | 37300.37500.38800.40500.43000.43900.59000.1115500 | Prehung door fixing | 8d | 2026-10-22 | 2026-10-29 | 581FS-5d |  | Sector 43 | 9708276 |
| 583 | 37300.37500.38800.40500.43000.43900.59000.1115600 | Painting 1st coat | 12d | 2026-10-30 | 2026-12-25 | 582 |  | Sector 43 | 9708286 |
| 584 | 37300.37500.38800.40500.43000.43900.59000.1115700 | False Cieling panel fixing | 10d | 2027-02-26 | 2027-03-07 | 567, 583 |  | Sector 43 | 9708296 |
| 585 | 37300.37500.38800.40500.43000.43900.59100 | **8th floor** | 135d | 2026-09-19 | 2027-03-17 |  | start no earlier than 2026-09-19 | Sector 43 | 9697696 |
| 586 | 37300.37500.38800.40500.43000.43900.59100.1115800 | Block Work | 10d | 2026-10-09 | 2026-10-18 | 569 |  | Sector 43 | 9708306 |
| 587 | 37300.37500.38800.40500.43000.43900.59100.1115900 | Installation of temporary Main door | 4d | 2026-10-19 | 2026-10-22 | 586 |  | Sector 43 | 9708316 |
| 588 | 37300.37500.38800.40500.43000.43900.59100.1116000 | Fire sprinkler pipe fixing | 10d | 2026-10-19 | 2026-10-28 | 571, 586 |  | Sector 43 | 9708326 |
| 589 | 37300.37500.38800.40500.43000.43900.59100.1116100 | Internal Plumbing Works | 15d | 2026-10-14 | 2026-10-28 | 586FS-5d |  | Sector 43 | 9708336 |
| 590 | 37300.37500.38800.40500.43000.43900.59100.1116200 | Waterproofing | 21d | 2026-10-29 | 2027-01-02 | 589 |  | Sector 43 | 9708346 |
| 591 | 37300.37500.38800.40500.43000.43900.59100.1116300 | Internal Plaster | 15d | 2026-10-04 | 2026-10-18 | 586FS-15d |  | Sector 43 | 9708356 |
| 592 | 37300.37500.38800.40500.43000.43900.59100.1116400 | IPS flooring work | 13d | 2026-10-19 | 2026-10-31 | 586 |  | Sector 43 | 9708366 |
| 593 | 37300.37500.38800.40500.43000.43900.59100.1116500 | Toilet dado work | 25d | 2027-01-01 | 2027-01-25 | 590FS-2d, 591 |  | Sector 43 | 9708376 |
| 594 | 37300.37500.38800.40500.43000.43900.59100.1116600 | Toilet flooring work | 25d | 2027-01-26 | 2027-02-19 | 593 |  | Sector 43 | 9708386 |
| 595 | 37300.37500.38800.40500.43000.43900.59100.1116700 | Living dinning flooring | 31d | 2026-09-19 | 2026-10-19 | 586FS-30d |  | Sector 43 | 9708396 |
| 596 | 37300.37500.38800.40500.43000.43900.59100.1116800 | Electrical wiring work | 12d | 2026-10-10 | 2026-10-21 | 595FS-10d |  | Sector 43 | 9708406 |
| 597 | 37300.37500.38800.40500.43000.43900.59100.1116900 | Aluminium door-window fixing | 19d | 2027-02-04 | 2027-02-22 | 596FS+60d |  | Sector 43 | 9708416 |
| 598 | 37300.37500.38800.40500.43000.43900.59100.1117000 | Putty primer coat | 10d | 2026-10-14 | 2026-10-23 | 596FS-8d |  | Sector 43 | 9708426 |
| 599 | 37300.37500.38800.40500.43000.43900.59100.1117100 | Prehung door fixing | 8d | 2026-10-19 | 2026-10-26 | 598FS-5d |  | Sector 43 | 9708436 |
| 600 | 37300.37500.38800.40500.43000.43900.59100.1117200 | Painting 1st coat | 12d | 2026-10-27 | 2026-12-22 | 599 |  | Sector 43 | 9708446 |
| 601 | 37300.37500.38800.40500.43000.43900.59100.1117300 | False Cieling panel fixing | 10d | 2027-03-08 | 2027-03-17 | 584, 600 |  | Sector 43 | 9708456 |

| ID | WBS | Task | Duration | Start | Finish | Predecessors | Constraint | Calendar | Unique_Task_ID |
| --- | --- | --- | --- | --- | --- | --- | --- | --- | --- |
| 602 | 37300.37500.38800.40500.43000.43900.59200 | **9th floor** | 143d | 2026-09-21 | 2027-03-27 |  | start no earlier than 2026-09-21 | Sector 43 | 9697706 |
| 603 | 37300.37500.38800.40500.43000.43900.59200.1117400 | Block Work | 8d | 2026-10-16 | 2026-10-23 | 586FS-3d |  | Sector 43 | 9708466 |
| 604 | 37300.37500.38800.40500.43000.43900.59200.1117500 | Installation of temporary Main door | 4d | 2026-10-24 | 2026-10-27 | 603 |  | Sector 43 | 9708476 |
| 605 | 37300.37500.38800.40500.43000.43900.59200.1117600 | Fire sprinkler pipe fixing | 10d | 2026-10-29 | 2026-12-22 | 588, 603 |  | Sector 43 | 9708486 |
| 606 | 37300.37500.38800.40500.43000.43900.59200.1117700 | Internal Plumbing Works | 15d | 2026-10-19 | 2026-12-17 | 603FS-5d |  | Sector 43 | 9708496 |
| 607 | 37300.37500.38800.40500.43000.43900.59200.1117800 | Waterproofing | 21d | 2026-12-18 | 2027-01-07 | 606 |  | Sector 43 | 9708506 |
| 608 | 37300.37500.38800.40500.43000.43900.59200.1117900 | Internal Plaster | 15d | 2026-10-09 | 2026-10-23 | 603FS-15d |  | Sector 43 | 9708516 |
| 609 | 37300.37500.38800.40500.43000.43900.59200.1118000 | IPS flooring work | 13d | 2026-10-24 | 2026-12-20 | 603 |  | Sector 43 | 9708526 |
| 610 | 37300.37500.38800.40500.43000.43900.59200.1118100 | Toilet dado work | 25d | 2027-01-06 | 2027-01-30 | 607FS-2d, 608 |  | Sector 43 | 9708536 |
| 611 | 37300.37500.38800.40500.43000.43900.59200.1118200 | Toilet flooring work | 25d | 2027-01-31 | 2027-02-24 | 610 |  | Sector 43 | 9708546 |
| 612 | 37300.37500.38800.40500.43000.43900.59200.1118300 | Living dinning flooring | 31d | 2026-09-21 | 2026-10-21 | 603FS-33d |  | Sector 43 | 9708556 |
| 613 | 37300.37500.38800.40500.43000.43900.59200.1118400 | Electrical wiring work | 12d | 2026-10-12 | 2026-10-23 | 612FS-10d |  | Sector 43 | 9708566 |
| 614 | 37300.37500.38800.40500.43000.43900.59200.1118500 | Aluminium door-window fixing | 19d | 2027-02-06 | 2027-02-24 | 613FS+60d |  | Sector 43 | 9708576 |
| 615 | 37300.37500.38800.40500.43000.43900.59200.1118600 | Putty primer coat | 10d | 2026-10-16 | 2026-10-25 | 613FS-8d |  | Sector 43 | 9708586 |
| 616 | 37300.37500.38800.40500.43000.43900.59200.1118700 | Prehung door fixing | 8d | 2026-10-21 | 2026-10-28 | 615FS-5d |  | Sector 43 | 9708596 |
| 617 | 37300.37500.38800.40500.43000.43900.59200.1118800 | Painting 1st coat | 12d | 2026-10-29 | 2026-12-24 | 616 |  | Sector 43 | 9708606 |
| 618 | 37300.37500.38800.40500.43000.43900.59200.1118900 | False Cieling panel fixing | 10d | 2027-03-18 | 2027-03-27 | 601, 617 |  | Sector 43 | 9708616 |
| 619 | 37300.37500.38800.40500.43000.43900.59300 | **10th floor** | 137d | 2026-10-07 | 2027-04-06 |  | start no earlier than 2026-10-07 | Sector 43 | 9697716 |
| 620 | 37300.37500.38800.40500.43000.43900.59300.1119000 | Block Work | 8d | 2026-10-14 | 2026-10-21 | 586FS-5d |  | Sector 43 | 9708626 |
| 621 | 37300.37500.38800.40500.43000.43900.59300.1119100 | Installation of temporary Main door | 4d | 2026-10-22 | 2026-10-25 | 620 |  | Sector 43 | 9708636 |
| 622 | 37300.37500.38800.40500.43000.43900.59300.1119200 | Fire sprinkler pipe fixing | 10d | 2026-12-23 | 2027-01-01 | 605, 620 |  | Sector 43 | 9708646 |
| 623 | 37300.37500.38800.40500.43000.43900.59300.1119300 | Internal Plumbing Works | 15d | 2026-10-22 | 2026-12-20 | 620 |  | Sector 43 | 9708656 |
| 624 | 37300.37500.38800.40500.43000.43900.59300.1119400 | Waterproofing | 21d | 2026-12-21 | 2027-01-10 | 623 |  | Sector 43 | 9708666 |
| 625 | 37300.37500.38800.40500.43000.43900.59300.1119500 | Internal Plaster | 15d | 2026-10-07 | 2026-10-21 | 620FS-15d |  | Sector 43 | 9708676 |
| 626 | 37300.37500.38800.40500.43000.43900.59300.1119600 | IPS flooring work | 13d | 2026-10-22 | 2026-12-18 | 620 |  | Sector 43 | 9708686 |
| 627 | 37300.37500.38800.40500.43000.43900.59300.1119700 | Toilet dado work | 10d | 2027-01-09 | 2027-01-18 | 624FS-2d, 625 |  | Sector 43 | 9708696 |
| 628 | 37300.37500.38800.40500.43000.43900.59300.1119800 | Toilet flooring work | 12d | 2027-01-19 | 2027-01-30 | 627 |  | Sector 43 | 9708706 |
| 629 | 37300.37500.38800.40500.43000.43900.59300.1119900 | Living dinning flooring | 12d | 2026-10-07 | 2026-10-18 | 620FS-15d |  | Sector 43 | 9708716 |
| 630 | 37300.37500.38800.40500.43000.43900.59300.1120000 | Electrical wiring work | 12d | 2026-10-09 | 2026-10-20 | 629FS-10d |  | Sector 43 | 9708726 |
| 631 | 37300.37500.38800.40500.43000.43900.59300.1120100 | Aluminium door-window fixing | 19d | 2027-01-04 | 2027-01-22 | 630FS+30d |  | Sector 43 | 9708736 |
| 632 | 37300.37500.38800.40500.43000.43900.59300.1120200 | Putty primer coat | 10d | 2026-10-13 | 2026-10-22 | 630FS-8d |  | Sector 43 | 9708746 |
| 633 | 37300.37500.38800.40500.43000.43900.59300.1120300 | Prehung door fixing | 8d | 2026-10-18 | 2026-10-25 | 632FS-5d |  | Sector 43 | 9708756 |
| 634 | 37300.37500.38800.40500.43000.43900.59300.1120400 | Painting 1st coat | 12d | 2026-10-26 | 2026-12-21 | 633 |  | Sector 43 | 9708766 |
| 635 | 37300.37500.38800.40500.43000.43900.59300.1120500 | False Cieling panel fixing | 10d | 2027-03-28 | 2027-04-06 | 618, 634 |  | Sector 43 | 9708776 |

| ID | WBS | Task | Duration | Start | Finish | Predecessors | Constraint | Calendar | Unique_Task_ID |
| --- | --- | --- | --- | --- | --- | --- | --- | --- | --- |
| 636 | 37300.37500.38800.40500.43000.43900.59400 | **11th floor** | 211d | 2026-10-07 | 2027-06-19 |  | start no earlier than 2026-10-07 | Sector 43 | 9697726 |
| 637 | 37300.37500.38800.40500.43000.43900.59400.1120600 | Block Work | 8d | 2026-10-14 | 2026-10-21 | 586FS-5d |  | Sector 43 | 9708786 |
| 638 | 37300.37500.38800.40500.43000.43900.59400.1120700 | Installation of temporary Main door | 4d | 2026-10-22 | 2026-10-25 | 637 |  | Sector 43 | 9708796 |
| 639 | 37300.37500.38800.40500.43000.43900.59400.1120800 | Fire sprinkler pipe fixing | 10d | 2027-01-02 | 2027-01-11 | 622, 637 |  | Sector 43 | 9708806 |
| 640 | 37300.37500.38800.40500.43000.43900.59400.1120900 | Internal Plumbing Works | 15d | 2026-10-22 | 2026-12-20 | 637 |  | Sector 43 | 9708816 |
| 641 | 37300.37500.38800.40500.43000.43900.59400.1121000 | Waterproofing | 21d | 2026-12-21 | 2027-01-10 | 640 |  | Sector 43 | 9708826 |
| 642 | 37300.37500.38800.40500.43000.43900.59400.1121100 | Internal Plaster | 15d | 2026-10-07 | 2026-10-21 | 637FS-15d |  | Sector 43 | 9708836 |
| 643 | 37300.37500.38800.40500.43000.43900.59400.1121200 | IPS flooring work | 13d | 2026-10-22 | 2026-12-18 | 637 |  | Sector 43 | 9708846 |
| 644 | 37300.37500.38800.40500.43000.43900.59400.1121300 | Toilet dado work | 25d | 2027-01-09 | 2027-02-02 | 641FS-2d, 642 |  | Sector 43 | 9708856 |
| 645 | 37300.37500.38800.40500.43000.43900.59400.1121400 | Toilet flooring work | 25d | 2027-02-03 | 2027-02-27 | 643, 644 |  | Sector 43 | 9708866 |
| 646 | 37300.37500.38800.40500.43000.43900.59400.1121500 | Living dinning flooring | 31d | 2027-03-30 | 2027-04-29 | 645FS+30d |  | Sector 43 | 9708876 |
| 647 | 37300.37500.38800.40500.43000.43900.59400.1121600 | Electrical wiring work | 12d | 2027-04-20 | 2027-05-01 | 646FS-10d |  | Sector 43 | 9708886 |
| 648 | 37300.37500.38800.40500.43000.43900.59400.1121700 | Aluminium door-window fixing | 19d | 2027-06-01 | 2027-06-19 | 647FS+30d |  | Sector 43 | 9708896 |
| 649 | 37300.37500.38800.40500.43000.43900.59400.1121800 | Putty primer coat | 10d | 2027-04-24 | 2027-05-03 | 647FS-8d |  | Sector 43 | 9708906 |
| 650 | 37300.37500.38800.40500.43000.43900.59400.1121900 | Prehung door fixing | 8d | 2027-04-29 | 2027-05-06 | 649FS-5d |  | Sector 43 | 9708916 |
| 651 | 37300.37500.38800.40500.43000.43900.59400.1122000 | Painting 1st coat | 12d | 2027-05-07 | 2027-05-18 | 650 |  | Sector 43 | 9708926 |
| 652 | 37300.37500.38800.40500.43000.43900.59400.1122100 | False Cieling panel fixing | 10d | 2027-05-19 | 2027-05-28 | 635, 651 |  | Sector 43 | 9708936 |
| 653 | 37300.37500.38800.40500.43000.43900.59500 | **12th floor** | 200d | 2026-10-07 | 2027-06-08 |  | start no earlier than 2026-10-07 | Sector 43 | 9697736 |
| 654 | 37300.37500.38800.40500.43000.43900.59500.1122200 | Block Work | 8d | 2026-10-14 | 2026-10-21 | 586FS-5d |  | Sector 43 | 9708946 |
| 655 | 37300.37500.38800.40500.43000.43900.59500.1122300 | Installation of temporary Main door | 4d | 2026-10-22 | 2026-10-25 | 654 |  | Sector 43 | 9708956 |
| 656 | 37300.37500.38800.40500.43000.43900.59500.1122400 | Fire sprinkler pipe fixing | 10d | 2027-01-12 | 2027-01-21 | 639, 654 |  | Sector 43 | 9708966 |
| 657 | 37300.37500.38800.40500.43000.43900.59500.1122500 | Internal Plumbing Works | 15d | 2026-10-22 | 2026-12-20 | 654 |  | Sector 43 | 9708976 |
| 658 | 37300.37500.38800.40500.43000.43900.59500.1122600 | Waterproofing | 21d | 2026-12-21 | 2027-01-10 | 657 |  | Sector 43 | 9708986 |
| 659 | 37300.37500.38800.40500.43000.43900.59500.1122700 | Internal Plaster | 15d | 2026-10-07 | 2026-10-21 | 654FS-15d |  | Sector 43 | 9708996 |
| 660 | 37300.37500.38800.40500.43000.43900.59500.1122800 | IPS flooring work | 13d | 2026-10-22 | 2026-12-18 | 654 |  | Sector 43 | 9709006 |
| 661 | 37300.37500.38800.40500.43000.43900.59500.1122900 | Toilet dado work | 25d | 2027-01-09 | 2027-02-02 | 658FS-2d, 659 |  | Sector 43 | 9709016 |
| 662 | 37300.37500.38800.40500.43000.43900.59500.1123000 | Toilet flooring work | 25d | 2027-02-03 | 2027-02-27 | 661 |  | Sector 43 | 9709026 |
| 663 | 37300.37500.38800.40500.43000.43900.59500.1123100 | Living dinning flooring | 31d | 2027-03-30 | 2027-04-29 | 660, 662FS+30d |  | Sector 43 | 9709036 |
| 664 | 37300.37500.38800.40500.43000.43900.59500.1123200 | Electrical wiring work | 12d | 2027-04-20 | 2027-05-01 | 663FS-10d |  | Sector 43 | 9709046 |
| 665 | 37300.37500.38800.40500.43000.43900.59500.1123300 | Aluminium door-window fixing | 19d | 2027-04-24 | 2027-05-12 | 655, 664FS-8d |  | Sector 43 | 9709056 |
| 666 | 37300.37500.38800.40500.43000.43900.59500.1123400 | Putty primer coat | 10d | 2027-05-05 | 2027-05-14 | 665FS-8d |  | Sector 43 | 9709066 |
| 667 | 37300.37500.38800.40500.43000.43900.59500.1123500 | Prehung door fixing | 8d | 2027-05-10 | 2027-05-17 | 666FS-5d |  | Sector 43 | 9709076 |
| 668 | 37300.37500.38800.40500.43000.43900.59500.1123600 | Painting 1st coat | 12d | 2027-05-18 | 2027-05-29 | 667 |  | Sector 43 | 9709086 |
| 669 | 37300.37500.38800.40500.43000.43900.59500.1123700 | False Cieling panel fixing | 10d | 2027-05-30 | 2027-06-08 | 652, 668 |  | Sector 43 | 9709096 |

| ID | WBS | Task | Duration | Start | Finish | Predecessors | Constraint | Calendar | Unique_Task_ID |
| --- | --- | --- | --- | --- | --- | --- | --- | --- | --- |
| 670 | 37300.37500.38800.40500.43000.43900.59700 | **13th floor** | 219d | 2026-10-14 | 2027-07-04 |  | start no earlier than 2026-10-14 | Sector 43 | 9697746 |
| 671 | 37300.37500.38800.40500.43000.43900.59700.1123800 | Block Work | 8d | 2026-10-14 | 2026-10-21 | 586FS-5d |  | Sector 43 | 9709106 |
| 672 | 37300.37500.38800.40500.43000.43900.59700.1123900 | Installation of temporary Main door | 4d | 2026-10-22 | 2026-10-25 | 671 |  | Sector 43 | 9709116 |
| 673 | 37300.37500.38800.40500.43000.43900.59700.1124000 | Fire sprinkler pipe fixing | 10d | 2027-01-22 | 2027-01-31 | 656, 671 |  | Sector 43 | 9709126 |
| 674 | 37300.37500.38800.40500.43000.43900.59700.1124100 | Internal Plumbing Works | 15d | 2026-10-22 | 2026-12-20 | 671 |  | Sector 43 | 9709136 |
| 675 | 37300.37500.38800.40500.43000.43900.59700.1124200 | Waterproofing | 21d | 2026-12-21 | 2027-01-10 | 674 |  | Sector 43 | 9709146 |
| 676 | 37300.37500.38800.40500.43000.43900.59700.1124300 | Internal Plaster | 15d | 2026-12-21 | 2027-01-04 | 674 |  | Sector 43 | 9709156 |
| 677 | 37300.37500.38800.40500.43000.43900.59700.1124400 | IPS flooring work | 13d | 2026-10-22 | 2026-12-18 | 671 |  | Sector 43 | 9709166 |
| 678 | 37300.37500.38800.40500.43000.43900.59700.1124500 | Toilet dado work | 25d | 2027-01-09 | 2027-02-02 | 675FS-2d, 676 |  | Sector 43 | 9709176 |
| 679 | 37300.37500.38800.40500.43000.43900.59700.1124600 | Toilet flooring work | 25d | 2027-02-03 | 2027-02-27 | 678 |  | Sector 43 | 9709186 |
| 680 | 37300.37500.38800.40500.43000.43900.59700.1124700 | Living dinning flooring | 31d | 2027-03-30 | 2027-04-29 | 677, 679FS+30d |  | Sector 43 | 9709196 |
| 681 | 37300.37500.38800.40500.43000.43900.59700.1124800 | Electrical wiring work | 12d | 2027-04-20 | 2027-05-01 | 680FS-10d |  | Sector 43 | 9709206 |
| 682 | 37300.37500.38800.40500.43000.43900.59700.1124900 | Aluminium door-window fixing | 19d | 2027-05-20 | 2027-06-07 | 672, 681FS+18d |  | Sector 43 | 9709216 |
| 683 | 37300.37500.38800.40500.43000.43900.59700.1125000 | Putty primer coat | 10d | 2027-05-31 | 2027-06-09 | 682FS-8d |  | Sector 43 | 9709226 |
| 684 | 37300.37500.38800.40500.43000.43900.59700.1125100 | Prehung door fixing | 8d | 2027-06-05 | 2027-06-12 | 683FS-5d |  | Sector 43 | 9709236 |
| 685 | 37300.37500.38800.40500.43000.43900.59700.1125200 | Painting 1st coat | 12d | 2027-06-13 | 2027-06-24 | 684 |  | Sector 43 | 9709246 |
| 686 | 37300.37500.38800.40500.43000.43900.59700.1125300 | False Cieling panel fixing | 10d | 2027-06-25 | 2027-07-04 | 669, 685 |  | Sector 43 | 9709256 |
| 687 | 37300.37500.38800.40500.43000.43900.59800 | **14th floor** | 186d | 2027-01-10 | 2027-07-14 |  | start no earlier than 2027-01-10 | Sector 43 | 9697756 |
| 688 | 37300.37500.38800.40500.43000.43900.59800.1125400 | Block Work | 36d | 2027-01-10 | 2027-02-14 | 444 |  | Sector 43 | 9709266 |
| 689 | 37300.37500.38800.40500.43000.43900.59800.1125500 | Installation of temporary Main door | 4d | 2027-02-15 | 2027-02-18 | 688 |  | Sector 43 | 9709276 |
| 690 | 37300.37500.38800.40500.43000.43900.59800.1125600 | Fire sprinkler pipe fixing | 10d | 2027-02-15 | 2027-02-24 | 673, 688 |  | Sector 43 | 9709286 |
| 691 | 37300.37500.38800.40500.43000.43900.59800.1125700 | Internal Plumbing Works | 15d | 2027-02-15 | 2027-03-01 | 688 |  | Sector 43 | 9709296 |
| 692 | 37300.37500.38800.40500.43000.43900.59800.1125800 | Waterproofing | 21d | 2027-03-02 | 2027-03-22 | 691 |  | Sector 43 | 9709306 |
| 693 | 37300.37500.38800.40500.43000.43900.59800.1125900 | Internal Plaster | 15d | 2027-03-02 | 2027-03-16 | 691 |  | Sector 43 | 9709316 |
| 694 | 37300.37500.38800.40500.43000.43900.59800.1126000 | IPS flooring work | 13d | 2027-02-15 | 2027-02-27 | 688 |  | Sector 43 | 9709326 |
| 695 | 37300.37500.38800.40500.43000.43900.59800.1126100 | Toilet dado work | 25d | 2027-03-21 | 2027-04-14 | 692FS-2d, 693 |  | Sector 43 | 9709336 |
| 696 | 37300.37500.38800.40500.43000.43900.59800.1126200 | Toilet flooring work | 25d | 2027-04-15 | 2027-05-09 | 695 |  | Sector 43 | 9709346 |
| 697 | 37300.37500.38800.40500.43000.43900.59800.1126300 | Living dinning flooring | 31d | 2027-04-20 | 2027-05-20 | 694, 696FS-20d |  | Sector 43 | 9709356 |
| 698 | 37300.37500.38800.40500.43000.43900.59800.1126400 | Electrical wiring work | 12d | 2027-05-11 | 2027-05-22 | 697FS-10d |  | Sector 43 | 9709366 |
| 699 | 37300.37500.38800.40500.43000.43900.59800.1126500 | Aluminium door-window fixing | 19d | 2027-05-15 | 2027-06-02 | 689, 698FS-8d |  | Sector 43 | 9709376 |
| 700 | 37300.37500.38800.40500.43000.43900.59800.1126600 | Putty primer coat | 10d | 2027-05-26 | 2027-06-04 | 699FS-8d |  | Sector 43 | 9709386 |
| 701 | 37300.37500.38800.40500.43000.43900.59800.1126700 | Prehung door fixing | 8d | 2027-05-31 | 2027-06-07 | 700FS-5d |  | Sector 43 | 9709396 |
| 702 | 37300.37500.38800.40500.43000.43900.59800.1126800 | Painting 1st coat | 12d | 2027-06-08 | 2027-06-19 | 701 |  | Sector 43 | 9709406 |
| 703 | 37300.37500.38800.40500.43000.43900.59800.1126900 | False Cieling panel fixing | 10d | 2027-07-05 | 2027-07-14 | 686, 702 |  | Sector 43 | 9709416 |

| ID | WBS | Task | Duration | Start | Finish | Predecessors | Constraint | Calendar | Unique_Task_ID |
| --- | --- | --- | --- | --- | --- | --- | --- | --- | --- |
| 704 | 37300.37500.38800.40500.43000.43900.59900 | **15th floor** | 183d | 2027-01-23 | 2027-07-24 |  | start no earlier than 2027-01-23 | Sector 43 | 9697766 |
| 705 | 37300.37500.38800.40500.43000.43900.59900.1127000 | Block Work | 36d | 2027-01-23 | 2027-02-27 | 445 |  | Sector 43 | 9709426 |
| 706 | 37300.37500.38800.40500.43000.43900.59900.1127100 | Installation of temporary Main door | 4d | 2027-02-28 | 2027-03-03 | 705 |  | Sector 43 | 9709436 |
| 707 | 37300.37500.38800.40500.43000.43900.59900.1127200 | Fire sprinkler pipe fixing | 10d | 2027-02-28 | 2027-03-09 | 690, 705 |  | Sector 43 | 9709446 |
| 708 | 37300.37500.38800.40500.43000.43900.59900.1127300 | Internal Plumbing Works | 15d | 2027-02-28 | 2027-03-14 | 705 |  | Sector 43 | 9709456 |
| 709 | 37300.37500.38800.40500.43000.43900.59900.1127400 | Waterproofing | 21d | 2027-03-15 | 2027-04-04 | 708 |  | Sector 43 | 9709466 |
| 710 | 37300.37500.38800.40500.43000.43900.59900.1127500 | Internal Plaster | 15d | 2027-03-15 | 2027-03-29 | 708 |  | Sector 43 | 9709476 |
| 711 | 37300.37500.38800.40500.43000.43900.59900.1127600 | IPS flooring work | 13d | 2027-02-28 | 2027-03-12 | 705 |  | Sector 43 | 9709486 |
| 712 | 37300.37500.38800.40500.43000.43900.59900.1127700 | Toilet dado work | 25d | 2027-04-03 | 2027-04-27 | 709FS-2d, 710 |  | Sector 43 | 9709496 |
| 713 | 37300.37500.38800.40500.43000.43900.59900.1127800 | Toilet flooring work | 25d | 2027-04-28 | 2027-05-22 | 712 |  | Sector 43 | 9709506 |
| 714 | 37300.37500.38800.40500.43000.43900.59900.1127900 | Living dinning flooring | 31d | 2027-05-03 | 2027-06-02 | 711, 713FS-20d |  | Sector 43 | 9709516 |
| 715 | 37300.37500.38800.40500.43000.43900.59900.1128000 | Electrical wiring work | 12d | 2027-05-24 | 2027-06-04 | 714FS-10d |  | Sector 43 | 9709526 |
| 716 | 37300.37500.38800.40500.43000.43900.59900.1128100 | Aluminium door-window fixing | 19d | 2027-05-28 | 2027-06-15 | 706, 715FS-8d |  | Sector 43 | 9709536 |
| 717 | 37300.37500.38800.40500.43000.43900.59900.1128200 | Putty primer coat | 10d | 2027-06-08 | 2027-06-17 | 716FS-8d |  | Sector 43 | 9709546 |
| 718 | 37300.37500.38800.40500.43000.43900.59900.1128300 | Prehung door fixing | 8d | 2027-06-13 | 2027-06-20 | 717FS-5d |  | Sector 43 | 9709556 |
| 719 | 37300.37500.38800.40500.43000.43900.59900.1128400 | Painting 1st coat | 12d | 2027-06-21 | 2027-07-02 | 718 |  | Sector 43 | 9709566 |
| 720 | 37300.37500.38800.40500.43000.43900.59900.1128500 | False Cieling panel fixing | 10d | 2027-07-15 | 2027-07-24 | 703, 719 |  | Sector 43 | 9709576 |
| 721 | 37300.37500.38800.40500.43000.43900.60200 | **16th floor** | 201d | 2027-02-04 | 2027-08-23 |  | start no earlier than 2027-02-04 | Sector 43 | 9697776 |
| 722 | 37300.37500.38800.40500.43000.43900.60200.1128600 | Block Work | 36d | 2027-02-04 | 2027-03-11 | 446 |  | Sector 43 | 9709586 |
| 723 | 37300.37500.38800.40500.43000.43900.60200.1128700 | Installation of temporary Main door | 4d | 2027-03-12 | 2027-03-15 | 722 |  | Sector 43 | 9709596 |
| 724 | 37300.37500.38800.40500.43000.43900.60200.1128800 | Fire sprinkler pipe fixing | 10d | 2027-03-12 | 2027-03-21 | 707, 722 |  | Sector 43 | 9709606 |
| 725 | 37300.37500.38800.40500.43000.43900.60200.1128900 | Internal Plumbing Works | 15d | 2027-04-11 | 2027-04-25 | 722FS+30d |  | Sector 43 | 9709616 |
| 726 | 37300.37500.38800.40500.43000.43900.60200.1129000 | Waterproofing | 21d | 2027-04-26 | 2027-05-16 | 725 |  | Sector 43 | 9709626 |
| 727 | 37300.37500.38800.40500.43000.43900.60200.1129100 | Internal Plaster | 15d | 2027-04-26 | 2027-05-10 | 725 |  | Sector 43 | 9709636 |
| 728 | 37300.37500.38800.40500.43000.43900.60200.1129200 | IPS flooring work | 13d | 2027-03-12 | 2027-03-24 | 722 |  | Sector 43 | 9709646 |
| 729 | 37300.37500.38800.40500.43000.43900.60200.1129300 | Toilet dado work | 25d | 2027-05-15 | 2027-06-08 | 726FS-2d, 727 |  | Sector 43 | 9709656 |
| 730 | 37300.37500.38800.40500.43000.43900.60200.1129400 | Toilet flooring work | 25d | 2027-06-09 | 2027-07-03 | 729 |  | Sector 43 | 9709666 |
| 731 | 37300.37500.38800.40500.43000.43900.60200.1129500 | Living dinning flooring | 31d | 2027-06-14 | 2027-07-14 | 728, 730FS-20d |  | Sector 43 | 9709676 |
| 732 | 37300.37500.38800.40500.43000.43900.60200.1129600 | Electrical wiring work | 12d | 2027-07-05 | 2027-07-16 | 731FS-10d |  | Sector 43 | 9709686 |
| 733 | 37300.37500.38800.40500.43000.43900.60200.1129700 | Aluminium door-window fixing | 19d | 2027-07-09 | 2027-07-27 | 723, 732FS-8d |  | Sector 43 | 9709696 |
| 734 | 37300.37500.38800.40500.43000.43900.60200.1129800 | Putty primer coat | 10d | 2027-07-20 | 2027-07-29 | 733FS-8d |  | Sector 43 | 9709706 |
| 735 | 37300.37500.38800.40500.43000.43900.60200.1129900 | Prehung door fixing | 8d | 2027-07-25 | 2027-08-01 | 734FS-5d |  | Sector 43 | 9709716 |
| 736 | 37300.37500.38800.40500.43000.43900.60200.1130000 | Painting 1st coat | 12d | 2027-08-02 | 2027-08-13 | 735 |  | Sector 43 | 9709726 |
| 737 | 37300.37500.38800.40500.43000.43900.60200.1130100 | False Cieling panel fixing | 10d | 2027-08-14 | 2027-08-23 | 720, 736 |  | Sector 43 | 9709736 |

| ID | WBS | Task | Duration | Start | Finish | Predecessors | Constraint | Calendar | Unique_Task_ID |
| --- | --- | --- | --- | --- | --- | --- | --- | --- | --- |
| 738 | 37300.37500.38800.40500.43000.43900.60300 | **17th floor** | 199d | 2027-02-16 | 2027-09-02 |  | start no earlier than 2027-02-16 | Sector 43 | 9697786 |
| 739 | 37300.37500.38800.40500.43000.43900.60300.1130200 | Block Work | 36d | 2027-02-16 | 2027-03-23 | 447 |  | Sector 43 | 9709746 |
| 740 | 37300.37500.38800.40500.43000.43900.60300.1130300 | Installation of temporary Main door | 4d | 2027-03-24 | 2027-03-27 | 739 |  | Sector 43 | 9709756 |
| 741 | 37300.37500.38800.40500.43000.43900.60300.1130400 | Fire sprinkler pipe fixing | 10d | 2027-03-24 | 2027-04-02 | 724, 739 |  | Sector 43 | 9709766 |
| 742 | 37300.37500.38800.40500.43000.43900.60300.1130500 | Internal Plumbing Works | 15d | 2027-03-24 | 2027-04-07 | 739 |  | Sector 43 | 9709776 |
| 743 | 37300.37500.38800.40500.43000.43900.60300.1130600 | Waterproofing | 21d | 2027-04-08 | 2027-04-28 | 742 |  | Sector 43 | 9709786 |
| 744 | 37300.37500.38800.40500.43000.43900.60300.1130700 | Internal Plaster | 15d | 2027-04-08 | 2027-04-22 | 742 |  | Sector 43 | 9709796 |
| 745 | 37300.37500.38800.40500.43000.43900.60300.1130800 | IPS flooring work | 13d | 2027-03-24 | 2027-04-05 | 739 |  | Sector 43 | 9709806 |
| 746 | 37300.37500.38800.40500.43000.43900.60300.1130900 | Toilet dado work | 25d | 2027-04-27 | 2027-05-21 | 743FS-2d, 744 |  | Sector 43 | 9709816 |
| 747 | 37300.37500.38800.40500.43000.43900.60300.1131000 | Toilet flooring work | 25d | 2027-05-22 | 2027-06-15 | 746 |  | Sector 43 | 9709826 |
| 748 | 37300.37500.38800.40500.43000.43900.60300.1131100 | Living dinning flooring | 31d | 2027-05-27 | 2027-06-26 | 745, 747FS-20d |  | Sector 43 | 9709836 |
| 749 | 37300.37500.38800.40500.43000.43900.60300.1131200 | Electrical wiring work | 12d | 2027-06-17 | 2027-06-28 | 748FS-10d |  | Sector 43 | 9709846 |
| 750 | 37300.37500.38800.40500.43000.43900.60300.1131300 | Aluminium door-window fixing | 19d | 2027-06-21 | 2027-07-09 | 740, 749FS-8d |  | Sector 43 | 9709856 |
| 751 | 37300.37500.38800.40500.43000.43900.60300.1131400 | Putty primer coat | 10d | 2027-07-02 | 2027-07-11 | 750FS-8d |  | Sector 43 | 9709866 |
| 752 | 37300.37500.38800.40500.43000.43900.60300.1131500 | Prehung door fixing | 8d | 2027-07-07 | 2027-07-14 | 751FS-5d |  | Sector 43 | 9709876 |
| 753 | 37300.37500.38800.40500.43000.43900.60300.1131600 | Painting 1st coat | 12d | 2027-07-15 | 2027-07-26 | 752 |  | Sector 43 | 9709886 |
| 754 | 37300.37500.38800.40500.43000.43900.60300.1131700 | False Cieling panel fixing | 10d | 2027-08-24 | 2027-09-02 | 737, 753 |  | Sector 43 | 9709896 |
| 755 | 37300.37500.38800.40500.43000.43900.60400 | **18th floor** | 197d | 2027-02-28 | 2027-09-12 |  | start no earlier than 2027-02-28 | Sector 43 | 9697796 |
| 756 | 37300.37500.38800.40500.43000.43900.60400.1131800 | Block Work | 36d | 2027-02-28 | 2027-04-04 | 448 |  | Sector 43 | 9709906 |
| 757 | 37300.37500.38800.40500.43000.43900.60400.1131900 | Installation of temporary Main door | 4d | 2027-04-05 | 2027-04-08 | 756 |  | Sector 43 | 9709916 |
| 758 | 37300.37500.38800.40500.43000.43900.60400.1132000 | Fire sprinkler pipe fixing | 10d | 2027-04-05 | 2027-04-14 | 741, 756 |  | Sector 43 | 9709926 |
| 759 | 37300.37500.38800.40500.43000.43900.60400.1132100 | Internal Plumbing Works | 15d | 2027-04-05 | 2027-04-19 | 756 |  | Sector 43 | 9709936 |
| 760 | 37300.37500.38800.40500.43000.43900.60400.1132200 | Waterproofing | 21d | 2027-04-20 | 2027-05-10 | 759 |  | Sector 43 | 9709946 |
| 761 | 37300.37500.38800.40500.43000.43900.60400.1132300 | Internal Plaster | 15d | 2027-04-20 | 2027-05-04 | 759 |  | Sector 43 | 9709956 |
| 762 | 37300.37500.38800.40500.43000.43900.60400.1132400 | IPS flooring work | 13d | 2027-04-05 | 2027-04-17 | 756 |  | Sector 43 | 9709966 |
| 763 | 37300.37500.38800.40500.43000.43900.60400.1132500 | Toilet dado work | 25d | 2027-05-09 | 2027-06-02 | 760FS-2d, 761 |  | Sector 43 | 9709976 |
| 764 | 37300.37500.38800.40500.43000.43900.60400.1132600 | Toilet flooring work | 25d | 2027-06-03 | 2027-06-27 | 763 |  | Sector 43 | 9709986 |
| 765 | 37300.37500.38800.40500.43000.43900.60400.1132700 | Living dinning flooring | 31d | 2027-06-08 | 2027-07-08 | 762, 764FS-20d |  | Sector 43 | 9709996 |
| 766 | 37300.37500.38800.40500.43000.43900.60400.1132800 | Electrical wiring work | 12d | 2027-06-29 | 2027-07-10 | 765FS-10d |  | Sector 43 | 9710006 |
| 767 | 37300.37500.38800.40500.43000.43900.60400.1132900 | Aluminium door-window fixing | 19d | 2027-07-03 | 2027-07-21 | 757, 766FS-8d |  | Sector 43 | 9710016 |
| 768 | 37300.37500.38800.40500.43000.43900.60400.1133000 | Putty primer coat | 10d | 2027-07-14 | 2027-07-23 | 767FS-8d |  | Sector 43 | 9710026 |
| 769 | 37300.37500.38800.40500.43000.43900.60400.1133100 | Prehung door fixing | 8d | 2027-07-19 | 2027-07-26 | 768FS-5d |  | Sector 43 | 9710036 |
| 770 | 37300.37500.38800.40500.43000.43900.60400.1133200 | Painting 1st coat | 12d | 2027-07-27 | 2027-08-07 | 769 |  | Sector 43 | 9710046 |
| 771 | 37300.37500.38800.40500.43000.43900.60400.1133300 | False Cieling panel fixing | 10d | 2027-09-03 | 2027-09-12 | 754, 770 |  | Sector 43 | 9710056 |

| ID | WBS | Task | Duration | Start | Finish | Predecessors | Constraint | Calendar | Unique_Task_ID |
| --- | --- | --- | --- | --- | --- | --- | --- | --- | --- |
| 772 | 37300.37500.38800.40500.43000.43900.60700 | **19th floor** | 195d | 2027-03-12 | 2027-09-22 |  | start no earlier than 2027-03-12 | Sector 43 | 9697806 |
| 773 | 37300.37500.38800.40500.43000.43900.60700.1133400 | Block Work | 36d | 2027-03-12 | 2027-04-16 | 449 |  | Sector 43 | 9710066 |
| 774 | 37300.37500.38800.40500.43000.43900.60700.1133500 | Installation of temporary Main door | 4d | 2027-04-17 | 2027-04-20 | 773 |  | Sector 43 | 9710076 |
| 775 | 37300.37500.38800.40500.43000.43900.60700.1133600 | Fire sprinkler pipe fixing | 10d | 2027-04-17 | 2027-04-26 | 758, 773 |  | Sector 43 | 9710086 |
| 776 | 37300.37500.38800.40500.43000.43900.60700.1133700 | Internal Plumbing Works | 15d | 2027-04-17 | 2027-05-01 | 773 |  | Sector 43 | 9710096 |
| 777 | 37300.37500.38800.40500.43000.43900.60700.1133800 | Waterproofing | 21d | 2027-05-02 | 2027-05-22 | 776 |  | Sector 43 | 9710106 |
| 778 | 37300.37500.38800.40500.43000.43900.60700.1133900 | Internal Plaster | 15d | 2027-05-02 | 2027-05-16 | 776 |  | Sector 43 | 9710116 |
| 779 | 37300.37500.38800.40500.43000.43900.60700.1134000 | IPS flooring work | 13d | 2027-04-17 | 2027-04-29 | 773 |  | Sector 43 | 9710126 |
| 780 | 37300.37500.38800.40500.43000.43900.60700.1134100 | Toilet dado work | 25d | 2027-05-21 | 2027-06-14 | 777FS-2d, 778 |  | Sector 43 | 9710136 |
| 781 | 37300.37500.38800.40500.43000.43900.60700.1134200 | Toilet flooring work | 25d | 2027-06-15 | 2027-07-09 | 780 |  | Sector 43 | 9710146 |
| 782 | 37300.37500.38800.40500.43000.43900.60700.1134300 | Living dinning flooring | 31d | 2027-06-20 | 2027-07-20 | 779, 781FS-20d |  | Sector 43 | 9710156 |
| 783 | 37300.37500.38800.40500.43000.43900.60700.1134400 | Electrical wiring work | 12d | 2027-07-11 | 2027-07-22 | 782FS-10d |  | Sector 43 | 9710166 |
| 784 | 37300.37500.38800.40500.43000.43900.60700.1134500 | Aluminium door-window fixing | 19d | 2027-07-15 | 2027-08-02 | 774, 783FS-8d |  | Sector 43 | 9710176 |
| 785 | 37300.37500.38800.40500.43000.43900.60700.1134600 | Putty primer coat | 10d | 2027-07-26 | 2027-08-04 | 784FS-8d |  | Sector 43 | 9710186 |
| 786 | 37300.37500.38800.40500.43000.43900.60700.1134700 | Prehung door fixing | 8d | 2027-07-31 | 2027-08-07 | 785FS-5d |  | Sector 43 | 9710196 |
| 787 | 37300.37500.38800.40500.43000.43900.60700.1134800 | Painting 1st coat | 12d | 2027-08-08 | 2027-08-19 | 786 |  | Sector 43 | 9710206 |
| 788 | 37300.37500.38800.40500.43000.43900.60700.1134900 | False Cieling panel fixing | 10d | 2027-09-13 | 2027-09-22 | 771, 787 |  | Sector 43 | 9710216 |
| 789 | 37300.37500.38800.40500.43000.43900.60800 | **20th floor** | 193d | 2027-03-24 | 2027-10-02 |  | start no earlier than 2027-03-24 | Sector 43 | 9697816 |
| 790 | 37300.37500.38800.40500.43000.43900.60800.1135000 | Block Work | 36d | 2027-03-24 | 2027-04-28 | 450 |  | Sector 43 | 9710226 |
| 791 | 37300.37500.38800.40500.43000.43900.60800.1135100 | Installation of temporary Main door | 4d | 2027-04-29 | 2027-05-02 | 790 |  | Sector 43 | 9710236 |
| 792 | 37300.37500.38800.40500.43000.43900.60800.1135200 | Fire sprinkler pipe fixing | 10d | 2027-04-29 | 2027-05-08 | 775, 790 |  | Sector 43 | 9710246 |
| 793 | 37300.37500.38800.40500.43000.43900.60800.1135300 | Internal Plumbing Works | 15d | 2027-04-29 | 2027-05-13 | 790 |  | Sector 43 | 9710256 |
| 794 | 37300.37500.38800.40500.43000.43900.60800.1135400 | Waterproofing | 21d | 2027-05-14 | 2027-06-03 | 793 |  | Sector 43 | 9710266 |
| 795 | 37300.37500.38800.40500.43000.43900.60800.1135500 | Internal Plaster | 15d | 2027-05-14 | 2027-05-28 | 793 |  | Sector 43 | 9710276 |
| 796 | 37300.37500.38800.40500.43000.43900.60800.1135600 | IPS flooring work | 13d | 2027-04-29 | 2027-05-11 | 790 |  | Sector 43 | 9710286 |
| 797 | 37300.37500.38800.40500.43000.43900.60800.1135700 | Toilet dado work | 25d | 2027-06-02 | 2027-06-26 | 794FS-2d, 795 |  | Sector 43 | 9710296 |
| 798 | 37300.37500.38800.40500.43000.43900.60800.1135800 | Toilet flooring work | 25d | 2027-06-27 | 2027-07-21 | 797 |  | Sector 43 | 9710306 |
| 799 | 37300.37500.38800.40500.43000.43900.60800.1135900 | Living dinning flooring | 31d | 2027-07-02 | 2027-08-01 | 798FS-20d |  | Sector 43 | 9710316 |
| 800 | 37300.37500.38800.40500.43000.43900.60800.1136000 | Electrical wiring work | 12d | 2027-07-23 | 2027-08-03 | 796, 799FS-10d |  | Sector 43 | 9710326 |
| 801 | 37300.37500.38800.40500.43000.43900.60800.1136100 | Aluminium door-window fixing | 19d | 2027-07-27 | 2027-08-14 | 791, 800FS-8d |  | Sector 43 | 9710336 |
| 802 | 37300.37500.38800.40500.43000.43900.60800.1136200 | Putty primer coat | 10d | 2027-08-07 | 2027-08-16 | 801FS-8d |  | Sector 43 | 9710346 |
| 803 | 37300.37500.38800.40500.43000.43900.60800.1136300 | Prehung door fixing | 8d | 2027-08-12 | 2027-08-19 | 802FS-5d |  | Sector 43 | 9710356 |
| 804 | 37300.37500.38800.40500.43000.43900.60800.1136400 | Painting 1st coat | 12d | 2027-08-20 | 2027-08-31 | 803 |  | Sector 43 | 9710366 |
| 805 | 37300.37500.38800.40500.43000.43900.60800.1136500 | False Cieling panel fixing | 10d | 2027-09-23 | 2027-10-02 | 788, 804 |  | Sector 43 | 9710376 |

| ID | WBS | Task | Duration | Start | Finish | Predecessors | Constraint | Calendar | Unique_Task_ID |
| --- | --- | --- | --- | --- | --- | --- | --- | --- | --- |
| 806 | 37300.37500.38800.40500.43000.43900.60900 | **21st floor** | 191d | 2027-04-05 | 2027-10-12 |  | start no earlier than 2027-04-05 | Sector 43 | 9697826 |
| 807 | 37300.37500.38800.40500.43000.43900.60900.1136600 | Block Work | 36d | 2027-04-05 | 2027-05-10 | 451 |  | Sector 43 | 9710386 |
| 808 | 37300.37500.38800.40500.43000.43900.60900.1136700 | Installation of temporary Main door | 4d | 2027-05-11 | 2027-05-14 | 807 |  | Sector 43 | 9710396 |
| 809 | 37300.37500.38800.40500.43000.43900.60900.1136800 | Fire sprinkler pipe fixing | 10d | 2027-05-11 | 2027-05-20 | 792, 807 |  | Sector 43 | 9710406 |
| 810 | 37300.37500.38800.40500.43000.43900.60900.1136900 | Internal Plumbing Works | 15d | 2027-05-11 | 2027-05-25 | 807 |  | Sector 43 | 9710416 |
| 811 | 37300.37500.38800.40500.43000.43900.60900.1137000 | Waterproofing | 21d | 2027-05-26 | 2027-06-15 | 810 |  | Sector 43 | 9710426 |
| 812 | 37300.37500.38800.40500.43000.43900.60900.1137100 | Internal Plaster | 15d | 2027-05-26 | 2027-06-09 | 810 |  | Sector 43 | 9710436 |
| 813 | 37300.37500.38800.40500.43000.43900.60900.1137200 | IPS flooring work | 13d | 2027-05-11 | 2027-05-23 | 807 |  | Sector 43 | 9710446 |
| 814 | 37300.37500.38800.40500.43000.43900.60900.1137300 | Toilet dado work | 25d | 2027-06-14 | 2027-07-08 | 811FS-2d, 812 |  | Sector 43 | 9710456 |
| 815 | 37300.37500.38800.40500.43000.43900.60900.1137400 | Toilet flooring work | 25d | 2027-07-09 | 2027-08-02 | 814 |  | Sector 43 | 9710466 |
| 816 | 37300.37500.38800.40500.43000.43900.60900.1137500 | Living dinning flooring | 31d | 2027-07-14 | 2027-08-13 | 813, 815FS-20d |  | Sector 43 | 9710476 |
| 817 | 37300.37500.38800.40500.43000.43900.60900.1137600 | Electrical wiring work | 12d | 2027-08-04 | 2027-08-15 | 816FS-10d |  | Sector 43 | 9710486 |
| 818 | 37300.37500.38800.40500.43000.43900.60900.1137700 | Aluminium door-window fixing | 19d | 2027-08-08 | 2027-08-26 | 808, 817FS-8d |  | Sector 43 | 9710496 |
| 819 | 37300.37500.38800.40500.43000.43900.60900.1137800 | Putty primer coat | 10d | 2027-08-19 | 2027-08-28 | 818FS-8d |  | Sector 43 | 9710506 |
| 820 | 37300.37500.38800.40500.43000.43900.60900.1137900 | Prehung door fixing | 8d | 2027-08-24 | 2027-08-31 | 819FS-5d |  | Sector 43 | 9710516 |
| 821 | 37300.37500.38800.40500.43000.43900.60900.1138000 | Painting 1st coat | 12d | 2027-09-01 | 2027-09-12 | 820 |  | Sector 43 | 9710526 |
| 822 | 37300.37500.38800.40500.43000.43900.60900.1138100 | False Cieling panel fixing | 10d | 2027-10-03 | 2027-10-12 | 805, 821 |  | Sector 43 | 9710536 |
| 823 | 37300.37500.38800.40500.43000.43900.61100 | **22nd floor** | 183d | 2027-04-23 | 2027-10-22 |  | start no earlier than 2027-04-23 | Sector 43 | 9697836 |
| 824 | 37300.37500.38800.40500.43000.43900.61100.1138200 | Block Work | 36d | 2027-04-23 | 2027-05-28 | 452 |  | Sector 43 | 9710546 |
| 825 | 37300.37500.38800.40500.43000.43900.61100.1138300 | Installation of temporary Main door | 4d | 2027-05-29 | 2027-06-01 | 824 |  | Sector 43 | 9710556 |
| 826 | 37300.37500.38800.40500.43000.43900.61100.1138400 | Fire sprinkler pipe fixing | 10d | 2027-05-29 | 2027-06-07 | 809, 824 |  | Sector 43 | 9710566 |
| 827 | 37300.37500.38800.40500.43000.43900.61100.1138500 | Internal Plumbing Works | 15d | 2027-05-29 | 2027-06-12 | 824 |  | Sector 43 | 9710576 |
| 828 | 37300.37500.38800.40500.43000.43900.61100.1138600 | Waterproofing | 21d | 2027-06-13 | 2027-07-03 | 827 |  | Sector 43 | 9710586 |
| 829 | 37300.37500.38800.40500.43000.43900.61100.1138700 | Internal Plaster | 15d | 2027-06-13 | 2027-06-27 | 827 |  | Sector 43 | 9710596 |
| 830 | 37300.37500.38800.40500.43000.43900.61100.1138800 | IPS flooring work | 13d | 2027-05-29 | 2027-06-10 | 824 |  | Sector 43 | 9710606 |
| 831 | 37300.37500.38800.40500.43000.43900.61100.1138900 | Toilet dado work | 25d | 2027-07-02 | 2027-07-26 | 828FS-2d, 829 |  | Sector 43 | 9710616 |
| 832 | 37300.37500.38800.40500.43000.43900.61100.1139000 | Toilet flooring work | 25d | 2027-07-27 | 2027-08-20 | 831 |  | Sector 43 | 9710626 |
| 833 | 37300.37500.38800.40500.43000.43900.61100.1139100 | Living dinning flooring | 31d | 2027-08-01 | 2027-08-31 | 830, 832FS-20d |  | Sector 43 | 9710636 |
| 834 | 37300.37500.38800.40500.43000.43900.61100.1139200 | Electrical wiring work | 12d | 2027-08-22 | 2027-09-02 | 833FS-10d |  | Sector 43 | 9710646 |
| 835 | 37300.37500.38800.40500.43000.43900.61100.1139300 | Aluminium door-window fixing | 19d | 2027-08-26 | 2027-09-13 | 825, 834FS-8d |  | Sector 43 | 9710656 |
| 836 | 37300.37500.38800.40500.43000.43900.61100.1139400 | Putty primer coat | 10d | 2027-09-06 | 2027-09-15 | 835FS-8d |  | Sector 43 | 9710666 |
| 837 | 37300.37500.38800.40500.43000.43900.61100.1139500 | Prehung door fixing | 8d | 2027-09-11 | 2027-09-18 | 836FS-5d |  | Sector 43 | 9710676 |
| 838 | 37300.37500.38800.40500.43000.43900.61100.1139600 | Painting 1st coat | 12d | 2027-09-19 | 2027-09-30 | 837 |  | Sector 43 | 9710686 |
| 839 | 37300.37500.38800.40500.43000.43900.61100.1139700 | False Cieling panel fixing | 10d | 2027-10-13 | 2027-10-22 | 822, 838 |  | Sector 43 | 9710696 |

| ID | WBS | Task | Duration | Start | Finish | Predecessors | Constraint | Calendar | Unique_Task_ID |
| --- | --- | --- | --- | --- | --- | --- | --- | --- | --- |
| 840 | 37300.37500.38800.40500.43000.43900.61200 | **23rd floor** | 181d | 2027-05-05 | 2027-12-16 |  | start no earlier than 2027-05-05 | Sector 43 | 9697846 |
| 841 | 37300.37500.38800.40500.43000.43900.61200.1139800 | Block Work | 36d | 2027-05-05 | 2027-06-09 | 453 |  | Sector 43 | 9710706 |
| 842 | 37300.37500.38800.40500.43000.43900.61200.1139900 | Installation of temporary Main door | 4d | 2027-06-10 | 2027-06-13 | 841 |  | Sector 43 | 9710716 |
| 843 | 37300.37500.38800.40500.43000.43900.61200.1140000 | Fire sprinkler pipe fixing | 10d | 2027-06-10 | 2027-06-19 | 826, 841 |  | Sector 43 | 9710726 |
| 844 | 37300.37500.38800.40500.43000.43900.61200.1140100 | Internal Plumbing Works | 15d | 2027-06-10 | 2027-06-24 | 841 |  | Sector 43 | 9710736 |
| 845 | 37300.37500.38800.40500.43000.43900.61200.1140200 | Waterproofing | 21d | 2027-06-25 | 2027-07-15 | 844 |  | Sector 43 | 9710746 |
| 846 | 37300.37500.38800.40500.43000.43900.61200.1140300 | Internal Plaster | 15d | 2027-06-25 | 2027-07-09 | 844 |  | Sector 43 | 9710756 |
| 847 | 37300.37500.38800.40500.43000.43900.61200.1140400 | IPS flooring work | 13d | 2027-06-10 | 2027-06-22 | 841 |  | Sector 43 | 9710766 |
| 848 | 37300.37500.38800.40500.43000.43900.61200.1140500 | Toilet dado work | 25d | 2027-07-14 | 2027-08-07 | 845FS-2d, 846 |  | Sector 43 | 9710776 |
| 849 | 37300.37500.38800.40500.43000.43900.61200.1140600 | Toilet flooring work | 25d | 2027-08-08 | 2027-09-01 | 848 |  | Sector 43 | 9710786 |
| 850 | 37300.37500.38800.40500.43000.43900.61200.1140700 | Living dinning flooring | 31d | 2027-08-13 | 2027-09-12 | 847, 849FS-20d |  | Sector 43 | 9710796 |
| 851 | 37300.37500.38800.40500.43000.43900.61200.1140800 | Electrical wiring work | 12d | 2027-09-03 | 2027-09-14 | 850FS-10d |  | Sector 43 | 9710806 |
| 852 | 37300.37500.38800.40500.43000.43900.61200.1140900 | Aluminium door-window fixing | 19d | 2027-09-07 | 2027-09-25 | 842, 851FS-8d |  | Sector 43 | 9710816 |
| 853 | 37300.37500.38800.40500.43000.43900.61200.1141000 | Putty primer coat | 10d | 2027-09-18 | 2027-09-27 | 852FS-8d |  | Sector 43 | 9710826 |
| 854 | 37300.37500.38800.40500.43000.43900.61200.1141100 | Prehung door fixing | 8d | 2027-09-23 | 2027-09-30 | 853FS-5d |  | Sector 43 | 9710836 |
| 855 | 37300.37500.38800.40500.43000.43900.61200.1141200 | Painting 1st coat | 12d | 2027-10-01 | 2027-10-12 | 854 |  | Sector 43 | 9710846 |
| 856 | 37300.37500.38800.40500.43000.43900.61200.1141300 | False Cieling panel fixing | 10d | 2027-10-23 | 2027-12-16 | 839, 855 |  | Sector 43 | 9710856 |
| 857 | 37300.37500.38800.40500.43000.43900.61300 | **24th floor** | 179d | 2027-05-17 | 2027-12-26 |  | start no earlier than 2027-05-17 | Sector 43 | 9697856 |
| 858 | 37300.37500.38800.40500.43000.43900.61300.1141400 | Block Work | 36d | 2027-05-17 | 2027-06-21 | 454 |  | Sector 43 | 9710866 |
| 859 | 37300.37500.38800.40500.43000.43900.61300.1141500 | Installation of temporary Main door | 4d | 2027-06-22 | 2027-06-25 | 858 |  | Sector 43 | 9710876 |
| 860 | 37300.37500.38800.40500.43000.43900.61300.1141600 | Fire sprinkler pipe fixing | 10d | 2027-06-22 | 2027-07-01 | 843, 858 |  | Sector 43 | 9710886 |
| 861 | 37300.37500.38800.40500.43000.43900.61300.1141700 | Internal Plumbing Works | 15d | 2027-06-22 | 2027-07-06 | 858 |  | Sector 43 | 9710896 |
| 862 | 37300.37500.38800.40500.43000.43900.61300.1141800 | Waterproofing | 21d | 2027-07-07 | 2027-07-27 | 861 |  | Sector 43 | 9710906 |
| 863 | 37300.37500.38800.40500.43000.43900.61300.1141900 | Internal Plaster | 15d | 2027-07-07 | 2027-07-21 | 861 |  | Sector 43 | 9710916 |
| 864 | 37300.37500.38800.40500.43000.43900.61300.1142000 | IPS flooring work | 13d | 2027-06-22 | 2027-07-04 | 858 |  | Sector 43 | 9710926 |
| 865 | 37300.37500.38800.40500.43000.43900.61300.1142100 | Toilet dado work | 25d | 2027-07-26 | 2027-08-19 | 862FS-2d, 863 |  | Sector 43 | 9710936 |
| 866 | 37300.37500.38800.40500.43000.43900.61300.1142200 | Toilet flooring work | 25d | 2027-08-20 | 2027-09-13 | 865 |  | Sector 43 | 9710946 |
| 867 | 37300.37500.38800.40500.43000.43900.61300.1142300 | Living dinning flooring | 31d | 2027-08-25 | 2027-09-24 | 864, 866FS-20d |  | Sector 43 | 9710956 |
| 868 | 37300.37500.38800.40500.43000.43900.61300.1142400 | Electrical wiring work | 12d | 2027-09-15 | 2027-09-26 | 867FS-10d |  | Sector 43 | 9710966 |
| 869 | 37300.37500.38800.40500.43000.43900.61300.1142500 | Aluminium door-window fixing | 19d | 2027-09-19 | 2027-10-07 | 859, 868FS-8d |  | Sector 43 | 9710976 |
| 870 | 37300.37500.38800.40500.43000.43900.61300.1142600 | Putty primer coat | 10d | 2027-09-30 | 2027-10-09 | 869FS-8d |  | Sector 43 | 9710986 |
| 871 | 37300.37500.38800.40500.43000.43900.61300.1142700 | Prehung door fixing | 8d | 2027-10-05 | 2027-10-12 | 870FS-5d |  | Sector 43 | 9710996 |
| 872 | 37300.37500.38800.40500.43000.43900.61300.1142800 | Painting 1st coat | 12d | 2027-10-13 | 2027-10-24 | 871 |  | Sector 43 | 9711006 |
| 873 | 37300.37500.38800.40500.43000.43900.61300.1142900 | False Cieling panel fixing | 10d | 2027-12-17 | 2027-12-26 | 856, 872 |  | Sector 43 | 9711016 |

| ID | WBS | Task | Duration | Start | Finish | Predecessors | Constraint | Calendar | Unique_Task_ID |
| --- | --- | --- | --- | --- | --- | --- | --- | --- | --- |
| 874 | 37300.37500.38800.40500.43000.43900.61500 | **25th floor** | 177d | 2027-05-29 | 2028-01-05 |  | start no earlier than 2027-05-29 | Sector 43 | 9697866 |
| 875 | 37300.37500.38800.40500.43000.43900.61500.1143000 | Block Work | 36d | 2027-05-29 | 2027-07-03 | 455 |  | Sector 43 | 9711026 |
| 876 | 37300.37500.38800.40500.43000.43900.61500.1143100 | Installation of temporary Main door | 4d | 2027-07-04 | 2027-07-07 | 875 |  | Sector 43 | 9711036 |
| 877 | 37300.37500.38800.40500.43000.43900.61500.1143200 | Fire sprinkler pipe fixing | 10d | 2027-07-04 | 2027-07-13 | 860, 875 |  | Sector 43 | 9711046 |
| 878 | 37300.37500.38800.40500.43000.43900.61500.1143300 | Internal Plumbing Works | 15d | 2027-07-04 | 2027-07-18 | 875 |  | Sector 43 | 9711056 |
| 879 | 37300.37500.38800.40500.43000.43900.61500.1143400 | Waterproofing | 21d | 2027-07-19 | 2027-08-08 | 878 |  | Sector 43 | 9711066 |
| 880 | 37300.37500.38800.40500.43000.43900.61500.1143500 | Internal Plaster | 15d | 2027-07-19 | 2027-08-02 | 878 |  | Sector 43 | 9711076 |
| 881 | 37300.37500.38800.40500.43000.43900.61500.1143600 | IPS flooring work | 13d | 2027-07-04 | 2027-07-16 | 875 |  | Sector 43 | 9711086 |
| 882 | 37300.37500.38800.40500.43000.43900.61500.1143700 | Toilet dado work | 25d | 2027-08-07 | 2027-08-31 | 879FS-2d, 880 |  | Sector 43 | 9711096 |
| 883 | 37300.37500.38800.40500.43000.43900.61500.1143800 | Toilet flooring work | 25d | 2027-09-01 | 2027-09-25 | 882 |  | Sector 43 | 9711106 |
| 884 | 37300.37500.38800.40500.43000.43900.61500.1143900 | Living dinning flooring | 31d | 2027-09-06 | 2027-10-06 | 881, 883FS-20d |  | Sector 43 | 9711116 |
| 885 | 37300.37500.38800.40500.43000.43900.61500.1144000 | Electrical wiring work | 12d | 2027-09-27 | 2027-10-08 | 884FS-10d |  | Sector 43 | 9711126 |
| 886 | 37300.37500.38800.40500.43000.43900.61500.1144100 | Aluminium door-window fixing | 19d | 2027-10-01 | 2027-10-19 | 876, 885FS-8d |  | Sector 43 | 9711136 |
| 887 | 37300.37500.38800.40500.43000.43900.61500.1144200 | Putty primer coat | 10d | 2027-10-12 | 2027-10-21 | 886FS-8d |  | Sector 43 | 9711146 |
| 888 | 37300.37500.38800.40500.43000.43900.61500.1144300 | Prehung door fixing | 8d | 2027-10-17 | 2027-10-24 | 887FS-5d |  | Sector 43 | 9711156 |
| 889 | 37300.37500.38800.40500.43000.43900.61500.1144400 | Painting 1st coat | 12d | 2027-10-25 | 2027-12-20 | 888 |  | Sector 43 | 9711166 |
| 890 | 37300.37500.38800.40500.43000.43900.61500.1144500 | False Cieling panel fixing | 10d | 2027-12-27 | 2028-01-05 | 873, 889 |  | Sector 43 | 9711176 |
| 891 | 37300.37500.38800.40500.43000.43900.61600 | **26th floor** | 175d | 2027-06-10 | 2028-01-15 |  | start no earlier than 2027-06-10 | Sector 43 | 9697876 |
| 892 | 37300.37500.38800.40500.43000.43900.61600.1144600 | Block Work | 36d | 2027-06-10 | 2027-07-15 | 456 |  | Sector 43 | 9711186 |
| 893 | 37300.37500.38800.40500.43000.43900.61600.1144700 | Installation of temporary Main door | 4d | 2027-07-16 | 2027-07-19 | 892 |  | Sector 43 | 9711196 |
| 894 | 37300.37500.38800.40500.43000.43900.61600.1144800 | Fire sprinkler pipe fixing | 10d | 2027-07-16 | 2027-07-25 | 877, 892 |  | Sector 43 | 9711206 |
| 895 | 37300.37500.38800.40500.43000.43900.61600.1144900 | Internal Plumbing Works | 15d | 2027-07-16 | 2027-07-30 | 892 |  | Sector 43 | 9711216 |
| 896 | 37300.37500.38800.40500.43000.43900.61600.1145000 | Waterproofing | 21d | 2027-07-31 | 2027-08-20 | 895 |  | Sector 43 | 9711226 |
| 897 | 37300.37500.38800.40500.43000.43900.61600.1145100 | Internal Plaster | 15d | 2027-07-31 | 2027-08-14 | 895 |  | Sector 43 | 9711236 |
| 898 | 37300.37500.38800.40500.43000.43900.61600.1145200 | IPS flooring work | 13d | 2027-07-16 | 2027-07-28 | 892 |  | Sector 43 | 9711246 |
| 899 | 37300.37500.38800.40500.43000.43900.61600.1145300 | Toilet dado work | 25d | 2027-08-19 | 2027-09-12 | 896FS-2d, 897 |  | Sector 43 | 9711256 |
| 900 | 37300.37500.38800.40500.43000.43900.61600.1145400 | Toilet flooring work | 25d | 2027-09-13 | 2027-10-07 | 899 |  | Sector 43 | 9711266 |
| 901 | 37300.37500.38800.40500.43000.43900.61600.1145500 | Living dinning flooring | 31d | 2027-09-18 | 2027-10-18 | 898, 900FS-20d |  | Sector 43 | 9711276 |
| 902 | 37300.37500.38800.40500.43000.43900.61600.1145600 | Electrical wiring work | 12d | 2027-10-09 | 2027-10-20 | 901FS-10d |  | Sector 43 | 9711286 |
| 903 | 37300.37500.38800.40500.43000.43900.61600.1145700 | Aluminium door-window fixing | 19d | 2027-10-13 | 2027-10-31 | 893, 902FS-8d |  | Sector 43 | 9711296 |
| 904 | 37300.37500.38800.40500.43000.43900.61600.1145800 | Putty primer coat | 10d | 2027-10-24 | 2027-12-17 | 903FS-8d |  | Sector 43 | 9711306 |
| 905 | 37300.37500.38800.40500.43000.43900.61600.1145900 | Prehung door fixing | 8d | 2027-10-29 | 2027-12-20 | 904FS-5d |  | Sector 43 | 9711316 |
| 906 | 37300.37500.38800.40500.43000.43900.61600.1146000 | Painting 1st coat | 12d | 2027-12-21 | 2028-01-01 | 905 |  | Sector 43 | 9711326 |
| 907 | 37300.37500.38800.40500.43000.43900.61600.1146100 | False Cieling panel fixing | 10d | 2028-01-06 | 2028-01-15 | 890, 906 |  | Sector 43 | 9711336 |

| ID | WBS | Task | Duration | Start | Finish | Predecessors | Constraint | Calendar | Unique_Task_ID |
| --- | --- | --- | --- | --- | --- | --- | --- | --- | --- |
| 908 | 37300.37500.38800.40500.43000.43900.61700 | **27th floor** | 173d | 2027-06-22 | 2028-01-25 |  | start no earlier than 2027-06-22 | Sector 43 | 9697886 |
| 909 | 37300.37500.38800.40500.43000.43900.61700.1146200 | Block Work | 36d | 2027-06-22 | 2027-07-27 | 457 |  | Sector 43 | 9711346 |
| 910 | 37300.37500.38800.40500.43000.43900.61700.1146300 | Installation of temporary Main door | 4d | 2027-07-28 | 2027-07-31 | 909 |  | Sector 43 | 9711356 |
| 911 | 37300.37500.38800.40500.43000.43900.61700.1146400 | Fire sprinkler pipe fixing | 10d | 2027-07-28 | 2027-08-06 | 894, 909 |  | Sector 43 | 9711366 |
| 912 | 37300.37500.38800.40500.43000.43900.61700.1146500 | Internal Plumbing Works | 15d | 2027-07-28 | 2027-08-11 | 909 |  | Sector 43 | 9711376 |
| 913 | 37300.37500.38800.40500.43000.43900.61700.1146600 | Waterproofing | 21d | 2027-08-12 | 2027-09-01 | 912 |  | Sector 43 | 9711386 |
| 914 | 37300.37500.38800.40500.43000.43900.61700.1146700 | Internal Plaster | 15d | 2027-08-12 | 2027-08-26 | 912 |  | Sector 43 | 9711396 |
| 915 | 37300.37500.38800.40500.43000.43900.61700.1146800 | IPS flooring work | 13d | 2027-07-28 | 2027-08-09 | 909 |  | Sector 43 | 9711406 |
| 916 | 37300.37500.38800.40500.43000.43900.61700.1146900 | Toilet dado work | 25d | 2027-08-31 | 2027-09-24 | 913FS-2d, 914 |  | Sector 43 | 9711416 |
| 917 | 37300.37500.38800.40500.43000.43900.61700.1147000 | Toilet flooring work | 25d | 2027-09-25 | 2027-10-19 | 916 |  | Sector 43 | 9711426 |
| 918 | 37300.37500.38800.40500.43000.43900.61700.1147100 | Living dinning flooring | 31d | 2027-09-30 | 2027-10-30 | 915, 917FS-20d |  | Sector 43 | 9711436 |
| 919 | 37300.37500.38800.40500.43000.43900.61700.1147200 | Electrical wiring work | 12d | 2027-10-21 | 2027-12-16 | 918FS-10d |  | Sector 43 | 9711446 |
| 920 | 37300.37500.38800.40500.43000.43900.61700.1147300 | Aluminium door-window fixing | 19d | 2027-10-25 | 2027-12-27 | 910, 919FS-8d |  | Sector 43 | 9711456 |
| 921 | 37300.37500.38800.40500.43000.43900.61700.1147400 | Putty primer coat | 10d | 2027-12-20 | 2027-12-29 | 920FS-8d |  | Sector 43 | 9711466 |
| 922 | 37300.37500.38800.40500.43000.43900.61700.1147500 | Prehung door fixing | 8d | 2027-12-25 | 2028-01-01 | 921FS-5d |  | Sector 43 | 9711476 |
| 923 | 37300.37500.38800.40500.43000.43900.61700.1147600 | Painting 1st coat | 12d | 2028-01-02 | 2028-01-13 | 922 |  | Sector 43 | 9711486 |
| 924 | 37300.37500.38800.40500.43000.43900.61700.1147700 | False Cieling panel fixing | 10d | 2028-01-16 | 2028-01-25 | 907, 923 |  | Sector 43 | 9711496 |
| 925 | 37300.37500.38800.40500.43000.43900.62100 | **28th floor** | 206d | 2027-07-06 | 2028-03-12 |  | start no earlier than 2027-07-06 | Sector 43 | 9697896 |
| 926 | 37300.37500.38800.40500.43000.43900.62100.1147800 | Block Work | 36d | 2027-07-06 | 2027-08-10 | 458 |  | Sector 43 | 9711506 |
| 927 | 37300.37500.38800.40500.43000.43900.62100.1147900 | Installation of temporary Main door | 4d | 2027-08-11 | 2027-08-14 | 926 |  | Sector 43 | 9711516 |
| 928 | 37300.37500.38800.40500.43000.43900.62100.1148000 | Fire sprinkler pipe fixing | 10d | 2027-08-11 | 2027-08-20 | 911, 926 |  | Sector 43 | 9711526 |
| 929 | 37300.37500.38800.40500.43000.43900.62100.1148100 | Internal Plumbing Works | 15d | 2027-08-11 | 2027-08-25 | 926 |  | Sector 43 | 9711536 |
| 930 | 37300.37500.38800.40500.43000.43900.62100.1148200 | Waterproofing | 21d | 2027-08-26 | 2027-09-15 | 929 |  | Sector 43 | 9711546 |
| 931 | 37300.37500.38800.40500.43000.43900.62100.1148300 | Internal Plaster | 15d | 2027-08-26 | 2027-09-09 | 929 |  | Sector 43 | 9711556 |
| 932 | 37300.37500.38800.40500.43000.43900.62100.1148400 | IPS flooring work | 13d | 2027-08-11 | 2027-08-23 | 926 |  | Sector 43 | 9711566 |
| 933 | 37300.37500.38800.40500.43000.43900.62100.1148500 | Toilet dado work | 60d | 2027-09-14 | 2027-12-27 | 930FS-2d, 931 |  | Sector 43 | 9711576 |
| 934 | 37300.37500.38800.40500.43000.43900.62100.1148600 | Toilet flooring work | 25d | 2027-12-28 | 2028-01-21 | 933 |  | Sector 43 | 9711586 |
| 935 | 37300.37500.38800.40500.43000.43900.62100.1148700 | Living dinning flooring | 31d | 2028-01-02 | 2028-02-01 | 932, 934FS-20d |  | Sector 43 | 9711596 |
| 936 | 37300.37500.38800.40500.43000.43900.62100.1148800 | Electrical wiring work | 12d | 2028-01-23 | 2028-02-03 | 935FS-10d |  | Sector 43 | 9711606 |
| 937 | 37300.37500.38800.40500.43000.43900.62100.1148900 | Aluminium door-window fixing | 19d | 2028-01-27 | 2028-02-14 | 927, 936FS-8d |  | Sector 43 | 9711616 |
| 938 | 37300.37500.38800.40500.43000.43900.62100.1149000 | Putty primer coat | 10d | 2028-02-07 | 2028-02-16 | 937FS-8d |  | Sector 43 | 9711626 |
| 939 | 37300.37500.38800.40500.43000.43900.62100.1149100 | Prehung door fixing | 8d | 2028-02-12 | 2028-02-19 | 938FS-5d |  | Sector 43 | 9711636 |
| 940 | 37300.37500.38800.40500.43000.43900.62100.1149200 | Painting 1st coat | 12d | 2028-02-20 | 2028-03-02 | 939 |  | Sector 43 | 9711646 |
| 941 | 37300.37500.38800.40500.43000.43900.62100.1149300 | False Cieling panel fixing | 10d | 2028-03-03 | 2028-03-12 | 924, 940 |  | Sector 43 | 9711656 |

| ID | WBS | Task | Duration | Start | Finish | Predecessors | Constraint | Calendar | Unique_Task_ID |
| --- | --- | --- | --- | --- | --- | --- | --- | --- | --- |
| 942 | 37300.37500.38800.40500.43000.43900.62200 | **29th floor** | 209d | 2027-07-13 | 2028-03-22 |  | start no earlier than 2027-07-13 | Sector 43 | 9697906 |
| 943 | 37300.37500.38800.40500.43000.43900.62200.1149400 | Block Work | 36d | 2027-07-13 | 2027-08-17 | 459 |  | Sector 43 | 9711666 |
| 944 | 37300.37500.38800.40500.43000.43900.62200.1149500 | Installation of temporary Main door | 4d | 2027-08-18 | 2027-08-21 | 943 |  | Sector 43 | 9711676 |
| 945 | 37300.37500.38800.40500.43000.43900.62200.1149600 | Fire sprinkler pipe fixing | 10d | 2027-08-21 | 2027-08-30 | 928, 943 |  | Sector 43 | 9711686 |
| 946 | 37300.37500.38800.40500.43000.43900.62200.1149700 | Internal Plumbing Works | 15d | 2027-08-18 | 2027-09-01 | 943 |  | Sector 43 | 9711696 |
| 947 | 37300.37500.38800.40500.43000.43900.62200.1149800 | Waterproofing | 21d | 2027-09-02 | 2027-09-22 | 946 |  | Sector 43 | 9711706 |
| 948 | 37300.37500.38800.40500.43000.43900.62200.1149900 | Internal Plaster | 15d | 2027-09-02 | 2027-09-16 | 946 |  | Sector 43 | 9711716 |
| 949 | 37300.37500.38800.40500.43000.43900.62200.1150000 | IPS flooring work | 13d | 2027-08-18 | 2027-08-30 | 943 |  | Sector 43 | 9711726 |
| 950 | 37300.37500.38800.40500.43000.43900.62200.1150100 | Toilet dado work | 25d | 2027-09-21 | 2027-10-15 | 947FS-2d, 948 |  | Sector 43 | 9711736 |
| 951 | 37300.37500.38800.40500.43000.43900.62200.1150200 | Toilet flooring work | 25d | 2027-10-16 | 2027-12-24 | 950 |  | Sector 43 | 9711746 |
| 952 | 37300.37500.38800.40500.43000.43900.62200.1150300 | Living dinning flooring | 31d | 2027-10-21 | 2028-01-04 | 949, 951FS-20d |  | Sector 43 | 9711756 |
| 953 | 37300.37500.38800.40500.43000.43900.62200.1150400 | Electrical wiring work | 12d | 2027-12-26 | 2028-01-06 | 952FS-10d |  | Sector 43 | 9711766 |
| 954 | 37300.37500.38800.40500.43000.43900.62200.1150500 | Aluminium door-window fixing | 19d | 2027-12-30 | 2028-01-17 | 944, 953FS-8d |  | Sector 43 | 9711776 |
| 955 | 37300.37500.38800.40500.43000.43900.62200.1150600 | Putty primer coat | 10d | 2028-01-10 | 2028-01-19 | 954FS-8d |  | Sector 43 | 9711786 |
| 956 | 37300.37500.38800.40500.43000.43900.62200.1150700 | Prehung door fixing | 8d | 2028-01-15 | 2028-01-22 | 955FS-5d |  | Sector 43 | 9711796 |
| 957 | 37300.37500.38800.40500.43000.43900.62200.1150800 | Painting 1st coat | 12d | 2028-01-23 | 2028-02-03 | 956 |  | Sector 43 | 9711806 |
| 958 | 37300.37500.38800.40500.43000.43900.62200.1150900 | False Cieling panel fixing | 10d | 2028-03-13 | 2028-03-22 | 941, 957 |  | Sector 43 | 9711816 |
| 959 | 37300.37500.38800.40500.43000.43900.62300 | **30th floor** | 212d | 2027-07-20 | 2028-04-01 |  | start no earlier than 2027-07-20 | Sector 43 | 9697916 |
| 960 | 37300.37500.38800.40500.43000.43900.62300.1151000 | Block Work | 36d | 2027-07-20 | 2027-08-24 | 460 |  | Sector 43 | 9711826 |
| 961 | 37300.37500.38800.40500.43000.43900.62300.1151100 | Installation of temporary Main door | 4d | 2027-08-25 | 2027-08-28 | 960 |  | Sector 43 | 9711836 |
| 962 | 37300.37500.38800.40500.43000.43900.62300.1151200 | Fire sprinkler pipe fixing | 10d | 2027-08-31 | 2027-09-09 | 945, 960 |  | Sector 43 | 9711846 |
| 963 | 37300.37500.38800.40500.43000.43900.62300.1151300 | Internal Plumbing Works | 15d | 2027-08-25 | 2027-09-08 | 960 |  | Sector 43 | 9711856 |
| 964 | 37300.37500.38800.40500.43000.43900.62300.1151400 | Waterproofing | 21d | 2027-09-09 | 2027-09-29 | 963 |  | Sector 43 | 9711866 |
| 965 | 37300.37500.38800.40500.43000.43900.62300.1151500 | Internal Plaster | 15d | 2027-09-09 | 2027-09-23 | 963 |  | Sector 43 | 9711876 |
| 966 | 37300.37500.38800.40500.43000.43900.62300.1151600 | IPS flooring work | 13d | 2027-08-25 | 2027-09-06 | 960 |  | Sector 43 | 9711886 |
| 967 | 37300.37500.38800.40500.43000.43900.62300.1151700 | Toilet dado work | 25d | 2027-09-28 | 2027-10-22 | 964FS-2d, 965 |  | Sector 43 | 9711896 |
| 968 | 37300.37500.38800.40500.43000.43900.62300.1151800 | Toilet flooring work | 25d | 2027-10-23 | 2027-12-31 | 967 |  | Sector 43 | 9711906 |
| 969 | 37300.37500.38800.40500.43000.43900.62300.1151900 | Living dinning flooring | 31d | 2027-10-28 | 2028-01-11 | 966, 968FS-20d |  | Sector 43 | 9711916 |
| 970 | 37300.37500.38800.40500.43000.43900.62300.1152000 | Electrical wiring work | 12d | 2028-01-02 | 2028-01-13 | 969FS-10d |  | Sector 43 | 9711926 |
| 971 | 37300.37500.38800.40500.43000.43900.62300.1152100 | Aluminium door-window fixing | 19d | 2028-01-06 | 2028-01-24 | 961, 970FS-8d |  | Sector 43 | 9711936 |
| 972 | 37300.37500.38800.40500.43000.43900.62300.1152200 | Putty primer coat | 10d | 2028-01-17 | 2028-01-26 | 971FS-8d |  | Sector 43 | 9711946 |
| 973 | 37300.37500.38800.40500.43000.43900.62300.1152300 | Prehung door fixing | 8d | 2028-01-22 | 2028-01-29 | 972FS-5d |  | Sector 43 | 9711956 |
| 974 | 37300.37500.38800.40500.43000.43900.62300.1152400 | Painting 1st coat | 12d | 2028-01-30 | 2028-02-10 | 973 |  | Sector 43 | 9711966 |
| 975 | 37300.37500.38800.40500.43000.43900.62300.1152500 | False Cieling panel fixing | 10d | 2028-03-23 | 2028-04-01 | 958, 974 |  | Sector 43 | 9711976 |

| ID | WBS | Task | Duration | Start | Finish | Predecessors | Constraint | Calendar | Unique_Task_ID |
| --- | --- | --- | --- | --- | --- | --- | --- | --- | --- |
| 976 | 37300.37500.38800.40500.43000.43900.62600 | **31st floor** | 215d | 2027-07-27 | 2028-04-11 |  | start no earlier than 2027-07-27 | Sector 43 | 9697926 |
| 977 | 37300.37500.38800.40500.43000.43900.62600.1152600 | Block Work | 36d | 2027-07-27 | 2027-08-31 | 461 |  | Sector 43 | 9711986 |
| 978 | 37300.37500.38800.40500.43000.43900.62600.1152700 | Installation of temporary Main door | 4d | 2027-09-01 | 2027-09-04 | 977 |  | Sector 43 | 9711996 |
| 979 | 37300.37500.38800.40500.43000.43900.62600.1152800 | Fire sprinkler pipe fixing | 10d | 2027-09-10 | 2027-09-19 | 962, 977 |  | Sector 43 | 9712006 |
| 980 | 37300.37500.38800.40500.43000.43900.62600.1152900 | Internal Plumbing Works | 15d | 2027-09-01 | 2027-09-15 | 977 |  | Sector 43 | 9712016 |
| 981 | 37300.37500.38800.40500.43000.43900.62600.1153000 | Waterproofing | 21d | 2027-09-16 | 2027-10-06 | 980 |  | Sector 43 | 9712026 |
| 982 | 37300.37500.38800.40500.43000.43900.62600.1153100 | Internal Plaster | 15d | 2027-09-16 | 2027-09-30 | 980 |  | Sector 43 | 9712036 |
| 983 | 37300.37500.38800.40500.43000.43900.62600.1153200 | IPS flooring work | 13d | 2027-09-01 | 2027-09-13 | 977 |  | Sector 43 | 9712046 |
| 984 | 37300.37500.38800.40500.43000.43900.62600.1153300 | Toilet dado work | 25d | 2027-10-05 | 2027-10-29 | 981FS-2d, 982 |  | Sector 43 | 9712056 |
| 985 | 37300.37500.38800.40500.43000.43900.62600.1153400 | Toilet flooring work | 25d | 2027-10-30 | 2028-01-07 | 984 |  | Sector 43 | 9712066 |
| 986 | 37300.37500.38800.40500.43000.43900.62600.1153500 | Living dinning flooring | 31d | 2027-12-19 | 2028-01-18 | 983, 985FS-20d |  | Sector 43 | 9712076 |
| 987 | 37300.37500.38800.40500.43000.43900.62600.1153600 | Electrical wiring work | 12d | 2028-01-09 | 2028-01-20 | 986FS-10d |  | Sector 43 | 9712086 |
| 988 | 37300.37500.38800.40500.43000.43900.62600.1153700 | Aluminium door-window fixing | 19d | 2028-01-13 | 2028-01-31 | 978, 987FS-8d |  | Sector 43 | 9712096 |
| 989 | 37300.37500.38800.40500.43000.43900.62600.1153800 | Putty primer coat | 10d | 2028-01-24 | 2028-02-02 | 988FS-8d |  | Sector 43 | 9712106 |
| 990 | 37300.37500.38800.40500.43000.43900.62600.1153900 | Prehung door fixing | 8d | 2028-01-29 | 2028-02-05 | 989FS-5d |  | Sector 43 | 9712116 |
| 991 | 37300.37500.38800.40500.43000.43900.62600.1154000 | Painting 1st coat | 12d | 2028-02-06 | 2028-02-17 | 990 |  | Sector 43 | 9712126 |
| 992 | 37300.37500.38800.40500.43000.43900.62600.1154100 | False Cieling panel fixing | 10d | 2028-04-02 | 2028-04-11 | 975, 991 |  | Sector 43 | 9712136 |
| 993 | 37300.37500.38800.40500.43000.224000 | **Terrace finishing** | 100d | 2028-03-18 | 2028-06-25 |  | start no earlier than 2028-03-18 | Sector 43 | 9700506 |
| 994 | 37300.37500.38800.40500.43000.224000.871000 | Terrace waterproofing | 40d | 2028-03-18 | 2028-04-26 | 1077FS+10d, 463 |  | Sector 43 | 9702416 |
| 995 | 37300.37500.38800.40500.43000.224000.871100 | Terrace finishing | 60d | 2028-04-27 | 2028-06-25 | 994 |  | Sector 43 | 9702426 |
| 996 | 37300.37500.38800.40500.43000.117100 | **Common area finishing** | 274d | 2027-07-24 | 2028-06-06 |  | start no earlier than 2027-07-24 | Sector 43 | 9698656 |
| 997 | 37300.37500.38800.40500.43000.117100.871200 | Masonary Work | 60d | 2027-07-24 | 2027-09-21 | 424 |  | Sector 43 | 9702436 |
| 998 | 37300.37500.38800.40500.43000.117100.871300 | Fire sprinkler pipe fixing | 90d | 2027-08-03 | 2027-10-31 | 424FS+10d |  | Sector 43 | 9702446 |
| 999 | 37300.37500.38800.40500.43000.117100.871400 | Corridoor, staircase, shaft Plaster & whitewash | 90d | 2027-09-12 | 2028-01-24 | 997FS-10d |  | Sector 43 | 9702456 |
| 1000 | 37300.37500.38800.40500.43000.117100.871500 | Staircase railing fixing | 45d | 2027-09-02 | 2027-10-16 | 997FS-20d |  | Sector 43 | 9702466 |
| 1001 | 37300.37500.38800.40500.43000.117100.871600 | Fire staircase flooring | 60d | 2027-09-27 | 2028-01-09 | 1000FS-20d |  | Sector 43 | 9702476 |
| 1002 | 37300.37500.38800.40500.43000.117100.871700 | Main staircase flooring | 60d | 2027-09-27 | 2028-01-09 | 1000FS-20d |  | Sector 43 | 9702486 |
| 1003 | 37300.37500.38800.40500.43000.117100.871800 | Fire door work | 45d | 2027-10-27 | 2028-01-24 | 1001FS-30d |  | Sector 43 | 9702496 |
| 1004 | 37300.37500.38800.40500.43000.117100.871900 | Lobby flooring & Corridor | 114d | 2027-10-07 | 2028-03-13 | 1002FS-50d |  | Sector 43 | 9702506 |
| 1005 | 37300.37500.38800.40500.43000.117100.872000 | Ceiling & wall putty-primer | 60d | 2028-01-29 | 2028-03-28 | 1004FS-45d |  | Sector 43 | 9702516 |
| 1006 | 37300.37500.38800.40500.43000.117100.872100 | Ceiling & wall painting | 90d | 2028-02-13 | 2028-05-12 | 1005FS-45d |  | Sector 43 | 9702526 |
| 1007 | 37300.37500.38800.40500.43000.117100.872200 | Electrical wiring work | 60d | 2028-03-19 | 2028-05-17 | 1005FS-10d |  | Sector 43 | 9702536 |
| 1008 | 37300.37500.38800.40500.43000.117100.872300 | Light fixture supply & installation | 30d | 2028-05-08 | 2028-06-06 | 1007FS-10d |  | Sector 43 | 9702546 |
| 1009 | 37300.37500.38800.40500.43000.117100.872400 | Installation of fire signages including Basements | 30d | 2028-05-03 | 2028-06-01 | 1006FS-10d |  | Sector 43 | 9702556 |

| ID | WBS | Task | Duration | Start | Finish | Predecessors | Constraint | Calendar | Unique_Task_ID |
| --- | --- | --- | --- | --- | --- | --- | --- | --- | --- |
| 1010 | 37300.37500.38800.40500.43000.49700 | **Balcony Glass Railing** | 217d | 2026-10-16 | 2027-07-04 |  | start no earlier than 2026-10-16 | Sector 43 | 9697586 |
| 1011 | 37300.37500.38800.40500.43000.49700.872500 | 1st Floor | 7d | 2026-10-16 | 2026-10-22 | 467FS+105d |  | Sector 43 | 9702566 |
| 1012 | 37300.37500.38800.40500.43000.49700.872600 | 2nd Floor | 7d | 2026-10-23 | 2026-10-29 | 1011 |  | Sector 43 | 9702576 |
| 1013 | 37300.37500.38800.40500.43000.49700.872700 | 3rd Floor | 7d | 2026-10-30 | 2026-12-20 | 1012 |  | Sector 43 | 9702586 |
| 1014 | 37300.37500.38800.40500.43000.49700.872800 | 4th Floor | 7d | 2026-12-21 | 2026-12-27 | 1013 |  | Sector 43 | 9702596 |
| 1015 | 37300.37500.38800.40500.43000.49700.872900 | 5th Floor | 7d | 2026-12-28 | 2027-01-03 | 1014 |  | Sector 43 | 9702606 |
| 1016 | 37300.37500.38800.40500.43000.49700.873000 | 6th Floor | 7d | 2027-01-04 | 2027-01-10 | 1015 |  | Sector 43 | 9702616 |
| 1017 | 37300.37500.38800.40500.43000.49700.873100 | 7th Floor | 7d | 2027-01-11 | 2027-01-17 | 1016 |  | Sector 43 | 9702626 |
| 1018 | 37300.37500.38800.40500.43000.49700.873200 | 8th Floor | 7d | 2027-01-18 | 2027-01-24 | 1017 |  | Sector 43 | 9702636 |
| 1019 | 37300.37500.38800.40500.43000.49700.873300 | 9th Floor | 7d | 2027-01-25 | 2027-01-31 | 1018 |  | Sector 43 | 9702646 |
| 1020 | 37300.37500.38800.40500.43000.49700.873400 | 10th Floor | 7d | 2027-02-01 | 2027-02-07 | 1019 |  | Sector 43 | 9702656 |
| 1021 | 37300.37500.38800.40500.43000.49700.873500 | 11th Floor | 7d | 2027-02-08 | 2027-02-14 | 1020 |  | Sector 43 | 9702666 |
| 1022 | 37300.37500.38800.40500.43000.49700.873600 | 12th Floor | 7d | 2027-02-15 | 2027-02-21 | 1021 |  | Sector 43 | 9702676 |
| 1023 | 37300.37500.38800.40500.43000.49700.873700 | 13th Floor | 7d | 2027-02-22 | 2027-02-28 | 1022 |  | Sector 43 | 9702686 |
| 1024 | 37300.37500.38800.40500.43000.49700.873800 | 14th Floor | 7d | 2027-03-01 | 2027-03-07 | 1023 |  | Sector 43 | 9702696 |
| 1025 | 37300.37500.38800.40500.43000.49700.873900 | 15th Floor | 7d | 2027-03-08 | 2027-03-14 | 1024 |  | Sector 43 | 9702706 |
| 1026 | 37300.37500.38800.40500.43000.49700.874000 | 16th Floor | 7d | 2027-03-15 | 2027-03-21 | 1025 |  | Sector 43 | 9702716 |
| 1027 | 37300.37500.38800.40500.43000.49700.874100 | 17th Floor | 7d | 2027-03-22 | 2027-03-28 | 1026 |  | Sector 43 | 9702726 |
| 1028 | 37300.37500.38800.40500.43000.49700.874200 | 18th Floor | 7d | 2027-03-29 | 2027-04-04 | 1027 |  | Sector 43 | 9702736 |
| 1029 | 37300.37500.38800.40500.43000.49700.874300 | 19th Floor | 7d | 2027-04-05 | 2027-04-11 | 1028 |  | Sector 43 | 9702746 |
| 1030 | 37300.37500.38800.40500.43000.49700.874400 | 20th Floor | 7d | 2027-04-12 | 2027-04-18 | 1029 |  | Sector 43 | 9702756 |
| 1031 | 37300.37500.38800.40500.43000.49700.874500 | 21st Floor | 7d | 2027-04-19 | 2027-04-25 | 1030 |  | Sector 43 | 9702766 |
| 1032 | 37300.37500.38800.40500.43000.49700.874600 | 22nd Floor | 7d | 2027-04-26 | 2027-05-02 | 1031 |  | Sector 43 | 9702776 |
| 1033 | 37300.37500.38800.40500.43000.49700.874700 | 23rd Floor | 7d | 2027-05-03 | 2027-05-09 | 1032 |  | Sector 43 | 9702786 |
| 1034 | 37300.37500.38800.40500.43000.49700.874800 | 24th Floor | 7d | 2027-05-10 | 2027-05-16 | 1033 |  | Sector 43 | 9702796 |
| 1035 | 37300.37500.38800.40500.43000.49700.874900 | 25th Floor | 7d | 2027-05-17 | 2027-05-23 | 1034 |  | Sector 43 | 9702806 |
| 1036 | 37300.37500.38800.40500.43000.49700.875000 | 26th Floor | 7d | 2027-05-24 | 2027-05-30 | 1035 |  | Sector 43 | 9702816 |
| 1037 | 37300.37500.38800.40500.43000.49700.875100 | 27th Floor | 7d | 2027-05-31 | 2027-06-06 | 1036 |  | Sector 43 | 9702826 |
| 1038 | 37300.37500.38800.40500.43000.49700.875200 | 28th Floor | 7d | 2027-06-07 | 2027-06-13 | 1037 |  | Sector 43 | 9702836 |
| 1039 | 37300.37500.38800.40500.43000.49700.875300 | 29th Floor | 7d | 2027-06-14 | 2027-06-20 | 1038 |  | Sector 43 | 9702846 |
| 1040 | 37300.37500.38800.40500.43000.49700.875400 | 30th Floor | 7d | 2027-06-21 | 2027-06-27 | 1039 |  | Sector 43 | 9702856 |
| 1041 | 37300.37500.38800.40500.43000.49700.875500 | 31st Floor | 7d | 2027-06-28 | 2027-07-04 | 1040 |  | Sector 43 | 9702866 |

| ID | WBS | Task | Duration | Start | Finish | Predecessors | Constraint | Calendar | Unique_Task_ID |
| --- | --- | --- | --- | --- | --- | --- | --- | --- | --- |
| 1042 | 37300.37500.38800.40500.116500 | **MEP work** | 460d | 2027-03-31 | 2028-08-16 |  | start no earlier than 2027-03-31 | Sector 43 | 9698686 |
| 1043 | 37300.37500.38800.40500.116500.123700 | **Electrical work** | 453d | 2027-03-31 | 2028-08-09 |  | start no earlier than 2027-03-31 | Sector 43 | 9698736 |
| 1044 | 37300.37500.38800.40500.116500.123700.875600 | Cable Tray | 90d | 2027-03-31 | 2027-06-28 | 364FS+50d |  | Sector 43 | 9702876 |
| 1045 | 37300.37500.38800.40500.116500.123700.875700 | Cable, main & sub main | 90d | 2027-06-29 | 2027-09-26 | 1044 |  | Sector 43 | 9702886 |
| 1046 | 37300.37500.38800.40500.116500.123700.875800 | LT panel & DB | 90d | 2027-06-29 | 2027-09-26 | 1044 |  | Sector 43 | 9702896 |
| 1047 | 37300.37500.38800.40500.116500.123700.875900 | Earthing Works | 60d | 2027-06-29 | 2027-08-27 | 1044 |  | Sector 43 | 9702906 |
| 1048 | 37300.37500.38800.40500.116500.123700.876000 | Advanced Lightening Protection system | 45d | 2027-08-03 | 2027-09-16 | 1047FS-25d |  | Sector 43 | 9702916 |
| 1049 | 37300.37500.38800.40500.116500.123700.876100 | Energy meter | 60d | 2027-09-27 | 2028-01-09 | 1045 |  | Sector 43 | 9702926 |
| 1050 | 37300.37500.38800.40500.116500.123700.876200 | Inverter / UPS | 70d | 2028-01-05 | 2028-03-14 | 1045, 1046, 1049FS-5d |  | Sector 43 | 9702936 |
| 1051 | 37300.37500.38800.40500.116500.123700.876300 | HVAC & Exhast fan | 120d | 2027-05-30 | 2027-09-26 | 1044FS-30d |  | Sector 43 | 9702946 |
| 1052 | 37300.37500.38800.40500.116500.123700.876400 | FTTH | 45d | 2027-09-02 | 2027-10-16 | 1046FS-25d |  | Sector 43 | 9702956 |
| 1053 | 37300.37500.38800.40500.116500.123700.876500 | Security System - FA & PA | 45d | 2027-09-02 | 2027-10-16 | 1046FS-25d |  | Sector 43 | 9702966 |
| 1054 | 37300.37500.38800.40500.116500.123700.876600 | T&C of complete system | 64d | 2028-06-07 | 2028-08-09 | 1008, 1046, 1048, 1049, 1050, 1051, 1052, 1053 |  | Sector 43 | 9702976 |
| 1055 | 37300.37500.38800.40500.116500.134300 | **Plumbing work** | 332d | 2027-08-06 | 2028-08-16 |  | start no earlier than 2027-08-06 | Sector 43 | 9699006 |
| 1056 | 37300.37500.38800.40500.116500.134300.876700 | Terrace looping | 45d | 2027-08-06 | 2027-09-19 | 462 |  | Sector 43 | 9702986 |
| 1057 | 37300.37500.38800.40500.116500.134300.876800 | Shaft Plumbing | 120d | 2027-12-26 | 2028-04-23 | 999FS-30d, 1056 |  | Sector 43 | 9702996 |
| 1058 | 37300.37500.38800.40500.116500.134300.876900 | CP sanitary fixture supply | 45d | 2028-04-24 | 2028-06-07 | 1057 |  | Sector 43 | 9703006 |
| 1059 | 37300.37500.38800.40500.116500.134300.877000 | Cold & flushing water supply | 45d | 2028-04-24 | 2028-06-07 | 1057 |  | Sector 43 | 9703016 |
| 1060 | 37300.37500.38800.40500.116500.134300.877100 | Misc work | 30d | 2028-05-19 | 2028-06-17 | 1059FS-20d |  | Sector 43 | 9703026 |
| 1061 | 37300.37500.38800.40500.116500.134300.877200 | Installation of PHE pumps | 60d | 2027-09-20 | 2028-01-02 | 1056 |  | Sector 43 | 9703036 |
| 1062 | 37300.37500.38800.40500.116500.134300.877300 | T&C of complete system | 60d | 2028-06-18 | 2028-08-16 | 1056, 1057, 1059, 1060, 1061 |  | Sector 43 | 9703046 |
| 1063 | 37300.37500.38800.40500.116500.141800 | **Fire fighting work** | 210d | 2027-12-26 | 2028-07-22 |  | start no earlier than 2027-12-26 | Sector 43 | 9699056 |
| 1064 | 37300.37500.38800.40500.116500.141800.877400 | Fire hydrant work | 90d | 2027-12-26 | 2028-03-24 | 999FS-30d |  | Sector 43 | 9703056 |
| 1065 | 37300.37500.38800.40500.116500.141800.877500 | Pipe connection & sprinkler installation | 60d | 2028-03-25 | 2028-05-23 | 1064 |  | Sector 43 | 9703066 |
| 1066 | 37300.37500.38800.40500.116500.141800.877600 | Shaft Downtake works | 90d | 2027-12-26 | 2028-03-24 | 462, 999FS-30d |  | Sector 43 | 9703076 |
| 1067 | 37300.37500.38800.40500.116500.141800.877700 | Connection to pump room | 45d | 2028-03-25 | 2028-05-08 | 1066 |  | Sector 43 | 9703086 |
| 1068 | 37300.37500.38800.40500.116500.141800.877800 | Installation of FF pumps | 60d | 2028-03-25 | 2028-05-23 | 1064, 1066 |  | Sector 43 | 9703096 |
| 1069 | 37300.37500.38800.40500.116500.141800.877900 | T&C of complete system | 60d | 2028-05-24 | 2028-07-22 | 998, 1003, 1009FS-20d, 1065, 1067, 1068, 979 |  | Sector 43 | 9703106 |

| ID | WBS | Task | Duration | Start | Finish | Predecessors | Complete | Constraint | Calendar | Unique_Task_ID |
| --- | --- | --- | --- | --- | --- | --- | --- | --- | --- | --- |
| 1070 | 37300.37500.38800.40500.116500.217800 | **Lift work** | 99d | 2027-09-07 | 2028-01-28 |  |  | start no earlier than 2027-09-07 | Sector 43 | 9700316 |
| 1071 | 37300.37500.38800.40500.116500.217800.878000 | Lift Shaft/Pit Handover | 30d | 2027-09-07 | 2027-10-06 | 429 |  |  | Sector 43 | 9703116 |
| 1072 | 37300.37500.38800.40500.116500.217800.878100 | Lift installation work | 50d | 2027-09-26 | 2027-12-29 | 1071FS-11d |  |  | Sector 43 | 9703126 |
| 1073 | 37300.37500.38800.40500.116500.217800.878200 | Lift testing and commissioning | 30d | 2027-12-30 | 2028-01-28 | 1072 |  |  | Sector 43 | 9703136 |
| 1074 | 37300.37500.38800.40500.216500 | **External Paint Works** | 170d | 2027-08-06 | 2028-03-07 |  |  | start no earlier than 2027-08-06 | Sector 43 | 9699816 |
| 1075 | 37300.37500.38800.40500.216500.416200 | Surface prepration | 70d | 2027-08-06 | 2027-10-14 | 462 |  |  | Sector 43 | 9701116 |
| 1076 | 37300.37500.38800.40500.216500.416300 | External Painting (Primer, texture & first coat) | 90d | 2027-10-15 | 2028-02-26 | 1075 |  |  | Sector 43 | 9701126 |
| 1077 | 37300.37500.38800.40500.216500.416400 | Final coat of painting | 80d | 2027-12-19 | 2028-03-07 | 1076FS-70d |  |  | Sector 43 | 9701136 |
| 1078 | 37300.37500.38800.40500.216500.416500 | Misc. work | 50d | 2027-10-15 | 2028-01-17 | 1075 |  |  | Sector 43 | 9701146 |
| 1079 | 37300.37500.38800.40500.321800 | OC Application/Readiness | 1d | 2028-07-06 | 2028-07-06 | 1041FS-60d, 1054FS-60d, 1062FS-42d, 1069FS-50d, 1073, 995, 1001, 1002, 1004, 992FS-60d |  |  | Sector 43 | 9700726 |
| 1080 | 37300.37500.38800.40500.321900 | OC Receipt | 30d | 2028-07-07 | 2028-08-05 | 1079, 252, 253, 261, 262 |  |  | Sector 43 | 9700736 |
| 1081 | 37300.37500.38800.40500.143700 | **Post OC Activities** | 205d | 2028-07-07 | 2029-03-13 |  |  | start no earlier than 2028-07-07 | Sector 43 | 9699146 |
| 1082 | 37300.37500.38800.40500.143700.416600 | CP & Sanitaryware installation | 120d | 2028-07-07 | 2028-12-18 | 1080FS-30d, 1058 |  |  | Sector 43 | 9701156 |
| 1083 | 37300.37500.38800.40500.143700.416700 | Electrical Fixtures And Fittings installations | 120d | 2028-07-07 | 2028-12-18 | 1080FS-30d |  |  | Sector 43 | 9701166 |
| 1084 | 37300.37500.38800.40500.143700.416800 | Final Coat Paint Internal | 90d | 2028-07-07 | 2028-10-04 | 1080FS-30d |  |  | Sector 43 | 9701176 |
| 1085 | 37300.37500.38800.40500.143700.416900 | Split AC Units installation | 100d | 2028-10-20 | 2029-03-13 | 1084FS+15d |  |  | Sector 43 | 9701186 |
| 1086 | 37300.37500.38800.40500.143700.417000 | Wooden Flooring | 180d | 2028-07-07 | 2029-02-16 | 1080FS-30d |  |  | Sector 43 | 9701196 |
| 1087 | 37300.37500.38800.40500.322000 | Offer to possession | 150d | 2029-03-14 | 2029-08-10 | 1080FS+120d, 1078, 1082, 1083, 1085, 1086 |  |  | Sector 43 | 9700746 |
| 1088 | 37300.37500.38800.40800 | **Tower B (2B+G+31)** | 1397d | 2025-05-20 | 2029-07-30 |  | 1% | start no earlier than 2025-05-20 | Sector 43 | 9697406 |
| 1089 | 37300.37500.38800.40800.64200 | **Sub structure Works** | 434d | 2025-05-20 | 2026-07-28 |  | 15% | start no earlier than 2025-05-20 | Sector 43 | 9698576 |
| 1090 | 37300.37500.38800.40800.64200.210000 | **Soil bed preparation** | 19.8d | 2025-05-20 | 2025-06-08 |  | 100% | start no earlier than 2025-05-20 | Sector 43 | 9700306 |
| 1091 | 37300.37500.38800.40800.64200.210000.233400 | Surface dressing | 6d | 2025-05-20 | 2025-05-25 | 66 | 100% | start no earlier than 2025-05-20 | Sector 43 | 9703146 |
| 1092 | 37300.37500.38800.40800.64200.210000.233500 | ATT | 4d | 2025-05-22 | 2025-06-03 | 1091 | 100% | start no earlier than 2025-05-22 | Sector 43 | 9703156 |
| 1093 | 37300.37500.38800.40800.64200.210000.233600 | PCC | 3d | 2025-05-23 | 2025-06-08 | 1092FS-15.6d | 100% | start no earlier than 2025-05-23 | Sector 43 | 9703166 |

| ID | WBS | Task | Duration | Start | Finish | Predecessors | Complete | Constraint | Calendar | Unique_Task_ID |
| --- | --- | --- | --- | --- | --- | --- | --- | --- | --- | --- |
| 1094 | 37300.37500.38800.40800.64200.123800 | **RCC works** | 236d | 2025-06-07 | 2026-01-29 |  | 40% | start no earlier than 2025-06-07 | Sector 43 | 9698806 |
| 1095 | 37300.37500.38800.40800.64200.123800.125800 | **Raft including B2 slab** | 210d | 2025-06-07 | 2026-01-03 |  | 50% | start no earlier than 2025-06-07 | Sector 43 | 9698876 |
| 1096 | 37300.37500.38800.40800.64200.123800.125800.249200 | Reinforcement | 21d | 2025-06-07 | 2025-08-23 | 1093FS-43.8d | 100% | start no earlier than 2025-06-07 | Sector 43 | 9712146 |
| 1097 | 37300.37500.38800.40800.64200.123800.125800.249100 | Shuttering | 17.7d | 2025-06-07 | 2025-08-26 | 1096FS-76d | 100% | start no earlier than 2025-06-07 | Sector 43 | 9712156 |
| 1098 | 37300.37500.38800.40800.64200.123800.125800.249000 | Concreting of Raft | 6d | 2025-08-09 | 2025-09-10 | 1097FS-78.85d | 100% | start no earlier than 2025-08-09 | Sector 43 | 9712166 |
| 1099 | 37300.37500.38800.40800.64200.123800.125800.248900 | Column till bottom of B2 slab (stitch slab) | 10d | 2025-08-13 | 2025-08-22 | 1098FS-32d | 100% | start no earlier than 2025-08-13 | Sector 43 | 9712176 |
| 1100 | 37300.37500.38800.40800.64200.123800.125800.248800 | Backfilling till bottom of B2 slab | 12d | 2025-08-11 | 2025-08-22 | 1099 | 100% | start no earlier than 2025-08-11 | Sector 43 | 9712186 |
| 1101 | 37300.37500.38800.40800.64200.123800.125800.248700 | Reinforcement | 49d | 2025-08-18 | 2026-01-03 | 1100FS-22d | 28% | start no earlier than 2025-08-18 | Sector 43 | 9712196 |
| 1102 | 37300.37500.38800.40800.64200.123800.125800.248600 | Shuttering | 49d | 2025-09-09 | 2025-12-13 | 1101FS-116d | 14% | start no earlier than 2025-09-09 | Sector 43 | 9712206 |
| 1103 | 37300.37500.38800.40800.64200.123800.125800.248500 | Concreting of B2 Slab | 10d | 2025-08-02 | 2025-12-20 | 1102FS-133d | 10% |  | Sector 43 | 9712216 |
| 1104 | 37300.37500.38800.40800.64200.123800.203000 | **B1 slab** | 116d | 2025-08-31 | 2025-12-25 |  | 43% | start no earlier than 2025-08-31 | Sector 43 | 9700246 |
| 1105 | 37300.37500.38800.40800.64200.123800.203000.248400 | Shuttering | 25d | 2025-08-31 | 2025-12-09 | 1103FS-111d | 88% | start no earlier than 2025-08-31 | Sector 43 | 9712226 |
| 1106 | 37300.37500.38800.40800.64200.123800.203000.248300 | Reinforcement | 60d | 2025-09-05 | 2025-12-21 | 1105FS-95d | 18% | start no earlier than 2025-09-05 | Sector 43 | 9712236 |
| 1107 | 37300.37500.38800.40800.64200.123800.203000.248200 | Concreting | 15d | 2025-09-28 | 2025-12-25 | 1106FS-84d | 66% | start no earlier than 2025-09-28 | Sector 43 | 9712246 |
| 1108 | 37300.37500.38800.40800.64200.123800.217400 | **Ground Floor Slab / NTA top** | 35d | 2025-12-26 | 2026-01-29 |  |  | start no earlier than 2025-12-26 | Sector 43 | 9700236 |
| 1109 | 37300.37500.38800.40800.64200.123800.217400.1154200 | Shuttering | 27d | 2025-12-26 | 2026-01-21 | 1107 |  |  | Sector 43 | 9712256 |
| 1110 | 37300.37500.38800.40800.64200.123800.217400.1154300 | Reinforcement | 23d | 2026-01-07 | 2026-01-29 | 1109FS-15d |  |  | Sector 43 | 9712266 |
| 1111 | 37300.37500.38800.40800.64200.123800.217400.1154400 | Concreting | 2d | 2026-01-28 | 2026-01-29 | 1110FS-2d |  |  | Sector 43 | 9712276 |
| 1112 | 37300.37500.38800.40800.64200.123900 | **Sub structure finishing works** | 170d | 2026-02-09 | 2026-07-28 |  |  | start no earlier than 2026-02-09 | Sector 43 | 9698746 |
| 1113 | 37300.37500.38800.40800.64200.123900.127900 | **Basement 2** | 135d | 2026-02-09 | 2026-06-23 |  |  | start no earlier than 2026-02-09 | Sector 43 | 9698886 |
| 1114 | 37300.37500.38800.40800.64200.123900.127900.1154500 | Masonary | 30d | 2026-02-09 | 2026-03-10 | 1107FS+45d |  |  | Sector 43 | 9712286 |
| 1115 | 37300.37500.38800.40800.64200.123900.127900.1154600 | Structural steel | 30d | 2026-02-09 | 2026-03-10 | 1107FS+45d |  |  | Sector 43 | 9712296 |
| 1116 | 37300.37500.38800.40800.64200.123900.127900.1154700 | Plaster | 30d | 2026-03-11 | 2026-04-09 | 1114, 1115 |  |  | Sector 43 | 9712306 |
| 1117 | 37300.37500.38800.40800.64200.123900.127900.1154800 | White wash | 30d | 2026-04-10 | 2026-05-09 | 1116 |  |  | Sector 43 | 9712316 |
| 1118 | 37300.37500.38800.40800.64200.123900.127900.1154900 | VDF | 60d | 2026-02-24 | 2026-04-24 | 1116FS-45d |  |  | Sector 43 | 9712326 |
| 1119 | 37300.37500.38800.40800.64200.123900.127900.1155000 | Drain & Sump (incl. gratings) | 60d | 2026-03-26 | 2026-05-24 | 1118FS-30d |  |  | Sector 43 | 9712336 |
| 1120 | 37300.37500.38800.40800.64200.123900.127900.1155100 | Car parking marking | 30d | 2026-05-25 | 2026-06-23 | 1117FS-15d, 1119 |  |  | Sector 43 | 9712346 |
| 1121 | 37300.37500.38800.40800.64200.123900.127900.1155200 | Signages | 30d | 2026-04-30 | 2026-05-29 | 1117FS-10d |  |  | Sector 43 | 9712356 |

| ID | WBS | Task | Duration | Start | Finish | Predecessors | Constraint | Calendar | Unique_Task_ID |
| --- | --- | --- | --- | --- | --- | --- | --- | --- | --- |
| 1122 | 37300.37500.38800.40800.64200.123900.127800 | **Basement 1** | 135d | 2026-03-16 | 2026-07-28 |  | start no earlier than 2026-03-16 | Sector 43 | 9698896 |
| 1123 | 37300.37500.38800.40800.64200.123900.127800.1155300 | Masonary | 30d | 2026-03-16 | 2026-04-14 | 1111FS+45d |  | Sector 43 | 9712366 |
| 1124 | 37300.37500.38800.40800.64200.123900.127800.1155400 | Structural steel | 30d | 2026-03-16 | 2026-04-14 | 1111FS+45d |  | Sector 43 | 9712376 |
| 1125 | 37300.37500.38800.40800.64200.123900.127800.1155500 | Plaster | 30d | 2026-04-15 | 2026-05-14 | 1123, 1124 |  | Sector 43 | 9712386 |
| 1126 | 37300.37500.38800.40800.64200.123900.127800.1155600 | White wash | 30d | 2026-05-15 | 2026-06-13 | 1125 |  | Sector 43 | 9712396 |
| 1127 | 37300.37500.38800.40800.64200.123900.127800.1155700 | VDF | 60d | 2026-03-31 | 2026-05-29 | 1125FS-45d |  | Sector 43 | 9712406 |
| 1128 | 37300.37500.38800.40800.64200.123900.127800.1155800 | Drain & Sump (incl. gratings) | 60d | 2026-04-30 | 2026-06-28 | 1127FS-30d |  | Sector 43 | 9712416 |
| 1129 | 37300.37500.38800.40800.64200.123900.127800.1155900 | Car parking marking | 30d | 2026-06-29 | 2026-07-28 | 1126FS-15d, 1128 |  | Sector 43 | 9712426 |
| 1130 | 37300.37500.38800.40800.64200.123900.127800.1156000 | Signages | 30d | 2026-06-04 | 2026-07-03 | 1126FS-10d |  | Sector 43 | 9712436 |
| 1131 | 37300.37500.38800.40800.45200 | **Super structure works** | 530d | 2026-01-30 | 2027-08-27 |  | start no earlier than 2026-01-30 | Sector 43 | 9697496 |
| 1132 | 37300.37500.38800.40800.45200.46600 | **RCC works** | 530d | 2026-01-30 | 2027-08-27 |  | start no earlier than 2026-01-30 | Sector 43 | 9697526 |
| 1133 | 37300.37500.38800.40800.45200.46600.203100 | **1st floor** | 37d | 2026-01-30 | 2026-03-07 |  | start no earlier than 2026-01-30 | Sector 43 | 9700036 |
| 1134 | 37300.37500.38800.40800.45200.46600.203100.1156100 | Reinforcement | 33d | 2026-01-30 | 2026-03-03 | 1111 |  | Sector 43 | 9712446 |
| 1135 | 37300.37500.38800.40800.45200.46600.203100.1156200 | Wall/slab conduiting | 22d | 2026-02-12 | 2026-03-05 | 1134FS-20d |  | Sector 43 | 9712456 |
| 1136 | 37300.37500.38800.40800.45200.46600.203100.1156300 | Shuttering | 22d | 2026-02-12 | 2026-03-05 | 1134FS-20d |  | Sector 43 | 9712466 |
| 1137 | 37300.37500.38800.40800.45200.46600.203100.1156400 | Concreting | 2d | 2026-03-06 | 2026-03-07 | 1134, 1135, 1136 |  | Sector 43 | 9712476 |
| 1138 | 37300.37500.38800.40800.45200.46600.203200 | **2nd floor** | 21d | 2026-03-08 | 2026-03-28 |  | start no earlier than 2026-03-08 | Sector 43 | 9700046 |
| 1139 | 37300.37500.38800.40800.45200.46600.203200.1156500 | Reinforcement | 17d | 2026-03-08 | 2026-03-24 | 1137 |  | Sector 43 | 9712486 |
| 1140 | 37300.37500.38800.40800.45200.46600.203200.1156600 | Wall/slab conduiting | 16d | 2026-03-11 | 2026-03-26 | 1139FS-14d |  | Sector 43 | 9712496 |
| 1141 | 37300.37500.38800.40800.45200.46600.203200.1156700 | Shuttering | 16d | 2026-03-11 | 2026-03-26 | 1139FS-14d |  | Sector 43 | 9712506 |
| 1142 | 37300.37500.38800.40800.45200.46600.203200.1156800 | Concreting | 2d | 2026-03-27 | 2026-03-28 | 1139, 1140, 1141 |  | Sector 43 | 9712516 |
| 1143 | 37300.37500.38800.40800.45200.46600.203300 | **3rd floor** | 30d | 2026-03-29 | 2026-04-27 |  | start no earlier than 2026-03-29 | Sector 43 | 9700056 |
| 1144 | 37300.37500.38800.40800.45200.46600.203300.1156900 | Reinforcement | 28d | 2026-03-29 | 2026-04-25 | 1142 |  | Sector 43 | 9712526 |
| 1145 | 37300.37500.38800.40800.45200.46600.203300.1157000 | Wall/slab conduiting | 19d | 2026-04-07 | 2026-04-25 | 1144FS-19d |  | Sector 43 | 9712536 |
| 1146 | 37300.37500.38800.40800.45200.46600.203300.1157100 | Shuttering | 19d | 2026-04-07 | 2026-04-25 | 1144FS-19d |  | Sector 43 | 9712546 |
| 1147 | 37300.37500.38800.40800.45200.46600.203300.1157200 | Concreting | 2d | 2026-04-26 | 2026-04-27 | 1144, 1145, 1146 |  | Sector 43 | 9712556 |

| ID | WBS | Task | Duration | Start | Finish | Predecessors | Constraint | Calendar | Unique_Task_ID |
| --- | --- | --- | --- | --- | --- | --- | --- | --- | --- |
| 1148 | 37300.37500.38800.40800.45200.46600.203400 | **4th floor** | 21d | 2026-04-28 | 2026-05-18 |  | start no earlier than 2026-04-28 | Sector 43 | 9700106 |
| 1149 | 37300.37500.38800.40800.45200.46600.203400.1157300 | Reinforcement | 19d | 2026-04-28 | 2026-05-16 | 1147 |  | Sector 43 | 9712566 |
| 1150 | 37300.37500.38800.40800.45200.46600.203400.1157400 | Wall/slab conduiting | 12d | 2026-05-05 | 2026-05-16 | 1149FS-12d |  | Sector 43 | 9712576 |
| 1151 | 37300.37500.38800.40800.45200.46600.203400.1157500 | Shuttering | 12d | 2026-05-05 | 2026-05-16 | 1149FS-12d |  | Sector 43 | 9712586 |
| 1152 | 37300.37500.38800.40800.45200.46600.203400.1157600 | Concreting | 2d | 2026-05-17 | 2026-05-18 | 1149, 1150, 1151 |  | Sector 43 | 9712596 |
| 1153 | 37300.37500.38800.40800.45200.46600.203500 | **5th floor** | 13d | 2026-05-19 | 2026-05-31 |  | start no earlier than 2026-05-19 | Sector 43 | 9700136 |
| 1154 | 37300.37500.38800.40800.45200.46600.203500.1157700 | Reinforcement | 11d | 2026-05-19 | 2026-05-29 | 1152 |  | Sector 43 | 9712606 |
| 1155 | 37300.37500.38800.40800.45200.46600.203500.1157800 | Wall/slab conduiting | 5d | 2026-05-25 | 2026-05-29 | 1154FS-5d |  | Sector 43 | 9712616 |
| 1156 | 37300.37500.38800.40800.45200.46600.203500.1157900 | Shuttering | 5d | 2026-05-25 | 2026-05-29 | 1154FS-5d |  | Sector 43 | 9712626 |
| 1157 | 37300.37500.38800.40800.45200.46600.203500.1158000 | Concreting | 2d | 2026-05-30 | 2026-05-31 | 1154, 1155, 1156 |  | Sector 43 | 9712636 |
| 1158 | 37300.37500.38800.40800.45200.46600.203600 | **6th floor** | 13d | 2026-06-01 | 2026-06-13 |  | start no earlier than 2026-06-01 | Sector 43 | 9700146 |
| 1159 | 37300.37500.38800.40800.45200.46600.203600.1158100 | Reinforcement | 11d | 2026-06-01 | 2026-06-11 | 1157 |  | Sector 43 | 9712646 |
| 1160 | 37300.37500.38800.40800.45200.46600.203600.1158200 | Wall/slab conduiting | 5d | 2026-06-07 | 2026-06-11 | 1159FS-5d |  | Sector 43 | 9712656 |
| 1161 | 37300.37500.38800.40800.45200.46600.203600.1158300 | Shuttering | 5d | 2026-06-07 | 2026-06-11 | 1159FS-5d |  | Sector 43 | 9712666 |
| 1162 | 37300.37500.38800.40800.45200.46600.203600.1158400 | Concreting | 2d | 2026-06-12 | 2026-06-13 | 1159, 1160, 1161 |  | Sector 43 | 9712676 |
| 1163 | 37300.37500.38800.40800.45200.46600.203700 | **7th floor** | 13d | 2026-06-14 | 2026-06-26 |  | start no earlier than 2026-06-14 | Sector 43 | 9700156 |
| 1164 | 37300.37500.38800.40800.45200.46600.203700.1158500 | Reinforcement | 11d | 2026-06-14 | 2026-06-24 | 1162 |  | Sector 43 | 9712686 |
| 1165 | 37300.37500.38800.40800.45200.46600.203700.1158600 | Wall/slab conduiting | 5d | 2026-06-20 | 2026-06-24 | 1164FS-5d |  | Sector 43 | 9712696 |
| 1166 | 37300.37500.38800.40800.45200.46600.203700.1158700 | Shuttering | 5d | 2026-06-20 | 2026-06-24 | 1164FS-5d |  | Sector 43 | 9712706 |
| 1167 | 37300.37500.38800.40800.45200.46600.203700.1158800 | Concreting | 2d | 2026-06-25 | 2026-06-26 | 1164, 1165, 1166 |  | Sector 43 | 9712716 |
| 1168 | 37300.37500.38800.40800.45200.46600.203800 | **8th floor** | 13d | 2026-06-27 | 2026-07-09 |  | start no earlier than 2026-06-27 | Sector 43 | 9700166 |
| 1169 | 37300.37500.38800.40800.45200.46600.203800.1158900 | Reinforcement | 11d | 2026-06-27 | 2026-07-07 | 1167 |  | Sector 43 | 9712726 |
| 1170 | 37300.37500.38800.40800.45200.46600.203800.1159000 | Wall/slab conduiting | 5d | 2026-07-03 | 2026-07-07 | 1169FS-5d |  | Sector 43 | 9712736 |
| 1171 | 37300.37500.38800.40800.45200.46600.203800.1159100 | Shuttering | 5d | 2026-07-03 | 2026-07-07 | 1169FS-5d |  | Sector 43 | 9712746 |
| 1172 | 37300.37500.38800.40800.45200.46600.203800.1159200 | Concreting | 2d | 2026-07-08 | 2026-07-09 | 1169, 1170, 1171 |  | Sector 43 | 9712756 |

| ID | WBS | Task | Duration | Start | Finish | Predecessors | Constraint | Calendar | Unique_Task_ID |
| --- | --- | --- | --- | --- | --- | --- | --- | --- | --- |
| 1173 | 37300.37500.38800.40800.45200.46600.203900 | **9th floor** | 13d | 2026-07-10 | 2026-07-22 |  | start no earlier than 2026-07-10 | Sector 43 | 9700186 |
| 1174 | 37300.37500.38800.40800.45200.46600.203900.1159300 | Reinforcement | 11d | 2026-07-10 | 2026-07-20 | 1172 |  | Sector 43 | 9712766 |
| 1175 | 37300.37500.38800.40800.45200.46600.203900.1159400 | Wall/slab conduiting | 5d | 2026-07-16 | 2026-07-20 | 1174FS-5d |  | Sector 43 | 9712776 |
| 1176 | 37300.37500.38800.40800.45200.46600.203900.1159500 | Shuttering | 5d | 2026-07-16 | 2026-07-20 | 1174FS-5d |  | Sector 43 | 9712786 |
| 1177 | 37300.37500.38800.40800.45200.46600.203900.1159600 | Concreting | 2d | 2026-07-21 | 2026-07-22 | 1174, 1175, 1176 |  | Sector 43 | 9712796 |
| 1178 | 37300.37500.38800.40800.45200.46600.204000 | **10th floor** | 13d | 2026-07-23 | 2026-08-04 |  | start no earlier than 2026-07-23 | Sector 43 | 9700196 |
| 1179 | 37300.37500.38800.40800.45200.46600.204000.1159700 | Reinforcement | 11d | 2026-07-23 | 2026-08-02 | 1177 |  | Sector 43 | 9712806 |
| 1180 | 37300.37500.38800.40800.45200.46600.204000.1159800 | Wall/slab conduiting | 5d | 2026-07-29 | 2026-08-02 | 1179FS-5d |  | Sector 43 | 9712816 |
| 1181 | 37300.37500.38800.40800.45200.46600.204000.1159900 | Shuttering | 5d | 2026-07-29 | 2026-08-02 | 1179FS-5d |  | Sector 43 | 9712826 |
| 1182 | 37300.37500.38800.40800.45200.46600.204000.1160000 | Concreting | 2d | 2026-08-03 | 2026-08-04 | 1179, 1180, 1181 |  | Sector 43 | 9712836 |
| 1183 | 37300.37500.38800.40800.45200.46600.204100 | **11th floor** | 13d | 2026-08-05 | 2026-08-17 |  | start no earlier than 2026-08-05 | Sector 43 | 9700206 |
| 1184 | 37300.37500.38800.40800.45200.46600.204100.1160100 | Reinforcement | 11d | 2026-08-05 | 2026-08-15 | 1182 |  | Sector 43 | 9712846 |
| 1185 | 37300.37500.38800.40800.45200.46600.204100.1160200 | Wall/slab conduiting | 5d | 2026-08-11 | 2026-08-15 | 1184FS-5d |  | Sector 43 | 9712856 |
| 1186 | 37300.37500.38800.40800.45200.46600.204100.1160300 | Shuttering | 5d | 2026-08-11 | 2026-08-15 | 1184FS-5d |  | Sector 43 | 9712866 |
| 1187 | 37300.37500.38800.40800.45200.46600.204100.1160400 | Concreting | 2d | 2026-08-16 | 2026-08-17 | 1184, 1185, 1186 |  | Sector 43 | 9712876 |
| 1188 | 37300.37500.38800.40800.45200.46600.204200 | **12th floor** | 13d | 2026-08-18 | 2026-08-30 |  | start no earlier than 2026-08-18 | Sector 43 | 9700176 |
| 1189 | 37300.37500.38800.40800.45200.46600.204200.1160500 | Reinforcement | 11d | 2026-08-18 | 2026-08-28 | 1187 |  | Sector 43 | 9712886 |
| 1190 | 37300.37500.38800.40800.45200.46600.204200.1160600 | Wall/slab conduiting | 5d | 2026-08-24 | 2026-08-28 | 1189FS-5d |  | Sector 43 | 9712896 |
| 1191 | 37300.37500.38800.40800.45200.46600.204200.1160700 | Shuttering | 5d | 2026-08-24 | 2026-08-28 | 1189FS-5d |  | Sector 43 | 9712906 |
| 1192 | 37300.37500.38800.40800.45200.46600.204200.1160800 | Concreting | 2d | 2026-08-29 | 2026-08-30 | 1189, 1190, 1191 |  | Sector 43 | 9712916 |
| 1193 | 37300.37500.38800.40800.45200.46600.204300 | **13th floor** | 13d | 2026-08-31 | 2026-09-12 |  | start no earlier than 2026-08-31 | Sector 43 | 9700126 |
| 1194 | 37300.37500.38800.40800.45200.46600.204300.1160900 | Reinforcement | 11d | 2026-08-31 | 2026-09-10 | 1192 |  | Sector 43 | 9712926 |
| 1195 | 37300.37500.38800.40800.45200.46600.204300.1161000 | Wall/slab conduiting | 5d | 2026-09-06 | 2026-09-10 | 1194FS-5d |  | Sector 43 | 9712936 |
| 1196 | 37300.37500.38800.40800.45200.46600.204300.1161100 | Shuttering | 5d | 2026-09-06 | 2026-09-10 | 1194FS-5d |  | Sector 43 | 9712946 |
| 1197 | 37300.37500.38800.40800.45200.46600.204300.1161200 | Concreting | 2d | 2026-09-11 | 2026-09-12 | 1194, 1195, 1196 |  | Sector 43 | 9712956 |

| ID | WBS | Task | Duration | Start | Finish | Predecessors | Constraint | Calendar | Unique_Task_ID |
| --- | --- | --- | --- | --- | --- | --- | --- | --- | --- |
| 1198 | 37300.37500.38800.40800.45200.46600.204400 | **14th floor** | 13d | 2026-09-13 | 2026-09-25 |  | start no earlier than 2026-09-13 | Sector 43 | 9700086 |
| 1199 | 37300.37500.38800.40800.45200.46600.204400.1161300 | Reinforcement | 11d | 2026-09-13 | 2026-09-23 | 1197 |  | Sector 43 | 9712966 |
| 1200 | 37300.37500.38800.40800.45200.46600.204400.1161400 | Wall/slab conduiting | 5d | 2026-09-19 | 2026-09-23 | 1199FS-5d |  | Sector 43 | 9712976 |
| 1201 | 37300.37500.38800.40800.45200.46600.204400.1161500 | Shuttering | 5d | 2026-09-19 | 2026-09-23 | 1199FS-5d |  | Sector 43 | 9712986 |
| 1202 | 37300.37500.38800.40800.45200.46600.204400.1161600 | Concreting | 2d | 2026-09-24 | 2026-09-25 | 1199, 1200, 1201 |  | Sector 43 | 9712996 |
| 1203 | 37300.37500.38800.40800.45200.46600.204500 | **15th floor** | 13d | 2026-09-26 | 2026-10-08 |  | start no earlier than 2026-09-26 | Sector 43 | 9700066 |
| 1204 | 37300.37500.38800.40800.45200.46600.204500.1161700 | Reinforcement | 11d | 2026-09-26 | 2026-10-06 | 1202 |  | Sector 43 | 9713006 |
| 1205 | 37300.37500.38800.40800.45200.46600.204500.1161800 | Wall/slab conduiting | 5d | 2026-10-02 | 2026-10-06 | 1204FS-5d |  | Sector 43 | 9713016 |
| 1206 | 37300.37500.38800.40800.45200.46600.204500.1161900 | Shuttering | 5d | 2026-10-02 | 2026-10-06 | 1204FS-5d |  | Sector 43 | 9713026 |
| 1207 | 37300.37500.38800.40800.45200.46600.204500.1162000 | Concreting | 2d | 2026-10-07 | 2026-10-08 | 1204, 1205, 1206 |  | Sector 43 | 9713036 |
| 1208 | 37300.37500.38800.40800.45200.46600.204600 | **16th floor** | 13d | 2026-10-09 | 2026-10-21 |  | start no earlier than 2026-10-09 | Sector 43 | 9700016 |
| 1209 | 37300.37500.38800.40800.45200.46600.204600.1162100 | Reinforcement | 11d | 2026-10-09 | 2026-10-19 | 1207 |  | Sector 43 | 9713046 |
| 1210 | 37300.37500.38800.40800.45200.46600.204600.1162200 | Wall/slab conduiting | 5d | 2026-10-15 | 2026-10-19 | 1209FS-5d |  | Sector 43 | 9713056 |
| 1211 | 37300.37500.38800.40800.45200.46600.204600.1162300 | Shuttering | 5d | 2026-10-15 | 2026-10-19 | 1209FS-5d |  | Sector 43 | 9713066 |
| 1212 | 37300.37500.38800.40800.45200.46600.204600.1162400 | Concreting | 2d | 2026-10-20 | 2026-10-21 | 1209, 1210, 1211 |  | Sector 43 | 9713076 |
| 1213 | 37300.37500.38800.40800.45200.46600.204700 | **17th floor - Refuge Floor** | 18d | 2026-10-22 | 2026-12-23 |  | start no earlier than 2026-10-22 | Sector 43 | 9700006 |
| 1214 | 37300.37500.38800.40800.45200.46600.204700.1162500 | Reinforcement | 16d | 2026-10-22 | 2026-12-21 | 1212 |  | Sector 43 | 9713086 |
| 1215 | 37300.37500.38800.40800.45200.46600.204700.1162600 | Wall/slab conduiting | 9d | 2026-10-29 | 2026-12-21 | 1214FS-9d |  | Sector 43 | 9713096 |
| 1216 | 37300.37500.38800.40800.45200.46600.204700.1162700 | Shuttering | 9d | 2026-10-29 | 2026-12-21 | 1214FS-9d |  | Sector 43 | 9713106 |
| 1217 | 37300.37500.38800.40800.45200.46600.204700.1162800 | Concreting | 2d | 2026-12-22 | 2026-12-23 | 1214, 1215, 1216 |  | Sector 43 | 9713116 |
| 1218 | 37300.37500.38800.40800.45200.46600.204800 | **18th floor** | 13d | 2026-12-24 | 2027-01-05 |  | start no earlier than 2026-12-24 | Sector 43 | 9699996 |
| 1219 | 37300.37500.38800.40800.45200.46600.204800.1162900 | Reinforcement | 11d | 2026-12-24 | 2027-01-03 | 1217 |  | Sector 43 | 9713126 |
| 1220 | 37300.37500.38800.40800.45200.46600.204800.1163000 | Wall/slab conduiting | 5d | 2026-12-30 | 2027-01-03 | 1219FS-5d |  | Sector 43 | 9713136 |
| 1221 | 37300.37500.38800.40800.45200.46600.204800.1163100 | Shuttering | 5d | 2026-12-30 | 2027-01-03 | 1219FS-5d |  | Sector 43 | 9713146 |
| 1222 | 37300.37500.38800.40800.45200.46600.204800.1163200 | Concreting | 2d | 2027-01-04 | 2027-01-05 | 1219, 1220, 1221 |  | Sector 43 | 9713156 |

| ID | WBS | Task | Duration | Start | Finish | Predecessors | Constraint | Calendar | Unique_Task_ID |
| --- | --- | --- | --- | --- | --- | --- | --- | --- | --- |
| 1223 | 37300.37500.38800.40800.45200.46600.204900 | **19th floor** | 12d | 2027-01-06 | 2027-01-17 |  | start no earlier than 2027-01-06 | Sector 43 | 9699986 |
| 1224 | 37300.37500.38800.40800.45200.46600.204900.1163300 | Reinforcement | 10d | 2027-01-06 | 2027-01-15 | 1222 |  | Sector 43 | 9713166 |
| 1225 | 37300.37500.38800.40800.45200.46600.204900.1163400 | Wall/slab conduiting | 6d | 2027-01-10 | 2027-01-15 | 1224FS-6d |  | Sector 43 | 9713176 |
| 1226 | 37300.37500.38800.40800.45200.46600.204900.1163500 | Shuttering | 6d | 2027-01-10 | 2027-01-15 | 1224FS-6d |  | Sector 43 | 9713186 |
| 1227 | 37300.37500.38800.40800.45200.46600.204900.1163600 | Concreting | 2d | 2027-01-16 | 2027-01-17 | 1224, 1225, 1226 |  | Sector 43 | 9713196 |
| 1228 | 37300.37500.38800.40800.45200.46600.205000 | **20th floor** | 12d | 2027-01-18 | 2027-01-29 |  | start no earlier than 2027-01-18 | Sector 43 | 9699976 |
| 1229 | 37300.37500.38800.40800.45200.46600.205000.1163700 | Reinforcement | 10d | 2027-01-18 | 2027-01-27 | 1227 |  | Sector 43 | 9713206 |
| 1230 | 37300.37500.38800.40800.45200.46600.205000.1163800 | Wall/slab conduiting | 6d | 2027-01-22 | 2027-01-27 | 1229FS-6d |  | Sector 43 | 9713216 |
| 1231 | 37300.37500.38800.40800.45200.46600.205000.1163900 | Shuttering | 6d | 2027-01-22 | 2027-01-27 | 1229FS-6d |  | Sector 43 | 9713226 |
| 1232 | 37300.37500.38800.40800.45200.46600.205000.1164000 | Concreting | 2d | 2027-01-28 | 2027-01-29 | 1229, 1230, 1231 |  | Sector 43 | 9713236 |
| 1233 | 37300.37500.38800.40800.45200.46600.205100 | **21st floor** | 12d | 2027-01-30 | 2027-02-10 |  | start no earlier than 2027-01-30 | Sector 43 | 9699956 |
| 1234 | 37300.37500.38800.40800.45200.46600.205100.1164100 | Reinforcement | 10d | 2027-01-30 | 2027-02-08 | 1232 |  | Sector 43 | 9713246 |
| 1235 | 37300.37500.38800.40800.45200.46600.205100.1164200 | Wall/slab conduiting | 6d | 2027-02-03 | 2027-02-08 | 1234FS-6d |  | Sector 43 | 9713256 |
| 1236 | 37300.37500.38800.40800.45200.46600.205100.1164300 | Shuttering | 6d | 2027-02-03 | 2027-02-08 | 1234FS-6d |  | Sector 43 | 9713266 |
| 1237 | 37300.37500.38800.40800.45200.46600.205100.1164400 | Concreting | 2d | 2027-02-09 | 2027-02-10 | 1234, 1235, 1236 |  | Sector 43 | 9713276 |
| 1238 | 37300.37500.38800.40800.45200.46600.205200 | **22nd floor** | 12d | 2027-02-11 | 2027-02-22 |  | start no earlier than 2027-02-11 | Sector 43 | 9699946 |
| 1239 | 37300.37500.38800.40800.45200.46600.205200.1164500 | Reinforcement | 10d | 2027-02-11 | 2027-02-20 | 1237 |  | Sector 43 | 9713286 |
| 1240 | 37300.37500.38800.40800.45200.46600.205200.1164600 | Wall/slab conduiting | 6d | 2027-02-15 | 2027-02-20 | 1239FS-6d |  | Sector 43 | 9713296 |
| 1241 | 37300.37500.38800.40800.45200.46600.205200.1164700 | Shuttering | 6d | 2027-02-15 | 2027-02-20 | 1239FS-6d |  | Sector 43 | 9713306 |
| 1242 | 37300.37500.38800.40800.45200.46600.205200.1164800 | Concreting | 2d | 2027-02-21 | 2027-02-22 | 1239, 1240, 1241 |  | Sector 43 | 9713316 |
| 1243 | 37300.37500.38800.40800.45200.46600.205300 | **23rd floor** | 12d | 2027-02-23 | 2027-03-06 |  | start no earlier than 2027-02-23 | Sector 43 | 9699936 |
| 1244 | 37300.37500.38800.40800.45200.46600.205300.1164900 | Reinforcement | 10d | 2027-02-23 | 2027-03-04 | 1242 |  | Sector 43 | 9713326 |
| 1245 | 37300.37500.38800.40800.45200.46600.205300.1165000 | Wall/slab conduiting | 6d | 2027-02-27 | 2027-03-04 | 1244FS-6d |  | Sector 43 | 9713336 |
| 1246 | 37300.37500.38800.40800.45200.46600.205300.1165100 | Shuttering | 6d | 2027-02-27 | 2027-03-04 | 1244FS-6d |  | Sector 43 | 9713346 |
| 1247 | 37300.37500.38800.40800.45200.46600.205300.1165200 | Concreting | 2d | 2027-03-05 | 2027-03-06 | 1244, 1245, 1246 |  | Sector 43 | 9713356 |

| ID | WBS | Task | Duration | Start | Finish | Predecessors | Constraint | Calendar | Unique_Task_ID |
| --- | --- | --- | --- | --- | --- | --- | --- | --- | --- |
| 1248 | 37300.37500.38800.40800.45200.46600.205400 | **24th floor** | 12d | 2027-03-07 | 2027-03-18 |  | start no earlier than 2027-03-07 | Sector 43 | 9699886 |
| 1249 | 37300.37500.38800.40800.45200.46600.205400.1165300 | Reinforcement | 10d | 2027-03-07 | 2027-03-16 | 1247 |  | Sector 43 | 9713366 |
| 1250 | 37300.37500.38800.40800.45200.46600.205400.1165400 | Wall/slab conduiting | 6d | 2027-03-11 | 2027-03-16 | 1249FS-6d |  | Sector 43 | 9713376 |
| 1251 | 37300.37500.38800.40800.45200.46600.205400.1165500 | Shuttering | 6d | 2027-03-11 | 2027-03-16 | 1249FS-6d |  | Sector 43 | 9713386 |
| 1252 | 37300.37500.38800.40800.45200.46600.205400.1165600 | Concreting | 2d | 2027-03-17 | 2027-03-18 | 1249, 1250, 1251 |  | Sector 43 | 9713396 |
| 1253 | 37300.37500.38800.40800.45200.46600.205500 | **25th floor - Refuge Floor** | 18d | 2027-03-19 | 2027-04-05 |  | start no earlier than 2027-03-19 | Sector 43 | 9699876 |
| 1254 | 37300.37500.38800.40800.45200.46600.205500.1165700 | Reinforcement | 16d | 2027-03-19 | 2027-04-03 | 1252 |  | Sector 43 | 9713406 |
| 1255 | 37300.37500.38800.40800.45200.46600.205500.1165800 | Wall/slab conduiting | 7d | 2027-03-26 | 2027-04-01 | 1254FS-9d |  | Sector 43 | 9713416 |
| 1256 | 37300.37500.38800.40800.45200.46600.205500.1165900 | Shuttering | 7d | 2027-03-26 | 2027-04-01 | 1254FS-9d |  | Sector 43 | 9713426 |
| 1257 | 37300.37500.38800.40800.45200.46600.205500.1166000 | Concreting | 2d | 2027-04-04 | 2027-04-05 | 1254, 1255, 1256 |  | Sector 43 | 9713436 |
| 1258 | 37300.37500.38800.40800.45200.46600.205600 | **26th floor** | 12d | 2027-04-06 | 2027-04-17 |  | start no earlier than 2027-04-06 | Sector 43 | 9699866 |
| 1259 | 37300.37500.38800.40800.45200.46600.205600.1166100 | Reinforcement | 10d | 2027-04-06 | 2027-04-15 | 1257 |  | Sector 43 | 9713446 |
| 1260 | 37300.37500.38800.40800.45200.46600.205600.1166200 | Wall/slab conduiting | 6d | 2027-04-10 | 2027-04-15 | 1259FS-6d |  | Sector 43 | 9713456 |
| 1261 | 37300.37500.38800.40800.45200.46600.205600.1166300 | Shuttering | 6d | 2027-04-10 | 2027-04-15 | 1259FS-6d |  | Sector 43 | 9713466 |
| 1262 | 37300.37500.38800.40800.45200.46600.205600.1166400 | Concreting | 2d | 2027-04-16 | 2027-04-17 | 1259, 1260, 1261 |  | Sector 43 | 9713476 |
| 1263 | 37300.37500.38800.40800.45200.46600.205700 | **27th floor** | 12d | 2027-04-18 | 2027-04-29 |  | start no earlier than 2027-04-18 | Sector 43 | 9699856 |
| 1264 | 37300.37500.38800.40800.45200.46600.205700.1166500 | Reinforcement | 10d | 2027-04-18 | 2027-04-27 | 1262 |  | Sector 43 | 9713486 |
| 1265 | 37300.37500.38800.40800.45200.46600.205700.1166600 | Wall/slab conduiting | 6d | 2027-04-22 | 2027-04-27 | 1264FS-6d |  | Sector 43 | 9713496 |
| 1266 | 37300.37500.38800.40800.45200.46600.205700.1166700 | Shuttering | 6d | 2027-04-22 | 2027-04-27 | 1264FS-6d |  | Sector 43 | 9713506 |
| 1267 | 37300.37500.38800.40800.45200.46600.205700.1166800 | Concreting | 2d | 2027-04-28 | 2027-04-29 | 1264, 1265, 1266 |  | Sector 43 | 9713516 |
| 1268 | 37300.37500.38800.40800.45200.46600.205800 | **28th floor** | 12d | 2027-04-30 | 2027-05-11 |  | start no earlier than 2027-04-30 | Sector 43 | 9699846 |
| 1269 | 37300.37500.38800.40800.45200.46600.205800.1166900 | Reinforcement | 10d | 2027-04-30 | 2027-05-09 | 1267 |  | Sector 43 | 9713526 |
| 1270 | 37300.37500.38800.40800.45200.46600.205800.1167000 | Wall/slab conduiting | 6d | 2027-05-04 | 2027-05-09 | 1269FS-6d |  | Sector 43 | 9713536 |
| 1271 | 37300.37500.38800.40800.45200.46600.205800.1167100 | Shuttering | 6d | 2027-05-04 | 2027-05-09 | 1269FS-6d |  | Sector 43 | 9713546 |
| 1272 | 37300.37500.38800.40800.45200.46600.205800.1167200 | Concreting | 2d | 2027-05-10 | 2027-05-11 | 1269, 1270, 1271 |  | Sector 43 | 9713556 |

| ID | WBS | Task | Duration | Start | Finish | Predecessors | Constraint | Calendar | Unique_Task_ID |
| --- | --- | --- | --- | --- | --- | --- | --- | --- | --- |
| 1273 | 37300.37500.38800.40800.45200.46600.205900 | **29th floor** | 12d | 2027-05-12 | 2027-05-23 |  | start no earlier than 2027-05-12 | Sector 43 | 9699836 |
| 1274 | 37300.37500.38800.40800.45200.46600.205900.1167300 | Reinforcement | 10d | 2027-05-12 | 2027-05-21 | 1272 |  | Sector 43 | 9713566 |
| 1275 | 37300.37500.38800.40800.45200.46600.205900.1167400 | Wall/slab conduiting | 6d | 2027-05-16 | 2027-05-21 | 1274FS-6d |  | Sector 43 | 9713576 |
| 1276 | 37300.37500.38800.40800.45200.46600.205900.1167500 | Shuttering | 6d | 2027-05-16 | 2027-05-21 | 1274FS-6d |  | Sector 43 | 9713586 |
| 1277 | 37300.37500.38800.40800.45200.46600.205900.1167600 | Concreting | 2d | 2027-05-22 | 2027-05-23 | 1274, 1275, 1276 |  | Sector 43 | 9713596 |
| 1278 | 37300.37500.38800.40800.45200.46600.206000 | **30th floor** | 12d | 2027-05-24 | 2027-06-04 |  | start no earlier than 2027-05-24 | Sector 43 | 9699826 |
| 1279 | 37300.37500.38800.40800.45200.46600.206000.1167700 | Reinforcement | 10d | 2027-05-24 | 2027-06-02 | 1277 |  | Sector 43 | 9713606 |
| 1280 | 37300.37500.38800.40800.45200.46600.206000.1167800 | Wall/slab conduiting | 6d | 2027-05-28 | 2027-06-02 | 1279FS-6d |  | Sector 43 | 9713616 |
| 1281 | 37300.37500.38800.40800.45200.46600.206000.1167900 | Shuttering | 6d | 2027-05-28 | 2027-06-02 | 1279FS-6d |  | Sector 43 | 9713626 |
| 1282 | 37300.37500.38800.40800.45200.46600.206000.1168000 | Concreting | 2d | 2027-06-03 | 2027-06-04 | 1279, 1280, 1281 |  | Sector 43 | 9713636 |
| 1283 | 37300.37500.38800.40800.45200.46600.206100 | **31st floor** | 14d | 2027-06-05 | 2027-06-18 |  | start no earlier than 2027-06-05 | Sector 43 | 9699806 |
| 1284 | 37300.37500.38800.40800.45200.46600.206100.1168100 | Reinforcement | 12d | 2027-06-05 | 2027-06-16 | 1282 |  | Sector 43 | 9713646 |
| 1285 | 37300.37500.38800.40800.45200.46600.206100.1168200 | Wall/slab conduiting | 6d | 2027-06-11 | 2027-06-16 | 1284FS-6d |  | Sector 43 | 9713656 |
| 1286 | 37300.37500.38800.40800.45200.46600.206100.1168300 | Shuttering | 6d | 2027-06-11 | 2027-06-16 | 1285FS-6d |  | Sector 43 | 9713666 |
| 1287 | 37300.37500.38800.40800.45200.46600.206100.1168400 | Concreting | 2d | 2027-06-17 | 2027-06-18 | 1284, 1285, 1286 |  | Sector 43 | 9713676 |
| 1288 | 37300.37500.38800.40800.45200.46600.206200 | **Terrace floor** | 25d | 2027-06-19 | 2027-07-13 |  | start no earlier than 2027-06-19 | Sector 43 | 9699796 |
| 1289 | 37300.37500.38800.40800.45200.46600.206200.1168500 | Reinforcement | 23d | 2027-06-19 | 2027-07-11 | 1287 |  | Sector 43 | 9713686 |
| 1290 | 37300.37500.38800.40800.45200.46600.206200.1168600 | Wall/slab conduiting | 20d | 2027-06-21 | 2027-07-10 | 1289FS-21d |  | Sector 43 | 9713696 |
| 1291 | 37300.37500.38800.40800.45200.46600.206200.1168700 | Shuttering | 20d | 2027-06-21 | 2027-07-10 | 1289FS-21d |  | Sector 43 | 9713706 |
| 1292 | 37300.37500.38800.40800.45200.46600.206200.1168800 | Concreting | 2d | 2027-07-12 | 2027-07-13 | 1289, 1290, 1291 |  | Sector 43 | 9713716 |
| 1293 | 37300.37500.38800.40800.45200.46600.206300 | **LMR, OHT & Mumty** | 45d | 2027-07-14 | 2027-08-27 |  | start no earlier than 2027-07-14 | Sector 43 | 9699786 |
| 1294 | 37300.37500.38800.40800.45200.46600.206300.1168900 | Reinforcement | 41d | 2027-07-14 | 2027-08-23 | 1292 |  | Sector 43 | 9713726 |
| 1295 | 37300.37500.38800.40800.45200.46600.206300.1169000 | Wall conduiting | 20d | 2027-07-25 | 2027-08-13 | 1294FS-30d |  | Sector 43 | 9713736 |
| 1296 | 37300.37500.38800.40800.45200.46600.206300.1169100 | Shuttering | 20d | 2027-07-25 | 2027-08-13 | 1294FS-30d |  | Sector 43 | 9713746 |
| 1297 | 37300.37500.38800.40800.45200.46600.206300.1169200 | Concreting | 4d | 2027-08-24 | 2027-08-27 | 1294, 1295, 1296 |  | Sector 43 | 9713756 |

| ID | WBS | Task | Duration | Start | Finish | Predecessors | Constraint | Calendar | Unique_Task_ID |
| --- | --- | --- | --- | --- | --- | --- | --- | --- | --- |
| 1298 | 37300.37500.38800.40800.45200.49200 | **Post pour works** | 399d | 2026-05-19 | 2027-08-05 |  | start no earlier than 2026-05-19 | Sector 43 | 9697556 |
| 1299 | 37300.37500.38800.40800.45200.49200.878300 | 1st floor | 7d | 2026-05-19 | 2026-05-25 | 1152 |  | Sector 43 | 9703176 |
| 1300 | 37300.37500.38800.40800.45200.49200.878400 | 2nd floor | 7d | 2026-06-01 | 2026-06-07 | 1299, 1157 |  | Sector 43 | 9703186 |
| 1301 | 37300.37500.38800.40800.45200.49200.878500 | 3rd floor | 7d | 2026-06-14 | 2026-06-20 | 1300, 1162 |  | Sector 43 | 9703196 |
| 1302 | 37300.37500.38800.40800.45200.49200.878600 | 4th floor | 7d | 2026-06-27 | 2026-07-03 | 1301, 1167 |  | Sector 43 | 9703206 |
| 1303 | 37300.37500.38800.40800.45200.49200.878700 | 5th floor | 7d | 2026-07-10 | 2026-07-16 | 1302, 1172 |  | Sector 43 | 9703216 |
| 1304 | 37300.37500.38800.40800.45200.49200.878800 | 6th floor | 7d | 2026-07-23 | 2026-07-29 | 1303, 1177 |  | Sector 43 | 9703226 |
| 1305 | 37300.37500.38800.40800.45200.49200.878900 | 7th floor | 7d | 2026-08-05 | 2026-08-11 | 1304, 1182 |  | Sector 43 | 9703236 |
| 1306 | 37300.37500.38800.40800.45200.49200.879000 | 8th floor | 7d | 2026-08-18 | 2026-08-24 | 1305, 1187 |  | Sector 43 | 9703246 |
| 1307 | 37300.37500.38800.40800.45200.49200.879100 | 9th floor | 7d | 2026-08-31 | 2026-09-06 | 1306, 1192 |  | Sector 43 | 9703256 |
| 1308 | 37300.37500.38800.40800.45200.49200.879200 | 10th floor | 7d | 2026-09-13 | 2026-09-19 | 1307, 1197 |  | Sector 43 | 9703266 |
| 1309 | 37300.37500.38800.40800.45200.49200.879300 | 11th floor | 7d | 2026-09-26 | 2026-10-02 | 1308, 1202 |  | Sector 43 | 9703276 |
| 1310 | 37300.37500.38800.40800.45200.49200.879400 | 12th floor | 7d | 2026-10-09 | 2026-10-15 | 1309, 1207 |  | Sector 43 | 9703286 |
| 1311 | 37300.37500.38800.40800.45200.49200.879500 | 13th floor | 7d | 2026-10-22 | 2026-10-28 | 1310, 1212 |  | Sector 43 | 9703296 |
| 1312 | 37300.37500.38800.40800.45200.49200.879600 | 14th floor | 7d | 2026-12-24 | 2026-12-30 | 1311, 1217 |  | Sector 43 | 9703306 |
| 1313 | 37300.37500.38800.40800.45200.49200.879700 | 15th floor | 7d | 2027-01-06 | 2027-01-12 | 1312, 1222 |  | Sector 43 | 9703316 |
| 1314 | 37300.37500.38800.40800.45200.49200.879800 | 16th floor | 7d | 2027-01-18 | 2027-01-24 | 1313, 1227 |  | Sector 43 | 9703326 |
| 1315 | 37300.37500.38800.40800.45200.49200.879900 | 17th floor - Refuge Floor | 7d | 2027-01-30 | 2027-02-05 | 1314, 1232 |  | Sector 43 | 9703336 |
| 1316 | 37300.37500.38800.40800.45200.49200.880000 | 18th floor | 7d | 2027-02-11 | 2027-02-17 | 1315, 1237 |  | Sector 43 | 9703346 |
| 1317 | 37300.37500.38800.40800.45200.49200.880100 | 19th floor | 7d | 2027-02-23 | 2027-03-01 | 1316, 1242 |  | Sector 43 | 9703356 |
| 1318 | 37300.37500.38800.40800.45200.49200.880200 | 20th floor | 7d | 2027-03-07 | 2027-03-13 | 1317, 1247 |  | Sector 43 | 9703366 |
| 1319 | 37300.37500.38800.40800.45200.49200.880300 | 21st floor | 7d | 2027-03-19 | 2027-03-25 | 1318, 1252 |  | Sector 43 | 9703376 |
| 1320 | 37300.37500.38800.40800.45200.49200.880400 | 22nd floor | 7d | 2027-04-06 | 2027-04-12 | 1319, 1257 |  | Sector 43 | 9703386 |
| 1321 | 37300.37500.38800.40800.45200.49200.880500 | 23rd floor | 7d | 2027-04-18 | 2027-04-24 | 1320, 1262 |  | Sector 43 | 9703396 |
| 1322 | 37300.37500.38800.40800.45200.49200.880600 | 24th floor | 7d | 2027-04-30 | 2027-05-06 | 1321, 1267 |  | Sector 43 | 9703406 |
| 1323 | 37300.37500.38800.40800.45200.49200.880700 | 25th floor - Refuge Floor | 7d | 2027-05-12 | 2027-05-18 | 1322, 1272 |  | Sector 43 | 9703416 |
| 1324 | 37300.37500.38800.40800.45200.49200.880800 | 26th floor | 7d | 2027-05-24 | 2027-05-30 | 1323, 1277 |  | Sector 43 | 9703426 |
| 1325 | 37300.37500.38800.40800.45200.49200.880900 | 27th floor | 7d | 2027-06-05 | 2027-06-11 | 1324, 1282 |  | Sector 43 | 9703436 |
| 1326 | 37300.37500.38800.40800.45200.49200.881000 | 28th floor | 7d | 2027-06-19 | 2027-06-25 | 1325, 1287 |  | Sector 43 | 9703446 |
| 1327 | 37300.37500.38800.40800.45200.49200.881100 | 29th floor | 7d | 2027-06-26 | 2027-07-02 | 1326 |  | Sector 43 | 9703456 |
| 1328 | 37300.37500.38800.40800.45200.49200.881200 | 30th floor | 7d | 2027-07-03 | 2027-07-09 | 1327 |  | Sector 43 | 9703466 |
| 1329 | 37300.37500.38800.40800.45200.49200.881300 | 31st floor | 7d | 2027-07-10 | 2027-07-16 | 1328 |  | Sector 43 | 9703476 |
| 1330 | 37300.37500.38800.40800.45200.49200.881400 | Terrace floor | 10d | 2027-07-17 | 2027-07-26 | 1329 |  | Sector 43 | 9703486 |
| 1331 | 37300.37500.38800.40800.45200.49200.881500 | LMR, OHT & Mumty | 10d | 2027-07-27 | 2027-08-05 | 1330 |  | Sector 43 | 9703496 |

| ID | WBS | Task | Duration | Start | Finish | Predecessors | Constraint | Calendar | Unique_Task_ID |
| --- | --- | --- | --- | --- | --- | --- | --- | --- | --- |
| 1332 | 37300.37500.38800.40800.43100 | **Finishing works** | 651d | 2026-06-11 | 2028-06-20 |  | start no earlier than 2026-06-11 | Sector 43 | 9697446 |
| 1333 | 37300.37500.38800.40800.43100.44000 | **Flat finishings** | 651d | 2026-06-11 | 2028-06-20 |  | start no earlier than 2026-06-11 | Sector 43 | 9697476 |
| 1334 | 37300.37500.38800.40800.43100.44000.57700 | **1st floor** | 173d | 2026-06-11 | 2027-01-14 |  | start no earlier than 2026-06-11 | Sector 43 | 9697936 |
| 1335 | 37300.37500.38800.40800.43100.44000.57700.1169300 | Block Work | 20d | 2026-06-11 | 2026-06-30 | 1301FS-10d |  | Sector 43 | 9713766 |
| 1336 | 37300.37500.38800.40800.43100.44000.57700.1169400 | Installation of temporary Main door | 4d | 2026-07-01 | 2026-07-04 | 1335 |  | Sector 43 | 9713776 |
| 1337 | 37300.37500.38800.40800.43100.44000.57700.1169500 | Fire sprinkler pipe fixing | 10d | 2026-07-01 | 2026-07-10 | 1335 |  | Sector 43 | 9713786 |
| 1338 | 37300.37500.38800.40800.43100.44000.57700.1169600 | Internal Plumbing Works | 10d | 2026-07-01 | 2026-07-10 | 1335 |  | Sector 43 | 9713796 |
| 1339 | 37300.37500.38800.40800.43100.44000.57700.1169700 | Waterproofing | 21d | 2026-07-01 | 2026-07-21 | 1338FS-10d |  | Sector 43 | 9713806 |
| 1340 | 37300.37500.38800.40800.43100.44000.57700.1169800 | Internal Plaster | 11d | 2026-07-01 | 2026-07-11 | 1338FS-10d |  | Sector 43 | 9713816 |
| 1341 | 37300.37500.38800.40800.43100.44000.57700.1169900 | IPS flooring work | 13d | 2026-07-01 | 2026-07-13 | 1335 |  | Sector 43 | 9713826 |
| 1342 | 37300.37500.38800.40800.43100.44000.57700.1170000 | Toilet dado work | 10d | 2026-07-20 | 2026-07-29 | 1339FS-2d, 1340 |  | Sector 43 | 9713836 |
| 1343 | 37300.37500.38800.40800.43100.44000.57700.1170100 | Toilet flooring work | 10d | 2026-07-30 | 2026-08-08 | 1342 |  | Sector 43 | 9713846 |
| 1344 | 37300.37500.38800.40800.43100.44000.57700.1170200 | Living dinning flooring | 10d | 2026-08-02 | 2026-08-11 | 1341, 1343FS-7d |  | Sector 43 | 9713856 |
| 1345 | 37300.37500.38800.40800.43100.44000.57700.1170300 | Electrical wiring work | 12d | 2026-08-02 | 2026-08-13 | 1344FS-10d |  | Sector 43 | 9713866 |
| 1346 | 37300.37500.38800.40800.43100.44000.57700.1170400 | Aluminium door-window fixing | 19d | 2026-12-27 | 2027-01-14 | 1345FS+90d |  | Sector 43 | 9713876 |
| 1347 | 37300.37500.38800.40800.43100.44000.57700.1170500 | Putty primer coat | 10d | 2026-08-06 | 2026-08-15 | 1345FS-8d |  | Sector 43 | 9713886 |
| 1348 | 37300.37500.38800.40800.43100.44000.57700.1170600 | Prehung door fixing | 8d | 2026-08-11 | 2026-08-18 | 1347FS-5d |  | Sector 43 | 9713896 |
| 1349 | 37300.37500.38800.40800.43100.44000.57700.1170700 | Painting 1st coat | 12d | 2026-08-19 | 2026-08-30 | 1348 |  | Sector 43 | 9713906 |
| 1350 | 37300.37500.38800.40800.43100.44000.57700.1170800 | False Cieling panel fixing | 10d | 2026-08-31 | 2026-09-09 | 1349 |  | Sector 43 | 9713916 |
| 1351 | 37300.37500.38800.40800.43100.44000.56600 | **2nd floor** | 130d | 2026-09-29 | 2027-03-22 |  | start no earlier than 2026-09-29 | Sector 43 | 9697946 |
| 1352 | 37300.37500.38800.40800.43100.44000.56600.1170900 | Block Work | 10d | 2026-09-29 | 2026-10-08 | 1335FS+90d |  | Sector 43 | 9713926 |
| 1353 | 37300.37500.38800.40800.43100.44000.56600.1171000 | Installation of temporary Main door | 4d | 2026-10-09 | 2026-10-12 | 1352 |  | Sector 43 | 9713936 |
| 1354 | 37300.37500.38800.40800.43100.44000.56600.1171100 | Fire sprinkler pipe fixing | 10d | 2026-10-09 | 2026-10-18 | 1337, 1352 |  | Sector 43 | 9713946 |
| 1355 | 37300.37500.38800.40800.43100.44000.56600.1171200 | Internal Plumbing Works | 10d | 2026-10-09 | 2026-10-18 | 1352 |  | Sector 43 | 9713956 |
| 1356 | 37300.37500.38800.40800.43100.44000.56600.1171300 | Waterproofing | 21d | 2026-10-09 | 2026-10-29 | 1355FS-10d |  | Sector 43 | 9713966 |
| 1357 | 37300.37500.38800.40800.43100.44000.56600.1171400 | Internal Plaster | 15d | 2026-10-09 | 2026-10-23 | 1355FS-10d |  | Sector 43 | 9713976 |
| 1358 | 37300.37500.38800.40800.43100.44000.56600.1171500 | IPS flooring work | 10d | 2026-10-09 | 2026-10-18 | 1352 |  | Sector 43 | 9713986 |
| 1359 | 37300.37500.38800.40800.43100.44000.56600.1171600 | Toilet dado work | 12d | 2026-10-28 | 2026-12-23 | 1356FS-2d, 1357FS-5d |  | Sector 43 | 9713996 |
| 1360 | 37300.37500.38800.40800.43100.44000.56600.1171700 | Toilet flooring work | 10d | 2026-12-19 | 2026-12-28 | 1359FS-5d |  | Sector 43 | 9714006 |
| 1361 | 37300.37500.38800.40800.43100.44000.56600.1171800 | Living dinning flooring | 10d | 2026-12-22 | 2026-12-31 | 1358, 1360FS-7d |  | Sector 43 | 9714016 |
| 1362 | 37300.37500.38800.40800.43100.44000.56600.1171900 | Electrical wiring work | 12d | 2026-12-22 | 2027-01-02 | 1361FS-10d |  | Sector 43 | 9714026 |
| 1363 | 37300.37500.38800.40800.43100.44000.56600.1172000 | Aluminium door-window fixing | 19d | 2027-03-04 | 2027-03-22 | 1362FS+60d |  | Sector 43 | 9714036 |
| 1364 | 37300.37500.38800.40800.43100.44000.56600.1172100 | Putty primer coat | 10d | 2026-12-26 | 2027-01-04 | 1362FS-8d |  | Sector 43 | 9714046 |
| 1365 | 37300.37500.38800.40800.43100.44000.56600.1172200 | Prehung door fixing | 8d | 2026-12-31 | 2027-01-07 | 1364FS-5d |  | Sector 43 | 9714056 |
| 1366 | 37300.37500.38800.40800.43100.44000.56600.1172300 | Painting 1st coat | 12d | 2027-01-08 | 2027-01-19 | 1365 |  | Sector 43 | 9714066 |
| 1367 | 37300.37500.38800.40800.43100.44000.56600.1172400 | False Cieling panel fixing | 10d | 2027-01-20 | 2027-01-29 | 1350, 1366 |  | Sector 43 | 9714076 |

| ID | WBS | Task | Duration | Start | Finish | Predecessors | Constraint | Calendar | Unique_Task_ID |
| --- | --- | --- | --- | --- | --- | --- | --- | --- | --- |
| 1368 | 37300.37500.38800.40800.43100.44000.54700 | **3rd floor** | 82d | 2027-02-21 | 2027-05-13 |  | start no earlier than 2027-02-21 | Sector 43 | 9697956 |
| 1369 | 37300.37500.38800.40800.43100.44000.54700.1172500 | Block Work | 10d | 2027-02-21 | 2027-03-02 | 1352FS+90d |  | Sector 43 | 9714086 |
| 1370 | 37300.37500.38800.40800.43100.44000.54700.1172600 | Installation of temporary Main door | 4d | 2027-03-03 | 2027-03-06 | 1369 |  | Sector 43 | 9714096 |
| 1371 | 37300.37500.38800.40800.43100.44000.54700.1172700 | Fire sprinkler pipe fixing | 10d | 2027-03-03 | 2027-03-12 | 1354, 1369 |  | Sector 43 | 9714106 |
| 1372 | 37300.37500.38800.40800.43100.44000.54700.1172800 | Internal Plumbing Works | 10d | 2027-03-03 | 2027-03-12 | 1369 |  | Sector 43 | 9714116 |
| 1373 | 37300.37500.38800.40800.43100.44000.54700.1172900 | Waterproofing | 21d | 2027-03-13 | 2027-04-02 | 1372 |  | Sector 43 | 9714126 |
| 1374 | 37300.37500.38800.40800.43100.44000.54700.1173000 | Internal Plaster | 11d | 2027-03-05 | 2027-03-15 | 1372FS-8d |  | Sector 43 | 9714136 |
| 1375 | 37300.37500.38800.40800.43100.44000.54700.1173100 | IPS flooring work | 13d | 2027-03-03 | 2027-03-15 | 1369 |  | Sector 43 | 9714146 |
| 1376 | 37300.37500.38800.40800.43100.44000.54700.1173200 | Toilet dado work | 10d | 2027-04-01 | 2027-04-10 | 1373FS-2d, 1374 |  | Sector 43 | 9714156 |
| 1377 | 37300.37500.38800.40800.43100.44000.54700.1173300 | Toilet flooring work | 12d | 2027-04-11 | 2027-04-22 | 1376 |  | Sector 43 | 9714166 |
| 1378 | 37300.37500.38800.40800.43100.44000.54700.1173400 | Living dinning flooring | 12d | 2027-04-03 | 2027-04-14 | 1375, 1377FS-20d |  | Sector 43 | 9714176 |
| 1379 | 37300.37500.38800.40800.43100.44000.54700.1173500 | Electrical wiring work | 12d | 2027-04-05 | 2027-04-16 | 1378FS-10d |  | Sector 43 | 9714186 |
| 1380 | 37300.37500.38800.40800.43100.44000.54700.1173600 | Aluminium door-window fixing | 19d | 2027-03-18 | 2027-04-05 | 1379FS-30d |  | Sector 43 | 9714196 |
| 1381 | 37300.37500.38800.40800.43100.44000.54700.1173700 | Putty primer coat | 10d | 2027-04-09 | 2027-04-18 | 1379FS-8d |  | Sector 43 | 9714206 |
| 1382 | 37300.37500.38800.40800.43100.44000.54700.1173800 | Prehung door fixing | 8d | 2027-04-14 | 2027-04-21 | 1381FS-5d |  | Sector 43 | 9714216 |
| 1383 | 37300.37500.38800.40800.43100.44000.54700.1173900 | Painting 1st coat | 12d | 2027-04-22 | 2027-05-03 | 1382 |  | Sector 43 | 9714226 |
| 1384 | 37300.37500.38800.40800.43100.44000.54700.1174000 | False Cieling panel fixing | 10d | 2027-05-04 | 2027-05-13 | 1367, 1383 |  | Sector 43 | 9714236 |
| 1385 | 37300.37500.38800.40800.43100.44000.63200 | **4th floor** | 164d | 2026-07-21 | 2027-02-14 |  | start no earlier than 2026-07-21 | Sector 43 | 9697966 |
| 1386 | 37300.37500.38800.40800.43100.44000.63200.1174100 | Block Work | 10d | 2026-07-21 | 2026-07-30 | 1369 |  | Sector 43 | 9714246 |
| 1387 | 37300.37500.38800.40800.43100.44000.63200.1174200 | Installation of temporary Main door | 4d | 2026-07-31 | 2026-08-03 | 1386 |  | Sector 43 | 9714256 |
| 1388 | 37300.37500.38800.40800.43100.44000.63200.1174300 | Fire sprinkler pipe fixing | 10d | 2026-07-31 | 2026-08-09 | 1371, 1386 |  | Sector 43 | 9714266 |
| 1389 | 37300.37500.38800.40800.43100.44000.63200.1174400 | Internal Plumbing Works | 10d | 2026-07-31 | 2026-08-09 | 1386 |  | Sector 43 | 9714276 |
| 1390 | 37300.37500.38800.40800.43100.44000.63200.1174500 | Waterproofing | 21d | 2026-08-10 | 2026-08-30 | 1389 |  | Sector 43 | 9714286 |
| 1391 | 37300.37500.38800.40800.43100.44000.63200.1174600 | Internal Plaster | 10d | 2026-08-03 | 2026-08-12 | 1389FS-7d |  | Sector 43 | 9714296 |
| 1392 | 37300.37500.38800.40800.43100.44000.63200.1174700 | IPS flooring work | 13d | 2026-07-31 | 2026-08-12 | 1386 |  | Sector 43 | 9714306 |
| 1393 | 37300.37500.38800.40800.43100.44000.63200.1174800 | Toilet dado work | 10d | 2026-08-29 | 2026-09-07 | 1390FS-2d, 1391 |  | Sector 43 | 9714316 |
| 1394 | 37300.37500.38800.40800.43100.44000.63200.1174900 | Toilet flooring work | 12d | 2026-09-08 | 2026-09-19 | 1393 |  | Sector 43 | 9714326 |
| 1395 | 37300.37500.38800.40800.43100.44000.63200.1175000 | Living dinning flooring | 12d | 2026-08-31 | 2026-09-11 | 1392, 1394FS-20d |  | Sector 43 | 9714336 |
| 1396 | 37300.37500.38800.40800.43100.44000.63200.1175100 | Electrical wiring work | 12d | 2026-09-02 | 2026-09-13 | 1395FS-10d |  | Sector 43 | 9714346 |
| 1397 | 37300.37500.38800.40800.43100.44000.63200.1175200 | Aluminium door-window fixing | 19d | 2027-01-27 | 2027-02-14 | 1396FS+90d |  | Sector 43 | 9714356 |
| 1398 | 37300.37500.38800.40800.43100.44000.63200.1175300 | Putty primer coat | 10d | 2026-09-11 | 2026-09-20 | 1396FS-3d |  | Sector 43 | 9714366 |
| 1399 | 37300.37500.38800.40800.43100.44000.63200.1175400 | Prehung door fixing | 8d | 2026-09-16 | 2026-09-23 | 1398FS-5d |  | Sector 43 | 9714376 |
| 1400 | 37300.37500.38800.40800.43100.44000.63200.1175500 | Painting 1st coat | 12d | 2026-09-24 | 2026-10-05 | 1399 |  | Sector 43 | 9714386 |
| 1401 | 37300.37500.38800.40800.43100.44000.63200.1175600 | False Cieling panel fixing | 10d | 2026-10-06 | 2026-10-15 | 1384, 1400 |  | Sector 43 | 9714396 |

| ID | WBS | Task | Duration | Start | Finish | Predecessors | Constraint | Calendar | Unique_Task_ID |
| --- | --- | --- | --- | --- | --- | --- | --- | --- | --- |
| 1402 | 37300.37500.38800.40800.43100.44000.63100 | **5th floor** | 69d | 2026-09-14 | 2027-01-05 |  | start no earlier than 2026-09-14 | Sector 43 | 9697976 |
| 1403 | 37300.37500.38800.40800.43100.44000.63100.1175700 | Block Work | 10d | 2026-09-14 | 2026-09-23 | 1386FS+45d |  | Sector 43 | 9714406 |
| 1404 | 37300.37500.38800.40800.43100.44000.63100.1175800 | Installation of temporary Main door | 4d | 2026-09-24 | 2026-09-27 | 1403 |  | Sector 43 | 9714416 |
| 1405 | 37300.37500.38800.40800.43100.44000.63100.1175900 | Fire sprinkler pipe fixing | 10d | 2026-09-24 | 2026-10-03 | 1388, 1403 |  | Sector 43 | 9714426 |
| 1406 | 37300.37500.38800.40800.43100.44000.63100.1176000 | Internal Plumbing Works | 15d | 2026-09-24 | 2026-10-08 | 1403 |  | Sector 43 | 9714436 |
| 1407 | 37300.37500.38800.40800.43100.44000.63100.1176100 | Waterproofing | 21d | 2026-10-09 | 2026-10-29 | 1406 |  | Sector 43 | 9714446 |
| 1408 | 37300.37500.38800.40800.43100.44000.63100.1176200 | Internal Plaster | 15d | 2026-10-09 | 2026-10-23 | 1406 |  | Sector 43 | 9714456 |
| 1409 | 37300.37500.38800.40800.43100.44000.63100.1176300 | IPS flooring work | 13d | 2026-09-24 | 2026-10-06 | 1403 |  | Sector 43 | 9714466 |
| 1410 | 37300.37500.38800.40800.43100.44000.63100.1176400 | Toilet dado work | 10d | 2026-10-28 | 2026-12-21 | 1407FS-2d, 1408 |  | Sector 43 | 9714476 |
| 1411 | 37300.37500.38800.40800.43100.44000.63100.1176500 | Toilet flooring work | 12d | 2026-10-28 | 2026-12-23 | 1410FS-10d |  | Sector 43 | 9714486 |
| 1412 | 37300.37500.38800.40800.43100.44000.63100.1176600 | Living dinning flooring | 12d | 2026-10-14 | 2026-10-25 | 1403FS+20d |  | Sector 43 | 9714496 |
| 1413 | 37300.37500.38800.40800.43100.44000.63100.1176700 | Electrical wiring work | 12d | 2026-10-16 | 2026-10-27 | 1412FS-10d |  | Sector 43 | 9714506 |
| 1414 | 37300.37500.38800.40800.43100.44000.63100.1176800 | Aluminium door-window fixing | 19d | 2026-10-28 | 2026-12-30 | 1413 |  | Sector 43 | 9714516 |
| 1415 | 37300.37500.38800.40800.43100.44000.63100.1176900 | Putty primer coat | 10d | 2026-10-18 | 2026-10-27 | 1412FS-8d |  | Sector 43 | 9714526 |
| 1416 | 37300.37500.38800.40800.43100.44000.63100.1177000 | Prehung door fixing | 8d | 2026-10-23 | 2026-10-30 | 1415FS-5d |  | Sector 43 | 9714536 |
| 1417 | 37300.37500.38800.40800.43100.44000.63100.1177100 | Painting 1st coat | 12d | 2026-10-31 | 2026-12-26 | 1416 |  | Sector 43 | 9714546 |
| 1418 | 37300.37500.38800.40800.43100.44000.63100.1177200 | False Cieling panel fixing | 10d | 2026-12-27 | 2027-01-05 | 1401, 1417 |  | Sector 43 | 9714556 |
| 1419 | 37300.37500.38800.40800.43100.44000.62800 | **6th floor** | 141d | 2026-10-24 | 2027-04-27 |  | start no earlier than 2026-10-24 | Sector 43 | 9697986 |
| 1420 | 37300.37500.38800.40800.43100.44000.62800.1177300 | Block Work | 10d | 2026-10-24 | 2026-12-17 | 1403FS+30d |  | Sector 43 | 9714566 |
| 1421 | 37300.37500.38800.40800.43100.44000.62800.1177400 | Installation of temporary Main door | 4d | 2026-12-18 | 2026-12-21 | 1420 |  | Sector 43 | 9714576 |
| 1422 | 37300.37500.38800.40800.43100.44000.62800.1177500 | Fire sprinkler pipe fixing | 10d | 2026-12-18 | 2026-12-27 | 1405, 1420 |  | Sector 43 | 9714586 |
| 1423 | 37300.37500.38800.40800.43100.44000.62800.1177600 | Internal Plumbing Works | 15d | 2026-12-18 | 2027-01-01 | 1420 |  | Sector 43 | 9714596 |
| 1424 | 37300.37500.38800.40800.43100.44000.62800.1177700 | Waterproofing | 21d | 2027-01-02 | 2027-01-22 | 1423 |  | Sector 43 | 9714606 |
| 1425 | 37300.37500.38800.40800.43100.44000.62800.1177800 | Internal Plaster | 15d | 2026-12-18 | 2027-01-01 | 1423FS-15d |  | Sector 43 | 9714616 |
| 1426 | 37300.37500.38800.40800.43100.44000.62800.1177900 | IPS flooring work | 13d | 2026-12-18 | 2026-12-30 | 1420 |  | Sector 43 | 9714626 |
| 1427 | 37300.37500.38800.40800.43100.44000.62800.1178000 | Toilet dado work | 10d | 2027-01-21 | 2027-01-30 | 1424FS-2d, 1425 |  | Sector 43 | 9714636 |
| 1428 | 37300.37500.38800.40800.43100.44000.62800.1178100 | Toilet flooring work | 10d | 2027-01-31 | 2027-02-09 | 1427 |  | Sector 43 | 9714646 |
| 1429 | 37300.37500.38800.40800.43100.44000.62800.1178200 | Living dinning flooring | 10d | 2026-12-28 | 2027-01-06 | 1420FS+10d |  | Sector 43 | 9714656 |
| 1430 | 37300.37500.38800.40800.43100.44000.62800.1178300 | Electrical wiring work | 12d | 2026-12-28 | 2027-01-08 | 1429FS-10d |  | Sector 43 | 9714666 |
| 1431 | 37300.37500.38800.40800.43100.44000.62800.1178400 | Aluminium door-window fixing | 19d | 2027-04-09 | 2027-04-27 | 1430FS+90d |  | Sector 43 | 9714676 |
| 1432 | 37300.37500.38800.40800.43100.44000.62800.1178500 | Putty primer coat | 10d | 2027-01-01 | 2027-01-10 | 1430FS-8d |  | Sector 43 | 9714686 |
| 1433 | 37300.37500.38800.40800.43100.44000.62800.1178600 | Prehung door fixing | 8d | 2027-01-06 | 2027-01-13 | 1432FS-5d |  | Sector 43 | 9714696 |
| 1434 | 37300.37500.38800.40800.43100.44000.62800.1178700 | Painting 1st coat | 12d | 2027-01-14 | 2027-01-25 | 1433 |  | Sector 43 | 9714706 |
| 1435 | 37300.37500.38800.40800.43100.44000.62800.1178800 | False Cieling panel fixing | 10d | 2027-01-26 | 2027-02-04 | 1418, 1434 |  | Sector 43 | 9714716 |

| ID | WBS | Task | Duration | Start | Finish | Predecessors | Constraint | Calendar | Unique_Task_ID |
| --- | --- | --- | --- | --- | --- | --- | --- | --- | --- |
| 1436 | 37300.37500.38800.40800.43100.44000.56400 | **7th floor** | 171d | 2027-03-18 | 2027-09-04 |  | start no earlier than 2027-03-18 | Sector 43 | 9697996 |
| 1437 | 37300.37500.38800.40800.43100.44000.56400.1178900 | Block Work | 10d | 2027-03-18 | 2027-03-27 | 1420FS+90d |  | Sector 43 | 9714726 |
| 1438 | 37300.37500.38800.40800.43100.44000.56400.1179000 | Installation of temporary Main door | 4d | 2027-03-28 | 2027-03-31 | 1437 |  | Sector 43 | 9714736 |
| 1439 | 37300.37500.38800.40800.43100.44000.56400.1179100 | Fire sprinkler pipe fixing | 10d | 2027-03-28 | 2027-04-06 | 1422, 1437 |  | Sector 43 | 9714746 |
| 1440 | 37300.37500.38800.40800.43100.44000.56400.1179200 | Internal Plumbing Works | 15d | 2027-03-28 | 2027-04-11 | 1437 |  | Sector 43 | 9714756 |
| 1441 | 37300.37500.38800.40800.43100.44000.56400.1179300 | Waterproofing | 21d | 2027-04-12 | 2027-05-02 | 1440 |  | Sector 43 | 9714766 |
| 1442 | 37300.37500.38800.40800.43100.44000.56400.1179400 | Internal Plaster | 15d | 2027-03-29 | 2027-04-12 | 1440FS-14d |  | Sector 43 | 9714776 |
| 1443 | 37300.37500.38800.40800.43100.44000.56400.1179500 | IPS flooring work | 13d | 2027-03-28 | 2027-04-09 | 1437 |  | Sector 43 | 9714786 |
| 1444 | 37300.37500.38800.40800.43100.44000.56400.1179600 | Toilet dado work | 10d | 2027-05-01 | 2027-05-10 | 1441FS-2d, 1442 |  | Sector 43 | 9714796 |
| 1445 | 37300.37500.38800.40800.43100.44000.56400.1179700 | Toilet flooring work | 10d | 2027-05-11 | 2027-05-20 | 1444 |  | Sector 43 | 9714806 |
| 1446 | 37300.37500.38800.40800.43100.44000.56400.1179800 | Living dinning flooring | 10d | 2027-04-07 | 2027-04-16 | 1437FS+10d |  | Sector 43 | 9714816 |
| 1447 | 37300.37500.38800.40800.43100.44000.56400.1179900 | Electrical wiring work | 12d | 2027-04-07 | 2027-04-18 | 1446FS-10d |  | Sector 43 | 9714826 |
| 1448 | 37300.37500.38800.40800.43100.44000.56400.1180000 | Aluminium door-window fixing | 19d | 2027-08-17 | 2027-09-04 | 1447FS+120d |  | Sector 43 | 9714836 |
| 1449 | 37300.37500.38800.40800.43100.44000.56400.1180100 | Putty primer coat | 10d | 2027-04-11 | 2027-04-20 | 1447FS-8d |  | Sector 43 | 9714846 |
| 1450 | 37300.37500.38800.40800.43100.44000.56400.1180200 | Prehung door fixing | 8d | 2027-04-16 | 2027-04-23 | 1449FS-5d |  | Sector 43 | 9714856 |
| 1451 | 37300.37500.38800.40800.43100.44000.56400.1180300 | Painting 1st coat | 12d | 2027-04-24 | 2027-05-05 | 1450 |  | Sector 43 | 9714866 |
| 1452 | 37300.37500.38800.40800.43100.44000.56400.1180400 | False Cieling panel fixing | 10d | 2027-05-06 | 2027-05-15 | 1435, 1451 |  | Sector 43 | 9714876 |
| 1453 | 37300.37500.38800.40800.43100.44000.56800 | **8th floor** | 166d | 2027-06-21 | 2028-01-17 |  | start no earlier than 2027-06-21 | Sector 43 | 9698006 |
| 1454 | 37300.37500.38800.40800.43100.44000.56800.1180500 | Block Work | 10d | 2027-06-26 | 2027-07-05 | 1437FS+90d |  | Sector 43 | 9714886 |
| 1455 | 37300.37500.38800.40800.43100.44000.56800.1180600 | Installation of temporary Main door | 4d | 2027-07-06 | 2027-07-09 | 1454 |  | Sector 43 | 9714896 |
| 1456 | 37300.37500.38800.40800.43100.44000.56800.1180700 | Fire sprinkler pipe fixing | 10d | 2027-07-06 | 2027-07-15 | 1439, 1454 |  | Sector 43 | 9714906 |
| 1457 | 37300.37500.38800.40800.43100.44000.56800.1180800 | Internal Plumbing Works | 15d | 2027-07-06 | 2027-07-20 | 1454 |  | Sector 43 | 9714916 |
| 1458 | 37300.37500.38800.40800.43100.44000.56800.1180900 | Waterproofing | 21d | 2027-07-21 | 2027-08-10 | 1457 |  | Sector 43 | 9714926 |
| 1459 | 37300.37500.38800.40800.43100.44000.56800.1181000 | Internal Plaster | 15d | 2027-06-21 | 2027-07-05 | 1457FS-30d |  | Sector 43 | 9714936 |
| 1460 | 37300.37500.38800.40800.43100.44000.56800.1181100 | IPS flooring work | 13d | 2027-07-06 | 2027-07-18 | 1454 |  | Sector 43 | 9714946 |
| 1461 | 37300.37500.38800.40800.43100.44000.56800.1181200 | Toilet dado work | 10d | 2027-08-09 | 2027-08-18 | 1458FS-2d, 1459 |  | Sector 43 | 9714956 |
| 1462 | 37300.37500.38800.40800.43100.44000.56800.1181300 | Toilet flooring work | 10d | 2027-08-19 | 2027-08-28 | 1461 |  | Sector 43 | 9714966 |
| 1463 | 37300.37500.38800.40800.43100.44000.56800.1181400 | Living dinning flooring | 10d | 2027-07-06 | 2027-07-15 | 1455FS-4d |  | Sector 43 | 9714976 |
| 1464 | 37300.37500.38800.40800.43100.44000.56800.1181500 | Electrical wiring work | 12d | 2027-07-06 | 2027-07-17 | 1463FS-10d |  | Sector 43 | 9714986 |
| 1465 | 37300.37500.38800.40800.43100.44000.56800.1181600 | Aluminium door-window fixing | 19d | 2027-12-30 | 2028-01-17 | 1464FS+120d |  | Sector 43 | 9714996 |
| 1466 | 37300.37500.38800.40800.43100.44000.56800.1181700 | Putty primer coat | 10d | 2027-07-10 | 2027-07-19 | 1464FS-8d |  | Sector 43 | 9715006 |
| 1467 | 37300.37500.38800.40800.43100.44000.56800.1181800 | Prehung door fixing | 8d | 2027-07-15 | 2027-07-22 | 1466FS-5d |  | Sector 43 | 9715016 |
| 1468 | 37300.37500.38800.40800.43100.44000.56800.1181900 | Painting 1st coat | 12d | 2027-07-23 | 2027-08-03 | 1467 |  | Sector 43 | 9715026 |
| 1469 | 37300.37500.38800.40800.43100.44000.56800.1182000 | False Cieling panel fixing | 10d | 2027-08-04 | 2027-08-13 | 1452, 1468 |  | Sector 43 | 9715036 |

| ID | WBS | Task | Duration | Start | Finish | Predecessors | Constraint | Calendar | Unique_Task_ID |
| --- | --- | --- | --- | --- | --- | --- | --- | --- | --- |
| 1470 | 37300.37500.38800.40800.43100.44000.57600 | **9th floor** | 171d | 2027-06-26 | 2028-01-27 |  | start no earlier than 2027-06-26 | Sector 43 | 9698016 |
| 1471 | 37300.37500.38800.40800.43100.44000.57600.1182100 | Block Work | 10d | 2027-07-06 | 2027-07-15 | 1454 |  | Sector 43 | 9715046 |
| 1472 | 37300.37500.38800.40800.43100.44000.57600.1182200 | Installation of temporary Main door | 4d | 2027-07-16 | 2027-07-19 | 1471 |  | Sector 43 | 9715056 |
| 1473 | 37300.37500.38800.40800.43100.44000.57600.1182300 | Fire sprinkler pipe fixing | 10d | 2027-07-16 | 2027-07-25 | 1456, 1471 |  | Sector 43 | 9715066 |
| 1474 | 37300.37500.38800.40800.43100.44000.57600.1182400 | Internal Plumbing Works | 15d | 2027-07-11 | 2027-07-25 | 1471FS-5d |  | Sector 43 | 9715076 |
| 1475 | 37300.37500.38800.40800.43100.44000.57600.1182500 | Waterproofing | 21d | 2027-07-26 | 2027-08-15 | 1474 |  | Sector 43 | 9715086 |
| 1476 | 37300.37500.38800.40800.43100.44000.57600.1182600 | Internal Plaster | 15d | 2027-06-26 | 2027-07-10 | 1474FS-30d |  | Sector 43 | 9715096 |
| 1477 | 37300.37500.38800.40800.43100.44000.57600.1182700 | IPS flooring work | 13d | 2027-07-16 | 2027-07-28 | 1471 |  | Sector 43 | 9715106 |
| 1478 | 37300.37500.38800.40800.43100.44000.57600.1182800 | Toilet dado work | 10d | 2027-08-14 | 2027-08-23 | 1475FS-2d, 1476 |  | Sector 43 | 9715116 |
| 1479 | 37300.37500.38800.40800.43100.44000.57600.1182900 | Toilet flooring work | 10d | 2027-08-24 | 2027-09-02 | 1478 |  | Sector 43 | 9715126 |
| 1480 | 37300.37500.38800.40800.43100.44000.57600.1183000 | Living dinning flooring | 10d | 2027-07-06 | 2027-07-15 | 1471FS-10d |  | Sector 43 | 9715136 |
| 1481 | 37300.37500.38800.40800.43100.44000.57600.1183100 | Electrical wiring work | 12d | 2027-07-06 | 2027-07-17 | 1480FS-10d |  | Sector 43 | 9715146 |
| 1482 | 37300.37500.38800.40800.43100.44000.57600.1183200 | Aluminium door-window fixing | 19d | 2028-01-09 | 2028-01-27 | 1481FS+130d |  | Sector 43 | 9715156 |
| 1483 | 37300.37500.38800.40800.43100.44000.57600.1183300 | Putty primer coat | 10d | 2027-07-10 | 2027-07-19 | 1481FS-8d |  | Sector 43 | 9715166 |
| 1484 | 37300.37500.38800.40800.43100.44000.57600.1183400 | Prehung door fixing | 8d | 2027-07-15 | 2027-07-22 | 1483FS-5d |  | Sector 43 | 9715176 |
| 1485 | 37300.37500.38800.40800.43100.44000.57600.1183500 | Painting 1st coat | 12d | 2027-07-23 | 2027-08-03 | 1484 |  | Sector 43 | 9715186 |
| 1486 | 37300.37500.38800.40800.43100.44000.57600.1183600 | False Cieling panel fixing | 10d | 2027-08-14 | 2027-08-23 | 1469, 1485 |  | Sector 43 | 9715196 |
| 1487 | 37300.37500.38800.40800.43100.44000.58600 | **10th floor** | 221d | 2027-09-29 | 2028-06-20 |  | start no earlier than 2027-09-29 | Sector 43 | 9698026 |
| 1488 | 37300.37500.38800.40800.43100.44000.58600.1183700 | Block Work | 10d | 2027-10-04 | 2027-10-13 | 1454FS+90d |  | Sector 43 | 9715206 |
| 1489 | 37300.37500.38800.40800.43100.44000.58600.1183800 | Installation of temporary Main door | 4d | 2027-10-14 | 2027-10-17 | 1488 |  | Sector 43 | 9715216 |
| 1490 | 37300.37500.38800.40800.43100.44000.58600.1183900 | Fire sprinkler pipe fixing | 10d | 2027-10-14 | 2027-10-23 | 1473, 1488 |  | Sector 43 | 9715226 |
| 1491 | 37300.37500.38800.40800.43100.44000.58600.1184000 | Internal Plumbing Works | 15d | 2027-10-14 | 2027-10-28 | 1488 |  | Sector 43 | 9715236 |
| 1492 | 37300.37500.38800.40800.43100.44000.58600.1184100 | Waterproofing | 21d | 2027-10-29 | 2028-01-02 | 1491 |  | Sector 43 | 9715246 |
| 1493 | 37300.37500.38800.40800.43100.44000.58600.1184200 | Internal Plaster | 15d | 2027-09-29 | 2027-10-13 | 1491FS-30d |  | Sector 43 | 9715256 |
| 1494 | 37300.37500.38800.40800.43100.44000.58600.1184300 | IPS flooring work | 13d | 2027-10-14 | 2027-10-26 | 1488 |  | Sector 43 | 9715266 |
| 1495 | 37300.37500.38800.40800.43100.44000.58600.1184400 | Toilet dado work | 25d | 2028-01-01 | 2028-01-25 | 1492FS-2d, 1493 |  | Sector 43 | 9715276 |
| 1496 | 37300.37500.38800.40800.43100.44000.58600.1184500 | Toilet flooring work | 25d | 2028-01-26 | 2028-02-19 | 1495 |  | Sector 43 | 9715286 |
| 1497 | 37300.37500.38800.40800.43100.44000.58600.1184600 | Living dinning flooring | 31d | 2028-01-31 | 2028-03-01 | 1494, 1496FS-20d |  | Sector 43 | 9715296 |
| 1498 | 37300.37500.38800.40800.43100.44000.58600.1184700 | Electrical wiring work | 12d | 2028-02-21 | 2028-03-03 | 1497FS-10d |  | Sector 43 | 9715306 |
| 1499 | 37300.37500.38800.40800.43100.44000.58600.1184800 | Aluminium door-window fixing | 19d | 2028-06-02 | 2028-06-20 | 1498FS+90d |  | Sector 43 | 9715316 |
| 1500 | 37300.37500.38800.40800.43100.44000.58600.1184900 | Putty primer coat | 10d | 2028-02-25 | 2028-03-05 | 1498FS-8d |  | Sector 43 | 9715326 |
| 1501 | 37300.37500.38800.40800.43100.44000.58600.1185000 | Prehung door fixing | 8d | 2028-03-01 | 2028-03-08 | 1500FS-5d |  | Sector 43 | 9715336 |
| 1502 | 37300.37500.38800.40800.43100.44000.58600.1185100 | Painting 1st coat | 12d | 2028-03-09 | 2028-03-20 | 1501 |  | Sector 43 | 9715346 |
| 1503 | 37300.37500.38800.40800.43100.44000.58600.1185200 | False Cieling panel fixing | 10d | 2028-03-21 | 2028-03-30 | 1486, 1502 |  | Sector 43 | 9715356 |

| ID | WBS | Task | Duration | Start | Finish | Predecessors | Constraint | Calendar | Unique_Task_ID |
| --- | --- | --- | --- | --- | --- | --- | --- | --- | --- |
| 1504 | 37300.37500.38800.40800.43100.44000.60600 | **11th floor** | 221d | 2027-09-29 | 2028-06-20 |  | start no earlier than 2027-09-29 | Sector 43 | 9698036 |
| 1505 | 37300.37500.38800.40800.43100.44000.60600.1185300 | Block Work | 10d | 2027-10-04 | 2027-10-13 | 1454FS+90d |  | Sector 43 | 9715366 |
| 1506 | 37300.37500.38800.40800.43100.44000.60600.1185400 | Installation of temporary Main door | 4d | 2027-10-14 | 2027-10-17 | 1505 |  | Sector 43 | 9715376 |
| 1507 | 37300.37500.38800.40800.43100.44000.60600.1185500 | Fire sprinkler pipe fixing | 10d | 2027-10-24 | 2027-12-17 | 1490, 1505 |  | Sector 43 | 9715386 |
| 1508 | 37300.37500.38800.40800.43100.44000.60600.1185600 | Internal Plumbing Works | 15d | 2027-10-14 | 2027-10-28 | 1505 |  | Sector 43 | 9715396 |
| 1509 | 37300.37500.38800.40800.43100.44000.60600.1185700 | Waterproofing | 21d | 2027-10-29 | 2028-01-02 | 1508 |  | Sector 43 | 9715406 |
| 1510 | 37300.37500.38800.40800.43100.44000.60600.1185800 | Internal Plaster | 15d | 2027-09-29 | 2027-10-13 | 1508FS-30d |  | Sector 43 | 9715416 |
| 1511 | 37300.37500.38800.40800.43100.44000.60600.1185900 | IPS flooring work | 13d | 2027-10-14 | 2027-10-26 | 1505 |  | Sector 43 | 9715426 |
| 1512 | 37300.37500.38800.40800.43100.44000.60600.1186000 | Toilet dado work | 25d | 2028-01-01 | 2028-01-25 | 1509FS-2d, 1510 |  | Sector 43 | 9715436 |
| 1513 | 37300.37500.38800.40800.43100.44000.60600.1186100 | Toilet flooring work | 25d | 2028-01-26 | 2028-02-19 | 1511, 1512 |  | Sector 43 | 9715446 |
| 1514 | 37300.37500.38800.40800.43100.44000.60600.1186200 | Living dinning flooring | 31d | 2028-01-31 | 2028-03-01 | 1513FS-20d |  | Sector 43 | 9715456 |
| 1515 | 37300.37500.38800.40800.43100.44000.60600.1186300 | Electrical wiring work | 12d | 2028-02-21 | 2028-03-03 | 1514FS-10d |  | Sector 43 | 9715466 |
| 1516 | 37300.37500.38800.40800.43100.44000.60600.1186400 | Aluminium door-window fixing | 19d | 2028-06-02 | 2028-06-20 | 1515FS+90d |  | Sector 43 | 9715476 |
| 1517 | 37300.37500.38800.40800.43100.44000.60600.1186500 | Putty primer coat | 10d | 2028-02-23 | 2028-03-03 | 1514FS-8d |  | Sector 43 | 9715486 |
| 1518 | 37300.37500.38800.40800.43100.44000.60600.1186600 | Prehung door fixing | 8d | 2028-02-28 | 2028-03-06 | 1517FS-5d |  | Sector 43 | 9715496 |
| 1519 | 37300.37500.38800.40800.43100.44000.60600.1186700 | Painting 1st coat | 12d | 2028-03-07 | 2028-03-18 | 1518 |  | Sector 43 | 9715506 |
| 1520 | 37300.37500.38800.40800.43100.44000.60600.1186800 | False Cieling panel fixing | 10d | 2028-03-31 | 2028-04-09 | 1503, 1519 |  | Sector 43 | 9715516 |
| 1521 | 37300.37500.38800.40800.43100.44000.62400 | **12th floor** | 216d | 2027-10-04 | 2028-06-20 |  | start no earlier than 2027-10-04 | Sector 43 | 9698046 |
| 1522 | 37300.37500.38800.40800.43100.44000.62400.1186900 | Block Work | 10d | 2027-10-04 | 2027-10-13 | 1454FS+90d |  | Sector 43 | 9715526 |
| 1523 | 37300.37500.38800.40800.43100.44000.62400.1187000 | Installation of temporary Main door | 4d | 2027-10-14 | 2027-10-17 | 1522 |  | Sector 43 | 9715536 |
| 1524 | 37300.37500.38800.40800.43100.44000.62400.1187100 | Fire sprinkler pipe fixing | 10d | 2027-12-18 | 2027-12-27 | 1507, 1522 |  | Sector 43 | 9715546 |
| 1525 | 37300.37500.38800.40800.43100.44000.62400.1187200 | Internal Plumbing Works | 15d | 2027-10-14 | 2027-10-28 | 1522 |  | Sector 43 | 9715556 |
| 1526 | 37300.37500.38800.40800.43100.44000.62400.1187300 | Waterproofing | 21d | 2027-10-29 | 2028-01-02 | 1525 |  | Sector 43 | 9715566 |
| 1527 | 37300.37500.38800.40800.43100.44000.62400.1187400 | Internal Plaster | 15d | 2027-10-29 | 2027-12-27 | 1525 |  | Sector 43 | 9715576 |
| 1528 | 37300.37500.38800.40800.43100.44000.62400.1187500 | IPS flooring work | 13d | 2027-10-14 | 2027-10-26 | 1522 |  | Sector 43 | 9715586 |
| 1529 | 37300.37500.38800.40800.43100.44000.62400.1187600 | Toilet dado work | 25d | 2028-01-01 | 2028-01-25 | 1526FS-2d, 1527 |  | Sector 43 | 9715596 |
| 1530 | 37300.37500.38800.40800.43100.44000.62400.1187700 | Toilet flooring work | 25d | 2028-01-26 | 2028-02-19 | 1529 |  | Sector 43 | 9715606 |
| 1531 | 37300.37500.38800.40800.43100.44000.62400.1187800 | Living dinning flooring | 31d | 2028-01-31 | 2028-03-01 | 1528, 1530FS-20d |  | Sector 43 | 9715616 |
| 1532 | 37300.37500.38800.40800.43100.44000.62400.1187900 | Electrical wiring work | 12d | 2028-02-21 | 2028-03-03 | 1531FS-10d |  | Sector 43 | 9715626 |
| 1533 | 37300.37500.38800.40800.43100.44000.62400.1188000 | Aluminium door-window fixing | 19d | 2028-06-02 | 2028-06-20 | 1532FS+90d |  | Sector 43 | 9715636 |
| 1534 | 37300.37500.38800.40800.43100.44000.62400.1188100 | Putty primer coat | 10d | 2028-02-25 | 2028-03-05 | 1532FS-8d |  | Sector 43 | 9715646 |
| 1535 | 37300.37500.38800.40800.43100.44000.62400.1188200 | Prehung door fixing | 8d | 2028-03-01 | 2028-03-08 | 1534FS-5d |  | Sector 43 | 9715656 |
| 1536 | 37300.37500.38800.40800.43100.44000.62400.1188300 | Painting 1st coat | 12d | 2028-03-09 | 2028-03-20 | 1535 |  | Sector 43 | 9715666 |
| 1537 | 37300.37500.38800.40800.43100.44000.62400.1188400 | False Cieling panel fixing | 10d | 2028-04-10 | 2028-04-19 | 1520, 1536 |  | Sector 43 | 9715676 |

| ID | WBS | Task | Duration | Start | Finish | Predecessors | Constraint | Calendar | Unique_Task_ID |
| --- | --- | --- | --- | --- | --- | --- | --- | --- | --- |
| 1538 | 37300.37500.38800.40800.43100.44000.62000 | **13th floor** | 242d | 2026-10-29 | 2027-08-11 |  | start no earlier than 2026-10-29 | Sector 43 | 9698056 |
| 1539 | 37300.37500.38800.40800.43100.44000.62000.1188500 | Block Work | 36d | 2026-10-29 | 2027-01-17 | 1311 |  | Sector 43 | 9715686 |
| 1540 | 37300.37500.38800.40800.43100.44000.62000.1188600 | Installation of temporary Main door | 4d | 2027-01-18 | 2027-01-21 | 1539 |  | Sector 43 | 9715696 |
| 1541 | 37300.37500.38800.40800.43100.44000.62000.1188700 | Fire sprinkler pipe fixing | 10d | 2027-01-18 | 2027-01-27 | 1524, 1539 |  | Sector 43 | 9715706 |
| 1542 | 37300.37500.38800.40800.43100.44000.62000.1188800 | Internal Plumbing Works | 15d | 2027-01-18 | 2027-02-01 | 1539 |  | Sector 43 | 9715716 |
| 1543 | 37300.37500.38800.40800.43100.44000.62000.1188900 | Waterproofing | 21d | 2027-02-02 | 2027-02-22 | 1542 |  | Sector 43 | 9715726 |
| 1544 | 37300.37500.38800.40800.43100.44000.62000.1189000 | Internal Plaster | 15d | 2027-02-02 | 2027-02-16 | 1542 |  | Sector 43 | 9715736 |
| 1545 | 37300.37500.38800.40800.43100.44000.62000.1189100 | IPS flooring work | 13d | 2027-01-18 | 2027-01-30 | 1539 |  | Sector 43 | 9715746 |
| 1546 | 37300.37500.38800.40800.43100.44000.62000.1189200 | Toilet dado work | 25d | 2027-02-21 | 2027-03-17 | 1543FS-2d, 1544 |  | Sector 43 | 9715756 |
| 1547 | 37300.37500.38800.40800.43100.44000.62000.1189300 | Toilet flooring work | 25d | 2027-03-18 | 2027-04-11 | 1546 |  | Sector 43 | 9715766 |
| 1548 | 37300.37500.38800.40800.43100.44000.62000.1189400 | Living dinning flooring | 31d | 2027-03-23 | 2027-04-22 | 1545, 1547FS-20d |  | Sector 43 | 9715776 |
| 1549 | 37300.37500.38800.40800.43100.44000.62000.1189500 | Electrical wiring work | 12d | 2027-04-13 | 2027-04-24 | 1548FS-10d |  | Sector 43 | 9715786 |
| 1550 | 37300.37500.38800.40800.43100.44000.62000.1189600 | Aluminium door-window fixing | 19d | 2027-07-24 | 2027-08-11 | 1549FS+90d |  | Sector 43 | 9715796 |
| 1551 | 37300.37500.38800.40800.43100.44000.62000.1189700 | Putty primer coat | 10d | 2027-04-17 | 2027-04-26 | 1549FS-8d |  | Sector 43 | 9715806 |
| 1552 | 37300.37500.38800.40800.43100.44000.62000.1189800 | Prehung door fixing | 8d | 2027-04-22 | 2027-04-29 | 1551FS-5d |  | Sector 43 | 9715816 |
| 1553 | 37300.37500.38800.40800.43100.44000.62000.1189900 | Painting 1st coat | 12d | 2027-04-30 | 2027-05-11 | 1552 |  | Sector 43 | 9715826 |
| 1554 | 37300.37500.38800.40800.43100.44000.62000.1190000 | False Cieling panel fixing | 10d | 2027-05-12 | 2027-05-21 | 1537, 1553 |  | Sector 43 | 9715836 |
| 1555 | 37300.37500.38800.40800.43100.44000.61800 | **14th floor** | 269d | 2026-12-31 | 2027-09-25 |  | start no earlier than 2026-12-31 | Sector 43 | 9698066 |
| 1556 | 37300.37500.38800.40800.43100.44000.61800.1190100 | Block Work | 36d | 2026-12-31 | 2027-02-04 | 1312 |  | Sector 43 | 9715846 |
| 1557 | 37300.37500.38800.40800.43100.44000.61800.1190200 | Installation of temporary Main door | 4d | 2027-02-05 | 2027-02-08 | 1556 |  | Sector 43 | 9715856 |
| 1558 | 37300.37500.38800.40800.43100.44000.61800.1190300 | Fire sprinkler pipe fixing | 10d | 2027-02-05 | 2027-02-14 | 1541, 1556 |  | Sector 43 | 9715866 |
| 1559 | 37300.37500.38800.40800.43100.44000.61800.1190400 | Internal Plumbing Works | 15d | 2027-02-05 | 2027-02-19 | 1556 |  | Sector 43 | 9715876 |
| 1560 | 37300.37500.38800.40800.43100.44000.61800.1190500 | Waterproofing | 21d | 2027-02-20 | 2027-03-12 | 1559 |  | Sector 43 | 9715886 |
| 1561 | 37300.37500.38800.40800.43100.44000.61800.1190600 | Internal Plaster | 15d | 2027-02-20 | 2027-03-06 | 1559 |  | Sector 43 | 9715896 |
| 1562 | 37300.37500.38800.40800.43100.44000.61800.1190700 | IPS flooring work | 13d | 2027-02-05 | 2027-02-17 | 1556 |  | Sector 43 | 9715906 |
| 1563 | 37300.37500.38800.40800.43100.44000.61800.1190800 | Toilet dado work | 25d | 2027-03-11 | 2027-04-04 | 1560FS-2d, 1561 |  | Sector 43 | 9715916 |
| 1564 | 37300.37500.38800.40800.43100.44000.61800.1190900 | Toilet flooring work | 25d | 2027-04-05 | 2027-04-29 | 1563 |  | Sector 43 | 9715926 |
| 1565 | 37300.37500.38800.40800.43100.44000.61800.1191000 | Living dinning flooring | 31d | 2027-04-10 | 2027-05-10 | 1562, 1564FS-20d |  | Sector 43 | 9715936 |
| 1566 | 37300.37500.38800.40800.43100.44000.61800.1191100 | Electrical wiring work | 12d | 2027-05-01 | 2027-05-12 | 1565FS-10d |  | Sector 43 | 9715946 |
| 1567 | 37300.37500.38800.40800.43100.44000.61800.1191200 | Aluminium door-window fixing | 19d | 2027-08-11 | 2027-08-29 | 1566FS+90d |  | Sector 43 | 9715956 |
| 1568 | 37300.37500.38800.40800.43100.44000.61800.1191300 | Putty primer coat | 10d | 2027-08-22 | 2027-08-31 | 1567FS-8d |  | Sector 43 | 9715966 |
| 1569 | 37300.37500.38800.40800.43100.44000.61800.1191400 | Prehung door fixing | 8d | 2027-08-27 | 2027-09-03 | 1568FS-5d |  | Sector 43 | 9715976 |
| 1570 | 37300.37500.38800.40800.43100.44000.61800.1191500 | Painting 1st coat | 12d | 2027-09-04 | 2027-09-15 | 1569 |  | Sector 43 | 9715986 |
| 1571 | 37300.37500.38800.40800.43100.44000.61800.1191600 | False Cieling panel fixing | 10d | 2027-09-16 | 2027-09-25 | 1554, 1570 |  | Sector 43 | 9715996 |

| ID | WBS | Task | Duration | Start | Finish | Predecessors | Constraint | Calendar | Unique_Task_ID |
| --- | --- | --- | --- | --- | --- | --- | --- | --- | --- |
| 1572 | 37300.37500.38800.40800.43100.44000.61400 | **15th floor** | 266d | 2027-01-13 | 2027-10-05 |  | start no earlier than 2027-01-13 | Sector 43 | 9698076 |
| 1573 | 37300.37500.38800.40800.43100.44000.61400.1191700 | Block Work | 36d | 2027-01-13 | 2027-02-17 | 1313 |  | Sector 43 | 9716006 |
| 1574 | 37300.37500.38800.40800.43100.44000.61400.1191800 | Installation of temporary Main door | 4d | 2027-02-18 | 2027-02-21 | 1573 |  | Sector 43 | 9716016 |
| 1575 | 37300.37500.38800.40800.43100.44000.61400.1191900 | Fire sprinkler pipe fixing | 10d | 2027-02-18 | 2027-02-27 | 1558, 1573 |  | Sector 43 | 9716026 |
| 1576 | 37300.37500.38800.40800.43100.44000.61400.1192000 | Internal Plumbing Works | 15d | 2027-02-18 | 2027-03-04 | 1573 |  | Sector 43 | 9716036 |
| 1577 | 37300.37500.38800.40800.43100.44000.61400.1192100 | Waterproofing | 21d | 2027-03-05 | 2027-03-25 | 1576 |  | Sector 43 | 9716046 |
| 1578 | 37300.37500.38800.40800.43100.44000.61400.1192200 | Internal Plaster | 15d | 2027-03-05 | 2027-03-19 | 1576 |  | Sector 43 | 9716056 |
| 1579 | 37300.37500.38800.40800.43100.44000.61400.1192300 | IPS flooring work | 13d | 2027-02-18 | 2027-03-02 | 1573 |  | Sector 43 | 9716066 |
| 1580 | 37300.37500.38800.40800.43100.44000.61400.1192400 | Toilet dado work | 25d | 2027-03-24 | 2027-04-17 | 1577FS-2d, 1578 |  | Sector 43 | 9716076 |
| 1581 | 37300.37500.38800.40800.43100.44000.61400.1192500 | Toilet flooring work | 25d | 2027-04-18 | 2027-05-12 | 1580 |  | Sector 43 | 9716086 |
| 1582 | 37300.37500.38800.40800.43100.44000.61400.1192600 | Living dinning flooring | 31d | 2027-04-23 | 2027-05-23 | 1579, 1581FS-20d |  | Sector 43 | 9716096 |
| 1583 | 37300.37500.38800.40800.43100.44000.61400.1192700 | Electrical wiring work | 12d | 2027-05-14 | 2027-05-25 | 1582FS-10d |  | Sector 43 | 9716106 |
| 1584 | 37300.37500.38800.40800.43100.44000.61400.1192800 | Aluminium door-window fixing | 19d | 2027-08-24 | 2027-09-11 | 1583FS+90d |  | Sector 43 | 9716116 |
| 1585 | 37300.37500.38800.40800.43100.44000.61400.1192900 | Putty primer coat | 10d | 2027-05-16 | 2027-05-25 | 1582FS-8d |  | Sector 43 | 9716126 |
| 1586 | 37300.37500.38800.40800.43100.44000.61400.1193000 | Prehung door fixing | 8d | 2027-05-21 | 2027-05-28 | 1585FS-5d |  | Sector 43 | 9716136 |
| 1587 | 37300.37500.38800.40800.43100.44000.61400.1193100 | Painting 1st coat | 12d | 2027-05-29 | 2027-06-09 | 1586 |  | Sector 43 | 9716146 |
| 1588 | 37300.37500.38800.40800.43100.44000.61400.1193200 | False Cieling panel fixing | 10d | 2027-09-26 | 2027-10-05 | 1571, 1587 |  | Sector 43 | 9716156 |
| 1589 | 37300.37500.38800.40800.43100.44000.60500 | **16th floor** | 264d | 2027-01-25 | 2027-10-15 |  | start no earlier than 2027-01-25 | Sector 43 | 9698086 |
| 1590 | 37300.37500.38800.40800.43100.44000.60500.1193300 | Block Work | 36d | 2027-01-25 | 2027-03-01 | 1314 |  | Sector 43 | 9716166 |
| 1591 | 37300.37500.38800.40800.43100.44000.60500.1193400 | Installation of temporary Main door | 4d | 2027-03-02 | 2027-03-05 | 1590 |  | Sector 43 | 9716176 |
| 1592 | 37300.37500.38800.40800.43100.44000.60500.1193500 | Fire sprinkler pipe fixing | 10d | 2027-03-02 | 2027-03-11 | 1575, 1590 |  | Sector 43 | 9716186 |
| 1593 | 37300.37500.38800.40800.43100.44000.60500.1193600 | Internal Plumbing Works | 15d | 2027-03-02 | 2027-03-16 | 1590 |  | Sector 43 | 9716196 |
| 1594 | 37300.37500.38800.40800.43100.44000.60500.1193700 | Waterproofing | 21d | 2027-03-17 | 2027-04-06 | 1593 |  | Sector 43 | 9716206 |
| 1595 | 37300.37500.38800.40800.43100.44000.60500.1193800 | Internal Plaster | 15d | 2027-03-17 | 2027-03-31 | 1593 |  | Sector 43 | 9716216 |
| 1596 | 37300.37500.38800.40800.43100.44000.60500.1193900 | IPS flooring work | 13d | 2027-03-02 | 2027-03-14 | 1590 |  | Sector 43 | 9716226 |
| 1597 | 37300.37500.38800.40800.43100.44000.60500.1194000 | Toilet dado work | 25d | 2027-04-05 | 2027-04-29 | 1594FS-2d, 1595 |  | Sector 43 | 9716236 |
| 1598 | 37300.37500.38800.40800.43100.44000.60500.1194100 | Toilet flooring work | 25d | 2027-04-30 | 2027-05-24 | 1597 |  | Sector 43 | 9716246 |
| 1599 | 37300.37500.38800.40800.43100.44000.60500.1194200 | Living dinning flooring | 31d | 2027-05-05 | 2027-06-04 | 1596, 1598FS-20d |  | Sector 43 | 9716256 |
| 1600 | 37300.37500.38800.40800.43100.44000.60500.1194300 | Electrical wiring work | 12d | 2027-05-26 | 2027-06-06 | 1599FS-10d |  | Sector 43 | 9716266 |
| 1601 | 37300.37500.38800.40800.43100.44000.60500.1194400 | Aluminium door-window fixing | 19d | 2027-09-05 | 2027-09-23 | 1600FS+90d |  | Sector 43 | 9716276 |
| 1602 | 37300.37500.38800.40800.43100.44000.60500.1194500 | Putty primer coat | 10d | 2027-05-28 | 2027-06-06 | 1599FS-8d |  | Sector 43 | 9716286 |
| 1603 | 37300.37500.38800.40800.43100.44000.60500.1194600 | Prehung door fixing | 8d | 2027-06-02 | 2027-06-09 | 1602FS-5d |  | Sector 43 | 9716296 |
| 1604 | 37300.37500.38800.40800.43100.44000.60500.1194700 | Painting 1st coat | 12d | 2027-06-10 | 2027-06-21 | 1603 |  | Sector 43 | 9716306 |
| 1605 | 37300.37500.38800.40800.43100.44000.60500.1194800 | False Cieling panel fixing | 10d | 2027-10-06 | 2027-10-15 | 1588, 1604 |  | Sector 43 | 9716316 |

| ID | WBS | Task | Duration | Start | Finish | Predecessors | Constraint | Calendar | Unique_Task_ID |
| --- | --- | --- | --- | --- | --- | --- | --- | --- | --- |
| 1606 | 37300.37500.38800.40800.43100.44000.54100 | **17th floor** | 262d | 2027-02-06 | 2027-10-25 |  | start no earlier than 2027-02-06 | Sector 43 | 9698096 |
| 1607 | 37300.37500.38800.40800.43100.44000.54100.1194900 | Block Work | 36d | 2027-02-06 | 2027-03-13 | 1315 |  | Sector 43 | 9716326 |
| 1608 | 37300.37500.38800.40800.43100.44000.54100.1195000 | Installation of temporary Main door | 4d | 2027-03-14 | 2027-03-17 | 1607 |  | Sector 43 | 9716336 |
| 1609 | 37300.37500.38800.40800.43100.44000.54100.1195100 | Fire sprinkler pipe fixing | 10d | 2027-03-14 | 2027-03-23 | 1592, 1607 |  | Sector 43 | 9716346 |
| 1610 | 37300.37500.38800.40800.43100.44000.54100.1195200 | Internal Plumbing Works | 15d | 2027-03-14 | 2027-03-28 | 1607 |  | Sector 43 | 9716356 |
| 1611 | 37300.37500.38800.40800.43100.44000.54100.1195300 | Waterproofing | 21d | 2027-03-29 | 2027-04-18 | 1610 |  | Sector 43 | 9716366 |
| 1612 | 37300.37500.38800.40800.43100.44000.54100.1195400 | Internal Plaster | 15d | 2027-03-29 | 2027-04-12 | 1610 |  | Sector 43 | 9716376 |
| 1613 | 37300.37500.38800.40800.43100.44000.54100.1195500 | IPS flooring work | 13d | 2027-03-14 | 2027-03-26 | 1607 |  | Sector 43 | 9716386 |
| 1614 | 37300.37500.38800.40800.43100.44000.54100.1195600 | Toilet dado work | 25d | 2027-04-17 | 2027-05-11 | 1611FS-2d, 1612 |  | Sector 43 | 9716396 |
| 1615 | 37300.37500.38800.40800.43100.44000.54100.1195700 | Toilet flooring work | 25d | 2027-05-12 | 2027-06-05 | 1614 |  | Sector 43 | 9716406 |
| 1616 | 37300.37500.38800.40800.43100.44000.54100.1195800 | Living dinning flooring | 31d | 2027-05-17 | 2027-06-16 | 1613, 1615FS-20d |  | Sector 43 | 9716416 |
| 1617 | 37300.37500.38800.40800.43100.44000.54100.1195900 | Electrical wiring work | 12d | 2027-06-07 | 2027-06-18 | 1616FS-10d |  | Sector 43 | 9716426 |
| 1618 | 37300.37500.38800.40800.43100.44000.54100.1196000 | Aluminium door-window fixing | 19d | 2027-09-17 | 2027-10-05 | 1617FS+90d |  | Sector 43 | 9716436 |
| 1619 | 37300.37500.38800.40800.43100.44000.54100.1196100 | Putty primer coat | 10d | 2027-06-09 | 2027-06-18 | 1616FS-8d |  | Sector 43 | 9716446 |
| 1620 | 37300.37500.38800.40800.43100.44000.54100.1196200 | Prehung door fixing | 8d | 2027-06-14 | 2027-06-21 | 1619FS-5d |  | Sector 43 | 9716456 |
| 1621 | 37300.37500.38800.40800.43100.44000.54100.1196300 | Painting 1st coat | 12d | 2027-06-22 | 2027-07-03 | 1620 |  | Sector 43 | 9716466 |
| 1622 | 37300.37500.38800.40800.43100.44000.54100.1196400 | False Cieling panel fixing | 10d | 2027-10-16 | 2027-10-25 | 1605, 1621 |  | Sector 43 | 9716476 |
| 1623 | 37300.37500.38800.40800.43100.44000.53900 | **18th floor** | 260d | 2027-02-18 | 2027-12-19 |  | start no earlier than 2027-02-18 | Sector 43 | 9698106 |
| 1624 | 37300.37500.38800.40800.43100.44000.53900.1196500 | Block Work | 36d | 2027-02-18 | 2027-03-25 | 1316 |  | Sector 43 | 9716486 |
| 1625 | 37300.37500.38800.40800.43100.44000.53900.1196600 | Installation of temporary Main door | 4d | 2027-03-26 | 2027-03-29 | 1624 |  | Sector 43 | 9716496 |
| 1626 | 37300.37500.38800.40800.43100.44000.53900.1196700 | Fire sprinkler pipe fixing | 10d | 2027-03-26 | 2027-04-04 | 1609, 1624 |  | Sector 43 | 9716506 |
| 1627 | 37300.37500.38800.40800.43100.44000.53900.1196800 | Internal Plumbing Works | 15d | 2027-03-26 | 2027-04-09 | 1624 |  | Sector 43 | 9716516 |
| 1628 | 37300.37500.38800.40800.43100.44000.53900.1196900 | Waterproofing | 21d | 2027-04-10 | 2027-04-30 | 1627 |  | Sector 43 | 9716526 |
| 1629 | 37300.37500.38800.40800.43100.44000.53900.1197000 | Internal Plaster | 15d | 2027-04-10 | 2027-04-24 | 1627 |  | Sector 43 | 9716536 |
| 1630 | 37300.37500.38800.40800.43100.44000.53900.1197100 | IPS flooring work | 13d | 2027-03-26 | 2027-04-07 | 1624 |  | Sector 43 | 9716546 |
| 1631 | 37300.37500.38800.40800.43100.44000.53900.1197200 | Toilet dado work | 25d | 2027-04-29 | 2027-05-23 | 1628FS-2d, 1629 |  | Sector 43 | 9716556 |
| 1632 | 37300.37500.38800.40800.43100.44000.53900.1197300 | Toilet flooring work | 25d | 2027-05-24 | 2027-06-17 | 1631 |  | Sector 43 | 9716566 |
| 1633 | 37300.37500.38800.40800.43100.44000.53900.1197400 | Living dinning flooring | 31d | 2027-05-29 | 2027-06-28 | 1630, 1632FS-20d |  | Sector 43 | 9716576 |
| 1634 | 37300.37500.38800.40800.43100.44000.53900.1197500 | Electrical wiring work | 12d | 2027-06-19 | 2027-06-30 | 1633FS-10d |  | Sector 43 | 9716586 |
| 1635 | 37300.37500.38800.40800.43100.44000.53900.1197600 | Aluminium door-window fixing | 19d | 2027-09-29 | 2027-10-17 | 1634FS+90d |  | Sector 43 | 9716596 |
| 1636 | 37300.37500.38800.40800.43100.44000.53900.1197700 | Putty primer coat | 10d | 2027-06-21 | 2027-06-30 | 1633FS-8d |  | Sector 43 | 9716606 |
| 1637 | 37300.37500.38800.40800.43100.44000.53900.1197800 | Prehung door fixing | 8d | 2027-06-26 | 2027-07-03 | 1636FS-5d |  | Sector 43 | 9716616 |
| 1638 | 37300.37500.38800.40800.43100.44000.53900.1197900 | Painting 1st coat | 12d | 2027-07-04 | 2027-07-15 | 1637 |  | Sector 43 | 9716626 |
| 1639 | 37300.37500.38800.40800.43100.44000.53900.1198000 | False Cieling panel fixing | 10d | 2027-10-26 | 2027-12-19 | 1622, 1638 |  | Sector 43 | 9716636 |

| ID | WBS | Task | Duration | Start | Finish | Predecessors | Constraint | Calendar | Unique_Task_ID |
| --- | --- | --- | --- | --- | --- | --- | --- | --- | --- |
| 1640 | 37300.37500.38800.40800.43100.44000.55600 | **19th floor** | 258d | 2027-03-02 | 2027-12-29 |  | start no earlier than 2027-03-02 | Sector 43 | 9698116 |
| 1641 | 37300.37500.38800.40800.43100.44000.55600.1198100 | Block Work | 36d | 2027-03-02 | 2027-04-06 | 1317 |  | Sector 43 | 9716646 |
| 1642 | 37300.37500.38800.40800.43100.44000.55600.1198200 | Installation of temporary Main door | 4d | 2027-04-07 | 2027-04-10 | 1641 |  | Sector 43 | 9716656 |
| 1643 | 37300.37500.38800.40800.43100.44000.55600.1198300 | Fire sprinkler pipe fixing | 10d | 2027-04-07 | 2027-04-16 | 1626, 1641 |  | Sector 43 | 9716666 |
| 1644 | 37300.37500.38800.40800.43100.44000.55600.1198400 | Internal Plumbing Works | 15d | 2027-04-07 | 2027-04-21 | 1641 |  | Sector 43 | 9716676 |
| 1645 | 37300.37500.38800.40800.43100.44000.55600.1198500 | Waterproofing | 21d | 2027-04-22 | 2027-05-12 | 1644 |  | Sector 43 | 9716686 |
| 1646 | 37300.37500.38800.40800.43100.44000.55600.1198600 | Internal Plaster | 15d | 2027-04-22 | 2027-05-06 | 1644 |  | Sector 43 | 9716696 |
| 1647 | 37300.37500.38800.40800.43100.44000.55600.1198700 | IPS flooring work | 13d | 2027-04-07 | 2027-04-19 | 1641 |  | Sector 43 | 9716706 |
| 1648 | 37300.37500.38800.40800.43100.44000.55600.1198800 | Toilet dado work | 25d | 2027-05-11 | 2027-06-04 | 1645FS-2d, 1646 |  | Sector 43 | 9716716 |
| 1649 | 37300.37500.38800.40800.43100.44000.55600.1198900 | Toilet flooring work | 25d | 2027-06-05 | 2027-06-29 | 1648 |  | Sector 43 | 9716726 |
| 1650 | 37300.37500.38800.40800.43100.44000.55600.1199000 | Living dinning flooring | 31d | 2027-06-10 | 2027-07-10 | 1647, 1649FS-20d |  | Sector 43 | 9716736 |
| 1651 | 37300.37500.38800.40800.43100.44000.55600.1199100 | Electrical wiring work | 12d | 2027-07-01 | 2027-07-12 | 1650FS-10d |  | Sector 43 | 9716746 |
| 1652 | 37300.37500.38800.40800.43100.44000.55600.1199200 | Aluminium door-window fixing | 19d | 2027-07-05 | 2027-07-23 | 1642, 1651FS-8d |  | Sector 43 | 9716756 |
| 1653 | 37300.37500.38800.40800.43100.44000.55600.1199300 | Putty primer coat | 10d | 2027-07-16 | 2027-07-25 | 1652FS-8d |  | Sector 43 | 9716766 |
| 1654 | 37300.37500.38800.40800.43100.44000.55600.1199400 | Prehung door fixing | 8d | 2027-07-21 | 2027-07-28 | 1653FS-5d |  | Sector 43 | 9716776 |
| 1655 | 37300.37500.38800.40800.43100.44000.55600.1199500 | Painting 1st coat | 12d | 2027-07-29 | 2027-08-09 | 1654 |  | Sector 43 | 9716786 |
| 1656 | 37300.37500.38800.40800.43100.44000.55600.1199600 | False Cieling panel fixing | 10d | 2027-12-20 | 2027-12-29 | 1639, 1655 |  | Sector 43 | 9716796 |
| 1657 | 37300.37500.38800.40800.43100.44000.55700 | **20th floor** | 256d | 2027-03-14 | 2028-01-08 |  | start no earlier than 2027-03-14 | Sector 43 | 9698126 |
| 1658 | 37300.37500.38800.40800.43100.44000.55700.1199700 | Block Work | 36d | 2027-03-14 | 2027-04-18 | 1318 |  | Sector 43 | 9716806 |
| 1659 | 37300.37500.38800.40800.43100.44000.55700.1199800 | Installation of temporary Main door | 4d | 2027-04-19 | 2027-04-22 | 1658 |  | Sector 43 | 9716816 |
| 1660 | 37300.37500.38800.40800.43100.44000.55700.1199900 | Fire sprinkler pipe fixing | 10d | 2027-04-19 | 2027-04-28 | 1643, 1658 |  | Sector 43 | 9716826 |
| 1661 | 37300.37500.38800.40800.43100.44000.55700.1200000 | Internal Plumbing Works | 15d | 2027-04-19 | 2027-05-03 | 1658 |  | Sector 43 | 9716836 |
| 1662 | 37300.37500.38800.40800.43100.44000.55700.1200100 | Waterproofing | 21d | 2027-05-04 | 2027-05-24 | 1661 |  | Sector 43 | 9716846 |
| 1663 | 37300.37500.38800.40800.43100.44000.55700.1200200 | Internal Plaster | 15d | 2027-05-04 | 2027-05-18 | 1661 |  | Sector 43 | 9716856 |
| 1664 | 37300.37500.38800.40800.43100.44000.55700.1200300 | IPS flooring work | 13d | 2027-04-19 | 2027-05-01 | 1658 |  | Sector 43 | 9716866 |
| 1665 | 37300.37500.38800.40800.43100.44000.55700.1200400 | Toilet dado work | 25d | 2027-05-23 | 2027-06-16 | 1662FS-2d, 1663 |  | Sector 43 | 9716876 |
| 1666 | 37300.37500.38800.40800.43100.44000.55700.1200500 | Toilet flooring work | 25d | 2027-06-17 | 2027-07-11 | 1665 |  | Sector 43 | 9716886 |
| 1667 | 37300.37500.38800.40800.43100.44000.55700.1200600 | Living dinning flooring | 31d | 2027-06-22 | 2027-07-22 | 1666FS-20d |  | Sector 43 | 9716896 |
| 1668 | 37300.37500.38800.40800.43100.44000.55700.1200700 | Electrical wiring work | 12d | 2027-07-13 | 2027-07-24 | 1664, 1667FS-10d |  | Sector 43 | 9716906 |
| 1669 | 37300.37500.38800.40800.43100.44000.55700.1200800 | Aluminium door-window fixing | 19d | 2027-07-17 | 2027-08-04 | 1659, 1668FS-8d |  | Sector 43 | 9716916 |
| 1670 | 37300.37500.38800.40800.43100.44000.55700.1200900 | Putty primer coat | 10d | 2027-07-28 | 2027-08-06 | 1669FS-8d |  | Sector 43 | 9716926 |
| 1671 | 37300.37500.38800.40800.43100.44000.55700.1201000 | Prehung door fixing | 8d | 2027-08-02 | 2027-08-09 | 1670FS-5d |  | Sector 43 | 9716936 |
| 1672 | 37300.37500.38800.40800.43100.44000.55700.1201100 | Painting 1st coat | 12d | 2027-08-10 | 2027-08-21 | 1671 |  | Sector 43 | 9716946 |
| 1673 | 37300.37500.38800.40800.43100.44000.55700.1201200 | False Cieling panel fixing | 10d | 2027-12-30 | 2028-01-08 | 1656, 1672 |  | Sector 43 | 9716956 |

| ID | WBS | Task | Duration | Start | Finish | Predecessors | Constraint | Calendar | Unique_Task_ID |
| --- | --- | --- | --- | --- | --- | --- | --- | --- | --- |
| 1674 | 37300.37500.38800.40800.43100.44000.55800 | **21st floor** | 254d | 2027-03-26 | 2028-01-18 |  | start no earlier than 2027-03-26 | Sector 43 | 9698136 |
| 1675 | 37300.37500.38800.40800.43100.44000.55800.1201300 | Block Work | 36d | 2027-03-26 | 2027-04-30 | 1319 |  | Sector 43 | 9716966 |
| 1676 | 37300.37500.38800.40800.43100.44000.55800.1201400 | Installation of temporary Main door | 4d | 2027-05-01 | 2027-05-04 | 1675 |  | Sector 43 | 9716976 |
| 1677 | 37300.37500.38800.40800.43100.44000.55800.1201500 | Fire sprinkler pipe fixing | 10d | 2027-05-01 | 2027-05-10 | 1660, 1675 |  | Sector 43 | 9716986 |
| 1678 | 37300.37500.38800.40800.43100.44000.55800.1201600 | Internal Plumbing Works | 15d | 2027-05-01 | 2027-05-15 | 1675 |  | Sector 43 | 9716996 |
| 1679 | 37300.37500.38800.40800.43100.44000.55800.1201700 | Waterproofing | 21d | 2027-05-16 | 2027-06-05 | 1678 |  | Sector 43 | 9717006 |
| 1680 | 37300.37500.38800.40800.43100.44000.55800.1201800 | Internal Plaster | 15d | 2027-05-16 | 2027-05-30 | 1678 |  | Sector 43 | 9717016 |
| 1681 | 37300.37500.38800.40800.43100.44000.55800.1201900 | IPS flooring work | 13d | 2027-05-01 | 2027-05-13 | 1675 |  | Sector 43 | 9717026 |
| 1682 | 37300.37500.38800.40800.43100.44000.55800.1202000 | Toilet dado work | 25d | 2027-06-04 | 2027-06-28 | 1679FS-2d, 1680 |  | Sector 43 | 9717036 |
| 1683 | 37300.37500.38800.40800.43100.44000.55800.1202100 | Toilet flooring work | 25d | 2027-06-29 | 2027-07-23 | 1682 |  | Sector 43 | 9717046 |
| 1684 | 37300.37500.38800.40800.43100.44000.55800.1202200 | Living dinning flooring | 31d | 2027-07-04 | 2027-08-03 | 1681, 1683FS-20d |  | Sector 43 | 9717056 |
| 1685 | 37300.37500.38800.40800.43100.44000.55800.1202300 | Electrical wiring work | 12d | 2027-07-25 | 2027-08-05 | 1684FS-10d |  | Sector 43 | 9717066 |
| 1686 | 37300.37500.38800.40800.43100.44000.55800.1202400 | Aluminium door-window fixing | 19d | 2027-07-29 | 2027-08-16 | 1676, 1685FS-8d |  | Sector 43 | 9717076 |
| 1687 | 37300.37500.38800.40800.43100.44000.55800.1202500 | Putty primer coat | 10d | 2027-08-09 | 2027-08-18 | 1686FS-8d |  | Sector 43 | 9717086 |
| 1688 | 37300.37500.38800.40800.43100.44000.55800.1202600 | Prehung door fixing | 8d | 2027-08-14 | 2027-08-21 | 1687FS-5d |  | Sector 43 | 9717096 |
| 1689 | 37300.37500.38800.40800.43100.44000.55800.1202700 | Painting 1st coat | 12d | 2027-08-22 | 2027-09-02 | 1688 |  | Sector 43 | 9717106 |
| 1690 | 37300.37500.38800.40800.43100.44000.55800.1202800 | False Cieling panel fixing | 10d | 2028-01-09 | 2028-01-18 | 1673, 1689 |  | Sector 43 | 9717116 |
| 1691 | 37300.37500.38800.40800.43100.44000.54300 | **22nd floor** | 246d | 2027-04-13 | 2028-01-28 |  | start no earlier than 2027-04-13 | Sector 43 | 9698146 |
| 1692 | 37300.37500.38800.40800.43100.44000.54300.1202900 | Block Work | 36d | 2027-04-13 | 2027-05-18 | 1320 |  | Sector 43 | 9717126 |
| 1693 | 37300.37500.38800.40800.43100.44000.54300.1203000 | Installation of temporary Main door | 4d | 2027-05-19 | 2027-05-22 | 1692 |  | Sector 43 | 9717136 |
| 1694 | 37300.37500.38800.40800.43100.44000.54300.1203100 | Fire sprinkler pipe fixing | 10d | 2027-05-19 | 2027-05-28 | 1677, 1692 |  | Sector 43 | 9717146 |
| 1695 | 37300.37500.38800.40800.43100.44000.54300.1203200 | Internal Plumbing Works | 15d | 2027-05-19 | 2027-06-02 | 1692 |  | Sector 43 | 9717156 |
| 1696 | 37300.37500.38800.40800.43100.44000.54300.1203300 | Waterproofing | 21d | 2027-06-03 | 2027-06-23 | 1695 |  | Sector 43 | 9717166 |
| 1697 | 37300.37500.38800.40800.43100.44000.54300.1203400 | Internal Plaster | 15d | 2027-06-03 | 2027-06-17 | 1695 |  | Sector 43 | 9717176 |
| 1698 | 37300.37500.38800.40800.43100.44000.54300.1203500 | IPS flooring work | 13d | 2027-05-19 | 2027-05-31 | 1692 |  | Sector 43 | 9717186 |
| 1699 | 37300.37500.38800.40800.43100.44000.54300.1203600 | Toilet dado work | 25d | 2027-06-22 | 2027-07-16 | 1696FS-2d, 1697 |  | Sector 43 | 9717196 |
| 1700 | 37300.37500.38800.40800.43100.44000.54300.1203700 | Toilet flooring work | 25d | 2027-07-17 | 2027-08-10 | 1699 |  | Sector 43 | 9717206 |
| 1701 | 37300.37500.38800.40800.43100.44000.54300.1203800 | Living dinning flooring | 31d | 2027-07-22 | 2027-08-21 | 1698, 1700FS-20d |  | Sector 43 | 9717216 |
| 1702 | 37300.37500.38800.40800.43100.44000.54300.1203900 | Electrical wiring work | 12d | 2027-08-12 | 2027-08-23 | 1701FS-10d |  | Sector 43 | 9717226 |
| 1703 | 37300.37500.38800.40800.43100.44000.54300.1204000 | Aluminium door-window fixing | 19d | 2027-08-16 | 2027-09-03 | 1693, 1702FS-8d |  | Sector 43 | 9717236 |
| 1704 | 37300.37500.38800.40800.43100.44000.54300.1204100 | Putty primer coat | 10d | 2027-08-27 | 2027-09-05 | 1703FS-8d |  | Sector 43 | 9717246 |
| 1705 | 37300.37500.38800.40800.43100.44000.54300.1204200 | Prehung door fixing | 8d | 2027-09-01 | 2027-09-08 | 1704FS-5d |  | Sector 43 | 9717256 |
| 1706 | 37300.37500.38800.40800.43100.44000.54300.1204300 | Painting 1st coat | 12d | 2027-09-09 | 2027-09-20 | 1705 |  | Sector 43 | 9717266 |
| 1707 | 37300.37500.38800.40800.43100.44000.54300.1204400 | False Cieling panel fixing | 10d | 2028-01-19 | 2028-01-28 | 1690, 1706 |  | Sector 43 | 9717276 |

| ID | WBS | Task | Duration | Start | Finish | Predecessors | Constraint | Calendar | Unique_Task_ID |
| --- | --- | --- | --- | --- | --- | --- | --- | --- | --- |
| 1708 | 37300.37500.38800.40800.43100.44000.55100 | **23rd floor** | 244d | 2027-04-25 | 2028-02-07 |  | start no earlier than 2027-04-25 | Sector 43 | 9698156 |
| 1709 | 37300.37500.38800.40800.43100.44000.55100.1204500 | Block Work | 36d | 2027-04-25 | 2027-05-30 | 1321 |  | Sector 43 | 9717286 |
| 1710 | 37300.37500.38800.40800.43100.44000.55100.1204600 | Installation of temporary Main door | 4d | 2027-05-31 | 2027-06-03 | 1709 |  | Sector 43 | 9717296 |
| 1711 | 37300.37500.38800.40800.43100.44000.55100.1204700 | Fire sprinkler pipe fixing | 10d | 2027-05-31 | 2027-06-09 | 1694, 1709 |  | Sector 43 | 9717306 |
| 1712 | 37300.37500.38800.40800.43100.44000.55100.1204800 | Internal Plumbing Works | 15d | 2027-05-31 | 2027-06-14 | 1709 |  | Sector 43 | 9717316 |
| 1713 | 37300.37500.38800.40800.43100.44000.55100.1204900 | Waterproofing | 21d | 2027-06-15 | 2027-07-05 | 1712 |  | Sector 43 | 9717326 |
| 1714 | 37300.37500.38800.40800.43100.44000.55100.1205000 | Internal Plaster | 15d | 2027-06-15 | 2027-06-29 | 1712 |  | Sector 43 | 9717336 |
| 1715 | 37300.37500.38800.40800.43100.44000.55100.1205100 | IPS flooring work | 13d | 2027-05-31 | 2027-06-12 | 1709 |  | Sector 43 | 9717346 |
| 1716 | 37300.37500.38800.40800.43100.44000.55100.1205200 | Toilet dado work | 25d | 2027-07-04 | 2027-07-28 | 1713FS-2d, 1714 |  | Sector 43 | 9717356 |
| 1717 | 37300.37500.38800.40800.43100.44000.55100.1205300 | Toilet flooring work | 25d | 2027-07-29 | 2027-08-22 | 1716 |  | Sector 43 | 9717366 |
| 1718 | 37300.37500.38800.40800.43100.44000.55100.1205400 | Living dinning flooring | 31d | 2027-08-03 | 2027-09-02 | 1715, 1717FS-20d |  | Sector 43 | 9717376 |
| 1719 | 37300.37500.38800.40800.43100.44000.55100.1205500 | Electrical wiring work | 12d | 2027-08-24 | 2027-09-04 | 1718FS-10d |  | Sector 43 | 9717386 |
| 1720 | 37300.37500.38800.40800.43100.44000.55100.1205600 | Aluminium door-window fixing | 19d | 2027-08-28 | 2027-09-15 | 1710, 1719FS-8d |  | Sector 43 | 9717396 |
| 1721 | 37300.37500.38800.40800.43100.44000.55100.1205700 | Putty primer coat | 10d | 2027-09-08 | 2027-09-17 | 1720FS-8d |  | Sector 43 | 9717406 |
| 1722 | 37300.37500.38800.40800.43100.44000.55100.1205800 | Prehung door fixing | 8d | 2027-09-13 | 2027-09-20 | 1721FS-5d |  | Sector 43 | 9717416 |
| 1723 | 37300.37500.38800.40800.43100.44000.55100.1205900 | Painting 1st coat | 12d | 2027-09-21 | 2027-10-02 | 1722 |  | Sector 43 | 9717426 |
| 1724 | 37300.37500.38800.40800.43100.44000.55100.1206000 | False Cieling panel fixing | 10d | 2028-01-29 | 2028-02-07 | 1707, 1723 |  | Sector 43 | 9717436 |
| 1725 | 37300.37500.38800.40800.43100.44000.62900 | **24th floor** | 242d | 2027-05-07 | 2028-02-17 |  | start no earlier than 2027-05-07 | Sector 43 | 9698166 |
| 1726 | 37300.37500.38800.40800.43100.44000.62900.1206100 | Block Work | 36d | 2027-05-07 | 2027-06-11 | 1322 |  | Sector 43 | 9717446 |
| 1727 | 37300.37500.38800.40800.43100.44000.62900.1206200 | Installation of temporary Main door | 4d | 2027-06-12 | 2027-06-15 | 1726 |  | Sector 43 | 9717456 |
| 1728 | 37300.37500.38800.40800.43100.44000.62900.1206300 | Fire sprinkler pipe fixing | 10d | 2027-06-12 | 2027-06-21 | 1711, 1726 |  | Sector 43 | 9717466 |
| 1729 | 37300.37500.38800.40800.43100.44000.62900.1206400 | Internal Plumbing Works | 15d | 2027-06-12 | 2027-06-26 | 1726 |  | Sector 43 | 9717476 |
| 1730 | 37300.37500.38800.40800.43100.44000.62900.1206500 | Waterproofing | 21d | 2027-06-27 | 2027-07-17 | 1729 |  | Sector 43 | 9717486 |
| 1731 | 37300.37500.38800.40800.43100.44000.62900.1206600 | Internal Plaster | 15d | 2027-06-27 | 2027-07-11 | 1729 |  | Sector 43 | 9717496 |
| 1732 | 37300.37500.38800.40800.43100.44000.62900.1779000 | Internal Plaster | 15d | 2027-08-11 | 2027-08-25 | 1731 |  | Sector 43 | 10338859 |
| 1733 | 37300.37500.38800.40800.43100.44000.62900.1206700 | IPS flooring work | 13d | 2027-06-12 | 2027-06-24 | 1726 |  | Sector 43 | 9717506 |
| 1734 | 37300.37500.38800.40800.43100.44000.62900.1206800 | Toilet dado work | 25d | 2027-07-16 | 2027-08-09 | 1730FS-2d, 1731 |  | Sector 43 | 9717516 |
| 1735 | 37300.37500.38800.40800.43100.44000.62900.1206900 | Toilet flooring work | 25d | 2027-08-10 | 2027-09-03 | 1734 |  | Sector 43 | 9717526 |
| 1736 | 37300.37500.38800.40800.43100.44000.62900.1207000 | Living dinning flooring | 31d | 2027-08-15 | 2027-09-14 | 1733, 1735FS-20d |  | Sector 43 | 9717536 |
| 1737 | 37300.37500.38800.40800.43100.44000.62900.1207100 | Electrical wiring work | 12d | 2027-09-05 | 2027-09-16 | 1736FS-10d |  | Sector 43 | 9717546 |
| 1738 | 37300.37500.38800.40800.43100.44000.62900.1207200 | Aluminium door-window fixing | 19d | 2027-09-09 | 2027-09-27 | 1727, 1737FS-8d |  | Sector 43 | 9717556 |
| 1739 | 37300.37500.38800.40800.43100.44000.62900.1207300 | Putty primer coat | 10d | 2027-09-20 | 2027-09-29 | 1738FS-8d |  | Sector 43 | 9717566 |
| 1740 | 37300.37500.38800.40800.43100.44000.62900.1207400 | Prehung door fixing | 8d | 2027-09-25 | 2027-10-02 | 1739FS-5d |  | Sector 43 | 9717576 |
| 1741 | 37300.37500.38800.40800.43100.44000.62900.1207500 | Painting 1st coat | 12d | 2027-10-03 | 2027-10-14 | 1740 |  | Sector 43 | 9717586 |
| 1742 | 37300.37500.38800.40800.43100.44000.62900.1207600 | False Cieling panel fixing | 10d | 2028-02-08 | 2028-02-17 | 1724, 1741 |  | Sector 43 | 9717596 |

| ID | WBS | Task | Duration | Start | Finish | Predecessors | Constraint | Calendar | Unique_Task_ID |
| --- | --- | --- | --- | --- | --- | --- | --- | --- | --- |
| 1743 | 37300.37500.38800.40800.43100.44000.63000 | **25th floor** | 240d | 2027-05-19 | 2028-02-27 |  | start no earlier than 2027-05-19 | Sector 43 | 9698176 |
| 1744 | 37300.37500.38800.40800.43100.44000.63000.1207700 | Block Work | 36d | 2027-05-19 | 2027-06-23 | 1323 |  | Sector 43 | 9717606 |
| 1745 | 37300.37500.38800.40800.43100.44000.63000.1207800 | Installation of temporary Main door | 4d | 2027-06-24 | 2027-06-27 | 1744 |  | Sector 43 | 9717616 |
| 1746 | 37300.37500.38800.40800.43100.44000.63000.1207900 | Fire sprinkler pipe fixing | 10d | 2027-06-24 | 2027-07-03 | 1728, 1744 |  | Sector 43 | 9717626 |
| 1747 | 37300.37500.38800.40800.43100.44000.63000.1208000 | Internal Plumbing Works | 15d | 2027-06-24 | 2027-07-08 | 1744 |  | Sector 43 | 9717636 |
| 1748 | 37300.37500.38800.40800.43100.44000.63000.1208100 | Waterproofing | 21d | 2027-07-09 | 2027-07-29 | 1747 |  | Sector 43 | 9717646 |
| 1749 | 37300.37500.38800.40800.43100.44000.63000.1208200 | Internal Plaster | 15d | 2027-07-09 | 2027-07-23 | 1747 |  | Sector 43 | 9717656 |
| 1750 | 37300.37500.38800.40800.43100.44000.63000.1208300 | IPS flooring work | 13d | 2027-06-24 | 2027-07-06 | 1744 |  | Sector 43 | 9717666 |
| 1751 | 37300.37500.38800.40800.43100.44000.63000.1208400 | Toilet dado work | 25d | 2027-07-28 | 2027-08-21 | 1748FS-2d, 1749 |  | Sector 43 | 9717676 |
| 1752 | 37300.37500.38800.40800.43100.44000.63000.1208500 | Toilet flooring work | 25d | 2027-08-22 | 2027-09-15 | 1751 |  | Sector 43 | 9717686 |
| 1753 | 37300.37500.38800.40800.43100.44000.63000.1208600 | Living dinning flooring | 31d | 2027-08-27 | 2027-09-26 | 1750, 1752FS-20d |  | Sector 43 | 9717696 |
| 1754 | 37300.37500.38800.40800.43100.44000.63000.1208700 | Electrical wiring work | 12d | 2027-09-17 | 2027-09-28 | 1753FS-10d |  | Sector 43 | 9717706 |
| 1755 | 37300.37500.38800.40800.43100.44000.63000.1208800 | Aluminium door-window fixing | 19d | 2027-09-21 | 2027-10-09 | 1745, 1754FS-8d |  | Sector 43 | 9717716 |
| 1756 | 37300.37500.38800.40800.43100.44000.63000.1208900 | Putty primer coat | 10d | 2027-10-02 | 2027-10-11 | 1755FS-8d |  | Sector 43 | 9717726 |
| 1757 | 37300.37500.38800.40800.43100.44000.63000.1209000 | Prehung door fixing | 8d | 2027-10-07 | 2027-10-14 | 1756FS-5d |  | Sector 43 | 9717736 |
| 1758 | 37300.37500.38800.40800.43100.44000.63000.1209100 | Painting 1st coat | 12d | 2027-10-15 | 2027-10-26 | 1757 |  | Sector 43 | 9717746 |
| 1759 | 37300.37500.38800.40800.43100.44000.63000.1209200 | False Cieling panel fixing | 10d | 2028-02-18 | 2028-02-27 | 1742, 1758 |  | Sector 43 | 9717756 |
| 1760 | 37300.37500.38800.40800.43100.44000.62700 | **26th floor** | 238d | 2027-05-31 | 2028-03-08 |  | start no earlier than 2027-05-31 | Sector 43 | 9698186 |
| 1761 | 37300.37500.38800.40800.43100.44000.62700.1209300 | Block Work | 36d | 2027-05-31 | 2027-07-05 | 1324 |  | Sector 43 | 9717766 |
| 1762 | 37300.37500.38800.40800.43100.44000.62700.1209400 | Installation of temporary Main door | 4d | 2027-07-06 | 2027-07-09 | 1761 |  | Sector 43 | 9717776 |
| 1763 | 37300.37500.38800.40800.43100.44000.62700.1209500 | Fire sprinkler pipe fixing | 10d | 2027-07-06 | 2027-07-15 | 1746, 1761 |  | Sector 43 | 9717786 |
| 1764 | 37300.37500.38800.40800.43100.44000.62700.1209600 | Internal Plumbing Works | 15d | 2027-07-06 | 2027-07-20 | 1761 |  | Sector 43 | 9717796 |
| 1765 | 37300.37500.38800.40800.43100.44000.62700.1209700 | Waterproofing | 21d | 2027-07-21 | 2027-08-10 | 1764 |  | Sector 43 | 9717806 |
| 1766 | 37300.37500.38800.40800.43100.44000.62700.1209800 | Internal Plaster | 15d | 2027-07-21 | 2027-08-04 | 1764 |  | Sector 43 | 9717816 |
| 1767 | 37300.37500.38800.40800.43100.44000.62700.1209900 | IPS flooring work | 13d | 2027-07-06 | 2027-07-18 | 1761 |  | Sector 43 | 9717826 |
| 1768 | 37300.37500.38800.40800.43100.44000.62700.1210000 | Toilet dado work | 25d | 2027-08-09 | 2027-09-02 | 1765FS-2d, 1766 |  | Sector 43 | 9717836 |
| 1769 | 37300.37500.38800.40800.43100.44000.62700.1210100 | Toilet flooring work | 25d | 2027-09-03 | 2027-09-27 | 1768 |  | Sector 43 | 9717846 |
| 1770 | 37300.37500.38800.40800.43100.44000.62700.1210200 | Living dinning flooring | 31d | 2027-09-08 | 2027-10-08 | 1767, 1769FS-20d |  | Sector 43 | 9717856 |
| 1771 | 37300.37500.38800.40800.43100.44000.62700.1210300 | Electrical wiring work | 12d | 2027-09-29 | 2027-10-10 | 1770FS-10d |  | Sector 43 | 9717866 |
| 1772 | 37300.37500.38800.40800.43100.44000.62700.1210400 | Aluminium door-window fixing | 19d | 2027-10-03 | 2027-10-21 | 1762, 1771FS-8d |  | Sector 43 | 9717876 |
| 1773 | 37300.37500.38800.40800.43100.44000.62700.1210500 | Putty primer coat | 10d | 2027-10-14 | 2027-10-23 | 1772FS-8d |  | Sector 43 | 9717886 |
| 1774 | 37300.37500.38800.40800.43100.44000.62700.1210600 | Prehung door fixing | 8d | 2027-10-19 | 2027-10-26 | 1773FS-5d |  | Sector 43 | 9717896 |
| 1775 | 37300.37500.38800.40800.43100.44000.62700.1210700 | Painting 1st coat | 12d | 2027-10-27 | 2027-12-22 | 1774 |  | Sector 43 | 9717906 |
| 1776 | 37300.37500.38800.40800.43100.44000.62700.1210800 | False Cieling panel fixing | 10d | 2028-02-28 | 2028-03-08 | 1759, 1775 |  | Sector 43 | 9717916 |

| ID | WBS | Task | Duration | Start | Finish | Predecessors | Constraint | Calendar | Unique_Task_ID |
| --- | --- | --- | --- | --- | --- | --- | --- | --- | --- |
| 1777 | 37300.37500.38800.40800.43100.44000.61000 | **27th floor** | 236d | 2027-06-12 | 2028-03-18 |  | start no earlier than 2027-06-12 | Sector 43 | 9698196 |
| 1778 | 37300.37500.38800.40800.43100.44000.61000.1210900 | Block Work | 36d | 2027-06-12 | 2027-07-17 | 1325 |  | Sector 43 | 9717926 |
| 1779 | 37300.37500.38800.40800.43100.44000.61000.1211000 | Installation of temporary Main door | 4d | 2027-07-18 | 2027-07-21 | 1778 |  | Sector 43 | 9717936 |
| 1780 | 37300.37500.38800.40800.43100.44000.61000.1211100 | Fire sprinkler pipe fixing | 10d | 2027-07-18 | 2027-07-27 | 1763, 1778 |  | Sector 43 | 9717946 |
| 1781 | 37300.37500.38800.40800.43100.44000.61000.1211200 | Internal Plumbing Works | 15d | 2027-07-18 | 2027-08-01 | 1778 |  | Sector 43 | 9717956 |
| 1782 | 37300.37500.38800.40800.43100.44000.61000.1211300 | Waterproofing | 21d | 2027-08-02 | 2027-08-22 | 1781 |  | Sector 43 | 9717966 |
| 1783 | 37300.37500.38800.40800.43100.44000.61000.1211400 | Internal Plaster | 15d | 2027-08-02 | 2027-08-16 | 1781 |  | Sector 43 | 9717976 |
| 1784 | 37300.37500.38800.40800.43100.44000.61000.1211500 | IPS flooring work | 13d | 2027-07-18 | 2027-07-30 | 1778 |  | Sector 43 | 9717986 |
| 1785 | 37300.37500.38800.40800.43100.44000.61000.1211600 | Toilet dado work | 25d | 2027-08-21 | 2027-09-14 | 1782FS-2d, 1783 |  | Sector 43 | 9717996 |
| 1786 | 37300.37500.38800.40800.43100.44000.61000.1211700 | Toilet flooring work | 25d | 2027-09-15 | 2027-10-09 | 1785 |  | Sector 43 | 9718006 |
| 1787 | 37300.37500.38800.40800.43100.44000.61000.1211800 | Living dinning flooring | 31d | 2027-09-20 | 2027-10-20 | 1784, 1786FS-20d |  | Sector 43 | 9718016 |
| 1788 | 37300.37500.38800.40800.43100.44000.61000.1211900 | Electrical wiring work | 12d | 2027-10-11 | 2027-10-22 | 1787FS-10d |  | Sector 43 | 9718026 |
| 1789 | 37300.37500.38800.40800.43100.44000.61000.1212000 | Aluminium door-window fixing | 19d | 2027-10-15 | 2027-12-17 | 1779, 1788FS-8d |  | Sector 43 | 9718036 |
| 1790 | 37300.37500.38800.40800.43100.44000.61000.1212100 | Putty primer coat | 10d | 2027-10-26 | 2027-12-19 | 1789FS-8d |  | Sector 43 | 9718046 |
| 1791 | 37300.37500.38800.40800.43100.44000.61000.1212200 | Prehung door fixing | 8d | 2027-10-31 | 2027-12-22 | 1790FS-5d |  | Sector 43 | 9718056 |
| 1792 | 37300.37500.38800.40800.43100.44000.61000.1212300 | Painting 1st coat | 12d | 2027-12-23 | 2028-01-03 | 1791 |  | Sector 43 | 9718066 |
| 1793 | 37300.37500.38800.40800.43100.44000.61000.1212400 | False Cieling panel fixing | 10d | 2028-03-09 | 2028-03-18 | 1776, 1792 |  | Sector 43 | 9718076 |
| 1794 | 37300.37500.38800.40800.43100.44000.60000 | **28th floor** | 232d | 2027-06-26 | 2028-03-28 |  | start no earlier than 2027-06-26 | Sector 43 | 9698206 |
| 1795 | 37300.37500.38800.40800.43100.44000.60000.1212500 | Block Work | 36d | 2027-06-26 | 2027-07-31 | 1326 |  | Sector 43 | 9718086 |
| 1796 | 37300.37500.38800.40800.43100.44000.60000.1212600 | Installation of temporary Main door | 4d | 2027-08-01 | 2027-08-04 | 1795 |  | Sector 43 | 9718096 |
| 1797 | 37300.37500.38800.40800.43100.44000.60000.1212700 | Fire sprinkler pipe fixing | 10d | 2027-08-01 | 2027-08-10 | 1780, 1795 |  | Sector 43 | 9718106 |
| 1798 | 37300.37500.38800.40800.43100.44000.60000.1212800 | Internal Plumbing Works | 15d | 2027-08-01 | 2027-08-15 | 1795 |  | Sector 43 | 9718116 |
| 1799 | 37300.37500.38800.40800.43100.44000.60000.1212900 | Waterproofing | 21d | 2027-08-16 | 2027-09-05 | 1798 |  | Sector 43 | 9718126 |
| 1800 | 37300.37500.38800.40800.43100.44000.60000.1213000 | Internal Plaster | 15d | 2027-08-16 | 2027-08-30 | 1798 |  | Sector 43 | 9718136 |
| 1801 | 37300.37500.38800.40800.43100.44000.60000.1213100 | IPS flooring work | 13d | 2027-08-01 | 2027-08-13 | 1795 |  | Sector 43 | 9718146 |
| 1802 | 37300.37500.38800.40800.43100.44000.60000.1213200 | Toilet dado work | 60d | 2027-09-04 | 2027-12-17 | 1799FS-2d, 1800 |  | Sector 43 | 9718156 |
| 1803 | 37300.37500.38800.40800.43100.44000.60000.1213300 | Toilet flooring work | 25d | 2027-12-18 | 2028-01-11 | 1802 |  | Sector 43 | 9718166 |
| 1804 | 37300.37500.38800.40800.43100.44000.60000.1213400 | Living dinning flooring | 31d | 2027-12-23 | 2028-01-22 | 1801, 1803FS-20d |  | Sector 43 | 9718176 |
| 1805 | 37300.37500.38800.40800.43100.44000.60000.1213500 | Electrical wiring work | 12d | 2028-01-13 | 2028-01-24 | 1804FS-10d |  | Sector 43 | 9718186 |
| 1806 | 37300.37500.38800.40800.43100.44000.60000.1213600 | Aluminium door-window fixing | 19d | 2028-01-17 | 2028-02-04 | 1796, 1805FS-8d |  | Sector 43 | 9718196 |
| 1807 | 37300.37500.38800.40800.43100.44000.60000.1213700 | Putty primer coat | 10d | 2028-01-28 | 2028-02-06 | 1806FS-8d |  | Sector 43 | 9718206 |
| 1808 | 37300.37500.38800.40800.43100.44000.60000.1213800 | Prehung door fixing | 8d | 2028-02-02 | 2028-02-09 | 1807FS-5d |  | Sector 43 | 9718216 |
| 1809 | 37300.37500.38800.40800.43100.44000.60000.1213900 | Painting 1st coat | 12d | 2028-02-10 | 2028-02-21 | 1808 |  | Sector 43 | 9718226 |
| 1810 | 37300.37500.38800.40800.43100.44000.60000.1214000 | False Cieling panel fixing | 10d | 2028-03-19 | 2028-03-28 | 1793, 1809 |  | Sector 43 | 9718236 |

| ID | WBS | Task | Duration | Start | Finish | Predecessors | Constraint | Calendar | Unique_Task_ID |
| --- | --- | --- | --- | --- | --- | --- | --- | --- | --- |
| 1811 | 37300.37500.38800.40800.43100.44000.58100 | **29th floor** | 235d | 2027-07-03 | 2028-04-07 |  | start no earlier than 2027-07-03 | Sector 43 | 9698216 |
| 1812 | 37300.37500.38800.40800.43100.44000.58100.1214100 | Block Work | 36d | 2027-07-03 | 2027-08-07 | 1327 |  | Sector 43 | 9718246 |
| 1813 | 37300.37500.38800.40800.43100.44000.58100.1214200 | Installation of temporary Main door | 4d | 2027-08-08 | 2027-08-11 | 1812 |  | Sector 43 | 9718256 |
| 1814 | 37300.37500.38800.40800.43100.44000.58100.1214300 | Fire sprinkler pipe fixing | 10d | 2027-08-11 | 2027-08-20 | 1797, 1812 |  | Sector 43 | 9718266 |
| 1815 | 37300.37500.38800.40800.43100.44000.58100.1214400 | Internal Plumbing Works | 15d | 2027-08-08 | 2027-08-22 | 1812 |  | Sector 43 | 9718276 |
| 1816 | 37300.37500.38800.40800.43100.44000.58100.1214500 | Waterproofing | 21d | 2027-08-23 | 2027-09-12 | 1815 |  | Sector 43 | 9718286 |
| 1817 | 37300.37500.38800.40800.43100.44000.58100.1214600 | Internal Plaster | 15d | 2027-08-23 | 2027-09-06 | 1815 |  | Sector 43 | 9718296 |
| 1818 | 37300.37500.38800.40800.43100.44000.58100.1214700 | IPS flooring work | 13d | 2027-08-08 | 2027-08-20 | 1812 |  | Sector 43 | 9718306 |
| 1819 | 37300.37500.38800.40800.43100.44000.58100.1214800 | Toilet dado work | 25d | 2027-09-11 | 2027-10-05 | 1816FS-2d, 1817 |  | Sector 43 | 9718316 |
| 1820 | 37300.37500.38800.40800.43100.44000.58100.1214900 | Toilet flooring work | 25d | 2027-10-06 | 2027-10-30 | 1819 |  | Sector 43 | 9718326 |
| 1821 | 37300.37500.38800.40800.43100.44000.58100.1215000 | Living dinning flooring | 31d | 2027-10-11 | 2027-12-25 | 1818, 1820FS-20d |  | Sector 43 | 9718336 |
| 1822 | 37300.37500.38800.40800.43100.44000.58100.1215100 | Electrical wiring work | 12d | 2027-12-16 | 2027-12-27 | 1821FS-10d |  | Sector 43 | 9718346 |
| 1823 | 37300.37500.38800.40800.43100.44000.58100.1215200 | Aluminium door-window fixing | 19d | 2027-12-20 | 2028-01-07 | 1813, 1822FS-8d |  | Sector 43 | 9718356 |
| 1824 | 37300.37500.38800.40800.43100.44000.58100.1215300 | Putty primer coat | 10d | 2027-12-31 | 2028-01-09 | 1823FS-8d |  | Sector 43 | 9718366 |
| 1825 | 37300.37500.38800.40800.43100.44000.58100.1215400 | Prehung door fixing | 8d | 2028-01-05 | 2028-01-12 | 1824FS-5d |  | Sector 43 | 9718376 |
| 1826 | 37300.37500.38800.40800.43100.44000.58100.1215500 | Painting 1st coat | 12d | 2028-01-13 | 2028-01-24 | 1825 |  | Sector 43 | 9718386 |
| 1827 | 37300.37500.38800.40800.43100.44000.58100.1215600 | False Cieling panel fixing | 10d | 2028-03-29 | 2028-04-07 | 1810, 1826 |  | Sector 43 | 9718396 |
| 1828 | 37300.37500.38800.40800.43100.44000.58000 | **30th floor** | 238d | 2027-07-10 | 2028-04-17 |  | start no earlier than 2027-07-10 | Sector 43 | 9698226 |
| 1829 | 37300.37500.38800.40800.43100.44000.58000.1215700 | Block Work | 36d | 2027-07-10 | 2027-08-14 | 1328 |  | Sector 43 | 9718406 |
| 1830 | 37300.37500.38800.40800.43100.44000.58000.1215800 | Installation of temporary Main door | 4d | 2027-08-15 | 2027-08-18 | 1829 |  | Sector 43 | 9718416 |
| 1831 | 37300.37500.38800.40800.43100.44000.58000.1215900 | Fire sprinkler pipe fixing | 10d | 2027-08-21 | 2027-08-30 | 1814, 1829 |  | Sector 43 | 9718426 |
| 1832 | 37300.37500.38800.40800.43100.44000.58000.1216000 | Internal Plumbing Works | 15d | 2027-08-15 | 2027-08-29 | 1829 |  | Sector 43 | 9718436 |
| 1833 | 37300.37500.38800.40800.43100.44000.58000.1216100 | Waterproofing | 21d | 2027-08-30 | 2027-09-19 | 1832 |  | Sector 43 | 9718446 |
| 1834 | 37300.37500.38800.40800.43100.44000.58000.1216200 | Internal Plaster | 15d | 2027-08-30 | 2027-09-13 | 1832 |  | Sector 43 | 9718456 |
| 1835 | 37300.37500.38800.40800.43100.44000.58000.1216300 | IPS flooring work | 13d | 2027-08-15 | 2027-08-27 | 1829 |  | Sector 43 | 9718466 |
| 1836 | 37300.37500.38800.40800.43100.44000.58000.1216400 | Toilet dado work | 25d | 2027-09-18 | 2027-10-12 | 1833FS-2d, 1834 |  | Sector 43 | 9718476 |
| 1837 | 37300.37500.38800.40800.43100.44000.58000.1216500 | Toilet flooring work | 25d | 2027-10-13 | 2027-12-21 | 1836 |  | Sector 43 | 9718486 |
| 1838 | 37300.37500.38800.40800.43100.44000.58000.1216600 | Living dinning flooring | 31d | 2027-10-18 | 2028-01-01 | 1835, 1837FS-20d |  | Sector 43 | 9718496 |
| 1839 | 37300.37500.38800.40800.43100.44000.58000.1216700 | Electrical wiring work | 12d | 2027-12-23 | 2028-01-03 | 1838FS-10d |  | Sector 43 | 9718506 |
| 1840 | 37300.37500.38800.40800.43100.44000.58000.1216800 | Aluminium door-window fixing | 19d | 2027-12-27 | 2028-01-14 | 1830, 1839FS-8d |  | Sector 43 | 9718516 |
| 1841 | 37300.37500.38800.40800.43100.44000.58000.1216900 | Putty primer coat | 10d | 2028-01-07 | 2028-01-16 | 1840FS-8d |  | Sector 43 | 9718526 |
| 1842 | 37300.37500.38800.40800.43100.44000.58000.1217000 | Prehung door fixing | 8d | 2028-01-12 | 2028-01-19 | 1841FS-5d |  | Sector 43 | 9718536 |
| 1843 | 37300.37500.38800.40800.43100.44000.58000.1217100 | Painting 1st coat | 12d | 2028-01-20 | 2028-01-31 | 1842 |  | Sector 43 | 9718546 |
| 1844 | 37300.37500.38800.40800.43100.44000.58000.1217200 | False Cieling panel fixing | 10d | 2028-04-08 | 2028-04-17 | 1827, 1843 |  | Sector 43 | 9718556 |

| ID | WBS | Task | Duration | Start | Finish | Predecessors | Constraint | Calendar | Unique_Task_ID |
| --- | --- | --- | --- | --- | --- | --- | --- | --- | --- |
| 1845 | 37300.37500.38800.40800.43100.44000.57900 | **31st Floor** | 241d | 2027-07-17 | 2028-04-27 |  | start no earlier than 2027-07-17 | Sector 43 | 9698236 |
| 1846 | 37300.37500.38800.40800.43100.44000.57900.1217300 | Block Work | 37d | 2027-07-17 | 2027-08-22 | 1329 |  | Sector 43 | 9718566 |
| 1847 | 37300.37500.38800.40800.43100.44000.57900.1217400 | Installation of temporary Main door | 4d | 2027-08-23 | 2027-08-26 | 1846 |  | Sector 43 | 9718576 |
| 1848 | 37300.37500.38800.40800.43100.44000.57900.1217500 | Fire sprinkler pipe fixing | 10d | 2027-08-31 | 2027-09-09 | 1831, 1846 |  | Sector 43 | 9718586 |
| 1849 | 37300.37500.38800.40800.43100.44000.57900.1217600 | Internal Plumbing Works | 15d | 2027-08-23 | 2027-09-06 | 1846 |  | Sector 43 | 9718596 |
| 1850 | 37300.37500.38800.40800.43100.44000.57900.1217700 | Waterproofing | 21d | 2027-09-07 | 2027-09-27 | 1849 |  | Sector 43 | 9718606 |
| 1851 | 37300.37500.38800.40800.43100.44000.57900.1217800 | Internal Plaster | 15d | 2027-09-07 | 2027-09-21 | 1849 |  | Sector 43 | 9718616 |
| 1852 | 37300.37500.38800.40800.43100.44000.57900.1217900 | IPS flooring work | 13d | 2027-08-23 | 2027-09-04 | 1846 |  | Sector 43 | 9718626 |
| 1853 | 37300.37500.38800.40800.43100.44000.57900.1218000 | Toilet dado work | 25d | 2027-09-26 | 2027-10-20 | 1850FS-2d, 1851 |  | Sector 43 | 9718636 |
| 1854 | 37300.37500.38800.40800.43100.44000.57900.1218100 | Toilet flooring work | 25d | 2027-10-21 | 2027-12-29 | 1853 |  | Sector 43 | 9718646 |
| 1855 | 37300.37500.38800.40800.43100.44000.57900.1218200 | Living dinning flooring | 31d | 2027-10-26 | 2028-01-09 | 1852, 1854FS-20d |  | Sector 43 | 9718656 |
| 1856 | 37300.37500.38800.40800.43100.44000.57900.1218300 | Electrical wiring work | 12d | 2027-12-31 | 2028-01-11 | 1855FS-10d |  | Sector 43 | 9718666 |
| 1857 | 37300.37500.38800.40800.43100.44000.57900.1218400 | Aluminium door-window fixing | 19d | 2028-01-04 | 2028-01-22 | 1847, 1856FS-8d |  | Sector 43 | 9718676 |
| 1858 | 37300.37500.38800.40800.43100.44000.57900.1218500 | Putty primer coat | 10d | 2028-01-15 | 2028-01-24 | 1857FS-8d |  | Sector 43 | 9718686 |
| 1859 | 37300.37500.38800.40800.43100.44000.57900.1218600 | Prehung door fixing | 8d | 2028-01-20 | 2028-01-27 | 1858FS-5d |  | Sector 43 | 9718696 |
| 1860 | 37300.37500.38800.40800.43100.44000.57900.1218700 | Painting 1st coat | 12d | 2028-01-28 | 2028-02-08 | 1859 |  | Sector 43 | 9718706 |
| 1861 | 37300.37500.38800.40800.43100.44000.57900.1218800 | False Cieling panel fixing | 10d | 2028-04-18 | 2028-04-27 | 1844, 1860 |  | Sector 43 | 9718716 |
| 1862 | 37300.37500.38800.40800.43100.224200 | **Terrace finishing** | 100d | 2028-03-08 | 2028-06-15 |  | start no earlier than 2028-03-08 | Sector 43 | 9700516 |
| 1863 | 37300.37500.38800.40800.43100.224200.881600 | Terrace waterproofing | 40d | 2028-03-08 | 2028-04-16 | 1946FS+10d, 1331 |  | Sector 43 | 9703506 |
| 1864 | 37300.37500.38800.40800.43100.224200.881700 | Terrace finishing | 60d | 2028-04-17 | 2028-06-15 | 1863 |  | Sector 43 | 9703516 |
| 1865 | 37300.37500.38800.40800.43100.117200 | **Common area finishing** | 274d | 2027-07-14 | 2028-05-27 |  | start no earlier than 2027-07-14 | Sector 43 | 9698646 |
| 1866 | 37300.37500.38800.40800.43100.117200.881800 | Masonary Work | 60d | 2027-07-14 | 2027-09-11 | 1292 |  | Sector 43 | 9703526 |
| 1867 | 37300.37500.38800.40800.43100.117200.881900 | Fire sprinkler pipe fixing | 90d | 2027-07-24 | 2027-10-21 | 1292FS+10d |  | Sector 43 | 9703536 |
| 1868 | 37300.37500.38800.40800.43100.117200.882000 | Corridoor, staircase, shaft Plaster & whitewash | 90d | 2027-09-02 | 2028-01-14 | 1866FS-10d |  | Sector 43 | 9703546 |
| 1869 | 37300.37500.38800.40800.43100.117200.882100 | Staircase railing fixing | 45d | 2027-08-23 | 2027-10-06 | 1866FS-20d |  | Sector 43 | 9703556 |
| 1870 | 37300.37500.38800.40800.43100.117200.882200 | Fire staircase flooring | 60d | 2027-09-17 | 2027-12-30 | 1869FS-20d |  | Sector 43 | 9703566 |
| 1871 | 37300.37500.38800.40800.43100.117200.882300 | Main staircase flooring | 60d | 2027-09-17 | 2027-12-30 | 1869FS-20d |  | Sector 43 | 9703576 |
| 1872 | 37300.37500.38800.40800.43100.117200.882400 | Fire door work | 45d | 2027-10-17 | 2028-01-14 | 1870FS-30d |  | Sector 43 | 9703586 |
| 1873 | 37300.37500.38800.40800.43100.117200.882500 | Lobby flooring & Corridor | 114d | 2027-09-27 | 2028-03-03 | 1871FS-50d |  | Sector 43 | 9703596 |
| 1874 | 37300.37500.38800.40800.43100.117200.882600 | Ceiling & wall putty-primer | 60d | 2028-01-19 | 2028-03-18 | 1873FS-45d |  | Sector 43 | 9703606 |
| 1875 | 37300.37500.38800.40800.43100.117200.882700 | Ceiling & wall painting | 90d | 2028-02-03 | 2028-05-02 | 1874FS-45d |  | Sector 43 | 9703616 |
| 1876 | 37300.37500.38800.40800.43100.117200.882800 | Electrical wiring work | 60d | 2028-03-09 | 2028-05-07 | 1874FS-10d |  | Sector 43 | 9703626 |
| 1877 | 37300.37500.38800.40800.43100.117200.882900 | Light fixture supply & installation | 30d | 2028-04-28 | 2028-05-27 | 1876FS-10d |  | Sector 43 | 9703636 |
| 1878 | 37300.37500.38800.40800.43100.117200.883000 | Installation of fire signages including Basements | 30d | 2028-04-23 | 2028-05-22 | 1875FS-10d |  | Sector 43 | 9703646 |

| ID | WBS | Task | Duration | Start | Finish | Predecessors | Constraint | Calendar | Unique_Task_ID |
| --- | --- | --- | --- | --- | --- | --- | --- | --- | --- |
| 1879 | 37300.37500.38800.40800.43100.49800 | **Balcony Glass Railing** | 217d | 2026-09-29 | 2027-06-17 |  | start no earlier than 2026-09-29 | Sector 43 | 9697596 |
| 1880 | 37300.37500.38800.40800.43100.49800.883100 | 1st Floor | 7d | 2026-09-29 | 2026-10-05 | 1335FS+90d |  | Sector 43 | 9703656 |
| 1881 | 37300.37500.38800.40800.43100.49800.883200 | 2nd Floor | 7d | 2026-10-06 | 2026-10-12 | 1880 |  | Sector 43 | 9703666 |
| 1882 | 37300.37500.38800.40800.43100.49800.883300 | 3rd Floor | 7d | 2026-10-13 | 2026-10-19 | 1881 |  | Sector 43 | 9703676 |
| 1883 | 37300.37500.38800.40800.43100.49800.883400 | 4th Floor | 7d | 2026-10-20 | 2026-10-26 | 1882 |  | Sector 43 | 9703686 |
| 1884 | 37300.37500.38800.40800.43100.49800.883500 | 5th Floor | 7d | 2026-10-27 | 2026-12-17 | 1883 |  | Sector 43 | 9703696 |
| 1885 | 37300.37500.38800.40800.43100.49800.883600 | 6th Floor | 7d | 2026-12-18 | 2026-12-24 | 1884 |  | Sector 43 | 9703706 |
| 1886 | 37300.37500.38800.40800.43100.49800.883700 | 7th Floor | 7d | 2026-12-25 | 2026-12-31 | 1885 |  | Sector 43 | 9703716 |
| 1887 | 37300.37500.38800.40800.43100.49800.883800 | 8th Floor | 7d | 2027-01-01 | 2027-01-07 | 1886 |  | Sector 43 | 9703726 |
| 1888 | 37300.37500.38800.40800.43100.49800.883900 | 9th Floor | 7d | 2027-01-08 | 2027-01-14 | 1887 |  | Sector 43 | 9703736 |
| 1889 | 37300.37500.38800.40800.43100.49800.884000 | 10th Floor | 7d | 2027-01-15 | 2027-01-21 | 1888 |  | Sector 43 | 9703746 |
| 1890 | 37300.37500.38800.40800.43100.49800.884100 | 11th Floor | 7d | 2027-01-22 | 2027-01-28 | 1889 |  | Sector 43 | 9703756 |
| 1891 | 37300.37500.38800.40800.43100.49800.884200 | 12th Floor | 7d | 2027-01-29 | 2027-02-04 | 1890 |  | Sector 43 | 9703766 |
| 1892 | 37300.37500.38800.40800.43100.49800.884300 | 13th Floor | 7d | 2027-02-05 | 2027-02-11 | 1891 |  | Sector 43 | 9703776 |
| 1893 | 37300.37500.38800.40800.43100.49800.884400 | 14th Floor | 7d | 2027-02-12 | 2027-02-18 | 1892 |  | Sector 43 | 9703786 |
| 1894 | 37300.37500.38800.40800.43100.49800.884500 | 15th Floor | 7d | 2027-02-19 | 2027-02-25 | 1893 |  | Sector 43 | 9703796 |
| 1895 | 37300.37500.38800.40800.43100.49800.884600 | 16th Floor | 7d | 2027-02-26 | 2027-03-04 | 1894 |  | Sector 43 | 9703806 |
| 1896 | 37300.37500.38800.40800.43100.49800.884700 | 17th Floor | 7d | 2027-03-05 | 2027-03-11 | 1895 |  | Sector 43 | 9703816 |
| 1897 | 37300.37500.38800.40800.43100.49800.884800 | 18th Floor | 7d | 2027-03-12 | 2027-03-18 | 1896 |  | Sector 43 | 9703826 |
| 1898 | 37300.37500.38800.40800.43100.49800.884900 | 19th Floor | 7d | 2027-03-19 | 2027-03-25 | 1897 |  | Sector 43 | 9703836 |
| 1899 | 37300.37500.38800.40800.43100.49800.885000 | 20th Floor | 7d | 2027-03-26 | 2027-04-01 | 1898 |  | Sector 43 | 9703846 |
| 1900 | 37300.37500.38800.40800.43100.49800.885100 | 21st Floor | 7d | 2027-04-02 | 2027-04-08 | 1899 |  | Sector 43 | 9703856 |
| 1901 | 37300.37500.38800.40800.43100.49800.885200 | 22nd Floor | 7d | 2027-04-09 | 2027-04-15 | 1900 |  | Sector 43 | 9703866 |
| 1902 | 37300.37500.38800.40800.43100.49800.885300 | 23rd Floor | 7d | 2027-04-16 | 2027-04-22 | 1901 |  | Sector 43 | 9703876 |
| 1903 | 37300.37500.38800.40800.43100.49800.885400 | 24th Floor | 7d | 2027-04-23 | 2027-04-29 | 1902 |  | Sector 43 | 9703886 |
| 1904 | 37300.37500.38800.40800.43100.49800.885500 | 25th Floor | 7d | 2027-04-30 | 2027-05-06 | 1903 |  | Sector 43 | 9703896 |
| 1905 | 37300.37500.38800.40800.43100.49800.885600 | 26th Floor | 7d | 2027-05-07 | 2027-05-13 | 1904 |  | Sector 43 | 9703906 |
| 1906 | 37300.37500.38800.40800.43100.49800.885700 | 27th Floor | 7d | 2027-05-14 | 2027-05-20 | 1905 |  | Sector 43 | 9703916 |
| 1907 | 37300.37500.38800.40800.43100.49800.885800 | 28th Floor | 7d | 2027-05-21 | 2027-05-27 | 1906 |  | Sector 43 | 9703926 |
| 1908 | 37300.37500.38800.40800.43100.49800.885900 | 29th Floor | 7d | 2027-05-28 | 2027-06-03 | 1907 |  | Sector 43 | 9703936 |
| 1909 | 37300.37500.38800.40800.43100.49800.886000 | 30th Floor | 7d | 2027-06-04 | 2027-06-10 | 1908 |  | Sector 43 | 9703946 |
| 1910 | 37300.37500.38800.40800.43100.49800.886100 | 31st Floor | 7d | 2027-06-11 | 2027-06-17 | 1909 |  | Sector 43 | 9703956 |

| ID | WBS | Task | Duration | Start | Finish | Predecessors | Constraint | Calendar | Unique_Task_ID |
| --- | --- | --- | --- | --- | --- | --- | --- | --- | --- |
| 1911 | 37300.37500.38800.40800.116400 | **MEP work** | 540d | 2026-12-31 | 2028-08-06 |  | start no earlier than 2026-12-31 | Sector 43 | 9698676 |
| 1912 | 37300.37500.38800.40800.116400.124000 | **Electrical work** | 533d | 2026-12-31 | 2028-07-30 |  | start no earlier than 2026-12-31 | Sector 43 | 9698756 |
| 1913 | 37300.37500.38800.40800.116400.124000.886200 | Cable Tray | 90d | 2026-12-31 | 2027-03-30 | 1232FS-30d |  | Sector 43 | 9703966 |
| 1914 | 37300.37500.38800.40800.116400.124000.886300 | Cable, main & sub main | 90d | 2027-06-29 | 2027-09-26 | 1913FS+90d |  | Sector 43 | 9703976 |
| 1915 | 37300.37500.38800.40800.116400.124000.886400 | LT panel & DB | 90d | 2027-03-31 | 2027-06-28 | 1913 |  | Sector 43 | 9703986 |
| 1916 | 37300.37500.38800.40800.116400.124000.886500 | Earthing Works | 60d | 2027-03-31 | 2027-05-29 | 1913 |  | Sector 43 | 9703996 |
| 1917 | 37300.37500.38800.40800.116400.124000.886600 | Advanced Lightening Protection system | 45d | 2027-05-05 | 2027-06-18 | 1916FS-25d |  | Sector 43 | 9704006 |
| 1918 | 37300.37500.38800.40800.116400.124000.886700 | Energy meter | 60d | 2027-09-27 | 2028-01-09 | 1914 |  | Sector 43 | 9704016 |
| 1919 | 37300.37500.38800.40800.116400.124000.886800 | Inverter / UPS | 70d | 2028-01-05 | 2028-03-14 | 1914, 1915, 1918FS-5d |  | Sector 43 | 9704026 |
| 1920 | 37300.37500.38800.40800.116400.124000.886900 | HVAC & Exhast fan | 120d | 2027-03-31 | 2027-07-28 | 1913 |  | Sector 43 | 9704036 |
| 1921 | 37300.37500.38800.40800.116400.124000.887000 | FTTH | 45d | 2027-06-04 | 2027-07-18 | 1915FS-25d |  | Sector 43 | 9704046 |
| 1922 | 37300.37500.38800.40800.116400.124000.887100 | Security System - FA & PA | 45d | 2027-06-04 | 2027-07-18 | 1915FS-25d |  | Sector 43 | 9704056 |
| 1923 | 37300.37500.38800.40800.116400.124000.887200 | T&C of complete system | 64d | 2028-05-28 | 2028-07-30 | 1877, 1915, 1917, 1918, 1919, 1920, 1921, 1922 |  | Sector 43 | 9704066 |
| 1924 | 37300.37500.38800.40800.116400.134400 | **Plumbing work** | 332d | 2027-07-27 | 2028-08-06 |  | start no earlier than 2027-07-27 | Sector 43 | 9699016 |
| 1925 | 37300.37500.38800.40800.116400.134400.887300 | Terrace looping | 45d | 2027-07-27 | 2027-09-09 | 1330 |  | Sector 43 | 9704076 |
| 1926 | 37300.37500.38800.40800.116400.134400.887400 | Shaft Plumbing | 120d | 2027-12-16 | 2028-04-13 | 1868FS-30d, 1925 |  | Sector 43 | 9704086 |
| 1927 | 37300.37500.38800.40800.116400.134400.887500 | CP sanitary fixture supply | 45d | 2028-04-14 | 2028-05-28 | 1926 |  | Sector 43 | 9704096 |
| 1928 | 37300.37500.38800.40800.116400.134400.887600 | Cold & flushing water supply | 45d | 2028-04-14 | 2028-05-28 | 1926 |  | Sector 43 | 9704106 |
| 1929 | 37300.37500.38800.40800.116400.134400.887700 | Misc work | 30d | 2028-05-09 | 2028-06-07 | 1928FS-20d |  | Sector 43 | 9704116 |
| 1930 | 37300.37500.38800.40800.116400.134400.887800 | Installation of PHE pumps | 60d | 2027-09-10 | 2027-12-23 | 1925 |  | Sector 43 | 9704126 |
| 1931 | 37300.37500.38800.40800.116400.134400.887900 | T&C of complete system | 60d | 2028-06-08 | 2028-08-06 | 1925, 1926, 1928, 1929, 1930 |  | Sector 43 | 9704136 |
| 1932 | 37300.37500.38800.40800.116400.141900 | **Fire fighting work** | 210d | 2027-12-16 | 2028-07-12 |  | start no earlier than 2027-12-16 | Sector 43 | 9699046 |
| 1933 | 37300.37500.38800.40800.116400.141900.888000 | Fire hydrant work | 90d | 2027-12-16 | 2028-03-14 | 1868FS-30d |  | Sector 43 | 9704146 |
| 1934 | 37300.37500.38800.40800.116400.141900.888100 | Pipe connection & sprinkler installation | 60d | 2028-03-15 | 2028-05-13 | 1933 |  | Sector 43 | 9704156 |
| 1935 | 37300.37500.38800.40800.116400.141900.888200 | Shaft Downtake works | 90d | 2027-12-16 | 2028-03-14 | 1330, 1868FS-30d |  | Sector 43 | 9704166 |
| 1936 | 37300.37500.38800.40800.116400.141900.888300 | Connection to pump room | 45d | 2028-03-15 | 2028-04-28 | 1935 |  | Sector 43 | 9704176 |
| 1937 | 37300.37500.38800.40800.116400.141900.888400 | Installation of FF pumps | 60d | 2028-03-15 | 2028-05-13 | 1933, 1935 |  | Sector 43 | 9704186 |
| 1938 | 37300.37500.38800.40800.116400.141900.888500 | T&C of complete system | 60d | 2028-05-14 | 2028-07-12 | 1867, 1872, 1878FS-20d, 1934, 1936, 1937, 1848 |  | Sector 43 | 9704196 |

| ID | WBS | Task | Duration | Start | Finish | Predecessors | Complete | Constraint | Calendar | Unique_Task_ID |
| --- | --- | --- | --- | --- | --- | --- | --- | --- | --- | --- |
| 1939 | 37300.37500.38800.40800.116400.217700 | **Lift work** | 99d | 2027-08-28 | 2028-01-18 |  |  | start no earlier than 2027-08-28 | Sector 43 | 9700296 |
| 1940 | 37300.37500.38800.40800.116400.217700.888600 | Lift Shaft/Pit Handover | 30d | 2027-08-28 | 2027-09-26 | 1297 |  |  | Sector 43 | 9704206 |
| 1941 | 37300.37500.38800.40800.116400.217700.888700 | Lift installation work | 50d | 2027-09-16 | 2027-12-19 | 1940FS-11d |  |  | Sector 43 | 9704216 |
| 1942 | 37300.37500.38800.40800.116400.217700.888800 | Lift testing and commissioning | 30d | 2027-12-20 | 2028-01-18 | 1941 |  |  | Sector 43 | 9704226 |
| 1943 | 37300.37500.38800.40800.216600 | **External Paint Works** | 170d | 2027-07-27 | 2028-02-26 |  |  | start no earlier than 2027-07-27 | Sector 43 | 9699726 |
| 1944 | 37300.37500.38800.40800.216600.417100 | Surface prepration | 70d | 2027-07-27 | 2027-10-04 | 1330 |  |  | Sector 43 | 9701206 |
| 1945 | 37300.37500.38800.40800.216600.417200 | External Painting (Primer, texture & first coat) | 90d | 2027-10-05 | 2028-02-16 | 1944 |  |  | Sector 43 | 9701216 |
| 1946 | 37300.37500.38800.40800.216600.417300 | Final coat of painting | 80d | 2027-10-25 | 2028-02-26 | 1945FS-70d |  |  | Sector 43 | 9701226 |
| 1947 | 37300.37500.38800.40800.216600.417400 | Misc. work | 50d | 2027-10-05 | 2028-01-07 | 1944 |  |  | Sector 43 | 9701236 |
| 1948 | 37300.37500.38800.40800.322100 | OC Application/Readiness | 1d | 2028-06-25 | 2028-06-25 | 1910FS-45d, 1923FS-43d, 1931FS-43d, 1938FS-35d, 1942FS-40d, 1864FS-30d, 1870, 1871, 1873, 1861 |  |  | Sector 43 | 9700756 |
| 1949 | 37300.37500.38800.40800.322200 | OC Receipt | 30d | 2028-06-26 | 2028-07-25 | 1948, 1120, 1121, 1129, 1130 |  |  | Sector 43 | 9700766 |
| 1950 | 37300.37500.38800.40800.143800 | **Post OC Activities** | 205d | 2028-06-26 | 2029-03-02 |  |  | start no earlier than 2028-06-26 | Sector 43 | 9699136 |
| 1951 | 37300.37500.38800.40800.143800.417500 | CP & Sanitaryware installation | 120d | 2028-06-26 | 2028-10-23 | 1949FS-30d, 1927 |  |  | Sector 43 | 9701246 |
| 1952 | 37300.37500.38800.40800.143800.417600 | Electrical Fixtures And Fittings installations | 120d | 2028-06-26 | 2028-10-23 | 1949FS-30d |  |  | Sector 43 | 9701256 |
| 1953 | 37300.37500.38800.40800.143800.417700 | Final Coat Paint Internal | 90d | 2028-06-26 | 2028-09-23 | 1949FS-30d |  |  | Sector 43 | 9701266 |
| 1954 | 37300.37500.38800.40800.143800.417800 | Split AC Units installation | 100d | 2028-10-09 | 2029-03-02 | 1953FS+15d |  |  | Sector 43 | 9701276 |
| 1955 | 37300.37500.38800.40800.143800.417900 | Wooden Flooring | 180d | 2028-06-26 | 2029-02-05 | 1949FS-30d |  |  | Sector 43 | 9701286 |
| 1956 | 37300.37500.38800.40800.322300 | Offer to possession | 150d | 2029-03-03 | 2029-07-30 | 1949FS+120d, 1947, 1951, 1952, 1954, 1955 |  |  | Sector 43 | 9700776 |
| 1957 | 37300.37500.38800.40000 | **Tower C (2B+G+32)** | 1429d | 2025-05-26 | 2029-09-06 |  |  | start no earlier than 2025-05-26 | Sector 43 | 9697396 |
| 1958 | 37300.37500.38800.40000.64300 | **Sub structure Works** | 425d | 2025-05-26 | 2026-07-25 |  | 12% | start no earlier than 2025-05-26 | Sector 43 | 9698566 |
| 1959 | 37300.37500.38800.40000.64300.209900 | **Soil bed preparation** | 23.6d | 2025-05-26 | 2025-06-18 |  | 100% | start no earlier than 2025-05-26 | Sector 43 | 9700286 |
| 1960 | 37300.37500.38800.40000.64300.209900.237400 | Surface dressing | 1d | 2025-05-26 | 2025-06-02 | 66 | 100% | start no earlier than 2025-05-26 | Sector 43 | 9704236 |
| 1961 | 37300.37500.38800.40000.64300.209900.237500 | ATT | 5d | 2025-06-02 | 2025-06-06 | 1960 | 100% | start no earlier than 2025-06-02 | Sector 43 | 9704246 |
| 1962 | 37300.37500.38800.40000.64300.209900.237600 | PCC | 8d | 2025-06-01 | 2025-06-18 | 1961 | 100% | start no earlier than 2025-06-01 | Sector 43 | 9704256 |

| ID | WBS | Task | Duration | Start | Finish | Predecessors | Complete | Constraint | Calendar | Unique_Task_ID |
| --- | --- | --- | --- | --- | --- | --- | --- | --- | --- | --- |
| 1963 | 37300.37500.38800.40000.64300.124100 | **RCC works** | 206d | 2025-07-04 | 2026-01-26 |  | 32% | start no earlier than 2025-07-04 | Sector 43 | 9698786 |
| 1964 | 37300.37500.38800.40000.64300.124100.127500 | **Raft including B2 slab (234.150 AMSL)** | 194d | 2025-07-04 | 2026-01-14 |  | 39% | start no earlier than 2025-07-04 | Sector 43 | 9698866 |
| 1965 | 37300.37500.38800.40000.64300.124100.127500.248100 | Reinforcement | 22d | 2025-07-04 | 2025-08-14 | 1962FS-1d | 100% | start no earlier than 2025-07-04 | Sector 43 | 9718726 |
| 1966 | 37300.37500.38800.40000.64300.124100.127500.248000 | Shuttering | 14d | 2025-07-06 | 2025-08-17 | 1965FS-40d | 100% | start no earlier than 2025-07-06 | Sector 43 | 9718736 |
| 1967 | 37300.37500.38800.40000.64300.124100.127500.247900 | Concreting of Raft | 2d | 2025-08-01 | 2025-08-25 | 1966FS-27d | 100% | start no earlier than 2025-08-01 | Sector 43 | 9718746 |
| 1968 | 37300.37500.38800.40000.64300.124100.127500.247800 | Column till bottom of B2 slab (stitch slab) | 5d | 2025-08-25 | 2025-08-29 | 1967FS-24.6d | 100% | start no earlier than 2025-08-25 | Sector 43 | 9718756 |
| 1969 | 37300.37500.38800.40000.64300.124100.127500.247700 | Backfilling till bottom of B2 slab | 3d | 2025-08-28 | 2025-08-30 | 1968 | 100% | start no earlier than 2025-08-28 | Sector 43 | 9718766 |
| 1970 | 37300.37500.38800.40000.64300.124100.127500.247600 | Reinforcement | 55d | 2025-08-20 | 2026-01-14 | 1969FS-15d | 16% | start no earlier than 2025-08-20 | Sector 43 | 9718776 |
| 1971 | 37300.37500.38800.40000.64300.124100.127500.247500 | Shuttering | 55d | 2025-09-08 | 2025-12-18 | 1970FS-147d | 14% | start no earlier than 2025-09-08 | Sector 43 | 9718786 |
| 1972 | 37300.37500.38800.40000.64300.124100.127500.247400 | Concreting of B2 Slab | 6d | 2025-08-23 | 2025-12-22 | 1971FS-117d | 16% |  | Sector 43 | 9718796 |
| 1973 | 37300.37500.38800.40000.64300.124100.206400 | **B1 slab (238.050 AMSL)** | 113d | 2025-08-31 | 2025-12-22 |  | 36% | start no earlier than 2025-08-31 | Sector 43 | 9700226 |
| 1974 | 37300.37500.38800.40000.64300.124100.206400.247300 | Shuttering | 44d | 2025-08-31 | 2025-12-20 | 1972FS-113d | 50% | start no earlier than 2025-08-31 | Sector 43 | 9718806 |
| 1975 | 37300.37500.38800.40000.64300.124100.206400.247200 | Reinforcement | 62d | 2025-09-03 | 2025-12-21 | 1974FS-108d | 19% | start no earlier than 2025-09-03 | Sector 43 | 9718816 |
| 1976 | 37300.37500.38800.40000.64300.124100.206400.247100 | Concreting | 11d | 2025-09-14 | 2025-12-22 | 1975FS-98d | 81% | start no earlier than 2025-09-14 | Sector 43 | 9718826 |
| 1977 | 37300.37500.38800.40000.64300.124100.217500 | **Ground Floor Slab / NTA top - 243.850 AMSL** | 35d | 2025-12-23 | 2026-01-26 |  |  | start no earlier than 2025-12-23 | Sector 43 | 9700216 |
| 1978 | 37300.37500.38800.40000.64300.124100.217500.1218900 | Shuttering | 27d | 2025-12-23 | 2026-01-18 | 1976 |  |  | Sector 43 | 9718836 |
| 1979 | 37300.37500.38800.40000.64300.124100.217500.1219000 | Reinforcement | 23d | 2026-01-04 | 2026-01-26 | 1978FS-15d |  |  | Sector 43 | 9718846 |
| 1980 | 37300.37500.38800.40000.64300.124100.217500.1219100 | Concreting | 2d | 2026-01-25 | 2026-01-26 | 1979FS-2d |  |  | Sector 43 | 9718856 |
| 1981 | 37300.37500.38800.40000.64300.124200 | **Sub structure finishing works** | 170d | 2026-02-06 | 2026-07-25 |  |  | start no earlier than 2026-02-06 | Sector 43 | 9698766 |
| 1982 | 37300.37500.38800.40000.64300.124200.127600 | **Basement 2** | 135d | 2026-02-06 | 2026-06-20 |  |  | start no earlier than 2026-02-06 | Sector 43 | 9698946 |
| 1983 | 37300.37500.38800.40000.64300.124200.127600.1219200 | Masonary | 30d | 2026-02-06 | 2026-03-07 | 1976FS+45d |  |  | Sector 43 | 9718866 |
| 1984 | 37300.37500.38800.40000.64300.124200.127600.1219300 | Structural steel | 30d | 2026-02-06 | 2026-03-07 | 1976FS+45d |  |  | Sector 43 | 9718876 |
| 1985 | 37300.37500.38800.40000.64300.124200.127600.1219400 | Plaster | 30d | 2026-03-08 | 2026-04-06 | 1983, 1984 |  |  | Sector 43 | 9718886 |
| 1986 | 37300.37500.38800.40000.64300.124200.127600.1219500 | White wash | 30d | 2026-04-07 | 2026-05-06 | 1985 |  |  | Sector 43 | 9718896 |
| 1987 | 37300.37500.38800.40000.64300.124200.127600.1219600 | VDF | 60d | 2026-02-21 | 2026-04-21 | 1985FS-45d |  |  | Sector 43 | 9718906 |
| 1988 | 37300.37500.38800.40000.64300.124200.127600.1219700 | Drain & Sump (incl. gratings) | 60d | 2026-03-23 | 2026-05-21 | 1987FS-30d |  |  | Sector 43 | 9718916 |
| 1989 | 37300.37500.38800.40000.64300.124200.127600.1219800 | Car parking marking | 30d | 2026-05-22 | 2026-06-20 | 1986FS-15d, 1988 |  |  | Sector 43 | 9718926 |
| 1990 | 37300.37500.38800.40000.64300.124200.127600.1219900 | Signages | 30d | 2026-04-27 | 2026-05-26 | 1986FS-10d |  |  | Sector 43 | 9718936 |

| ID | WBS | Task | Duration | Start | Finish | Predecessors | Constraint | Calendar | Unique_Task_ID |
| --- | --- | --- | --- | --- | --- | --- | --- | --- | --- |
| 1991 | 37300.37500.38800.40000.64300.124200.127700 | **Basement 1** | 135d | 2026-03-13 | 2026-07-25 |  | start no earlier than 2026-03-13 | Sector 43 | 9698986 |
| 1992 | 37300.37500.38800.40000.64300.124200.127700.1220000 | Masonary | 30d | 2026-03-13 | 2026-04-11 | 1980FS+45d |  | Sector 43 | 9718946 |
| 1993 | 37300.37500.38800.40000.64300.124200.127700.1220100 | Structural steel | 30d | 2026-03-13 | 2026-04-11 | 1980FS+45d |  | Sector 43 | 9718956 |
| 1994 | 37300.37500.38800.40000.64300.124200.127700.1220200 | Plaster | 30d | 2026-04-12 | 2026-05-11 | 1992, 1993 |  | Sector 43 | 9718966 |
| 1995 | 37300.37500.38800.40000.64300.124200.127700.1220300 | White wash | 30d | 2026-05-12 | 2026-06-10 | 1994 |  | Sector 43 | 9718976 |
| 1996 | 37300.37500.38800.40000.64300.124200.127700.1220400 | VDF | 60d | 2026-03-28 | 2026-05-26 | 1994FS-45d |  | Sector 43 | 9718986 |
| 1997 | 37300.37500.38800.40000.64300.124200.127700.1220500 | Drain & Sump (incl. gratings) | 60d | 2026-04-27 | 2026-06-25 | 1996FS-30d |  | Sector 43 | 9718996 |
| 1998 | 37300.37500.38800.40000.64300.124200.127700.1220600 | Car parking marking | 30d | 2026-06-26 | 2026-07-25 | 1995FS-15d, 1997 |  | Sector 43 | 9719006 |
| 1999 | 37300.37500.38800.40000.64300.124200.127700.1220700 | Signages | 30d | 2026-06-01 | 2026-06-30 | 1995FS-10d |  | Sector 43 | 9719016 |
| 2000 | 37300.37500.38800.40000.44500 | **Super structure works** | 570d | 2026-01-27 | 2027-10-03 |  | start no earlier than 2026-01-27 | Sector 43 | 9697486 |
| 2001 | 37300.37500.38800.40000.44500.46300 | **RCC works** | 570d | 2026-01-27 | 2027-10-03 |  | start no earlier than 2026-01-27 | Sector 43 | 9697516 |
| 2002 | 37300.37500.38800.40000.44500.46300.206500 | **1st floor** | 37d | 2026-01-27 | 2026-03-04 |  | start no earlier than 2026-01-27 | Sector 43 | 9699636 |
| 2003 | 37300.37500.38800.40000.44500.46300.206500.1220800 | Reinforcement | 33d | 2026-01-27 | 2026-02-28 | 1980 |  | Sector 43 | 9719026 |
| 2004 | 37300.37500.38800.40000.44500.46300.206500.1220900 | Wall/slab conduiting | 22d | 2026-02-09 | 2026-03-02 | 2003FS-20d |  | Sector 43 | 9719036 |
| 2005 | 37300.37500.38800.40000.44500.46300.206500.1221000 | Shuttering | 22d | 2026-02-09 | 2026-03-02 | 2003FS-20d |  | Sector 43 | 9719046 |
| 2006 | 37300.37500.38800.40000.44500.46300.206500.1221100 | Concreting | 2d | 2026-03-03 | 2026-03-04 | 2003, 2004, 2005 |  | Sector 43 | 9719056 |
| 2007 | 37300.37500.38800.40000.44500.46300.206600 | **2nd floor** | 21d | 2026-03-05 | 2026-03-25 |  | start no earlier than 2026-03-05 | Sector 43 | 9699626 |
| 2008 | 37300.37500.38800.40000.44500.46300.206600.1221200 | Reinforcement | 17d | 2026-03-05 | 2026-03-21 | 2006 |  | Sector 43 | 9719066 |
| 2009 | 37300.37500.38800.40000.44500.46300.206600.1221300 | Wall/slab conduiting | 16d | 2026-03-08 | 2026-03-23 | 2008FS-14d |  | Sector 43 | 9719076 |
| 2010 | 37300.37500.38800.40000.44500.46300.206600.1221400 | Shuttering | 15d | 2026-03-08 | 2026-03-22 | 2008FS-14d |  | Sector 43 | 9719086 |
| 2011 | 37300.37500.38800.40000.44500.46300.206600.1221500 | Concreting | 2d | 2026-03-24 | 2026-03-25 | 2008, 2009, 2010 |  | Sector 43 | 9719096 |
| 2012 | 37300.37500.38800.40000.44500.46300.206700 | **3rd floor** | 30d | 2026-03-26 | 2026-04-24 |  | start no earlier than 2026-03-26 | Sector 43 | 9699576 |
| 2013 | 37300.37500.38800.40000.44500.46300.206700.1221600 | Reinforcement | 28d | 2026-03-26 | 2026-04-22 | 2011 |  | Sector 43 | 9719106 |
| 2014 | 37300.37500.38800.40000.44500.46300.206700.1221700 | Wall/slab conduiting | 19d | 2026-04-04 | 2026-04-22 | 2013FS-19d |  | Sector 43 | 9719116 |
| 2015 | 37300.37500.38800.40000.44500.46300.206700.1221800 | Shuttering | 19d | 2026-04-04 | 2026-04-22 | 2013FS-19d |  | Sector 43 | 9719126 |
| 2016 | 37300.37500.38800.40000.44500.46300.206700.1221900 | Concreting | 2d | 2026-04-23 | 2026-04-24 | 2013, 2014, 2015 |  | Sector 43 | 9719136 |

| ID | WBS | Task | Duration | Start | Finish | Predecessors | Constraint | Calendar | Unique_Task_ID |
| --- | --- | --- | --- | --- | --- | --- | --- | --- | --- |
| 2017 | 37300.37500.38800.40000.44500.46300.206800 | **4th floor** | 21d | 2026-04-25 | 2026-05-15 |  | start no earlier than 2026-04-25 | Sector 43 | 9699536 |
| 2018 | 37300.37500.38800.40000.44500.46300.206800.1222000 | Reinforcement | 19d | 2026-04-25 | 2026-05-13 | 2016 |  | Sector 43 | 9719146 |
| 2019 | 37300.37500.38800.40000.44500.46300.206800.1222100 | Wall/slab conduiting | 12d | 2026-05-02 | 2026-05-13 | 2018FS-12d |  | Sector 43 | 9719156 |
| 2020 | 37300.37500.38800.40000.44500.46300.206800.1222200 | Shuttering | 12d | 2026-05-02 | 2026-05-13 | 2018FS-12d |  | Sector 43 | 9719166 |
| 2021 | 37300.37500.38800.40000.44500.46300.206800.1222300 | Concreting | 2d | 2026-05-14 | 2026-05-15 | 2018, 2019, 2020 |  | Sector 43 | 9719176 |
| 2022 | 37300.37500.38800.40000.44500.46300.206900 | **5th floor** | 13d | 2026-05-16 | 2026-05-28 |  | start no earlier than 2026-05-16 | Sector 43 | 9699486 |
| 2023 | 37300.37500.38800.40000.44500.46300.206900.1222400 | Reinforcement | 9d | 2026-05-16 | 2026-05-24 | 2021 |  | Sector 43 | 9719186 |
| 2024 | 37300.37500.38800.40000.44500.46300.206900.1222500 | Wall/slab conduiting | 7d | 2026-05-20 | 2026-05-26 | 2023FS-5d |  | Sector 43 | 9719196 |
| 2025 | 37300.37500.38800.40000.44500.46300.206900.1222600 | Shuttering | 7d | 2026-05-20 | 2026-05-26 | 2023FS-5d |  | Sector 43 | 9719206 |
| 2026 | 37300.37500.38800.40000.44500.46300.206900.1222700 | Concreting | 2d | 2026-05-27 | 2026-05-28 | 2023, 2024, 2025 |  | Sector 43 | 9719216 |
| 2027 | 37300.37500.38800.40000.44500.46300.207000 | **6th floor** | 13d | 2026-05-29 | 2026-06-10 |  | start no earlier than 2026-05-29 | Sector 43 | 9699476 |
| 2028 | 37300.37500.38800.40000.44500.46300.207000.1222800 | Reinforcement | 9d | 2026-05-29 | 2026-06-06 | 2026 |  | Sector 43 | 9719226 |
| 2029 | 37300.37500.38800.40000.44500.46300.207000.1222900 | Wall/slab conduiting | 7d | 2026-06-02 | 2026-06-08 | 2028FS-5d |  | Sector 43 | 9719236 |
| 2030 | 37300.37500.38800.40000.44500.46300.207000.1223000 | Shuttering | 7d | 2026-06-02 | 2026-06-08 | 2028FS-5d |  | Sector 43 | 9719246 |
| 2031 | 37300.37500.38800.40000.44500.46300.207000.1223100 | Concreting | 2d | 2026-06-09 | 2026-06-10 | 2028, 2029, 2030 |  | Sector 43 | 9719256 |
| 2032 | 37300.37500.38800.40000.44500.46300.207100 | **7th floor** | 13d | 2026-06-11 | 2026-06-23 |  | start no earlier than 2026-06-11 | Sector 43 | 9699336 |
| 2033 | 37300.37500.38800.40000.44500.46300.207100.1223200 | Reinforcement | 9d | 2026-06-11 | 2026-06-19 | 2031 |  | Sector 43 | 9719266 |
| 2034 | 37300.37500.38800.40000.44500.46300.207100.1223300 | Wall/slab conduiting | 7d | 2026-06-15 | 2026-06-21 | 2033FS-5d |  | Sector 43 | 9719276 |
| 2035 | 37300.37500.38800.40000.44500.46300.207100.1223400 | Shuttering | 7d | 2026-06-15 | 2026-06-21 | 2033FS-5d |  | Sector 43 | 9719286 |
| 2036 | 37300.37500.38800.40000.44500.46300.207100.1223500 | Concreting | 2d | 2026-06-22 | 2026-06-23 | 2033, 2034, 2035 |  | Sector 43 | 9719296 |
| 2037 | 37300.37500.38800.40000.44500.46300.207200 | **8th floor** | 13d | 2026-06-24 | 2026-07-06 |  | start no earlier than 2026-06-24 | Sector 43 | 9699326 |
| 2038 | 37300.37500.38800.40000.44500.46300.207200.1223600 | Reinforcement | 9d | 2026-06-24 | 2026-07-02 | 2036 |  | Sector 43 | 9719306 |
| 2039 | 37300.37500.38800.40000.44500.46300.207200.1223700 | Wall/slab conduiting | 7d | 2026-06-28 | 2026-07-04 | 2038FS-5d |  | Sector 43 | 9719316 |
| 2040 | 37300.37500.38800.40000.44500.46300.207200.1223800 | Shuttering | 7d | 2026-06-28 | 2026-07-04 | 2038FS-5d |  | Sector 43 | 9719326 |
| 2041 | 37300.37500.38800.40000.44500.46300.207200.1223900 | Concreting | 2d | 2026-07-05 | 2026-07-06 | 2038, 2039, 2040 |  | Sector 43 | 9719336 |

| ID | WBS | Task | Duration | Start | Finish | Predecessors | Constraint | Calendar | Unique_Task_ID |
| --- | --- | --- | --- | --- | --- | --- | --- | --- | --- |
| 2042 | 37300.37500.38800.40000.44500.46300.207300 | **9th floor** | 13d | 2026-07-07 | 2026-07-19 |  | start no earlier than 2026-07-07 | Sector 43 | 9699276 |
| 2043 | 37300.37500.38800.40000.44500.46300.207300.1224000 | Reinforcement | 9d | 2026-07-07 | 2026-07-15 | 2041 |  | Sector 43 | 9719346 |
| 2044 | 37300.37500.38800.40000.44500.46300.207300.1224100 | Wall/slab conduiting | 7d | 2026-07-11 | 2026-07-17 | 2043FS-5d |  | Sector 43 | 9719356 |
| 2045 | 37300.37500.38800.40000.44500.46300.207300.1224200 | Shuttering | 7d | 2026-07-11 | 2026-07-17 | 2043FS-5d |  | Sector 43 | 9719366 |
| 2046 | 37300.37500.38800.40000.44500.46300.207300.1224300 | Concreting | 2d | 2026-07-18 | 2026-07-19 | 2043, 2044, 2045 |  | Sector 43 | 9719376 |
| 2047 | 37300.37500.38800.40000.44500.46300.207400 | **10th floor** | 13d | 2026-07-20 | 2026-08-01 |  | start no earlier than 2026-07-20 | Sector 43 | 9699226 |
| 2048 | 37300.37500.38800.40000.44500.46300.207400.1224400 | Reinforcement | 9d | 2026-07-20 | 2026-07-28 | 2046 |  | Sector 43 | 9719386 |
| 2049 | 37300.37500.38800.40000.44500.46300.207400.1224500 | Wall/slab conduiting | 7d | 2026-07-24 | 2026-07-30 | 2048FS-5d |  | Sector 43 | 9719396 |
| 2050 | 37300.37500.38800.40000.44500.46300.207400.1224600 | Shuttering | 7d | 2026-07-24 | 2026-07-30 | 2048FS-5d |  | Sector 43 | 9719406 |
| 2051 | 37300.37500.38800.40000.44500.46300.207400.1224700 | Concreting | 2d | 2026-07-31 | 2026-08-01 | 2048, 2049, 2050 |  | Sector 43 | 9719416 |
| 2052 | 37300.37500.38800.40000.44500.46300.207500 | **11th floor** | 13d | 2026-08-02 | 2026-08-14 |  | start no earlier than 2026-08-02 | Sector 43 | 9699216 |
| 2053 | 37300.37500.38800.40000.44500.46300.207500.1224800 | Reinforcement | 9d | 2026-08-02 | 2026-08-10 | 2051 |  | Sector 43 | 9719426 |
| 2054 | 37300.37500.38800.40000.44500.46300.207500.1224900 | Wall/slab conduiting | 7d | 2026-08-06 | 2026-08-12 | 2053FS-5d |  | Sector 43 | 9719436 |
| 2055 | 37300.37500.38800.40000.44500.46300.207500.1225000 | Shuttering | 7d | 2026-08-06 | 2026-08-12 | 2053FS-5d |  | Sector 43 | 9719446 |
| 2056 | 37300.37500.38800.40000.44500.46300.207500.1225100 | Concreting | 2d | 2026-08-13 | 2026-08-14 | 2053, 2054, 2055 |  | Sector 43 | 9719456 |
| 2057 | 37300.37500.38800.40000.44500.46300.207600 | **12th floor** | 13d | 2026-08-15 | 2026-08-27 |  | start no earlier than 2026-08-15 | Sector 43 | 9699176 |
| 2058 | 37300.37500.38800.40000.44500.46300.207600.1225200 | Reinforcement | 9d | 2026-08-15 | 2026-08-23 | 2056 |  | Sector 43 | 9719466 |
| 2059 | 37300.37500.38800.40000.44500.46300.207600.1225300 | Wall/slab conduiting | 7d | 2026-08-19 | 2026-08-25 | 2058FS-5d |  | Sector 43 | 9719476 |
| 2060 | 37300.37500.38800.40000.44500.46300.207600.1225400 | Shuttering | 7d | 2026-08-19 | 2026-08-25 | 2058FS-5d |  | Sector 43 | 9719486 |
| 2061 | 37300.37500.38800.40000.44500.46300.207600.1225500 | Concreting | 2d | 2026-08-26 | 2026-08-27 | 2058, 2059, 2060 |  | Sector 43 | 9719496 |
| 2062 | 37300.37500.38800.40000.44500.46300.207700 | **13th floor** | 13d | 2026-08-28 | 2026-09-09 |  | start no earlier than 2026-08-28 | Sector 43 | 9699206 |
| 2063 | 37300.37500.38800.40000.44500.46300.207700.1225600 | Reinforcement | 9d | 2026-08-28 | 2026-09-05 | 2061 |  | Sector 43 | 9719506 |
| 2064 | 37300.37500.38800.40000.44500.46300.207700.1225700 | Wall/slab conduiting | 7d | 2026-09-01 | 2026-09-07 | 2063FS-5d |  | Sector 43 | 9719516 |
| 2065 | 37300.37500.38800.40000.44500.46300.207700.1225800 | Shuttering | 7d | 2026-09-01 | 2026-09-07 | 2063FS-5d |  | Sector 43 | 9719526 |
| 2066 | 37300.37500.38800.40000.44500.46300.207700.1225900 | Concreting | 2d | 2026-09-08 | 2026-09-09 | 2063, 2064, 2065 |  | Sector 43 | 9719536 |

| ID | WBS | Task | Duration | Start | Finish | Predecessors | Constraint | Calendar | Unique_Task_ID |
| --- | --- | --- | --- | --- | --- | --- | --- | --- | --- |
| 2067 | 37300.37500.38800.40000.44500.46300.207800 | **14th floor** | 13d | 2026-09-10 | 2026-09-22 |  | start no earlier than 2026-09-10 | Sector 43 | 9699236 |
| 2068 | 37300.37500.38800.40000.44500.46300.207800.1226000 | Reinforcement | 9d | 2026-09-10 | 2026-09-18 | 2066 |  | Sector 43 | 9719546 |
| 2069 | 37300.37500.38800.40000.44500.46300.207800.1226100 | Wall/slab conduiting | 7d | 2026-09-14 | 2026-09-20 | 2068FS-5d |  | Sector 43 | 9719556 |
| 2070 | 37300.37500.38800.40000.44500.46300.207800.1226200 | Shuttering | 7d | 2026-09-14 | 2026-09-20 | 2068FS-5d |  | Sector 43 | 9719566 |
| 2071 | 37300.37500.38800.40000.44500.46300.207800.1226300 | Concreting | 2d | 2026-09-21 | 2026-09-22 | 2068, 2069, 2070 |  | Sector 43 | 9719576 |
| 2072 | 37300.37500.38800.40000.44500.46300.207900 | **15th floor** | 13d | 2026-09-23 | 2026-10-05 |  | start no earlier than 2026-09-23 | Sector 43 | 9699246 |
| 2073 | 37300.37500.38800.40000.44500.46300.207900.1226400 | Reinforcement | 9d | 2026-09-23 | 2026-10-01 | 2071 |  | Sector 43 | 9719586 |
| 2074 | 37300.37500.38800.40000.44500.46300.207900.1226500 | Wall/slab conduiting | 7d | 2026-09-27 | 2026-10-03 | 2073FS-5d |  | Sector 43 | 9719596 |
| 2075 | 37300.37500.38800.40000.44500.46300.207900.1226600 | Shuttering | 7d | 2026-09-27 | 2026-10-03 | 2073FS-5d |  | Sector 43 | 9719606 |
| 2076 | 37300.37500.38800.40000.44500.46300.207900.1226700 | Concreting | 2d | 2026-10-04 | 2026-10-05 | 2073, 2074, 2075 |  | Sector 43 | 9719616 |
| 2077 | 37300.37500.38800.40000.44500.46300.208000 | **16th floor** | 13d | 2026-10-06 | 2026-10-18 |  | start no earlier than 2026-10-06 | Sector 43 | 9699256 |
| 2078 | 37300.37500.38800.40000.44500.46300.208000.1226800 | Reinforcement | 9d | 2026-10-06 | 2026-10-14 | 2076 |  | Sector 43 | 9719626 |
| 2079 | 37300.37500.38800.40000.44500.46300.208000.1226900 | Wall/slab conduiting | 7d | 2026-10-10 | 2026-10-16 | 2078FS-5d |  | Sector 43 | 9719636 |
| 2080 | 37300.37500.38800.40000.44500.46300.208000.1227000 | Shuttering | 7d | 2026-10-10 | 2026-10-16 | 2078FS-5d |  | Sector 43 | 9719646 |
| 2081 | 37300.37500.38800.40000.44500.46300.208000.1227100 | Concreting | 2d | 2026-10-17 | 2026-10-18 | 2078, 2079, 2080 |  | Sector 43 | 9719656 |
| 2082 | 37300.37500.38800.40000.44500.46300.208100 | **17th floor - Refuge Floor** | 18d | 2026-10-19 | 2026-12-20 |  | start no earlier than 2026-10-19 | Sector 43 | 9699266 |
| 2083 | 37300.37500.38800.40000.44500.46300.208100.1227200 | Reinforcement | 16d | 2026-10-19 | 2026-12-18 | 2081 |  | Sector 43 | 9719666 |
| 2084 | 37300.37500.38800.40000.44500.46300.208100.1227300 | Wall/slab conduiting | 9d | 2026-10-26 | 2026-12-18 | 2083FS-9d |  | Sector 43 | 9719676 |
| 2085 | 37300.37500.38800.40000.44500.46300.208100.1227400 | Shuttering | 9d | 2026-10-26 | 2026-12-18 | 2083FS-9d |  | Sector 43 | 9719686 |
| 2086 | 37300.37500.38800.40000.44500.46300.208100.1227500 | Concreting | 2d | 2026-12-19 | 2026-12-20 | 2083, 2084, 2085 |  | Sector 43 | 9719696 |
| 2087 | 37300.37500.38800.40000.44500.46300.208200 | **18th floor** | 13d | 2026-09-07 | 2026-09-19 |  | start no earlier than 2026-09-07 | Sector 43 | 9699296 |
| 2088 | 37300.37500.38800.40000.44500.46300.208200.1227600 | Reinforcement | 9d | 2026-09-07 | 2026-09-15 | 2086FS-60d |  | Sector 43 | 9719706 |
| 2089 | 37300.37500.38800.40000.44500.46300.208200.1227700 | Wall/slab conduiting | 7d | 2026-09-11 | 2026-09-17 | 2088FS-5d |  | Sector 43 | 9719716 |
| 2090 | 37300.37500.38800.40000.44500.46300.208200.1227800 | Shuttering | 7d | 2026-09-11 | 2026-09-17 | 2088FS-5d |  | Sector 43 | 9719726 |
| 2091 | 37300.37500.38800.40000.44500.46300.208200.1227900 | Concreting | 2d | 2026-09-18 | 2026-09-19 | 2088, 2089, 2090 |  | Sector 43 | 9719736 |

| ID | WBS | Task | Duration | Start | Finish | Predecessors | Constraint | Calendar | Unique_Task_ID |
| --- | --- | --- | --- | --- | --- | --- | --- | --- | --- |
| 2092 | 37300.37500.38800.40000.44500.46300.208300 | **19th floor** | 12d | 2027-01-03 | 2027-01-14 |  | start no earlier than 2027-01-03 | Sector 43 | 9699316 |
| 2093 | 37300.37500.38800.40000.44500.46300.208300.1228000 | Reinforcement | 9d | 2027-01-03 | 2027-01-11 | 2091 |  | Sector 43 | 9719746 |
| 2094 | 37300.37500.38800.40000.44500.46300.208300.1228100 | Wall/slab conduiting | 7d | 2027-01-06 | 2027-01-12 | 2093FS-6d |  | Sector 43 | 9719756 |
| 2095 | 37300.37500.38800.40000.44500.46300.208300.1228200 | Shuttering | 7d | 2027-01-06 | 2027-01-12 | 2093FS-6d |  | Sector 43 | 9719766 |
| 2096 | 37300.37500.38800.40000.44500.46300.208300.1228300 | Concreting | 2d | 2027-01-13 | 2027-01-14 | 2093, 2094, 2095 |  | Sector 43 | 9719776 |
| 2097 | 37300.37500.38800.40000.44500.46300.208400 | **20th floor** | 12d | 2027-01-15 | 2027-01-26 |  | start no earlier than 2027-01-15 | Sector 43 | 9699346 |
| 2098 | 37300.37500.38800.40000.44500.46300.208400.1228400 | Reinforcement | 9d | 2027-01-15 | 2027-01-23 | 2096 |  | Sector 43 | 9719786 |
| 2099 | 37300.37500.38800.40000.44500.46300.208400.1228500 | Wall/slab conduiting | 7d | 2027-01-18 | 2027-01-24 | 2098FS-6d |  | Sector 43 | 9719796 |
| 2100 | 37300.37500.38800.40000.44500.46300.208400.1228600 | Shuttering | 7d | 2027-01-18 | 2027-01-24 | 2098FS-6d |  | Sector 43 | 9719806 |
| 2101 | 37300.37500.38800.40000.44500.46300.208400.1228700 | Concreting | 2d | 2027-01-25 | 2027-01-26 | 2098, 2099, 2100 |  | Sector 43 | 9719816 |
| 2102 | 37300.37500.38800.40000.44500.46300.208500 | **21st floor** | 12d | 2027-01-27 | 2027-02-07 |  | start no earlier than 2027-01-27 | Sector 43 | 9699356 |
| 2103 | 37300.37500.38800.40000.44500.46300.208500.1228800 | Reinforcement | 9d | 2027-01-27 | 2027-02-04 | 2101 |  | Sector 43 | 9719826 |
| 2104 | 37300.37500.38800.40000.44500.46300.208500.1228900 | Wall/slab conduiting | 7d | 2027-01-30 | 2027-02-05 | 2103FS-6d |  | Sector 43 | 9719836 |
| 2105 | 37300.37500.38800.40000.44500.46300.208500.1229000 | Shuttering | 7d | 2027-01-30 | 2027-02-05 | 2103FS-6d |  | Sector 43 | 9719846 |
| 2106 | 37300.37500.38800.40000.44500.46300.208500.1229100 | Concreting | 2d | 2027-02-06 | 2027-02-07 | 2103, 2104, 2105 |  | Sector 43 | 9719856 |
| 2107 | 37300.37500.38800.40000.44500.46300.208600 | **22nd floor** | 12d | 2027-02-08 | 2027-02-19 |  | start no earlier than 2027-02-08 | Sector 43 | 9699376 |
| 2108 | 37300.37500.38800.40000.44500.46300.208600.1229200 | Reinforcement | 9d | 2027-02-08 | 2027-02-16 | 2106 |  | Sector 43 | 9719866 |
| 2109 | 37300.37500.38800.40000.44500.46300.208600.1229300 | Wall/slab conduiting | 7d | 2027-02-11 | 2027-02-17 | 2108FS-6d |  | Sector 43 | 9719876 |
| 2110 | 37300.37500.38800.40000.44500.46300.208600.1229400 | Shuttering | 7d | 2027-02-11 | 2027-02-17 | 2108FS-6d |  | Sector 43 | 9719886 |
| 2111 | 37300.37500.38800.40000.44500.46300.208600.1229500 | Concreting | 2d | 2027-02-18 | 2027-02-19 | 2108, 2109, 2110 |  | Sector 43 | 9719896 |
| 2112 | 37300.37500.38800.40000.44500.46300.208700 | **23rd floor** | 12d | 2027-02-20 | 2027-03-03 |  | start no earlier than 2027-02-20 | Sector 43 | 9699386 |
| 2113 | 37300.37500.38800.40000.44500.46300.208700.1229600 | Reinforcement | 9d | 2027-02-20 | 2027-02-28 | 2111 |  | Sector 43 | 9719906 |
| 2114 | 37300.37500.38800.40000.44500.46300.208700.1229700 | Wall/slab conduiting | 7d | 2027-02-23 | 2027-03-01 | 2113FS-6d |  | Sector 43 | 9719916 |
| 2115 | 37300.37500.38800.40000.44500.46300.208700.1229800 | Shuttering | 7d | 2027-02-23 | 2027-03-01 | 2113FS-6d |  | Sector 43 | 9719926 |
| 2116 | 37300.37500.38800.40000.44500.46300.208700.1229900 | Concreting | 2d | 2027-03-02 | 2027-03-03 | 2113, 2114, 2115 |  | Sector 43 | 9719936 |

| ID | WBS | Task | Duration | Start | Finish | Predecessors | Constraint | Calendar | Unique_Task_ID |
| --- | --- | --- | --- | --- | --- | --- | --- | --- | --- |
| 2117 | 37300.37500.38800.40000.44500.46300.208800 | **24th floor** | 38d | 2027-03-04 | 2027-04-10 |  | start no earlier than 2027-03-04 | Sector 43 | 9699406 |
| 2118 | 37300.37500.38800.40000.44500.46300.208800.1230000 | Reinforcement | 9d | 2027-03-04 | 2027-03-12 | 2116 |  | Sector 43 | 9719946 |
| 2119 | 37300.37500.38800.40000.44500.46300.208800.1230100 | Wall/slab conduiting | 7d | 2027-04-02 | 2027-04-08 | 2118FS+20d |  | Sector 43 | 9719956 |
| 2120 | 37300.37500.38800.40000.44500.46300.208800.1230200 | Shuttering | 7d | 2027-04-02 | 2027-04-08 | 2118FS+20d |  | Sector 43 | 9719966 |
| 2121 | 37300.37500.38800.40000.44500.46300.208800.1230300 | Concreting | 2d | 2027-04-09 | 2027-04-10 | 2118, 2119, 2120 |  | Sector 43 | 9719976 |
| 2122 | 37300.37500.38800.40000.44500.46300.208900 | **25th floor - Refuge Floor** | 18d | 2027-04-11 | 2027-04-28 |  | start no earlier than 2027-04-11 | Sector 43 | 9699416 |
| 2123 | 37300.37500.38800.40000.44500.46300.208900.1230400 | Reinforcement | 16d | 2027-04-11 | 2027-04-26 | 2121 |  | Sector 43 | 9719986 |
| 2124 | 37300.37500.38800.40000.44500.46300.208900.1230500 | Wall/slab conduiting | 7d | 2027-04-18 | 2027-04-24 | 2123FS-9d |  | Sector 43 | 9719996 |
| 2125 | 37300.37500.38800.40000.44500.46300.208900.1230600 | Shuttering | 7d | 2027-04-18 | 2027-04-24 | 2123FS-9d |  | Sector 43 | 9720006 |
| 2126 | 37300.37500.38800.40000.44500.46300.208900.1230700 | Concreting | 2d | 2027-04-27 | 2027-04-28 | 2123, 2124, 2125 |  | Sector 43 | 9720016 |
| 2127 | 37300.37500.38800.40000.44500.46300.209000 | **26th floor** | 12d | 2027-04-29 | 2027-05-10 |  | start no earlier than 2027-04-29 | Sector 43 | 9699446 |
| 2128 | 37300.37500.38800.40000.44500.46300.209000.1230800 | Reinforcement | 9d | 2027-04-29 | 2027-05-07 | 2126 |  | Sector 43 | 9720026 |
| 2129 | 37300.37500.38800.40000.44500.46300.209000.1230900 | Wall/slab conduiting | 7d | 2027-05-02 | 2027-05-08 | 2128FS-6d |  | Sector 43 | 9720036 |
| 2130 | 37300.37500.38800.40000.44500.46300.209000.1231000 | Shuttering | 7d | 2027-05-02 | 2027-05-08 | 2128FS-6d |  | Sector 43 | 9720046 |
| 2131 | 37300.37500.38800.40000.44500.46300.209000.1231100 | Concreting | 2d | 2027-05-09 | 2027-05-10 | 2128, 2129, 2130 |  | Sector 43 | 9720056 |
| 2132 | 37300.37500.38800.40000.44500.46300.209100 | **27th floor** | 12d | 2027-05-11 | 2027-05-22 |  | start no earlier than 2027-05-11 | Sector 43 | 9699466 |
| 2133 | 37300.37500.38800.40000.44500.46300.209100.1231200 | Reinforcement | 9d | 2027-05-11 | 2027-05-19 | 2131 |  | Sector 43 | 9720066 |
| 2134 | 37300.37500.38800.40000.44500.46300.209100.1231300 | Wall/slab conduiting | 7d | 2027-05-14 | 2027-05-20 | 2133FS-6d |  | Sector 43 | 9720076 |
| 2135 | 37300.37500.38800.40000.44500.46300.209100.1231400 | Shuttering | 7d | 2027-05-14 | 2027-05-20 | 2133FS-6d |  | Sector 43 | 9720086 |
| 2136 | 37300.37500.38800.40000.44500.46300.209100.1231500 | Concreting | 2d | 2027-05-21 | 2027-05-22 | 2133, 2134, 2135 |  | Sector 43 | 9720096 |
| 2137 | 37300.37500.38800.40000.44500.46300.209200 | **28th floor** | 12d | 2027-05-23 | 2027-06-03 |  | start no earlier than 2027-05-23 | Sector 43 | 9699496 |
| 2138 | 37300.37500.38800.40000.44500.46300.209200.1231600 | Reinforcement | 9d | 2027-05-23 | 2027-05-31 | 2136 |  | Sector 43 | 9720106 |
| 2139 | 37300.37500.38800.40000.44500.46300.209200.1231700 | Wall/slab conduiting | 7d | 2027-05-26 | 2027-06-01 | 2138FS-6d |  | Sector 43 | 9720116 |
| 2140 | 37300.37500.38800.40000.44500.46300.209200.1231800 | Shuttering | 7d | 2027-05-26 | 2027-06-01 | 2138FS-6d |  | Sector 43 | 9720126 |
| 2141 | 37300.37500.38800.40000.44500.46300.209200.1231900 | Concreting | 2d | 2027-06-02 | 2027-06-03 | 2138, 2139, 2140 |  | Sector 43 | 9720136 |

| ID | WBS | Task | Duration | Start | Finish | Predecessors | Constraint | Calendar | Unique_Task_ID |
| --- | --- | --- | --- | --- | --- | --- | --- | --- | --- |
| 2142 | 37300.37500.38800.40000.44500.46300.209300 | **29th floor** | 12d | 2027-06-04 | 2027-06-15 |  | start no earlier than 2027-06-04 | Sector 43 | 9699506 |
| 2143 | 37300.37500.38800.40000.44500.46300.209300.1232000 | Reinforcement | 9d | 2027-06-04 | 2027-06-12 | 2141 |  | Sector 43 | 9720146 |
| 2144 | 37300.37500.38800.40000.44500.46300.209300.1232100 | Wall/slab conduiting | 7d | 2027-06-07 | 2027-06-13 | 2143FS-6d |  | Sector 43 | 9720156 |
| 2145 | 37300.37500.38800.40000.44500.46300.209300.1232200 | Shuttering | 7d | 2027-06-07 | 2027-06-13 | 2143FS-6d |  | Sector 43 | 9720166 |
| 2146 | 37300.37500.38800.40000.44500.46300.209300.1232300 | Concreting | 2d | 2027-06-14 | 2027-06-15 | 2143, 2144, 2145 |  | Sector 43 | 9720176 |
| 2147 | 37300.37500.38800.40000.44500.46300.209400 | **30th floor** | 12d | 2027-06-16 | 2027-06-27 |  | start no earlier than 2027-06-16 | Sector 43 | 9699516 |
| 2148 | 37300.37500.38800.40000.44500.46300.209400.1232400 | Reinforcement | 9d | 2027-06-16 | 2027-06-24 | 2146 |  | Sector 43 | 9720186 |
| 2149 | 37300.37500.38800.40000.44500.46300.209400.1232500 | Wall/slab conduiting | 7d | 2027-06-19 | 2027-06-25 | 2148FS-6d |  | Sector 43 | 9720196 |
| 2150 | 37300.37500.38800.40000.44500.46300.209400.1232600 | Shuttering | 7d | 2027-06-19 | 2027-06-25 | 2148FS-6d |  | Sector 43 | 9720206 |
| 2151 | 37300.37500.38800.40000.44500.46300.209400.1232700 | Concreting | 2d | 2027-06-26 | 2027-06-27 | 2148, 2149, 2150 |  | Sector 43 | 9720216 |
| 2152 | 37300.37500.38800.40000.44500.46300.209500 | **31st floor** | 14d | 2027-06-28 | 2027-07-11 |  | start no earlier than 2027-06-28 | Sector 43 | 9699526 |
| 2153 | 37300.37500.38800.40000.44500.46300.209500.1232800 | Reinforcement | 11d | 2027-06-28 | 2027-07-08 | 2151 |  | Sector 43 | 9720226 |
| 2154 | 37300.37500.38800.40000.44500.46300.209500.1232900 | Wall/slab conduiting | 7d | 2027-07-03 | 2027-07-09 | 2153FS-6d |  | Sector 43 | 9720236 |
| 2155 | 37300.37500.38800.40000.44500.46300.209500.1233000 | Shuttering | 7d | 2027-07-03 | 2027-07-09 | 2153FS-6d |  | Sector 43 | 9720246 |
| 2156 | 37300.37500.38800.40000.44500.46300.209500.1233100 | Concreting | 2d | 2027-07-10 | 2027-07-11 | 2153, 2154, 2155 |  | Sector 43 | 9720256 |
| 2157 | 37300.37500.38800.40000.44500.46300.209600 | **32nd floor** | 14d | 2027-07-12 | 2027-07-25 |  | start no earlier than 2027-07-12 | Sector 43 | 9699546 |
| 2158 | 37300.37500.38800.40000.44500.46300.209600.1233200 | Reinforcement | 10d | 2027-07-12 | 2027-07-21 | 2156 |  | Sector 43 | 9720266 |
| 2159 | 37300.37500.38800.40000.44500.46300.209600.1233300 | Wall/slab conduiting | 7d | 2027-07-16 | 2027-07-22 | 2158FS-6d |  | Sector 43 | 9720276 |
| 2160 | 37300.37500.38800.40000.44500.46300.209600.1233400 | Shuttering | 7d | 2027-07-17 | 2027-07-23 | 2159FS-6d |  | Sector 43 | 9720286 |
| 2161 | 37300.37500.38800.40000.44500.46300.209600.1233500 | Concreting | 2d | 2027-07-24 | 2027-07-25 | 2158, 2159, 2160 |  | Sector 43 | 9720296 |
| 2162 | 37300.37500.38800.40000.44500.46300.209700 | **Terrace floor** | 25d | 2027-07-26 | 2027-08-19 |  | start no earlier than 2027-07-26 | Sector 43 | 9699556 |
| 2163 | 37300.37500.38800.40000.44500.46300.209700.1233600 | Reinforcement | 23d | 2027-07-26 | 2027-08-17 | 2161 |  | Sector 43 | 9720306 |
| 2164 | 37300.37500.38800.40000.44500.46300.209700.1233700 | Wall/slab conduiting | 20d | 2027-07-28 | 2027-08-16 | 2163FS-21d |  | Sector 43 | 9720316 |
| 2165 | 37300.37500.38800.40000.44500.46300.209700.1233800 | Shuttering | 20d | 2027-07-28 | 2027-08-16 | 2163FS-21d |  | Sector 43 | 9720326 |
| 2166 | 37300.37500.38800.40000.44500.46300.209700.1233900 | Concreting | 2d | 2027-08-18 | 2027-08-19 | 2163, 2164, 2165 |  | Sector 43 | 9720336 |

| ID | WBS | Task | Duration | Start | Finish | Predecessors | Constraint | Calendar | Unique_Task_ID |
| --- | --- | --- | --- | --- | --- | --- | --- | --- | --- |
| 2167 | 37300.37500.38800.40000.44500.46300.209800 | **LMR, OHT & Mumty** | 45d | 2027-08-20 | 2027-10-03 |  | start no earlier than 2027-08-20 | Sector 43 | 9699566 |
| 2168 | 37300.37500.38800.40000.44500.46300.209800.1234000 | Reinforcement | 41d | 2027-08-20 | 2027-09-29 | 2166 |  | Sector 43 | 9720346 |
| 2169 | 37300.37500.38800.40000.44500.46300.209800.1234100 | Wall conduiting | 20d | 2027-08-31 | 2027-09-19 | 2168FS-30d |  | Sector 43 | 9720356 |
| 2170 | 37300.37500.38800.40000.44500.46300.209800.1234200 | Shuttering | 20d | 2027-08-31 | 2027-09-19 | 2168FS-30d |  | Sector 43 | 9720366 |
| 2171 | 37300.37500.38800.40000.44500.46300.209800.1234300 | Concreting | 4d | 2027-09-30 | 2027-10-03 | 2168, 2169, 2170 |  | Sector 43 | 9720376 |
| 2172 | 37300.37500.38800.40000.44500.49000 | **Post pour works** | 439d | 2026-05-16 | 2027-09-11 |  | start no earlier than 2026-05-16 | Sector 43 | 9697546 |
| 2173 | 37300.37500.38800.40000.44500.49000.888900 | 1st floor | 7d | 2026-05-16 | 2026-05-22 | 2021 |  | Sector 43 | 9704266 |
| 2174 | 37300.37500.38800.40000.44500.49000.889000 | 2nd floor | 7d | 2026-05-29 | 2026-06-04 | 2173, 2026 |  | Sector 43 | 9704276 |
| 2175 | 37300.37500.38800.40000.44500.49000.889100 | 3rd floor | 7d | 2026-06-11 | 2026-06-17 | 2174, 2031 |  | Sector 43 | 9704286 |
| 2176 | 37300.37500.38800.40000.44500.49000.889200 | 4th floor | 7d | 2026-06-24 | 2026-06-30 | 2175, 2036 |  | Sector 43 | 9704296 |
| 2177 | 37300.37500.38800.40000.44500.49000.889300 | 5th floor | 7d | 2026-07-07 | 2026-07-13 | 2176, 2041 |  | Sector 43 | 9704306 |
| 2178 | 37300.37500.38800.40000.44500.49000.889400 | 6th floor | 7d | 2026-07-20 | 2026-07-26 | 2177, 2046 |  | Sector 43 | 9704316 |
| 2179 | 37300.37500.38800.40000.44500.49000.889500 | 7th floor | 7d | 2026-08-02 | 2026-08-08 | 2178, 2051 |  | Sector 43 | 9704326 |
| 2180 | 37300.37500.38800.40000.44500.49000.889600 | 8th floor | 7d | 2026-08-15 | 2026-08-21 | 2179, 2056 |  | Sector 43 | 9704336 |
| 2181 | 37300.37500.38800.40000.44500.49000.889700 | 9th floor | 7d | 2026-08-28 | 2026-09-03 | 2180, 2061 |  | Sector 43 | 9704346 |
| 2182 | 37300.37500.38800.40000.44500.49000.889800 | 10th floor | 7d | 2026-09-10 | 2026-09-16 | 2181, 2066 |  | Sector 43 | 9704356 |
| 2183 | 37300.37500.38800.40000.44500.49000.889900 | 11th floor | 7d | 2026-09-23 | 2026-09-29 | 2182, 2071 |  | Sector 43 | 9704366 |
| 2184 | 37300.37500.38800.40000.44500.49000.890000 | 12th floor | 7d | 2026-10-06 | 2026-10-12 | 2183, 2076 |  | Sector 43 | 9704376 |
| 2185 | 37300.37500.38800.40000.44500.49000.890100 | 13th floor | 7d | 2026-10-19 | 2026-10-25 | 2184, 2081 |  | Sector 43 | 9704386 |
| 2186 | 37300.37500.38800.40000.44500.49000.890200 | 14th floor | 7d | 2026-12-21 | 2026-12-27 | 2185, 2086 |  | Sector 43 | 9704396 |
| 2187 | 37300.37500.38800.40000.44500.49000.890300 | 15th floor | 7d | 2027-01-03 | 2027-01-09 | 2186, 2091 |  | Sector 43 | 9704406 |
| 2188 | 37300.37500.38800.40000.44500.49000.890400 | 16th floor | 7d | 2027-01-15 | 2027-01-21 | 2187, 2096 |  | Sector 43 | 9704416 |
| 2189 | 37300.37500.38800.40000.44500.49000.890500 | 17th floor - Refuge Floor | 7d | 2027-01-27 | 2027-02-02 | 2188, 2101 |  | Sector 43 | 9704426 |
| 2190 | 37300.37500.38800.40000.44500.49000.890600 | 18th floor | 7d | 2027-02-08 | 2027-02-14 | 2189, 2106 |  | Sector 43 | 9704436 |
| 2191 | 37300.37500.38800.40000.44500.49000.890700 | 19th floor | 7d | 2027-02-20 | 2027-02-26 | 2190, 2111 |  | Sector 43 | 9704446 |
| 2192 | 37300.37500.38800.40000.44500.49000.890800 | 20th floor | 7d | 2027-03-04 | 2027-03-10 | 2191, 2116 |  | Sector 43 | 9704456 |
| 2193 | 37300.37500.38800.40000.44500.49000.890900 | 21st floor | 7d | 2027-04-11 | 2027-04-17 | 2192, 2121 |  | Sector 43 | 9704466 |
| 2194 | 37300.37500.38800.40000.44500.49000.891000 | 22nd floor | 7d | 2027-04-29 | 2027-05-05 | 2193, 2126 |  | Sector 43 | 9704476 |
| 2195 | 37300.37500.38800.40000.44500.49000.891100 | 23rd floor | 7d | 2027-05-11 | 2027-05-17 | 2194, 2131 |  | Sector 43 | 9704486 |
| 2196 | 37300.37500.38800.40000.44500.49000.891200 | 24th floor | 7d | 2027-05-23 | 2027-05-29 | 2195, 2136 |  | Sector 43 | 9704496 |
| 2197 | 37300.37500.38800.40000.44500.49000.891300 | 25th floor - Refuge Floor | 7d | 2027-06-04 | 2027-06-10 | 2196, 2141 |  | Sector 43 | 9704506 |
| 2198 | 37300.37500.38800.40000.44500.49000.891400 | 26th floor | 7d | 2027-06-16 | 2027-06-22 | 2197, 2146 |  | Sector 43 | 9704516 |
| 2199 | 37300.37500.38800.40000.44500.49000.891500 | 27th floor | 7d | 2027-06-28 | 2027-07-04 | 2198, 2151 |  | Sector 43 | 9704526 |
| 2200 | 37300.37500.38800.40000.44500.49000.891600 | 28th floor | 7d | 2027-07-12 | 2027-07-18 | 2199, 2156 |  | Sector 43 | 9704536 |
| 2201 | 37300.37500.38800.40000.44500.49000.891700 | 29th floor | 7d | 2027-07-26 | 2027-08-01 | 2200, 2161 |  | Sector 43 | 9704546 |
| 2202 | 37300.37500.38800.40000.44500.49000.891800 | 30th floor | 7d | 2027-08-02 | 2027-08-08 | 2201 |  | Sector 43 | 9704556 |
| 2203 | 37300.37500.38800.40000.44500.49000.891900 | 31st floor | 7d | 2027-08-09 | 2027-08-15 | 2202 |  | Sector 43 | 9704566 |
| 2204 | 37300.37500.38800.40000.44500.49000.892000 | 32nd floor | 7d | 2027-08-16 | 2027-08-22 | 2203 |  | Sector 43 | 9704576 |
| 2205 | 37300.37500.38800.40000.44500.49000.892100 | Terrace floor | 10d | 2027-08-23 | 2027-09-01 | 2204 |  | Sector 43 | 9704586 |
| 2206 | 37300.37500.38800.40000.44500.49000.892200 | LMR, OHT & Mumty | 10d | 2027-09-02 | 2027-09-11 | 2205 |  | Sector 43 | 9704596 |

| ID | WBS | Task | Duration | Start | Finish | Predecessors | Constraint | Calendar | Unique_Task_ID |
| --- | --- | --- | --- | --- | --- | --- | --- | --- | --- |
| 2207 | 37300.37500.38800.40000.42200 | **Finishing works** | 738d | 2026-04-17 | 2028-07-22 |  | start no earlier than 2026-04-17 | Sector 43 | 9697426 |
| 2208 | 37300.37500.38800.40000.42200.43400 | **Flat finishings** | 659d | 2026-04-17 | 2028-05-04 |  | start no earlier than 2026-04-17 | Sector 43 | 9697456 |
| 2209 | 37300.37500.38800.40000.42200.43400.54600 | **1st floor** | 136d | 2026-06-04 | 2026-10-17 |  | start no earlier than 2026-06-04 | Sector 43 | 9698246 |
| 2210 | 37300.37500.38800.40000.42200.43400.54600.1234400 | Block Work | 20d | 2026-06-04 | 2026-06-23 | 2012FS+40d |  | Sector 43 | 9720386 |
| 2211 | 37300.37500.38800.40000.42200.43400.54600.1234500 | Installation of temporary Main door | 4d | 2026-06-24 | 2026-06-27 | 2210 |  | Sector 43 | 9720396 |
| 2212 | 37300.37500.38800.40000.42200.43400.54600.1234600 | Fire sprinkler pipe fixing | 10d | 2026-06-24 | 2026-07-03 | 2210 |  | Sector 43 | 9720406 |
| 2213 | 37300.37500.38800.40000.42200.43400.54600.1234700 | Internal Plumbing Works | 10d | 2026-06-24 | 2026-07-03 | 2210 |  | Sector 43 | 9720416 |
| 2214 | 37300.37500.38800.40000.42200.43400.54600.1234800 | Waterproofing | 21d | 2026-07-04 | 2026-07-24 | 2213 |  | Sector 43 | 9720426 |
| 2215 | 37300.37500.38800.40000.42200.43400.54600.1234900 | Internal Plaster | 10d | 2026-06-24 | 2026-07-03 | 2213FS-10d |  | Sector 43 | 9720436 |
| 2216 | 37300.37500.38800.40000.42200.43400.54600.1235000 | IPS flooring work | 13d | 2026-06-24 | 2026-07-06 | 2210 |  | Sector 43 | 9720446 |
| 2217 | 37300.37500.38800.40000.42200.43400.54600.1235100 | Toilet dado work | 12d | 2026-07-23 | 2026-08-03 | 2214FS-2d, 2215 |  | Sector 43 | 9720456 |
| 2218 | 37300.37500.38800.40000.42200.43400.54600.1235200 | Toilet flooring work | 12d | 2026-07-28 | 2026-08-08 | 2217FS-7d |  | Sector 43 | 9720466 |
| 2219 | 37300.37500.38800.40000.42200.43400.54600.1235300 | Living dinning flooring | 12d | 2026-07-20 | 2026-07-31 | 2216, 2218FS-20d |  | Sector 43 | 9720476 |
| 2220 | 37300.37500.38800.40000.42200.43400.54600.1235400 | Electrical wiring work | 12d | 2026-07-22 | 2026-08-02 | 2219FS-10d |  | Sector 43 | 9720486 |
| 2221 | 37300.37500.38800.40000.42200.43400.54600.1235500 | Aluminium door-window fixing | 19d | 2026-09-02 | 2026-09-20 | 2211, 2220FS+30d |  | Sector 43 | 9720496 |
| 2222 | 37300.37500.38800.40000.42200.43400.54600.1235600 | Putty primer coat | 10d | 2026-09-13 | 2026-09-22 | 2221FS-8d |  | Sector 43 | 9720506 |
| 2223 | 37300.37500.38800.40000.42200.43400.54600.1235700 | Prehung door fixing | 8d | 2026-09-18 | 2026-09-25 | 2222FS-5d |  | Sector 43 | 9720516 |
| 2224 | 37300.37500.38800.40000.42200.43400.54600.1235800 | Painting 1st coat | 12d | 2026-09-26 | 2026-10-07 | 2223 |  | Sector 43 | 9720526 |
| 2225 | 37300.37500.38800.40000.42200.43400.54600.1235900 | False Cieling panel fixing | 10d | 2026-10-08 | 2026-10-17 | 2224 |  | Sector 43 | 9720536 |
| 2226 | 37300.37500.38800.40000.42200.43400.54200 | **2nd floor** | 128d | 2026-06-24 | 2026-10-29 |  | start no earlier than 2026-06-24 | Sector 43 | 9698256 |
| 2227 | 37300.37500.38800.40000.42200.43400.54200.1236000 | Block Work | 10d | 2026-06-24 | 2026-07-03 | 2210 |  | Sector 43 | 9720546 |
| 2228 | 37300.37500.38800.40000.42200.43400.54200.1236100 | Installation of temporary Main door | 4d | 2026-07-04 | 2026-07-07 | 2227 |  | Sector 43 | 9720556 |
| 2229 | 37300.37500.38800.40000.42200.43400.54200.1236200 | Fire sprinkler pipe fixing | 10d | 2026-07-04 | 2026-07-13 | 2212, 2227 |  | Sector 43 | 9720566 |
| 2230 | 37300.37500.38800.40000.42200.43400.54200.1236300 | Internal Plumbing Works | 15d | 2026-07-04 | 2026-07-18 | 2227 |  | Sector 43 | 9720576 |
| 2231 | 37300.37500.38800.40000.42200.43400.54200.1236400 | Waterproofing | 21d | 2026-07-19 | 2026-08-08 | 2230 |  | Sector 43 | 9720586 |
| 2232 | 37300.37500.38800.40000.42200.43400.54200.1236500 | Internal Plaster | 12d | 2026-07-04 | 2026-07-15 | 2230FS-15d |  | Sector 43 | 9720596 |
| 2233 | 37300.37500.38800.40000.42200.43400.54200.1236600 | IPS flooring work | 13d | 2026-07-04 | 2026-07-16 | 2227 |  | Sector 43 | 9720606 |
| 2234 | 37300.37500.38800.40000.42200.43400.54200.1236700 | Toilet dado work | 12d | 2026-08-07 | 2026-08-18 | 2231FS-2d, 2232 |  | Sector 43 | 9720616 |
| 2235 | 37300.37500.38800.40000.42200.43400.54200.1236800 | Toilet flooring work | 12d | 2026-08-09 | 2026-08-20 | 2234FS-10d |  | Sector 43 | 9720626 |
| 2236 | 37300.37500.38800.40000.42200.43400.54200.1236900 | Living dinning flooring | 12d | 2026-08-01 | 2026-08-12 | 2233, 2235FS-20d |  | Sector 43 | 9720636 |
| 2237 | 37300.37500.38800.40000.42200.43400.54200.1237000 | Electrical wiring work | 12d | 2026-08-03 | 2026-08-14 | 2236FS-10d |  | Sector 43 | 9720646 |
| 2238 | 37300.37500.38800.40000.42200.43400.54200.1237100 | Aluminium door-window fixing | 19d | 2026-09-14 | 2026-10-02 | 2228, 2237FS+30d |  | Sector 43 | 9720656 |
| 2239 | 37300.37500.38800.40000.42200.43400.54200.1237200 | Putty primer coat | 10d | 2026-09-25 | 2026-10-04 | 2238FS-8d |  | Sector 43 | 9720666 |
| 2240 | 37300.37500.38800.40000.42200.43400.54200.1237300 | Prehung door fixing | 8d | 2026-09-30 | 2026-10-07 | 2239FS-5d |  | Sector 43 | 9720676 |
| 2241 | 37300.37500.38800.40000.42200.43400.54200.1237400 | Painting 1st coat | 12d | 2026-10-08 | 2026-10-19 | 2240 |  | Sector 43 | 9720686 |
| 2242 | 37300.37500.38800.40000.42200.43400.54200.1237500 | False Cieling panel fixing | 10d | 2026-10-20 | 2026-10-29 | 2225, 2241 |  | Sector 43 | 9720696 |

| ID | WBS | Task | Duration | Start | Finish | Predecessors | Constraint | Calendar | Unique_Task_ID |
| --- | --- | --- | --- | --- | --- | --- | --- | --- | --- |
| 2243 | 37300.37500.38800.40000.42200.43400.54000 | **3rd floor** | 130d | 2026-07-04 | 2026-12-25 |  | start no earlier than 2026-07-04 | Sector 43 | 9698266 |
| 2244 | 37300.37500.38800.40000.42200.43400.54000.1237600 | Block Work | 10d | 2026-07-04 | 2026-07-13 | 2227 |  | Sector 43 | 9720706 |
| 2245 | 37300.37500.38800.40000.42200.43400.54000.1237700 | Installation of temporary Main door | 4d | 2026-07-14 | 2026-07-17 | 2244 |  | Sector 43 | 9720716 |
| 2246 | 37300.37500.38800.40000.42200.43400.54000.1237800 | Fire sprinkler pipe fixing | 10d | 2026-07-14 | 2026-07-23 | 2229, 2244 |  | Sector 43 | 9720726 |
| 2247 | 37300.37500.38800.40000.42200.43400.54000.1237900 | Internal Plumbing Works | 15d | 2026-07-14 | 2026-07-28 | 2244 |  | Sector 43 | 9720736 |
| 2248 | 37300.37500.38800.40000.42200.43400.54000.1238000 | Waterproofing | 21d | 2026-07-29 | 2026-08-18 | 2247 |  | Sector 43 | 9720746 |
| 2249 | 37300.37500.38800.40000.42200.43400.54000.1238100 | Internal Plaster | 12d | 2026-07-14 | 2026-07-25 | 2247FS-15d |  | Sector 43 | 9720756 |
| 2250 | 37300.37500.38800.40000.42200.43400.54000.1238200 | IPS flooring work | 13d | 2026-07-14 | 2026-07-26 | 2244 |  | Sector 43 | 9720766 |
| 2251 | 37300.37500.38800.40000.42200.43400.54000.1238300 | Toilet dado work | 12d | 2026-08-17 | 2026-08-28 | 2248FS-2d, 2249 |  | Sector 43 | 9720776 |
| 2252 | 37300.37500.38800.40000.42200.43400.54000.1238400 | Toilet flooring work | 12d | 2026-08-21 | 2026-09-01 | 2251FS-8d |  | Sector 43 | 9720786 |
| 2253 | 37300.37500.38800.40000.42200.43400.54000.1238500 | Living dinning flooring | 12d | 2026-08-13 | 2026-08-24 | 2250, 2252FS-20d |  | Sector 43 | 9720796 |
| 2254 | 37300.37500.38800.40000.42200.43400.54000.1238600 | Electrical wiring work | 12d | 2026-08-15 | 2026-08-26 | 2253FS-10d |  | Sector 43 | 9720806 |
| 2255 | 37300.37500.38800.40000.42200.43400.54000.1238700 | Aluminium door-window fixing | 19d | 2026-09-26 | 2026-10-14 | 2245, 2254FS+30d |  | Sector 43 | 9720816 |
| 2256 | 37300.37500.38800.40000.42200.43400.54000.1238800 | Putty primer coat | 10d | 2026-10-07 | 2026-10-16 | 2255FS-8d |  | Sector 43 | 9720826 |
| 2257 | 37300.37500.38800.40000.42200.43400.54000.1238900 | Prehung door fixing | 8d | 2026-10-12 | 2026-10-19 | 2256FS-5d |  | Sector 43 | 9720836 |
| 2258 | 37300.37500.38800.40000.42200.43400.54000.1239000 | Painting 1st coat | 12d | 2026-10-20 | 2026-10-31 | 2257 |  | Sector 43 | 9720846 |
| 2259 | 37300.37500.38800.40000.42200.43400.54000.1239100 | False Cieling panel fixing | 10d | 2026-12-16 | 2026-12-25 | 2242, 2258 |  | Sector 43 | 9720856 |
| 2260 | 37300.37500.38800.40000.42200.43400.53800 | **4th floor** | 131d | 2026-07-14 | 2027-01-05 |  | start no earlier than 2026-07-14 | Sector 43 | 9698276 |
| 2261 | 37300.37500.38800.40000.42200.43400.53800.1239200 | Block Work | 10d | 2026-07-14 | 2026-07-23 | 2244 |  | Sector 43 | 9720866 |
| 2262 | 37300.37500.38800.40000.42200.43400.53800.1239300 | Installation of temporary Main door | 4d | 2026-07-24 | 2026-07-27 | 2261 |  | Sector 43 | 9720876 |
| 2263 | 37300.37500.38800.40000.42200.43400.53800.1239400 | Fire sprinkler pipe fixing | 10d | 2026-07-24 | 2026-08-02 | 2246, 2261 |  | Sector 43 | 9720886 |
| 2264 | 37300.37500.38800.40000.42200.43400.53800.1239500 | Internal Plumbing Works | 15d | 2026-07-24 | 2026-08-07 | 2261 |  | Sector 43 | 9720896 |
| 2265 | 37300.37500.38800.40000.42200.43400.53800.1239600 | Waterproofing | 21d | 2026-08-08 | 2026-08-28 | 2264 |  | Sector 43 | 9720906 |
| 2266 | 37300.37500.38800.40000.42200.43400.53800.1239700 | Internal Plaster | 10d | 2026-07-27 | 2026-08-05 | 2264FS-12d |  | Sector 43 | 9720916 |
| 2267 | 37300.37500.38800.40000.42200.43400.53800.1239800 | IPS flooring work | 13d | 2026-07-24 | 2026-08-05 | 2261 |  | Sector 43 | 9720926 |
| 2268 | 37300.37500.38800.40000.42200.43400.53800.1239900 | Toilet dado work | 12d | 2026-08-27 | 2026-09-07 | 2265FS-2d, 2266 |  | Sector 43 | 9720936 |
| 2269 | 37300.37500.38800.40000.42200.43400.53800.1240000 | Toilet flooring work | 12d | 2026-09-01 | 2026-09-12 | 2268FS-7d |  | Sector 43 | 9720946 |
| 2270 | 37300.37500.38800.40000.42200.43400.53800.1240100 | Living dinning flooring | 12d | 2026-08-24 | 2026-09-04 | 2267, 2269FS-20d |  | Sector 43 | 9720956 |
| 2271 | 37300.37500.38800.40000.42200.43400.53800.1240200 | Electrical wiring work | 12d | 2026-08-26 | 2026-09-06 | 2270FS-10d |  | Sector 43 | 9720966 |
| 2272 | 37300.37500.38800.40000.42200.43400.53800.1240300 | Aluminium door-window fixing | 19d | 2026-10-07 | 2026-10-25 | 2262, 2271FS+30d |  | Sector 43 | 9720976 |
| 2273 | 37300.37500.38800.40000.42200.43400.53800.1240400 | Putty primer coat | 10d | 2026-10-18 | 2026-10-27 | 2272FS-8d |  | Sector 43 | 9720986 |
| 2274 | 37300.37500.38800.40000.42200.43400.53800.1240500 | Prehung door fixing | 8d | 2026-10-23 | 2026-10-30 | 2273FS-5d |  | Sector 43 | 9720996 |
| 2275 | 37300.37500.38800.40000.42200.43400.53800.1240600 | Painting 1st coat | 12d | 2026-10-31 | 2026-12-26 | 2274 |  | Sector 43 | 9721006 |
| 2276 | 37300.37500.38800.40000.42200.43400.53800.1240700 | False Cieling panel fixing | 10d | 2026-12-27 | 2027-01-05 | 2259, 2275 |  | Sector 43 | 9721016 |

| ID | WBS | Task | Duration | Start | Finish | Predecessors | Constraint | Calendar | Unique_Task_ID |
| --- | --- | --- | --- | --- | --- | --- | --- | --- | --- |
| 2277 | 37300.37500.38800.40000.42200.43400.53700 | **5th floor** | 139d | 2026-07-24 | 2027-01-23 |  | start no earlier than 2026-07-24 | Sector 43 | 9698286 |
| 2278 | 37300.37500.38800.40000.42200.43400.53700.1240800 | Block Work | 10d | 2026-07-24 | 2026-08-02 | 2261 |  | Sector 43 | 9721026 |
| 2279 | 37300.37500.38800.40000.42200.43400.53700.1240900 | Installation of temporary Main door | 4d | 2026-08-03 | 2026-08-06 | 2278 |  | Sector 43 | 9721036 |
| 2280 | 37300.37500.38800.40000.42200.43400.53700.1241000 | Fire sprinkler pipe fixing | 10d | 2026-08-03 | 2026-08-12 | 2263, 2278 |  | Sector 43 | 9721046 |
| 2281 | 37300.37500.38800.40000.42200.43400.53700.1241100 | Internal Plumbing Works | 15d | 2026-08-03 | 2026-08-17 | 2278 |  | Sector 43 | 9721056 |
| 2282 | 37300.37500.38800.40000.42200.43400.53700.1241200 | Waterproofing | 21d | 2026-08-18 | 2026-09-07 | 2281 |  | Sector 43 | 9721066 |
| 2283 | 37300.37500.38800.40000.42200.43400.53700.1241300 | Internal Plaster | 10d | 2026-08-07 | 2026-08-16 | 2281FS-11d |  | Sector 43 | 9721076 |
| 2284 | 37300.37500.38800.40000.42200.43400.53700.1241400 | IPS flooring work | 13d | 2026-08-03 | 2026-08-15 | 2278 |  | Sector 43 | 9721086 |
| 2285 | 37300.37500.38800.40000.42200.43400.53700.1241500 | Toilet dado work | 12d | 2026-09-06 | 2026-09-17 | 2282FS-2d, 2283 |  | Sector 43 | 9721096 |
| 2286 | 37300.37500.38800.40000.42200.43400.53700.1241600 | Toilet flooring work | 12d | 2026-09-13 | 2026-09-24 | 2285FS-5d |  | Sector 43 | 9721106 |
| 2287 | 37300.37500.38800.40000.42200.43400.53700.1241700 | Living dinning flooring | 12d | 2026-09-05 | 2026-09-16 | 2284, 2286FS-20d |  | Sector 43 | 9721116 |
| 2288 | 37300.37500.38800.40000.42200.43400.53700.1241800 | Electrical wiring work | 12d | 2026-09-07 | 2026-09-18 | 2287FS-10d |  | Sector 43 | 9721126 |
| 2289 | 37300.37500.38800.40000.42200.43400.53700.1241900 | Aluminium door-window fixing | 25d | 2026-10-19 | 2026-12-27 | 2279, 2288FS+30d |  | Sector 43 | 9721136 |
| 2290 | 37300.37500.38800.40000.42200.43400.53700.1242000 | Putty primer coat | 10d | 2026-12-20 | 2026-12-29 | 2289FS-8d |  | Sector 43 | 9721146 |
| 2291 | 37300.37500.38800.40000.42200.43400.53700.1242100 | Prehung door fixing | 8d | 2026-12-25 | 2027-01-01 | 2290FS-5d |  | Sector 43 | 9721156 |
| 2292 | 37300.37500.38800.40000.42200.43400.53700.1242200 | Painting 1st coat | 12d | 2027-01-02 | 2027-01-13 | 2291 |  | Sector 43 | 9721166 |
| 2293 | 37300.37500.38800.40000.42200.43400.53700.1242300 | False Cieling panel fixing | 10d | 2027-01-14 | 2027-01-23 | 2276, 2292 |  | Sector 43 | 9721176 |
| 2294 | 37300.37500.38800.40000.42200.43400.53500 | **6th floor** | 139d | 2026-08-03 | 2027-02-02 |  | start no earlier than 2026-08-03 | Sector 43 | 9698296 |
| 2295 | 37300.37500.38800.40000.42200.43400.53500.1242400 | Block Work | 10d | 2026-08-03 | 2026-08-12 | 2278 |  | Sector 43 | 9721186 |
| 2296 | 37300.37500.38800.40000.42200.43400.53500.1242500 | Installation of temporary Main door | 4d | 2026-08-13 | 2026-08-16 | 2295 |  | Sector 43 | 9721196 |
| 2297 | 37300.37500.38800.40000.42200.43400.53500.1242600 | Fire sprinkler pipe fixing | 10d | 2026-08-13 | 2026-08-22 | 2280, 2295 |  | Sector 43 | 9721206 |
| 2298 | 37300.37500.38800.40000.42200.43400.53500.1242700 | Internal Plumbing Works | 15d | 2026-08-13 | 2026-08-27 | 2295 |  | Sector 43 | 9721216 |
| 2299 | 37300.37500.38800.40000.42200.43400.53500.1242800 | Waterproofing | 21d | 2026-08-28 | 2026-09-17 | 2298 |  | Sector 43 | 9721226 |
| 2300 | 37300.37500.38800.40000.42200.43400.53500.1242900 | Internal Plaster | 10d | 2026-08-18 | 2026-08-27 | 2298FS-10d |  | Sector 43 | 9721236 |
| 2301 | 37300.37500.38800.40000.42200.43400.53500.1243000 | IPS flooring work | 10d | 2026-08-13 | 2026-08-22 | 2295 |  | Sector 43 | 9721246 |
| 2302 | 37300.37500.38800.40000.42200.43400.53500.1243100 | Toilet dado work | 12d | 2026-09-16 | 2026-09-27 | 2299FS-2d, 2300 |  | Sector 43 | 9721256 |
| 2303 | 37300.37500.38800.40000.42200.43400.53500.1243200 | Toilet flooring work | 12d | 2026-09-28 | 2026-10-09 | 2302 |  | Sector 43 | 9721266 |
| 2304 | 37300.37500.38800.40000.42200.43400.53500.1243300 | Living dinning flooring | 12d | 2026-09-20 | 2026-10-01 | 2301, 2303FS-20d |  | Sector 43 | 9721276 |
| 2305 | 37300.37500.38800.40000.42200.43400.53500.1243400 | Electrical wiring work | 12d | 2026-09-22 | 2026-10-03 | 2304FS-10d |  | Sector 43 | 9721286 |
| 2306 | 37300.37500.38800.40000.42200.43400.53500.1243500 | Aluminium door-window fixing | 19d | 2026-12-18 | 2027-01-05 | 2296, 2305FS+30d |  | Sector 43 | 9721296 |
| 2307 | 37300.37500.38800.40000.42200.43400.53500.1243600 | Putty primer coat | 10d | 2026-12-29 | 2027-01-07 | 2306FS-8d |  | Sector 43 | 9721306 |
| 2308 | 37300.37500.38800.40000.42200.43400.53500.1243700 | Prehung door fixing | 8d | 2027-01-03 | 2027-01-10 | 2307FS-5d |  | Sector 43 | 9721316 |
| 2309 | 37300.37500.38800.40000.42200.43400.53500.1243800 | Painting 1st coat | 12d | 2027-01-11 | 2027-01-22 | 2308 |  | Sector 43 | 9721326 |
| 2310 | 37300.37500.38800.40000.42200.43400.53500.1243900 | False Cieling panel fixing | 10d | 2027-01-24 | 2027-02-02 | 2293, 2309 |  | Sector 43 | 9721336 |

| ID | WBS | Task | Duration | Start | Finish | Predecessors | Constraint | Calendar | Unique_Task_ID |
| --- | --- | --- | --- | --- | --- | --- | --- | --- | --- |
| 2311 | 37300.37500.38800.40000.42200.43400.53400 | **7th floor** | 139d | 2026-08-13 | 2027-02-12 |  | start no earlier than 2026-08-13 | Sector 43 | 9698306 |
| 2312 | 37300.37500.38800.40000.42200.43400.53400.1244000 | Block Work | 10d | 2026-08-13 | 2026-08-22 | 2295 |  | Sector 43 | 9721346 |
| 2313 | 37300.37500.38800.40000.42200.43400.53400.1244100 | Installation of temporary Main door | 4d | 2026-08-23 | 2026-08-26 | 2312 |  | Sector 43 | 9721356 |
| 2314 | 37300.37500.38800.40000.42200.43400.53400.1244200 | Fire sprinkler pipe fixing | 10d | 2026-08-23 | 2026-09-01 | 2297, 2312 |  | Sector 43 | 9721366 |
| 2315 | 37300.37500.38800.40000.42200.43400.53400.1244300 | Internal Plumbing Works | 15d | 2026-08-23 | 2026-09-06 | 2312 |  | Sector 43 | 9721376 |
| 2316 | 37300.37500.38800.40000.42200.43400.53400.1244400 | Waterproofing | 21d | 2026-09-07 | 2026-09-27 | 2315 |  | Sector 43 | 9721386 |
| 2317 | 37300.37500.38800.40000.42200.43400.53400.1244500 | Internal Plaster | 10d | 2026-08-28 | 2026-09-06 | 2315FS-10d |  | Sector 43 | 9721396 |
| 2318 | 37300.37500.38800.40000.42200.43400.53400.1244600 | IPS flooring work | 10d | 2026-08-23 | 2026-09-01 | 2312 |  | Sector 43 | 9721406 |
| 2319 | 37300.37500.38800.40000.42200.43400.53400.1244700 | Toilet dado work | 12d | 2026-09-26 | 2026-10-07 | 2316FS-2d, 2317 |  | Sector 43 | 9721416 |
| 2320 | 37300.37500.38800.40000.42200.43400.53400.1244800 | Toilet flooring work | 12d | 2026-10-08 | 2026-10-19 | 2319 |  | Sector 43 | 9721426 |
| 2321 | 37300.37500.38800.40000.42200.43400.53400.1244900 | Living dinning flooring | 12d | 2026-09-19 | 2026-09-30 | 2318, 2320FS-31d |  | Sector 43 | 9721436 |
| 2322 | 37300.37500.38800.40000.42200.43400.53400.1245000 | Electrical wiring work | 12d | 2026-09-21 | 2026-10-02 | 2321FS-10d |  | Sector 43 | 9721446 |
| 2323 | 37300.37500.38800.40000.42200.43400.53400.1245100 | Aluminium door-window fixing | 19d | 2026-12-17 | 2027-01-04 | 2313, 2322FS+30d |  | Sector 43 | 9721456 |
| 2324 | 37300.37500.38800.40000.42200.43400.53400.1245200 | Putty primer coat | 10d | 2026-12-28 | 2027-01-06 | 2323FS-8d |  | Sector 43 | 9721466 |
| 2325 | 37300.37500.38800.40000.42200.43400.53400.1245300 | Prehung door fixing | 8d | 2027-01-02 | 2027-01-09 | 2324FS-5d |  | Sector 43 | 9721476 |
| 2326 | 37300.37500.38800.40000.42200.43400.53400.1245400 | Painting 1st coat | 12d | 2027-01-10 | 2027-01-21 | 2325 |  | Sector 43 | 9721486 |
| 2327 | 37300.37500.38800.40000.42200.43400.53400.1245500 | False Cieling panel fixing | 10d | 2027-02-03 | 2027-02-12 | 2310, 2326 |  | Sector 43 | 9721496 |
| 2328 | 37300.37500.38800.40000.42200.43400.53100 | **8th floor** | 139d | 2026-08-23 | 2027-02-22 |  | start no earlier than 2026-08-23 | Sector 43 | 9698316 |
| 2329 | 37300.37500.38800.40000.42200.43400.53100.1245600 | Block Work | 10d | 2026-08-23 | 2026-09-01 | 2312 |  | Sector 43 | 9721506 |
| 2330 | 37300.37500.38800.40000.42200.43400.53100.1245700 | Installation of temporary Main door | 4d | 2026-09-02 | 2026-09-05 | 2329 |  | Sector 43 | 9721516 |
| 2331 | 37300.37500.38800.40000.42200.43400.53100.1245800 | Fire sprinkler pipe fixing | 10d | 2026-09-02 | 2026-09-11 | 2314, 2329 |  | Sector 43 | 9721526 |
| 2332 | 37300.37500.38800.40000.42200.43400.53100.1245900 | Internal Plumbing Works | 15d | 2026-09-02 | 2026-09-16 | 2329 |  | Sector 43 | 9721536 |
| 2333 | 37300.37500.38800.40000.42200.43400.53100.1246000 | Waterproofing | 21d | 2026-09-17 | 2026-10-07 | 2332 |  | Sector 43 | 9721546 |
| 2334 | 37300.37500.38800.40000.42200.43400.53100.1246100 | Internal Plaster | 10d | 2026-09-09 | 2026-09-18 | 2332FS-8d |  | Sector 43 | 9721556 |
| 2335 | 37300.37500.38800.40000.42200.43400.53100.1246200 | IPS flooring work | 13d | 2026-09-02 | 2026-09-14 | 2329 |  | Sector 43 | 9721566 |
| 2336 | 37300.37500.38800.40000.42200.43400.53100.1246300 | Toilet dado work | 10d | 2026-10-06 | 2026-10-15 | 2333FS-2d, 2334 |  | Sector 43 | 9721576 |
| 2337 | 37300.37500.38800.40000.42200.43400.53100.1246400 | Toilet flooring work | 10d | 2026-10-16 | 2026-10-25 | 2336 |  | Sector 43 | 9721586 |
| 2338 | 37300.37500.38800.40000.42200.43400.53100.1246500 | Living dinning flooring | 31d | 2026-09-02 | 2026-10-02 | 2329 |  | Sector 43 | 9721596 |
| 2339 | 37300.37500.38800.40000.42200.43400.53100.1246600 | Electrical wiring work | 12d | 2026-09-23 | 2026-10-04 | 2338FS-10d |  | Sector 43 | 9721606 |
| 2340 | 37300.37500.38800.40000.42200.43400.53100.1246700 | Aluminium door-window fixing | 19d | 2026-12-19 | 2027-01-06 | 2330, 2339FS+30d |  | Sector 43 | 9721616 |
| 2341 | 37300.37500.38800.40000.42200.43400.53100.1246800 | Putty primer coat | 10d | 2026-12-30 | 2027-01-08 | 2340FS-8d |  | Sector 43 | 9721626 |
| 2342 | 37300.37500.38800.40000.42200.43400.53100.1246900 | Prehung door fixing | 8d | 2027-01-04 | 2027-01-11 | 2341FS-5d |  | Sector 43 | 9721636 |
| 2343 | 37300.37500.38800.40000.42200.43400.53100.1247000 | Painting 1st coat | 12d | 2027-01-12 | 2027-01-23 | 2342 |  | Sector 43 | 9721646 |
| 2344 | 37300.37500.38800.40000.42200.43400.53100.1247100 | False Cieling panel fixing | 10d | 2027-02-13 | 2027-02-22 | 2327, 2343 |  | Sector 43 | 9721656 |

| ID | WBS | Task | Duration | Start | Finish | Predecessors | Constraint | Calendar | Unique_Task_ID |
| --- | --- | --- | --- | --- | --- | --- | --- | --- | --- |
| 2345 | 37300.37500.38800.40000.42200.43400.53000 | **9th floor** | 178d | 2026-09-02 | 2027-04-12 |  | start no earlier than 2026-09-02 | Sector 43 | 9698326 |
| 2346 | 37300.37500.38800.40000.42200.43400.53000.1247200 | Block Work | 10d | 2026-09-02 | 2026-09-11 | 2329 |  | Sector 43 | 9721666 |
| 2347 | 37300.37500.38800.40000.42200.43400.53000.1247300 | Installation of temporary Main door | 4d | 2026-09-12 | 2026-09-15 | 2346 |  | Sector 43 | 9721676 |
| 2348 | 37300.37500.38800.40000.42200.43400.53000.1247400 | Fire sprinkler pipe fixing | 10d | 2026-09-12 | 2026-09-21 | 2331, 2346 |  | Sector 43 | 9721686 |
| 2349 | 37300.37500.38800.40000.42200.43400.53000.1247500 | Internal Plumbing Works | 15d | 2026-09-07 | 2026-09-21 | 2346FS-5d |  | Sector 43 | 9721696 |
| 2350 | 37300.37500.38800.40000.42200.43400.53000.1247600 | Waterproofing | 21d | 2026-09-22 | 2026-10-12 | 2349 |  | Sector 43 | 9721706 |
| 2351 | 37300.37500.38800.40000.42200.43400.53000.1247700 | Internal Plaster | 15d | 2026-09-13 | 2026-09-27 | 2349FS-9d |  | Sector 43 | 9721716 |
| 2352 | 37300.37500.38800.40000.42200.43400.53000.1247800 | IPS flooring work | 13d | 2026-09-12 | 2026-09-24 | 2346 |  | Sector 43 | 9721726 |
| 2353 | 37300.37500.38800.40000.42200.43400.53000.1247900 | Toilet dado work | 25d | 2026-10-11 | 2026-12-19 | 2350FS-2d, 2351 |  | Sector 43 | 9721736 |
| 2354 | 37300.37500.38800.40000.42200.43400.53000.1248000 | Toilet flooring work | 25d | 2026-12-20 | 2027-01-13 | 2353 |  | Sector 43 | 9721746 |
| 2355 | 37300.37500.38800.40000.42200.43400.53000.1248100 | Living dinning flooring | 31d | 2026-12-25 | 2027-01-24 | 2352, 2354FS-20d |  | Sector 43 | 9721756 |
| 2356 | 37300.37500.38800.40000.42200.43400.53000.1248200 | Electrical wiring work | 12d | 2027-01-15 | 2027-01-26 | 2355FS-10d |  | Sector 43 | 9721766 |
| 2357 | 37300.37500.38800.40000.42200.43400.53000.1248300 | Aluminium door-window fixing | 19d | 2027-02-26 | 2027-03-16 | 2347, 2356FS+30d |  | Sector 43 | 9721776 |
| 2358 | 37300.37500.38800.40000.42200.43400.53000.1248400 | Putty primer coat | 10d | 2027-03-09 | 2027-03-18 | 2357FS-8d |  | Sector 43 | 9721786 |
| 2359 | 37300.37500.38800.40000.42200.43400.53000.1248500 | Prehung door fixing | 8d | 2027-03-14 | 2027-03-21 | 2358FS-5d |  | Sector 43 | 9721796 |
| 2360 | 37300.37500.38800.40000.42200.43400.53000.1248600 | Painting 1st coat | 12d | 2027-03-22 | 2027-04-02 | 2359 |  | Sector 43 | 9721806 |
| 2361 | 37300.37500.38800.40000.42200.43400.53000.1248700 | False Cieling panel fixing | 10d | 2027-04-03 | 2027-04-12 | 2344, 2360 |  | Sector 43 | 9721816 |
| 2362 | 37300.37500.38800.40000.42200.43400.52800 | **10th floor** | 178d | 2026-09-12 | 2027-04-22 |  | start no earlier than 2026-09-12 | Sector 43 | 9698336 |
| 2363 | 37300.37500.38800.40000.42200.43400.52800.1248800 | Block Work | 10d | 2026-09-12 | 2026-09-21 | 2346 |  | Sector 43 | 9721826 |
| 2364 | 37300.37500.38800.40000.42200.43400.52800.1248900 | Installation of temporary Main door | 4d | 2026-09-22 | 2026-09-25 | 2363 |  | Sector 43 | 9721836 |
| 2365 | 37300.37500.38800.40000.42200.43400.52800.1249000 | Fire sprinkler pipe fixing | 10d | 2026-09-22 | 2026-10-01 | 2348, 2363 |  | Sector 43 | 9721846 |
| 2366 | 37300.37500.38800.40000.42200.43400.52800.1249100 | Internal Plumbing Works | 5d | 2026-09-22 | 2026-09-26 | 2363 |  | Sector 43 | 9721856 |
| 2367 | 37300.37500.38800.40000.42200.43400.52800.1249200 | Waterproofing | 21d | 2026-09-27 | 2026-10-17 | 2366 |  | Sector 43 | 9721866 |
| 2368 | 37300.37500.38800.40000.42200.43400.52800.1249300 | Internal Plaster | 15d | 2026-09-18 | 2026-10-02 | 2366FS-9d |  | Sector 43 | 9721876 |
| 2369 | 37300.37500.38800.40000.42200.43400.52800.1249400 | IPS flooring work | 13d | 2026-09-22 | 2026-10-04 | 2363 |  | Sector 43 | 9721886 |
| 2370 | 37300.37500.38800.40000.42200.43400.52800.1249500 | Toilet dado work | 25d | 2026-10-16 | 2026-12-24 | 2367FS-2d, 2368 |  | Sector 43 | 9721896 |
| 2371 | 37300.37500.38800.40000.42200.43400.52800.1249600 | Toilet flooring work | 25d | 2026-12-25 | 2027-01-18 | 2370 |  | Sector 43 | 9721906 |
| 2372 | 37300.37500.38800.40000.42200.43400.52800.1249700 | Living dinning flooring | 31d | 2026-12-30 | 2027-01-29 | 2369, 2371FS-20d |  | Sector 43 | 9721916 |
| 2373 | 37300.37500.38800.40000.42200.43400.52800.1249800 | Electrical wiring work | 12d | 2027-01-20 | 2027-01-31 | 2372FS-10d |  | Sector 43 | 9721926 |
| 2374 | 37300.37500.38800.40000.42200.43400.52800.1249900 | Aluminium door-window fixing | 19d | 2027-01-24 | 2027-02-11 | 2364, 2373FS-8d |  | Sector 43 | 9721936 |
| 2375 | 37300.37500.38800.40000.42200.43400.52800.1250000 | Putty primer coat | 10d | 2027-02-04 | 2027-02-13 | 2374FS-8d |  | Sector 43 | 9721946 |
| 2376 | 37300.37500.38800.40000.42200.43400.52800.1250100 | Prehung door fixing | 8d | 2027-02-09 | 2027-02-16 | 2375FS-5d |  | Sector 43 | 9721956 |
| 2377 | 37300.37500.38800.40000.42200.43400.52800.1250200 | Painting 1st coat | 12d | 2027-02-17 | 2027-02-28 | 2376 |  | Sector 43 | 9721966 |
| 2378 | 37300.37500.38800.40000.42200.43400.52800.1250300 | False Cieling panel fixing | 10d | 2027-04-13 | 2027-04-22 | 2361, 2377 |  | Sector 43 | 9721976 |

| ID | WBS | Task | Duration | Start | Finish | Predecessors | Constraint | Calendar | Unique_Task_ID |
| --- | --- | --- | --- | --- | --- | --- | --- | --- | --- |
| 2379 | 37300.37500.38800.40000.42200.43400.52700 | **11th floor** | 178d | 2026-09-22 | 2027-05-02 |  | start no earlier than 2026-09-22 | Sector 43 | 9698346 |
| 2380 | 37300.37500.38800.40000.42200.43400.52700.1250400 | Block Work | 10d | 2026-09-22 | 2026-10-01 | 2363 |  | Sector 43 | 9721986 |
| 2381 | 37300.37500.38800.40000.42200.43400.52700.1250500 | Installation of temporary Main door | 4d | 2026-10-02 | 2026-10-05 | 2380 |  | Sector 43 | 9721996 |
| 2382 | 37300.37500.38800.40000.42200.43400.52700.1250600 | Fire sprinkler pipe fixing | 10d | 2026-10-02 | 2026-10-11 | 2365, 2380 |  | Sector 43 | 9722006 |
| 2383 | 37300.37500.38800.40000.42200.43400.52700.1250700 | Internal Plumbing Works | 15d | 2026-10-02 | 2026-10-16 | 2380 |  | Sector 43 | 9722016 |
| 2384 | 37300.37500.38800.40000.42200.43400.52700.1250800 | Waterproofing | 21d | 2026-10-17 | 2026-12-21 | 2383 |  | Sector 43 | 9722026 |
| 2385 | 37300.37500.38800.40000.42200.43400.52700.1250900 | Internal Plaster | 15d | 2026-10-17 | 2026-10-31 | 2383 |  | Sector 43 | 9722036 |
| 2386 | 37300.37500.38800.40000.42200.43400.52700.1251000 | IPS flooring work | 13d | 2026-10-02 | 2026-10-14 | 2380 |  | Sector 43 | 9722046 |
| 2387 | 37300.37500.38800.40000.42200.43400.52700.1251100 | Toilet dado work | 25d | 2026-12-20 | 2027-01-13 | 2384FS-2d, 2385 |  | Sector 43 | 9722056 |
| 2388 | 37300.37500.38800.40000.42200.43400.52700.1251200 | Toilet flooring work | 25d | 2027-01-14 | 2027-02-07 | 2386, 2387 |  | Sector 43 | 9722066 |
| 2389 | 37300.37500.38800.40000.42200.43400.52700.1251300 | Living dinning flooring | 31d | 2027-01-19 | 2027-02-18 | 2388FS-20d |  | Sector 43 | 9722076 |
| 2390 | 37300.37500.38800.40000.42200.43400.52700.1251400 | Electrical wiring work | 12d | 2027-02-09 | 2027-02-20 | 2389FS-10d |  | Sector 43 | 9722086 |
| 2391 | 37300.37500.38800.40000.42200.43400.52700.1251500 | Aluminium door-window fixing | 19d | 2027-02-13 | 2027-03-03 | 2381, 2390FS-8d |  | Sector 43 | 9722096 |
| 2392 | 37300.37500.38800.40000.42200.43400.52700.1251600 | Putty primer coat | 10d | 2027-02-24 | 2027-03-05 | 2391FS-8d |  | Sector 43 | 9722106 |
| 2393 | 37300.37500.38800.40000.42200.43400.52700.1251700 | Prehung door fixing | 8d | 2027-03-01 | 2027-03-08 | 2392FS-5d |  | Sector 43 | 9722116 |
| 2394 | 37300.37500.38800.40000.42200.43400.52700.1251800 | Painting 1st coat | 12d | 2027-03-09 | 2027-03-20 | 2393 |  | Sector 43 | 9722126 |
| 2395 | 37300.37500.38800.40000.42200.43400.52700.1251900 | False Cieling panel fixing | 10d | 2027-04-23 | 2027-05-02 | 2378, 2394 |  | Sector 43 | 9722136 |
| 2396 | 37300.37500.38800.40000.42200.43400.52600 | **12th floor** | 171d | 2026-10-13 | 2027-05-16 |  | start no earlier than 2026-10-13 | Sector 43 | 9698356 |
| 2397 | 37300.37500.38800.40000.42200.43400.52600.1252000 | Block Work | 36d | 2026-10-13 | 2027-01-01 | 2184 |  | Sector 43 | 9722146 |
| 2398 | 37300.37500.38800.40000.42200.43400.52600.1252100 | Installation of temporary Main door | 4d | 2027-01-02 | 2027-01-05 | 2397 |  | Sector 43 | 9722156 |
| 2399 | 37300.37500.38800.40000.42200.43400.52600.1252200 | Fire sprinkler pipe fixing | 10d | 2027-01-02 | 2027-01-11 | 2382, 2397 |  | Sector 43 | 9722166 |
| 2400 | 37300.37500.38800.40000.42200.43400.52600.1252300 | Internal Plumbing Works | 15d | 2027-01-02 | 2027-01-16 | 2397 |  | Sector 43 | 9722176 |
| 2401 | 37300.37500.38800.40000.42200.43400.52600.1252400 | Waterproofing | 21d | 2027-01-17 | 2027-02-06 | 2400 |  | Sector 43 | 9722186 |
| 2402 | 37300.37500.38800.40000.42200.43400.52600.1252500 | Internal Plaster | 15d | 2027-01-17 | 2027-01-31 | 2400 |  | Sector 43 | 9722196 |
| 2403 | 37300.37500.38800.40000.42200.43400.52600.1252600 | IPS flooring work | 13d | 2027-01-02 | 2027-01-14 | 2397 |  | Sector 43 | 9722206 |
| 2404 | 37300.37500.38800.40000.42200.43400.52600.1252700 | Toilet dado work | 25d | 2027-02-05 | 2027-03-01 | 2401FS-2d, 2402 |  | Sector 43 | 9722216 |
| 2405 | 37300.37500.38800.40000.42200.43400.52600.1252800 | Toilet flooring work | 25d | 2027-03-02 | 2027-03-26 | 2404 |  | Sector 43 | 9722226 |
| 2406 | 37300.37500.38800.40000.42200.43400.52600.1252900 | Living dinning flooring | 31d | 2027-03-07 | 2027-04-06 | 2403, 2405FS-20d |  | Sector 43 | 9722236 |
| 2407 | 37300.37500.38800.40000.42200.43400.52600.1253000 | Electrical wiring work | 12d | 2027-03-28 | 2027-04-08 | 2406FS-10d |  | Sector 43 | 9722246 |
| 2408 | 37300.37500.38800.40000.42200.43400.52600.1253100 | Aluminium door-window fixing | 19d | 2027-04-01 | 2027-04-19 | 2398, 2407FS-8d |  | Sector 43 | 9722256 |
| 2409 | 37300.37500.38800.40000.42200.43400.52600.1253200 | Putty primer coat | 10d | 2027-04-12 | 2027-04-21 | 2408FS-8d |  | Sector 43 | 9722266 |
| 2410 | 37300.37500.38800.40000.42200.43400.52600.1253300 | Prehung door fixing | 8d | 2027-04-17 | 2027-04-24 | 2409FS-5d |  | Sector 43 | 9722276 |
| 2411 | 37300.37500.38800.40000.42200.43400.52600.1253400 | Painting 1st coat | 12d | 2027-04-25 | 2027-05-06 | 2410 |  | Sector 43 | 9722286 |
| 2412 | 37300.37500.38800.40000.42200.43400.52600.1253500 | False Cieling panel fixing | 10d | 2027-05-07 | 2027-05-16 | 2395, 2411 |  | Sector 43 | 9722296 |

| ID | WBS | Task | Duration | Start | Finish | Predecessors | Constraint | Calendar | Unique_Task_ID |
| --- | --- | --- | --- | --- | --- | --- | --- | --- | --- |
| 2413 | 37300.37500.38800.40000.42200.43400.53300 | **13th floor** | 363d | 2026-04-17 | 2027-05-29 |  | start no earlier than 2026-04-17 | Sector 43 | 9698366 |
| 2414 | 37300.37500.38800.40000.42200.43400.53300.1253600 | Block Work | 36d | 2026-10-26 | 2027-01-14 | 2185 |  | Sector 43 | 9722306 |
| 2415 | 37300.37500.38800.40000.42200.43400.53300.1253700 | Installation of temporary Main door | 4d | 2027-01-15 | 2027-01-18 | 2414 |  | Sector 43 | 9722316 |
| 2416 | 37300.37500.38800.40000.42200.43400.53300.1253800 | Fire sprinkler pipe fixing | 10d | 2027-01-15 | 2027-01-24 | 2399, 2414 |  | Sector 43 | 9722326 |
| 2417 | 37300.37500.38800.40000.42200.43400.53300.1253900 | Internal Plumbing Works | 15d | 2027-01-15 | 2027-01-29 | 2414 |  | Sector 43 | 9722336 |
| 2418 | 37300.37500.38800.40000.42200.43400.53300.1254000 | Waterproofing | 21d | 2027-01-30 | 2027-02-19 | 2417 |  | Sector 43 | 9722346 |
| 2419 | 37300.37500.38800.40000.42200.43400.53300.1254100 | Internal Plaster | 15d | 2027-01-30 | 2027-02-13 | 2417 |  | Sector 43 | 9722356 |
| 2420 | 37300.37500.38800.40000.42200.43400.53300.1254200 | IPS flooring work | 13d | 2027-01-15 | 2027-01-27 | 2414 |  | Sector 43 | 9722366 |
| 2421 | 37300.37500.38800.40000.42200.43400.53300.1254300 | Toilet dado work | 25d | 2027-02-18 | 2027-03-14 | 2418FS-2d, 2419 |  | Sector 43 | 9722376 |
| 2422 | 37300.37500.38800.40000.42200.43400.53300.1254400 | Toilet flooring work | 25d | 2027-03-15 | 2027-04-08 | 2421 |  | Sector 43 | 9722386 |
| 2423 | 37300.37500.38800.40000.42200.43400.53300.1254500 | Living dinning flooring | 31d | 2027-03-20 | 2027-04-19 | 2420, 2422FS-20d |  | Sector 43 | 9722396 |
| 2424 | 37300.37500.38800.40000.42200.43400.53300.1254600 | Electrical wiring work | 12d | 2027-04-10 | 2027-04-21 | 2423FS-10d |  | Sector 43 | 9722406 |
| 2425 | 37300.37500.38800.40000.42200.43400.53300.1254700 | Aluminium door-window fixing | 19d | 2027-04-14 | 2027-05-02 | 2415, 2424FS-8d |  | Sector 43 | 9722416 |
| 2426 | 37300.37500.38800.40000.42200.43400.53300.1254800 | Putty primer coat | 10d | 2027-04-25 | 2027-05-04 | 2425FS-8d |  | Sector 43 | 9722426 |
| 2427 | 37300.37500.38800.40000.42200.43400.53300.1254900 | Prehung door fixing | 8d | 2027-04-30 | 2027-05-07 | 2426FS-5d |  | Sector 43 | 9722436 |
| 2428 | 37300.37500.38800.40000.42200.43400.53300.1255000 | Painting 1st coat | 12d | 2027-05-08 | 2027-05-19 | 2427 |  | Sector 43 | 9722446 |
| 2429 | 37300.37500.38800.40000.42200.43400.53300.1255100 | False Cieling panel fixing | 5d | 2026-04-17 | 2026-04-21 |  | start no earlier than 2026-04-17 | Sector 43 | 9722447 |
| 2430 | 37300.37500.38800.40000.42200.43400.53300.1255200 | False Cieling panel fixing | 10d | 2027-05-20 | 2027-05-29 | 2412, 2428, 2429 |  | Sector 43 | 9722456 |
| 2431 | 37300.37500.38800.40000.42200.43400.53600 | **14th floor** | 171d | 2026-12-28 | 2027-06-16 |  | start no earlier than 2026-12-28 | Sector 43 | 9698376 |
| 2432 | 37300.37500.38800.40000.42200.43400.53600.1255300 | Block Work | 36d | 2026-12-28 | 2027-02-01 | 2186 |  | Sector 43 | 9722466 |
| 2433 | 37300.37500.38800.40000.42200.43400.53600.1255400 | Installation of temporary Main door | 4d | 2027-02-02 | 2027-02-05 | 2432 |  | Sector 43 | 9722476 |
| 2434 | 37300.37500.38800.40000.42200.43400.53600.1255500 | Fire sprinkler pipe fixing | 10d | 2027-02-02 | 2027-02-11 | 2416, 2432 |  | Sector 43 | 9722486 |
| 2435 | 37300.37500.38800.40000.42200.43400.53600.1255600 | Internal Plumbing Works | 15d | 2027-02-02 | 2027-02-16 | 2432 |  | Sector 43 | 9722496 |
| 2436 | 37300.37500.38800.40000.42200.43400.53600.1255700 | Waterproofing | 21d | 2027-02-17 | 2027-03-09 | 2435 |  | Sector 43 | 9722506 |
| 2437 | 37300.37500.38800.40000.42200.43400.53600.1255800 | Internal Plaster | 15d | 2027-02-17 | 2027-03-03 | 2435 |  | Sector 43 | 9722516 |
| 2438 | 37300.37500.38800.40000.42200.43400.53600.1255900 | IPS flooring work | 13d | 2027-02-02 | 2027-02-14 | 2432 |  | Sector 43 | 9722526 |
| 2439 | 37300.37500.38800.40000.42200.43400.53600.1256000 | Toilet dado work | 25d | 2027-03-08 | 2027-04-01 | 2436FS-2d, 2437 |  | Sector 43 | 9722536 |
| 2440 | 37300.37500.38800.40000.42200.43400.53600.1256100 | Toilet flooring work | 25d | 2027-04-02 | 2027-04-26 | 2439 |  | Sector 43 | 9722546 |
| 2441 | 37300.37500.38800.40000.42200.43400.53600.1256200 | Living dinning flooring | 31d | 2027-04-07 | 2027-05-07 | 2438, 2440FS-20d |  | Sector 43 | 9722556 |
| 2442 | 37300.37500.38800.40000.42200.43400.53600.1256300 | Electrical wiring work | 12d | 2027-04-28 | 2027-05-09 | 2441FS-10d |  | Sector 43 | 9722566 |
| 2443 | 37300.37500.38800.40000.42200.43400.53600.1256400 | Aluminium door-window fixing | 19d | 2027-05-02 | 2027-05-20 | 2433, 2442FS-8d |  | Sector 43 | 9722576 |
| 2444 | 37300.37500.38800.40000.42200.43400.53600.1256500 | Putty primer coat | 10d | 2027-05-13 | 2027-05-22 | 2443FS-8d |  | Sector 43 | 9722586 |
| 2445 | 37300.37500.38800.40000.42200.43400.53600.1256600 | Prehung door fixing | 8d | 2027-05-18 | 2027-05-25 | 2444FS-5d |  | Sector 43 | 9722596 |
| 2446 | 37300.37500.38800.40000.42200.43400.53600.1256700 | Painting 1st coat | 12d | 2027-05-26 | 2027-06-06 | 2445 |  | Sector 43 | 9722606 |
| 2447 | 37300.37500.38800.40000.42200.43400.53600.1256800 | False Cieling panel fixing | 10d | 2027-06-07 | 2027-06-16 | 2430, 2446 |  | Sector 43 | 9722616 |

| ID | WBS | Task | Duration | Start | Finish | Predecessors | Constraint | Calendar | Unique_Task_ID |
| --- | --- | --- | --- | --- | --- | --- | --- | --- | --- |
| 2448 | 37300.37500.38800.40000.42200.43400.54400 | **15th floor** | 171d | 2027-01-10 | 2027-06-29 |  | start no earlier than 2027-01-10 | Sector 43 | 9698386 |
| 2449 | 37300.37500.38800.40000.42200.43400.54400.1256900 | Block Work | 36d | 2027-01-10 | 2027-02-14 | 2187 |  | Sector 43 | 9722626 |
| 2450 | 37300.37500.38800.40000.42200.43400.54400.1257000 | Installation of temporary Main door | 4d | 2027-02-15 | 2027-02-18 | 2449 |  | Sector 43 | 9722636 |
| 2451 | 37300.37500.38800.40000.42200.43400.54400.1257100 | Fire sprinkler pipe fixing | 10d | 2027-02-15 | 2027-02-24 | 2434, 2449 |  | Sector 43 | 9722646 |
| 2452 | 37300.37500.38800.40000.42200.43400.54400.1257200 | Internal Plumbing Works | 15d | 2027-02-15 | 2027-03-01 | 2449 |  | Sector 43 | 9722656 |
| 2453 | 37300.37500.38800.40000.42200.43400.54400.1257300 | Waterproofing | 21d | 2027-03-02 | 2027-03-22 | 2452 |  | Sector 43 | 9722666 |
| 2454 | 37300.37500.38800.40000.42200.43400.54400.1257400 | Internal Plaster | 15d | 2027-03-02 | 2027-03-16 | 2452 |  | Sector 43 | 9722676 |
| 2455 | 37300.37500.38800.40000.42200.43400.54400.1257500 | IPS flooring work | 13d | 2027-02-15 | 2027-02-27 | 2449 |  | Sector 43 | 9722686 |
| 2456 | 37300.37500.38800.40000.42200.43400.54400.1257600 | Toilet dado work | 25d | 2027-03-21 | 2027-04-14 | 2453FS-2d, 2454 |  | Sector 43 | 9722696 |
| 2457 | 37300.37500.38800.40000.42200.43400.54400.1257700 | Toilet flooring work | 25d | 2027-04-15 | 2027-05-09 | 2456 |  | Sector 43 | 9722706 |
| 2458 | 37300.37500.38800.40000.42200.43400.54400.1257800 | Living dinning flooring | 31d | 2027-04-20 | 2027-05-20 | 2455, 2457FS-20d |  | Sector 43 | 9722716 |
| 2459 | 37300.37500.38800.40000.42200.43400.54400.1257900 | Electrical wiring work | 12d | 2027-05-11 | 2027-05-22 | 2458FS-10d |  | Sector 43 | 9722726 |
| 2460 | 37300.37500.38800.40000.42200.43400.54400.1258000 | Aluminium door-window fixing | 19d | 2027-05-15 | 2027-06-02 | 2450, 2459FS-8d |  | Sector 43 | 9722736 |
| 2461 | 37300.37500.38800.40000.42200.43400.54400.1258100 | Putty primer coat | 10d | 2027-05-26 | 2027-06-04 | 2460FS-8d |  | Sector 43 | 9722746 |
| 2462 | 37300.37500.38800.40000.42200.43400.54400.1258200 | Prehung door fixing | 8d | 2027-05-31 | 2027-06-07 | 2461FS-5d |  | Sector 43 | 9722756 |
| 2463 | 37300.37500.38800.40000.42200.43400.54400.1258300 | Painting 1st coat | 12d | 2027-06-08 | 2027-06-19 | 2462 |  | Sector 43 | 9722766 |
| 2464 | 37300.37500.38800.40000.42200.43400.54400.1258400 | False Cieling panel fixing | 10d | 2027-06-20 | 2027-06-29 | 2447, 2463 |  | Sector 43 | 9722776 |
| 2465 | 37300.37500.38800.40000.42200.43400.54800 | **16th floor** | 171d | 2027-01-22 | 2027-07-11 |  | start no earlier than 2027-01-22 | Sector 43 | 9698396 |
| 2466 | 37300.37500.38800.40000.42200.43400.54800.1258500 | Block Work | 36d | 2027-01-22 | 2027-02-26 | 2188 |  | Sector 43 | 9722786 |
| 2467 | 37300.37500.38800.40000.42200.43400.54800.1258600 | Installation of temporary Main door | 4d | 2027-02-27 | 2027-03-02 | 2466 |  | Sector 43 | 9722796 |
| 2468 | 37300.37500.38800.40000.42200.43400.54800.1258700 | Fire sprinkler pipe fixing | 10d | 2027-02-27 | 2027-03-08 | 2451, 2466 |  | Sector 43 | 9722806 |
| 2469 | 37300.37500.38800.40000.42200.43400.54800.1258800 | Internal Plumbing Works | 15d | 2027-02-27 | 2027-03-13 | 2466 |  | Sector 43 | 9722816 |
| 2470 | 37300.37500.38800.40000.42200.43400.54800.1258900 | Waterproofing | 21d | 2027-03-14 | 2027-04-03 | 2469 |  | Sector 43 | 9722826 |
| 2471 | 37300.37500.38800.40000.42200.43400.54800.1259000 | Internal Plaster | 15d | 2027-03-14 | 2027-03-28 | 2469 |  | Sector 43 | 9722836 |
| 2472 | 37300.37500.38800.40000.42200.43400.54800.1259100 | IPS flooring work | 13d | 2027-02-27 | 2027-03-11 | 2466 |  | Sector 43 | 9722846 |
| 2473 | 37300.37500.38800.40000.42200.43400.54800.1259200 | Toilet dado work | 25d | 2027-04-02 | 2027-04-26 | 2470FS-2d, 2471 |  | Sector 43 | 9722856 |
| 2474 | 37300.37500.38800.40000.42200.43400.54800.1259300 | Toilet flooring work | 25d | 2027-04-27 | 2027-05-21 | 2473 |  | Sector 43 | 9722866 |
| 2475 | 37300.37500.38800.40000.42200.43400.54800.1259400 | Living dinning flooring | 31d | 2027-05-02 | 2027-06-01 | 2472, 2474FS-20d |  | Sector 43 | 9722876 |
| 2476 | 37300.37500.38800.40000.42200.43400.54800.1259500 | Electrical wiring work | 12d | 2027-05-23 | 2027-06-03 | 2475FS-10d |  | Sector 43 | 9722886 |
| 2477 | 37300.37500.38800.40000.42200.43400.54800.1259600 | Aluminium door-window fixing | 19d | 2027-05-27 | 2027-06-14 | 2467, 2476FS-8d |  | Sector 43 | 9722896 |
| 2478 | 37300.37500.38800.40000.42200.43400.54800.1259700 | Putty primer coat | 10d | 2027-06-07 | 2027-06-16 | 2477FS-8d |  | Sector 43 | 9722906 |
| 2479 | 37300.37500.38800.40000.42200.43400.54800.1259800 | Prehung door fixing | 8d | 2027-06-12 | 2027-06-19 | 2478FS-5d |  | Sector 43 | 9722916 |
| 2480 | 37300.37500.38800.40000.42200.43400.54800.1259900 | Painting 1st coat | 12d | 2027-06-20 | 2027-07-01 | 2479 |  | Sector 43 | 9722926 |
| 2481 | 37300.37500.38800.40000.42200.43400.54800.1260000 | False Cieling panel fixing | 10d | 2027-07-02 | 2027-07-11 | 2464, 2480 |  | Sector 43 | 9722936 |

| ID | WBS | Task | Duration | Start | Finish | Predecessors | Constraint | Calendar | Unique_Task_ID |
| --- | --- | --- | --- | --- | --- | --- | --- | --- | --- |
| 2482 | 37300.37500.38800.40000.42200.43400.55000 | **17th floor** | 171d | 2027-02-03 | 2027-07-23 |  | start no earlier than 2027-02-03 | Sector 43 | 9698406 |
| 2483 | 37300.37500.38800.40000.42200.43400.55000.1260100 | Block Work | 36d | 2027-02-03 | 2027-03-10 | 2189 |  | Sector 43 | 9722946 |
| 2484 | 37300.37500.38800.40000.42200.43400.55000.1260200 | Installation of temporary Main door | 4d | 2027-03-11 | 2027-03-14 | 2483 |  | Sector 43 | 9722956 |
| 2485 | 37300.37500.38800.40000.42200.43400.55000.1260300 | Fire sprinkler pipe fixing | 10d | 2027-03-11 | 2027-03-20 | 2468, 2483 |  | Sector 43 | 9722966 |
| 2486 | 37300.37500.38800.40000.42200.43400.55000.1260400 | Internal Plumbing Works | 15d | 2027-03-11 | 2027-03-25 | 2483 |  | Sector 43 | 9722976 |
| 2487 | 37300.37500.38800.40000.42200.43400.55000.1260500 | Waterproofing | 21d | 2027-03-26 | 2027-04-15 | 2486 |  | Sector 43 | 9722986 |
| 2488 | 37300.37500.38800.40000.42200.43400.55000.1260600 | Internal Plaster | 15d | 2027-03-26 | 2027-04-09 | 2486 |  | Sector 43 | 9722996 |
| 2489 | 37300.37500.38800.40000.42200.43400.55000.1260700 | IPS flooring work | 13d | 2027-03-11 | 2027-03-23 | 2483 |  | Sector 43 | 9723006 |
| 2490 | 37300.37500.38800.40000.42200.43400.55000.1260800 | Toilet dado work | 25d | 2027-04-14 | 2027-05-08 | 2487FS-2d, 2488 |  | Sector 43 | 9723016 |
| 2491 | 37300.37500.38800.40000.42200.43400.55000.1260900 | Toilet flooring work | 25d | 2027-05-09 | 2027-06-02 | 2490 |  | Sector 43 | 9723026 |
| 2492 | 37300.37500.38800.40000.42200.43400.55000.1261000 | Living dinning flooring | 31d | 2027-05-14 | 2027-06-13 | 2489, 2491FS-20d |  | Sector 43 | 9723036 |
| 2493 | 37300.37500.38800.40000.42200.43400.55000.1261100 | Electrical wiring work | 12d | 2027-06-04 | 2027-06-15 | 2492FS-10d |  | Sector 43 | 9723046 |
| 2494 | 37300.37500.38800.40000.42200.43400.55000.1261200 | Aluminium door-window fixing | 19d | 2027-06-08 | 2027-06-26 | 2484, 2493FS-8d |  | Sector 43 | 9723056 |
| 2495 | 37300.37500.38800.40000.42200.43400.55000.1261300 | Putty primer coat | 10d | 2027-06-19 | 2027-06-28 | 2494FS-8d |  | Sector 43 | 9723066 |
| 2496 | 37300.37500.38800.40000.42200.43400.55000.1261400 | Prehung door fixing | 8d | 2027-06-24 | 2027-07-01 | 2495FS-5d |  | Sector 43 | 9723076 |
| 2497 | 37300.37500.38800.40000.42200.43400.55000.1261500 | Painting 1st coat | 12d | 2027-07-02 | 2027-07-13 | 2496 |  | Sector 43 | 9723086 |
| 2498 | 37300.37500.38800.40000.42200.43400.55000.1261600 | False Cieling panel fixing | 10d | 2027-07-14 | 2027-07-23 | 2481, 2497 |  | Sector 43 | 9723096 |
| 2499 | 37300.37500.38800.40000.42200.43400.55300 | **18th floor** | 171d | 2027-02-15 | 2027-08-04 |  | start no earlier than 2027-02-15 | Sector 43 | 9698416 |
| 2500 | 37300.37500.38800.40000.42200.43400.55300.1261700 | Block Work | 36d | 2027-02-15 | 2027-03-22 | 2190 |  | Sector 43 | 9723106 |
| 2501 | 37300.37500.38800.40000.42200.43400.55300.1261800 | Installation of temporary Main door | 4d | 2027-03-23 | 2027-03-26 | 2500 |  | Sector 43 | 9723116 |
| 2502 | 37300.37500.38800.40000.42200.43400.55300.1261900 | Fire sprinkler pipe fixing | 10d | 2027-03-23 | 2027-04-01 | 2485, 2500 |  | Sector 43 | 9723126 |
| 2503 | 37300.37500.38800.40000.42200.43400.55300.1262000 | Internal Plumbing Works | 15d | 2027-03-23 | 2027-04-06 | 2500 |  | Sector 43 | 9723136 |
| 2504 | 37300.37500.38800.40000.42200.43400.55300.1262100 | Waterproofing | 21d | 2027-04-07 | 2027-04-27 | 2503 |  | Sector 43 | 9723146 |
| 2505 | 37300.37500.38800.40000.42200.43400.55300.1262200 | Internal Plaster | 15d | 2027-04-07 | 2027-04-21 | 2503 |  | Sector 43 | 9723156 |
| 2506 | 37300.37500.38800.40000.42200.43400.55300.1262300 | IPS flooring work | 13d | 2027-03-23 | 2027-04-04 | 2500 |  | Sector 43 | 9723166 |
| 2507 | 37300.37500.38800.40000.42200.43400.55300.1262400 | Toilet dado work | 25d | 2027-04-26 | 2027-05-20 | 2504FS-2d, 2505 |  | Sector 43 | 9723176 |
| 2508 | 37300.37500.38800.40000.42200.43400.55300.1262500 | Toilet flooring work | 25d | 2027-05-21 | 2027-06-14 | 2507 |  | Sector 43 | 9723186 |
| 2509 | 37300.37500.38800.40000.42200.43400.55300.1262600 | Living dinning flooring | 31d | 2027-05-26 | 2027-06-25 | 2506, 2508FS-20d |  | Sector 43 | 9723196 |
| 2510 | 37300.37500.38800.40000.42200.43400.55300.1262700 | Electrical wiring work | 12d | 2027-06-16 | 2027-06-27 | 2509FS-10d |  | Sector 43 | 9723206 |
| 2511 | 37300.37500.38800.40000.42200.43400.55300.1262800 | Aluminium door-window fixing | 19d | 2027-06-20 | 2027-07-08 | 2501, 2510FS-8d |  | Sector 43 | 9723216 |
| 2512 | 37300.37500.38800.40000.42200.43400.55300.1262900 | Putty primer coat | 10d | 2027-07-01 | 2027-07-10 | 2511FS-8d |  | Sector 43 | 9723226 |
| 2513 | 37300.37500.38800.40000.42200.43400.55300.1263000 | Prehung door fixing | 8d | 2027-07-06 | 2027-07-13 | 2512FS-5d |  | Sector 43 | 9723236 |
| 2514 | 37300.37500.38800.40000.42200.43400.55300.1263100 | Painting 1st coat | 12d | 2027-07-14 | 2027-07-25 | 2513 |  | Sector 43 | 9723246 |
| 2515 | 37300.37500.38800.40000.42200.43400.55300.1263200 | False Cieling panel fixing | 10d | 2027-07-26 | 2027-08-04 | 2498, 2514 |  | Sector 43 | 9723256 |

| ID | WBS | Task | Duration | Start | Finish | Predecessors | Constraint | Calendar | Unique_Task_ID |
| --- | --- | --- | --- | --- | --- | --- | --- | --- | --- |
| 2516 | 37300.37500.38800.40000.42200.43400.55400 | **19th floor** | 171d | 2027-02-27 | 2027-08-16 |  | start no earlier than 2027-02-27 | Sector 43 | 9698426 |
| 2517 | 37300.37500.38800.40000.42200.43400.55400.1263300 | Block Work | 36d | 2027-02-27 | 2027-04-03 | 2191 |  | Sector 43 | 9723266 |
| 2518 | 37300.37500.38800.40000.42200.43400.55400.1263400 | Installation of temporary Main door | 4d | 2027-04-04 | 2027-04-07 | 2517 |  | Sector 43 | 9723276 |
| 2519 | 37300.37500.38800.40000.42200.43400.55400.1263500 | Fire sprinkler pipe fixing | 10d | 2027-04-04 | 2027-04-13 | 2502, 2517 |  | Sector 43 | 9723286 |
| 2520 | 37300.37500.38800.40000.42200.43400.55400.1263600 | Internal Plumbing Works | 15d | 2027-04-04 | 2027-04-18 | 2517 |  | Sector 43 | 9723296 |
| 2521 | 37300.37500.38800.40000.42200.43400.55400.1263700 | Waterproofing | 21d | 2027-04-19 | 2027-05-09 | 2520 |  | Sector 43 | 9723306 |
| 2522 | 37300.37500.38800.40000.42200.43400.55400.1263800 | Internal Plaster | 15d | 2027-04-19 | 2027-05-03 | 2520 |  | Sector 43 | 9723316 |
| 2523 | 37300.37500.38800.40000.42200.43400.55400.1263900 | IPS flooring work | 13d | 2027-04-04 | 2027-04-16 | 2517 |  | Sector 43 | 9723326 |
| 2524 | 37300.37500.38800.40000.42200.43400.55400.1264000 | Toilet dado work | 25d | 2027-05-08 | 2027-06-01 | 2521FS-2d, 2522 |  | Sector 43 | 9723336 |
| 2525 | 37300.37500.38800.40000.42200.43400.55400.1264100 | Toilet flooring work | 25d | 2027-06-02 | 2027-06-26 | 2524 |  | Sector 43 | 9723346 |
| 2526 | 37300.37500.38800.40000.42200.43400.55400.1264200 | Living dinning flooring | 31d | 2027-06-07 | 2027-07-07 | 2523, 2525FS-20d |  | Sector 43 | 9723356 |
| 2527 | 37300.37500.38800.40000.42200.43400.55400.1264300 | Electrical wiring work | 12d | 2027-06-28 | 2027-07-09 | 2526FS-10d |  | Sector 43 | 9723366 |
| 2528 | 37300.37500.38800.40000.42200.43400.55400.1264400 | Aluminium door-window fixing | 19d | 2027-07-02 | 2027-07-20 | 2518, 2527FS-8d |  | Sector 43 | 9723376 |
| 2529 | 37300.37500.38800.40000.42200.43400.55400.1264500 | Putty primer coat | 10d | 2027-07-13 | 2027-07-22 | 2528FS-8d |  | Sector 43 | 9723386 |
| 2530 | 37300.37500.38800.40000.42200.43400.55400.1264600 | Prehung door fixing | 8d | 2027-07-18 | 2027-07-25 | 2529FS-5d |  | Sector 43 | 9723396 |
| 2531 | 37300.37500.38800.40000.42200.43400.55400.1264700 | Painting 1st coat | 12d | 2027-07-26 | 2027-08-06 | 2530 |  | Sector 43 | 9723406 |
| 2532 | 37300.37500.38800.40000.42200.43400.55400.1264800 | False Cieling panel fixing | 10d | 2027-08-07 | 2027-08-16 | 2515, 2531 |  | Sector 43 | 9723416 |
| 2533 | 37300.37500.38800.40000.42200.43400.55500 | **20th floor** | 171d | 2027-03-11 | 2027-08-28 |  | start no earlier than 2027-03-11 | Sector 43 | 9698436 |
| 2534 | 37300.37500.38800.40000.42200.43400.55500.1264900 | Block Work | 36d | 2027-03-11 | 2027-04-15 | 2192 |  | Sector 43 | 9723426 |
| 2535 | 37300.37500.38800.40000.42200.43400.55500.1265000 | Installation of temporary Main door | 4d | 2027-04-16 | 2027-04-19 | 2534 |  | Sector 43 | 9723436 |
| 2536 | 37300.37500.38800.40000.42200.43400.55500.1265100 | Fire sprinkler pipe fixing | 10d | 2027-04-16 | 2027-04-25 | 2519, 2534 |  | Sector 43 | 9723446 |
| 2537 | 37300.37500.38800.40000.42200.43400.55500.1265200 | Internal Plumbing Works | 15d | 2027-04-16 | 2027-04-30 | 2534 |  | Sector 43 | 9723456 |
| 2538 | 37300.37500.38800.40000.42200.43400.55500.1265300 | Waterproofing | 21d | 2027-05-01 | 2027-05-21 | 2537 |  | Sector 43 | 9723466 |
| 2539 | 37300.37500.38800.40000.42200.43400.55500.1265400 | Internal Plaster | 15d | 2027-05-01 | 2027-05-15 | 2537 |  | Sector 43 | 9723476 |
| 2540 | 37300.37500.38800.40000.42200.43400.55500.1265500 | IPS flooring work | 13d | 2027-04-16 | 2027-04-28 | 2534 |  | Sector 43 | 9723486 |
| 2541 | 37300.37500.38800.40000.42200.43400.55500.1265600 | Toilet dado work | 25d | 2027-05-20 | 2027-06-13 | 2538FS-2d, 2539 |  | Sector 43 | 9723496 |
| 2542 | 37300.37500.38800.40000.42200.43400.55500.1265700 | Toilet flooring work | 25d | 2027-06-14 | 2027-07-08 | 2541 |  | Sector 43 | 9723506 |
| 2543 | 37300.37500.38800.40000.42200.43400.55500.1265800 | Living dinning flooring | 31d | 2027-06-19 | 2027-07-19 | 2542FS-20d |  | Sector 43 | 9723516 |
| 2544 | 37300.37500.38800.40000.42200.43400.55500.1265900 | Electrical wiring work | 12d | 2027-07-10 | 2027-07-21 | 2540, 2543FS-10d |  | Sector 43 | 9723526 |
| 2545 | 37300.37500.38800.40000.42200.43400.55500.1266000 | Aluminium door-window fixing | 19d | 2027-07-14 | 2027-08-01 | 2535, 2544FS-8d |  | Sector 43 | 9723536 |
| 2546 | 37300.37500.38800.40000.42200.43400.55500.1266100 | Putty primer coat | 10d | 2027-07-25 | 2027-08-03 | 2545FS-8d |  | Sector 43 | 9723546 |
| 2547 | 37300.37500.38800.40000.42200.43400.55500.1266200 | Prehung door fixing | 8d | 2027-07-30 | 2027-08-06 | 2546FS-5d |  | Sector 43 | 9723556 |
| 2548 | 37300.37500.38800.40000.42200.43400.55500.1266300 | Painting 1st coat | 12d | 2027-08-07 | 2027-08-18 | 2547 |  | Sector 43 | 9723566 |
| 2549 | 37300.37500.38800.40000.42200.43400.55500.1266400 | False Cieling panel fixing | 10d | 2027-08-19 | 2027-08-28 | 2532, 2548 |  | Sector 43 | 9723576 |

| ID | WBS | Task | Duration | Start | Finish | Predecessors | Constraint | Calendar | Unique_Task_ID |
| --- | --- | --- | --- | --- | --- | --- | --- | --- | --- |
| 2550 | 37300.37500.38800.40000.42200.43400.55900 | **21st floor** | 171d | 2027-04-18 | 2027-10-05 |  | start no earlier than 2027-04-18 | Sector 43 | 9698446 |
| 2551 | 37300.37500.38800.40000.42200.43400.55900.1266500 | Block Work | 36d | 2027-04-18 | 2027-05-23 | 2193 |  | Sector 43 | 9723586 |
| 2552 | 37300.37500.38800.40000.42200.43400.55900.1266600 | Installation of temporary Main door | 4d | 2027-05-24 | 2027-05-27 | 2551 |  | Sector 43 | 9723596 |
| 2553 | 37300.37500.38800.40000.42200.43400.55900.1266700 | Fire sprinkler pipe fixing | 10d | 2027-05-24 | 2027-06-02 | 2536, 2551 |  | Sector 43 | 9723606 |
| 2554 | 37300.37500.38800.40000.42200.43400.55900.1266800 | Internal Plumbing Works | 15d | 2027-05-24 | 2027-06-07 | 2551 |  | Sector 43 | 9723616 |
| 2555 | 37300.37500.38800.40000.42200.43400.55900.1266900 | Waterproofing | 21d | 2027-06-08 | 2027-06-28 | 2554 |  | Sector 43 | 9723626 |
| 2556 | 37300.37500.38800.40000.42200.43400.55900.1267000 | Internal Plaster | 15d | 2027-06-08 | 2027-06-22 | 2554 |  | Sector 43 | 9723636 |
| 2557 | 37300.37500.38800.40000.42200.43400.55900.1267100 | IPS flooring work | 13d | 2027-05-24 | 2027-06-05 | 2551 |  | Sector 43 | 9723646 |
| 2558 | 37300.37500.38800.40000.42200.43400.55900.1267200 | Toilet dado work | 25d | 2027-06-27 | 2027-07-21 | 2555FS-2d, 2556 |  | Sector 43 | 9723656 |
| 2559 | 37300.37500.38800.40000.42200.43400.55900.1267300 | Toilet flooring work | 25d | 2027-07-22 | 2027-08-15 | 2558 |  | Sector 43 | 9723666 |
| 2560 | 37300.37500.38800.40000.42200.43400.55900.1267400 | Living dinning flooring | 31d | 2027-07-27 | 2027-08-26 | 2557, 2559FS-20d |  | Sector 43 | 9723676 |
| 2561 | 37300.37500.38800.40000.42200.43400.55900.1267500 | Electrical wiring work | 12d | 2027-08-17 | 2027-08-28 | 2560FS-10d |  | Sector 43 | 9723686 |
| 2562 | 37300.37500.38800.40000.42200.43400.55900.1267600 | Aluminium door-window fixing | 19d | 2027-08-21 | 2027-09-08 | 2552, 2561FS-8d |  | Sector 43 | 9723696 |
| 2563 | 37300.37500.38800.40000.42200.43400.55900.1267700 | Putty primer coat | 10d | 2027-09-01 | 2027-09-10 | 2562FS-8d |  | Sector 43 | 9723706 |
| 2564 | 37300.37500.38800.40000.42200.43400.55900.1267800 | Prehung door fixing | 8d | 2027-09-06 | 2027-09-13 | 2563FS-5d |  | Sector 43 | 9723716 |
| 2565 | 37300.37500.38800.40000.42200.43400.55900.1267900 | Painting 1st coat | 12d | 2027-09-14 | 2027-09-25 | 2564 |  | Sector 43 | 9723726 |
| 2566 | 37300.37500.38800.40000.42200.43400.55900.1268000 | False Cieling panel fixing | 10d | 2027-09-26 | 2027-10-05 | 2549, 2565 |  | Sector 43 | 9723736 |
| 2567 | 37300.37500.38800.40000.42200.43400.56000 | **22nd floor** | 171d | 2027-05-06 | 2027-10-23 |  | start no earlier than 2027-05-06 | Sector 43 | 9698456 |
| 2568 | 37300.37500.38800.40000.42200.43400.56000.1268100 | Block Work | 36d | 2027-05-06 | 2027-06-10 | 2194 |  | Sector 43 | 9723746 |
| 2569 | 37300.37500.38800.40000.42200.43400.56000.1268200 | Installation of temporary Main door | 4d | 2027-06-11 | 2027-06-14 | 2568 |  | Sector 43 | 9723756 |
| 2570 | 37300.37500.38800.40000.42200.43400.56000.1268300 | Fire sprinkler pipe fixing | 10d | 2027-06-11 | 2027-06-20 | 2553, 2568 |  | Sector 43 | 9723766 |
| 2571 | 37300.37500.38800.40000.42200.43400.56000.1268400 | Internal Plumbing Works | 15d | 2027-06-11 | 2027-06-25 | 2568 |  | Sector 43 | 9723776 |
| 2572 | 37300.37500.38800.40000.42200.43400.56000.1268500 | Waterproofing | 21d | 2027-06-26 | 2027-07-16 | 2571 |  | Sector 43 | 9723786 |
| 2573 | 37300.37500.38800.40000.42200.43400.56000.1268600 | Internal Plaster | 15d | 2027-06-26 | 2027-07-10 | 2571 |  | Sector 43 | 9723796 |
| 2574 | 37300.37500.38800.40000.42200.43400.56000.1268700 | IPS flooring work | 13d | 2027-06-11 | 2027-06-23 | 2568 |  | Sector 43 | 9723806 |
| 2575 | 37300.37500.38800.40000.42200.43400.56000.1268800 | Toilet dado work | 25d | 2027-07-15 | 2027-08-08 | 2572FS-2d, 2573 |  | Sector 43 | 9723816 |
| 2576 | 37300.37500.38800.40000.42200.43400.56000.1268900 | Toilet flooring work | 25d | 2027-08-09 | 2027-09-02 | 2575 |  | Sector 43 | 9723826 |
| 2577 | 37300.37500.38800.40000.42200.43400.56000.1269000 | Living dinning flooring | 31d | 2027-08-14 | 2027-09-13 | 2574, 2576FS-20d |  | Sector 43 | 9723836 |
| 2578 | 37300.37500.38800.40000.42200.43400.56000.1269100 | Electrical wiring work | 12d | 2027-09-04 | 2027-09-15 | 2577FS-10d |  | Sector 43 | 9723846 |
| 2579 | 37300.37500.38800.40000.42200.43400.56000.1269200 | Aluminium door-window fixing | 19d | 2027-09-08 | 2027-09-26 | 2569, 2578FS-8d |  | Sector 43 | 9723856 |
| 2580 | 37300.37500.38800.40000.42200.43400.56000.1269300 | Putty primer coat | 10d | 2027-09-19 | 2027-09-28 | 2579FS-8d |  | Sector 43 | 9723866 |
| 2581 | 37300.37500.38800.40000.42200.43400.56000.1269400 | Prehung door fixing | 8d | 2027-09-24 | 2027-10-01 | 2580FS-5d |  | Sector 43 | 9723876 |
| 2582 | 37300.37500.38800.40000.42200.43400.56000.1269500 | Painting 1st coat | 12d | 2027-10-02 | 2027-10-13 | 2581 |  | Sector 43 | 9723886 |
| 2583 | 37300.37500.38800.40000.42200.43400.56000.1269600 | False Cieling panel fixing | 10d | 2027-10-14 | 2027-10-23 | 2566, 2582 |  | Sector 43 | 9723896 |

| ID | WBS | Task | Duration | Start | Finish | Predecessors | Constraint | Calendar | Unique_Task_ID |
| --- | --- | --- | --- | --- | --- | --- | --- | --- | --- |
| 2584 | 37300.37500.38800.40000.42200.43400.56100 | **23rd floor** | 171d | 2027-05-18 | 2027-12-19 |  | start no earlier than 2027-05-18 | Sector 43 | 9698466 |
| 2585 | 37300.37500.38800.40000.42200.43400.56100.1269700 | Block Work | 36d | 2027-05-18 | 2027-06-22 | 2195 |  | Sector 43 | 9723906 |
| 2586 | 37300.37500.38800.40000.42200.43400.56100.1269800 | Installation of temporary Main door | 4d | 2027-06-23 | 2027-06-26 | 2585 |  | Sector 43 | 9723916 |
| 2587 | 37300.37500.38800.40000.42200.43400.56100.1269900 | Fire sprinkler pipe fixing | 10d | 2027-06-23 | 2027-07-02 | 2570, 2585 |  | Sector 43 | 9723926 |
| 2588 | 37300.37500.38800.40000.42200.43400.56100.1270000 | Internal Plumbing Works | 15d | 2027-06-23 | 2027-07-07 | 2585 |  | Sector 43 | 9723936 |
| 2589 | 37300.37500.38800.40000.42200.43400.56100.1270100 | Waterproofing | 21d | 2027-07-08 | 2027-07-28 | 2588 |  | Sector 43 | 9723946 |
| 2590 | 37300.37500.38800.40000.42200.43400.56100.1270200 | Internal Plaster | 15d | 2027-07-08 | 2027-07-22 | 2588 |  | Sector 43 | 9723956 |
| 2591 | 37300.37500.38800.40000.42200.43400.56100.1270300 | IPS flooring work | 13d | 2027-06-23 | 2027-07-05 | 2585 |  | Sector 43 | 9723966 |
| 2592 | 37300.37500.38800.40000.42200.43400.56100.1270400 | Toilet dado work | 25d | 2027-07-27 | 2027-08-20 | 2589FS-2d, 2590 |  | Sector 43 | 9723976 |
| 2593 | 37300.37500.38800.40000.42200.43400.56100.1270500 | Toilet flooring work | 25d | 2027-08-21 | 2027-09-14 | 2592 |  | Sector 43 | 9723986 |
| 2594 | 37300.37500.38800.40000.42200.43400.56100.1270600 | Living dinning flooring | 31d | 2027-08-26 | 2027-09-25 | 2591, 2593FS-20d |  | Sector 43 | 9723996 |
| 2595 | 37300.37500.38800.40000.42200.43400.56100.1270700 | Electrical wiring work | 12d | 2027-09-16 | 2027-09-27 | 2594FS-10d |  | Sector 43 | 9724006 |
| 2596 | 37300.37500.38800.40000.42200.43400.56100.1270800 | Aluminium door-window fixing | 19d | 2027-09-20 | 2027-10-08 | 2586, 2595FS-8d |  | Sector 43 | 9724016 |
| 2597 | 37300.37500.38800.40000.42200.43400.56100.1270900 | Putty primer coat | 10d | 2027-10-01 | 2027-10-10 | 2596FS-8d |  | Sector 43 | 9724026 |
| 2598 | 37300.37500.38800.40000.42200.43400.56100.1271000 | Prehung door fixing | 8d | 2027-10-06 | 2027-10-13 | 2597FS-5d |  | Sector 43 | 9724036 |
| 2599 | 37300.37500.38800.40000.42200.43400.56100.1271100 | Painting 1st coat | 12d | 2027-10-14 | 2027-10-25 | 2598 |  | Sector 43 | 9724046 |
| 2600 | 37300.37500.38800.40000.42200.43400.56100.1271200 | False Cieling panel fixing | 10d | 2027-10-26 | 2027-12-19 | 2583, 2599 |  | Sector 43 | 9724056 |
| 2601 | 37300.37500.38800.40000.42200.43400.56200 | **24th floor** | 171d | 2027-05-30 | 2027-12-31 |  | start no earlier than 2027-05-30 | Sector 43 | 9698476 |
| 2602 | 37300.37500.38800.40000.42200.43400.56200.1271300 | Block Work | 36d | 2027-05-30 | 2027-07-04 | 2196 |  | Sector 43 | 9724066 |
| 2603 | 37300.37500.38800.40000.42200.43400.56200.1271400 | Installation of temporary Main door | 4d | 2027-07-05 | 2027-07-08 | 2602 |  | Sector 43 | 9724076 |
| 2604 | 37300.37500.38800.40000.42200.43400.56200.1271500 | Fire sprinkler pipe fixing | 10d | 2027-07-05 | 2027-07-14 | 2587, 2602 |  | Sector 43 | 9724086 |
| 2605 | 37300.37500.38800.40000.42200.43400.56200.1271600 | Internal Plumbing Works | 15d | 2027-07-05 | 2027-07-19 | 2602 |  | Sector 43 | 9724096 |
| 2606 | 37300.37500.38800.40000.42200.43400.56200.1271700 | Waterproofing | 21d | 2027-07-20 | 2027-08-09 | 2605 |  | Sector 43 | 9724106 |
| 2607 | 37300.37500.38800.40000.42200.43400.56200.1271800 | Internal Plaster | 15d | 2027-07-20 | 2027-08-03 | 2605 |  | Sector 43 | 9724116 |
| 2608 | 37300.37500.38800.40000.42200.43400.56200.1271900 | IPS flooring work | 13d | 2027-07-05 | 2027-07-17 | 2602 |  | Sector 43 | 9724126 |
| 2609 | 37300.37500.38800.40000.42200.43400.56200.1272000 | Toilet dado work | 25d | 2027-08-08 | 2027-09-01 | 2606FS-2d, 2607 |  | Sector 43 | 9724136 |
| 2610 | 37300.37500.38800.40000.42200.43400.56200.1272100 | Toilet flooring work | 25d | 2027-09-02 | 2027-09-26 | 2609 |  | Sector 43 | 9724146 |
| 2611 | 37300.37500.38800.40000.42200.43400.56200.1272200 | Living dinning flooring | 31d | 2027-09-07 | 2027-10-07 | 2608, 2610FS-20d |  | Sector 43 | 9724156 |
| 2612 | 37300.37500.38800.40000.42200.43400.56200.1272300 | Electrical wiring work | 12d | 2027-09-28 | 2027-10-09 | 2611FS-10d |  | Sector 43 | 9724166 |
| 2613 | 37300.37500.38800.40000.42200.43400.56200.1272400 | Aluminium door-window fixing | 19d | 2027-10-02 | 2027-10-20 | 2603, 2612FS-8d |  | Sector 43 | 9724176 |
| 2614 | 37300.37500.38800.40000.42200.43400.56200.1272500 | Putty primer coat | 10d | 2027-10-13 | 2027-10-22 | 2613FS-8d |  | Sector 43 | 9724186 |
| 2615 | 37300.37500.38800.40000.42200.43400.56200.1272600 | Prehung door fixing | 8d | 2027-10-18 | 2027-10-25 | 2614FS-5d |  | Sector 43 | 9724196 |
| 2616 | 37300.37500.38800.40000.42200.43400.56200.1272700 | Painting 1st coat | 12d | 2027-10-26 | 2027-12-21 | 2615 |  | Sector 43 | 9724206 |
| 2617 | 37300.37500.38800.40000.42200.43400.56200.1272800 | False Cieling panel fixing | 10d | 2027-12-22 | 2027-12-31 | 2600, 2616 |  | Sector 43 | 9724216 |

| ID | WBS | Task | Duration | Start | Finish | Predecessors | Constraint | Calendar | Unique_Task_ID |
| --- | --- | --- | --- | --- | --- | --- | --- | --- | --- |
| 2618 | 37300.37500.38800.40000.42200.43400.56300 | **25th floor** | 171d | 2027-06-11 | 2028-01-12 |  | start no earlier than 2027-06-11 | Sector 43 | 9698486 |
| 2619 | 37300.37500.38800.40000.42200.43400.56300.1272900 | Block Work | 36d | 2027-06-11 | 2027-07-16 | 2197 |  | Sector 43 | 9724226 |
| 2620 | 37300.37500.38800.40000.42200.43400.56300.1273000 | Installation of temporary Main door | 4d | 2027-07-17 | 2027-07-20 | 2619 |  | Sector 43 | 9724236 |
| 2621 | 37300.37500.38800.40000.42200.43400.56300.1273100 | Fire sprinkler pipe fixing | 10d | 2027-07-17 | 2027-07-26 | 2604, 2619 |  | Sector 43 | 9724246 |
| 2622 | 37300.37500.38800.40000.42200.43400.56300.1273200 | Internal Plumbing Works | 15d | 2027-07-17 | 2027-07-31 | 2619 |  | Sector 43 | 9724256 |
| 2623 | 37300.37500.38800.40000.42200.43400.56300.1273300 | Waterproofing | 21d | 2027-08-01 | 2027-08-21 | 2622 |  | Sector 43 | 9724266 |
| 2624 | 37300.37500.38800.40000.42200.43400.56300.1273400 | Internal Plaster | 15d | 2027-08-01 | 2027-08-15 | 2622 |  | Sector 43 | 9724276 |
| 2625 | 37300.37500.38800.40000.42200.43400.56300.1273500 | IPS flooring work | 13d | 2027-07-17 | 2027-07-29 | 2619 |  | Sector 43 | 9724286 |
| 2626 | 37300.37500.38800.40000.42200.43400.56300.1273600 | Toilet dado work | 25d | 2027-08-20 | 2027-09-13 | 2623FS-2d, 2624 |  | Sector 43 | 9724296 |
| 2627 | 37300.37500.38800.40000.42200.43400.56300.1273700 | Toilet flooring work | 25d | 2027-09-14 | 2027-10-08 | 2626 |  | Sector 43 | 9724306 |
| 2628 | 37300.37500.38800.40000.42200.43400.56300.1273800 | Living dinning flooring | 31d | 2027-09-19 | 2027-10-19 | 2625, 2627FS-20d |  | Sector 43 | 9724316 |
| 2629 | 37300.37500.38800.40000.42200.43400.56300.1273900 | Electrical wiring work | 12d | 2027-10-10 | 2027-10-21 | 2628FS-10d |  | Sector 43 | 9724326 |
| 2630 | 37300.37500.38800.40000.42200.43400.56300.1274000 | Aluminium door-window fixing | 19d | 2027-10-14 | 2027-12-16 | 2620, 2629FS-8d |  | Sector 43 | 9724336 |
| 2631 | 37300.37500.38800.40000.42200.43400.56300.1274100 | Putty primer coat | 10d | 2027-10-25 | 2027-12-18 | 2630FS-8d |  | Sector 43 | 9724346 |
| 2632 | 37300.37500.38800.40000.42200.43400.56300.1274200 | Prehung door fixing | 8d | 2027-10-30 | 2027-12-21 | 2631FS-5d |  | Sector 43 | 9724356 |
| 2633 | 37300.37500.38800.40000.42200.43400.56300.1274300 | Painting 1st coat | 12d | 2027-12-22 | 2028-01-02 | 2632 |  | Sector 43 | 9724366 |
| 2634 | 37300.37500.38800.40000.42200.43400.56300.1274400 | False Cieling panel fixing | 10d | 2028-01-03 | 2028-01-12 | 2617, 2633 |  | Sector 43 | 9724376 |
| 2635 | 37300.37500.38800.40000.42200.43400.56500 | **26th floor** | 171d | 2027-06-23 | 2028-01-24 |  | start no earlier than 2027-06-23 | Sector 43 | 9698496 |
| 2636 | 37300.37500.38800.40000.42200.43400.56500.1274500 | Block Work | 36d | 2027-06-23 | 2027-07-28 | 2198 |  | Sector 43 | 9724386 |
| 2637 | 37300.37500.38800.40000.42200.43400.56500.1274600 | Installation of temporary Main door | 4d | 2027-07-29 | 2027-08-01 | 2636 |  | Sector 43 | 9724396 |
| 2638 | 37300.37500.38800.40000.42200.43400.56500.1274700 | Fire sprinkler pipe fixing | 10d | 2027-07-29 | 2027-08-07 | 2621, 2636 |  | Sector 43 | 9724406 |
| 2639 | 37300.37500.38800.40000.42200.43400.56500.1274800 | Internal Plumbing Works | 15d | 2027-07-29 | 2027-08-12 | 2636 |  | Sector 43 | 9724416 |
| 2640 | 37300.37500.38800.40000.42200.43400.56500.1274900 | Waterproofing | 21d | 2027-08-13 | 2027-09-02 | 2639 |  | Sector 43 | 9724426 |
| 2641 | 37300.37500.38800.40000.42200.43400.56500.1275000 | Internal Plaster | 15d | 2027-08-13 | 2027-08-27 | 2639 |  | Sector 43 | 9724436 |
| 2642 | 37300.37500.38800.40000.42200.43400.56500.1275100 | IPS flooring work | 13d | 2027-07-29 | 2027-08-10 | 2636 |  | Sector 43 | 9724446 |
| 2643 | 37300.37500.38800.40000.42200.43400.56500.1275200 | Toilet dado work | 25d | 2027-09-01 | 2027-09-25 | 2640FS-2d, 2641 |  | Sector 43 | 9724456 |
| 2644 | 37300.37500.38800.40000.42200.43400.56500.1275300 | Toilet flooring work | 25d | 2027-09-26 | 2027-10-20 | 2643 |  | Sector 43 | 9724466 |
| 2645 | 37300.37500.38800.40000.42200.43400.56500.1275400 | Living dinning flooring | 31d | 2027-10-01 | 2027-10-31 | 2642, 2644FS-20d |  | Sector 43 | 9724476 |
| 2646 | 37300.37500.38800.40000.42200.43400.56500.1275500 | Electrical wiring work | 12d | 2027-10-22 | 2027-12-17 | 2645FS-10d |  | Sector 43 | 9724486 |
| 2647 | 37300.37500.38800.40000.42200.43400.56500.1275600 | Aluminium door-window fixing | 19d | 2027-10-26 | 2027-12-28 | 2637, 2646FS-8d |  | Sector 43 | 9724496 |
| 2648 | 37300.37500.38800.40000.42200.43400.56500.1275700 | Putty primer coat | 10d | 2027-12-21 | 2027-12-30 | 2647FS-8d |  | Sector 43 | 9724506 |
| 2649 | 37300.37500.38800.40000.42200.43400.56500.1275800 | Prehung door fixing | 8d | 2027-12-26 | 2028-01-02 | 2648FS-5d |  | Sector 43 | 9724516 |
| 2650 | 37300.37500.38800.40000.42200.43400.56500.1275900 | Painting 1st coat | 12d | 2028-01-03 | 2028-01-14 | 2649 |  | Sector 43 | 9724526 |
| 2651 | 37300.37500.38800.40000.42200.43400.56500.1276000 | False Cieling panel fixing | 10d | 2028-01-15 | 2028-01-24 | 2634, 2650 |  | Sector 43 | 9724536 |

| ID | WBS | Task | Duration | Start | Finish | Predecessors | Constraint | Calendar | Unique_Task_ID |
| --- | --- | --- | --- | --- | --- | --- | --- | --- | --- |
| 2652 | 37300.37500.38800.40000.42200.43400.56900 | **27th floor** | 171d | 2027-07-05 | 2028-02-05 |  | start no earlier than 2027-07-05 | Sector 43 | 9698506 |
| 2653 | 37300.37500.38800.40000.42200.43400.56900.1276100 | Block Work | 36d | 2027-07-05 | 2027-08-09 | 2199 |  | Sector 43 | 9724546 |
| 2654 | 37300.37500.38800.40000.42200.43400.56900.1276200 | Installation of temporary Main door | 4d | 2027-08-10 | 2027-08-13 | 2653 |  | Sector 43 | 9724556 |
| 2655 | 37300.37500.38800.40000.42200.43400.56900.1276300 | Fire sprinkler pipe fixing | 10d | 2027-08-10 | 2027-08-19 | 2638, 2653 |  | Sector 43 | 9724566 |
| 2656 | 37300.37500.38800.40000.42200.43400.56900.1276400 | Internal Plumbing Works | 15d | 2027-08-10 | 2027-08-24 | 2653 |  | Sector 43 | 9724576 |
| 2657 | 37300.37500.38800.40000.42200.43400.56900.1276500 | Waterproofing | 21d | 2027-08-25 | 2027-09-14 | 2656 |  | Sector 43 | 9724586 |
| 2658 | 37300.37500.38800.40000.42200.43400.56900.1276600 | Internal Plaster | 15d | 2027-08-25 | 2027-09-08 | 2656 |  | Sector 43 | 9724596 |
| 2659 | 37300.37500.38800.40000.42200.43400.56900.1276700 | IPS flooring work | 13d | 2027-08-10 | 2027-08-22 | 2653 |  | Sector 43 | 9724606 |
| 2660 | 37300.37500.38800.40000.42200.43400.56900.1276800 | Toilet dado work | 25d | 2027-09-13 | 2027-10-07 | 2657FS-2d, 2658 |  | Sector 43 | 9724616 |
| 2661 | 37300.37500.38800.40000.42200.43400.56900.1276900 | Toilet flooring work | 25d | 2027-10-08 | 2027-12-16 | 2660 |  | Sector 43 | 9724626 |
| 2662 | 37300.37500.38800.40000.42200.43400.56900.1277000 | Living dinning flooring | 31d | 2027-10-13 | 2027-12-27 | 2659, 2661FS-20d |  | Sector 43 | 9724636 |
| 2663 | 37300.37500.38800.40000.42200.43400.56900.1277100 | Electrical wiring work | 12d | 2027-12-18 | 2027-12-29 | 2662FS-10d |  | Sector 43 | 9724646 |
| 2664 | 37300.37500.38800.40000.42200.43400.56900.1277200 | Aluminium door-window fixing | 19d | 2027-12-22 | 2028-01-09 | 2654, 2663FS-8d |  | Sector 43 | 9724656 |
| 2665 | 37300.37500.38800.40000.42200.43400.56900.1277300 | Putty primer coat | 10d | 2028-01-02 | 2028-01-11 | 2664FS-8d |  | Sector 43 | 9724666 |
| 2666 | 37300.37500.38800.40000.42200.43400.56900.1277400 | Prehung door fixing | 8d | 2028-01-07 | 2028-01-14 | 2665FS-5d |  | Sector 43 | 9724676 |
| 2667 | 37300.37500.38800.40000.42200.43400.56900.1277500 | Painting 1st coat | 12d | 2028-01-15 | 2028-01-26 | 2666 |  | Sector 43 | 9724686 |
| 2668 | 37300.37500.38800.40000.42200.43400.56900.1277600 | False Cieling panel fixing | 10d | 2028-01-27 | 2028-02-05 | 2651, 2667 |  | Sector 43 | 9724696 |
| 2669 | 37300.37500.38800.40000.42200.43400.57000 | **28th floor** | 206d | 2027-07-19 | 2028-03-25 |  | start no earlier than 2027-07-19 | Sector 43 | 9698516 |
| 2670 | 37300.37500.38800.40000.42200.43400.57000.1277700 | Block Work | 36d | 2027-07-19 | 2027-08-23 | 2200 |  | Sector 43 | 9724706 |
| 2671 | 37300.37500.38800.40000.42200.43400.57000.1277800 | Installation of temporary Main door | 4d | 2027-08-24 | 2027-08-27 | 2670 |  | Sector 43 | 9724716 |
| 2672 | 37300.37500.38800.40000.42200.43400.57000.1277900 | Fire sprinkler pipe fixing | 10d | 2027-08-24 | 2027-09-02 | 2655, 2670 |  | Sector 43 | 9724726 |
| 2673 | 37300.37500.38800.40000.42200.43400.57000.1278000 | Internal Plumbing Works | 15d | 2027-08-24 | 2027-09-07 | 2670 |  | Sector 43 | 9724736 |
| 2674 | 37300.37500.38800.40000.42200.43400.57000.1278100 | Waterproofing | 21d | 2027-09-08 | 2027-09-28 | 2673 |  | Sector 43 | 9724746 |
| 2675 | 37300.37500.38800.40000.42200.43400.57000.1278200 | Internal Plaster | 15d | 2027-09-08 | 2027-09-22 | 2673 |  | Sector 43 | 9724756 |
| 2676 | 37300.37500.38800.40000.42200.43400.57000.1278300 | IPS flooring work | 13d | 2027-08-24 | 2027-09-05 | 2670 |  | Sector 43 | 9724766 |
| 2677 | 37300.37500.38800.40000.42200.43400.57000.1278400 | Toilet dado work | 60d | 2027-09-27 | 2028-01-09 | 2674FS-2d, 2675 |  | Sector 43 | 9724776 |
| 2678 | 37300.37500.38800.40000.42200.43400.57000.1278500 | Toilet flooring work | 25d | 2028-01-10 | 2028-02-03 | 2677 |  | Sector 43 | 9724786 |
| 2679 | 37300.37500.38800.40000.42200.43400.57000.1278600 | Living dinning flooring | 31d | 2028-01-15 | 2028-02-14 | 2676, 2678FS-20d |  | Sector 43 | 9724796 |
| 2680 | 37300.37500.38800.40000.42200.43400.57000.1278700 | Electrical wiring work | 12d | 2028-02-05 | 2028-02-16 | 2679FS-10d |  | Sector 43 | 9724806 |
| 2681 | 37300.37500.38800.40000.42200.43400.57000.1278800 | Aluminium door-window fixing | 19d | 2028-02-09 | 2028-02-27 | 2671, 2680FS-8d |  | Sector 43 | 9724816 |
| 2682 | 37300.37500.38800.40000.42200.43400.57000.1278900 | Putty primer coat | 10d | 2028-02-20 | 2028-02-29 | 2681FS-8d |  | Sector 43 | 9724826 |
| 2683 | 37300.37500.38800.40000.42200.43400.57000.1279000 | Prehung door fixing | 8d | 2028-02-25 | 2028-03-03 | 2682FS-5d |  | Sector 43 | 9724836 |
| 2684 | 37300.37500.38800.40000.42200.43400.57000.1279100 | Painting 1st coat | 12d | 2028-03-04 | 2028-03-15 | 2683 |  | Sector 43 | 9724846 |
| 2685 | 37300.37500.38800.40000.42200.43400.57000.1279200 | False Cieling panel fixing | 10d | 2028-03-16 | 2028-03-25 | 2668, 2684 |  | Sector 43 | 9724856 |

| ID | WBS | Task | Duration | Start | Finish | Predecessors | Constraint | Calendar | Unique_Task_ID |
| --- | --- | --- | --- | --- | --- | --- | --- | --- | --- |
| 2686 | 37300.37500.38800.40000.42200.43400.57100 | **29th floor** | 202d | 2027-08-02 | 2028-04-04 |  | start no earlier than 2027-08-02 | Sector 43 | 9698526 |
| 2687 | 37300.37500.38800.40000.42200.43400.57100.1279300 | Block Work | 36d | 2027-08-02 | 2027-09-06 | 2201 |  | Sector 43 | 9724866 |
| 2688 | 37300.37500.38800.40000.42200.43400.57100.1279400 | Installation of temporary Main door | 4d | 2027-09-07 | 2027-09-10 | 2687 |  | Sector 43 | 9724876 |
| 2689 | 37300.37500.38800.40000.42200.43400.57100.1279500 | Fire sprinkler pipe fixing | 10d | 2027-09-07 | 2027-09-16 | 2672, 2687 |  | Sector 43 | 9724886 |
| 2690 | 37300.37500.38800.40000.42200.43400.57100.1279600 | Internal Plumbing Works | 15d | 2027-09-07 | 2027-09-21 | 2687 |  | Sector 43 | 9724896 |
| 2691 | 37300.37500.38800.40000.42200.43400.57100.1279700 | Waterproofing | 21d | 2027-09-22 | 2027-10-12 | 2690 |  | Sector 43 | 9724906 |
| 2692 | 37300.37500.38800.40000.42200.43400.57100.1279800 | Internal Plaster | 15d | 2027-09-22 | 2027-10-06 | 2690 |  | Sector 43 | 9724916 |
| 2693 | 37300.37500.38800.40000.42200.43400.57100.1279900 | IPS flooring work | 13d | 2027-09-07 | 2027-09-19 | 2687 |  | Sector 43 | 9724926 |
| 2694 | 37300.37500.38800.40000.42200.43400.57100.1280000 | Toilet dado work | 25d | 2027-10-11 | 2027-12-19 | 2691FS-2d, 2692 |  | Sector 43 | 9724936 |
| 2695 | 37300.37500.38800.40000.42200.43400.57100.1280100 | Toilet flooring work | 25d | 2027-12-20 | 2028-01-13 | 2694 |  | Sector 43 | 9724946 |
| 2696 | 37300.37500.38800.40000.42200.43400.57100.1280200 | Living dinning flooring | 31d | 2027-12-25 | 2028-01-24 | 2693, 2695FS-20d |  | Sector 43 | 9724956 |
| 2697 | 37300.37500.38800.40000.42200.43400.57100.1280300 | Electrical wiring work | 12d | 2028-01-15 | 2028-01-26 | 2696FS-10d |  | Sector 43 | 9724966 |
| 2698 | 37300.37500.38800.40000.42200.43400.57100.1280400 | Aluminium door-window fixing | 19d | 2028-01-19 | 2028-02-06 | 2688, 2697FS-8d |  | Sector 43 | 9724976 |
| 2699 | 37300.37500.38800.40000.42200.43400.57100.1280500 | Putty primer coat | 10d | 2028-01-30 | 2028-02-08 | 2698FS-8d |  | Sector 43 | 9724986 |
| 2700 | 37300.37500.38800.40000.42200.43400.57100.1280600 | Prehung door fixing | 8d | 2028-02-04 | 2028-02-11 | 2699FS-5d |  | Sector 43 | 9724996 |
| 2701 | 37300.37500.38800.40000.42200.43400.57100.1280700 | Painting 1st coat | 12d | 2028-02-12 | 2028-02-23 | 2700 |  | Sector 43 | 9725006 |
| 2702 | 37300.37500.38800.40000.42200.43400.57100.1280800 | False Cieling panel fixing | 10d | 2028-03-26 | 2028-04-04 | 2685, 2701 |  | Sector 43 | 9725016 |
| 2703 | 37300.37500.38800.40000.42200.43400.57200 | **30th floor** | 205d | 2027-08-09 | 2028-04-14 |  | start no earlier than 2027-08-09 | Sector 43 | 9698536 |
| 2704 | 37300.37500.38800.40000.42200.43400.57200.1280900 | Block Work | 36d | 2027-08-09 | 2027-09-13 | 2202 |  | Sector 43 | 9725026 |
| 2705 | 37300.37500.38800.40000.42200.43400.57200.1281000 | Installation of temporary Main door | 4d | 2027-09-14 | 2027-09-17 | 2704 |  | Sector 43 | 9725036 |
| 2706 | 37300.37500.38800.40000.42200.43400.57200.1281100 | Fire sprinkler pipe fixing | 10d | 2027-09-17 | 2027-09-26 | 2689, 2704 |  | Sector 43 | 9725046 |
| 2707 | 37300.37500.38800.40000.42200.43400.57200.1281200 | Internal Plumbing Works | 15d | 2027-09-14 | 2027-09-28 | 2704 |  | Sector 43 | 9725056 |
| 2708 | 37300.37500.38800.40000.42200.43400.57200.1281300 | Waterproofing | 21d | 2027-09-29 | 2027-10-19 | 2707 |  | Sector 43 | 9725066 |
| 2709 | 37300.37500.38800.40000.42200.43400.57200.1281400 | Internal Plaster | 15d | 2027-09-29 | 2027-10-13 | 2707 |  | Sector 43 | 9725076 |
| 2710 | 37300.37500.38800.40000.42200.43400.57200.1281500 | IPS flooring work | 13d | 2027-09-14 | 2027-09-26 | 2704 |  | Sector 43 | 9725086 |
| 2711 | 37300.37500.38800.40000.42200.43400.57200.1281600 | Toilet dado work | 25d | 2027-10-18 | 2027-12-26 | 2708FS-2d, 2709 |  | Sector 43 | 9725096 |
| 2712 | 37300.37500.38800.40000.42200.43400.57200.1281700 | Toilet flooring work | 25d | 2027-12-27 | 2028-01-20 | 2711 |  | Sector 43 | 9725106 |
| 2713 | 37300.37500.38800.40000.42200.43400.57200.1281800 | Living dinning flooring | 31d | 2028-01-01 | 2028-01-31 | 2710, 2712FS-20d |  | Sector 43 | 9725116 |
| 2714 | 37300.37500.38800.40000.42200.43400.57200.1281900 | Electrical wiring work | 12d | 2028-01-22 | 2028-02-02 | 2713FS-10d |  | Sector 43 | 9725126 |
| 2715 | 37300.37500.38800.40000.42200.43400.57200.1282000 | Aluminium door-window fixing | 19d | 2028-01-26 | 2028-02-13 | 2705, 2714FS-8d |  | Sector 43 | 9725136 |
| 2716 | 37300.37500.38800.40000.42200.43400.57200.1282100 | Putty primer coat | 10d | 2028-02-06 | 2028-02-15 | 2715FS-8d |  | Sector 43 | 9725146 |
| 2717 | 37300.37500.38800.40000.42200.43400.57200.1282200 | Prehung door fixing | 8d | 2028-02-11 | 2028-02-18 | 2716FS-5d |  | Sector 43 | 9725156 |
| 2718 | 37300.37500.38800.40000.42200.43400.57200.1282300 | Painting 1st coat | 12d | 2028-02-19 | 2028-03-01 | 2717 |  | Sector 43 | 9725166 |
| 2719 | 37300.37500.38800.40000.42200.43400.57200.1282400 | False Cieling panel fixing | 10d | 2028-04-05 | 2028-04-14 | 2702, 2718 |  | Sector 43 | 9725176 |

| ID | WBS | Task | Duration | Start | Finish | Predecessors | Constraint | Calendar | Unique_Task_ID |
| --- | --- | --- | --- | --- | --- | --- | --- | --- | --- |
| 2720 | 37300.37500.38800.40000.42200.43400.57300 | **31st floor** | 208d | 2027-08-16 | 2028-04-24 |  | start no earlier than 2027-08-16 | Sector 43 | 9698546 |
| 2721 | 37300.37500.38800.40000.42200.43400.57300.1282500 | Block Work | 36d | 2027-08-16 | 2027-09-20 | 2203 |  | Sector 43 | 9725186 |
| 2722 | 37300.37500.38800.40000.42200.43400.57300.1282600 | Installation of temporary Main door | 4d | 2027-09-21 | 2027-09-24 | 2721 |  | Sector 43 | 9725196 |
| 2723 | 37300.37500.38800.40000.42200.43400.57300.1282700 | Fire sprinkler pipe fixing | 10d | 2027-09-27 | 2027-10-06 | 2706, 2721 |  | Sector 43 | 9725206 |
| 2724 | 37300.37500.38800.40000.42200.43400.57300.1282800 | Internal Plumbing Works | 15d | 2027-09-21 | 2027-10-05 | 2721 |  | Sector 43 | 9725216 |
| 2725 | 37300.37500.38800.40000.42200.43400.57300.1282900 | Waterproofing | 21d | 2027-10-06 | 2027-10-26 | 2724 |  | Sector 43 | 9725226 |
| 2726 | 37300.37500.38800.40000.42200.43400.57300.1283000 | Internal Plaster | 15d | 2027-10-06 | 2027-10-20 | 2724 |  | Sector 43 | 9725236 |
| 2727 | 37300.37500.38800.40000.42200.43400.57300.1283100 | IPS flooring work | 13d | 2027-09-21 | 2027-10-03 | 2721 |  | Sector 43 | 9725246 |
| 2728 | 37300.37500.38800.40000.42200.43400.57300.1283200 | Toilet dado work | 25d | 2027-10-25 | 2028-01-02 | 2725FS-2d, 2726 |  | Sector 43 | 9725256 |
| 2729 | 37300.37500.38800.40000.42200.43400.57300.1283300 | Toilet flooring work | 25d | 2028-01-03 | 2028-01-27 | 2728 |  | Sector 43 | 9725266 |
| 2730 | 37300.37500.38800.40000.42200.43400.57300.1283400 | Living dinning flooring | 31d | 2028-01-08 | 2028-02-07 | 2727, 2729FS-20d |  | Sector 43 | 9725276 |
| 2731 | 37300.37500.38800.40000.42200.43400.57300.1283500 | Electrical wiring work | 12d | 2028-01-29 | 2028-02-09 | 2730FS-10d |  | Sector 43 | 9725286 |
| 2732 | 37300.37500.38800.40000.42200.43400.57300.1283600 | Aluminium door-window fixing | 19d | 2028-02-02 | 2028-02-20 | 2722, 2731FS-8d |  | Sector 43 | 9725296 |
| 2733 | 37300.37500.38800.40000.42200.43400.57300.1283700 | Putty primer coat | 10d | 2028-02-13 | 2028-02-22 | 2732FS-8d |  | Sector 43 | 9725306 |
| 2734 | 37300.37500.38800.40000.42200.43400.57300.1283800 | Prehung door fixing | 8d | 2028-02-18 | 2028-02-25 | 2733FS-5d |  | Sector 43 | 9725316 |
| 2735 | 37300.37500.38800.40000.42200.43400.57300.1283900 | Painting 1st coat | 12d | 2028-02-26 | 2028-03-08 | 2734 |  | Sector 43 | 9725326 |
| 2736 | 37300.37500.38800.40000.42200.43400.57300.1284000 | False Cieling panel fixing | 10d | 2028-04-15 | 2028-04-24 | 2719, 2735 |  | Sector 43 | 9725336 |
| 2737 | 37300.37500.38800.40000.42200.43400.57500 | **32nd floor** | 211d | 2027-08-23 | 2028-05-04 |  | start no earlier than 2027-08-23 | Sector 43 | 9698556 |
| 2738 | 37300.37500.38800.40000.42200.43400.57500.1284100 | Block Work | 37d | 2027-08-23 | 2027-09-28 | 2204 |  | Sector 43 | 9725346 |
| 2739 | 37300.37500.38800.40000.42200.43400.57500.1284200 | Installation of temporary Main door | 4d | 2027-09-29 | 2027-10-02 | 2738 |  | Sector 43 | 9725356 |
| 2740 | 37300.37500.38800.40000.42200.43400.57500.1284300 | Fire sprinkler pipe fixing | 10d | 2027-10-07 | 2027-10-16 | 2723, 2738 |  | Sector 43 | 9725366 |
| 2741 | 37300.37500.38800.40000.42200.43400.57500.1284400 | Internal Plumbing Works | 15d | 2027-09-29 | 2027-10-13 | 2738 |  | Sector 43 | 9725376 |
| 2742 | 37300.37500.38800.40000.42200.43400.57500.1284500 | Waterproofing | 21d | 2027-10-14 | 2027-12-18 | 2741 |  | Sector 43 | 9725386 |
| 2743 | 37300.37500.38800.40000.42200.43400.57500.1284600 | Internal Plaster | 15d | 2027-10-14 | 2027-10-28 | 2741 |  | Sector 43 | 9725396 |
| 2744 | 37300.37500.38800.40000.42200.43400.57500.1284700 | IPS flooring work | 13d | 2027-09-29 | 2027-10-11 | 2738 |  | Sector 43 | 9725406 |
| 2745 | 37300.37500.38800.40000.42200.43400.57500.1284800 | Toilet dado work | 25d | 2027-12-17 | 2028-01-10 | 2742FS-2d, 2743 |  | Sector 43 | 9725416 |
| 2746 | 37300.37500.38800.40000.42200.43400.57500.1284900 | Toilet flooring work | 25d | 2028-01-11 | 2028-02-04 | 2745 |  | Sector 43 | 9725426 |
| 2747 | 37300.37500.38800.40000.42200.43400.57500.1285000 | Living dinning flooring | 31d | 2028-01-16 | 2028-02-15 | 2744, 2746FS-20d |  | Sector 43 | 9725436 |
| 2748 | 37300.37500.38800.40000.42200.43400.57500.1285100 | Electrical wiring work | 12d | 2028-02-06 | 2028-02-17 | 2747FS-10d |  | Sector 43 | 9725446 |
| 2749 | 37300.37500.38800.40000.42200.43400.57500.1285200 | Aluminium door-window fixing | 19d | 2028-02-10 | 2028-02-28 | 2739, 2748FS-8d |  | Sector 43 | 9725456 |
| 2750 | 37300.37500.38800.40000.42200.43400.57500.1285300 | Putty primer coat | 10d | 2028-02-21 | 2028-03-01 | 2749FS-8d |  | Sector 43 | 9725466 |
| 2751 | 37300.37500.38800.40000.42200.43400.57500.1285400 | Prehung door fixing | 8d | 2028-02-26 | 2028-03-04 | 2750FS-5d |  | Sector 43 | 9725476 |
| 2752 | 37300.37500.38800.40000.42200.43400.57500.1285500 | Painting 1st coat | 12d | 2028-03-05 | 2028-03-16 | 2751 |  | Sector 43 | 9725486 |
| 2753 | 37300.37500.38800.40000.42200.43400.57500.1285600 | False Cieling panel fixing | 10d | 2028-04-25 | 2028-05-04 | 2736, 2752 |  | Sector 43 | 9725496 |

| ID | WBS | Task | Duration | Start | Finish | Predecessors | Constraint | Calendar | Unique_Task_ID |
| --- | --- | --- | --- | --- | --- | --- | --- | --- | --- |
| 2754 | 37300.37500.38800.40000.42200.224300 | **Terrace finishing** | 100d | 2028-04-14 | 2028-07-22 |  | start no earlier than 2028-04-14 | Sector 43 | 9700526 |
| 2755 | 37300.37500.38800.40000.42200.224300.892300 | Terrace waterproofing | 40d | 2028-04-14 | 2028-05-23 | 2839FS+10d, 2206 |  | Sector 43 | 9704606 |
| 2756 | 37300.37500.38800.40000.42200.224300.892400 | Terrace finishing | 60d | 2028-05-24 | 2028-07-22 | 2755 |  | Sector 43 | 9704616 |
| 2757 | 37300.37500.38800.40000.42200.117300 | **Common area finishing** | 274d | 2027-08-20 | 2028-07-03 |  | start no earlier than 2027-08-20 | Sector 43 | 9698626 |
| 2758 | 37300.37500.38800.40000.42200.117300.892500 | Masonary Work | 60d | 2027-08-20 | 2027-10-18 | 2166 |  | Sector 43 | 9704626 |
| 2759 | 37300.37500.38800.40000.42200.117300.892600 | Fire sprinkler pipe fixing | 90d | 2027-08-30 | 2028-01-11 | 2166FS+10d |  | Sector 43 | 9704636 |
| 2760 | 37300.37500.38800.40000.42200.117300.892700 | Corridoor, staircase, shaft Plaster & whitewash | 90d | 2027-10-09 | 2028-02-20 | 2758FS-10d |  | Sector 43 | 9704646 |
| 2761 | 37300.37500.38800.40000.42200.117300.892800 | Staircase railing fixing | 45d | 2027-09-29 | 2027-12-27 | 2758FS-20d |  | Sector 43 | 9704656 |
| 2762 | 37300.37500.38800.40000.42200.117300.892900 | Fire staircase flooring | 60d | 2027-10-24 | 2028-02-05 | 2761FS-20d |  | Sector 43 | 9704666 |
| 2763 | 37300.37500.38800.40000.42200.117300.893000 | Main staircase flooring | 60d | 2027-10-24 | 2028-02-05 | 2761FS-20d |  | Sector 43 | 9704676 |
| 2764 | 37300.37500.38800.40000.42200.117300.893100 | Fire door work | 45d | 2028-01-07 | 2028-02-20 | 2762FS-30d |  | Sector 43 | 9704686 |
| 2765 | 37300.37500.38800.40000.42200.117300.893200 | Lobby flooring & Corridor | 114d | 2027-12-18 | 2028-04-09 | 2763FS-50d |  | Sector 43 | 9704696 |
| 2766 | 37300.37500.38800.40000.42200.117300.893300 | Ceiling & wall putty-primer | 60d | 2028-02-25 | 2028-04-24 | 2765FS-45d |  | Sector 43 | 9704706 |
| 2767 | 37300.37500.38800.40000.42200.117300.893400 | Ceiling & wall painting | 90d | 2028-03-11 | 2028-06-08 | 2766FS-45d |  | Sector 43 | 9704716 |
| 2768 | 37300.37500.38800.40000.42200.117300.893500 | Electrical wiring work | 60d | 2028-04-15 | 2028-06-13 | 2766FS-10d |  | Sector 43 | 9704726 |
| 2769 | 37300.37500.38800.40000.42200.117300.893600 | Light fixture supply & installation | 30d | 2028-06-04 | 2028-07-03 | 2768FS-10d |  | Sector 43 | 9704736 |
| 2770 | 37300.37500.38800.40000.42200.117300.893700 | Installation of fire signages including Basements | 30d | 2028-05-30 | 2028-06-28 | 2767FS-10d |  | Sector 43 | 9704746 |
| 2771 | 37300.37500.38800.40000.42200.49400 | **Balcony Glass Railing** | 234d | 2026-06-24 | 2027-03-29 |  | start no earlier than 2026-06-24 | Sector 43 | 9697576 |
| 2772 | 37300.37500.38800.40000.42200.49400.893800 | 1st Floor | 7d | 2026-06-24 | 2026-06-30 | 2210 |  | Sector 43 | 9704756 |
| 2773 | 37300.37500.38800.40000.42200.49400.893900 | 2nd Floor | 7d | 2026-07-01 | 2026-07-07 | 2772 |  | Sector 43 | 9704766 |
| 2774 | 37300.37500.38800.40000.42200.49400.894000 | 3rd Floor | 7d | 2026-07-08 | 2026-07-14 | 2773 |  | Sector 43 | 9704776 |
| 2775 | 37300.37500.38800.40000.42200.49400.894100 | 4th Floor | 7d | 2026-07-15 | 2026-07-21 | 2774 |  | Sector 43 | 9704786 |
| 2776 | 37300.37500.38800.40000.42200.49400.894200 | 5th Floor | 7d | 2026-07-22 | 2026-07-28 | 2775 |  | Sector 43 | 9704796 |
| 2777 | 37300.37500.38800.40000.42200.49400.894300 | 6th Floor | 7d | 2026-07-29 | 2026-08-04 | 2776 |  | Sector 43 | 9704806 |
| 2778 | 37300.37500.38800.40000.42200.49400.894400 | 7th Floor | 7d | 2026-08-05 | 2026-08-11 | 2777 |  | Sector 43 | 9704816 |
| 2779 | 37300.37500.38800.40000.42200.49400.894500 | 8th Floor | 7d | 2026-08-12 | 2026-08-18 | 2778 |  | Sector 43 | 9704826 |
| 2780 | 37300.37500.38800.40000.42200.49400.894600 | 9th Floor | 7d | 2026-08-19 | 2026-08-25 | 2779 |  | Sector 43 | 9704836 |
| 2781 | 37300.37500.38800.40000.42200.49400.894700 | 10th Floor | 7d | 2026-08-26 | 2026-09-01 | 2780 |  | Sector 43 | 9704846 |
| 2782 | 37300.37500.38800.40000.42200.49400.894800 | 11th Floor | 7d | 2026-09-02 | 2026-09-08 | 2781 |  | Sector 43 | 9704856 |
| 2783 | 37300.37500.38800.40000.42200.49400.894900 | 12th Floor | 7d | 2026-09-09 | 2026-09-15 | 2782 |  | Sector 43 | 9704866 |
| 2784 | 37300.37500.38800.40000.42200.49400.895000 | 13th Floor | 7d | 2026-09-16 | 2026-09-22 | 2783 |  | Sector 43 | 9704876 |
| 2785 | 37300.37500.38800.40000.42200.49400.895100 | 14th Floor | 7d | 2026-10-03 | 2026-10-09 | 2784FS+10d |  | Sector 43 | 9704886 |
| 2786 | 37300.37500.38800.40000.42200.49400.895200 | 15th Floor | 7d | 2026-10-10 | 2026-10-16 | 2785 |  | Sector 43 | 9704896 |
| 2787 | 37300.37500.38800.40000.42200.49400.895300 | 16th Floor | 7d | 2026-10-17 | 2026-10-23 | 2786 |  | Sector 43 | 9704906 |
| 2788 | 37300.37500.38800.40000.42200.49400.895400 | 17th Floor | 7d | 2026-10-24 | 2026-10-30 | 2787 |  | Sector 43 | 9704916 |
| 2789 | 37300.37500.38800.40000.42200.49400.895500 | 18th Floor | 7d | 2026-10-31 | 2026-12-21 | 2788 |  | Sector 43 | 9704926 |
| 2790 | 37300.37500.38800.40000.42200.49400.895600 | 19th Floor | 7d | 2026-12-22 | 2026-12-28 | 2789 |  | Sector 43 | 9704936 |
| 2791 | 37300.37500.38800.40000.42200.49400.895700 | 20th Floor | 7d | 2026-12-29 | 2027-01-04 | 2790 |  | Sector 43 | 9704946 |
| 2792 | 37300.37500.38800.40000.42200.49400.895800 | 21st Floor | 7d | 2027-01-05 | 2027-01-11 | 2791 |  | Sector 43 | 9704956 |
| 2793 | 37300.37500.38800.40000.42200.49400.895900 | 22nd Floor | 7d | 2027-01-12 | 2027-01-18 | 2792 |  | Sector 43 | 9704966 |
| 2794 | 37300.37500.38800.40000.42200.49400.896000 | 23rd Floor | 7d | 2027-01-19 | 2027-01-25 | 2793 |  | Sector 43 | 9704976 |
| 2795 | 37300.37500.38800.40000.42200.49400.896100 | 24th Floor | 7d | 2027-01-26 | 2027-02-01 | 2794 |  | Sector 43 | 9704986 |
| 2796 | 37300.37500.38800.40000.42200.49400.896200 | 25th Floor | 7d | 2027-02-02 | 2027-02-08 | 2795 |  | Sector 43 | 9704996 |
| 2797 | 37300.37500.38800.40000.42200.49400.896300 | 26th Floor | 7d | 2027-02-09 | 2027-02-15 | 2796 |  | Sector 43 | 9705006 |
| 2798 | 37300.37500.38800.40000.42200.49400.896400 | 27th Floor | 7d | 2027-02-16 | 2027-02-22 | 2797 |  | Sector 43 | 9705016 |
| 2799 | 37300.37500.38800.40000.42200.49400.896500 | 28th Floor | 7d | 2027-02-23 | 2027-03-01 | 2798 |  | Sector 43 | 9705026 |
| 2800 | 37300.37500.38800.40000.42200.49400.896600 | 29th Floor | 7d | 2027-03-02 | 2027-03-08 | 2799 |  | Sector 43 | 9705036 |
| 2801 | 37300.37500.38800.40000.42200.49400.896700 | 30th Floor | 7d | 2027-03-09 | 2027-03-15 | 2800 |  | Sector 43 | 9705046 |
| 2802 | 37300.37500.38800.40000.42200.49400.896800 | 31st Floor | 7d | 2027-03-16 | 2027-03-22 | 2801 |  | Sector 43 | 9705056 |
| 2803 | 37300.37500.38800.40000.42200.49400.896900 | 32nd Floor | 7d | 2027-03-23 | 2027-03-29 | 2802 |  | Sector 43 | 9705066 |

| ID | WBS | Task | Duration | Start | Finish | Predecessors | Constraint | Calendar | Unique_Task_ID |
| --- | --- | --- | --- | --- | --- | --- | --- | --- | --- |
| 2804 | 37300.37500.38800.40000.116300 | **MEP work** | 592d | 2026-12-18 | 2028-09-14 |  | start no earlier than 2026-12-18 | Sector 43 | 9698666 |
| 2805 | 37300.37500.38800.40000.116300.124300 | **Electrical work** | 583d | 2026-12-18 | 2028-09-05 |  | start no earlier than 2026-12-18 | Sector 43 | 9698776 |
| 2806 | 37300.37500.38800.40000.116300.124300.897000 | Cable Tray | 90d | 2026-12-28 | 2027-03-27 | 2101FS-30d |  | Sector 43 | 9705076 |
| 2807 | 37300.37500.38800.40000.116300.124300.897100 | Cable, main & sub main | 120d | 2026-12-18 | 2027-04-16 | 2806FS-100d |  | Sector 43 | 9705086 |
| 2808 | 37300.37500.38800.40000.116300.124300.897200 | LT panel & DB | 90d | 2027-01-27 | 2027-04-26 | 2806FS-60d |  | Sector 43 | 9705096 |
| 2809 | 37300.37500.38800.40000.116300.124300.897300 | Earthing Works | 60d | 2027-03-08 | 2027-05-06 | 2806FS-20d |  | Sector 43 | 9705106 |
| 2810 | 37300.37500.38800.40000.116300.124300.897400 | Advanced Lightening Protection system | 45d | 2027-03-18 | 2027-05-01 | 2809FS-50d |  | Sector 43 | 9705116 |
| 2811 | 37300.37500.38800.40000.116300.124300.897500 | Energy meter | 60d | 2027-03-28 | 2027-05-26 | 2807FS-20d |  | Sector 43 | 9705126 |
| 2812 | 37300.37500.38800.40000.116300.124300.897600 | Inverter / UPS | 70d | 2027-05-22 | 2027-07-30 | 2807, 2808, 2811FS-5d |  | Sector 43 | 9705136 |
| 2813 | 37300.37500.38800.40000.116300.124300.897700 | HVAC & Exhast fan | 120d | 2027-02-06 | 2027-06-05 | 2806FS-50d |  | Sector 43 | 9705146 |
| 2814 | 37300.37500.38800.40000.116300.124300.897800 | FTTH | 45d | 2027-02-26 | 2027-04-11 | 2808FS-60d |  | Sector 43 | 9705156 |
| 2815 | 37300.37500.38800.40000.116300.124300.897900 | Security System - FA & PA | 90d | 2027-02-26 | 2027-05-26 | 2808FS-60d |  | Sector 43 | 9705166 |
| 2816 | 37300.37500.38800.40000.116300.124300.898000 | T&C of complete system | 64d | 2028-07-04 | 2028-09-05 | 2769, 2808, 2810, 2811, 2812, 2813, 2814, 2815, 189FS-45d, 200 |  | Sector 43 | 9705176 |
| 2817 | 37300.37500.38800.40000.116300.134500 | **Plumbing work** | 332d | 2027-09-02 | 2028-09-12 |  | start no earlier than 2027-09-02 | Sector 43 | 9699026 |
| 2818 | 37300.37500.38800.40000.116300.134500.898100 | Terrace looping | 45d | 2027-09-02 | 2027-10-16 | 2205 |  | Sector 43 | 9705186 |
| 2819 | 37300.37500.38800.40000.116300.134500.898200 | Shaft Plumbing | 120d | 2028-01-22 | 2028-05-20 | 2760FS-30d, 2818 |  | Sector 43 | 9705196 |
| 2820 | 37300.37500.38800.40000.116300.134500.898300 | CP sanitary fixture supply | 45d | 2028-05-21 | 2028-07-04 | 2819 |  | Sector 43 | 9705206 |
| 2821 | 37300.37500.38800.40000.116300.134500.898400 | Cold & flushing water supply | 45d | 2028-05-21 | 2028-07-04 | 2819 |  | Sector 43 | 9705216 |
| 2822 | 37300.37500.38800.40000.116300.134500.898500 | Misc work | 30d | 2028-06-15 | 2028-07-14 | 2821FS-20d |  | Sector 43 | 9705226 |
| 2823 | 37300.37500.38800.40000.116300.134500.898600 | Installation of PHE pumps | 60d | 2027-10-17 | 2028-01-29 | 2818 |  | Sector 43 | 9705236 |
| 2824 | 37300.37500.38800.40000.116300.134500.898700 | T&C of complete system | 60d | 2028-07-15 | 2028-09-12 | 171, 172, 173, 2818, 2819, 2821, 2822, 2823 |  | Sector 43 | 9705246 |
| 2825 | 37300.37500.38800.40000.116300.142200 | **Fire fighting work** | 237d | 2028-01-22 | 2028-09-14 |  | start no earlier than 2028-01-22 | Sector 43 | 9699036 |
| 2826 | 37300.37500.38800.40000.116300.142200.898800 | Fire hydrant work | 90d | 2028-01-22 | 2028-04-20 | 2760FS-30d |  | Sector 43 | 9705256 |
| 2827 | 37300.37500.38800.40000.116300.142200.898900 | Pipe connection & sprinkler installation | 60d | 2028-04-21 | 2028-06-19 | 2826 |  | Sector 43 | 9705266 |
| 2828 | 37300.37500.38800.40000.116300.142200.899000 | Shaft Downtake works | 90d | 2028-01-22 | 2028-04-20 | 2205, 2760FS-30d |  | Sector 43 | 9705276 |
| 2829 | 37300.37500.38800.40000.116300.142200.899100 | Connection to pump room | 45d | 2028-04-21 | 2028-06-04 | 2828 |  | Sector 43 | 9705286 |
| 2830 | 37300.37500.38800.40000.116300.142200.899200 | Installation of FF pumps | 60d | 2028-04-21 | 2028-06-19 | 2826, 2828 |  | Sector 43 | 9705296 |
| 2831 | 37300.37500.38800.40000.116300.142200.899300 | T&C of complete system | 60d | 2028-07-17 | 2028-09-14 | 174FS-3d, 2759, 2764, 2770FS-20d, 2827, 2829, 2830, 2740 |  | Sector 43 | 9705306 |

| ID | WBS | Task | Duration | Start | Finish | Predecessors | Constraint | Calendar | Unique_Task_ID |
| --- | --- | --- | --- | --- | --- | --- | --- | --- | --- |
| 2832 | 37300.37500.38800.40000.116300.217600 | **Lift work** | 99d | 2027-10-04 | 2028-02-24 |  | start no earlier than 2027-10-04 | Sector 43 | 9700276 |
| 2833 | 37300.37500.38800.40000.116300.217600.899400 | Lift Shaft/Pit Handover | 30d | 2027-10-04 | 2027-12-17 | 2171 |  | Sector 43 | 9705316 |
| 2834 | 37300.37500.38800.40000.116300.217600.899500 | Lift installation work | 50d | 2027-10-23 | 2028-01-25 | 2833FS-11d |  | Sector 43 | 9705326 |
| 2835 | 37300.37500.38800.40000.116300.217600.899600 | Lift testing and commissioning | 30d | 2028-01-26 | 2028-02-24 | 2834 |  | Sector 43 | 9705336 |
| 2836 | 37300.37500.38800.40000.216700 | **External Paint Works** | 170d | 2027-09-02 | 2028-04-03 |  | start no earlier than 2027-09-02 | Sector 43 | 9699716 |
| 2837 | 37300.37500.38800.40000.216700.418000 | Surface prepration | 70d | 2027-09-02 | 2027-12-25 | 2205 |  | Sector 43 | 9701296 |
| 2838 | 37300.37500.38800.40000.216700.418100 | External Painting (Primer, texture & first coat) | 90d | 2027-12-26 | 2028-03-24 | 2837 |  | Sector 43 | 9701306 |
| 2839 | 37300.37500.38800.40000.216700.418200 | Final coat of painting | 80d | 2028-01-15 | 2028-04-03 | 2838FS-70d |  | Sector 43 | 9701316 |
| 2840 | 37300.37500.38800.40000.216700.418300 | Misc. work | 50d | 2027-12-26 | 2028-02-13 | 2837 |  | Sector 43 | 9701326 |
| 2841 | 37300.37500.38800.40000.322400 | OC Application/Readiness | 1d | 2028-08-02 | 2028-08-02 | 2803FS-45d, 2816FS-45d, 2824FS-45d, 2831FS-44d, 2835, 2756, 175FS+0.25d, 2762, 2763, 2765, 2753 |  | Sector 43 | 9700786 |
| 2842 | 37300.37500.38800.40000.322500 | OC Receipt | 30d | 2028-08-03 | 2028-09-01 | 2841 |  | Sector 43 | 9700796 |
| 2843 | 37300.37500.38800.40000.143900 | **Post OC Activities** | 205d | 2028-08-03 | 2029-04-09 |  | start no earlier than 2028-08-03 | Sector 43 | 9699126 |
| 2844 | 37300.37500.38800.40000.143900.418400 | CP & Sanitaryware installation | 120d | 2028-08-03 | 2029-01-14 | 2842FS-30d, 2820 |  | Sector 43 | 9701336 |
| 2845 | 37300.37500.38800.40000.143900.418500 | Electrical Fixtures And Fittings installations | 120d | 2028-08-03 | 2029-01-14 | 2842FS-30d |  | Sector 43 | 9701346 |
| 2846 | 37300.37500.38800.40000.143900.418600 | Final Coat Paint Internal | 90d | 2028-08-03 | 2028-10-31 | 2842FS-30d |  | Sector 43 | 9701356 |
| 2847 | 37300.37500.38800.40000.143900.418700 | Split AC Units installation | 100d | 2028-12-31 | 2029-04-09 | 2846FS+15d |  | Sector 43 | 9701366 |
| 2848 | 37300.37500.38800.40000.143900.418800 | Wooden Flooring | 180d | 2028-08-03 | 2029-03-15 | 2842FS-30d |  | Sector 43 | 9701376 |
| 2849 | 37300.37500.38800.40000.322600 | Offer to possession | 150d | 2029-04-10 | 2029-09-06 | 2842FS+120d, 2840, 2844, 2845, 2847, 2848 |  | Sector 43 | 9700806 |
