Schedule from MS Project XML, 2021-12-08 to 2030-06-06.

## Calendars

- Standard: Mon-Fri 08:00-12:00, 13:00-17:00; Sat-Sun off. Exceptions (off unless hours are given): 2021-12-25 to 2022-01-09, 2022-04-15 to 2022-04-18, 2022-05-02, 2022-06-02 to 2022-06-03, 2022-08-29, 2022-12-25 to 2023-01-08, 2023-04-07 to 2023-04-10, 2023-05-01, 2023-05-29, 2023-08-28, 2023-12-25 to 2024-01-07, 2024-03-29 to 2024-04-01, 2024-05-06, 2024-05-27, 2024-08-26, 2024-12-23 to 2025-01-05, 2025-04-18 to 2025-04-21, 2025-05-05, 2025-05-26, 2025-08-25, 2025-12-22 to 2026-01-04, 2026-03-27 to 2026-03-30, 2026-05-04, 2026-05-23 to 2026-05-25, 2026-08-29 to 2026-08-31, 2026-12-21 to 2027-01-03, 2027-04-16 to 2027-04-19, 2027-05-01 to 2027-05-03, 2027-05-29 to 2027-05-31, 2027-08-30, 2027-12-25 to 2028-01-09, 2028-03-31 to 2028-04-03, 2028-04-29 to 2028-05-01, 2028-05-27 to 2028-05-29, 2028-08-26 to 2028-08-28, 2028-12-23 to 2029-01-07, 2029-03-23 to 2029-03-26, 2029-05-07, 2029-05-28, 2029-08-27, 2029-12-24 to 2030-01-06, 2030-04-12 to 2030-04-15, 2030-05-06, 2030-05-27.
- Indian Calendar: Mon-Sat 08:00-12:00, 13:00-17:00; Sun off. Exceptions (off unless hours are given): 2023-11-15 to 2023-12-15, 2024-07-01 to 2024-07-06 08:00-10:00, 14:00-17:00, 2024-07-07, 2024-07-08 to 2024-07-13 08:00-10:00, 14:00-17:00, 2024-07-14, 2024-07-15 to 2024-07-20 08:00-10:00, 14:00-17:00, 2024-07-21, 2024-07-22 to 2024-07-27 08:00-10:00, 14:00-17:00, 2024-07-28, 2024-07-29 to 2024-07-31 08:00-10:00, 14:00-17:00, 2024-08-01 to 2024-08-03 08:00-10:00, 11:00-12:00, 13:00-17:00, 2024-08-04, 2024-08-05 to 2024-08-10 08:00-10:00, 11:00-12:00, 13:00-17:00, 2024-08-11, 2024-08-12 to 2024-08-17 08:00-10:00, 11:00-12:00, 13:00-17:00, 2024-08-18, 2024-08-19 to 2024-08-24 08:00-10:00, 11:00-12:00, 13:00-17:00, 2024-08-25, 2024-08-26 to 2024-08-31 08:00-10:00, 11:00-12:00, 13:00-17:00, 2024-09-01, 2024-09-02 to 2024-09-07 08:00-10:00, 11:00-12:00, 13:00-17:00, 2024-09-08, 2024-09-09 to 2024-09-14 08:00-10:00, 11:00-12:00, 13:00-17:00, 2024-09-15, 2024-09-16 to 2024-09-21 08:00-10:00, 11:00-12:00, 13:00-17:00, 2024-09-22, 2024-09-23 to 2024-09-28 08:00-10:00, 11:00-12:00, 13:00-17:00, 2024-09-29, 2024-09-30 08:00-10:00, 11:00-12:00, 13:00-17:00.
- 7 day week No holidays: Mon-Sun 08:00-12:00, 13:00-17:00.

## Resources

| Resource | Group | Unit |
| --- | --- | --- |
| Plumbers | Services Engineers |  |
| Landscape Architects | Design Resources |  |
| Carpenters | Site Resources |  |
| Electricians | Services Engineers |  |
| Bricks |  | No |
| Services Engineers |  |  |
| Wai Lim | Structural Engineers |  |
| ONE M Cost |  |  |
| Crane |  |  |
| Project Costs |  |  |
| Hamed Ahmed (e-on-alloc) | Structural Engineers |  |
| Ductworkers | Services Engineers |  |
| Jim Smith (e-on-act) | Structural Engineers |  |
| Roofers | Site Resources |  |
| Structural Engineers | Design Resources |  |
| Steel Fitters | Site Resources |  |
| Site Resources |  |  |
| Services Engineers | Design Resources |  |
| Fitters | Services Engineers |  |
| Bricklayers | Site Resources |  |
| Architects | Design Resources |  |
| Sarah Williams (e-on-act) | Structural Engineers |  |
| Design Resources |  |  |

## Schedule

| ID | WBS | Task | Duration | Start | Finish | Predecessors | Complete | Constraint | Calendar | Unique_Task_ID |
| --- | --- | --- | --- | --- | --- | --- | --- | --- | --- | --- |
| 1 | 36900 | **Tower A** | 2532.25d | 2023-01-27 | 2030-01-02 |  | 34% | start no earlier than 2023-01-27 | 7 day week No holidays | 7284364 |
| 2 | 36900.37700 | **RCC Work** | 1400d | 2023-01-27 | 2026-11-26 |  | 71% | start no earlier than 2023-01-27 | 7 day week No holidays | 7284424 |
| 3 | 36900.37700.78700 | **Aluform Mobilization** | 104d | 2025-10-13 | 2026-02-10 |  |  | start no earlier than 2025-10-13 | Indian Calendar | 7284425 |
| 4 | 36900.37700.78700.130400 | Aluform-Order Date | 1d | 2025-10-13 | 2025-10-13 | 9FS+30d |  |  | 7 day week No holidays | 7284426 |
| 5 | 36900.37700.78700.130500 | Aluform-Shop Drawing Approval Date | 60d | 2025-10-14 | 2025-12-12 | 4 |  |  | 7 day week No holidays | 7284427 |
| 6 | 36900.37700.78700.130600 | Aluform-Start of Supply for first lot date | 60d | 2025-12-13 | 2026-02-10 | 5 |  |  | 7 day week No holidays | 7284437 |
| 7 | 36900.37700.37800 | **RCC work above 15th Fl** | 1375d | 2023-01-27 | 2026-11-01 |  | 78% | start no earlier than 2023-01-27 | 7 day week No holidays | 7284434 |
| 8 | 36900.37700.37800.130700 | RCC- 14th Floor | 33d | 2023-03-01 | 2023-04-07 |  | 100% | start no earlier than 2023-03-01 | Indian Calendar | 7284435 |
| 9 | 36900.37700.37800.83100 | RCC - 15th Floor | 22d | 2023-06-20 | 2023-08-17 | 8FS-47.57d | 100% |  | 7 day week No holidays | 7289604 |
| 10 | 36900.37700.37800.83200 | RCC - 16th Floor | 12d | 2023-09-20 | 2023-10-17 | 9FS+120.8d | 100% | start no earlier than 2023-09-20 | 7 day week No holidays | 7289614 |
| 11 | 36900.37700.37800.83300 | RCC - 17th Floor | 35d | 2023-10-23 | 2023-11-26 | 10 | 100% | start no earlier than 2023-10-23 | 7 day week No holidays | 7289624 |
| 12 | 36900.37700.37800.83400 | RCC - 18th Floor | 19d | 2023-11-23 | 2023-12-15 | 11FS+20d | 100% | start no earlier than 2023-11-23 | 7 day week No holidays | 7289634 |
| 13 | 36900.37700.37800.83500 | RCC - 19th Floor | 16d | 2023-12-07 | 2023-12-31 | 12 | 100% | start no earlier than 2023-12-07 | 7 day week No holidays | 7289644 |
| 14 | 36900.37700.37800.83600 | RCC - 20th Floor | 12d | 2023-12-25 | 2024-01-25 | 13 | 100% | start no earlier than 2023-12-25 | 7 day week No holidays | 7289654 |
| 15 | 36900.37700.37800.83700 | RCC - 21st Floor | 22d | 2024-01-09 | 2024-02-12 | 14 | 100% | start no earlier than 2024-01-09 | 7 day week No holidays | 7289664 |
| 16 | 36900.37700.37800.83800 | RCC - 22nd Floor | 15d | 2024-02-06 | 2024-03-01 | 15 | 100% | start no earlier than 2024-02-06 | 7 day week No holidays | 7289674 |
| 17 | 36900.37700.37800.83900 | RCC - 23rd Floor | 15d | 2024-03-02 | 2024-03-18 | 16 | 100% | start no earlier than 2024-03-02 | 7 day week No holidays | 7289684 |
| 18 | 36900.37700.37800.84000 | RCC - 24th Floor | 15d | 2024-03-08 | 2024-03-30 | 17 | 100% | start no earlier than 2024-03-08 | 7 day week No holidays | 7289694 |
| 19 | 36900.37700.37800.84100 | RCC - 25th Floor | 9d | 2024-03-23 | 2024-04-10 | 18 | 100% | start no earlier than 2024-03-23 | 7 day week No holidays | 7289704 |
| 20 | 36900.37700.37800.84200 | RCC - 26th Floor | 37d | 2024-03-17 | 2024-04-22 | 19FS+2d | 100% | start no earlier than 2024-03-17 | 7 day week No holidays | 7289714 |
| 21 | 36900.37700.37800.84300 | RCC - 27th Floor | 23d | 2024-04-15 | 2024-05-07 | 20FS+77d | 100% | start no earlier than 2024-04-15 | 7 day week No holidays | 7289724 |
| 22 | 36900.37700.37800.84400 | RCC - 28th Floor | 45d | 2024-04-15 | 2024-05-29 | 21 | 100% | start no earlier than 2024-04-15 | 7 day week No holidays | 7289734 |
| 23 | 36900.37700.37800.84500 | RCC - 29th Floor | 66d | 2024-04-06 | 2024-06-10 | 22FS+90d | 100% | start no earlier than 2024-04-06 | 7 day week No holidays | 7289744 |
| 24 | 36900.37700.37800.84600 | RCC - 30th Floor | 61d | 2024-04-24 | 2024-06-23 | 23FS+10d | 100% | start no earlier than 2024-04-24 | 7 day week No holidays | 7289754 |
| 25 | 36900.37700.37800.84700 | RCC - 31st Floor | 22d | 2024-04-15 | 2024-07-07 | 24FS+11d | 100% | start no earlier than 2024-04-15 | 7 day week No holidays | 7289764 |
| 26 | 36900.37700.37800.84800 | RCC - 32nd Floor | 10d | 2024-07-15 | 2024-07-24 | 25FS-1d | 100% | start no earlier than 2024-07-15 | 7 day week No holidays | 7289774 |
| 27 | 36900.37700.37800.84900 | RCC - 33rd Floor | 15d | 2024-07-24 | 2024-08-07 | 26FS-1d | 100% | start no earlier than 2024-07-24 | 7 day week No holidays | 7289784 |
| 28 | 36900.37700.37800.85000 | Tower A- Retrofitting | 900d | 2023-01-27 | 2026-03-06 | 27FS+4d | 87% | start no earlier than 2023-01-27 |  | 7289785 |
| 29 | 36900.37700.37800.85100 | RCC - 34th Floor | 12d | 2024-08-12 | 2024-08-23 | 27FS+4d | 100% | start no earlier than 2024-08-12 | 7 day week No holidays | 7289794 |
| 30 | 36900.37700.37800.85200 | RCC - 35th Floor | 18d | 2024-08-19 | 2024-09-12 | 29FS-3d | 100% | start no earlier than 2024-08-19 | 7 day week No holidays | 7289804 |
| 31 | 36900.37700.37800.85300 | RCC - 36th Floor | 52d | 2024-03-10 | 2024-09-28 | 30FS-179.25d | 100% | start no earlier than 2024-03-10 | 7 day week No holidays | 7289814 |
| 32 | 36900.37700.37800.85400 | RCC - Service Floor | 45d | 2024-09-14 | 2024-11-28 | 31 | 100% | start no earlier than 2024-09-14 | 7 day week No holidays | 7289824 |
| 33 | 36900.37700.37800.85500 | RCC - 37th Floor | 37d | 2024-11-24 | 2024-12-30 | 31, 32FS-9d | 100% | start no earlier than 2024-11-24 | 7 day week No holidays | 7289834 |
| 34 | 36900.37700.37800.85600 | RCC - 38th Floor | 40d | 2024-12-31 | 2025-02-08 | 33FS+1d | 100% | start no earlier than 2024-12-31 | 7 day week No holidays | 7289844 |
| 35 | 36900.37700.37800.85700 | RCC - 39th Floor | 99d | 2024-10-24 | 2025-01-30 | 34FS-33d | 100% | start no earlier than 2024-10-24 | 7 day week No holidays | 7289854 |
| 36 | 36900.37700.37800.85800 | RCC - 40th Floor | 23d | 2025-01-08 | 2025-01-30 | 35 | 100% | start no earlier than 2025-01-08 | 7 day week No holidays | 7289864 |
| 37 | 36900.37700.37800.85900 | RCC - 41st Floor | 15.25d | 2025-01-20 | 2025-03-20 | 36FS-5.25d | 100% | start no earlier than 2025-01-20 | 7 day week No holidays | 7289874 |
| 38 | 36900.37700.37800.86000 | RCC - 42nd Floor | 28d | 2025-02-28 | 2025-03-30 | 37FS-13.25d | 100% | start no earlier than 2025-02-28 | 7 day week No holidays | 7289884 |
| 39 | 36900.37700.37800.86100 | RCC - 43rd Floor | 30d | 2025-03-21 | 2025-04-27 | 38 | 100% | start no earlier than 2025-03-21 | 7 day week No holidays | 7289894 |
| 40 | 36900.37700.37800.86200 | RCC - 44th Floor Refuge | 57d | 2025-03-16 | 2025-05-12 | 39 | 100% | start no earlier than 2025-03-16 | 7 day week No holidays | 7289904 |
| 41 | 36900.37700.37800.86300 | RCC - 45th Floor | 13d | 2025-05-12 | 2025-05-31 | 40FS+11.46d | 100% | start no earlier than 2025-05-12 | 7 day week No holidays | 7289914 |
| 42 | 36900.37700.37800.86400 | RCC - 46th Floor | 20d | 2025-06-01 | 2025-06-25 | 41 | 100% | start no earlier than 2025-06-01 | 7 day week No holidays | 7289924 |
| 43 | 36900.37700.37800.86500 | RCC - 47th Floor | 16d | 2025-06-26 | 2025-07-13 | 42 | 100% | start no earlier than 2025-06-26 | 7 day week No holidays | 7289934 |
| 44 | 36900.37700.37800.86600 | RCC - 48th Floor | 18d | 2025-07-13 | 2025-07-30 | 43 | 100% | start no earlier than 2025-07-13 | 7 day week No holidays | 7289944 |
| 45 | 36900.37700.37800.86700 | RCC - 49th Floor | 22d | 2025-08-01 | 2025-08-25 | 44 | 100% | start no earlier than 2025-08-01 | 7 day week No holidays | 7289954 |
| 46 | 36900.37700.37800.86800 | RCC - 50th Floor | 18d | 2025-08-26 | 2025-09-16 | 45 | 100% | start no earlier than 2025-08-26 | 7 day week No holidays | 7289964 |
| 47 | 36900.37700.37800.86900 | RCC - 51st Floor | 19d | 2025-09-17 | 2025-10-16 | 46 | 100% | start no earlier than 2025-09-17 | 7 day week No holidays | 7289974 |
| 48 | 36900.37700.37800.87000 | RCC - 52nd Floor | 16d | 2025-10-17 | 2025-11-01 | 47 | 100% | start no earlier than 2025-10-17 | 7 day week No holidays | 7289984 |
| 49 | 36900.37700.37800.87100 | RCC - 53rd Floor | 21d | 2025-12-11 | 2025-12-31 | 48 | 100% | start no earlier than 2025-12-11 | 7 day week No holidays | 7289994 |
| 50 | 36900.37700.37800.87200 | RCC - 54th Floor | 17d | 2025-11-26 | 2025-12-12 | 49 | 29% | start no earlier than 2025-11-26 | 7 day week No holidays | 7290004 |
| 51 | 36900.37700.37800.130800 | RCC - 55th Floor | 16d | 2025-12-09 | 2025-12-24 | 50 |  |  | 7 day week No holidays | 7290014 |
| 52 | 36900.37700.37800.130900 | RCC - 56th Floor | 16d | 2025-12-25 | 2026-01-09 | 51 |  |  | 7 day week No holidays | 7290024 |
| 53 | 36900.37700.37800.131000 | RCC - 57th Floor | 16d | 2026-01-10 | 2026-01-25 | 52 |  |  | 7 day week No holidays | 7290034 |
| 54 | 36900.37700.37800.131100 | RCC - 58th Floor | 16d | 2026-01-26 | 2026-02-10 | 53 |  |  | 7 day week No holidays | 7290044 |
| 55 | 36900.37700.37800.131200 | RCC - 59th Floor | 16d | 2026-02-11 | 2026-02-26 | 54 |  |  | 7 day week No holidays | 7290054 |
| 56 | 36900.37700.37800.131300 | RCC - 60th Floor | 16d | 2026-02-27 | 2026-03-14 | 55 |  |  | 7 day week No holidays | 7290064 |
| 57 | 36900.37700.37800.131400 | RCC - 61st Floor | 16d | 2026-03-15 | 2026-03-30 | 56 |  |  | 7 day week No holidays | 7290074 |
| 58 | 36900.37700.37800.131500 | RCC - 62nd Floor | 16d | 2026-03-31 | 2026-04-15 | 57 |  |  | 7 day week No holidays | 7290084 |
| 59 | 36900.37700.37800.131600 | RCC - 63rd Floor | 16d | 2026-04-16 | 2026-05-01 | 58 |  |  | 7 day week No holidays | 7290094 |
| 60 | 36900.37700.37800.131700 | RCC - 64th Floor | 16d | 2026-05-02 | 2026-05-17 | 59 |  |  | 7 day week No holidays | 7290104 |
| 61 | 36900.37700.37800.131800 | RCC - 65th Floor | 16d | 2026-05-18 | 2026-06-02 | 60 |  |  | 7 day week No holidays | 7290114 |
| 62 | 36900.37700.37800.131900 | RCC - 66th Floor | 16d | 2026-06-03 | 2026-06-18 | 61 |  |  | 7 day week No holidays | 7290124 |
| 63 | 36900.37700.37800.132000 | RCC - 67th Floor | 16d | 2026-06-19 | 2026-07-04 | 62 |  |  | 7 day week No holidays | 7290134 |
| 64 | 36900.37700.37800.132100 | RCC - 68th Floor | 16d | 2026-07-05 | 2026-07-20 | 63 |  |  | 7 day week No holidays | 7290144 |
| 65 | 36900.37700.37800.132200 | RCC - 69th Floor | 16d | 2026-07-21 | 2026-08-05 | 64 |  |  | 7 day week No holidays | 7290154 |
| 66 | 36900.37700.37800.132300 | RCC - 70th Floor | 16d | 2026-08-06 | 2026-08-21 | 65 |  |  | 7 day week No holidays | 7290164 |
| 67 | 36900.37700.37800.132400 | RCC - 71st Floor | 16d | 2026-08-22 | 2026-09-06 | 66 |  |  | 7 day week No holidays | 7290174 |
| 68 | 36900.37700.37800.132500 | RCC - 72nd Floor | 16d | 2026-09-07 | 2026-09-22 | 67 |  |  | 7 day week No holidays | 7290184 |
| 69 | 36900.37700.37800.132600 | RCC - Terrace | 30d | 2026-07-05 | 2026-08-03 | 63 |  |  | 7 day week No holidays | 7290194 |
| 70 | 36900.37700.37800.132700 | RCC Work Above terrace | 90d | 2026-08-04 | 2026-11-01 | 69 |  |  | 7 day week No holidays | 7289304 |

| ID | WBS | Task | Duration | Start | Finish | Predecessors | Complete | Constraint | Calendar | Unique_Task_ID |
| --- | --- | --- | --- | --- | --- | --- | --- | --- | --- | --- |
| 72 | 36900.37700.38000 | **Post pour works** | 1345d | 2023-03-23 | 2026-11-26 |  | 55% | start no earlier than 2023-03-23 | 7 day week No holidays | 7289305 |
| 73 | 36900.37700.38000.87300 | 15th floor | 311d | 2023-03-23 | 2024-01-27 | 9FS+136.8d | 100% | start no earlier than 2023-03-23 | 7 day week No holidays | 7392824 |
| 74 | 36900.37700.38000.87400 | 16th floor | 10d | 2024-01-29 | 2024-02-07 | 10FS+16d | 100% | start no earlier than 2024-01-29 | 7 day week No holidays | 7392834 |
| 75 | 36900.37700.38000.87500 | 17th floor | 10d | 2024-02-21 | 2024-03-01 | 11FS+35d | 100% | start no earlier than 2024-02-21 | 7 day week No holidays | 7393084 |
| 76 | 36900.37700.38000.87600 | 18th floor | 10d | 2024-03-14 | 2024-03-23 | 12FS+15d | 100% | start no earlier than 2024-03-14 | 7 day week No holidays | 7393074 |
| 77 | 36900.37700.38000.87700 | 19th floor | 10d | 2024-05-30 | 2024-06-08 | 13FS+15d | 100% | start no earlier than 2024-05-30 | 7 day week No holidays | 7393064 |
| 78 | 36900.37700.38000.87800 | 20th floor | 10d | 2024-06-21 | 2024-06-30 | 14FS+15d | 100% | start no earlier than 2024-06-21 | 7 day week No holidays | 7393054 |
| 79 | 36900.37700.38000.87900 | 21st floor | 10d | 2024-07-14 | 2024-07-23 | 15FS+15d | 100% | start no earlier than 2024-07-14 | 7 day week No holidays | 7393044 |
| 80 | 36900.37700.38000.88000 | 22nd floor | 10d | 2024-07-05 | 2024-07-14 | 16FS+15d | 100% | start no earlier than 2024-07-05 | 7 day week No holidays | 7393034 |
| 81 | 36900.37700.38000.88100 | 23rd floor | 14d | 2024-07-13 | 2024-07-26 | 17FS+15d | 100% | start no earlier than 2024-07-13 | 7 day week No holidays | 7393024 |
| 82 | 36900.37700.38000.88200 | 24th floor | 33d | 2024-07-31 | 2024-09-01 | 18FS+15d | 100% | start no earlier than 2024-07-31 | 7 day week No holidays | 7393014 |
| 83 | 36900.37700.38000.88300 | 25th floor | 10d | 2024-08-04 | 2024-08-13 | 19FS+17d | 100% | start no earlier than 2024-08-04 | 7 day week No holidays | 7393004 |
| 84 | 36900.37700.38000.88400 | 26th floor | 10d | 2024-08-07 | 2024-08-16 | 20FS+92d | 100% | start no earlier than 2024-08-07 | 7 day week No holidays | 7392994 |
| 85 | 36900.37700.38000.88500 | 27th floor | 10d | 2024-08-07 | 2024-08-16 | 21FS+15d | 100% | start no earlier than 2024-08-07 | 7 day week No holidays | 7392984 |
| 86 | 36900.37700.38000.88600 | 28th floor | 10d | 2024-11-14 | 2024-11-23 | 22FS+105d | 100% | start no earlier than 2024-11-14 | 7 day week No holidays | 7392974 |
| 87 | 36900.37700.38000.88700 | 29th floor | 39d | 2024-09-30 | 2024-11-07 | 23FS+25d | 100% | start no earlier than 2024-09-30 | 7 day week No holidays | 7392964 |
| 88 | 36900.37700.38000.88800 | 30th floor | 10d | 2024-11-14 | 2024-11-23 | 24FS+26d | 100% | start no earlier than 2024-11-14 | 7 day week No holidays | 7392954 |
| 89 | 36900.37700.38000.88900 | 31st floor | 10d | 2024-11-26 | 2024-12-05 | 25FS+14d | 100% | start no earlier than 2024-11-26 | 7 day week No holidays | 7392944 |
| 90 | 36900.37700.38000.89000 | 32nd floor | 10d | 2024-11-28 | 2024-12-07 | 26FS+14d | 100% | start no earlier than 2024-11-28 | 7 day week No holidays | 7392934 |
| 91 | 36900.37700.38000.132800 | 33rd floor | 10d | 2025-10-13 | 2025-10-22 | 27FS+19d |  |  | 7 day week No holidays | 7392924 |
| 92 | 36900.37700.38000.132900 | 34th floor | 10d | 2025-10-13 | 2025-10-22 | 29FS+12d |  |  | 7 day week No holidays | 7392914 |
| 93 | 36900.37700.38000.133000 | 35th floor | 10d | 2025-10-13 | 2025-10-22 | 30FS+11d |  |  | 7 day week No holidays | 7392904 |
| 94 | 36900.37700.38000.133100 | 36th floor | 10d | 2025-10-13 | 2025-10-22 | 31FS+15d |  |  | 7 day week No holidays | 7392894 |
| 95 | 36900.37700.38000.133200 | Service floor | 10d | 2025-10-13 | 2025-10-22 | 32FS+6d |  |  | 7 day week No holidays | 7392884 |
| 96 | 36900.37700.38000.133300 | 37th floor | 10d | 2025-10-13 | 2025-10-22 | 33FS+15d |  |  | 7 day week No holidays | 7392874 |
| 97 | 36900.37700.38000.133400 | 38th floor | 10d | 2025-10-13 | 2025-10-22 | 34FS+15d |  |  | 7 day week No holidays | 7392864 |
| 98 | 36900.37700.38000.133500 | 39th floor | 10d | 2025-10-13 | 2025-10-22 | 35FS+15d |  |  | 7 day week No holidays | 7392854 |
| 99 | 36900.37700.38000.133600 | 40th floor | 10d | 2025-10-13 | 2025-10-22 | 36FS+15d |  |  | 7 day week No holidays | 7393254 |
| 100 | 36900.37700.38000.133700 | 41th floor | 10d | 2025-10-13 | 2025-10-22 | 37FS+23.75d |  |  | 7 day week No holidays | 7393244 |
| 101 | 36900.37700.38000.133800 | 42th floor | 10d | 2025-10-13 | 2025-10-22 | 38FS+15d |  |  | 7 day week No holidays | 7393234 |
| 102 | 36900.37700.38000.133900 | 43th floor | 10d | 2025-10-13 | 2025-10-22 | 39FS+15d |  |  | 7 day week No holidays | 7393224 |
| 103 | 36900.37700.38000.134000 | 44th floor | 10d | 2025-10-13 | 2025-10-22 | 40FS+26.46d |  |  | 7 day week No holidays | 7393214 |
| 104 | 36900.37700.38000.134100 | 45th floor | 10d | 2025-10-13 | 2025-10-22 | 41FS+15d |  |  | 7 day week No holidays | 7393204 |
| 105 | 36900.37700.38000.134200 | 46th floor | 10d | 2025-10-13 | 2025-10-22 | 42FS+15d |  |  | 7 day week No holidays | 7393194 |
| 106 | 36900.37700.38000.134300 | 47th floor | 10d | 2025-10-13 | 2025-10-22 | 43FS+15d |  |  | 7 day week No holidays | 7393184 |
| 107 | 36900.37700.38000.134400 | 48th floor | 10d | 2025-10-13 | 2025-10-22 | 44FS+15d |  |  | 7 day week No holidays | 7393174 |
| 108 | 36900.37700.38000.134500 | 49th floor | 10d | 2025-10-13 | 2025-10-22 | 45FS+15d |  |  | 7 day week No holidays | 7393164 |
| 109 | 36900.37700.38000.134600 | 50th floor | 10d | 2025-10-13 | 2025-10-22 | 46FS+15d |  |  | 7 day week No holidays | 7393154 |
| 110 | 36900.37700.38000.134700 | 51st floor | 10d | 2025-11-01 | 2025-11-10 | 47FS+15d |  |  | 7 day week No holidays | 7393144 |
| 111 | 36900.37700.38000.134800 | 52nd floor | 10d | 2025-11-17 | 2025-11-26 | 48FS+15d |  |  | 7 day week No holidays | 7393134 |
| 112 | 36900.37700.38000.134900 | 53rd floor | 10d | 2025-12-08 | 2025-12-17 | 49FS+15d |  |  | 7 day week No holidays | 7393124 |
| 113 | 36900.37700.38000.135000 | 54th floor | 10d | 2025-12-24 | 2026-01-02 | 50FS+15d |  |  | 7 day week No holidays | 7393114 |
| 114 | 36900.37700.38000.135100 | 55th floor | 10d | 2026-01-09 | 2026-01-18 | 51FS+15d |  |  | 7 day week No holidays | 7393104 |
| 115 | 36900.37700.38000.135200 | 56th floor | 10d | 2026-01-25 | 2026-02-03 | 52FS+15d |  |  | 7 day week No holidays | 7393094 |
| 116 | 36900.37700.38000.135300 | 57th floor | 10d | 2026-02-10 | 2026-02-19 | 53FS+15d |  |  | 7 day week No holidays | 7393444 |
| 117 | 36900.37700.38000.135400 | 58th floor | 10d | 2026-02-26 | 2026-03-07 | 54FS+15d |  |  | 7 day week No holidays | 7393434 |
| 118 | 36900.37700.38000.135500 | 59th floor | 10d | 2026-03-14 | 2026-03-23 | 55FS+15d |  |  | 7 day week No holidays | 7393424 |
| 119 | 36900.37700.38000.135600 | 60th floor | 10d | 2026-03-30 | 2026-04-08 | 56FS+15d |  |  | 7 day week No holidays | 7393414 |
| 120 | 36900.37700.38000.135700 | 61th floor | 10d | 2026-04-15 | 2026-04-24 | 57FS+15d |  |  | 7 day week No holidays | 7393404 |
| 121 | 36900.37700.38000.135800 | 62th floor | 10d | 2026-05-01 | 2026-05-10 | 58FS+15d |  |  | 7 day week No holidays | 7393394 |
| 122 | 36900.37700.38000.135900 | 63th floor | 10d | 2026-05-17 | 2026-05-26 | 59FS+15d |  |  | 7 day week No holidays | 7393384 |
| 123 | 36900.37700.38000.136000 | 64th floor | 10d | 2026-06-02 | 2026-06-11 | 60FS+15d |  |  | 7 day week No holidays | 7393374 |
| 124 | 36900.37700.38000.136100 | 65th floor | 10d | 2026-06-18 | 2026-06-27 | 61FS+15d |  |  | 7 day week No holidays | 7393364 |
| 125 | 36900.37700.38000.136200 | 66th floor | 10d | 2026-07-04 | 2026-07-13 | 62FS+15d |  |  | 7 day week No holidays | 7393354 |
| 126 | 36900.37700.38000.136300 | 67th floor | 10d | 2026-07-20 | 2026-07-29 | 63FS+15d |  |  | 7 day week No holidays | 7393344 |
| 127 | 36900.37700.38000.136400 | 68th floor | 10d | 2026-08-05 | 2026-08-14 | 64FS+15d |  |  | 7 day week No holidays | 7393334 |
| 128 | 36900.37700.38000.136500 | 69th floor | 10d | 2026-08-21 | 2026-08-30 | 65FS+15d |  |  | 7 day week No holidays | 7393324 |
| 129 | 36900.37700.38000.136600 | 70th floor | 10d | 2026-09-06 | 2026-09-15 | 66FS+15d |  |  | 7 day week No holidays | 7393314 |
| 130 | 36900.37700.38000.136700 | 71th floor | 10d | 2026-09-22 | 2026-10-01 | 67FS+15d |  |  | 7 day week No holidays | 7393304 |
| 131 | 36900.37700.38000.136800 | 72th floor | 10d | 2026-10-08 | 2026-10-17 | 68FS+15d |  |  | 7 day week No holidays | 7393294 |
| 132 | 36900.37700.38000.136900 | Terrace | 10d | 2026-08-19 | 2026-08-28 | 69FS+15d |  |  | 7 day week No holidays | 7393284 |
| 133 | 36900.37700.38000.137000 | Above Terrace | 10d | 2026-11-17 | 2026-11-26 | 70FS+15d |  |  | 7 day week No holidays | 7393274 |
| 134 | 36900.37700.79900 | PRELIMS WO - Site initiation Activities | 89d | 2024-09-05 | 2025-01-30 |  | 100% | start no earlier than 2024-09-05 | 7 day week No holidays | 7289315 |
| 135 | 36900.37700.80000 | MOSA- Reception Lobby Works GF | 70d | 2023-06-06 | 2023-09-03 | 9 | 100% | start no earlier than 2023-06-06 | 7 day week No holidays | 7393474 |
| 136 | 36900.37700.80100 | MOSA- Sample Flat | 70d | 2023-06-05 | 2023-08-13 | 135FF+99.5d | 100% | start no earlier than 2023-06-05 | 7 day week No holidays | 7393484 |
| 137 | 36900.37700.80200 | MOSA Sample flat 2104 | 90d | 2024-07-26 | 2025-11-02 |  | 76% | start no earlier than 2024-07-26 | 7 day week No holidays | 7393494 |

| ID | WBS | Task | Duration | Start | Finish | Predecessors | Complete | Constraint | Calendar | Unique_Task_ID |
| --- | --- | --- | --- | --- | --- | --- | --- | --- | --- | --- |
| 138 | 36900.77600 | **Pending elements** | 753.38d | 2024-04-15 | 2026-09-29 |  | 34% | start no earlier than 2024-04-15 | Indian Calendar | 10032789 |
| 139 | 36900.77600.80300 | Tie beams | 360d | 2025-06-25 | 2026-09-29 |  | 30% | start no earlier than 2025-06-25 | Indian Calendar | 10032799 |
| 140 | 36900.77600.80400 | Service slabs | 236d | 2025-05-22 | 2026-04-29 |  | 36% | start no earlier than 2025-05-22 | Indian Calendar | 10032749 |
| 141 | 36900.77600.80500 | Pending Element (partition walls) & NTA basement walls/Columns | 115d | 2025-09-16 | 2026-02-06 |  | 30% | start no earlier than 2025-09-16 | Indian Calendar | 10032759 |
| 142 | 36900.77600.80600 | Basement Waterproofing | 83d | 2024-04-15 | 2025-07-30 |  | 100% | start no earlier than 2024-04-15 | Indian Calendar | 10032760 |
| 143 | 36900.77600.123200 | OTR water tanks | 115d | 2025-10-13 | 2026-02-23 |  |  | start no earlier than 2025-10-13 | Indian Calendar | 10032769 |
| 144 | 36900.79500 | CLSM | 5d | 2025-06-28 | 2025-07-17 |  | 100% | start no earlier than 2025-06-28 | Indian Calendar | 10344148 |
| 145 | 36900.78800 | **Entracnce portal** | 572d | 2025-05-09 | 2027-03-06 |  | 52% | start no earlier than 2025-05-09 | Indian Calendar | 10032790 |
| 146 | 36900.78800.80700 | Entrance portal & cresh deck | 484d | 2025-05-09 | 2027-03-06 |  | 52% | start no earlier than 2025-05-09 | Indian Calendar | 10032809 |
| 147 | 36900.37400 | **Civil Finishing works (Brick work, Plaster,conduiting, concled plumbing, waterproofing)** | 1598.38d | 2023-05-15 | 2027-09-29 |  | 58% | start no earlier than 2023-05-15 | 7 day week No holidays | 7284404 |
| 148 | 36900.37400.37600 | **Flat - Civil Work** | 1564.5d | 2023-05-15 | 2027-08-26 |  | 66% | start no earlier than 2023-05-15 | 7 day week No holidays | 7284414 |
| 149 | 36900.37400.37600.77300 | **9th Floor** | 884d | 2023-06-15 | 2025-11-14 |  | 20% | start no earlier than 2023-06-15 | 7 day week No holidays | 7289184 |
| 150 | 36900.37400.37600.77300.91600 | 9th Flr -Blockwork | 11d | 2023-06-15 | 2023-06-25 | 9FS+120.8d | 100% | start no earlier than 2023-06-15 | 7 day week No holidays | 7296024 |
| 151 | 36900.37400.37600.77300.268300 | 9th Flr -Concealed electrical conduiting | 11d | 2025-10-13 | 2025-10-23 | 150 |  |  | 7 day week No holidays | 7296034 |
| 152 | 36900.37400.37600.77300.268400 | 9th Flr -Backcoat Plaster | 11d | 2025-10-13 | 2025-10-23 | 150 |  |  | 7 day week No holidays | 7296044 |
| 153 | 36900.37400.37600.77300.268500 | 9th Flr -Concealed Plumbing | 11d | 2025-10-24 | 2025-11-03 | 152 |  |  | 7 day week No holidays | 7296054 |
| 154 | 36900.37400.37600.77300.268600 | 9th Flr -Waterproofing Work | 11d | 2025-11-04 | 2025-11-14 | 153 |  |  | 7 day week No holidays | 7296064 |
| 155 | 36900.37400.37600.77200 | **10th Floor** | 331d | 2024-12-30 | 2025-11-25 |  | 5% | start no earlier than 2024-12-30 | 7 day week No holidays | 7289174 |
| 156 | 36900.37400.37600.77200.91700 | 10th Flr -Blockwork | 1d | 2024-12-30 | 2024-12-30 | 150 | 100% | start no earlier than 2024-12-30 | 7 day week No holidays | 7296074 |
| 157 | 36900.37400.37600.77200.91800 | 10th Flr -Concealed electrical conduiting | 1d | 2024-12-30 | 2024-12-30 | 156 | 100% | start no earlier than 2024-12-30 | 7 day week No holidays | 7296084 |
| 158 | 36900.37400.37600.77200.268700 | 10th Flr -Backcoat Plaster | 11d | 2025-10-24 | 2025-11-03 | 152, 156 |  |  | 7 day week No holidays | 7296094 |
| 159 | 36900.37400.37600.77200.268800 | 10th Flr -Concealed Plumbing | 11d | 2025-11-04 | 2025-11-14 | 153, 158 |  |  | 7 day week No holidays | 7296104 |
| 160 | 36900.37400.37600.77200.268900 | 10th Flr -Waterproofing Work | 11d | 2025-11-15 | 2025-11-25 | 154, 159 |  |  | 7 day week No holidays | 7296114 |
| 161 | 36900.37400.37600.77100 | **11th Floor** | 937d | 2023-05-15 | 2025-12-06 |  | 24% | start no earlier than 2023-05-15 | 7 day week No holidays | 7289164 |
| 162 | 36900.37400.37600.77100.91900 | 11th Flr -Blockwork | 14d | 2023-05-15 | 2023-05-28 | 11FS+20d, 156 | 100% | start no earlier than 2023-05-15 | 7 day week No holidays | 7296124 |
| 163 | 36900.37400.37600.77100.269000 | 11th Flr -Concealed electrical conduiting | 11d | 2025-10-13 | 2025-10-23 | 157, 162 |  |  | 7 day week No holidays | 7296134 |
| 164 | 36900.37400.37600.77100.269100 | 11th Flr -Backcoat Plaster | 11d | 2025-11-04 | 2025-11-14 | 158, 162 |  |  | 7 day week No holidays | 7296144 |
| 165 | 36900.37400.37600.77100.269200 | 11th Flr -Concealed Plumbing | 11d | 2025-11-15 | 2025-11-25 | 159, 164 |  |  | 7 day week No holidays | 7296154 |
| 166 | 36900.37400.37600.77100.269300 | 11th Flr -Waterproofing Work | 11d | 2025-11-26 | 2025-12-06 | 160, 165 |  |  | 7 day week No holidays | 2493648 |

| ID | WBS | Task | Duration | Start | Finish | Predecessors | Complete | Constraint | Calendar | Unique_Task_ID |
| --- | --- | --- | --- | --- | --- | --- | --- | --- | --- | --- |
| 167 | 36900.37400.37600.67000 | **12th Floor** | 692d | 2024-01-04 | 2025-11-25 |  | 88% | start no earlier than 2024-01-04 | 7 day week No holidays | 7289154 |
| 168 | 36900.37400.37600.67000.92000 | 12th Flr -Blockwork | 49d | 2024-01-04 | 2024-02-21 | 12, 162 | 100% | start no earlier than 2024-01-04 | 7 day week No holidays | 2493658 |
| 169 | 36900.37400.37600.67000.92100 | 12th Flr -Concealed electrical conduiting | 11d | 2024-07-08 | 2024-07-18 | 163, 168 | 100% | start no earlier than 2024-07-08 | 7 day week No holidays | 7296164 |
| 170 | 36900.37400.37600.67000.269400 | 12th Flr -Backcoat Plaster | 11d | 2025-11-15 | 2025-11-25 | 164, 168 |  |  | 7 day week No holidays | 7296174 |
| 171 | 36900.37400.37600.67000.92200 | 12th Flr -Concealed Plumbing | 11d | 2024-07-15 | 2024-07-25 | 165, 170 | 100% | start no earlier than 2024-07-15 | 7 day week No holidays | 7296184 |
| 172 | 36900.37400.37600.67000.92300 | 12th Flr -Waterproofing Work | 11d | 2024-06-17 | 2024-06-27 | 166, 171 | 100% | start no earlier than 2024-06-17 | 7 day week No holidays | 7296194 |
| 173 | 36900.37400.37600.76900 | **13th Floor** | 639d | 2024-08-15 | 2026-05-15 |  | 11% | start no earlier than 2024-08-15 | 7 day week No holidays | 7289144 |
| 174 | 36900.37400.37600.76900.92400 | 13th Flr -Blockwork | 11d | 2024-08-15 | 2024-08-25 | 13, 168 | 100% | start no earlier than 2024-08-15 | 7 day week No holidays | 7296204 |
| 175 | 36900.37400.37600.76900.92500 | 13th Flr -Concealed electrical conduiting | 11d | 2025-01-15 | 2025-01-25 | 169, 174 | 100% | start no earlier than 2025-01-15 | 7 day week No holidays | 7296214 |
| 176 | 36900.37400.37600.76900.269500 | 13th Flr -Backcoat Plaster | 11d | 2025-11-26 | 2025-12-06 | 170, 174 |  |  | 7 day week No holidays | 7296224 |
| 177 | 36900.37400.37600.76900.269600 | 13th Flr -Concealed Plumbing | 80d | 2025-12-07 | 2026-02-24 | 176, 171 |  |  | 7 day week No holidays | 7296234 |
| 178 | 36900.37400.37600.76900.269700 | 13th Flr -Waterproofing Work | 80d | 2026-02-25 | 2026-05-15 | 177, 172 |  |  | 7 day week No holidays | 7296244 |
| 179 | 36900.37400.37600.66900 | **14th Floor** | 654d | 2024-03-04 | 2025-12-17 |  | 81% | start no earlier than 2024-03-04 | 7 day week No holidays | 7289134 |
| 180 | 36900.37400.37600.66900.92600 | 14th Flr -Blockwork | 15d | 2024-03-04 | 2024-03-30 | 14, 174 | 100% | start no earlier than 2024-03-04 | 7 day week No holidays | 7296254 |
| 181 | 36900.37400.37600.66900.92700 | 14th Flr -Concealed electrical conduiting | 11d | 2024-07-20 | 2024-07-30 | 175, 180 | 100% | start no earlier than 2024-07-20 | 7 day week No holidays | 7296264 |
| 182 | 36900.37400.37600.66900.269800 | 14th Flr -Backcoat Plaster | 11d | 2025-12-07 | 2025-12-17 | 176, 180 |  |  | 7 day week No holidays | 7296274 |
| 183 | 36900.37400.37600.66900.92800 | 14th Flr -Concealed Plumbing | 11d | 2024-07-14 | 2024-07-24 | 177FS-5d, 182FS-5d | 100% | start no earlier than 2024-07-14 | 7 day week No holidays | 7296284 |
| 184 | 36900.37400.37600.66900.92900 | 14th Flr -Waterproofing Work | 11d | 2024-09-15 | 2024-09-25 | 178, 183 | 100% | start no earlier than 2024-09-15 | 7 day week No holidays | 7296294 |
| 185 | 36900.37400.37600.66800 | **15th Floor** | 716d | 2024-01-13 | 2025-12-28 |  | 90% | start no earlier than 2024-01-13 | 7 day week No holidays | 7289124 |
| 186 | 36900.37400.37600.66800.93000 | 15th Flr -Blockwork | 76d | 2024-01-13 | 2024-03-28 | 10FS+0.25d | 100% | start no earlier than 2024-01-13 | 7 day week No holidays | 7296304 |
| 187 | 36900.37400.37600.66800.93100 | 15th Flr -Concealed electrical conduiting | 11d | 2024-07-14 | 2024-07-24 | 181, 186 | 100% | start no earlier than 2024-07-14 | 7 day week No holidays | 7296314 |
| 188 | 36900.37400.37600.66800.269900 | 15th Flr -Backcoat Plaster | 11d | 2025-12-18 | 2025-12-28 | 182, 186 |  |  | 7 day week No holidays | 7296324 |
| 189 | 36900.37400.37600.66800.93200 | 15th Flr -Concealed Plumbing | 11d | 2024-09-15 | 2024-09-25 | 188, 183 | 100% | start no earlier than 2024-09-15 | 7 day week No holidays | 7296334 |
| 190 | 36900.37400.37600.66800.93300 | 15th Flr -Waterproofing Work | 11d | 2024-09-19 | 2024-09-29 | 184FS+47d, 189FS-5d | 100% | start no earlier than 2024-09-19 | 7 day week No holidays | 7296344 |

| ID | WBS | Task | Duration | Start | Finish | Predecessors | Complete | Constraint | Calendar | Unique_Task_ID |
| --- | --- | --- | --- | --- | --- | --- | --- | --- | --- | --- |
| 191 | 36900.37400.37600.66600 | **16th Floor** | 623d | 2024-04-26 | 2026-01-08 |  | 77% | start no earlier than 2024-04-26 | 7 day week No holidays | 7289094 |
| 192 | 36900.37400.37600.66600.93400 | 16th Flr -Blockwork | 4d | 2024-04-26 | 2024-04-29 | 16, 186 | 100% | start no earlier than 2024-04-26 | 7 day week No holidays | 7296354 |
| 193 | 36900.37400.37600.66600.93500 | 16th Flr -Concealed electrical conduiting | 11d | 2024-07-09 | 2024-07-19 | 187, 192FS+30d | 100% | start no earlier than 2024-07-09 | 7 day week No holidays | 7296364 |
| 194 | 36900.37400.37600.66600.270000 | 16th Flr -Backcoat Plaster | 11d | 2025-12-29 | 2026-01-08 | 188, 192FS+30d |  |  | 7 day week No holidays | 7296374 |
| 195 | 36900.37400.37600.66600.93600 | 16th Flr -Concealed Plumbing | 11d | 2024-09-30 | 2024-10-10 | 194, 189 | 100% | start no earlier than 2024-09-30 | 7 day week No holidays | 7296384 |
| 196 | 36900.37400.37600.66600.93700 | 16th Flr -Waterproofing Work | 11d | 2024-09-19 | 2024-09-29 | 190FS+22d, 195FS-5.12d | 100% | start no earlier than 2024-09-19 | 7 day week No holidays | 7296394 |
| 197 | 36900.37400.37600.66500 | **17th Floor** | 652d | 2024-04-19 | 2026-01-30 |  | 46% | start no earlier than 2024-04-19 | 7 day week No holidays | 7289054 |
| 198 | 36900.37400.37600.66500.93800 | 17th Flr -Blockwork | 11d | 2024-04-19 | 2024-04-29 | 17, 192FS+30d | 100% | start no earlier than 2024-04-19 | 7 day week No holidays | 7296404 |
| 199 | 36900.37400.37600.66500.93900 | 17th Flr -Concealed electrical conduiting | 5d | 2024-08-26 | 2024-08-30 | 193, 198 | 100% | start no earlier than 2024-08-26 | 7 day week No holidays | 7296414 |
| 200 | 36900.37400.37600.66500.270100 | 17th Flr -Backcoat Plaster | 11d | 2026-01-09 | 2026-01-19 | 194, 198 |  |  | 7 day week No holidays | 7296424 |
| 201 | 36900.37400.37600.66500.270200 | 17th Flr -Concealed Plumbing | 11d | 2026-01-20 | 2026-01-30 | 200, 195 |  |  | 7 day week No holidays | 7296434 |
| 202 | 36900.37400.37600.66500.94000 | 17th Flr -Waterproofing Work | 3d | 2024-11-19 | 2024-11-21 | 201, 196 | 100% | start no earlier than 2024-11-19 | 7 day week No holidays | 7296444 |
| 203 | 36900.37400.37600.66400 | **18th Floor** | 663d | 2024-04-08 | 2026-01-30 |  | 79% | start no earlier than 2024-04-08 | 7 day week No holidays | 7289044 |
| 204 | 36900.37400.37600.66400.94100 | 18th Flr -Blockwork | 11d | 2024-04-08 | 2024-04-18 | 18, 198 | 100% | start no earlier than 2024-04-08 | 7 day week No holidays | 7296454 |
| 205 | 36900.37400.37600.66400.94200 | 18th Flr -Concealed electrical conduiting | 11d | 2024-08-13 | 2024-08-23 | 199, 204 | 100% | start no earlier than 2024-08-13 | 7 day week No holidays | 7296464 |
| 206 | 36900.37400.37600.66400.270300 | 18th Flr -Backcoat Plaster | 11d | 2026-01-20 | 2026-01-30 | 200, 204 |  |  | 7 day week No holidays | 7296474 |
| 207 | 36900.37400.37600.66400.94300 | 18th Flr -Concealed Plumbing | 10d | 2024-12-06 | 2024-12-15 | 201, 206 | 100% | start no earlier than 2024-12-06 | 7 day week No holidays | 7296484 |
| 208 | 36900.37400.37600.66400.94400 | 18th Flr -Waterproofing Work | 11d | 2024-11-25 | 2024-12-10 | 202, 207FS-10d | 100% | start no earlier than 2024-11-25 | 7 day week No holidays | 7296494 |
| 209 | 36900.37400.37600.66300 | **19th Floor** | 579d | 2024-07-12 | 2026-02-10 |  | 84% | start no earlier than 2024-07-12 | 7 day week No holidays | 7289034 |
| 210 | 36900.37400.37600.66300.94500 | 19th Flr -Blockwork | 2d | 2024-07-12 | 2024-07-13 | 19FS+2d, 204 | 100% | start no earlier than 2024-07-12 | 7 day week No holidays | 7296504 |
| 211 | 36900.37400.37600.66300.94600 | 19th Flr -Concealed electrical conduiting | 11d | 2024-08-14 | 2024-08-24 | 205, 210 | 100% | start no earlier than 2024-08-14 | 7 day week No holidays | 7296514 |
| 212 | 36900.37400.37600.66300.270400 | 19th Flr -Backcoat Plaster | 11d | 2026-01-31 | 2026-02-10 | 206, 210 |  |  | 7 day week No holidays | 7296524 |
| 213 | 36900.37400.37600.66300.94700 | 19th Flr -Concealed Plumbing | 35d | 2024-11-26 | 2024-12-30 | 212, 207 | 100% | start no earlier than 2024-11-26 | 7 day week No holidays | 7296534 |
| 214 | 36900.37400.37600.66300.94800 | 19th Flr -Waterproofing Work | 11d | 2024-11-18 | 2024-11-28 | 208, 213 | 100% | start no earlier than 2024-11-18 | 7 day week No holidays | 7296544 |

| ID | WBS | Task | Duration | Start | Finish | Predecessors | Complete | Constraint | Calendar | Unique_Task_ID |
| --- | --- | --- | --- | --- | --- | --- | --- | --- | --- | --- |
| 215 | 36900.37400.37600.66200 | **20th Floor** | 606d | 2024-06-26 | 2026-02-21 |  | 95% | start no earlier than 2024-06-26 | 7 day week No holidays | 7289024 |
| 216 | 36900.37400.37600.66200.94900 | 20th Flr -Blockwork | 35d | 2024-06-26 | 2024-07-30 | 20FS+77d, 210 | 100% | start no earlier than 2024-06-26 | 7 day week No holidays | 7296554 |
| 217 | 36900.37400.37600.66200.95000 | 20th Flr -Concealed electrical conduiting | 20d | 2024-08-31 | 2024-09-19 | 211, 216 | 100% | start no earlier than 2024-08-31 | 7 day week No holidays | 7296564 |
| 218 | 36900.37400.37600.66200.270500 | 20th Flr -Backcoat Plaster | 11d | 2026-02-11 | 2026-02-21 | 212, 216 |  |  | 7 day week No holidays | 7296574 |
| 219 | 36900.37400.37600.66200.95100 | 20th Flr -Concealed Plumbing | 135d | 2024-08-18 | 2024-12-30 | 218, 213 | 100% | start no earlier than 2024-08-18 | 7 day week No holidays | 7296584 |
| 220 | 36900.37400.37600.66200.95200 | 20th Flr -Waterproofing Work | 31d | 2024-11-12 | 2024-12-12 | 214, 219 | 100% | start no earlier than 2024-11-12 | 7 day week No holidays | 7296594 |
| 221 | 36900.37400.37600.66100 | **21th Floor** | 623d | 2024-06-20 | 2026-03-04 |  | 78% | start no earlier than 2024-06-20 | 7 day week No holidays | 7289014 |
| 222 | 36900.37400.37600.66100.95300 | 21th Flr -Blockwork | 11d | 2024-06-20 | 2024-06-30 | 21, 216 | 100% | start no earlier than 2024-06-20 | 7 day week No holidays | 7296604 |
| 223 | 36900.37400.37600.66100.95400 | 21th Flr -Concealed electrical conduiting | 4d | 2024-09-11 | 2024-09-14 | 217, 222 | 100% | start no earlier than 2024-09-11 | 7 day week No holidays | 7296614 |
| 224 | 36900.37400.37600.66100.270600 | 21th Flr -Backcoat Plaster | 11d | 2026-02-22 | 2026-03-04 | 218, 222 |  |  | 7 day week No holidays | 7296624 |
| 225 | 36900.37400.37600.66100.95500 | 21th Flr -Concealed Plumbing | 13d | 2024-12-10 | 2024-12-22 | 224, 219 | 100% | start no earlier than 2024-12-10 | 7 day week No holidays | 7296634 |
| 226 | 36900.37400.37600.66100.95600 | 21th Flr -Waterproofing Work | 11d | 2024-11-13 | 2024-12-25 | 220FS+20d, 225 | 100% | start no earlier than 2024-11-13 | 7 day week No holidays | 7296644 |
| 227 | 36900.37400.37600.66000 | **22th Floor** | 656d | 2024-05-29 | 2026-03-15 |  | 96% | start no earlier than 2024-05-29 | 7 day week No holidays | 7289004 |
| 228 | 36900.37400.37600.66000.95700 | 22nd Flr -Blockwork | 63d | 2024-05-29 | 2024-07-30 | 22FS+90d, 222 | 100% | start no earlier than 2024-05-29 | 7 day week No holidays | 7296654 |
| 229 | 36900.37400.37600.66000.95800 | 22nd Flr -Concealed electrical conduiting | 18d | 2024-09-12 | 2024-09-29 | 223, 228 | 100% | start no earlier than 2024-09-12 | 7 day week No holidays | 7296664 |
| 230 | 36900.37400.37600.66000.270700 | 22nd Flr -Backcoat Plaster | 11d | 2026-03-05 | 2026-03-15 | 224, 228 |  |  | 7 day week No holidays | 7296674 |
| 231 | 36900.37400.37600.66000.95900 | 22nd Flr -Concealed Plumbing | 189d | 2024-07-26 | 2025-01-30 | 230, 225 | 100% | start no earlier than 2024-07-26 | 7 day week No holidays | 7296684 |
| 232 | 36900.37400.37600.66000.96000 | 22nd Flr -Waterproofing Work | 11d | 2024-12-15 | 2024-12-25 | 226FS+19d, 231 | 100% | start no earlier than 2024-12-15 | 7 day week No holidays | 7296694 |
| 233 | 36900.37400.37600.65900 | **23th Floor** | 610d | 2024-07-25 | 2026-03-26 |  | 95% | start no earlier than 2024-07-25 | 7 day week No holidays | 7288994 |
| 234 | 36900.37400.37600.65900.96100 | 23rd Flr -Blockwork | 20d | 2024-08-31 | 2024-09-19 | 23FS+10d, 228 | 100% | start no earlier than 2024-08-31 | 7 day week No holidays | 7296704 |
| 235 | 36900.37400.37600.65900.96200 | 23rd Flr -Concealed electrical conduiting | 11d | 2024-09-19 | 2024-09-29 | 229, 234FS-3d | 100% | start no earlier than 2024-09-19 | 7 day week No holidays | 7296714 |
| 236 | 36900.37400.37600.65900.270800 | 23rd Flr -Backcoat Plaster | 11d | 2026-03-16 | 2026-03-26 | 230, 234FS-3d |  |  | 7 day week No holidays | 7296724 |
| 237 | 36900.37400.37600.65900.96300 | 23rd Flr -Concealed Plumbing | 190d | 2024-07-25 | 2025-01-30 | 236, 231 | 100% | start no earlier than 2024-07-25 | 7 day week No holidays | 7296734 |
| 238 | 36900.37400.37600.65900.96400 | 23rd Flr -Waterproofing Work | 11d | 2024-12-20 | 2024-12-30 | 232, 237 | 100% | start no earlier than 2024-12-20 | 7 day week No holidays | 7296744 |

| ID | WBS | Task | Duration | Start | Finish | Predecessors | Complete | Constraint | Calendar | Unique_Task_ID |
| --- | --- | --- | --- | --- | --- | --- | --- | --- | --- | --- |
| 239 | 36900.37400.37600.65800 | **24th Floor** | 654d | 2024-06-22 | 2026-04-06 |  | 95% | start no earlier than 2024-06-22 | 7 day week No holidays | 7288984 |
| 240 | 36900.37400.37600.65800.96500 | 24th Flr -Blockwork | 4d | 2024-09-08 | 2024-09-11 | 24FS+11d, 234FS-3d | 100% | start no earlier than 2024-09-08 | 7 day week No holidays | 7296754 |
| 241 | 36900.37400.37600.65800.96600 | 24th Flr -Concealed electrical conduiting | 17d | 2024-09-13 | 2024-09-29 | 235, 240 | 100% | start no earlier than 2024-09-13 | 7 day week No holidays | 7296764 |
| 242 | 36900.37400.37600.65800.270900 | 24th Flr -Backcoat Plaster | 11d | 2026-03-27 | 2026-04-06 | 236, 240 |  |  | 7 day week No holidays | 7296774 |
| 243 | 36900.37400.37600.65800.96700 | 24th Flr -Concealed Plumbing | 223d | 2024-06-22 | 2025-01-30 | 242, 237 | 100% | start no earlier than 2024-06-22 | 7 day week No holidays | 7296784 |
| 244 | 36900.37400.37600.65800.96800 | 24th Flr -Waterproofing Work | 11d | 2025-01-15 | 2025-01-25 | 238, 243 | 100% | start no earlier than 2025-01-15 | 7 day week No holidays | 7296794 |
| 245 | 36900.37400.37600.65700 | **25th Floor** | 583d | 2024-09-12 | 2026-04-17 |  | 83% | start no earlier than 2024-09-12 | 7 day week No holidays | 7288974 |
| 246 | 36900.37400.37600.65700.96900 | 25th Flr -Blockwork | 18d | 2024-09-12 | 2024-09-29 | 25FS-1d, 240 | 100% | start no earlier than 2024-09-12 | 7 day week No holidays | 7296804 |
| 247 | 36900.37400.37600.65700.97000 | 25th Flr -Concealed electrical conduiting | 11d | 2024-10-10 | 2024-10-20 | 241, 246 | 100% | start no earlier than 2024-10-10 | 7 day week No holidays | 7296814 |
| 248 | 36900.37400.37600.65700.271000 | 25th Flr -Backcoat Plaster | 11d | 2026-04-07 | 2026-04-17 | 242, 246 |  |  | 7 day week No holidays | 7296824 |
| 249 | 36900.37400.37600.65700.97100 | 25th Flr -Concealed Plumbing | 15d | 2025-01-16 | 2025-01-30 | 248, 243 | 100% | start no earlier than 2025-01-16 | 7 day week No holidays | 7296834 |
| 250 | 36900.37400.37600.65700.97200 | 25th Flr -Waterproofing Work | 11d | 2024-12-16 | 2024-12-26 | 244, 249 | 100% | start no earlier than 2024-12-16 | 7 day week No holidays | 7296844 |
| 251 | 36900.37400.37600.65600 | **26th Floor** | 583d | 2024-09-23 | 2026-04-28 |  | 71% | start no earlier than 2024-09-23 | 7 day week No holidays | 7288964 |
| 252 | 36900.37400.37600.65600.97300 | 26th Flr -Blockwork | 4d | 2024-09-23 | 2024-09-26 | 26FS-1d, 246 | 100% | start no earlier than 2024-09-23 | 7 day week No holidays | 7296854 |
| 253 | 36900.37400.37600.65600.97400 | 26th Flr -Concealed electrical conduiting | 3d | 2024-12-28 | 2024-12-30 | 247FS-5d, 252 | 100% | start no earlier than 2024-12-28 | 7 day week No holidays | 7296864 |
| 254 | 36900.37400.37600.65600.271100 | 26th Flr -Backcoat Plaster | 11d | 2026-04-18 | 2026-04-28 | 248, 252 |  |  | 7 day week No holidays | 7296874 |
| 255 | 36900.37400.37600.65600.97500 | 26th Flr -Concealed Plumbing | 9d | 2025-01-22 | 2025-01-30 | 254, 249 | 100% | start no earlier than 2025-01-22 | 7 day week No holidays | 7296884 |
| 256 | 36900.37400.37600.65600.97600 | 26th Flr -Waterproofing Work | 11d | 2024-12-20 | 2024-12-30 | 250 | 100% | start no earlier than 2024-12-20 | 7 day week No holidays | 7296894 |
| 257 | 36900.37400.37600.65500 | **27th Floor** | 619d | 2024-08-29 | 2026-05-09 |  | 86% | start no earlier than 2024-08-29 | 7 day week No holidays | 7288954 |
| 258 | 36900.37400.37600.65500.97700 | 27th Flr -Blockwork | 32d | 2024-08-29 | 2024-09-29 | 27FS+4d, 252 | 100% | start no earlier than 2024-08-29 | 7 day week No holidays | 7296904 |
| 259 | 36900.37400.37600.65500.97800 | 27th Flr -Concealed electrical conduiting | 11d | 2024-11-28 | 2024-12-08 | 253, 258FS+1d | 100% | start no earlier than 2024-11-28 | 7 day week No holidays | 7296914 |
| 260 | 36900.37400.37600.65500.271200 | 27th Flr -Backcoat Plaster | 11d | 2026-04-29 | 2026-05-09 | 254, 258FS+1d |  |  | 7 day week No holidays | 7296924 |
| 261 | 36900.37400.37600.65500.97900 | 27th Flr -Concealed Plumbing | 11d | 2025-01-20 | 2025-01-30 | 260, 255 | 100% | start no earlier than 2025-01-20 | 7 day week No holidays | 7296934 |
| 262 | 36900.37400.37600.65500.98000 | 27th Flr -Waterproofing Work | 17d | 2025-01-08 | 2025-01-24 | 256 | 100% | start no earlier than 2025-01-08 | 7 day week No holidays | 7296944 |

| ID | WBS | Task | Duration | Start | Finish | Predecessors | Complete | Constraint | Calendar | Unique_Task_ID |
| --- | --- | --- | --- | --- | --- | --- | --- | --- | --- | --- |
| 263 | 36900.37400.37600.65400 | **28th Floor** | 714d | 2024-06-06 | 2026-05-20 |  | 96% | start no earlier than 2024-06-06 | 7 day week No holidays | 7288944 |
| 264 | 36900.37400.37600.65400.98100 | 28th Flr -Blockwork | 22d | 2024-10-31 | 2024-11-21 | 29FS-3d, 258FS+1d | 100% | start no earlier than 2024-10-31 | 7 day week No holidays | 7296954 |
| 265 | 36900.37400.37600.65400.98200 | 28th Flr -Concealed electrical conduiting | 23d | 2024-11-28 | 2024-12-20 | 259, 264 | 100% | start no earlier than 2024-11-28 | 7 day week No holidays | 7296964 |
| 266 | 36900.37400.37600.65400.271300 | 28th Flr -Backcoat Plaster | 11d | 2026-05-10 | 2026-05-20 | 260, 264 |  |  | 7 day week No holidays | 7296974 |
| 267 | 36900.37400.37600.65400.98300 | 28th Flr -Concealed Plumbing | 239d | 2024-06-06 | 2025-01-30 | 261, 266FS-233d | 100% | start no earlier than 2024-06-06 | 7 day week No holidays | 7296984 |
| 268 | 36900.37400.37600.65400.98400 | 28th Flr -Waterproofing Work | 19d | 2025-01-12 | 2025-01-30 | 262 | 100% | start no earlier than 2025-01-12 | 7 day week No holidays | 7296994 |
| 269 | 36900.37400.37600.65300 | **29th Floor** | 739d | 2024-05-23 | 2026-05-31 |  | 96% | start no earlier than 2024-05-23 | 7 day week No holidays | 7288934 |
| 270 | 36900.37400.37600.65300.98500 | 29th Flr -Blockwork | 20d | 2024-11-30 | 2025-01-30 | 30FS-4d, 264 | 100% | start no earlier than 2024-11-30 | 7 day week No holidays | 7297004 |
| 271 | 36900.37400.37600.65300.98600 | 29th Flr -Concealed electrical conduiting | 11d | 2024-12-12 | 2024-12-22 | 265, 270 | 100% | start no earlier than 2024-12-12 | 7 day week No holidays | 7297014 |
| 272 | 36900.37400.37600.65300.271400 | 29th Flr -Backcoat Plaster | 11d | 2026-05-21 | 2026-05-31 | 266, 270 |  |  | 7 day week No holidays | 7297024 |
| 273 | 36900.37400.37600.65300.98700 | 29th Flr -Concealed Plumbing | 253d | 2024-05-23 | 2025-01-30 | 267 | 100% | start no earlier than 2024-05-23 | 7 day week No holidays | 7297034 |
| 274 | 36900.37400.37600.65300.98800 | 29th Flr -Waterproofing Work | 48d | 2024-12-14 | 2025-01-30 | 268FS-16d | 100% | start no earlier than 2024-12-14 | 7 day week No holidays | 7297044 |
| 275 | 36900.37400.37600.65200 | **30th Floor** | 686d | 2024-07-26 | 2026-06-11 |  | 95% | start no earlier than 2024-07-26 | 7 day week No holidays | 7288924 |
| 276 | 36900.37400.37600.65200.98900 | 30th Flr -Blockwork | 11d | 2024-11-11 | 2024-11-21 | 31, 270 | 100% | start no earlier than 2024-11-11 | 7 day week No holidays | 7297054 |
| 277 | 36900.37400.37600.65200.99000 | 30th Flr -Concealed electrical conduiting | 11d | 2024-11-19 | 2024-11-29 | 271, 276 | 100% | start no earlier than 2024-11-19 | 7 day week No holidays | 7297064 |
| 278 | 36900.37400.37600.65200.271500 | 30th Flr -Backcoat Plaster | 11d | 2026-06-01 | 2026-06-11 | 272, 276 |  |  | 7 day week No holidays | 7297074 |
| 279 | 36900.37400.37600.65200.99100 | 30th Flr -Concealed Plumbing | 190d | 2024-07-26 | 2025-03-20 | 273 | 100% | start no earlier than 2024-07-26 | 7 day week No holidays | 7297084 |
| 280 | 36900.37400.37600.65200.99200 | 30th Flr -Waterproofing Work | 21d | 2025-01-10 | 2025-01-30 | 274 | 100% | start no earlier than 2025-01-10 | 7 day week No holidays | 7297094 |
| 281 | 36900.37400.37600.65100 | **31th Floor** | 574d | 2024-11-26 | 2026-06-22 |  | 86% | start no earlier than 2024-11-26 | 7 day week No holidays | 7288914 |
| 282 | 36900.37400.37600.65100.99300 | 31st Flr -Blockwork | 19d | 2024-11-26 | 2024-12-14 | 32FS-9d, 276 | 100% | start no earlier than 2024-11-26 | 7 day week No holidays | 7297104 |
| 283 | 36900.37400.37600.65100.99400 | 31st Flr -Concealed electrical conduiting | 11d | 2025-01-11 | 2025-01-21 | 277, 282 | 100% | start no earlier than 2025-01-11 | 7 day week No holidays | 7297114 |
| 284 | 36900.37400.37600.65100.271600 | 31st Flr -Backcoat Plaster | 11d | 2026-06-12 | 2026-06-22 | 278, 282 |  |  | 7 day week No holidays | 7297124 |
| 285 | 36900.37400.37600.65100.99500 | 31st Flr -Concealed Plumbing | 24d | 2025-03-07 | 2025-03-30 | 279 | 100% | start no earlier than 2025-03-07 | 7 day week No holidays | 7297134 |
| 286 | 36900.37400.37600.65100.99600 | 31st Flr -Waterproofing Work | 17d | 2025-01-14 | 2025-01-30 | 280 | 100% | start no earlier than 2025-01-14 | 7 day week No holidays | 7297144 |

| ID | WBS | Task | Duration | Start | Finish | Predecessors | Complete | Constraint | Calendar | Unique_Task_ID |
| --- | --- | --- | --- | --- | --- | --- | --- | --- | --- | --- |
| 287 | 36900.37400.37600.65000 | **32th Floor** | 888d | 2024-01-28 | 2026-07-03 |  | 97% | start no earlier than 2024-01-28 | 7 day week No holidays | 7288904 |
| 288 | 36900.37400.37600.65000.99700 | 32nd Flr -Blockwork | 11d | 2024-12-20 | 2024-12-30 | 33, 282 | 100% | start no earlier than 2024-12-20 | 7 day week No holidays | 7297154 |
| 289 | 36900.37400.37600.65000.99800 | 32nd Flr -Concealed electrical conduiting | 11d | 2025-01-20 | 2025-01-30 | 283, 288 | 100% | start no earlier than 2025-01-20 | 7 day week No holidays | 7297164 |
| 290 | 36900.37400.37600.65000.271700 | 32nd Flr -Backcoat Plaster | 11d | 2026-06-23 | 2026-07-03 | 284, 288 |  |  | 7 day week No holidays | 7297174 |
| 291 | 36900.37400.37600.65000.99900 | 32nd Flr -Concealed Plumbing | 1d | 2025-03-30 | 2025-03-30 | 285FS-40d | 100% | start no earlier than 2025-03-30 | 7 day week No holidays | 7297184 |
| 292 | 36900.37400.37600.65000.100000 | 32nd Flr -Waterproofing Work | 369d | 2024-01-28 | 2025-01-30 | 291, 286 | 100% |  | 7 day week No holidays | 7297194 |
| 293 | 36900.37400.37600.64900 | **33th Floor** | 900d | 2024-01-27 | 2026-07-14 |  | 97% | start no earlier than 2024-01-27 | 7 day week No holidays | 7288894 |
| 294 | 36900.37400.37600.64900.100100 | 33rd Flr -Blockwork | 16d | 2025-01-15 | 2025-01-30 | 288 | 100% | start no earlier than 2025-01-15 | 7 day week No holidays | 7297204 |
| 295 | 36900.37400.37600.64900.100200 | 33rd Flr -Concealed electrical conduiting | 11d | 2025-01-20 | 2025-01-30 | 289, 294 | 100% | start no earlier than 2025-01-20 | 7 day week No holidays | 7297214 |
| 296 | 36900.37400.37600.64900.271800 | 33rd Flr -Backcoat Plaster | 11d | 2026-07-04 | 2026-07-14 | 290, 294 |  |  | 7 day week No holidays | 7297224 |
| 297 | 36900.37400.37600.64900.100300 | 33rd Flr -Concealed Plumbing | 1d | 2025-03-30 | 2025-03-30 | 291FS-10d | 100% | start no earlier than 2025-03-30 | 7 day week No holidays | 7297234 |
| 298 | 36900.37400.37600.64900.100400 | 33rd Flr -Waterproofing Work | 371d | 2024-01-27 | 2025-03-30 | 292FS-428d | 100% | start no earlier than 2024-01-27 | 7 day week No holidays | 7297244 |
| 299 | 36900.37400.37600.64800 | **34th Floor** | 558d | 2025-01-14 | 2026-07-25 |  | 86% | start no earlier than 2025-01-14 | 7 day week No holidays | 7288884 |
| 300 | 36900.37400.37600.64800.100500 | 34th Flr -Blockwork | 17d | 2025-01-14 | 2025-01-30 | 294FS-1d | 100% | start no earlier than 2025-01-14 | 7 day week No holidays | 7297254 |
| 301 | 36900.37400.37600.64800.100600 | 34th Flr -Concealed electrical conduiting | 8d | 2025-03-13 | 2025-03-20 | 295, 300 | 100% | start no earlier than 2025-03-13 | 7 day week No holidays | 7297264 |
| 302 | 36900.37400.37600.64800.271900 | 34th Flr -Backcoat Plaster | 11d | 2026-07-15 | 2026-07-25 | 296, 300 |  |  | 7 day week No holidays | 7297274 |
| 303 | 36900.37400.37600.64800.100700 | 34th Flr -Concealed Plumbing | 18d | 2025-04-01 | 2025-04-18 | 297 | 100% | start no earlier than 2025-04-01 | 7 day week No holidays | 7297284 |
| 304 | 36900.37400.37600.64800.100800 | 34th Flr -Waterproofing Work | 30d | 2025-03-31 | 2025-04-29 | 298 | 100% | start no earlier than 2025-03-31 | 7 day week No holidays | 7297294 |
| 305 | 36900.37400.37600.64700 | **35th Floor** | 564d | 2025-01-19 | 2026-08-05 |  | 85% | start no earlier than 2025-01-19 | 7 day week No holidays | 7288874 |
| 306 | 36900.37400.37600.64700.100900 | 35th Flr -Blockwork | 12d | 2025-01-19 | 2025-01-30 | 300 | 100% | start no earlier than 2025-01-19 | 7 day week No holidays | 7297304 |
| 307 | 36900.37400.37600.64700.101000 | 35th Flr -Concealed electrical conduiting | 28d | 2025-03-27 | 2025-04-24 | 301, 306 | 100% | start no earlier than 2025-03-27 | 7 day week No holidays | 7297314 |
| 308 | 36900.37400.37600.64700.272000 | 35th Flr -Backcoat Plaster | 11d | 2026-07-26 | 2026-08-05 | 302, 306 |  |  | 7 day week No holidays | 7297324 |
| 309 | 36900.37400.37600.64700.101100 | 35th Flr -Concealed Plumbing | 10d | 2025-04-18 | 2025-04-27 | 303 | 100% | start no earlier than 2025-04-18 | 7 day week No holidays | 7297334 |
| 310 | 36900.37400.37600.64700.101200 | 35th Flr -Waterproofing Work | 15d | 2025-03-16 | 2025-03-30 | 304 | 100% | start no earlier than 2025-03-16 | 7 day week No holidays | 7297344 |

| ID | WBS | Task | Duration | Start | Finish | Predecessors | Complete | Constraint | Calendar | Unique_Task_ID |
| --- | --- | --- | --- | --- | --- | --- | --- | --- | --- | --- |
| 311 | 36900.37400.37600.64600 | **36th Floor** | 518d | 2025-03-17 | 2026-08-16 |  | 75% | start no earlier than 2025-03-17 | 7 day week No holidays | 7288864 |
| 312 | 36900.37400.37600.64600.101300 | 36th Flr -Blockwork | 14d | 2025-03-17 | 2025-03-30 | 306 | 100% | start no earlier than 2025-03-17 | 7 day week No holidays | 7297354 |
| 313 | 36900.37400.37600.64600.101400 | 36th Flr -Concealed electrical conduiting | 7d | 2025-04-08 | 2025-05-04 | 307 | 100% | start no earlier than 2025-04-08 | 7 day week No holidays | 7297364 |
| 314 | 36900.37400.37600.64600.272100 | 36th Flr -Backcoat Plaster | 11d | 2026-08-06 | 2026-08-16 | 308, 312 |  |  | 7 day week No holidays | 7297374 |
| 315 | 36900.37400.37600.64600.101500 | 36th Flr -Concealed Plumbing | 27d | 2025-06-01 | 2025-10-18 | 309 | 77% | start no earlier than 2025-06-01 | 7 day week No holidays | 7297384 |
| 316 | 36900.37400.37600.64600.101600 | 36th Flr -Waterproofing Work | 10d | 2025-04-30 | 2025-05-31 | 310 | 100% | start no earlier than 2025-04-30 | 7 day week No holidays | 7297394 |
| 317 | 36900.37400.37600.64500 | **37th Floor** | 531.62d | 2025-03-14 | 2026-08-27 |  | 89% | start no earlier than 2025-03-14 | 7 day week No holidays | 7288854 |
| 318 | 36900.37400.37600.64500.101700 | 37th Flr -Blockwork | 10d | 2025-03-14 | 2025-03-24 | 312FS+4.38d | 100% | start no earlier than 2025-03-14 | 7 day week No holidays | 7297404 |
| 319 | 36900.37400.37600.64500.101800 | 37th Flr -Concealed electrical conduiting | 11d | 2025-05-01 | 2025-05-11 | 313 | 100% | start no earlier than 2025-05-01 | 7 day week No holidays | 7297414 |
| 320 | 36900.37400.37600.64500.272200 | 37th Flr -Backcoat Plaster | 11d | 2026-08-17 | 2026-08-27 | 314, 318 |  |  | 7 day week No holidays | 7297424 |
| 321 | 36900.37400.37600.64500.101900 | 37th Flr -Concealed Plumbing | 31d | 2025-05-29 | 2025-07-11 | 315FS-12d | 100% | start no earlier than 2025-05-29 | 7 day week No holidays | 7297434 |
| 322 | 36900.37400.37600.64500.102000 | 37th Flr -Waterproofing Work | 39d | 2025-05-12 | 2025-06-19 | 316 | 100% | start no earlier than 2025-05-12 | 7 day week No holidays | 7297444 |
| 323 | 36900.37400.37600.64400 | **38th Floor** | 530d | 2025-03-27 | 2026-09-07 |  | 81% | start no earlier than 2025-03-27 | 7 day week No holidays | 7288844 |
| 324 | 36900.37400.37600.64400.102100 | 38th Flr -Blockwork | 23d | 2025-03-27 | 2025-04-19 | 318 | 100% | start no earlier than 2025-03-27 | 7 day week No holidays | 7297454 |
| 325 | 36900.37400.37600.64400.102200 | 38th Flr -Concealed electrical conduiting | 11d | 2025-05-08 | 2025-05-18 | 319, 324 | 100% | start no earlier than 2025-05-08 | 7 day week No holidays | 7297464 |
| 326 | 36900.37400.37600.64400.272300 | 38th Flr -Backcoat Plaster | 11d | 2026-08-28 | 2026-09-07 | 320, 324 |  |  | 7 day week No holidays | 7297474 |
| 327 | 36900.37400.37600.64400.102300 | 38th Flr -Concealed Plumbing | 11d | 2025-07-21 | 2025-10-15 | 321 | 72% | start no earlier than 2025-07-21 | 7 day week No holidays | 7297484 |
| 328 | 36900.37400.37600.64400.102400 | 38th Flr -Waterproofing Work | 20d | 2025-06-10 | 2025-06-29 | 322 | 100% | start no earlier than 2025-06-10 | 7 day week No holidays | 7297494 |
| 329 | 36900.37400.37600.64300 | **39th Floor** | 522d | 2025-04-15 | 2026-09-18 |  | 85% | start no earlier than 2025-04-15 | 7 day week No holidays | 7288834 |
| 330 | 36900.37400.37600.64300.102500 | 39th Flr -Blockwork | 12d | 2025-04-15 | 2025-10-15 | 324 | 75% | start no earlier than 2025-04-15 | 7 day week No holidays | 7297504 |
| 331 | 36900.37400.37600.64300.102600 | 39th Flr -Concealed electrical conduiting | 22d | 2025-05-23 | 2025-06-13 | 330, 325 | 100% | start no earlier than 2025-05-23 | 7 day week No holidays | 7297514 |
| 332 | 36900.37400.37600.64300.272400 | 39th Flr -Backcoat Plaster | 11d | 2026-09-08 | 2026-09-18 | 326, 330 |  |  | 7 day week No holidays | 7297524 |
| 333 | 36900.37400.37600.64300.102700 | 39th Flr -Concealed Plumbing | 19d | 2025-07-18 | 2025-08-22 | 327FS-34d | 100% | start no earlier than 2025-07-18 | 7 day week No holidays | 7297534 |
| 334 | 36900.37400.37600.64300.102800 | 39th Flr -Waterproofing Work | 32d | 2025-06-03 | 2025-07-25 | 328 | 100% | start no earlier than 2025-06-03 | 7 day week No holidays | 7297544 |

| ID | WBS | Task | Duration | Start | Finish | Predecessors | Complete | Constraint | Calendar | Unique_Task_ID |
| --- | --- | --- | --- | --- | --- | --- | --- | --- | --- | --- |
| 335 | 36900.37400.37600.64200 | **40th Floor** | 482d | 2025-06-05 | 2026-09-29 |  | 86% | start no earlier than 2025-06-05 | 7 day week No holidays | 7288824 |
| 336 | 36900.37400.37600.64200.102900 | 40th Flr -Blockwork | 18d | 2025-06-05 | 2025-07-03 | 330FS-28d | 100% | start no earlier than 2025-06-05 | 7 day week No holidays | 7297554 |
| 337 | 36900.37400.37600.64200.103000 | 40th Flr -Concealed electrical conduiting | 18d | 2025-07-14 | 2025-10-15 | 331, 336 | 83% | start no earlier than 2025-07-14 | 7 day week No holidays | 7297564 |
| 338 | 36900.37400.37600.64200.272500 | 40th Flr -Backcoat Plaster | 11d | 2026-09-19 | 2026-09-29 | 332, 336 |  |  | 7 day week No holidays | 7297574 |
| 339 | 36900.37400.37600.64200.103100 | 40th Flr -Concealed Plumbing | 31d | 2025-09-09 | 2025-11-07 | 333 | 100% | start no earlier than 2025-09-09 | 7 day week No holidays | 7297584 |
| 340 | 36900.37400.37600.64200.103200 | 40th Flr -Waterproofing Work | 25d | 2025-07-14 | 2025-10-16 | 334 | 100% | start no earlier than 2025-07-14 | 7 day week No holidays | 7297594 |
| 341 | 36900.37400.37600.64100 | **41th Floor** | 467d | 2025-07-01 | 2026-10-10 |  | 91% | start no earlier than 2025-07-01 | 7 day week No holidays | 7288814 |
| 342 | 36900.37400.37600.64100.103300 | 41st Flr -Blockwork | 29d | 2025-07-01 | 2025-07-30 | 336 | 100% | start no earlier than 2025-07-01 | 7 day week No holidays | 7297604 |
| 343 | 36900.37400.37600.64100.103400 | 41st Flr -Concealed electrical conduiting | 11d | 2025-08-03 | 2025-08-30 | 342, 337FS-25d | 100% | start no earlier than 2025-08-03 | 7 day week No holidays | 7297614 |
| 344 | 36900.37400.37600.64100.272600 | 41st Flr -Backcoat Plaster | 11d | 2026-09-30 | 2026-10-10 | 338, 342 |  |  | 7 day week No holidays | 7297624 |
| 345 | 36900.37400.37600.64100.103500 | 41st Flr -Concealed Plumbing | 34d | 2025-09-11 | 2025-11-04 | 339FS-37d | 100% | start no earlier than 2025-09-11 | 7 day week No holidays | 7297634 |
| 346 | 36900.37400.37600.64100.103600 | 41st Flr -Waterproofing Work | 47d | 2025-07-19 | 2025-09-15 | 340FS-55d | 100% | start no earlier than 2025-07-19 | 7 day week No holidays | 7297644 |
| 347 | 36900.37400.37600.64000 | **42th Floor** | 456d | 2025-07-23 | 2026-10-21 |  | 89% | start no earlier than 2025-07-23 | 7 day week No holidays | 7288804 |
| 348 | 36900.37400.37600.64000.103700 | 42nd Flr -Blockwork | 8d | 2025-07-23 | 2025-07-30 | 43, 342 | 100% | start no earlier than 2025-07-23 | 7 day week No holidays | 7297654 |
| 349 | 36900.37400.37600.64000.103800 | 42nd Flr -Concealed electrical conduiting | 36d | 2025-07-31 | 2025-09-12 | 343, 348 | 100% | start no earlier than 2025-07-31 | 7 day week No holidays | 7297664 |
| 350 | 36900.37400.37600.64000.272700 | 42nd Flr -Backcoat Plaster | 11d | 2026-10-11 | 2026-10-21 | 344, 348 |  |  | 7 day week No holidays | 7297674 |
| 351 | 36900.37400.37600.64000.103900 | 42nd Flr -Concealed Plumbing | 28d | 2025-09-08 | 2025-10-25 | 345FS-43d | 100% | start no earlier than 2025-09-08 | 7 day week No holidays | 7297684 |
| 352 | 36900.37400.37600.64000.104000 | 42nd Flr -Waterproofing Work | 22d | 2025-09-09 | 2025-09-30 | 346 | 100% | start no earlier than 2025-09-09 | 7 day week No holidays | 7297694 |
| 353 | 36900.37400.37600.63900 | **43th Floor** | 458d | 2025-08-01 | 2026-11-01 |  | 90% | start no earlier than 2025-08-01 | 7 day week No holidays | 7288794 |
| 354 | 36900.37400.37600.63900.104100 | 43rd Flr -Blockwork | 29d | 2025-08-01 | 2025-08-30 | 44, 348 | 100% | start no earlier than 2025-08-01 | 7 day week No holidays | 7297704 |
| 355 | 36900.37400.37600.63900.104200 | 43rd Flr -Concealed electrical conduiting | 22d | 2025-09-09 | 2025-09-30 | 349, 354 | 100% | start no earlier than 2025-09-09 | 7 day week No holidays | 7297714 |
| 356 | 36900.37400.37600.63900.272800 | 43rd Flr -Backcoat Plaster | 11d | 2026-10-22 | 2026-11-01 | 350, 354 |  |  | 7 day week No holidays | 7297724 |
| 357 | 36900.37400.37600.63900.104300 | 43rd Flr -Concealed Plumbing | 31d | 2025-09-24 | 2025-11-06 | 351FS-32d | 100% | start no earlier than 2025-09-24 | 7 day week No holidays | 7297734 |
| 358 | 36900.37400.37600.63900.104400 | 43rd Flr -Waterproofing Work | 24d | 2025-09-27 | 2025-10-29 | 352 | 100% | start no earlier than 2025-09-27 | 7 day week No holidays | 7297744 |

| ID | WBS | Task | Duration | Start | Finish | Predecessors | Complete | Constraint | Calendar | Unique_Task_ID |
| --- | --- | --- | --- | --- | --- | --- | --- | --- | --- | --- |
| 359 | 36900.37400.37600.63800 | **44th Floor** | 460d | 2025-08-10 | 2026-11-12 |  | 75% | start no earlier than 2025-08-10 | 7 day week No holidays | 7288784 |
| 360 | 36900.37400.37600.63800.104500 | 44th Flr -Blockwork | 41d | 2025-08-10 | 2025-10-29 | 45, 354 | 100% | start no earlier than 2025-08-10 | 7 day week No holidays | 7297754 |
| 361 | 36900.37400.37600.63800.104600 | 44th Flr -Concealed electrical conduiting | 37d | 2025-09-19 | 2025-11-13 | 355, 360FS-27d | 100% | start no earlier than 2025-09-19 | 7 day week No holidays | 7297764 |
| 362 | 36900.37400.37600.63800.272900 | 44th Flr -Backcoat Plaster | 11d | 2026-11-02 | 2026-11-12 | 356, 360 |  |  | 7 day week No holidays | 7297774 |
| 363 | 36900.37400.37600.63800.104700 | 44th Flr -Concealed Plumbing | 15d | 2025-11-07 | 2025-11-21 | 357 | 20% | start no earlier than 2025-11-07 | 7 day week No holidays | 7297784 |
| 364 | 36900.37400.37600.63800.104800 | 44th Flr -Waterproofing Work | 12d | 2025-10-25 | 2025-11-05 | 358 | 50% | start no earlier than 2025-10-25 | 7 day week No holidays | 7297794 |
| 365 | 36900.37400.37600.63700 | **45th Floor** | 436d | 2025-09-14 | 2026-11-23 |  | 60% | start no earlier than 2025-09-14 | 7 day week No holidays | 7288754 |
| 366 | 36900.37400.37600.63700.104900 | 45th Flr -Blockwork | 12d | 2025-09-14 | 2025-09-25 | 360 | 100% | start no earlier than 2025-09-14 | 7 day week No holidays | 7297804 |
| 367 | 36900.37400.37600.63700.105000 | 45th Flr -Concealed electrical conduiting | 17d | 2025-10-04 | 2025-10-30 | 366, 361FS-18d | 100% | start no earlier than 2025-10-04 | 7 day week No holidays | 7297814 |
| 368 | 36900.37400.37600.63700.273000 | 45th Flr -Backcoat Plaster | 11d | 2026-11-13 | 2026-11-23 | 362, 366 |  |  | 7 day week No holidays | 7297824 |
| 369 | 36900.37400.37600.63700.105100 | 45th Flr -Concealed Plumbing | 11d | 2025-11-22 | 2025-12-02 | 363 | 18% | start no earlier than 2025-11-22 | 7 day week No holidays | 7297834 |
| 370 | 36900.37400.37600.63700.105200 | 45th Flr -Waterproofing Work | 15d | 2025-11-06 | 2025-11-20 | 364 | 60% | start no earlier than 2025-11-06 | 7 day week No holidays | 7297844 |
| 371 | 36900.37400.37600.75600 | **46th Floor** | 414d | 2025-10-17 | 2026-12-04 |  |  | start no earlier than 2025-10-17 | 7 day week No holidays | 7288714 |
| 372 | 36900.37400.37600.75600.273100 | 46th Flr -Blockwork | 12d | 2025-10-17 | 2025-10-28 | 47, 366 |  |  | 7 day week No holidays | 7297854 |
| 373 | 36900.37400.37600.75600.273200 | 46th Flr -Concealed electrical conduiting | 11d | 2025-10-31 | 2025-11-10 | 372, 367 |  |  | 7 day week No holidays | 7297864 |
| 374 | 36900.37400.37600.75600.273300 | 46th Flr -Backcoat Plaster | 11d | 2026-11-24 | 2026-12-04 | 368, 372 |  |  | 7 day week No holidays | 7297874 |
| 375 | 36900.37400.37600.75600.273400 | 46th Flr -Concealed Plumbing | 15d | 2025-12-03 | 2025-12-17 | 369 |  |  | 7 day week No holidays | 7297884 |
| 376 | 36900.37400.37600.75600.273500 | 46th Flr -Waterproofing Work | 15d | 2025-11-21 | 2025-12-05 | 370 |  |  | 7 day week No holidays | 7297894 |
| 377 | 36900.37400.37600.63500 | **47th Floor** | 454d | 2025-09-18 | 2026-12-15 |  | 71% | start no earlier than 2025-09-18 | 7 day week No holidays | 7289104 |
| 378 | 36900.37400.37600.63500.105300 | 47th Flr -Blockwork | 34d | 2025-09-18 | 2025-11-10 | 48FS-45d, 372FS-45d | 100% | start no earlier than 2025-09-18 | 7 day week No holidays | 7297904 |
| 379 | 36900.37400.37600.63500.105400 | 47th Flr -Concealed electrical conduiting | 27d | 2025-11-01 | 2025-11-27 | 373, 378 | 100% | start no earlier than 2025-11-01 | 7 day week No holidays | 7297914 |
| 380 | 36900.37400.37600.63500.273600 | 47th Flr -Backcoat Plaster | 11d | 2026-12-05 | 2026-12-15 | 374, 378 |  |  | 7 day week No holidays | 7297924 |
| 381 | 36900.37400.37600.63500.273700 | 47th Flr -Concealed Plumbing | 15d | 2025-12-18 | 2026-01-01 | 375 |  |  | 7 day week No holidays | 7297934 |
| 382 | 36900.37400.37600.63500.105500 | 47th Flr -Waterproofing Work | 25d | 2025-11-23 | 2025-12-17 | 376 | 76% | start no earlier than 2025-11-23 | 7 day week No holidays | 7297944 |

| ID | WBS | Task | Duration | Start | Finish | Predecessors | Constraint | Calendar | Unique_Task_ID |
| --- | --- | --- | --- | --- | --- | --- | --- | --- | --- |
| 383 | 36900.37400.37600.75500 | **48th Floor** | 399d | 2025-11-23 | 2026-12-26 |  | start no earlier than 2025-11-23 | 7 day week No holidays | 7289244 |
| 384 | 36900.37400.37600.75500.273800 | 48th Flr -Blockwork | 11d | 2025-11-23 | 2025-12-03 | 49, 378 |  | 7 day week No holidays | 7297954 |
| 385 | 36900.37400.37600.75500.273900 | 48th Flr -Concealed electrical conduiting | 11d | 2025-12-04 | 2025-12-14 | 384, 379 |  | 7 day week No holidays | 7297964 |
| 386 | 36900.37400.37600.75500.274000 | 48th Flr -Backcoat Plaster | 11d | 2026-12-16 | 2026-12-26 | 380, 384 |  | 7 day week No holidays | 7297974 |
| 387 | 36900.37400.37600.75500.274100 | 48th Flr -Concealed Plumbing | 11d | 2026-01-02 | 2026-01-12 | 381 |  | 7 day week No holidays | 7297984 |
| 388 | 36900.37400.37600.75500.274200 | 48th Flr -Waterproofing Work | 15d | 2025-12-18 | 2026-01-01 | 382 |  | 7 day week No holidays | 7297994 |
| 389 | 36900.37400.37600.75400 | **49th Floor** | 394d | 2025-12-09 | 2027-01-06 |  | start no earlier than 2025-12-09 | 7 day week No holidays | 7289264 |
| 390 | 36900.37400.37600.75400.274300 | 49th Flr -Blockwork | 11d | 2025-12-09 | 2025-12-19 | 50, 384 |  | 7 day week No holidays | 7298004 |
| 391 | 36900.37400.37600.75400.274400 | 49th Flr -Concealed electrical conduiting | 11d | 2025-12-20 | 2025-12-30 | 385, 390 |  | 7 day week No holidays | 7298014 |
| 392 | 36900.37400.37600.75400.274500 | 49th Flr -Backcoat Plaster | 11d | 2026-12-27 | 2027-01-06 | 386, 390 |  | 7 day week No holidays | 7298024 |
| 393 | 36900.37400.37600.75400.274600 | 49th Flr -Concealed Plumbing | 15d | 2026-01-13 | 2026-01-27 | 387 |  | 7 day week No holidays | 7298034 |
| 394 | 36900.37400.37600.75400.274700 | 49th Flr -Waterproofing Work | 15d | 2026-01-02 | 2026-01-16 | 388 |  | 7 day week No holidays | 7298044 |
| 395 | 36900.37400.37600.75300 | **50th Floor** | 389d | 2025-12-25 | 2027-01-17 |  | start no earlier than 2025-12-25 | 7 day week No holidays | 7289254 |
| 396 | 36900.37400.37600.75300.274800 | 50th Flr -Blockwork | 10d | 2025-12-25 | 2026-01-03 | 51, 390 |  | 7 day week No holidays | 7298054 |
| 397 | 36900.37400.37600.75300.274900 | 50th Flr -Concealed electrical conduiting | 11d | 2026-01-04 | 2026-01-14 | 391, 396 |  | 7 day week No holidays | 7298064 |
| 398 | 36900.37400.37600.75300.275000 | 50th Flr -Backcoat Plaster | 11d | 2027-01-07 | 2027-01-17 | 392, 396 |  | 7 day week No holidays | 7298074 |
| 399 | 36900.37400.37600.75300.275100 | 50th Flr -Concealed Plumbing | 15d | 2026-01-28 | 2026-02-11 | 393 |  | 7 day week No holidays | 7298084 |
| 400 | 36900.37400.37600.75300.275200 | 50th Flr -Waterproofing Work | 12d | 2026-01-17 | 2026-01-28 | 394 |  | 7 day week No holidays | 7298094 |
| 401 | 36900.37400.37600.75200 | **51th Floor** | 384d | 2026-01-10 | 2027-01-28 |  | start no earlier than 2026-01-10 | 7 day week No holidays | 7289234 |
| 402 | 36900.37400.37600.75200.275300 | 51st Flr -Blockwork | 11d | 2026-01-10 | 2026-01-20 | 52, 396 |  | 7 day week No holidays | 7298104 |
| 403 | 36900.37400.37600.75200.275400 | 51st Flr -Concealed electrical conduiting | 11d | 2026-01-21 | 2026-01-31 | 397, 402 |  | 7 day week No holidays | 7298114 |
| 404 | 36900.37400.37600.75200.275500 | 51st Flr -Backcoat Plaster | 11d | 2027-01-18 | 2027-01-28 | 398, 402 |  | 7 day week No holidays | 7298124 |
| 405 | 36900.37400.37600.75200.275600 | 51st Flr -Concealed Plumbing | 15d | 2026-02-12 | 2026-02-26 | 399 |  | 7 day week No holidays | 7298134 |
| 406 | 36900.37400.37600.75200.275700 | 51st Flr -Waterproofing Work | 12d | 2026-01-29 | 2026-02-09 | 400 |  | 7 day week No holidays | 7298144 |

| ID | WBS | Task | Duration | Start | Finish | Predecessors | Constraint | Calendar | Unique_Task_ID |
| --- | --- | --- | --- | --- | --- | --- | --- | --- | --- |
| 407 | 36900.37400.37600.75100 | **52th Floor** | 384d | 2026-01-21 | 2027-02-08 |  | start no earlier than 2026-01-21 | 7 day week No holidays | 7289224 |
| 408 | 36900.37400.37600.75100.275800 | 52nd Flr -Blockwork | 12d | 2026-01-21 | 2026-02-01 | 402 |  | 7 day week No holidays | 7298154 |
| 409 | 36900.37400.37600.75100.275900 | 52nd Flr -Concealed electrical conduiting | 11d | 2026-02-02 | 2026-02-12 | 403, 408 |  | 7 day week No holidays | 7298164 |
| 410 | 36900.37400.37600.75100.276000 | 52nd Flr -Backcoat Plaster | 11d | 2027-01-29 | 2027-02-08 | 404, 408 |  | 7 day week No holidays | 7298174 |
| 411 | 36900.37400.37600.75100.276100 | 52nd Flr -Concealed Plumbing | 11d | 2026-02-27 | 2026-03-09 | 405 |  | 7 day week No holidays | 7298184 |
| 412 | 36900.37400.37600.75100.276200 | 52nd Flr -Waterproofing Work | 15d | 2026-02-10 | 2026-02-24 | 406 |  | 7 day week No holidays | 7298194 |
| 413 | 36900.37400.37600.75000 | **53th Floor** | 374d | 2026-02-11 | 2027-02-19 |  | start no earlier than 2026-02-11 | 7 day week No holidays | 7289214 |
| 414 | 36900.37400.37600.75000.276300 | 53rd Flr -Blockwork | 10d | 2026-02-11 | 2026-02-20 | 54, 408 |  | 7 day week No holidays | 7298204 |
| 415 | 36900.37400.37600.75000.276400 | 53rd Flr -Concealed electrical conduiting | 11d | 2026-02-21 | 2026-03-03 | 409, 414 |  | 7 day week No holidays | 7298214 |
| 416 | 36900.37400.37600.75000.276500 | 53rd Flr -Backcoat Plaster | 11d | 2027-02-09 | 2027-02-19 | 410, 414 |  | 7 day week No holidays | 7298224 |
| 417 | 36900.37400.37600.75000.276600 | 53rd Flr -Concealed Plumbing | 11d | 2026-03-10 | 2026-03-20 | 411 |  | 7 day week No holidays | 7298234 |
| 418 | 36900.37400.37600.75000.276700 | 53rd Flr -Waterproofing Work | 12d | 2026-02-25 | 2026-03-08 | 412 |  | 7 day week No holidays | 7298244 |
| 419 | 36900.37400.37600.74900 | **54th Floor** | 375d | 2026-02-21 | 2027-03-02 |  | start no earlier than 2026-02-21 | 7 day week No holidays | 7289204 |
| 420 | 36900.37400.37600.74900.276800 | 54th Flr -Blockwork | 11d | 2026-02-21 | 2026-03-03 | 414 |  | 7 day week No holidays | 7298254 |
| 421 | 36900.37400.37600.74900.276900 | 54th Flr -Concealed electrical conduiting | 11d | 2026-03-04 | 2026-03-14 | 415, 420 |  | 7 day week No holidays | 7298264 |
| 422 | 36900.37400.37600.74900.277000 | 54th Flr -Backcoat Plaster | 11d | 2027-02-20 | 2027-03-02 | 416, 420 |  | 7 day week No holidays | 7298274 |
| 423 | 36900.37400.37600.74900.277100 | 54th Flr -Concealed Plumbing | 11d | 2026-03-21 | 2026-03-31 | 417 |  | 7 day week No holidays | 7298284 |
| 424 | 36900.37400.37600.74900.277200 | 54th Flr -Waterproofing Work | 12d | 2026-03-09 | 2026-03-20 | 418 |  | 7 day week No holidays | 7298294 |
| 425 | 36900.37400.37600.74800 | **55th Floor** | 364d | 2026-03-15 | 2027-03-13 |  | start no earlier than 2026-03-15 | 7 day week No holidays | 7289194 |
| 426 | 36900.37400.37600.74800.277300 | 55th Flr -Blockwork | 12d | 2026-03-15 | 2026-03-26 | 56, 420 |  | 7 day week No holidays | 7298304 |
| 427 | 36900.37400.37600.74800.277400 | 55th Flr -Concealed electrical conduiting | 11d | 2026-03-27 | 2026-04-06 | 421, 426 |  | 7 day week No holidays | 7298314 |
| 428 | 36900.37400.37600.74800.277500 | 55th Flr -Backcoat Plaster | 11d | 2027-03-03 | 2027-03-13 | 422, 426 |  | 7 day week No holidays | 7298324 |
| 429 | 36900.37400.37600.74800.277600 | 55th Flr -Concealed Plumbing | 17d | 2026-04-01 | 2026-04-17 | 423 |  | 7 day week No holidays | 7298334 |
| 430 | 36900.37400.37600.74800.277700 | 55th Flr -Waterproofing Work | 17d | 2026-03-21 | 2026-04-06 | 424 |  | 7 day week No holidays | 7298344 |

| ID | WBS | Task | Duration | Start | Finish | Predecessors | Constraint | Calendar | Unique_Task_ID |
| --- | --- | --- | --- | --- | --- | --- | --- | --- | --- |
| 431 | 36900.37400.37600.74700 | **56th Floor** | 363d | 2026-03-27 | 2027-03-24 |  | start no earlier than 2026-03-27 | 7 day week No holidays | 7288744 |
| 432 | 36900.37400.37600.74700.277800 | 56th Flr -Blockwork | 12d | 2026-03-27 | 2026-04-07 | 426 |  | 7 day week No holidays | 7298354 |
| 433 | 36900.37400.37600.74700.277900 | 56th Flr -Concealed electrical conduiting | 11d | 2026-04-08 | 2026-04-18 | 427, 432 |  | 7 day week No holidays | 7298364 |
| 434 | 36900.37400.37600.74700.278000 | 56th Flr -Backcoat Plaster | 11d | 2027-03-14 | 2027-03-24 | 428, 432 |  | 7 day week No holidays | 7298374 |
| 435 | 36900.37400.37600.74700.278100 | 56th Flr -Concealed Plumbing | 17d | 2026-04-18 | 2026-05-04 | 429 |  | 7 day week No holidays | 7298384 |
| 436 | 36900.37400.37600.74700.278200 | 56th Flr -Waterproofing Work | 17d | 2026-04-07 | 2026-04-23 | 430 |  | 7 day week No holidays | 7298394 |
| 437 | 36900.37400.37600.74600 | **57th Floor** | 362d | 2026-04-08 | 2027-04-04 |  | start no earlier than 2026-04-08 | 7 day week No holidays | 7288734 |
| 438 | 36900.37400.37600.74600.278300 | 57th Flr -Blockwork | 11d | 2026-04-08 | 2026-04-18 | 432 |  | 7 day week No holidays | 7298404 |
| 439 | 36900.37400.37600.74600.278400 | 57th Flr -Concealed electrical conduiting | 11d | 2026-04-19 | 2026-04-29 | 433, 438 |  | 7 day week No holidays | 7298414 |
| 440 | 36900.37400.37600.74600.278500 | 57th Flr -Backcoat Plaster | 11d | 2027-03-25 | 2027-04-04 | 434, 438 |  | 7 day week No holidays | 7298424 |
| 441 | 36900.37400.37600.74600.278600 | 57th Flr -Concealed Plumbing | 17d | 2026-05-05 | 2026-05-21 | 435 |  | 7 day week No holidays | 7298434 |
| 442 | 36900.37400.37600.74600.278700 | 57th Flr -Waterproofing Work | 17d | 2026-04-24 | 2026-05-10 | 436 |  | 7 day week No holidays | 7298444 |
| 443 | 36900.37400.37600.74500 | **58th Floor** | 362d | 2026-04-19 | 2027-04-15 |  | start no earlier than 2026-04-19 | 7 day week No holidays | 7288724 |
| 444 | 36900.37400.37600.74500.278800 | 58th Flr -Blockwork | 11d | 2026-04-19 | 2026-04-29 | 438 |  | 7 day week No holidays | 7298454 |
| 445 | 36900.37400.37600.74500.278900 | 58th Flr -Concealed electrical conduiting | 11d | 2026-04-30 | 2026-05-10 | 439, 444 |  | 7 day week No holidays | 7298464 |
| 446 | 36900.37400.37600.74500.279000 | 58th Flr -Backcoat Plaster | 11d | 2027-04-05 | 2027-04-15 | 440, 444 |  | 7 day week No holidays | 7298474 |
| 447 | 36900.37400.37600.74500.279100 | 58th Flr -Concealed Plumbing | 17d | 2026-05-22 | 2026-06-07 | 441 |  | 7 day week No holidays | 7298484 |
| 448 | 36900.37400.37600.74500.279200 | 58th Flr -Waterproofing Work | 20d | 2026-05-11 | 2026-05-30 | 442 |  | 7 day week No holidays | 7298494 |
| 449 | 36900.37400.37600.74400 | **59th Floor** | 362d | 2026-04-30 | 2027-04-26 |  | start no earlier than 2026-04-30 | 7 day week No holidays | 7288704 |
| 450 | 36900.37400.37600.74400.279300 | 59th Flr -Blockwork | 11d | 2026-04-30 | 2026-05-10 | 444 |  | 7 day week No holidays | 7298504 |
| 451 | 36900.37400.37600.74400.279400 | 59th Flr -Concealed electrical conduiting | 11d | 2026-05-21 | 2026-05-31 | 445FS+10d, 450 |  | 7 day week No holidays | 7298514 |
| 452 | 36900.37400.37600.74400.279500 | 59th Flr -Backcoat Plaster | 11d | 2027-04-16 | 2027-04-26 | 446, 450 |  | 7 day week No holidays | 7298524 |
| 453 | 36900.37400.37600.74400.279600 | 59th Flr -Concealed Plumbing | 17d | 2026-07-03 | 2026-07-19 | 447FS+25d |  | 7 day week No holidays | 7298534 |
| 454 | 36900.37400.37600.74400.279700 | 59th Flr -Waterproofing Work | 20d | 2026-07-10 | 2026-07-29 | 448FS+40d |  | 7 day week No holidays | 7298544 |

| ID | WBS | Task | Duration | Start | Finish | Predecessors | Constraint | Calendar | Unique_Task_ID |
| --- | --- | --- | --- | --- | --- | --- | --- | --- | --- |
| 455 | 36900.37400.37600.74300 | **60th Floor** | 362d | 2026-05-11 | 2027-05-07 |  | start no earlier than 2026-05-11 | 7 day week No holidays | 7288684 |
| 456 | 36900.37400.37600.74300.279800 | 60th Flr -Blockwork | 7d | 2026-05-11 | 2026-05-17 | 450 |  | 7 day week No holidays | 7298554 |
| 457 | 36900.37400.37600.74300.279900 | 60th Flr -Concealed electrical conduiting | 20d | 2026-06-21 | 2026-07-10 | 451FS+20d, 456 |  | 7 day week No holidays | 7298564 |
| 458 | 36900.37400.37600.74300.280000 | 60th Flr -Backcoat Plaster | 11d | 2027-04-27 | 2027-05-07 | 452, 456 |  | 7 day week No holidays | 7298574 |
| 459 | 36900.37400.37600.74300.280100 | 60th Flr -Concealed Plumbing | 20d | 2026-07-25 | 2026-08-13 | 453FS+5d |  | 7 day week No holidays | 7298584 |
| 460 | 36900.37400.37600.74300.280200 | 60th Flr -Waterproofing Work | 20d | 2026-08-09 | 2026-08-28 | 454FS+10d |  | 7 day week No holidays | 7298594 |
| 461 | 36900.37400.37600.74200 | **61th Floor** | 334d | 2026-06-19 | 2027-05-18 |  | start no earlier than 2026-06-19 | 7 day week No holidays | 7288574 |
| 462 | 36900.37400.37600.74200.280300 | 61st Flr -Blockwork | 11d | 2026-06-19 | 2026-06-29 | 62, 456 |  | 7 day week No holidays | 7298604 |
| 463 | 36900.37400.37600.74200.280400 | 61st Flr -Concealed electrical conduiting | 11d | 2026-07-11 | 2026-07-21 | 457, 462 |  | 7 day week No holidays | 7298614 |
| 464 | 36900.37400.37600.74200.280500 | 61st Flr -Backcoat Plaster | 11d | 2027-05-08 | 2027-05-18 | 458, 462 |  | 7 day week No holidays | 7298624 |
| 465 | 36900.37400.37600.74200.280600 | 61st Flr -Concealed Plumbing | 11d | 2026-08-14 | 2026-08-24 | 459 |  | 7 day week No holidays | 7298634 |
| 466 | 36900.37400.37600.74200.280700 | 61st Flr -Waterproofing Work | 15d | 2026-09-03 | 2026-09-17 | 460FS+5d |  | 7 day week No holidays | 7298644 |
| 467 | 36900.37400.37600.74100 | **62th Floor** | 329d | 2026-07-05 | 2027-05-29 |  | start no earlier than 2026-07-05 | 7 day week No holidays | 7288584 |
| 468 | 36900.37400.37600.74100.280800 | 62nd Flr -Blockwork | 11d | 2026-07-05 | 2026-07-15 | 63, 462 |  | 7 day week No holidays | 7298654 |
| 469 | 36900.37400.37600.74100.280900 | 62nd Flr -Concealed electrical conduiting | 11d | 2026-07-22 | 2026-08-01 | 463, 468 |  | 7 day week No holidays | 7298664 |
| 470 | 36900.37400.37600.74100.281000 | 62nd Flr -Backcoat Plaster | 11d | 2027-05-19 | 2027-05-29 | 464, 468 |  | 7 day week No holidays | 7298674 |
| 471 | 36900.37400.37600.74100.281100 | 62nd Flr -Concealed Plumbing | 20d | 2026-08-25 | 2026-09-13 | 465 |  | 7 day week No holidays | 7298684 |
| 472 | 36900.37400.37600.74100.281200 | 62nd Flr -Waterproofing Work | 20d | 2026-09-18 | 2026-10-07 | 466 |  | 7 day week No holidays | 7298694 |
| 473 | 36900.37400.37600.74000 | **63th Floor** | 324d | 2026-07-21 | 2027-06-09 |  | start no earlier than 2026-07-21 | 7 day week No holidays | 7288594 |
| 474 | 36900.37400.37600.74000.281300 | 63rd Flr -Blockwork | 11d | 2026-07-21 | 2026-07-31 | 64, 468 |  | 7 day week No holidays | 7298704 |
| 475 | 36900.37400.37600.74000.281400 | 63rd Flr -Concealed electrical conduiting | 11d | 2026-08-02 | 2026-08-12 | 469, 474 |  | 7 day week No holidays | 7298714 |
| 476 | 36900.37400.37600.74000.281500 | 63rd Flr -Backcoat Plaster | 11d | 2027-05-30 | 2027-06-09 | 470, 474 |  | 7 day week No holidays | 7298724 |
| 477 | 36900.37400.37600.74000.281600 | 63rd Flr -Concealed Plumbing | 20d | 2026-09-14 | 2026-10-03 | 471 |  | 7 day week No holidays | 7298734 |
| 478 | 36900.37400.37600.74000.281700 | 63rd Flr -Waterproofing Work | 30d | 2026-10-08 | 2026-11-06 | 472 |  | 7 day week No holidays | 7298744 |

| ID | WBS | Task | Duration | Start | Finish | Predecessors | Constraint | Calendar | Unique_Task_ID |
| --- | --- | --- | --- | --- | --- | --- | --- | --- | --- |
| 479 | 36900.37400.37600.73900 | **64th Floor** | 341d | 2026-08-06 | 2027-07-12 |  | start no earlier than 2026-08-06 | 7 day week No holidays | 7288604 |
| 480 | 36900.37400.37600.73900.281800 | 64th Flr -Blockwork | 11d | 2026-08-06 | 2026-08-16 | 65, 474 |  | 7 day week No holidays | 7298754 |
| 481 | 36900.37400.37600.73900.281900 | 64th Flr -Concealed electrical conduiting | 11d | 2026-08-17 | 2026-08-27 | 475, 480 |  | 7 day week No holidays | 7298764 |
| 482 | 36900.37400.37600.73900.282000 | 64th Flr -Backcoat Plaster | 11d | 2027-06-10 | 2027-06-20 | 476, 480 |  | 7 day week No holidays | 7298774 |
| 483 | 36900.37400.37600.73900.282100 | 64th Flr -Concealed Plumbing | 11d | 2027-06-21 | 2027-07-01 | 477, 482 |  | 7 day week No holidays | 7298784 |
| 484 | 36900.37400.37600.73900.282200 | 64th Flr -Waterproofing Work | 11d | 2027-07-02 | 2027-07-12 | 478, 483 |  | 7 day week No holidays | 7298794 |
| 485 | 36900.37400.37600.73800 | **65th Floor** | 336d | 2026-08-22 | 2027-07-23 |  | start no earlier than 2026-08-22 | 7 day week No holidays | 7288614 |
| 486 | 36900.37400.37600.73800.282300 | 65th Flr -Blockwork | 11d | 2026-08-22 | 2026-09-01 | 66, 480 |  | 7 day week No holidays | 7298804 |
| 487 | 36900.37400.37600.73800.282400 | 65th Flr -Concealed electrical conduiting | 11d | 2026-09-02 | 2026-09-12 | 481, 486 |  | 7 day week No holidays | 7298814 |
| 488 | 36900.37400.37600.73800.282500 | 65th Flr -Backcoat Plaster | 11d | 2027-06-21 | 2027-07-01 | 482, 486 |  | 7 day week No holidays | 7298824 |
| 489 | 36900.37400.37600.73800.282600 | 65th Flr -Concealed Plumbing | 11d | 2027-07-02 | 2027-07-12 | 483, 488 |  | 7 day week No holidays | 7298834 |
| 490 | 36900.37400.37600.73800.282700 | 65th Flr -Waterproofing Work | 11d | 2027-07-13 | 2027-07-23 | 484, 489 |  | 7 day week No holidays | 7298844 |
| 491 | 36900.37400.37600.73700 | **66th Floor** | 331d | 2026-09-07 | 2027-08-03 |  | start no earlier than 2026-09-07 | 7 day week No holidays | 7288624 |
| 492 | 36900.37400.37600.73700.282800 | 66th Flr -Blockwork | 11d | 2026-09-07 | 2026-09-17 | 67, 486 |  | 7 day week No holidays | 7298854 |
| 493 | 36900.37400.37600.73700.282900 | 66th Flr -Concealed electrical conduiting | 11d | 2026-09-18 | 2026-09-28 | 487, 492 |  | 7 day week No holidays | 7298864 |
| 494 | 36900.37400.37600.73700.283000 | 66th Flr -Backcoat Plaster | 11d | 2027-07-02 | 2027-07-12 | 488, 492 |  | 7 day week No holidays | 7298874 |
| 495 | 36900.37400.37600.73700.283100 | 66th Flr -Concealed Plumbing | 11d | 2027-07-13 | 2027-07-23 | 489, 494 |  | 7 day week No holidays | 7298884 |
| 496 | 36900.37400.37600.73700.283200 | 66th Flr -Waterproofing Work | 11d | 2027-07-24 | 2027-08-03 | 490, 495 |  | 7 day week No holidays | 7298894 |
| 497 | 36900.37400.37600.73600 | **67th Floor** | 326d | 2026-09-23 | 2027-08-14 |  | start no earlier than 2026-09-23 | 7 day week No holidays | 7288634 |
| 498 | 36900.37400.37600.73600.283300 | 67th Flr -Blockwork | 11d | 2026-09-23 | 2026-10-03 | 68, 492 |  | 7 day week No holidays | 7298904 |
| 499 | 36900.37400.37600.73600.283400 | 67th Flr -Concealed electrical conduiting | 11d | 2026-10-04 | 2026-10-14 | 493, 498 |  | 7 day week No holidays | 7298914 |
| 500 | 36900.37400.37600.73600.283500 | 67th Flr -Backcoat Plaster | 11d | 2027-07-13 | 2027-07-23 | 494, 498 |  | 7 day week No holidays | 7298924 |
| 501 | 36900.37400.37600.73600.283600 | 67th Flr -Concealed Plumbing | 11d | 2027-07-24 | 2027-08-03 | 495, 500 |  | 7 day week No holidays | 7298934 |
| 502 | 36900.37400.37600.73600.283700 | 67th Flr -Waterproofing Work | 11d | 2027-08-04 | 2027-08-14 | 496, 501 |  | 7 day week No holidays | 7298944 |

| ID | WBS | Task | Duration | Start | Finish | Predecessors | Constraint | Calendar | Unique_Task_ID |
| --- | --- | --- | --- | --- | --- | --- | --- | --- | --- |
| 503 | 36900.37400.37600.73500 | **68th Floor** | 326d | 2026-10-04 | 2027-08-25 |  | start no earlier than 2026-10-04 | 7 day week No holidays | 7288644 |
| 504 | 36900.37400.37600.73500.283800 | 68th Flr -Blockwork | 11d | 2026-10-04 | 2026-10-14 | 498 |  | 7 day week No holidays | 7298954 |
| 505 | 36900.37400.37600.73500.283900 | 68th Flr -Concealed electrical conduiting | 11d | 2026-10-15 | 2026-10-25 | 499, 504 |  | 7 day week No holidays | 7298964 |
| 506 | 36900.37400.37600.73500.284000 | 68th Flr -Backcoat Plaster | 11d | 2027-07-24 | 2027-08-03 | 500, 504 |  | 7 day week No holidays | 7298974 |
| 507 | 36900.37400.37600.73500.284100 | 68th Flr -Concealed Plumbing | 11d | 2027-08-04 | 2027-08-14 | 501, 506 |  | 7 day week No holidays | 7298984 |
| 508 | 36900.37400.37600.73500.284200 | 68th Flr -Waterproofing Work | 11d | 2027-08-15 | 2027-08-25 | 502, 507 |  | 7 day week No holidays | 7298994 |
| 509 | 36900.37400.37600.73400 | **69th Floor** | 315.12d | 2026-10-15 | 2027-08-26 |  | start no earlier than 2026-10-15 | 7 day week No holidays | 7288654 |
| 510 | 36900.37400.37600.73400.284300 | 69th Flr -Blockwork | 11d | 2026-10-15 | 2026-10-25 | 504 |  | 7 day week No holidays | 7299004 |
| 511 | 36900.37400.37600.73400.284400 | 69th Flr -Concealed electrical conduiting | 11d | 2026-10-26 | 2026-11-05 | 505, 510 |  | 7 day week No holidays | 7299014 |
| 512 | 36900.37400.37600.73400.284500 | 69th Flr -Backcoat Plaster | 11d | 2027-08-04 | 2027-08-14 | 506, 510 |  | 7 day week No holidays | 7299024 |
| 513 | 36900.37400.37600.73400.284600 | 69th Flr -Concealed Plumbing | 11d | 2027-08-15 | 2027-08-25 | 507, 512 |  | 7 day week No holidays | 7299034 |
| 514 | 36900.37400.37600.73400.284700 | 69th Flr -Waterproofing Work | 0.12d | 2027-08-26 | 2027-08-26 | 508, 513 |  | 7 day week No holidays | 7299044 |
| 515 | 36900.37400.37600.73300 | **70th Floor** | 304.25d | 2026-10-26 | 2027-08-26 |  | start no earlier than 2026-10-26 | 7 day week No holidays | 7288664 |
| 516 | 36900.37400.37600.73300.284800 | 70th Flr -Blockwork | 15d | 2026-10-26 | 2026-11-09 | 510 |  | 7 day week No holidays | 7299054 |
| 517 | 36900.37400.37600.73300.284900 | 70th Flr -Concealed electrical conduiting | 0.12d | 2026-11-10 | 2026-11-10 | 511, 516 |  | 7 day week No holidays | 7299064 |
| 518 | 36900.37400.37600.73300.285000 | 70th Flr -Backcoat Plaster | 0.12d | 2027-08-15 | 2027-08-15 | 512, 516 |  | 7 day week No holidays | 7299074 |
| 519 | 36900.37400.37600.73300.285100 | 70th Flr -Concealed Plumbing | 0.12d | 2027-08-26 | 2027-08-26 | 513, 518 |  | 7 day week No holidays | 7299084 |
| 520 | 36900.37400.37600.73300.285200 | 70th Flr -Waterproofing Work | 0.12d | 2027-08-26 | 2027-08-26 | 514, 519 |  | 7 day week No holidays | 7299094 |
| 521 | 36900.37400.37600.73200 | **71th Floor** | 289.38d | 2026-11-10 | 2027-08-26 |  | start no earlier than 2026-11-10 | 7 day week No holidays | 7288674 |
| 522 | 36900.37400.37600.73200.285300 | 71st Flr -Blockwork | 15d | 2026-11-10 | 2026-11-24 | 516 |  | 7 day week No holidays | 7299104 |
| 523 | 36900.37400.37600.73200.285400 | 71st Flr -Concealed electrical conduiting | 0.12d | 2026-11-25 | 2026-11-25 | 517, 522 |  | 7 day week No holidays | 7299114 |
| 524 | 36900.37400.37600.73200.285500 | 71st Flr -Backcoat Plaster | 0.12d | 2027-08-15 | 2027-08-15 | 518, 522 |  | 7 day week No holidays | 7299124 |
| 525 | 36900.37400.37600.73200.285600 | 71st Flr -Concealed Plumbing | 0.12d | 2027-08-26 | 2027-08-26 | 519, 524 |  | 7 day week No holidays | 7299134 |
| 526 | 36900.37400.37600.73200.285700 | 71st Flr -Waterproofing Work | 0.12d | 2027-08-26 | 2027-08-26 | 520, 525 |  | 7 day week No holidays | 7299144 |

| ID | WBS | Task | Duration | Start | Finish | Predecessors | Constraint | Calendar | Unique_Task_ID |
| --- | --- | --- | --- | --- | --- | --- | --- | --- | --- |
| 527 | 36900.37400.37600.73100 | **72th Floor** | 274.5d | 2026-11-25 | 2027-08-26 |  | start no earlier than 2026-11-25 | 7 day week No holidays | 7288694 |
| 528 | 36900.37400.37600.73100.285800 | 72nd Flr -Blockwork | 15d | 2026-11-25 | 2026-12-09 | 522 |  | 7 day week No holidays | 7299154 |
| 529 | 36900.37400.37600.73100.285900 | 72nd Flr -Concealed electrical conduiting | 0.12d | 2026-12-10 | 2026-12-10 | 523, 528 |  | 7 day week No holidays | 7299164 |
| 530 | 36900.37400.37600.73100.286000 | 72nd Flr -Backcoat Plaster | 0.12d | 2027-08-15 | 2027-08-15 | 524, 528 |  | 7 day week No holidays | 7299174 |
| 531 | 36900.37400.37600.73100.286100 | 72nd Flr -Concealed Plumbing | 0.12d | 2027-08-26 | 2027-08-26 | 525, 530 |  | 7 day week No holidays | 7299184 |
| 532 | 36900.37400.37600.73100.286200 | 72nd Flr -Waterproofing Work | 0.12d | 2027-08-26 | 2027-08-26 | 526, 531 |  | 7 day week No holidays | 7299194 |
| 533 | 36900.37400.68600 | **Terrace floor - Civil Work** | 293.38d | 2026-12-10 | 2027-09-29 |  | start no earlier than 2026-12-10 | 7 day week No holidays | 7289064 |
| 534 | 36900.37400.68600.137100 | Terrace floor - Blockwork | 15d | 2026-12-10 | 2026-12-24 | 528 |  | 7 day week No holidays | 7290204 |
| 535 | 36900.37400.68600.137200 | Terrace floor - Concealed electrical conduiting | 15d | 2026-12-25 | 2027-01-08 | 534, 529 |  | 7 day week No holidays | 7290214 |
| 536 | 36900.37400.68600.137300 | Terrace floor - Backcoat Plaster | 15d | 2027-08-15 | 2027-08-30 | 534, 530 |  | 7 day week No holidays | 7290224 |
| 537 | 36900.37400.68600.137400 | Terrace floor - Concealed Plumbing | 15d | 2027-08-30 | 2027-09-14 | 536, 531 |  | 7 day week No holidays | 7290234 |
| 538 | 36900.37400.68600.137500 | Terrace floor - Waterproofing Work | 15d | 2027-09-14 | 2027-09-29 | 537, 532 |  | 7 day week No holidays | 7290244 |
| 539 | 36900.37400.68500 | **Basement-2 - Civil Work** | 75d | 2026-10-04 | 2026-12-17 |  | start no earlier than 2026-10-04 | 7 day week No holidays | 7289074 |
| 540 | 36900.37400.68500.137600 | Basement-2 Blockwork | 15d | 2026-10-04 | 2026-10-18 | 498 |  | 7 day week No holidays | 7290254 |
| 541 | 36900.37400.68500.137700 | Basement-2 Concealed electrical conduiting | 15d | 2026-10-19 | 2026-11-02 | 540 |  | 7 day week No holidays | 7290264 |
| 542 | 36900.37400.68500.137800 | Basement-2 Backcoat Plaster | 15d | 2026-11-03 | 2026-11-17 | 541 |  | 7 day week No holidays | 7290274 |
| 543 | 36900.37400.68500.137900 | Basement-2 Concealed Plumbing | 15d | 2026-11-18 | 2026-12-02 | 542 |  | 7 day week No holidays | 7290284 |
| 544 | 36900.37400.68500.138000 | Basement-2 Waterproofing Work | 15d | 2026-12-03 | 2026-12-17 | 543 |  | 7 day week No holidays | 7290294 |
| 545 | 36900.37400.68300 | **Basement 1 - Civil Work** | 75d | 2026-10-19 | 2027-01-01 |  | start no earlier than 2026-10-19 | 7 day week No holidays | 2505368 |
| 546 | 36900.37400.68300.138100 | Basement 1 - Blockwork | 15d | 2026-10-19 | 2026-11-02 | 540 |  | 7 day week No holidays | 2505378 |
| 547 | 36900.37400.68300.138200 | Basement 1 - Concealed electrical conduiting | 15d | 2026-11-03 | 2026-11-17 | 541, 546 |  | 7 day week No holidays | 2505388 |
| 548 | 36900.37400.68300.138300 | Basement 1 - Backcoat Plaster | 15d | 2026-11-18 | 2026-12-02 | 542, 546 |  | 7 day week No holidays | 2505398 |
| 549 | 36900.37400.68300.138400 | Basement 1 - Concealed Plumbing | 15d | 2026-12-03 | 2026-12-17 | 543, 548 |  | 7 day week No holidays | 2505408 |
| 550 | 36900.37400.68300.138500 | Basement 1 - Waterproofing Work | 15d | 2026-12-18 | 2027-01-01 | 544, 549 |  | 7 day week No holidays | 2505418 |

| ID | WBS | Task | Duration | Start | Finish | Predecessors | Constraint | Calendar | Unique_Task_ID |
| --- | --- | --- | --- | --- | --- | --- | --- | --- | --- |
| 551 | 36900.37400.68200 | **GF - Civil Work** | 75d | 2026-11-03 | 2027-01-16 |  | start no earlier than 2026-11-03 | 7 day week No holidays | 7289084 |
| 552 | 36900.37400.68200.138600 | Blockwork | 15d | 2026-11-03 | 2026-11-17 | 546 |  | 7 day week No holidays | 7290304 |
| 553 | 36900.37400.68200.138700 | Concealed electrical conduiting | 15d | 2026-11-18 | 2026-12-02 | 547, 552 |  | 7 day week No holidays | 7290314 |
| 554 | 36900.37400.68200.138800 | Backcoat Plaster | 15d | 2026-12-03 | 2026-12-17 | 548, 552 |  | 7 day week No holidays | 7290324 |
| 555 | 36900.37400.68200.138900 | Concealed Plumbing | 15d | 2026-12-18 | 2027-01-01 | 549, 554 |  | 7 day week No holidays | 7290334 |
| 556 | 36900.37400.68200.139000 | Waterproofing Work | 15d | 2027-01-02 | 2027-01-16 | 550, 555 |  | 7 day week No holidays | 7290344 |
| 557 | 36900.37400.68100 | **Podium-1 - Civil Work** | 75d | 2026-11-18 | 2027-01-31 |  | start no earlier than 2026-11-18 | 7 day week No holidays | 2505728 |
| 558 | 36900.37400.68100.139100 | Podium-1 -Blockwork | 10d | 2026-11-18 | 2026-11-27 | 552 |  | 7 day week No holidays | 2505738 |
| 559 | 36900.37400.68100.139200 | Podium-1 -Concealed electrical conduiting | 20d | 2026-12-03 | 2026-12-22 | 553, 558 |  | 7 day week No holidays | 2505748 |
| 560 | 36900.37400.68100.139300 | Podium-1 -Backcoat Plaster | 15d | 2026-12-18 | 2027-01-01 | 554, 558 |  | 7 day week No holidays | 2505758 |
| 561 | 36900.37400.68100.139400 | Podium-1 -Concealed Plumbing | 15d | 2027-01-02 | 2027-01-16 | 555, 560 |  | 7 day week No holidays | 2505768 |
| 562 | 36900.37400.68100.139500 | Podium-1 -Waterproofing Work | 15d | 2027-01-17 | 2027-01-31 | 556, 561 |  | 7 day week No holidays | 2505778 |
| 563 | 36900.37400.68000 | **Podium-2 - Civil Work** | 80d | 2026-11-28 | 2027-02-15 |  | start no earlier than 2026-11-28 | 7 day week No holidays | 2505668 |
| 564 | 36900.37400.68000.139600 | Podium-2 -Blockwork | 10d | 2026-11-28 | 2026-12-07 | 558 |  | 7 day week No holidays | 2505678 |
| 565 | 36900.37400.68000.139700 | Podium-2 -Concealed electrical conduiting | 20d | 2026-12-23 | 2027-01-11 | 559, 564 |  | 7 day week No holidays | 2505688 |
| 566 | 36900.37400.68000.139800 | Podium-2 -Backcoat Plaster | 15d | 2027-01-02 | 2027-01-16 | 560, 564 |  | 7 day week No holidays | 2505698 |
| 567 | 36900.37400.68000.139900 | Podium-2 -Concealed Plumbing | 15d | 2027-01-17 | 2027-01-31 | 561, 566 |  | 7 day week No holidays | 2505708 |
| 568 | 36900.37400.68000.140000 | Podium-2 -Waterproofing Work | 15d | 2027-02-01 | 2027-02-15 | 562, 567 |  | 7 day week No holidays | 2505718 |
| 569 | 36900.37400.67900 | **Podium-3 - Civil Work** | 85d | 2026-12-08 | 2027-03-02 |  | start no earlier than 2026-12-08 | 7 day week No holidays | 2505608 |
| 570 | 36900.37400.67900.140100 | Podium-3 -Blockwork | 10d | 2026-12-08 | 2026-12-17 | 564 |  | 7 day week No holidays | 2505618 |
| 571 | 36900.37400.67900.140200 | Podium-3 -Concealed electrical conduiting | 20d | 2027-01-12 | 2027-01-31 | 565, 570 |  | 7 day week No holidays | 2505628 |
| 572 | 36900.37400.67900.140300 | Podium-3 -Backcoat Plaster | 15d | 2027-01-17 | 2027-01-31 | 566, 570 |  | 7 day week No holidays | 2505638 |
| 573 | 36900.37400.67900.140400 | Podium-3 -Concealed Plumbing | 15d | 2027-02-01 | 2027-02-15 | 567, 572 |  | 7 day week No holidays | 2505648 |
| 574 | 36900.37400.67900.140500 | Podium-3 -Waterproofing Work | 15d | 2027-02-16 | 2027-03-02 | 568, 573 |  | 7 day week No holidays | 2505658 |

| ID | WBS | Task | Duration | Start | Finish | Predecessors | Constraint | Calendar | Unique_Task_ID |
| --- | --- | --- | --- | --- | --- | --- | --- | --- | --- |
| 575 | 36900.37400.67800 | **Podium-4 - Civil Work** | 90d | 2026-12-18 | 2027-03-17 |  | start no earlier than 2026-12-18 | 7 day week No holidays | 2505548 |
| 576 | 36900.37400.67800.140600 | Podium-4 - Blockwork | 10d | 2026-12-18 | 2026-12-27 | 570 |  | 7 day week No holidays | 2505558 |
| 577 | 36900.37400.67800.140700 | Podium-4 -Concealed electrical conduiting | 20d | 2027-02-01 | 2027-02-20 | 571, 576 |  | 7 day week No holidays | 2505568 |
| 578 | 36900.37400.67800.140800 | Podium-4 -Backcoat Plaster | 15d | 2027-02-01 | 2027-02-15 | 572, 576 |  | 7 day week No holidays | 2505578 |
| 579 | 36900.37400.67800.140900 | Podium-4 -Concealed Plumbing | 15d | 2027-02-16 | 2027-03-02 | 573, 578 |  | 7 day week No holidays | 2505588 |
| 580 | 36900.37400.67800.141000 | Podium-4 -Waterproofing Work | 15d | 2027-03-03 | 2027-03-17 | 574, 579 |  | 7 day week No holidays | 2505598 |
| 581 | 36900.37400.67700 | **Podium-5 - Civil Work** | 95d | 2026-12-28 | 2027-04-01 |  | start no earlier than 2026-12-28 | 7 day week No holidays | 2505488 |
| 582 | 36900.37400.67700.141100 | Podium-5 -Blockwork | 10d | 2026-12-28 | 2027-01-06 | 576 |  | 7 day week No holidays | 2505498 |
| 583 | 36900.37400.67700.141200 | Podium-5 -Concealed electrical conduiting | 20d | 2027-02-21 | 2027-03-12 | 577, 582 |  | 7 day week No holidays | 2505508 |
| 584 | 36900.37400.67700.141300 | Podium-5 -Backcoat Plaster | 15d | 2027-02-16 | 2027-03-02 | 578, 582 |  | 7 day week No holidays | 2505518 |
| 585 | 36900.37400.67700.141400 | Podium-5 -Concealed Plumbing | 15d | 2027-03-03 | 2027-03-17 | 579, 584 |  | 7 day week No holidays | 2505528 |
| 586 | 36900.37400.67700.141500 | Podium-5 -Waterproofing Work | 15d | 2027-03-18 | 2027-04-01 | 580, 585 |  | 7 day week No holidays | 2505538 |
| 587 | 36900.37400.67600 | **Podium-6 - Civil Work** | 100d | 2027-01-07 | 2027-04-16 |  | start no earlier than 2027-01-07 | 7 day week No holidays | 2505428 |
| 588 | 36900.37400.67600.141600 | Podium-6 -Blockwork | 10d | 2027-01-07 | 2027-01-16 | 582 |  | 7 day week No holidays | 2505438 |
| 589 | 36900.37400.67600.141700 | Podium-6 -Concealed electrical conduiting | 20d | 2027-03-13 | 2027-04-01 | 583, 588 |  | 7 day week No holidays | 2505448 |
| 590 | 36900.37400.67600.141800 | Podium-6 -Backcoat Plaster | 15d | 2027-03-03 | 2027-03-17 | 584, 588 |  | 7 day week No holidays | 2505458 |
| 591 | 36900.37400.67600.141900 | Podium-6 -Concealed Plumbing | 15d | 2027-03-18 | 2027-04-01 | 585, 590 |  | 7 day week No holidays | 2505468 |
| 592 | 36900.37400.67600.142000 | Podium-6 -Waterproofing Work | 15d | 2027-04-02 | 2027-04-16 | 586, 591 |  | 7 day week No holidays | 2505478 |
| 593 | 36900.37400.67500 | **Podium-7 - Service Floor** | 105d | 2027-01-17 | 2027-05-01 |  | start no earlier than 2027-01-17 | 7 day week No holidays | 2505788 |
| 594 | 36900.37400.67500.142100 | Podium-7 -Blockwork | 10d | 2027-01-17 | 2027-01-26 | 588 |  | 7 day week No holidays | 2505798 |
| 595 | 36900.37400.67500.142200 | Podium-7 -Concealed electrical conduiting | 20d | 2027-04-02 | 2027-04-21 | 589, 594 |  | 7 day week No holidays | 2505808 |
| 596 | 36900.37400.67500.142300 | Podium-7 -Backcoat Plaster | 15d | 2027-03-18 | 2027-04-01 | 590, 594 |  | 7 day week No holidays | 2505818 |
| 597 | 36900.37400.67500.142400 | Podium-7 -Concealed Plumbing | 15d | 2027-04-02 | 2027-04-16 | 591, 596 |  | 7 day week No holidays | 2505828 |
| 598 | 36900.37400.67500.142500 | Podium-7 -Waterproofing Work | 15d | 2027-04-17 | 2027-05-01 | 592, 597 |  | 7 day week No holidays | 2505838 |

| ID | WBS | Task | Duration | Start | Finish | Predecessors | Complete | Constraint | Calendar | Unique_Task_ID |
| --- | --- | --- | --- | --- | --- | --- | --- | --- | --- | --- |
| 599 | 36900.37400.67400 | **Podium-8 - Civil Work** | 110d | 2027-01-27 | 2027-05-16 |  |  | start no earlier than 2027-01-27 | 7 day week No holidays | 2505848 |
| 600 | 36900.37400.67400.142600 | Podium-8 -Blockwork | 10d | 2027-01-27 | 2027-02-05 | 594 |  |  | 7 day week No holidays | 2505858 |
| 601 | 36900.37400.67400.142700 | Podium-8 -Concealed electrical conduiting | 20d | 2027-04-22 | 2027-05-11 | 595, 600 |  |  | 7 day week No holidays | 2505868 |
| 602 | 36900.37400.67400.142800 | Podium-8 -Backcoat Plaster | 15d | 2027-04-02 | 2027-04-16 | 596, 600 |  |  | 7 day week No holidays | 2505878 |
| 603 | 36900.37400.67400.142900 | Podium-8 -Concealed Plumbing | 15d | 2027-04-17 | 2027-05-01 | 597, 602 |  |  | 7 day week No holidays | 2505888 |
| 604 | 36900.37400.67400.143000 | Podium--8 -Waterproofing Work | 15d | 2027-05-02 | 2027-05-16 | 598, 603 |  |  | 7 day week No holidays | 2505898 |
| 605 | 36900.37000 | **Internal Finishing & Services** | 2019.25d | 2024-04-28 | 2029-11-07 |  | 38% | start no earlier than 2024-04-28 | 7 day week No holidays | 7284374 |
| 606 | 36900.37000.78500 | **Windows mobilization** | 207d | 2025-05-01 | 2025-12-28 |  | 2% | start no earlier than 2025-05-01 | Indian Calendar | 7284375 |
| 607 | 36900.37000.78500.143100 | Aluminium Windows-Order Date | 50d | 2025-10-13 | 2025-12-01 | 11FS+20d |  |  | 7 day week No holidays | 7284385 |
| 608 | 36900.37000.78500.89100 | Aluminium Windows-Shop Drawing Approval Date | 29.8d | 2025-05-01 | 2025-12-28 | 607FS-215d | 9% |  | 7 day week No holidays | 7284395 |
| 609 | 36900.37000.78500.143200 | Aluminium Windows-Start of supply for first lot date | 20d | 2025-12-02 | 2025-12-21 | 607 |  |  | 7 day week No holidays | 7284405 |
| 610 | 36900.37000.37100 | **Flat - Internal finishing & Services** | 1923.25d | 2024-04-28 | 2029-08-03 |  | 40% | start no earlier than 2024-04-28 | 7 day week No holidays | 7284384 |
| 611 | 36900.37000.37100.40400 | **9th Floor** | 719d | 2025-10-13 | 2027-10-01 |  |  | start no earlier than 2025-10-13 | 7 day week No holidays | 7285934 |
| 612 | 36900.37000.37100.40400.286300 | 9th flr-Gypsum Plaster | 25d | 2025-10-13 | 2025-11-06 | 186SS |  |  | 7 day week No holidays | 7299204 |
| 613 | 36900.37000.37100.40400.286400 | 9th flr-Kitchen Platform | 11d | 2025-11-07 | 2025-11-17 | 612 |  |  | 7 day week No holidays | 7299214 |
| 614 | 36900.37000.37100.40400.286500 | 9th flr-Toilet dado & flooring | 11d | 2026-05-16 | 2026-05-26 | 154, 178 |  |  | 7 day week No holidays | 7299224 |
| 615 | 36900.37000.37100.40400.286600 | 9th flr-Fire sprinkler pipe | 11d | 2025-11-07 | 2025-11-17 | 612 |  |  | 7 day week No holidays | 7299234 |
| 616 | 36900.37000.37100.40400.286700 | 9th flr-Flat flooring | 11d | 2026-05-27 | 2026-06-06 | 614 |  |  | 7 day week No holidays | 7299244 |
| 617 | 36900.37000.37100.40400.286800 | 9th flr-Main door fixing & frame fixing | 11d | 2026-06-07 | 2026-06-17 | 616, 694FS+360d |  |  | 7 day week No holidays | 7299254 |
| 618 | 36900.37000.37100.40400.286900 | 9th flr-Window fixing | 11d | 2026-06-07 | 2026-06-17 | 616, 694FS+120d |  |  | 7 day week No holidays | 7299264 |
| 619 | 36900.37000.37100.40400.287000 | 9th flr-Railing Fixing | 11d | 2027-06-02 | 2027-06-12 | 616FS+360d |  |  | 7 day week No holidays | 7299274 |
| 620 | 36900.37000.37100.40400.287100 | 9th flr-Internal painting - putty / primer application | 11d | 2027-09-10 | 2027-09-20 | 616FS+460d |  |  | 7 day week No holidays | 7299284 |
| 621 | 36900.37000.37100.40400.287200 | 9th flr-Flat electrical wiring | 11d | 2026-06-18 | 2026-06-28 | 617 |  |  | 7 day week No holidays | 7299294 |
| 622 | 36900.37000.37100.40400.287300 | 9th flr-Internal painting | 11d | 2026-06-29 | 2026-07-09 | 621 |  |  | 7 day week No holidays | 7299304 |
| 623 | 36900.37000.37100.40400.287400 | 9th flr-Internal shutter fixing | 11d | 2027-09-21 | 2027-10-01 | 620 |  |  | 7 day week No holidays | 7299314 |

| ID | WBS | Task | Duration | Start | Finish | Predecessors | Constraint | Calendar | Unique_Task_ID |
| --- | --- | --- | --- | --- | --- | --- | --- | --- | --- |
| 624 | 36900.37000.37100.40500 | **10th Floor** | 693.88d | 2025-11-07 | 2027-10-02 |  | start no earlier than 2025-11-07 | 7 day week No holidays | 7285014 |
| 625 | 36900.37000.37100.40500.287500 | 10th flr-Gypsum Plaster | 10d | 2025-11-07 | 2025-11-17 | 612FS+0.25d |  | 7 day week No holidays | 7299324 |
| 626 | 36900.37000.37100.40500.287600 | 10th flr-Kitchen Platform | 0.12d | 2025-11-18 | 2025-11-18 | 613, 625 |  | 7 day week No holidays | 7299334 |
| 627 | 36900.37000.37100.40500.287700 | 10th flr-Toilet dado & flooring | 0.12d | 2026-05-27 | 2026-05-27 | 160, 614 |  | 7 day week No holidays | 7299344 |
| 628 | 36900.37000.37100.40500.287800 | 10th flr-Fire sprinkler pipe | 0.12d | 2025-11-18 | 2025-11-18 | 615, 625 |  | 7 day week No holidays | 7299354 |
| 629 | 36900.37000.37100.40500.287900 | 10th flr-Flat flooring | 0.12d | 2026-06-07 | 2026-06-07 | 616, 627 |  | 7 day week No holidays | 7299364 |
| 630 | 36900.37000.37100.40500.288000 | 10th flr-Main door fixing & frame fixing | 0.12d | 2026-06-18 | 2026-06-18 | 617, 629 |  | 7 day week No holidays | 7299374 |
| 631 | 36900.37000.37100.40500.288100 | 10th flr-Window fixing | 0.12d | 2026-06-18 | 2026-06-18 | 618, 629 |  | 7 day week No holidays | 7299384 |
| 632 | 36900.37000.37100.40500.288200 | 10th flr-Railing Fixing | 0.12d | 2027-06-13 | 2027-06-13 | 619, 629 |  | 7 day week No holidays | 7299394 |
| 633 | 36900.37000.37100.40500.288300 | 10th flr-Internal painting - putty / primer application | 0.12d | 2027-09-21 | 2027-09-21 | 620, 629 |  | 7 day week No holidays | 7299404 |
| 634 | 36900.37000.37100.40500.288400 | 10th flr-Flat electrical wiring | 0.12d | 2026-06-29 | 2026-06-29 | 621, 630 |  | 7 day week No holidays | 7299414 |
| 635 | 36900.37000.37100.40500.288500 | 10th flr-Internal painting | 0.12d | 2026-07-10 | 2026-07-10 | 622, 634 |  | 7 day week No holidays | 7299424 |
| 636 | 36900.37000.37100.40500.288600 | 10th flr-Internal shutter fixing | 0.12d | 2027-10-02 | 2027-10-02 | 623, 633 |  | 7 day week No holidays | 7299434 |
| 637 | 36900.37000.37100.40600 | **11th Floor** | 694.62d | 2025-11-17 | 2027-10-13 |  | start no earlier than 2025-11-17 | 7 day week No holidays | 7285024 |
| 638 | 36900.37000.37100.40600.288700 | 11th flr-Gypsum Plaster | 10d | 2025-11-17 | 2025-11-27 | 625FS+0.25d |  | 7 day week No holidays | 7299444 |
| 639 | 36900.37000.37100.40600.288800 | 11th flr-Kitchen Platform | 11d | 2025-11-27 | 2025-12-08 | 626, 638 |  | 7 day week No holidays | 7299454 |
| 640 | 36900.37000.37100.40600.288900 | 11th flr-Toilet dado & flooring | 11d | 2026-05-27 | 2026-06-07 | 166, 627 |  | 7 day week No holidays | 7299464 |
| 641 | 36900.37000.37100.40600.289000 | 11th flr-Fire sprinkler pipe | 11d | 2025-11-27 | 2025-12-08 | 628, 638 |  | 7 day week No holidays | 7299474 |
| 642 | 36900.37000.37100.40600.289100 | 11th flr-Flat flooring | 11d | 2026-06-07 | 2026-06-18 | 629, 640 |  | 7 day week No holidays | 7299484 |
| 643 | 36900.37000.37100.40600.289200 | 11th flr-Main door fixing & frame fixing | 96d | 2026-06-18 | 2026-09-22 | 630, 642 |  | 7 day week No holidays | 7299494 |
| 644 | 36900.37000.37100.40600.289300 | 11th flr-Window fixing | 11d | 2026-06-18 | 2026-06-29 | 631, 642 |  | 7 day week No holidays | 7299504 |
| 645 | 36900.37000.37100.40600.289400 | 11th flr-Railing Fixing | 11d | 2027-06-13 | 2027-06-24 | 632, 642 |  | 7 day week No holidays | 7299514 |
| 646 | 36900.37000.37100.40600.289500 | 11th flr-Internal painting - putty / primer application | 11d | 2027-09-21 | 2027-10-02 | 633, 642 |  | 7 day week No holidays | 7299524 |
| 647 | 36900.37000.37100.40600.289600 | 11th flr-Flat electrical wiring | 86d | 2026-09-22 | 2026-12-17 | 634, 643 |  | 7 day week No holidays | 7299534 |
| 648 | 36900.37000.37100.40600.289700 | 11th flr-Internal painting | 11d | 2026-12-17 | 2026-12-28 | 635, 647 |  | 7 day week No holidays | 7299544 |
| 649 | 36900.37000.37100.40600.289800 | 11th flr-Internal shutter fixing | 11d | 2027-10-02 | 2027-10-13 | 636, 646 |  | 7 day week No holidays | 7299554 |

| ID | WBS | Task | Duration | Start | Finish | Predecessors | Complete | Constraint | Calendar | Unique_Task_ID |
| --- | --- | --- | --- | --- | --- | --- | --- | --- | --- | --- |
| 650 | 36900.37000.37100.40300 | **12th Floor** | 1267.12d | 2024-04-28 | 2027-10-17 |  | 59% | start no earlier than 2024-04-28 | 7 day week No holidays | 7285034 |
| 651 | 36900.37000.37100.40300.105600 | 12th flr-Gypsum Plaster | 8d | 2024-04-28 | 2024-12-18 | 638FS-228.5d | 100% | start no earlier than 2024-04-28 | 7 day week No holidays | 7299564 |
| 652 | 36900.37000.37100.40300.105700 | 12th flr-Kitchen Platform | 38d | 2025-06-06 | 2025-07-13 | 639FS-40d, 651 | 100% | start no earlier than 2025-06-06 | 7 day week No holidays | 7299574 |
| 653 | 36900.37000.37100.40300.105800 | 12th flr-Toilet dado & flooring | 11d | 2024-11-10 | 2024-11-21 | 640, 172 | 100% | start no earlier than 2024-11-10 | 7 day week No holidays | 7299584 |
| 654 | 36900.37000.37100.40300.289900 | 12th flr-Fire sprinkler pipe | 11d | 2025-12-08 | 2025-12-19 | 641, 651FS+23d |  |  | 7 day week No holidays | 7299594 |
| 655 | 36900.37000.37100.40300.105900 | 12th flr-Flat flooring | 11d | 2024-09-27 | 2024-11-22 | 642FS-55.12d, 653FS-55.12d | 100% | start no earlier than 2024-09-27 | 7 day week No holidays | 7299604 |
| 656 | 36900.37000.37100.40300.106000 | 12th flr-Main door fixing & frame fixing | 11d | 2024-12-24 | 2026-09-26 | 643FS-637.12d | 63% |  | 7 day week No holidays | 7299614 |
| 657 | 36900.37000.37100.40300.106100 | 12th flr-Window fixing | 9d | 2025-05-30 | 2025-06-29 | 609FS-70d | 100% | start no earlier than 2025-05-30 | 7 day week No holidays | 7299624 |
| 658 | 36900.37000.37100.40300.290000 | 12th flr-Railing Fixing | 11d | 2027-06-24 | 2027-07-05 | 645, 655 |  |  | 7 day week No holidays | 7299634 |
| 659 | 36900.37000.37100.40300.290100 | 12th flr-Internal painting - putty / primer application | 11d | 2026-08-07 | 2026-08-18 | 656FS-50d |  |  | 7 day week No holidays | 7299644 |
| 660 | 36900.37000.37100.40300.106200 | 12th flr-Flat electrical wiring | 11d | 2024-12-30 | 2026-12-27 | 647FS-717.12d, 656FS-717.12d | 9% |  | 7 day week No holidays | 7299654 |
| 661 | 36900.37000.37100.40300.290200 | 12th flr-Internal painting | 11d | 2026-12-28 | 2027-01-08 | 648, 660 |  |  | 7 day week No holidays | 7299664 |
| 662 | 36900.37000.37100.40300.106300 | 12th flr-Internal shutter fixing | 11d | 2024-12-24 | 2027-10-17 | 649FS-1023.12d, 659FS-1023.12d | 63% |  | 7 day week No holidays | 7299674 |
| 663 | 36900.37000.37100.40700 | **13th Floor** | 1112.38d | 2024-09-29 | 2027-10-17 |  | 59% | start no earlier than 2024-09-29 | 7 day week No holidays | 7285554 |
| 664 | 36900.37000.37100.40700.106400 | 13th flr-Gypsum Plaster | 10d | 2024-12-11 | 2024-12-20 | 651FS+23.25d | 100% | start no earlier than 2024-12-11 | 7 day week No holidays | 7299684 |
| 665 | 36900.37000.37100.40700.106500 | 13th flr-Kitchen Platform | 7d | 2025-07-03 | 2025-07-10 | 652FS+208.75d, 664FS-10d | 100% | start no earlier than 2025-07-03 | 7 day week No holidays | 7299694 |
| 666 | 36900.37000.37100.40700.290300 | 13th flr-Toilet dado & flooring | 0.12d | 2026-05-16 | 2026-05-16 | 178, 653 |  |  | 7 day week No holidays | 7299704 |
| 667 | 36900.37000.37100.40700.106600 | 13th flr-Fire sprinkler pipe | 0.12d | 2024-09-29 | 2024-09-29 | 654FS+17d, 664 | 100% | start no earlier than 2024-09-29 | 7 day week No holidays | 7299714 |
| 668 | 36900.37000.37100.40700.290400 | 13th flr-Flat flooring | 0.12d | 2026-05-16 | 2026-05-16 | 666, 655 |  |  | 7 day week No holidays | 7299724 |
| 669 | 36900.37000.37100.40700.290500 | 13th flr-Main door fixing & frame fixing | 10d | 2026-06-14 | 2026-06-24 | 668FS+29d |  |  | 7 day week No holidays | 7299734 |
| 670 | 36900.37000.37100.40700.106700 | 13th flr-Window fixing | 56d | 2025-04-13 | 2025-10-13 | 657FS-77d | 100% | start no earlier than 2025-04-13 | 7 day week No holidays | 7299744 |
| 671 | 36900.37000.37100.40700.290600 | 13th flr-Railing Fixing | 0.12d | 2027-07-05 | 2027-07-05 | 658, 668 |  |  | 7 day week No holidays | 7299754 |
| 672 | 36900.37000.37100.40700.290700 | 13th flr-Internal painting - putty / primer application | 0.12d | 2026-08-18 | 2026-08-18 | 659 |  |  | 7 day week No holidays | 7299764 |
| 673 | 36900.37000.37100.40700.290800 | 13th flr-Flat electrical wiring | 40d | 2026-12-27 | 2027-02-05 | 660, 669 |  |  | 7 day week No holidays | 7299774 |
| 674 | 36900.37000.37100.40700.290900 | 13th flr-Internal painting | 0.12d | 2027-02-05 | 2027-02-05 | 661, 673 |  |  | 7 day week No holidays | 7299784 |
| 675 | 36900.37000.37100.40700.291000 | 13th flr-Internal shutter fixing | 0.12d | 2027-10-17 | 2027-10-17 | 662, 672 |  |  | 7 day week No holidays | 7299794 |

| ID | WBS | Task | Duration | Start | Finish | Predecessors | Complete | Constraint | Calendar | Unique_Task_ID |
| --- | --- | --- | --- | --- | --- | --- | --- | --- | --- | --- |
| 676 | 36900.37000.37100.40800 | **14th Floor** | 1190d | 2024-07-25 | 2027-10-28 |  | 55% | start no earlier than 2024-07-25 | 7 day week No holidays | 7285914 |
| 677 | 36900.37000.37100.40800.106800 | 14th flr-Gypsum Plaster | 10d | 2024-07-25 | 2024-08-04 | 664FS+0.25d | 100% | start no earlier than 2024-07-25 | 7 day week No holidays | 7299804 |
| 678 | 36900.37000.37100.40800.106900 | 14th flr-Kitchen Platform | 7d | 2025-07-31 | 2025-10-16 | 665FS-210d, 677FS-5d | 42% | start no earlier than 2025-07-31 | 7 day week No holidays | 7299814 |
| 679 | 36900.37000.37100.40800.107000 | 14th flr-Toilet dado & flooring | 11d | 2024-11-25 | 2024-12-20 | 184FS+47d, 666FS-19.12d | 100% | start no earlier than 2024-11-25 | 7 day week No holidays | 7299824 |
| 680 | 36900.37000.37100.40800.291100 | 14th flr-Fire sprinkler pipe | 11d | 2025-10-13 | 2025-10-23 | 667, 677FS+29d |  |  | 7 day week No holidays | 7299834 |
| 681 | 36900.37000.37100.40800.107100 | 14th flr-Flat flooring | 11d | 2024-11-25 | 2024-12-20 | 668FS-19.12d, 679FS-19.12d | 100% | start no earlier than 2024-11-25 | 7 day week No holidays | 7299844 |
| 682 | 36900.37000.37100.40800.291200 | 14th flr-Main door fixing & frame fixing | 11d | 2026-06-24 | 2026-07-05 | 669, 681 |  |  | 7 day week No holidays | 7299854 |
| 683 | 36900.37000.37100.40800.107200 | 14th flr-Window fixing | 64d | 2025-04-05 | 2025-10-15 | 681, 670FS-192d | 100% | start no earlier than 2025-04-05 | 7 day week No holidays | 7299864 |
| 684 | 36900.37000.37100.40800.291300 | 14th flr-Railing Fixing | 11d | 2027-07-05 | 2027-07-16 | 671, 681 |  |  | 7 day week No holidays | 7299874 |
| 685 | 36900.37000.37100.40800.291400 | 14th flr-Internal painting - putty / primer application | 11d | 2026-09-07 | 2026-09-18 | 672FS+20d |  |  | 7 day week No holidays | 7299884 |
| 686 | 36900.37000.37100.40800.291500 | 14th flr-Flat electrical wiring | 11d | 2027-02-05 | 2027-02-16 | 673, 682 |  |  | 7 day week No holidays | 7299894 |
| 687 | 36900.37000.37100.40800.291600 | 14th flr-Internal painting | 11d | 2027-02-16 | 2027-02-27 | 674, 686 |  |  | 7 day week No holidays | 7299904 |
| 688 | 36900.37000.37100.40800.291700 | 14th flr-Internal shutter fixing | 11d | 2027-10-17 | 2027-10-28 | 675, 685 |  |  | 7 day week No holidays | 7299914 |
| 689 | 36900.37000.37100.40900 | **15th Floor** | 1187.25d | 2024-08-08 | 2027-11-08 |  | 61% | start no earlier than 2024-08-08 | 7 day week No holidays | 7285904 |
| 690 | 36900.37000.37100.40900.107300 | 15th flr-Gypsum Plaster | 1d | 2024-08-08 | 2024-08-08 | 677SS+0.25d | 100% | start no earlier than 2024-08-08 | 7 day week No holidays | 7299924 |
| 691 | 36900.37000.37100.40900.107400 | 15th flr-Kitchen Platform | 10d | 2025-07-21 | 2025-10-17 | 678FS-165d, 690FS-5d | 50% |  | 7 day week No holidays | 7299934 |
| 692 | 36900.37000.37100.40900.107500 | 15th flr-Toilet dado & flooring | 11d | 2024-12-09 | 2024-12-20 | 190FS+22d, 679 | 100% | start no earlier than 2024-12-09 | 7 day week No holidays | 7299944 |
| 693 | 36900.37000.37100.40900.107600 | 15th flr-Fire sprinkler pipe | 11d | 2024-08-12 | 2024-08-23 | 680, 690 | 100% | start no earlier than 2024-08-12 | 7 day week No holidays | 7299954 |
| 694 | 36900.37000.37100.40900.107700 | 15th flr-Flat flooring | 11d | 2024-12-09 | 2024-12-20 | 681, 692 | 100% | start no earlier than 2024-12-09 | 7 day week No holidays | 7299964 |
| 695 | 36900.37000.37100.40900.291800 | 15th flr-Main door fixing & frame fixing | 11d | 2026-07-05 | 2026-07-16 | 682, 694 |  |  | 7 day week No holidays | 7299974 |
| 696 | 36900.37000.37100.40900.107800 | 15th flr-Window fixing | 73d | 2025-03-27 | 2025-10-17 | 694, 683FS-203d | 100% | start no earlier than 2025-03-27 | 7 day week No holidays | 7299984 |
| 697 | 36900.37000.37100.40900.291900 | 15th flr-Railing Fixing | 11d | 2027-07-16 | 2027-07-27 | 684, 694 |  |  | 7 day week No holidays | 7299994 |
| 698 | 36900.37000.37100.40900.292000 | 15th flr-Internal painting - putty / primer application | 11d | 2026-09-18 | 2026-09-29 | 685, 694 |  |  | 7 day week No holidays | 7300004 |
| 699 | 36900.37000.37100.40900.292100 | 15th flr-Flat electrical wiring | 11d | 2027-02-16 | 2027-02-27 | 686, 695 |  |  | 7 day week No holidays | 7300014 |
| 700 | 36900.37000.37100.40900.292200 | 15th flr-Internal painting | 11d | 2027-02-27 | 2027-03-10 | 687, 699 |  |  | 7 day week No holidays | 7300024 |
| 701 | 36900.37000.37100.40900.292300 | 15th flr-Internal shutter fixing | 11d | 2027-10-28 | 2027-11-08 | 688, 698 |  |  | 7 day week No holidays | 7300034 |

| ID | WBS | Task | Duration | Start | Finish | Predecessors | Complete | Constraint | Calendar | Unique_Task_ID |
| --- | --- | --- | --- | --- | --- | --- | --- | --- | --- | --- |
| 702 | 36900.37000.37100.41000 | **16th Floor** | 1174d | 2024-09-01 | 2027-11-19 |  | 69% | start no earlier than 2024-09-01 | 7 day week No holidays | 7285894 |
| 703 | 36900.37000.37100.41000.107900 | 16th flr-Gypsum Plaster | 20d | 2024-09-01 | 2024-09-21 | 690FS+0.25d | 100% | start no earlier than 2024-09-01 | 7 day week No holidays | 7300044 |
| 704 | 36900.37000.37100.41000.108000 | 16th flr-Kitchen Platform | 8d | 2025-07-26 | 2025-08-07 | 703FS-9d, 691FS-10d | 100% | start no earlier than 2025-07-26 | 7 day week No holidays | 7300054 |
| 705 | 36900.37000.37100.41000.108100 | 16th flr-Toilet dado & flooring | 14d | 2024-12-09 | 2024-12-22 | 692 | 100% | start no earlier than 2024-12-09 | 7 day week No holidays | 7300064 |
| 706 | 36900.37000.37100.41000.108200 | 16th flr-Fire sprinkler pipe | 18d | 2024-09-12 | 2024-09-29 | 693, 703FS-9d | 100% | start no earlier than 2024-09-12 | 7 day week No holidays | 7300074 |
| 707 | 36900.37000.37100.41000.108300 | 16th flr-Flat flooring | 11d | 2024-12-15 | 2024-12-25 | 694, 705 | 100% | start no earlier than 2024-12-15 | 7 day week No holidays | 7300084 |
| 708 | 36900.37000.37100.41000.292400 | 16th flr-Main door fixing & frame fixing | 11d | 2026-07-16 | 2026-07-27 | 695, 707 |  |  | 7 day week No holidays | 7300094 |
| 709 | 36900.37000.37100.41000.108400 | 16th flr-Window fixing | 80d | 2025-03-20 | 2025-10-19 | 707, 696FS-212d | 98% | start no earlier than 2025-03-20 | 7 day week No holidays | 7300104 |
| 710 | 36900.37000.37100.41000.292500 | 16th flr-Railing Fixing | 11d | 2027-07-27 | 2027-08-07 | 697, 707 |  |  | 7 day week No holidays | 7300114 |
| 711 | 36900.37000.37100.41000.292600 | 16th flr-Internal painting - putty / primer application | 11d | 2026-09-29 | 2026-10-10 | 698, 707 |  |  | 7 day week No holidays | 7300124 |
| 712 | 36900.37000.37100.41000.292700 | 16th flr-Flat electrical wiring | 11d | 2027-02-27 | 2027-03-10 | 699, 708 |  |  | 7 day week No holidays | 7300134 |
| 713 | 36900.37000.37100.41000.292800 | 16th flr-Internal painting | 11d | 2027-03-10 | 2027-03-21 | 700, 712 |  |  | 7 day week No holidays | 7300144 |
| 714 | 36900.37000.37100.41000.292900 | 16th flr-Internal shutter fixing | 11d | 2027-11-08 | 2027-11-19 | 701, 711 |  |  | 7 day week No holidays | 7300154 |
| 715 | 36900.37000.37100.41100 | **17th Floor** | 1208.5d | 2024-08-08 | 2027-11-30 |  | 60% | start no earlier than 2024-08-08 | 7 day week No holidays | 7285824 |
| 716 | 36900.37000.37100.41100.108500 | 17th flr-Gypsum Plaster | 15d | 2024-08-08 | 2024-08-23 | 703FS-9d | 100% | start no earlier than 2024-08-08 | 7 day week No holidays | 7300164 |
| 717 | 36900.37000.37100.41100.293000 | 17th flr-Kitchen Platform | 15d | 2025-10-13 | 2025-10-27 | 704, 716FS-0.75d |  |  | 7 day week No holidays | 7300174 |
| 718 | 36900.37000.37100.41100.108600 | 17th flr-Toilet dado & flooring | 23d | 2025-01-09 | 2025-10-18 | 705FS-277d | 75% |  | 7 day week No holidays | 7300184 |
| 719 | 36900.37000.37100.41100.108700 | 17th flr-Fire sprinkler pipe | 11d | 2024-09-09 | 2024-09-20 | 706, 716FS-0.75d | 100% | start no earlier than 2024-09-09 | 7 day week No holidays | 7300194 |
| 720 | 36900.37000.37100.41100.108800 | 17th flr-Flat flooring | 11d | 2025-01-15 | 2025-10-15 | 707FS+0.25d, 718FS-302.75d | 74% | start no earlier than 2025-01-15 | 7 day week No holidays | 7300204 |
| 721 | 36900.37000.37100.41100.293100 | 17th flr-Main door fixing & frame fixing | 11d | 2026-07-27 | 2026-08-07 | 708, 720 |  |  | 7 day week No holidays | 7300214 |
| 722 | 36900.37000.37100.41100.108900 | 17th flr-Window fixing | 89d | 2025-03-11 | 2025-10-21 | 709FS-223d, 720FS-223d | 98% | start no earlier than 2025-03-11 | 7 day week No holidays | 7300224 |
| 723 | 36900.37000.37100.41100.293200 | 17th flr-Railing Fixing | 11d | 2027-08-07 | 2027-08-18 | 710, 720 |  |  | 7 day week No holidays | 7300234 |
| 724 | 36900.37000.37100.41100.293300 | 17th flr-Internal painting - putty / primer application | 11d | 2026-10-10 | 2026-10-21 | 711, 720 |  |  | 7 day week No holidays | 7300244 |
| 725 | 36900.37000.37100.41100.293400 | 17th flr-Flat electrical wiring | 11d | 2027-03-10 | 2027-03-21 | 712, 721 |  |  | 7 day week No holidays | 7300254 |
| 726 | 36900.37000.37100.41100.293500 | 17th flr-Internal painting | 11d | 2027-03-21 | 2027-04-01 | 713, 725 |  |  | 7 day week No holidays | 7300264 |
| 727 | 36900.37000.37100.41100.293600 | 17th flr-Internal shutter fixing | 11d | 2027-11-19 | 2027-11-30 | 714, 724 |  |  | 7 day week No holidays | 7300274 |

| ID | WBS | Task | Duration | Start | Finish | Predecessors | Complete | Constraint | Calendar | Unique_Task_ID |
| --- | --- | --- | --- | --- | --- | --- | --- | --- | --- | --- |
| 728 | 36900.37000.37100.41200 | **18th Floor** | 1197.25d | 2024-08-31 | 2027-12-11 |  | 71% | start no earlier than 2024-08-31 | 7 day week No holidays | 7285814 |
| 729 | 36900.37000.37100.41200.109000 | 18th flr-Gypsum Plaster | 20d | 2024-08-31 | 2024-09-19 | 716FS-0.5d | 100% | start no earlier than 2024-08-31 | 7 day week No holidays | 7300284 |
| 730 | 36900.37000.37100.41200.293700 | 18th flr-Kitchen Platform | 15d | 2025-10-28 | 2025-11-11 | 717, 729FS-3d |  |  | 7 day week No holidays | 7300294 |
| 731 | 36900.37000.37100.41200.109100 | 18th flr-Toilet dado & flooring | 33d | 2024-12-29 | 2025-01-30 | 208FS+0.25d, 718FS-40d | 100% | start no earlier than 2024-12-29 | 7 day week No holidays | 7300304 |
| 732 | 36900.37000.37100.41200.109200 | 18th flr-Fire sprinkler pipe | 11d | 2024-09-09 | 2024-09-20 | 719FS-4d, 729FS-3d | 100% | start no earlier than 2024-09-09 | 7 day week No holidays | 7300314 |
| 733 | 36900.37000.37100.41200.109300 | 18th flr-Flat flooring | 52d | 2024-12-12 | 2025-10-17 | 720FS-307.75d, 731FS-308d | 96% |  | 7 day week No holidays | 7300324 |
| 734 | 36900.37000.37100.41200.293800 | 18th flr-Main door fixing & frame fixing | 11d | 2026-08-07 | 2026-08-18 | 721, 733 |  |  | 7 day week No holidays | 7300334 |
| 735 | 36900.37000.37100.41200.109400 | 18th flr-Window fixing | 99d | 2025-02-27 | 2025-10-22 | 722FS-237d, 733FS-237d | 100% | start no earlier than 2025-02-27 | 7 day week No holidays | 7300344 |
| 736 | 36900.37000.37100.41200.293900 | 18th flr-Railing Fixing | 11d | 2027-08-18 | 2027-08-29 | 723, 733 |  |  | 7 day week No holidays | 7300354 |
| 737 | 36900.37000.37100.41200.294000 | 18th flr-Internal painting - putty / primer application | 11d | 2026-10-21 | 2026-11-01 | 724, 733 |  |  | 7 day week No holidays | 7300364 |
| 738 | 36900.37000.37100.41200.294100 | 18th flr-Flat electrical wiring | 11d | 2027-03-21 | 2027-04-01 | 725, 734 |  |  | 7 day week No holidays | 7300374 |
| 739 | 36900.37000.37100.41200.294200 | 18th flr-Internal painting | 11d | 2027-04-01 | 2027-04-12 | 726, 738 |  |  | 7 day week No holidays | 7300384 |
| 740 | 36900.37000.37100.41200.294300 | 18th flr-Internal shutter fixing | 11d | 2027-11-30 | 2027-12-11 | 727, 737 |  |  | 7 day week No holidays | 7300394 |
| 741 | 36900.37000.37100.41300 | **19th Floor** | 1201d | 2024-09-07 | 2027-12-22 |  | 75% | start no earlier than 2024-09-07 | 7 day week No holidays | 7285804 |
| 742 | 36900.37000.37100.41300.109500 | 19th flr-Gypsum Plaster | 18d | 2024-09-07 | 2024-09-25 | 729FS-2.75d | 100% | start no earlier than 2024-09-07 | 7 day week No holidays | 7300404 |
| 743 | 36900.37000.37100.41300.109600 | 19th flr-Kitchen Platform | 45d | 2025-08-25 | 2025-11-19 | 730FS-79d, 742 | 82% |  | 7 day week No holidays | 7300414 |
| 744 | 36900.37000.37100.41300.109700 | 19th flr-Toilet dado & flooring | 15d | 2025-01-16 | 2025-01-30 | 214FS+0.25d, 731FS-0.25d | 100% | start no earlier than 2025-01-16 | 7 day week No holidays | 7300424 |
| 745 | 36900.37000.37100.41300.109800 | 19th flr-Fire sprinkler pipe | 1d | 2024-09-24 | 2024-09-25 | 732, 742 | 100% | start no earlier than 2024-09-24 | 7 day week No holidays | 7300434 |
| 746 | 36900.37000.37100.41300.109900 | 19th flr-Flat flooring | 59d | 2024-12-04 | 2025-10-18 | 733FS-318d, 744 | 98% |  | 7 day week No holidays | 7300444 |
| 747 | 36900.37000.37100.41300.294400 | 19th flr-Main door fixing & frame fixing | 11d | 2026-08-18 | 2026-08-29 | 734, 746 |  |  | 7 day week No holidays | 7300454 |
| 748 | 36900.37000.37100.41300.110000 | 19th flr-Window fixing | 102d | 2025-02-24 | 2025-10-23 | 746FS-241d, 735FS-241d | 100% | start no earlier than 2025-02-24 | 7 day week No holidays | 7300464 |
| 749 | 36900.37000.37100.41300.294500 | 19th flr-Railing Fixing | 11d | 2027-08-29 | 2027-09-09 | 736, 746 |  |  | 7 day week No holidays | 7300474 |
| 750 | 36900.37000.37100.41300.294600 | 19th flr-Internal painting - putty / primer application | 11d | 2026-11-01 | 2026-11-12 | 737, 746 |  |  | 7 day week No holidays | 7300484 |
| 751 | 36900.37000.37100.41300.294700 | 19th flr-Flat electrical wiring | 11d | 2027-04-01 | 2027-04-12 | 738, 747 |  |  | 7 day week No holidays | 7300494 |
| 752 | 36900.37000.37100.41300.294800 | 19th flr-Internal painting | 11d | 2027-04-12 | 2027-04-23 | 739, 751 |  |  | 7 day week No holidays | 7300504 |
| 753 | 36900.37000.37100.41300.294900 | 19th flr-Internal shutter fixing | 11d | 2027-12-11 | 2027-12-22 | 740, 750 |  |  | 7 day week No holidays | 7300514 |

| ID | WBS | Task | Duration | Start | Finish | Predecessors | Complete | Constraint | Calendar | Unique_Task_ID |
| --- | --- | --- | --- | --- | --- | --- | --- | --- | --- | --- |
| 754 | 36900.37000.37100.41400 | **20th Floor** | 1200.25d | 2024-09-19 | 2028-01-02 |  | 70% | start no earlier than 2024-09-19 | 7 day week No holidays | 7285724 |
| 755 | 36900.37000.37100.41400.110100 | 20th flr-Gypsum Plaster | 11d | 2024-09-19 | 2024-09-29 | 742FS+0.25d | 100% | start no earlier than 2024-09-19 | 7 day week No holidays | 7300524 |
| 756 | 36900.37000.37100.41400.110200 | 20th flr-Kitchen Platform | 61d | 2025-08-05 | 2025-11-23 | 743FS-107d, 755FS-6d | 93% |  | 7 day week No holidays | 7300534 |
| 757 | 36900.37000.37100.41400.110300 | 20th flr-Toilet dado & flooring | 10d | 2025-01-15 | 2025-01-25 | 220FS+20d, 744 | 100% | start no earlier than 2025-01-15 | 7 day week No holidays | 7300544 |
| 758 | 36900.37000.37100.41400.110400 | 20th flr-Fire sprinkler pipe | 15d | 2024-10-31 | 2024-11-14 | 745, 755FS-6d | 100% | start no earlier than 2024-10-31 | 7 day week No holidays | 7300554 |
| 759 | 36900.37000.37100.41400.110500 | 20th flr-Flat flooring | 50d | 2024-12-13 | 2025-11-06 | 746FS-314d, 757FS-10d | 50% |  | 7 day week No holidays | 7300564 |
| 760 | 36900.37000.37100.41400.295000 | 20th flr-Main door fixing & frame fixing | 11d | 2026-08-29 | 2026-09-09 | 747, 759FS+58d |  |  | 7 day week No holidays | 7300574 |
| 761 | 36900.37000.37100.41400.110600 | 20th flr-Window fixing | 112d | 2025-02-16 | 2026-01-04 | 759FS-264d, 748FS-322d | 99% |  | 7 day week No holidays | 7300584 |
| 762 | 36900.37000.37100.41400.295100 | 20th flr-Railing Fixing | 11d | 2027-09-09 | 2027-09-20 | 749, 759FS+58d |  |  | 7 day week No holidays | 7300594 |
| 763 | 36900.37000.37100.41400.295200 | 20th flr-Internal painting - putty / primer application | 11d | 2026-11-12 | 2026-11-23 | 750, 759FS+58d |  |  | 7 day week No holidays | 7300604 |
| 764 | 36900.37000.37100.41400.295300 | 20th flr-Flat electrical wiring | 11d | 2027-04-12 | 2027-04-23 | 751, 760 |  |  | 7 day week No holidays | 7300614 |
| 765 | 36900.37000.37100.41400.295400 | 20th flr-Internal painting | 11d | 2027-04-23 | 2027-05-04 | 752, 764 |  |  | 7 day week No holidays | 7300624 |
| 766 | 36900.37000.37100.41400.295500 | 20th flr-Internal shutter fixing | 11d | 2027-12-22 | 2028-01-02 | 753, 763 |  |  | 7 day week No holidays | 7300634 |
| 767 | 36900.37000.37100.41500 | **21th Floor** | 1255d | 2024-08-06 | 2028-01-13 |  | 54% | start no earlier than 2024-08-06 | 7 day week No holidays | 7285714 |
| 768 | 36900.37000.37100.41500.110700 | 21st flr-Gypsum Plaster | 20d | 2024-09-10 | 2024-09-29 | 755FS-5.75d | 100% | start no earlier than 2024-09-10 | 7 day week No holidays | 7300644 |
| 769 | 36900.37000.37100.41500.110800 | 21st flr-Kitchen Platform | 66d | 2025-08-08 | 2025-12-05 | 756FS-108d, 768FS+10d | 81% |  | 7 day week No holidays | 7300654 |
| 770 | 36900.37000.37100.41500.110900 | 21st flr-Toilet dado & flooring | 20d | 2025-03-18 | 2025-10-19 | 757 | 65% | start no earlier than 2025-03-18 | 7 day week No holidays | 7300664 |
| 771 | 36900.37000.37100.41500.111000 | 21st flr-Fire sprinkler pipe | 11d | 2024-08-06 | 2024-08-17 | 758, 768FS+10d | 100% | start no earlier than 2024-08-06 | 7 day week No holidays | 7300674 |
| 772 | 36900.37000.37100.41500.111100 | 21st flr-Flat flooring | 7d | 2025-03-30 | 2025-10-16 | 770FS-206d | 42% | start no earlier than 2025-03-30 | 7 day week No holidays | 7300684 |
| 773 | 36900.37000.37100.41500.295600 | 21st flr-Main door fixing & frame fixing | 11d | 2026-09-09 | 2026-09-20 | 760, 772 |  |  | 7 day week No holidays | 7300694 |
| 774 | 36900.37000.37100.41500.111200 | 21st flr-Window fixing | 9d | 2025-08-30 | 2026-01-07 | 761FS-128d, 772FS-128d | 77% | start no earlier than 2025-08-30 | 7 day week No holidays | 7300704 |
| 775 | 36900.37000.37100.41500.295700 | 21st flr-Railing Fixing | 11d | 2027-09-20 | 2027-10-01 | 762, 772 |  |  | 7 day week No holidays | 7300714 |
| 776 | 36900.37000.37100.41500.295800 | 21st flr-Internal painting - putty / primer application | 11d | 2026-11-23 | 2026-12-04 | 763, 772 |  |  | 7 day week No holidays | 7300724 |
| 777 | 36900.37000.37100.41500.295900 | 21st flr-Flat electrical wiring | 11d | 2027-04-23 | 2027-05-04 | 764, 773 |  |  | 7 day week No holidays | 7300734 |
| 778 | 36900.37000.37100.41500.296000 | 21st flr-Internal painting | 11d | 2027-05-04 | 2027-05-15 | 765, 777 |  |  | 7 day week No holidays | 7300744 |
| 779 | 36900.37000.37100.41500.296100 | 21st flr-Internal shutter fixing | 11d | 2028-01-02 | 2028-01-13 | 766, 776 |  |  | 7 day week No holidays | 7300754 |

| ID | WBS | Task | Duration | Start | Finish | Predecessors | Complete | Constraint | Calendar | Unique_Task_ID |
| --- | --- | --- | --- | --- | --- | --- | --- | --- | --- | --- |
| 780 | 36900.37000.37100.41600 | **22nd Floor** | 1228.25d | 2024-09-13 | 2028-01-24 |  | 76% | start no earlier than 2024-09-13 | 7 day week No holidays | 7285704 |
| 781 | 36900.37000.37100.41600.111300 | 22nd flr-Gypsum Plaster | 17d | 2024-09-13 | 2024-09-29 | 768FS+10.25d | 100% | start no earlier than 2024-09-13 | 7 day week No holidays | 7300764 |
| 782 | 36900.37000.37100.41600.111400 | 22nd flr-Kitchen Platform | 10d | 2025-07-21 | 2025-07-30 | 769, 781 | 100% | start no earlier than 2025-07-21 | 7 day week No holidays | 7300774 |
| 783 | 36900.37000.37100.41600.111500 | 22nd flr-Toilet dado & flooring | 93d | 2024-10-30 | 2025-01-30 | 232, 770FS-279d | 100% | start no earlier than 2024-10-30 | 7 day week No holidays | 7300784 |
| 784 | 36900.37000.37100.41600.111600 | 22nd flr-Fire sprinkler pipe | 29d | 2024-10-31 | 2024-11-28 | 771FS-5d, 781 | 100% | start no earlier than 2024-10-31 | 7 day week No holidays | 7300794 |
| 785 | 36900.37000.37100.41600.111700 | 22nd flr-Flat flooring | 70d | 2024-11-25 | 2025-07-11 | 783FS-131d | 100% | start no earlier than 2024-11-25 | 7 day week No holidays | 7300804 |
| 786 | 36900.37000.37100.41600.296200 | 22nd flr-Main door fixing & frame fixing | 11d | 2026-09-20 | 2026-10-01 | 773, 785 |  |  | 7 day week No holidays | 7300814 |
| 787 | 36900.37000.37100.41600.111800 | 22nd flr-Window fixing | 6d | 2025-09-29 | 2026-01-10 | 774FS-101d, 785 | 50% |  | 7 day week No holidays | 7300824 |
| 788 | 36900.37000.37100.41600.296300 | 22nd flr-Railing Fixing | 11d | 2027-10-01 | 2027-10-12 | 775, 785 |  |  | 7 day week No holidays | 7300834 |
| 789 | 36900.37000.37100.41600.296400 | 22nd flr-Internal painting - putty / primer application | 11d | 2026-12-04 | 2026-12-15 | 776, 785 |  |  | 7 day week No holidays | 7300844 |
| 790 | 36900.37000.37100.41600.296500 | 22nd flr-Flat electrical wiring | 11d | 2027-05-04 | 2027-05-15 | 777, 786 |  |  | 7 day week No holidays | 7300854 |
| 791 | 36900.37000.37100.41600.296600 | 22nd flr-Internal painting | 11d | 2027-05-15 | 2027-05-26 | 778, 790 |  |  | 7 day week No holidays | 7300864 |
| 792 | 36900.37000.37100.41600.296700 | 22nd flr-Internal shutter fixing | 11d | 2028-01-13 | 2028-01-24 | 779, 789 |  |  | 7 day week No holidays | 7300874 |
| 793 | 36900.37000.37100.41700 | **23rd Floor** | 1191.25d | 2024-10-31 | 2028-02-04 |  | 76% | start no earlier than 2024-10-31 | 7 day week No holidays | 7285684 |
| 794 | 36900.37000.37100.41700.111900 | 23rd flr-Gypsum Plaster | 22d | 2024-10-31 | 2024-11-21 | 781FS+0.25d | 100% | start no earlier than 2024-10-31 | 7 day week No holidays | 7300884 |
| 795 | 36900.37000.37100.41700.112000 | 23rd flr-Kitchen Platform | 37d | 2025-08-02 | 2025-10-28 | 782, 794 | 100% | start no earlier than 2025-08-02 | 7 day week No holidays | 7300894 |
| 796 | 36900.37000.37100.41700.112100 | 23rd flr-Toilet dado & flooring | 40d | 2024-11-08 | 2024-12-17 | 238, 783 | 100% | start no earlier than 2024-11-08 | 7 day week No holidays | 7300904 |
| 797 | 36900.37000.37100.41700.296800 | 23rd flr-Toilet dado & flooring | 38d | 2024-12-18 | 2025-01-30 | 796 | 100% |  | Indian Calendar | 7300905 |
| 798 | 36900.37000.37100.41700.112200 | 23rd flr-Fire sprinkler pipe | 21d | 2024-11-22 | 2024-12-12 | 784, 794 | 100% | start no earlier than 2024-11-22 | 7 day week No holidays | 7300914 |
| 799 | 36900.37000.37100.41700.112300 | 23rd flr-Flat flooring | 62d | 2024-12-05 | 2025-07-12 | 796, 785FS-218d | 100% | start no earlier than 2024-12-05 | 7 day week No holidays | 7300924 |
| 800 | 36900.37000.37100.41700.296900 | 23rd flr-Main door fixing & frame fixing | 11d | 2026-10-01 | 2026-10-12 | 786, 799 |  |  | 7 day week No holidays | 7300934 |
| 801 | 36900.37000.37100.41700.112400 | 23rd flr-Window fixing | 6d | 2025-09-30 | 2026-01-14 | 787FS-103d, 799 | 33% |  | 7 day week No holidays | 7300944 |
| 802 | 36900.37000.37100.41700.297000 | 23rd flr-Railing Fixing | 11d | 2027-10-12 | 2027-10-23 | 788, 799 |  |  | 7 day week No holidays | 7300954 |
| 803 | 36900.37000.37100.41700.297100 | 23rd flr-Internal painting - putty / primer application | 11d | 2026-12-15 | 2026-12-26 | 789, 799 |  |  | 7 day week No holidays | 7300964 |
| 804 | 36900.37000.37100.41700.297200 | 23rd flr-Flat electrical wiring | 11d | 2027-05-15 | 2027-05-26 | 790, 800 |  |  | 7 day week No holidays | 7300974 |
| 805 | 36900.37000.37100.41700.297300 | 23rd flr-Internal painting | 11d | 2027-05-26 | 2027-06-06 | 791, 804 |  |  | 7 day week No holidays | 7300984 |
| 806 | 36900.37000.37100.41700.297400 | 23rd flr-Internal shutter fixing | 11d | 2028-01-24 | 2028-02-04 | 792, 803 |  |  | 7 day week No holidays | 7300994 |

| ID | WBS | Task | Duration | Start | Finish | Predecessors | Complete | Constraint | Calendar | Unique_Task_ID |
| --- | --- | --- | --- | --- | --- | --- | --- | --- | --- | --- |
| 807 | 36900.37000.37100.41800 | **24th Floor** | 1179.25d | 2024-11-23 | 2028-02-15 |  | 62% | start no earlier than 2024-11-23 | 7 day week No holidays | 7285674 |
| 808 | 36900.37000.37100.41800.112500 | 24th flr-Gypsum Plaster | 10d | 2024-11-30 | 2024-12-09 | 794FS+0.25d | 100% | start no earlier than 2024-11-30 | 7 day week No holidays | 7301004 |
| 809 | 36900.37000.37100.41800.112600 | 24th flr-Kitchen Platform | 34d | 2025-06-24 | 2025-07-27 | 795FS-82d, 808 | 100% | start no earlier than 2025-06-24 | 7 day week No holidays | 7301014 |
| 810 | 36900.37000.37100.41800.112700 | 24th flr-Toilet dado & flooring | 1d | 2025-01-30 | 2025-01-30 | 244, 796 | 100% | start no earlier than 2025-01-30 | 7 day week No holidays | 7301024 |
| 811 | 36900.37000.37100.41800.112800 | 24th flr-Fire sprinkler pipe | 4d | 2024-12-16 | 2024-12-19 | 798, 808 | 100% | start no earlier than 2024-12-16 | 7 day week No holidays | 7301034 |
| 812 | 36900.37000.37100.41800.112900 | 24th flr-Flat flooring | 74d | 2024-11-23 | 2025-07-11 | 810 | 100% | start no earlier than 2024-11-23 | 7 day week No holidays | 7301044 |
| 813 | 36900.37000.37100.41800.297500 | 24th flr-Main door fixing & frame fixing | 12d | 2026-10-12 | 2026-10-24 | 800, 812 |  |  | 7 day week No holidays | 7301054 |
| 814 | 36900.37000.37100.41800.113000 | 24th flr-Window fixing | 9d | 2025-09-30 | 2025-10-19 | 801FS-111d, 812FS-108d | 22% | start no earlier than 2025-09-30 | 7 day week No holidays | 7301064 |
| 815 | 36900.37000.37100.41800.297600 | 24th flr-Railing Fixing | 11d | 2027-10-23 | 2027-11-03 | 802, 812 |  |  | 7 day week No holidays | 7301074 |
| 816 | 36900.37000.37100.41800.297700 | 24th flr-Internal painting - putty / primer application | 11d | 2026-12-26 | 2027-01-06 | 803, 812 |  |  | 7 day week No holidays | 7301084 |
| 817 | 36900.37000.37100.41800.297800 | 24th flr-Flat electrical wiring | 11d | 2027-05-26 | 2027-06-06 | 804, 813 |  |  | 7 day week No holidays | 7301094 |
| 818 | 36900.37000.37100.41800.297900 | 24th flr-Internal painting | 11d | 2027-06-06 | 2027-06-17 | 805, 817 |  |  | 7 day week No holidays | 7301104 |
| 819 | 36900.37000.37100.41800.298000 | 24th flr-Internal shutter fixing | 11d | 2028-02-04 | 2028-02-15 | 806, 816 |  |  | 7 day week No holidays | 7301114 |
| 820 | 36900.37000.37100.41900 | **25th Floor** | 1167.25d | 2024-12-16 | 2028-02-26 |  | 59% | start no earlier than 2024-12-16 | 7 day week No holidays | 7285664 |
| 821 | 36900.37000.37100.41900.113100 | 25th flr-Gypsum Plaster | 4d | 2024-12-23 | 2024-12-26 | 808FS+0.25d | 100% | start no earlier than 2024-12-23 | 7 day week No holidays | 7301124 |
| 822 | 36900.37000.37100.41900.113200 | 25th flr-Kitchen Platform | 10d | 2025-07-15 | 2025-07-24 | 809, 821 | 100% | start no earlier than 2025-07-15 | 7 day week No holidays | 7301134 |
| 823 | 36900.37000.37100.41900.113300 | 25th flr-Toilet dado & flooring | 25d | 2025-01-06 | 2025-01-30 | 250, 810 | 100% | start no earlier than 2025-01-06 | 7 day week No holidays | 7301144 |
| 824 | 36900.37000.37100.41900.113400 | 25th flr-Fire sprinkler pipe | 11d | 2024-12-16 | 2024-12-26 | 811, 821 | 100% | start no earlier than 2024-12-16 | 7 day week No holidays | 7301154 |
| 825 | 36900.37000.37100.41900.113500 | 25th flr-Flat flooring | 17d | 2025-03-18 | 2025-10-13 | 823 | 94% | start no earlier than 2025-03-18 | 7 day week No holidays | 7301164 |
| 826 | 36900.37000.37100.41900.298100 | 25th flr-Main door fixing & frame fixing | 11d | 2026-10-24 | 2026-11-04 | 813, 825 |  |  | 7 day week No holidays | 7301174 |
| 827 | 36900.37000.37100.41900.113600 | 25th flr-Window fixing | 36d | 2025-09-09 | 2025-10-24 | 814FS-41d, 825FS-41d | 97% | start no earlier than 2025-09-09 | 7 day week No holidays | 7301184 |
| 828 | 36900.37000.37100.41900.298200 | 25th flr-Railing Fixing | 11d | 2027-11-03 | 2027-11-14 | 815, 825 |  |  | 7 day week No holidays | 7301194 |
| 829 | 36900.37000.37100.41900.298300 | 25th flr-Internal painting - putty / primer application | 11d | 2027-01-06 | 2027-01-17 | 816, 825 |  |  | 7 day week No holidays | 7301204 |
| 830 | 36900.37000.37100.41900.298400 | 25th flr-Flat electrical wiring | 11d | 2027-06-06 | 2027-06-17 | 817, 826 |  |  | 7 day week No holidays | 7301214 |
| 831 | 36900.37000.37100.41900.298500 | 25th flr-Internal painting | 11d | 2027-06-17 | 2027-06-28 | 818, 830 |  |  | 7 day week No holidays | 7301224 |
| 832 | 36900.37000.37100.41900.298600 | 25th flr-Internal shutter fixing | 11d | 2028-02-15 | 2028-02-26 | 819, 829 |  |  | 7 day week No holidays | 7301234 |

| ID | WBS | Task | Duration | Start | Finish | Predecessors | Complete | Constraint | Calendar | Unique_Task_ID |
| --- | --- | --- | --- | --- | --- | --- | --- | --- | --- | --- |
| 833 | 36900.37000.37100.42000 | **26th Floor** | 1218.5d | 2024-11-05 | 2028-03-08 |  | 63% | start no earlier than 2024-11-05 | 7 day week No holidays | 7285634 |
| 834 | 36900.37000.37100.42000.113700 | 26th flr-Gypsum Plaster | 16d | 2024-11-05 | 2024-11-21 | 821FS+0.25d | 100% | start no earlier than 2024-11-05 | 7 day week No holidays | 7301244 |
| 835 | 36900.37000.37100.42000.113800 | 26th flr-Kitchen Platform | 10d | 2025-07-16 | 2025-07-25 | 822, 834 | 100% | start no earlier than 2025-07-16 | 7 day week No holidays | 7301254 |
| 836 | 36900.37000.37100.42000.113900 | 26th flr-Toilet dado & flooring | 16d | 2025-01-15 | 2025-01-30 | 256, 823 | 100% | start no earlier than 2025-01-15 | 7 day week No holidays | 7301264 |
| 837 | 36900.37000.37100.42000.114000 | 26th flr-Fire sprinkler pipe | 11d | 2024-12-16 | 2024-12-26 | 824, 834 | 100% | start no earlier than 2024-12-16 | 7 day week No holidays | 7301274 |
| 838 | 36900.37000.37100.42000.114100 | 26th flr-Flat flooring | 23d | 2025-03-13 | 2025-07-23 | 836, 825FS-131d | 100% | start no earlier than 2025-03-13 | 7 day week No holidays | 7301284 |
| 839 | 36900.37000.37100.42000.298700 | 26th flr-Main door fixing & frame fixing | 11d | 2026-11-04 | 2026-11-15 | 826, 838 |  |  | 7 day week No holidays | 7301294 |
| 840 | 36900.37000.37100.42000.114200 | 26th flr-Window fixing | 44d | 2025-09-06 | 2025-10-31 | 838, 827FS-49d | 95% | start no earlier than 2025-09-06 | 7 day week No holidays | 7301304 |
| 841 | 36900.37000.37100.42000.298800 | 26th flr-Railing Fixing | 11d | 2027-11-14 | 2027-11-25 | 828, 838 |  |  | 7 day week No holidays | 7301314 |
| 842 | 36900.37000.37100.42000.298900 | 26th flr-Internal painting - putty / primer application | 11d | 2027-01-17 | 2027-01-28 | 829, 838 |  |  | 7 day week No holidays | 7301324 |
| 843 | 36900.37000.37100.42000.299000 | 26th flr-Flat electrical wiring | 11d | 2027-06-17 | 2027-06-28 | 830, 839 |  |  | 7 day week No holidays | 7301334 |
| 844 | 36900.37000.37100.42000.299100 | 26th flr-Internal painting | 11d | 2027-06-28 | 2027-07-09 | 831, 843 |  |  | 7 day week No holidays | 7301344 |
| 845 | 36900.37000.37100.42000.299200 | 26th flr-Internal shutter fixing | 11d | 2028-02-26 | 2028-03-08 | 832, 842 |  |  | 7 day week No holidays | 7301354 |
| 846 | 36900.37000.37100.42100 | **27th Floor** | 1189.25d | 2024-12-16 | 2028-03-19 |  | 63% | start no earlier than 2024-12-16 | 7 day week No holidays | 7285624 |
| 847 | 36900.37000.37100.42100.114300 | 27th flr-Gypsum Plaster | 5d | 2024-12-16 | 2024-12-20 | 834FS+0.25d | 100% | start no earlier than 2024-12-16 | 7 day week No holidays | 7301364 |
| 848 | 36900.37000.37100.42100.114400 | 27th flr-Kitchen Platform | 10d | 2025-09-08 | 2025-09-17 | 835, 847 | 100% | start no earlier than 2025-09-08 | 7 day week No holidays | 7301374 |
| 849 | 36900.37000.37100.42100.114500 | 27th flr-Toilet dado & flooring | 26d | 2025-01-06 | 2025-03-24 | 262, 836 | 100% | start no earlier than 2025-01-06 | 7 day week No holidays | 7301384 |
| 850 | 36900.37000.37100.42100.114600 | 27th flr-Fire sprinkler pipe | 11d | 2025-01-01 | 2025-01-11 | 837, 847 | 100% | start no earlier than 2025-01-01 | 7 day week No holidays | 7301394 |
| 851 | 36900.37000.37100.42100.114700 | 27th flr-Flat flooring | 41d | 2025-02-23 | 2025-10-14 | 849, 838FS-151d | 95% | start no earlier than 2025-02-23 | 7 day week No holidays | 7301404 |
| 852 | 36900.37000.37100.42100.299300 | 27th flr-Main door fixing & frame fixing | 11d | 2026-11-15 | 2026-11-26 | 839, 851 |  |  | 7 day week No holidays | 7301414 |
| 853 | 36900.37000.37100.42100.114800 | 27th flr-Window fixing | 44d | 2025-09-07 | 2025-11-08 | 840FS-55d, 851FS-55d | 86% | start no earlier than 2025-09-07 | 7 day week No holidays | 7301424 |
| 854 | 36900.37000.37100.42100.299400 | 27th flr-Railing Fixing | 11d | 2027-11-25 | 2027-12-06 | 841, 851 |  |  | 7 day week No holidays | 7301434 |
| 855 | 36900.37000.37100.42100.299500 | 27th flr-Internal painting - putty / primer application | 11d | 2027-01-28 | 2027-02-08 | 842, 851 |  |  | 7 day week No holidays | 7301444 |
| 856 | 36900.37000.37100.42100.299600 | 27th flr-Flat electrical wiring | 11d | 2027-06-28 | 2027-07-09 | 843, 852 |  |  | 7 day week No holidays | 7301454 |
| 857 | 36900.37000.37100.42100.299700 | 27th flr-Internal painting | 11d | 2027-07-09 | 2027-07-20 | 844, 856 |  |  | 7 day week No holidays | 7301464 |
| 858 | 36900.37000.37100.42100.299800 | 27th flr-Internal shutter fixing | 11d | 2028-03-08 | 2028-03-19 | 845, 855 |  |  | 7 day week No holidays | 7301474 |

| ID | WBS | Task | Duration | Start | Finish | Predecessors | Complete | Constraint | Calendar | Unique_Task_ID |
| --- | --- | --- | --- | --- | --- | --- | --- | --- | --- | --- |
| 859 | 36900.37000.37100.42200 | **28th Floor** | 1199.25d | 2024-12-17 | 2028-03-30 |  | 73% | start no earlier than 2024-12-17 | 7 day week No holidays | 7285614 |
| 860 | 36900.37000.37100.42200.114900 | 28th flr-Gypsum Plaster | 45d | 2024-12-17 | 2025-01-30 | 847FS+12d | 100% | start no earlier than 2024-12-17 | 7 day week No holidays | 7301484 |
| 861 | 36900.37000.37100.42200.115000 | 28th flr-Kitchen Platform | 9d | 2025-10-23 | 2025-10-31 | 848, 860FS+27d | 100% | start no earlier than 2025-10-23 | 7 day week No holidays | 7301494 |
| 862 | 36900.37000.37100.42200.115100 | 28th flr-Toilet dado & flooring | 8d | 2025-03-19 | 2025-03-26 | 268FS-15.75d, 849FS-1.5d | 100% | start no earlier than 2025-03-19 | 7 day week No holidays | 7301504 |
| 863 | 36900.37000.37100.42200.115200 | 28th flr-Fire sprinkler pipe | 12d | 2025-01-20 | 2025-10-13 | 850FS-1d | 91% | start no earlier than 2025-01-20 | 7 day week No holidays | 7301514 |
| 864 | 36900.37000.37100.42200.115300 | 28th flr-Flat flooring | 83d | 2025-02-17 | 2025-07-10 | 862, 851FS-104d | 100% | start no earlier than 2025-02-17 | 7 day week No holidays | 7301524 |
| 865 | 36900.37000.37100.42200.299900 | 28th flr-Main door fixing & frame fixing | 11d | 2026-11-26 | 2026-12-07 | 852, 864 |  |  | 7 day week No holidays | 7301534 |
| 866 | 36900.37000.37100.42200.115400 | 28th flr-Window fixing | 54d | 2025-08-28 | 2025-11-16 | 864, 853FS-73d | 88% | start no earlier than 2025-08-28 | 7 day week No holidays | 7301544 |
| 867 | 36900.37000.37100.42200.300000 | 28th flr-Railing Fixing | 11d | 2027-12-06 | 2027-12-17 | 854, 864 |  |  | 7 day week No holidays | 7301554 |
| 868 | 36900.37000.37100.42200.300100 | 28th flr-Internal painting - putty / primer application | 11d | 2027-02-08 | 2027-02-19 | 855, 864 |  |  | 7 day week No holidays | 7301564 |
| 869 | 36900.37000.37100.42200.300200 | 28th flr-Flat electrical wiring | 11d | 2027-07-09 | 2027-07-20 | 856, 865 |  |  | 7 day week No holidays | 7301574 |
| 870 | 36900.37000.37100.42200.300300 | 28th flr-Internal painting | 11d | 2027-07-20 | 2027-07-31 | 857, 869 |  |  | 7 day week No holidays | 7301584 |
| 871 | 36900.37000.37100.42200.300400 | 28th flr-Internal shutter fixing | 11d | 2028-03-19 | 2028-03-30 | 858, 868 |  |  | 7 day week No holidays | 7301594 |
| 872 | 36900.37000.37100.42300 | **29th Floor** | 1188.25d | 2025-01-08 | 2028-04-10 |  | 25% | start no earlier than 2025-01-08 | 7 day week No holidays | 7285494 |
| 873 | 36900.37000.37100.42300.300500 | 29th flr-Gypsum Plaster | 17d | 2025-10-13 | 2025-10-29 | 860 |  |  | 7 day week No holidays | 7301604 |
| 874 | 36900.37000.37100.42300.115500 | 29th flr-Kitchen Platform | 6d | 2025-10-25 | 2025-10-30 | 873FS+80d, 861 | 100% | start no earlier than 2025-10-25 | 7 day week No holidays | 7301614 |
| 875 | 36900.37000.37100.42300.115600 | 29th flr-Toilet dado & flooring | 8d | 2025-03-23 | 2025-03-30 | 274, 862 | 100% | start no earlier than 2025-03-23 | 7 day week No holidays | 7301624 |
| 876 | 36900.37000.37100.42300.115700 | 29th flr-Fire sprinkler pipe | 10d | 2025-01-08 | 2025-10-13 | 863FS-280d | 90% |  | 7 day week No holidays | 7301634 |
| 877 | 36900.37000.37100.42300.115800 | 29th flr-Flat flooring | 11d | 2025-04-17 | 2025-10-17 | 875, 864FS-102d | 54% | start no earlier than 2025-04-17 | 7 day week No holidays | 7301644 |
| 878 | 36900.37000.37100.42300.300600 | 29th flr-Main door fixing & frame fixing | 11d | 2026-12-17 | 2026-12-28 | 865FS+10d, 877 |  |  | 7 day week No holidays | 7301654 |
| 879 | 36900.37000.37100.42300.115900 | 29th flr-Window fixing | 9d | 2025-09-11 | 2025-11-23 | 866FS-67d, 877FS-67d | 33% | start no earlier than 2025-09-11 | 7 day week No holidays | 7301664 |
| 880 | 36900.37000.37100.42300.300700 | 29th flr-Railing Fixing | 11d | 2027-12-17 | 2027-12-28 | 867, 877 |  |  | 7 day week No holidays | 7301674 |
| 881 | 36900.37000.37100.42300.300800 | 29th flr-Internal painting - putty / primer application | 11d | 2027-02-19 | 2027-03-02 | 868, 877 |  |  | 7 day week No holidays | 7301684 |
| 882 | 36900.37000.37100.42300.300900 | 29th flr-Flat electrical wiring | 11d | 2027-07-20 | 2027-07-31 | 869, 878 |  |  | 7 day week No holidays | 7301694 |
| 883 | 36900.37000.37100.42300.301000 | 29th flr-Internal painting | 11d | 2027-07-31 | 2027-08-11 | 870, 882 |  |  | 7 day week No holidays | 7301704 |
| 884 | 36900.37000.37100.42300.301100 | 29th flr-Internal shutter fixing | 11d | 2028-03-30 | 2028-04-10 | 871, 881 |  |  | 7 day week No holidays | 7301714 |

| ID | WBS | Task | Duration | Start | Finish | Predecessors | Complete | Constraint | Calendar | Unique_Task_ID |
| --- | --- | --- | --- | --- | --- | --- | --- | --- | --- | --- |
| 885 | 36900.37000.37100.42400 | **30th Floor** | 1194.25d | 2025-01-13 | 2028-04-21 |  | 63% | start no earlier than 2025-01-13 | 7 day week No holidays | 7285484 |
| 886 | 36900.37000.37100.42400.116000 | 30th flr-Gypsum Plaster | 27d | 2025-01-13 | 2025-03-28 | 873FS+15d | 100% | start no earlier than 2025-01-13 | 7 day week No holidays | 7301724 |
| 887 | 36900.37000.37100.42400.116100 | 30th flr-Kitchen Platform | 10d | 2025-10-09 | 2025-10-18 | 874, 886 | 100% | start no earlier than 2025-10-09 | 7 day week No holidays | 7301734 |
| 888 | 36900.37000.37100.42400.116200 | 30th flr-Toilet dado & flooring | 11d | 2025-03-20 | 2025-03-30 | 280, 875 | 100% | start no earlier than 2025-03-20 | 7 day week No holidays | 7301744 |
| 889 | 36900.37000.37100.42400.116300 | 30th flr-Fire sprinkler pipe | 20d | 2025-01-17 | 2025-11-08 | 876FS-270d | 70% |  | 7 day week No holidays | 7301754 |
| 890 | 36900.37000.37100.42400.116400 | 30th flr-Flat flooring | 11d | 2025-04-24 | 2025-05-10 | 888, 877FS-12d | 100% | start no earlier than 2025-04-24 | 7 day week No holidays | 7301764 |
| 891 | 36900.37000.37100.42400.301200 | 30th flr-Main door fixing & frame fixing | 11d | 2026-12-28 | 2027-01-08 | 878, 890 |  |  | 7 day week No holidays | 7301774 |
| 892 | 36900.37000.37100.42400.116500 | 30th flr-Window fixing | 73d | 2025-08-09 | 2025-12-01 | 879FS-107d, 890 | 89% |  | 7 day week No holidays | 7301784 |
| 893 | 36900.37000.37100.42400.301300 | 30th flr-Railing Fixing | 11d | 2027-12-28 | 2028-01-08 | 880, 890 |  |  | 7 day week No holidays | 7301794 |
| 894 | 36900.37000.37100.42400.301400 | 30th flr-Internal painting - putty / primer application | 11d | 2027-03-02 | 2027-03-13 | 881, 890 |  |  | 7 day week No holidays | 7301804 |
| 895 | 36900.37000.37100.42400.301500 | 30th flr-Flat electrical wiring | 11d | 2027-07-31 | 2027-08-11 | 882, 891 |  |  | 7 day week No holidays | 7301814 |
| 896 | 36900.37000.37100.42400.301600 | 30th flr-Internal painting | 11d | 2027-08-11 | 2027-08-22 | 883, 895 |  |  | 7 day week No holidays | 7301824 |
| 897 | 36900.37000.37100.42400.301700 | 30th flr-Internal shutter fixing | 11d | 2028-04-10 | 2028-04-21 | 884, 894 |  |  | 7 day week No holidays | 7301834 |
| 898 | 36900.37000.37100.42500 | **31st Floor** | 1229.25d | 2024-12-20 | 2028-05-02 |  | 66% | start no earlier than 2024-12-20 | 7 day week No holidays | 7285434 |
| 899 | 36900.37000.37100.42500.116600 | 31st flr-Gypsum Plaster | 47d | 2024-12-20 | 2025-03-29 | 886FS-94.25d | 100% | start no earlier than 2024-12-20 | 7 day week No holidays | 7301844 |
| 900 | 36900.37000.37100.42500.116700 | 31st flr-Kitchen Platform | 5d | 2025-11-09 | 2025-11-13 | 887, 899 | 100% | start no earlier than 2025-11-09 | 7 day week No holidays | 7301854 |
| 901 | 36900.37000.37100.42500.116800 | 31st flr-Toilet dado & flooring | 15d | 2025-04-01 | 2025-04-15 | 286, 888 | 100% | start no earlier than 2025-04-01 | 7 day week No holidays | 7301864 |
| 902 | 36900.37000.37100.42500.116900 | 31st flr-Fire sprinkler pipe | 1d | 2025-01-30 | 2025-01-30 | 889 | 100% | start no earlier than 2025-01-30 | 7 day week No holidays | 7301874 |
| 903 | 36900.37000.37100.42500.117000 | 31st flr-Flat flooring | 25d | 2025-04-21 | 2025-10-13 | 890FS-2d, 901FS-2d | 96% | start no earlier than 2025-04-21 | 7 day week No holidays | 7301884 |
| 904 | 36900.37000.37100.42500.301800 | 31st flr-Main door fixing & frame fixing | 11d | 2027-01-08 | 2027-01-19 | 891, 903FS+14d |  |  | 7 day week No holidays | 7301894 |
| 905 | 36900.37000.37100.42500.117100 | 31st flr-Window fixing | 68d | 2025-08-14 | 2025-12-09 | 892FS-110d, 903FS-96d | 88% |  | 7 day week No holidays | 7301904 |
| 906 | 36900.37000.37100.42500.301900 | 31st flr-Railing Fixing | 11d | 2028-01-08 | 2028-01-19 | 893, 903FS+14d |  |  | 7 day week No holidays | 7301914 |
| 907 | 36900.37000.37100.42500.302000 | 31st flr-Internal painting - putty / primer application | 11d | 2027-03-13 | 2027-03-24 | 894, 903FS+14d |  |  | 7 day week No holidays | 7301924 |
| 908 | 36900.37000.37100.42500.302100 | 31st flr-Flat electrical wiring | 11d | 2027-08-11 | 2027-08-22 | 895, 904 |  |  | 7 day week No holidays | 7301934 |
| 909 | 36900.37000.37100.42500.302200 | 31st flr-Internal painting | 11d | 2027-08-22 | 2027-09-02 | 896, 908 |  |  | 7 day week No holidays | 7301944 |
| 910 | 36900.37000.37100.42500.302300 | 31st flr-Internal shutter fixing | 11d | 2028-04-21 | 2028-05-02 | 897, 907 |  |  | 7 day week No holidays | 7301954 |

| ID | WBS | Task | Duration | Start | Finish | Predecessors | Complete | Constraint | Calendar | Unique_Task_ID |
| --- | --- | --- | --- | --- | --- | --- | --- | --- | --- | --- |
| 911 | 36900.37000.37100.42600 | **32nd Floor** | 1209.25d | 2025-01-20 | 2028-05-13 |  | 45% | start no earlier than 2025-01-20 | 7 day week No holidays | 7285424 |
| 912 | 36900.37000.37100.42600.117200 | 32nd flr-Gypsum Plaster | 18d | 2025-04-01 | 2025-05-10 | 899FS+0.25d | 100% | start no earlier than 2025-04-01 | 7 day week No holidays | 7301964 |
| 913 | 36900.37000.37100.42600.302400 | 32nd flr-Kitchen Platform | 10d | 2026-02-17 | 2026-02-26 | 900, 912 |  |  | 7 day week No holidays | 7301974 |
| 914 | 36900.37000.37100.42600.117300 | 32nd flr-Toilet dado & flooring | 18d | 2025-04-05 | 2025-04-22 | 292, 901FS-3d | 100% | start no earlier than 2025-04-05 | 7 day week No holidays | 7301984 |
| 915 | 36900.37000.37100.42600.117400 | 32nd flr-Fire sprinkler pipe | 11d | 2025-01-20 | 2025-01-30 | 902 | 100% | start no earlier than 2025-01-20 | 7 day week No holidays | 7301994 |
| 916 | 36900.37000.37100.42600.117500 | 32nd flr-Flat flooring | 25d | 2025-04-22 | 2025-09-08 | 903FS-190d, 914 | 100% | start no earlier than 2025-04-22 | 7 day week No holidays | 7302004 |
| 917 | 36900.37000.37100.42600.302500 | 32nd flr-Main door fixing & frame fixing | 11d | 2027-01-19 | 2027-01-30 | 904, 916 |  |  | 7 day week No holidays | 7302014 |
| 918 | 36900.37000.37100.42600.302600 | 32nd flr-Window fixing | 9d | 2025-12-20 | 2025-12-28 | 905FS+10d, 916FS+6d |  |  | 7 day week No holidays | 7302024 |
| 919 | 36900.37000.37100.42600.302700 | 32nd flr-Railing Fixing | 11d | 2028-01-19 | 2028-01-30 | 906, 916 |  |  | 7 day week No holidays | 7302034 |
| 920 | 36900.37000.37100.42600.302800 | 32nd flr-Internal painting - putty / primer application | 11d | 2027-03-24 | 2027-04-04 | 907, 916FS+10d |  |  | 7 day week No holidays | 7302044 |
| 921 | 36900.37000.37100.42600.302900 | 32nd flr-Flat electrical wiring | 11d | 2027-08-22 | 2027-09-02 | 908, 917 |  |  | 7 day week No holidays | 7302054 |
| 922 | 36900.37000.37100.42600.303000 | 32nd flr-Internal painting | 11d | 2027-09-02 | 2027-09-13 | 909, 921 |  |  | 7 day week No holidays | 7302064 |
| 923 | 36900.37000.37100.42600.303100 | 32nd flr-Internal shutter fixing | 11d | 2028-05-02 | 2028-05-13 | 910, 920 |  |  | 7 day week No holidays | 7302074 |
| 924 | 36900.37000.37100.42700 | **33rd Floor** | 1220.25d | 2025-01-20 | 2028-05-24 |  | 60% | start no earlier than 2025-01-20 | 7 day week No holidays | 7285414 |
| 925 | 36900.37000.37100.42700.117600 | 33rd flr-Gypsum Plaster | 24d | 2025-04-25 | 2025-05-18 | 912FS+0.25d | 100% | start no earlier than 2025-04-25 | 7 day week No holidays | 7302084 |
| 926 | 36900.37000.37100.42700.117700 | 33rd flr-Kitchen Platform | 37d | 2026-02-22 | 2026-03-30 | 913, 925FS+10d | 100% | start no earlier than 2026-02-22 | 7 day week No holidays | 7302094 |
| 927 | 36900.37000.37100.42700.117800 | 33rd flr-Toilet dado & flooring | 10d | 2025-04-14 | 2025-05-30 | 298, 914 | 100% | start no earlier than 2025-04-14 | 7 day week No holidays | 7302104 |
| 928 | 36900.37000.37100.42700.117900 | 33rd flr-Fire sprinkler pipe | 11d | 2025-01-20 | 2025-01-30 | 915 | 100% | start no earlier than 2025-01-20 | 7 day week No holidays | 7302114 |
| 929 | 36900.37000.37100.42700.118000 | 33rd flr-Flat flooring | 30d | 2025-05-22 | 2025-09-09 | 927, 916FS-110d | 100% | start no earlier than 2025-05-22 | 7 day week No holidays | 7302124 |
| 930 | 36900.37000.37100.42700.303200 | 33rd flr-Main door fixing & frame fixing | 11d | 2027-02-19 | 2027-03-02 | 917FS+20d, 929 |  |  | 7 day week No holidays | 7302134 |
| 931 | 36900.37000.37100.42700.303300 | 33rd flr-Window fixing | 6d | 2025-12-29 | 2026-01-03 | 918, 929 |  |  | 7 day week No holidays | 7302144 |
| 932 | 36900.37000.37100.42700.303400 | 33rd flr-Railing Fixing | 11d | 2028-01-30 | 2028-02-10 | 919, 929 |  |  | 7 day week No holidays | 7302154 |
| 933 | 36900.37000.37100.42700.303500 | 33rd flr-Internal painting - putty / primer application | 11d | 2027-04-04 | 2027-04-15 | 920, 929 |  |  | 7 day week No holidays | 7302164 |
| 934 | 36900.37000.37100.42700.303600 | 33rd flr-Flat electrical wiring | 11d | 2027-09-02 | 2027-09-13 | 921, 930 |  |  | 7 day week No holidays | 7302174 |
| 935 | 36900.37000.37100.42700.303700 | 33rd flr-Internal painting | 11d | 2027-09-13 | 2027-09-24 | 922, 934 |  |  | 7 day week No holidays | 7302184 |
| 936 | 36900.37000.37100.42700.303800 | 33rd flr-Internal shutter fixing | 11d | 2028-05-13 | 2028-05-24 | 923, 933 |  |  | 7 day week No holidays | 7302194 |

| ID | WBS | Task | Duration | Start | Finish | Predecessors | Complete | Constraint | Calendar | Unique_Task_ID |
| --- | --- | --- | --- | --- | --- | --- | --- | --- | --- | --- |
| 937 | 36900.37000.37100.42800 | **34th Floor** | 1172.25d | 2025-03-20 | 2028-06-04 |  | 71% | start no earlier than 2025-03-20 | 7 day week No holidays | 7285404 |
| 938 | 36900.37000.37100.42800.118100 | 34th flr-Gypsum Plaster | 1d | 2025-04-29 | 2025-04-29 | 925FS+10.25d | 100% | start no earlier than 2025-04-29 | 7 day week No holidays | 7302204 |
| 939 | 36900.37000.37100.42800.118200 | 34th flr-Kitchen Platform | 152d | 2025-05-22 | 2025-10-29 | 938, 926FS-153d | 100% | start no earlier than 2025-05-22 | 7 day week No holidays | 7302214 |
| 940 | 36900.37000.37100.42800.118300 | 34th flr-Toilet dado & flooring | 10d | 2025-05-05 | 2025-06-13 | 304, 927FS-35d | 100% | start no earlier than 2025-05-05 | 7 day week No holidays | 7302224 |
| 941 | 36900.37000.37100.42800.118400 | 34th flr-Fire sprinkler pipe | 11d | 2025-03-20 | 2025-03-30 | 928, 938 | 100% | start no earlier than 2025-03-20 | 7 day week No holidays | 7302234 |
| 942 | 36900.37000.37100.42800.118500 | 34th flr-Flat flooring | 10d | 2025-05-26 | 2025-09-10 | 940FS-31d, 929FS-107d | 100% | start no earlier than 2025-05-26 | 7 day week No holidays | 7302244 |
| 943 | 36900.37000.37100.42800.303900 | 34th flr-Main door fixing & frame fixing | 11d | 2027-03-02 | 2027-03-13 | 930, 942 |  |  | 7 day week No holidays | 7302254 |
| 944 | 36900.37000.37100.42800.304000 | 34th flr-Window fixing | 9d | 2026-01-04 | 2026-01-12 | 931, 942 |  |  | 7 day week No holidays | 7302264 |
| 945 | 36900.37000.37100.42800.304100 | 34th flr-Railing Fixing | 11d | 2028-02-10 | 2028-02-21 | 932, 942 |  |  | 7 day week No holidays | 7302274 |
| 946 | 36900.37000.37100.42800.304200 | 34th flr-Internal painting - putty / primer application | 11d | 2027-04-15 | 2027-04-26 | 933, 942 |  |  | 7 day week No holidays | 7302284 |
| 947 | 36900.37000.37100.42800.304300 | 34th flr-Flat electrical wiring | 11d | 2027-09-13 | 2027-09-24 | 934, 943 |  |  | 7 day week No holidays | 7302294 |
| 948 | 36900.37000.37100.42800.304400 | 34th flr-Internal painting | 11d | 2027-09-24 | 2027-10-05 | 935, 947 |  |  | 7 day week No holidays | 7302304 |
| 949 | 36900.37000.37100.42800.304500 | 34th flr-Internal shutter fixing | 11d | 2028-05-24 | 2028-06-04 | 936, 946 |  |  | 7 day week No holidays | 7302314 |
| 950 | 36900.37000.37100.42900 | **35th Floor** | 1318.25d | 2024-11-05 | 2028-06-15 |  | 78% | start no earlier than 2024-11-05 | 7 day week No holidays | 7285244 |
| 951 | 36900.37000.37100.42900.118600 | 35th flr-Gypsum Plaster | 14d | 2025-03-23 | 2025-10-18 | 938FS-194d | 57% |  | 7 day week No holidays | 2499828 |
| 952 | 36900.37000.37100.42900.118700 | 35th flr-Kitchen Platform | 165d | 2025-05-06 | 2025-10-19 | 951FS-162d, 939FS-162d | 100% | start no earlier than 2025-05-06 | 7 day week No holidays | 2499838 |
| 953 | 36900.37000.37100.42900.118800 | 35th flr-Toilet dado & flooring | 36d | 2025-04-30 | 2025-06-29 | 310, 940FS-54d | 100% | start no earlier than 2025-04-30 | 7 day week No holidays | 2499848 |
| 954 | 36900.37000.37100.42900.118900 | 35th flr-Fire sprinkler pipe | 93d | 2024-11-05 | 2025-03-24 | 951FS-133.25d, 941FS-133.25d | 100% | start no earlier than 2024-11-05 | 7 day week No holidays | 2499858 |
| 955 | 36900.37000.37100.42900.119000 | 35th flr-Flat flooring | 11d | 2025-06-24 | 2025-10-16 | 953FS-2d, 942FS-79d | 63% | start no earlier than 2025-06-24 | 7 day week No holidays | 2499868 |
| 956 | 36900.37000.37100.42900.304600 | 35th flr-Main door fixing & frame fixing | 11d | 2027-03-13 | 2027-03-24 | 943, 955 |  |  | 7 day week No holidays | 7302324 |
| 957 | 36900.37000.37100.42900.304700 | 35th flr-Window fixing | 9d | 2026-01-13 | 2026-01-21 | 944, 955FS-114d |  |  | 7 day week No holidays | 7302334 |
| 958 | 36900.37000.37100.42900.304800 | 35th flr-Railing Fixing | 11d | 2028-02-21 | 2028-03-03 | 945, 955 |  |  | 7 day week No holidays | 7302344 |
| 959 | 36900.37000.37100.42900.304900 | 35th flr-Internal painting - putty / primer application | 11d | 2027-04-26 | 2027-05-07 | 946, 955 |  |  | 7 day week No holidays | 7302354 |
| 960 | 36900.37000.37100.42900.305000 | 35th flr-Flat electrical wiring | 11d | 2027-09-24 | 2027-10-05 | 947, 956 |  |  | 7 day week No holidays | 7302364 |
| 961 | 36900.37000.37100.42900.305100 | 35th flr-Internal painting | 11d | 2027-10-05 | 2027-10-16 | 948, 960 |  |  | 7 day week No holidays | 7302374 |
| 962 | 36900.37000.37100.42900.305200 | 35th flr-Internal shutter fixing | 11d | 2028-06-04 | 2028-06-15 | 949, 959 |  |  | 7 day week No holidays | 7302384 |

| ID | WBS | Task | Duration | Start | Finish | Predecessors | Complete | Constraint | Calendar | Unique_Task_ID |
| --- | --- | --- | --- | --- | --- | --- | --- | --- | --- | --- |
| 963 | 36900.37000.37100.43000 | **36th Floor** | 1182.25d | 2025-04-01 | 2028-06-26 |  | 75% | start no earlier than 2025-04-01 | 7 day week No holidays | 7285234 |
| 964 | 36900.37000.37100.43000.119100 | 36th flr-Gypsum Plaster | 8d | 2025-05-12 | 2025-07-28 | 951FS-76d | 100% | start no earlier than 2025-05-12 | 7 day week No holidays | 7302394 |
| 965 | 36900.37000.37100.43000.119200 | 36th flr-Kitchen Platform | 168d | 2025-05-06 | 2025-10-23 | 964, 952FS-163d | 100% | start no earlier than 2025-05-06 | 7 day week No holidays | 7302404 |
| 966 | 36900.37000.37100.43000.119300 | 36th flr-Toilet dado & flooring | 27d | 2025-07-03 | 2025-07-29 | 316, 953 | 100% | start no earlier than 2025-07-03 | 7 day week No holidays | 7302414 |
| 967 | 36900.37000.37100.43000.119400 | 36th flr-Fire sprinkler pipe | 11d | 2025-04-01 | 2025-06-25 | 954FS-3d, 964FS-175d | 100% | start no earlier than 2025-04-01 | 7 day week No holidays | 7302424 |
| 968 | 36900.37000.37100.43000.119500 | 36th flr-Flat flooring | 15d | 2025-07-19 | 2025-09-16 | 966, 955FS-59d | 100% | start no earlier than 2025-07-19 | 7 day week No holidays | 7302434 |
| 969 | 36900.37000.37100.43000.305300 | 36th flr-Main door fixing & frame fixing | 11d | 2027-03-24 | 2027-04-04 | 956, 968 |  |  | 7 day week No holidays | 7302444 |
| 970 | 36900.37000.37100.43000.305400 | 36th flr-Window fixing | 9d | 2026-01-22 | 2026-01-30 | 957, 968 |  |  | 7 day week No holidays | 7302454 |
| 971 | 36900.37000.37100.43000.305500 | 36th flr-Railing Fixing | 11d | 2028-03-03 | 2028-03-14 | 958, 968 |  |  | 7 day week No holidays | 7302464 |
| 972 | 36900.37000.37100.43000.305600 | 36th flr-Internal painting - putty / primer application | 11d | 2027-05-07 | 2027-05-18 | 959, 968 |  |  | 7 day week No holidays | 7302474 |
| 973 | 36900.37000.37100.43000.305700 | 36th flr-Flat electrical wiring | 11d | 2027-10-05 | 2027-10-16 | 960, 969 |  |  | 7 day week No holidays | 7302484 |
| 974 | 36900.37000.37100.43000.305800 | 36th flr-Internal painting | 11d | 2027-10-16 | 2027-10-27 | 961, 973 |  |  | 7 day week No holidays | 7302494 |
| 975 | 36900.37000.37100.43000.305900 | 36th flr-Internal shutter fixing | 11d | 2028-06-15 | 2028-06-26 | 962, 972 |  |  | 7 day week No holidays | 7302504 |
| 976 | 36900.37000.37100.43100 | **37th Floor** | 1152.25d | 2025-05-12 | 2028-07-07 |  | 54% | start no earlier than 2025-05-12 | 7 day week No holidays | 7285144 |
| 977 | 36900.37000.37100.43100.119600 | 37th flr-Gypsum Plaster | 11d | 2025-07-18 | 2025-07-29 | 964FS+0.25d | 100% | start no earlier than 2025-07-18 | 7 day week No holidays | 7302514 |
| 978 | 36900.37000.37100.43100.119700 | 37th flr-Kitchen Platform | 10d | 2026-03-30 | 2026-04-08 | 965, 977 | 70% | start no earlier than 2026-03-30 | 7 day week No holidays | 7302524 |
| 979 | 36900.37000.37100.43100.119800 | 37th flr-Toilet dado & flooring | 9d | 2025-07-22 | 2025-07-30 | 322, 966 | 100% | start no earlier than 2025-07-22 | 7 day week No holidays | 7302534 |
| 980 | 36900.37000.37100.43100.119900 | 37th flr-Fire sprinkler pipe | 11d | 2025-07-05 | 2025-07-26 | 967FS+10d, 977FS-12.5d | 100% | start no earlier than 2025-07-05 | 7 day week No holidays | 7302544 |
| 981 | 36900.37000.37100.43100.120000 | 37th flr-Flat flooring | 55d | 2025-05-12 | 2025-08-16 | 979FS-88d, 968FS-94d | 100% | start no earlier than 2025-05-12 | 7 day week No holidays | 7302554 |
| 982 | 36900.37000.37100.43100.306000 | 37th flr-Main door fixing & frame fixing | 11d | 2027-04-04 | 2027-04-15 | 969, 981 |  |  | 7 day week No holidays | 7302564 |
| 983 | 36900.37000.37100.43100.306100 | 37th flr-Window fixing | 9d | 2026-01-31 | 2026-02-08 | 970, 981 |  |  | 7 day week No holidays | 7302574 |
| 984 | 36900.37000.37100.43100.306200 | 37th flr-Railing Fixing | 11d | 2028-03-14 | 2028-03-25 | 971, 981 |  |  | 7 day week No holidays | 7302584 |
| 985 | 36900.37000.37100.43100.306300 | 37th flr-Internal painting - putty / primer application | 11d | 2027-05-18 | 2027-05-29 | 972, 981 |  |  | 7 day week No holidays | 7302594 |
| 986 | 36900.37000.37100.43100.306400 | 37th flr-Flat electrical wiring | 11d | 2027-10-16 | 2027-10-27 | 973, 982 |  |  | 7 day week No holidays | 7302604 |
| 987 | 36900.37000.37100.43100.306500 | 37th flr-Internal painting | 11d | 2027-10-27 | 2027-11-07 | 974, 986 |  |  | 7 day week No holidays | 7302614 |
| 988 | 36900.37000.37100.43100.306600 | 37th flr-Internal shutter fixing | 11d | 2028-06-26 | 2028-07-07 | 975, 985 |  |  | 7 day week No holidays | 7302624 |

| ID | WBS | Task | Duration | Start | Finish | Predecessors | Complete | Constraint | Calendar | Unique_Task_ID |
| --- | --- | --- | --- | --- | --- | --- | --- | --- | --- | --- |
| 989 | 36900.37000.37100.43200 | **38th Floor** | 1167.25d | 2025-05-08 | 2028-07-18 |  | 63% | start no earlier than 2025-05-08 | 7 day week No holidays | 7285754 |
| 990 | 36900.37000.37100.43200.120100 | 38th flr-Gypsum Plaster | 14d | 2025-07-17 | 2025-07-30 | 977FS-2d | 100% | start no earlier than 2025-07-17 | 7 day week No holidays | 7302634 |
| 991 | 36900.37000.37100.43200.120200 | 38th flr-Kitchen Platform | 3d | 2025-11-26 | 2025-11-28 | 978, 990 | 100% | start no earlier than 2025-11-26 | 7 day week No holidays | 7302644 |
| 992 | 36900.37000.37100.43200.120300 | 38th flr-Toilet dado & flooring | 31d | 2025-07-18 | 2025-08-17 | 328, 979 | 100% | start no earlier than 2025-07-18 | 7 day week No holidays | 7302654 |
| 993 | 36900.37000.37100.43200.120400 | 38th flr-Fire sprinkler pipe | 59d | 2025-05-08 | 2025-07-30 | 980FS-78d, 990FS-78d | 100% | start no earlier than 2025-05-08 | 7 day week No holidays | 7302664 |
| 994 | 36900.37000.37100.43200.120500 | 38th flr-Flat flooring | 30d | 2025-08-01 | 2025-08-30 | 981, 992 | 100% | start no earlier than 2025-08-01 | 7 day week No holidays | 7302674 |
| 995 | 36900.37000.37100.43200.306700 | 38th flr-Main door fixing & frame fixing | 15d | 2027-04-15 | 2027-04-30 | 982, 994 |  |  | 7 day week No holidays | 7302684 |
| 996 | 36900.37000.37100.43200.306800 | 38th flr-Window fixing | 9d | 2026-02-09 | 2026-02-17 | 983, 994 |  |  | 7 day week No holidays | 7302694 |
| 997 | 36900.37000.37100.43200.306900 | 38th flr-Railing Fixing | 11d | 2028-03-25 | 2028-04-05 | 984, 994 |  |  | 7 day week No holidays | 7302704 |
| 998 | 36900.37000.37100.43200.307000 | 38th flr-Internal painting - putty / primer application | 11d | 2027-05-29 | 2027-06-09 | 985, 994 |  |  | 7 day week No holidays | 7302714 |
| 999 | 36900.37000.37100.43200.307100 | 38th flr-Flat electrical wiring | 11d | 2027-10-27 | 2027-11-07 | 986, 995 |  |  | 7 day week No holidays | 7302724 |
| 1000 | 36900.37000.37100.43200.307200 | 38th flr-Internal painting | 11d | 2027-11-07 | 2027-11-18 | 987, 999 |  |  | 7 day week No holidays | 7302734 |
| 1001 | 36900.37000.37100.43200.307300 | 38th flr-Internal shutter fixing | 11d | 2028-07-07 | 2028-07-18 | 988, 998 |  |  | 7 day week No holidays | 7302744 |
| 1002 | 36900.37000.37100.43300 | **39th Floor** | 1105.25d | 2025-07-20 | 2028-07-29 |  | 53% | start no earlier than 2025-07-20 | 7 day week No holidays | 7285164 |
| 1003 | 36900.37000.37100.43300.120600 | 39th flr-Gypsum Plaster | 30d | 2025-08-01 | 2025-08-30 | 990FS-5d | 100% | start no earlier than 2025-08-01 | 7 day week No holidays | 7302754 |
| 1004 | 36900.37000.37100.43300.120700 | 39th flr-Kitchen Platform | 2d | 2025-11-27 | 2025-11-28 | 991, 1003 | 100% | start no earlier than 2025-11-27 | 7 day week No holidays | 7302764 |
| 1005 | 36900.37000.37100.43300.120800 | 39th flr-Toilet dado & flooring | 30d | 2025-08-01 | 2025-08-30 | 334, 992 | 100% | start no earlier than 2025-08-01 | 7 day week No holidays | 7302774 |
| 1006 | 36900.37000.37100.43300.120900 | 39th flr-Fire sprinkler pipe | 11d | 2025-07-20 | 2025-07-30 | 993, 1003 | 100% | start no earlier than 2025-07-20 | 7 day week No holidays | 7302784 |
| 1007 | 36900.37000.37100.43300.121000 | 39th flr-Flat flooring | 13d | 2025-09-08 | 2025-09-20 | 994, 1005 | 100% | start no earlier than 2025-09-08 | 7 day week No holidays | 7302794 |
| 1008 | 36900.37000.37100.43300.307400 | 39th flr-Main door fixing & frame fixing | 11d | 2027-04-30 | 2027-05-11 | 995, 1007 |  |  | 7 day week No holidays | 7302804 |
| 1009 | 36900.37000.37100.43300.307500 | 39th flr-Window fixing | 9d | 2026-02-26 | 2026-03-06 | 996FS+8d, 1007 |  |  | 7 day week No holidays | 7302814 |
| 1010 | 36900.37000.37100.43300.307600 | 39th flr-Railing Fixing | 11d | 2028-04-05 | 2028-04-16 | 997, 1007 |  |  | 7 day week No holidays | 7302824 |
| 1011 | 36900.37000.37100.43300.307700 | 39th flr-Internal painting - putty / primer application | 11d | 2027-06-09 | 2027-06-20 | 998, 1007 |  |  | 7 day week No holidays | 7302834 |
| 1012 | 36900.37000.37100.43300.307800 | 39th flr-Flat electrical wiring | 11d | 2027-11-07 | 2027-11-18 | 999, 1008 |  |  | 7 day week No holidays | 7302844 |
| 1013 | 36900.37000.37100.43300.307900 | 39th flr-Internal painting | 11d | 2027-11-18 | 2027-11-29 | 1000, 1012 |  |  | 7 day week No holidays | 7302854 |
| 1014 | 36900.37000.37100.43300.308000 | 39th flr-Internal shutter fixing | 11d | 2028-07-18 | 2028-07-29 | 1001, 1011 |  |  | 7 day week No holidays | 7302864 |

| ID | WBS | Task | Duration | Start | Finish | Predecessors | Complete | Constraint | Calendar | Unique_Task_ID |
| --- | --- | --- | --- | --- | --- | --- | --- | --- | --- | --- |
| 1015 | 36900.37000.37100.43400 | **40th Floor** | 1118.25d | 2025-07-18 | 2028-08-09 |  | 54% | start no earlier than 2025-07-18 | 7 day week No holidays | 7285644 |
| 1016 | 36900.37000.37100.43400.121100 | 40th flr-Gypsum Plaster | 22d | 2025-07-24 | 2025-10-16 | 1003FS-86d | 81% |  | 7 day week No holidays | 7302874 |
| 1017 | 36900.37000.37100.43400.308100 | 40th flr-Kitchen Platform | 11d | 2026-05-01 | 2026-05-11 | 1016, 1004 |  |  | 7 day week No holidays | 7302884 |
| 1018 | 36900.37000.37100.43400.121200 | 40th flr-Toilet dado & flooring | 42d | 2025-09-08 | 2025-11-10 | 1005, 340FS-39d | 100% | start no earlier than 2025-09-08 | 7 day week No holidays | 7302894 |
| 1019 | 36900.37000.37100.43400.121300 | 40th flr-Fire sprinkler pipe | 42d | 2025-07-18 | 2025-10-28 | 1006, 1016FS-91d | 100% | start no earlier than 2025-07-18 | 7 day week No holidays | 7302904 |
| 1020 | 36900.37000.37100.43400.121400 | 40th flr-Flat flooring | 15d | 2025-09-20 | 2025-10-25 | 1018FS-32d, 1007 | 73% |  | 7 day week No holidays | 7302914 |
| 1021 | 36900.37000.37100.43400.308200 | 40th flr-Main door fixing & frame fixing | 11d | 2027-05-11 | 2027-05-22 | 1008, 1020 |  |  | 7 day week No holidays | 7302924 |
| 1022 | 36900.37000.37100.43400.308300 | 40th flr-Window fixing | 9d | 2026-03-07 | 2026-03-15 | 1009, 1020 |  |  | 7 day week No holidays | 7302934 |
| 1023 | 36900.37000.37100.43400.308400 | 40th flr-Railing Fixing | 11d | 2028-04-16 | 2028-04-27 | 1010, 1020 |  |  | 7 day week No holidays | 7302944 |
| 1024 | 36900.37000.37100.43400.308500 | 40th flr-Internal painting - putty / primer application | 11d | 2027-06-20 | 2027-07-01 | 1011, 1020 |  |  | 7 day week No holidays | 7302954 |
| 1025 | 36900.37000.37100.43400.308600 | 40th flr-Flat electrical wiring | 11d | 2027-11-18 | 2027-11-29 | 1012, 1021 |  |  | 7 day week No holidays | 7302964 |
| 1026 | 36900.37000.37100.43400.308700 | 40th flr-Internal shutter fixing | 11d | 2028-07-29 | 2028-08-09 | 1014, 1024 |  |  | 7 day week No holidays | 7302984 |
| 1027 | 36900.37000.37100.43400.308800 | 40th flr-Internal painting | 11d | 2027-11-29 | 2027-12-10 | 1013, 1025 |  |  | 7 day week No holidays | 7302974 |
| 1028 | 36900.37000.37100.43500 | **41th Floor** | 1145.25d | 2025-07-02 | 2028-08-20 |  | 62% | start no earlier than 2025-07-02 | 7 day week No holidays | 7285654 |
| 1029 | 36900.37000.37100.43500.121500 | 41st flr-Gypsum Plaster | 22d | 2025-09-04 | 2025-09-25 | 1016 | 100% | start no earlier than 2025-09-04 | 7 day week No holidays | 7302994 |
| 1030 | 36900.37000.37100.43500.308900 | 41st flr-Kitchen Platform | 11d | 2026-05-12 | 2026-05-22 | 1017, 1029 |  |  | 7 day week No holidays | 7303004 |
| 1031 | 36900.37000.37100.43500.121600 | 41st flr-Toilet dado & flooring | 28d | 2025-09-15 | 2025-11-02 | 346, 1018FS-37d | 85% | start no earlier than 2025-09-15 | 7 day week No holidays | 7303014 |
| 1032 | 36900.37000.37100.43500.121700 | 41st flr-Fire sprinkler pipe | 69d | 2025-07-02 | 2025-09-14 | 1019FS-66d, 1029FS-66d | 100% | start no earlier than 2025-07-02 | 7 day week No holidays | 7303024 |
| 1033 | 36900.37000.37100.43500.121800 | 41st flr-Flat flooring | 32d | 2025-09-20 | 2025-11-11 | 1020FS-44d, 1031FS-44d | 100% | start no earlier than 2025-09-20 | 7 day week No holidays | 7303034 |
| 1034 | 36900.37000.37100.43500.309000 | 41st flr-Main door fixing & frame fixing | 11d | 2027-05-22 | 2027-06-02 | 1021, 1033 |  |  | 7 day week No holidays | 7303044 |
| 1035 | 36900.37000.37100.43500.309100 | 41st flr-Window fixing | 9d | 2026-03-16 | 2026-03-24 | 1022, 1033 |  |  | 7 day week No holidays | 7303054 |
| 1036 | 36900.37000.37100.43500.309200 | 41st flr-Railing Fixing | 11d | 2028-04-27 | 2028-05-08 | 1023, 1033 |  |  | 7 day week No holidays | 7303064 |
| 1037 | 36900.37000.37100.43500.309300 | 41st flr-Internal painting - putty / primer application | 11d | 2027-07-01 | 2027-07-12 | 1024, 1033 |  |  | 7 day week No holidays | 7303074 |
| 1038 | 36900.37000.37100.43500.309400 | 41st flr-Flat electrical wiring | 11d | 2027-11-29 | 2027-12-10 | 1025, 1034 |  |  | 7 day week No holidays | 7303084 |
| 1039 | 36900.37000.37100.43500.309500 | 41st flr-Internal painting | 11d | 2027-12-10 | 2027-12-21 | 1027, 1038 |  |  | 7 day week No holidays | 7303094 |
| 1040 | 36900.37000.37100.43500.309600 | 41st flr-Internal shutter fixing | 11d | 2028-08-09 | 2028-08-20 | 1026, 1037 |  |  | 7 day week No holidays | 7303104 |

| ID | WBS | Task | Duration | Start | Finish | Predecessors | Complete | Constraint | Calendar | Unique_Task_ID |
| --- | --- | --- | --- | --- | --- | --- | --- | --- | --- | --- |
| 1041 | 36900.37000.37100.43600 | **42nd Floor** | 1098.25d | 2025-08-29 | 2028-08-31 |  | 58% | start no earlier than 2025-08-29 | 7 day week No holidays | 7285694 |
| 1042 | 36900.37000.37100.43600.121900 | 42nd flr-Gypsum Plaster | 49d | 2025-09-04 | 2025-11-03 | 1029FS+0.25d | 100% | start no earlier than 2025-09-04 | 7 day week No holidays | 7303114 |
| 1043 | 36900.37000.37100.43600.309700 | 42nd flr-Kitchen Platform | 11d | 2026-05-23 | 2026-06-02 | 1030, 1042 |  |  | 7 day week No holidays | 7303124 |
| 1044 | 36900.37000.37100.43600.122000 | 42nd flr-Toilet dado & flooring | 27d | 2025-09-28 | 2025-11-14 | 352, 1031FS-36d | 100% | start no earlier than 2025-09-28 | 7 day week No holidays | 7303134 |
| 1045 | 36900.37000.37100.43600.122100 | 42nd flr-Fire sprinkler pipe | 35d | 2025-08-29 | 2025-10-22 | 1032, 1042FS-53d | 100% | start no earlier than 2025-08-29 | 7 day week No holidays | 7303144 |
| 1046 | 36900.37000.37100.43600.122200 | 42nd flr-Flat flooring | 15d | 2025-11-15 | 2025-11-29 | 1033, 1044 | 86% | start no earlier than 2025-11-15 | 7 day week No holidays | 7303154 |
| 1047 | 36900.37000.37100.43600.309800 | 42nd flr-Main door fixing & frame fixing | 11d | 2027-06-02 | 2027-06-13 | 1034, 1046 |  |  | 7 day week No holidays | 7303164 |
| 1048 | 36900.37000.37100.43600.309900 | 42nd flr-Window fixing | 9d | 2026-03-25 | 2026-04-02 | 1035, 1046 |  |  | 7 day week No holidays | 7303174 |
| 1049 | 36900.37000.37100.43600.310000 | 42nd flr-Railing Fixing | 11d | 2028-05-08 | 2028-05-19 | 1036, 1046 |  |  | 7 day week No holidays | 7303184 |
| 1050 | 36900.37000.37100.43600.310100 | 42nd flr-Internal painting - putty / primer application | 11d | 2027-07-12 | 2027-07-23 | 1037, 1046 |  |  | 7 day week No holidays | 7303194 |
| 1051 | 36900.37000.37100.43600.310200 | 42nd flr-Flat electrical wiring | 11d | 2027-12-10 | 2027-12-21 | 1038, 1047 |  |  | 7 day week No holidays | 7303204 |
| 1052 | 36900.37000.37100.43600.310300 | 42nd flr-Internal painting | 11d | 2027-12-21 | 2028-01-01 | 1039, 1051 |  |  | 7 day week No holidays | 7303214 |
| 1053 | 36900.37000.37100.43600.310400 | 42nd flr-Internal shutter fixing | 11d | 2028-08-20 | 2028-08-31 | 1040, 1050 |  |  | 7 day week No holidays | 7303224 |
| 1054 | 36900.37000.37100.43700 | **43rd floor** | 1085d | 2025-09-22 | 2028-09-11 |  | 37% | start no earlier than 2025-09-22 | 7 day week No holidays | 7285734 |
| 1055 | 36900.37000.37100.43700.122300 | 43rd flr-Gypsum Plaster | 14d | 2025-09-28 | 2025-10-26 | 1042FS-23d | 100% | start no earlier than 2025-09-28 | 7 day week No holidays | 7303234 |
| 1056 | 36900.37000.37100.43700.310500 | 43rd flr-Kitchen Platform | 11d | 2026-06-03 | 2026-06-13 | 1043, 1055 |  |  | 7 day week No holidays | 7303244 |
| 1057 | 36900.37000.37100.43700.122400 | 43rd flr-Toilet dado & flooring | 32d | 2025-10-29 | 2025-11-29 | 358, 1044 | 87% | start no earlier than 2025-10-29 | 7 day week No holidays | 7303254 |
| 1058 | 36900.37000.37100.43700.122500 | 43rd flr-Fire sprinkler pipe | 8d | 2025-09-22 | 2025-09-30 | 1045, 1055 | 100% | start no earlier than 2025-09-22 | 7 day week No holidays | 7303264 |
| 1059 | 36900.37000.37100.43700.122600 | 43rd flr-Flat flooring | 18d | 2025-11-24 | 2025-12-11 | 1046, 1057 | 50% | start no earlier than 2025-11-24 | 7 day week No holidays | 7303274 |
| 1060 | 36900.37000.37100.43700.310600 | 43rd flr-Main door fixing & frame fixing | 11d | 2027-06-13 | 2027-06-24 | 1047, 1059 |  |  | 7 day week No holidays | 7303284 |
| 1061 | 36900.37000.37100.43700.310700 | 43rd flr-Window fixing | 9d | 2026-04-03 | 2026-04-11 | 1048, 1059 |  |  | 7 day week No holidays | 7303294 |
| 1062 | 36900.37000.37100.43700.310800 | 43rd flr-Railing Fixing | 11d | 2028-05-19 | 2028-05-30 | 1049, 1059 |  |  | 7 day week No holidays | 7303304 |
| 1063 | 36900.37000.37100.43700.310900 | 43rd flr-Internal painting - putty / primer application | 11d | 2027-07-23 | 2027-08-03 | 1050, 1059 |  |  | 7 day week No holidays | 7303314 |
| 1064 | 36900.37000.37100.43700.311000 | 43rd flr-Flat electrical wiring | 11d | 2027-12-21 | 2028-01-01 | 1051, 1060 |  |  | 7 day week No holidays | 7303324 |
| 1065 | 36900.37000.37100.43700.311100 | 43rd flr-Internal painting | 11d | 2028-01-01 | 2028-01-12 | 1052, 1064 |  |  | 7 day week No holidays | 7303334 |
| 1066 | 36900.37000.37100.43700.311200 | 43rd flr-Internal shutter fixing | 11d | 2028-08-31 | 2028-09-11 | 1053, 1063 |  |  | 7 day week No holidays | 7303344 |

| ID | WBS | Task | Duration | Start | Finish | Predecessors | Complete | Constraint | Calendar | Unique_Task_ID |
| --- | --- | --- | --- | --- | --- | --- | --- | --- | --- | --- |
| 1067 | 36900.37000.37100.43800 | **44th Floor** | 1047d | 2025-11-10 | 2028-09-22 |  | 12% | start no earlier than 2025-11-10 | 7 day week No holidays | 7285744 |
| 1068 | 36900.37000.37100.43800.122700 | 44th flr-Gypsum Plaster | 14d | 2025-11-11 | 2025-11-25 | 1055FS+0.25d | 42% | start no earlier than 2025-11-11 | 7 day week No holidays | 7303354 |
| 1069 | 36900.37000.37100.43800.311300 | 44th flr-Kitchen Platform | 10d | 2026-06-14 | 2026-06-23 | 1056, 1068 |  |  | 7 day week No holidays | 7303364 |
| 1070 | 36900.37000.37100.43800.311400 | 44th flr-Toilet dado & flooring | 10d | 2025-11-30 | 2025-12-09 | 364, 1057 |  |  | 7 day week No holidays | 7303374 |
| 1071 | 36900.37000.37100.43800.122800 | 44th flr-Fire sprinkler pipe | 11d | 2025-11-10 | 2025-11-21 | 1068, 1058 | 100% | start no earlier than 2025-11-10 | 7 day week No holidays | 7303384 |
| 1072 | 36900.37000.37100.43800.311500 | 44th flr-Flat flooring | 15d | 2025-12-12 | 2025-12-26 | 1059, 1070 |  |  | 7 day week No holidays | 7303394 |
| 1073 | 36900.37000.37100.43800.311600 | 44th flr-Main door fixing & frame fixing | 11d | 2027-06-24 | 2027-07-05 | 1060, 1072 |  |  | 7 day week No holidays | 7303404 |
| 1074 | 36900.37000.37100.43800.311700 | 44th flr-Window fixing | 9d | 2026-04-12 | 2026-04-20 | 1061, 1072 |  |  | 7 day week No holidays | 7303414 |
| 1075 | 36900.37000.37100.43800.311800 | 44th flr-Railing Fixing | 11d | 2028-05-30 | 2028-06-10 | 1062, 1072 |  |  | 7 day week No holidays | 7303424 |
| 1076 | 36900.37000.37100.43800.311900 | 44th flr-Internal painting - putty / primer application | 11d | 2027-08-03 | 2027-08-14 | 1063, 1072 |  |  | 7 day week No holidays | 7303434 |
| 1077 | 36900.37000.37100.43800.312000 | 44th flr-Flat electrical wiring | 11d | 2028-01-01 | 2028-01-12 | 1064, 1073 |  |  | 7 day week No holidays | 7303444 |
| 1078 | 36900.37000.37100.43800.312100 | 44th flr-Internal painting | 11d | 2028-01-12 | 2028-01-23 | 1065, 1077 |  |  | 7 day week No holidays | 7303454 |
| 1079 | 36900.37000.37100.43800.312200 | 44th flr-Internal shutter fixing | 11d | 2028-09-11 | 2028-09-22 | 1066, 1076 |  |  | 7 day week No holidays | 7303464 |
| 1080 | 36900.37000.37100.43900 | **45th Floor** | 1071d | 2025-10-28 | 2028-10-03 |  | 25% | start no earlier than 2025-10-28 | 7 day week No holidays | 7285774 |
| 1081 | 36900.37000.37100.43900.122900 | 45th flr-Gypsum Plaster | 14d | 2025-11-05 | 2025-11-19 | 1068FS-5d | 42% | start no earlier than 2025-11-05 | 7 day week No holidays | 7303474 |
| 1082 | 36900.37000.37100.43900.312300 | 45th flr-Kitchen Platform | 10d | 2026-06-24 | 2026-07-03 | 1069, 1081 |  |  | 7 day week No holidays | 7303484 |
| 1083 | 36900.37000.37100.43900.312400 | 45th flr-Toilet dado & flooring | 8d | 2025-11-30 | 2025-12-07 | 370, 1070FS-10d |  |  | 7 day week No holidays | 7303494 |
| 1084 | 36900.37000.37100.43900.123000 | 45th flr-Fire sprinkler pipe | 35d | 2025-10-28 | 2025-12-02 | 1081, 1071 | 100% | start no earlier than 2025-10-28 | 7 day week No holidays | 7303504 |
| 1085 | 36900.37000.37100.43900.312500 | 45th flr-Flat flooring | 25d | 2025-12-27 | 2026-01-20 | 1072, 1083 |  |  | 7 day week No holidays | 7303514 |
| 1086 | 36900.37000.37100.43900.312600 | 45th flr-Main door fixing & frame fixing | 11d | 2027-07-05 | 2027-07-16 | 1073, 1085 |  |  | 7 day week No holidays | 7303524 |
| 1087 | 36900.37000.37100.43900.312700 | 45th flr-Window fixing | 9d | 2026-04-21 | 2026-04-29 | 1074, 1085 |  |  | 7 day week No holidays | 7303534 |
| 1088 | 36900.37000.37100.43900.312800 | 45th flr-Railing Fixing | 6d | 2028-06-10 | 2028-06-16 | 1075, 1085 |  |  | 7 day week No holidays | 7303544 |
| 1089 | 36900.37000.37100.43900.312900 | 45th flr-Internal painting - putty / primer application | 11d | 2027-08-14 | 2027-08-25 | 1076, 1085 |  |  | 7 day week No holidays | 7303554 |
| 1090 | 36900.37000.37100.43900.313000 | 45th flr-Flat electrical wiring | 11d | 2028-01-12 | 2028-01-23 | 1077, 1086 |  |  | 7 day week No holidays | 7303564 |
| 1091 | 36900.37000.37100.43900.313100 | 45th flr-Internal painting | 11d | 2028-01-23 | 2028-02-03 | 1078, 1090 |  |  | 7 day week No holidays | 2501128 |
| 1092 | 36900.37000.37100.43900.313200 | 45th flr-Internal shutter fixing | 11d | 2028-09-22 | 2028-10-03 | 1079, 1089 |  |  | 7 day week No holidays | 2501138 |

| ID | WBS | Task | Duration | Start | Finish | Predecessors | Complete | Constraint | Calendar | Unique_Task_ID |
| --- | --- | --- | --- | --- | --- | --- | --- | --- | --- | --- |
| 1093 | 36900.37000.37100.44000 | **46th Floor** | 1059.75d | 2025-11-19 | 2028-10-14 |  |  | start no earlier than 2025-11-19 | 7 day week No holidays | 7285054 |
| 1094 | 36900.37000.37100.44000.313300 | 46th flr-Gypsum Plaster | 14d | 2025-11-19 | 2025-12-03 | 1081FS+0.25d |  |  | 7 day week No holidays | 2501148 |
| 1095 | 36900.37000.37100.44000.313400 | 46th flr-Kitchen Platform | 10d | 2026-07-04 | 2026-07-13 | 1082, 1094 |  |  | 7 day week No holidays | 2501158 |
| 1096 | 36900.37000.37100.44000.313500 | 46th flr-Toilet dado & flooring | 16d | 2025-12-08 | 2025-12-23 | 376, 1083 |  |  | 7 day week No holidays | 2501168 |
| 1097 | 36900.37000.37100.44000.313600 | 46th flr-Fire sprinkler pipe | 11d | 2025-12-03 | 2025-12-14 | 1094, 1084 |  |  | 7 day week No holidays | 2501178 |
| 1098 | 36900.37000.37100.44000.313700 | 46th flr-Flat flooring | 16d | 2026-01-21 | 2026-02-05 | 1085, 1096 |  |  | 7 day week No holidays | 2501188 |
| 1099 | 36900.37000.37100.44000.313800 | 46th flr-Main door fixing & frame fixing | 11d | 2027-07-16 | 2027-07-27 | 1086, 1098 |  |  | 7 day week No holidays | 2501198 |
| 1100 | 36900.37000.37100.44000.313900 | 46th flr-Window fixing | 9d | 2026-04-30 | 2026-05-08 | 1087, 1098 |  |  | 7 day week No holidays | 2501208 |
| 1101 | 36900.37000.37100.44000.314000 | 46th flr-Railing Fixing | 11d | 2028-06-16 | 2028-06-27 | 1088, 1098 |  |  | 7 day week No holidays | 2501218 |
| 1102 | 36900.37000.37100.44000.314100 | 46th flr-Internal painting - putty / primer application | 11d | 2027-08-25 | 2027-09-05 | 1089, 1098 |  |  | 7 day week No holidays | 2501228 |
| 1103 | 36900.37000.37100.44000.314200 | 46th flr-Flat electrical wiring | 11d | 2028-01-23 | 2028-02-03 | 1090, 1099 |  |  | 7 day week No holidays | 2501238 |
| 1104 | 36900.37000.37100.44000.314300 | 46th flr-Internal painting | 11d | 2028-02-03 | 2028-02-14 | 1091, 1103 |  |  | 7 day week No holidays | 2501248 |
| 1105 | 36900.37000.37100.44000.314400 | 46th flr-Internal shutter fixing | 11d | 2028-10-03 | 2028-10-14 | 1092, 1102 |  |  | 7 day week No holidays | 2501258 |
| 1106 | 36900.37000.37100.44100 | **47th Floor** | 1088.5d | 2025-11-01 | 2028-10-25 |  | 26% | start no earlier than 2025-11-01 | 7 day week No holidays | 7285044 |
| 1107 | 36900.37000.37100.44100.314500 | 47th flr-Gypsum Plaster | 14d | 2025-12-03 | 2025-12-17 | 1094FS+0.25d |  |  | 7 day week No holidays | 2501268 |
| 1108 | 36900.37000.37100.44100.314600 | 47th flr-Kitchen Platform | 11d | 2026-07-04 | 2026-07-14 | 1095FS-10d, 1107 |  |  | 7 day week No holidays | 2501278 |
| 1109 | 36900.37000.37100.44100.314700 | 47th flr-Toilet dado & flooring | 15d | 2025-12-24 | 2026-01-07 | 382, 1096 |  |  | 7 day week No holidays | 2501288 |
| 1110 | 36900.37000.37100.44100.123100 | 47th flr-Fire sprinkler pipe | 57d | 2025-11-01 | 2025-12-28 | 1097, 1107 | 84% | start no earlier than 2025-11-01 | 7 day week No holidays | 2501298 |
| 1111 | 36900.37000.37100.44100.314800 | 47th flr-Flat flooring | 12d | 2026-02-06 | 2026-02-17 | 1098, 1109 |  |  | 7 day week No holidays | 2501308 |
| 1112 | 36900.37000.37100.44100.314900 | 47th flr-Main door fixing & frame fixing | 11d | 2027-07-27 | 2027-08-07 | 1099, 1111 |  |  | 7 day week No holidays | 2501318 |
| 1113 | 36900.37000.37100.44100.315000 | 47th flr-Window fixing | 9d | 2026-05-09 | 2026-05-17 | 1100, 1111 |  |  | 7 day week No holidays | 2501328 |
| 1114 | 36900.37000.37100.44100.315100 | 47th flr-Railing Fixing | 11d | 2028-06-27 | 2028-07-08 | 1101, 1111 |  |  | 7 day week No holidays | 2501338 |
| 1115 | 36900.37000.37100.44100.315200 | 47th flr-Internal painting - putty / primer application | 11d | 2027-09-05 | 2027-09-16 | 1102, 1111 |  |  | 7 day week No holidays | 2501348 |
| 1116 | 36900.37000.37100.44100.315300 | 47th flr-Flat electrical wiring | 11d | 2028-02-03 | 2028-02-14 | 1103, 1112 |  |  | 7 day week No holidays | 2501358 |
| 1117 | 36900.37000.37100.44100.315400 | 47th flr-Internal painting | 11d | 2028-02-14 | 2028-02-25 | 1104, 1116 |  |  | 7 day week No holidays | 2501368 |
| 1118 | 36900.37000.37100.44100.315500 | 47th flr-Internal shutter fixing | 11d | 2028-10-14 | 2028-10-25 | 1105, 1115 |  |  | 7 day week No holidays | 2501378 |

| ID | WBS | Task | Duration | Start | Finish | Predecessors | Constraint | Calendar | Unique_Task_ID |
| --- | --- | --- | --- | --- | --- | --- | --- | --- | --- |
| 1119 | 36900.37000.37100.44200 | **48th Floor** | 1049.5d | 2025-12-21 | 2028-11-05 |  | start no earlier than 2025-12-21 | 7 day week No holidays | 7285944 |
| 1120 | 36900.37000.37100.44200.315600 | 48th flr-Gypsum Plaster | 14d | 2025-12-21 | 2026-01-04 | 1107FS+4d |  | 7 day week No holidays | 2501388 |
| 1121 | 36900.37000.37100.44200.315700 | 48th flr-Kitchen Platform | 11d | 2026-07-20 | 2026-07-30 | 1108FS+5d, 1120 |  | 7 day week No holidays | 2501398 |
| 1122 | 36900.37000.37100.44200.315800 | 48th flr-Toilet dado & flooring | 10d | 2026-01-08 | 2026-01-17 | 388, 1109 |  | 7 day week No holidays | 2501408 |
| 1123 | 36900.37000.37100.44200.315900 | 48th flr-Fire sprinkler pipe | 11d | 2026-01-04 | 2026-01-15 | 1110, 1120 |  | 7 day week No holidays | 2501418 |
| 1124 | 36900.37000.37100.44200.316000 | 48th flr-Flat flooring | 10d | 2026-02-18 | 2026-02-27 | 1111, 1122 |  | 7 day week No holidays | 2501428 |
| 1125 | 36900.37000.37100.44200.316100 | 48th flr-Main door fixing & frame fixing | 11d | 2027-08-07 | 2027-08-18 | 1112, 1124 |  | 7 day week No holidays | 2501438 |
| 1126 | 36900.37000.37100.44200.316200 | 48th flr-Window fixing | 9d | 2026-05-18 | 2026-05-26 | 1113, 1124 |  | 7 day week No holidays | 2501448 |
| 1127 | 36900.37000.37100.44200.316300 | 48th flr-Railing Fixing | 11d | 2028-07-08 | 2028-07-19 | 1114, 1124 |  | 7 day week No holidays | 2501458 |
| 1128 | 36900.37000.37100.44200.316400 | 48th flr-Internal painting - putty / primer application | 11d | 2027-09-16 | 2027-09-27 | 1115, 1124 |  | 7 day week No holidays | 2501468 |
| 1129 | 36900.37000.37100.44200.316500 | 48th flr-Flat electrical wiring | 11d | 2028-02-14 | 2028-02-25 | 1116, 1125 |  | 7 day week No holidays | 2501478 |
| 1130 | 36900.37000.37100.44200.316600 | 48th flr-Internal painting | 11d | 2028-02-25 | 2028-03-07 | 1117, 1129 |  | 7 day week No holidays | 2501488 |
| 1131 | 36900.37000.37100.44200.316700 | 48th flr-Internal shutter fixing | 11d | 2028-10-25 | 2028-11-05 | 1118, 1128 |  | 7 day week No holidays | 2501498 |
| 1132 | 36900.37000.37100.44300 | **49th Floor** | 1042.5d | 2026-01-08 | 2028-11-16 |  | start no earlier than 2026-01-08 | 7 day week No holidays | 7285954 |
| 1133 | 36900.37000.37100.44300.316800 | 49th flr-Gypsum Plaster | 14d | 2026-01-08 | 2026-01-22 | 1120FS+4d |  | 7 day week No holidays | 2501508 |
| 1134 | 36900.37000.37100.44300.316900 | 49th flr-Kitchen Platform | 11d | 2026-07-31 | 2026-08-10 | 1121, 1133 |  | 7 day week No holidays | 2501518 |
| 1135 | 36900.37000.37100.44300.317000 | 49th flr-Toilet dado & flooring | 11d | 2026-01-18 | 2026-01-28 | 394, 1122 |  | 7 day week No holidays | 2501528 |
| 1136 | 36900.37000.37100.44300.317100 | 49th flr-Fire sprinkler pipe | 11d | 2026-01-22 | 2026-02-02 | 1123, 1133 |  | 7 day week No holidays | 2501538 |
| 1137 | 36900.37000.37100.44300.317200 | 49th flr-Flat flooring | 11d | 2026-02-28 | 2026-03-10 | 1124, 1135 |  | 7 day week No holidays | 2501548 |
| 1138 | 36900.37000.37100.44300.317300 | 49th flr-Main door fixing & frame fixing | 11d | 2027-08-18 | 2027-08-29 | 1125, 1137 |  | 7 day week No holidays | 2501558 |
| 1139 | 36900.37000.37100.44300.317400 | 49th flr-Window fixing | 5d | 2026-05-27 | 2026-05-31 | 1126, 1137 |  | 7 day week No holidays | 2501568 |
| 1140 | 36900.37000.37100.44300.317500 | 49th flr-Railing Fixing | 11d | 2028-07-19 | 2028-07-30 | 1127, 1137 |  | 7 day week No holidays | 2501578 |
| 1141 | 36900.37000.37100.44300.317600 | 49th flr-Internal painting - putty / primer application | 11d | 2027-09-27 | 2027-10-08 | 1128, 1137 |  | 7 day week No holidays | 2501588 |
| 1142 | 36900.37000.37100.44300.317700 | 49th flr-Flat electrical wiring | 11d | 2028-02-25 | 2028-03-07 | 1129, 1138 |  | 7 day week No holidays | 2501598 |
| 1143 | 36900.37000.37100.44300.317800 | 49th flr-Internal painting | 11d | 2028-03-07 | 2028-03-18 | 1130, 1142 |  | 7 day week No holidays | 2501608 |
| 1144 | 36900.37000.37100.44300.317900 | 49th flr-Internal shutter fixing | 11d | 2028-11-05 | 2028-11-16 | 1131, 1141 |  | 7 day week No holidays | 2501618 |

| ID | WBS | Task | Duration | Start | Finish | Predecessors | Constraint | Calendar | Unique_Task_ID |
| --- | --- | --- | --- | --- | --- | --- | --- | --- | --- |
| 1145 | 36900.37000.37100.44400 | **50th Floor** | 1049.5d | 2026-01-12 | 2028-11-27 |  | start no earlier than 2026-01-12 | 7 day week No holidays | 7285064 |
| 1146 | 36900.37000.37100.44400.318000 | 50th flr-Gypsum Plaster | 14d | 2026-01-12 | 2026-01-26 | 396FS-20d, 1133FS-10d |  | 7 day week No holidays | 2501628 |
| 1147 | 36900.37000.37100.44400.318100 | 50th flr-Kitchen Platform | 11d | 2026-08-11 | 2026-08-21 | 1134, 1146 |  | 7 day week No holidays | 2501638 |
| 1148 | 36900.37000.37100.44400.318200 | 50th flr-Toilet dado & flooring | 11d | 2026-01-29 | 2026-02-08 | 400, 1135 |  | 7 day week No holidays | 2501648 |
| 1149 | 36900.37000.37100.44400.318300 | 50th flr-Fire sprinkler pipe | 11d | 2026-02-02 | 2026-02-13 | 1136, 1146 |  | 7 day week No holidays | 2501658 |
| 1150 | 36900.37000.37100.44400.318400 | 50th flr-Flat flooring | 11d | 2026-03-11 | 2026-03-21 | 1137, 1148 |  | 7 day week No holidays | 2501668 |
| 1151 | 36900.37000.37100.44400.318500 | 50th flr-Main door fixing & frame fixing | 11d | 2027-08-29 | 2027-09-09 | 1138, 1150 |  | 7 day week No holidays | 2501678 |
| 1152 | 36900.37000.37100.44400.318600 | 50th flr-Window fixing | 6d | 2026-06-01 | 2026-06-06 | 1139, 1150 |  | 7 day week No holidays | 2501688 |
| 1153 | 36900.37000.37100.44400.318700 | 50th flr-Railing Fixing | 11d | 2028-07-30 | 2028-08-10 | 1140, 1150 |  | 7 day week No holidays | 2501698 |
| 1154 | 36900.37000.37100.44400.318800 | 50th flr-Internal painting - putty / primer application | 11d | 2027-10-08 | 2027-10-19 | 1141, 1150 |  | 7 day week No holidays | 2501708 |
| 1155 | 36900.37000.37100.44400.318900 | 50th flr-Flat electrical wiring | 11d | 2028-03-07 | 2028-03-18 | 1142, 1151 |  | 7 day week No holidays | 2501718 |
| 1156 | 36900.37000.37100.44400.319000 | 50th flr-Internal painting | 11d | 2028-03-18 | 2028-03-29 | 1143, 1155 |  | 7 day week No holidays | 2501728 |
| 1157 | 36900.37000.37100.44400.319100 | 50th flr-Internal shutter fixing | 11d | 2028-11-16 | 2028-11-27 | 1144, 1154 |  | 7 day week No holidays | 2501738 |
| 1158 | 36900.37000.37100.44500 | **51th Floor** | 1046.5d | 2026-01-26 | 2028-12-08 |  | start no earlier than 2026-01-26 | 7 day week No holidays | 7285074 |
| 1159 | 36900.37000.37100.44500.319200 | 51st flr-Gypsum Plaster | 14d | 2026-01-26 | 2026-02-09 | 1146 |  | 7 day week No holidays | 2501748 |
| 1160 | 36900.37000.37100.44500.319300 | 51st flr-Kitchen Platform | 11d | 2026-08-22 | 2026-09-01 | 1147, 1159 |  | 7 day week No holidays | 2501758 |
| 1161 | 36900.37000.37100.44500.319400 | 51st flr-Toilet dado & flooring | 11d | 2026-02-10 | 2026-02-20 | 406, 1148 |  | 7 day week No holidays | 2501768 |
| 1162 | 36900.37000.37100.44500.319500 | 51st flr-Fire sprinkler pipe | 11d | 2026-02-13 | 2026-02-24 | 1149, 1159 |  | 7 day week No holidays | 2501778 |
| 1163 | 36900.37000.37100.44500.319600 | 51st flr-Flat flooring | 11d | 2026-03-22 | 2026-04-01 | 1150, 1161 |  | 7 day week No holidays | 2501788 |
| 1164 | 36900.37000.37100.44500.319700 | 51st flr-Main door fixing & frame fixing | 11d | 2027-09-09 | 2027-09-20 | 1151, 1163 |  | 7 day week No holidays | 2501798 |
| 1165 | 36900.37000.37100.44500.319800 | 51st flr-Window fixing | 11d | 2026-06-07 | 2026-06-17 | 1152, 1163 |  | 7 day week No holidays | 2501808 |
| 1166 | 36900.37000.37100.44500.319900 | 51st flr-Railing Fixing | 11d | 2028-08-10 | 2028-08-21 | 1153, 1163 |  | 7 day week No holidays | 2501818 |
| 1167 | 36900.37000.37100.44500.320000 | 51st flr-Internal painting - putty / primer application | 11d | 2027-10-19 | 2027-10-30 | 1154, 1163 |  | 7 day week No holidays | 2501828 |
| 1168 | 36900.37000.37100.44500.320100 | 51st flr-Flat electrical wiring | 11d | 2028-03-18 | 2028-03-29 | 1155, 1164 |  | 7 day week No holidays | 2501838 |
| 1169 | 36900.37000.37100.44500.320200 | 51st flr-Internal painting | 11d | 2028-03-29 | 2028-04-09 | 1156, 1168 |  | 7 day week No holidays | 2501848 |
| 1170 | 36900.37000.37100.44500.320300 | 51st flr-Internal shutter fixing | 11d | 2028-11-27 | 2028-12-08 | 1157, 1167 |  | 7 day week No holidays | 2501858 |

| ID | WBS | Task | Duration | Start | Finish | Predecessors | Constraint | Calendar | Unique_Task_ID |
| --- | --- | --- | --- | --- | --- | --- | --- | --- | --- |
| 1171 | 36900.37000.37100.44600 | **52ndFloor** | 1053.5d | 2026-01-30 | 2028-12-19 |  | start no earlier than 2026-01-30 | 7 day week No holidays | 7285084 |
| 1172 | 36900.37000.37100.44600.320400 | 52nd flr-Gypsum Plaster | 14d | 2026-01-30 | 2026-02-13 | 1159FS-10d |  | 7 day week No holidays | 2501868 |
| 1173 | 36900.37000.37100.44600.320500 | 52nd flr-Kitchen Platform | 11d | 2026-09-02 | 2026-09-12 | 1160, 1172 |  | 7 day week No holidays | 2501878 |
| 1174 | 36900.37000.37100.44600.320600 | 52nd flr-Toilet dado & flooring | 11d | 2026-02-25 | 2026-03-07 | 412, 1161 |  | 7 day week No holidays | 2501888 |
| 1175 | 36900.37000.37100.44600.320700 | 52nd flr-Fire sprinkler pipe | 11d | 2026-02-24 | 2026-03-07 | 1162, 1172 |  | 7 day week No holidays | 2501898 |
| 1176 | 36900.37000.37100.44600.320800 | 52nd flr-Flat flooring | 11d | 2026-04-02 | 2026-04-12 | 1163, 1174 |  | 7 day week No holidays | 2501908 |
| 1177 | 36900.37000.37100.44600.320900 | 52nd flr-Main door fixing & frame fixing | 11d | 2027-09-20 | 2027-10-01 | 1164, 1176 |  | 7 day week No holidays | 2501918 |
| 1178 | 36900.37000.37100.44600.321000 | 52nd flr-Window fixing | 11d | 2026-06-18 | 2026-06-28 | 1165, 1176 |  | 7 day week No holidays | 2501928 |
| 1179 | 36900.37000.37100.44600.321100 | 52nd flr-Railing Fixing | 11d | 2028-08-21 | 2028-09-01 | 1166, 1176 |  | 7 day week No holidays | 2501938 |
| 1180 | 36900.37000.37100.44600.321200 | 52nd flr-Internal painting - putty / primer application | 11d | 2027-10-30 | 2027-11-10 | 1167, 1176 |  | 7 day week No holidays | 2501948 |
| 1181 | 36900.37000.37100.44600.321300 | 52nd flr-Flat electrical wiring | 11d | 2028-03-29 | 2028-04-09 | 1168, 1177 |  | 7 day week No holidays | 2501958 |
| 1182 | 36900.37000.37100.44600.321400 | 52nd flr-Internal painting | 11d | 2028-04-09 | 2028-04-20 | 1169, 1181 |  | 7 day week No holidays | 2501968 |
| 1183 | 36900.37000.37100.44600.321500 | 52nd flr-Internal shutter fixing | 11d | 2028-12-08 | 2028-12-19 | 1170, 1180 |  | 7 day week No holidays | 2501978 |
| 1184 | 36900.37000.37100.44700 | **53rd Floor** | 1043.25d | 2026-02-21 | 2028-12-30 |  | start no earlier than 2026-02-21 | 7 day week No holidays | 7285104 |
| 1185 | 36900.37000.37100.44700.321600 | 53rd flr-Gypsum Plaster | 14d | 2026-02-21 | 2026-03-06 | 414, 1172 |  | 7 day week No holidays | 2501988 |
| 1186 | 36900.37000.37100.44700.321700 | 53rd flr-Kitchen Platform | 11d | 2026-09-13 | 2026-09-23 | 1173, 1185 |  | 7 day week No holidays | 2501998 |
| 1187 | 36900.37000.37100.44700.321800 | 53rd flr-Toilet dado & flooring | 11d | 2026-03-09 | 2026-03-19 | 418, 1174 |  | 7 day week No holidays | 2502008 |
| 1188 | 36900.37000.37100.44700.321900 | 53rd flr-Fire sprinkler pipe | 11d | 2026-03-07 | 2026-03-18 | 1175, 1185 |  | 7 day week No holidays | 2502018 |
| 1189 | 36900.37000.37100.44700.322000 | 53rd flr-Flat flooring | 11d | 2026-04-13 | 2026-04-23 | 1176, 1187 |  | 7 day week No holidays | 2502028 |
| 1190 | 36900.37000.37100.44700.322100 | 53rd flr-Main door fixing & frame fixing | 11d | 2027-10-01 | 2027-10-12 | 1177, 1189 |  | 7 day week No holidays | 2502038 |
| 1191 | 36900.37000.37100.44700.322200 | 53rd flr-Window fixing | 11d | 2026-06-29 | 2026-07-09 | 1178, 1189 |  | 7 day week No holidays | 2502048 |
| 1192 | 36900.37000.37100.44700.322300 | 53rd flr-Railing Fixing | 11d | 2028-09-01 | 2028-09-12 | 1179, 1189 |  | 7 day week No holidays | 2502058 |
| 1193 | 36900.37000.37100.44700.322400 | 53rd flr-Internal painting - putty / primer application | 11d | 2027-11-10 | 2027-11-21 | 1180, 1189 |  | 7 day week No holidays | 2502068 |
| 1194 | 36900.37000.37100.44700.322500 | 53rd flr-Flat electrical wiring | 11d | 2028-04-09 | 2028-04-20 | 1181, 1190 |  | 7 day week No holidays | 2502078 |
| 1195 | 36900.37000.37100.44700.322600 | 53rd flr-Internal painting | 11d | 2028-04-20 | 2028-05-01 | 1182, 1194 |  | 7 day week No holidays | 2502088 |
| 1196 | 36900.37000.37100.44700.322700 | 53rd flr-Internal shutter fixing | 11d | 2028-12-19 | 2028-12-30 | 1183, 1193 |  | 7 day week No holidays | 2502098 |

| ID | WBS | Task | Duration | Start | Finish | Predecessors | Constraint | Calendar | Unique_Task_ID |
| --- | --- | --- | --- | --- | --- | --- | --- | --- | --- |
| 1197 | 36900.37000.37100.44800 | **54th Floor** | 1040.25d | 2026-03-07 | 2029-01-10 |  | start no earlier than 2026-03-07 | 7 day week No holidays | 7285124 |
| 1198 | 36900.37000.37100.44800.322800 | 54th flr-Gypsum Plaster | 14d | 2026-03-07 | 2026-03-20 | 420, 1185 |  | 7 day week No holidays | 2502108 |
| 1199 | 36900.37000.37100.44800.322900 | 54th flr-Kitchen Platform | 11d | 2026-09-24 | 2026-10-04 | 1186, 1198 |  | 7 day week No holidays | 2502118 |
| 1200 | 36900.37000.37100.44800.323000 | 54th flr-Toilet dado & flooring | 11d | 2026-03-21 | 2026-03-31 | 424, 1187 |  | 7 day week No holidays | 2502128 |
| 1201 | 36900.37000.37100.44800.323100 | 54th flr-Fire sprinkler pipe | 11d | 2026-03-21 | 2026-03-31 | 1188, 1198 |  | 7 day week No holidays | 2502138 |
| 1202 | 36900.37000.37100.44800.323200 | 54th flr-Flat flooring | 11d | 2026-04-24 | 2026-05-04 | 1189, 1200 |  | 7 day week No holidays | 2502148 |
| 1203 | 36900.37000.37100.44800.323300 | 54th flr-Main door fixing & frame fixing | 11d | 2027-10-12 | 2027-10-23 | 1190, 1202 |  | 7 day week No holidays | 2502158 |
| 1204 | 36900.37000.37100.44800.323400 | 54th flr-Window fixing | 11d | 2026-07-10 | 2026-07-20 | 1191, 1202 |  | 7 day week No holidays | 2502168 |
| 1205 | 36900.37000.37100.44800.323500 | 54th flr-Railing Fixing | 11d | 2028-09-12 | 2028-09-23 | 1192, 1202 |  | 7 day week No holidays | 2502178 |
| 1206 | 36900.37000.37100.44800.323600 | 54th flr-Internal painting - putty / primer application | 11d | 2027-11-21 | 2027-12-02 | 1193, 1202 |  | 7 day week No holidays | 2502188 |
| 1207 | 36900.37000.37100.44800.323700 | 54th flr-Flat electrical wiring | 11d | 2028-04-20 | 2028-05-01 | 1194, 1203 |  | 7 day week No holidays | 2502198 |
| 1208 | 36900.37000.37100.44800.323800 | 54th flr-Internal painting | 11d | 2028-05-01 | 2028-05-12 | 1195, 1207 |  | 7 day week No holidays | 2502208 |
| 1209 | 36900.37000.37100.44800.323900 | 54th flr-Internal shutter fixing | 11d | 2028-12-30 | 2029-01-10 | 1196, 1206 |  | 7 day week No holidays | 2502218 |
| 1210 | 36900.37000.37100.44900 | **55th Floor** | 1031.25d | 2026-03-27 | 2029-01-21 |  | start no earlier than 2026-03-27 | 7 day week No holidays | 7285134 |
| 1211 | 36900.37000.37100.44900.324000 | 55th flr-Gypsum Plaster | 14d | 2026-03-27 | 2026-04-09 | 426, 1198 |  | 7 day week No holidays | 2502228 |
| 1212 | 36900.37000.37100.44900.324100 | 55th flr-Kitchen Platform | 11d | 2026-10-05 | 2026-10-15 | 1199, 1211 |  | 7 day week No holidays | 2502238 |
| 1213 | 36900.37000.37100.44900.324200 | 55th flr-Toilet dado & flooring | 11d | 2026-04-07 | 2026-04-17 | 430, 1200 |  | 7 day week No holidays | 2502248 |
| 1214 | 36900.37000.37100.44900.324300 | 55th flr-Fire sprinkler pipe | 11d | 2026-04-10 | 2026-04-20 | 1201, 1211 |  | 7 day week No holidays | 2502258 |
| 1215 | 36900.37000.37100.44900.324400 | 55th flr-Flat flooring | 11d | 2026-05-05 | 2026-05-15 | 1202, 1213 |  | 7 day week No holidays | 2502268 |
| 1216 | 36900.37000.37100.44900.324500 | 55th flr-Main door fixing & frame fixing | 11d | 2027-10-23 | 2027-11-03 | 1203, 1215 |  | 7 day week No holidays | 2502278 |
| 1217 | 36900.37000.37100.44900.324600 | 55th flr-Window fixing | 11d | 2026-07-21 | 2026-07-31 | 1204, 1215 |  | 7 day week No holidays | 2502288 |
| 1218 | 36900.37000.37100.44900.324700 | 55th flr-Railing Fixing | 11d | 2028-09-23 | 2028-10-04 | 1205, 1215 |  | 7 day week No holidays | 2502298 |
| 1219 | 36900.37000.37100.44900.324800 | 55th flr-Internal painting - putty / primer application | 11d | 2027-12-02 | 2027-12-13 | 1206, 1215 |  | 7 day week No holidays | 2502308 |
| 1220 | 36900.37000.37100.44900.324900 | 55th flr-Flat electrical wiring | 11d | 2028-05-01 | 2028-05-12 | 1207, 1216 |  | 7 day week No holidays | 2502318 |
| 1221 | 36900.37000.37100.44900.325000 | 55th flr-Internal painting | 11d | 2028-05-12 | 2028-05-23 | 1208, 1220 |  | 7 day week No holidays | 2502328 |
| 1222 | 36900.37000.37100.44900.325100 | 55th flr-Internal shutter fixing | 11d | 2029-01-10 | 2029-01-21 | 1209, 1219 |  | 7 day week No holidays | 2502338 |

| ID | WBS | Task | Duration | Start | Finish | Predecessors | Constraint | Calendar | Unique_Task_ID |
| --- | --- | --- | --- | --- | --- | --- | --- | --- | --- |
| 1223 | 36900.37000.37100.45000 | **56th Floor** | 1028.25d | 2026-04-10 | 2029-02-01 |  | start no earlier than 2026-04-10 | 7 day week No holidays | 7285194 |
| 1224 | 36900.37000.37100.45000.325200 | 56th flr-Gypsum Plaster | 14d | 2026-04-10 | 2026-04-23 | 432, 1211 |  | 7 day week No holidays | 2502348 |
| 1225 | 36900.37000.37100.45000.325300 | 56th flr-Kitchen Platform | 11d | 2026-10-16 | 2026-10-26 | 1212, 1224 |  | 7 day week No holidays | 2502358 |
| 1226 | 36900.37000.37100.45000.325400 | 56th flr-Toilet dado & flooring | 11d | 2026-04-24 | 2026-05-04 | 436, 1213 |  | 7 day week No holidays | 2502368 |
| 1227 | 36900.37000.37100.45000.325500 | 56th flr-Fire sprinkler pipe | 11d | 2026-04-24 | 2026-05-04 | 1214, 1224 |  | 7 day week No holidays | 2502378 |
| 1228 | 36900.37000.37100.45000.325600 | 56th flr-Flat flooring | 11d | 2026-05-16 | 2026-05-26 | 1215, 1226 |  | 7 day week No holidays | 2502388 |
| 1229 | 36900.37000.37100.45000.325700 | 56th flr-Main door fixing & frame fixing | 11d | 2027-11-03 | 2027-11-14 | 1216, 1228 |  | 7 day week No holidays | 2502398 |
| 1230 | 36900.37000.37100.45000.325800 | 56th flr-Window fixing | 11d | 2026-08-01 | 2026-08-11 | 1217, 1228 |  | 7 day week No holidays | 2502408 |
| 1231 | 36900.37000.37100.45000.325900 | 56th flr-Railing Fixing | 11d | 2028-10-04 | 2028-10-15 | 1218, 1228 |  | 7 day week No holidays | 2502418 |
| 1232 | 36900.37000.37100.45000.326000 | 56th flr-Internal painting - putty / primer application | 11d | 2027-12-13 | 2027-12-24 | 1219, 1228 |  | 7 day week No holidays | 2502428 |
| 1233 | 36900.37000.37100.45000.326100 | 56th flr-Flat electrical wiring | 11d | 2028-05-12 | 2028-05-23 | 1220, 1229 |  | 7 day week No holidays | 2502438 |
| 1234 | 36900.37000.37100.45000.326200 | 56th flr-Internal painting | 11d | 2028-05-23 | 2028-06-03 | 1221, 1233 |  | 7 day week No holidays | 2502448 |
| 1235 | 36900.37000.37100.45000.326300 | 56th flr-Internal shutter fixing | 11d | 2029-01-21 | 2029-02-01 | 1222, 1232 |  | 7 day week No holidays | 2502458 |
| 1236 | 36900.37000.37100.45100 | **57th Floor** | 1025.25d | 2026-04-24 | 2029-02-12 |  | start no earlier than 2026-04-24 | 7 day week No holidays | 7285224 |
| 1237 | 36900.37000.37100.45100.326400 | 57th flr-Gypsum Plaster | 14d | 2026-04-24 | 2026-05-07 | 438, 1224 |  | 7 day week No holidays | 2502468 |
| 1238 | 36900.37000.37100.45100.326500 | 57th flr-Kitchen Platform | 11d | 2026-10-27 | 2026-11-06 | 1225, 1237 |  | 7 day week No holidays | 2502478 |
| 1239 | 36900.37000.37100.45100.326600 | 57th flr-Toilet dado & flooring | 11d | 2026-05-15 | 2026-05-25 | 442, 1226FS+10d |  | 7 day week No holidays | 2502488 |
| 1240 | 36900.37000.37100.45100.326700 | 57th flr-Fire sprinkler pipe | 11d | 2026-05-08 | 2026-05-18 | 1227, 1237 |  | 7 day week No holidays | 2502498 |
| 1241 | 36900.37000.37100.45100.326800 | 57th flr-Flat flooring | 11d | 2026-05-27 | 2026-06-06 | 1228, 1239 |  | 7 day week No holidays | 2502508 |
| 1242 | 36900.37000.37100.45100.326900 | 57th flr-Main door fixing & frame fixing | 11d | 2027-11-14 | 2027-11-25 | 1229, 1241 |  | 7 day week No holidays | 2502518 |
| 1243 | 36900.37000.37100.45100.327000 | 57th flr-Window fixing | 11d | 2026-08-12 | 2026-08-22 | 1230, 1241 |  | 7 day week No holidays | 2502528 |
| 1244 | 36900.37000.37100.45100.327100 | 57th flr-Railing Fixing | 11d | 2028-10-15 | 2028-10-26 | 1231, 1241 |  | 7 day week No holidays | 2502538 |
| 1245 | 36900.37000.37100.45100.327200 | 57th flr-Internal painting - putty / primer application | 11d | 2027-12-24 | 2028-01-04 | 1232, 1241 |  | 7 day week No holidays | 2502548 |
| 1246 | 36900.37000.37100.45100.327300 | 57th flr-Flat electrical wiring | 11d | 2028-05-23 | 2028-06-03 | 1233, 1242 |  | 7 day week No holidays | 2502558 |
| 1247 | 36900.37000.37100.45100.327400 | 57th flr-Internal painting | 11d | 2028-06-03 | 2028-06-14 | 1234, 1246 |  | 7 day week No holidays | 2502568 |
| 1248 | 36900.37000.37100.45100.327500 | 57th flr-Internal shutter fixing | 11d | 2029-02-01 | 2029-02-12 | 1235, 1245 |  | 7 day week No holidays | 2502578 |

| ID | WBS | Task | Duration | Start | Finish | Predecessors | Constraint | Calendar | Unique_Task_ID |
| --- | --- | --- | --- | --- | --- | --- | --- | --- | --- |
| 1249 | 36900.37000.37100.45200 | **58th Floor** | 992.25d | 2026-06-07 | 2029-02-23 |  | start no earlier than 2026-06-07 | 7 day week No holidays | 7285444 |
| 1250 | 36900.37000.37100.45200.327600 | 58th flr-Gypsum Plaster | 20d | 2026-06-07 | 2026-06-26 | 444, 1237FS+30d |  | 7 day week No holidays | 2502588 |
| 1251 | 36900.37000.37100.45200.327700 | 58th flr-Kitchen Platform | 11d | 2026-11-07 | 2026-11-17 | 1238, 1250 |  | 7 day week No holidays | 2502598 |
| 1252 | 36900.37000.37100.45200.327800 | 58th flr-Toilet dado & flooring | 11d | 2026-06-15 | 2026-06-25 | 448, 1239FS+20d |  | 7 day week No holidays | 2502608 |
| 1253 | 36900.37000.37100.45200.327900 | 58th flr-Fire sprinkler pipe | 9d | 2026-06-22 | 2026-06-30 | 1240FS-20d, 1250FS-5d |  | 7 day week No holidays | 2502618 |
| 1254 | 36900.37000.37100.45200.328000 | 58th flr-Flat flooring | 11d | 2026-06-26 | 2026-07-06 | 1241, 1252 |  | 7 day week No holidays | 2502628 |
| 1255 | 36900.37000.37100.45200.328100 | 58th flr-Main door fixing & frame fixing | 11d | 2027-11-25 | 2027-12-06 | 1242, 1254 |  | 7 day week No holidays | 2502638 |
| 1256 | 36900.37000.37100.45200.328200 | 58th flr-Window fixing | 11d | 2026-08-23 | 2026-09-02 | 1243, 1254 |  | 7 day week No holidays | 2502648 |
| 1257 | 36900.37000.37100.45200.328300 | 58th flr-Railing Fixing | 11d | 2028-10-26 | 2028-11-06 | 1244, 1254 |  | 7 day week No holidays | 2502658 |
| 1258 | 36900.37000.37100.45200.328400 | 58th flr-Internal painting - putty / primer application | 11d | 2028-01-04 | 2028-01-15 | 1245, 1254 |  | 7 day week No holidays | 2502668 |
| 1259 | 36900.37000.37100.45200.328500 | 58th flr-Flat electrical wiring | 11d | 2028-06-03 | 2028-06-14 | 1246, 1255 |  | 7 day week No holidays | 2502678 |
| 1260 | 36900.37000.37100.45200.328600 | 58th flr-Internal painting | 11d | 2028-06-14 | 2028-06-25 | 1247, 1259 |  | 7 day week No holidays | 2502688 |
| 1261 | 36900.37000.37100.45200.328700 | 58th flr-Internal shutter fixing | 11d | 2029-02-12 | 2029-02-23 | 1248, 1258 |  | 7 day week No holidays | 2502698 |
| 1262 | 36900.37000.37100.45300 | **59th Floor** | 993.25d | 2026-06-17 | 2029-03-06 |  | start no earlier than 2026-06-17 | 7 day week No holidays | 7285454 |
| 1263 | 36900.37000.37100.45300.328800 | 59th flr-Gypsum Plaster | 14d | 2026-06-17 | 2026-06-30 | 450FS-10d, 1250FS-10d |  | 7 day week No holidays | 2502708 |
| 1264 | 36900.37000.37100.45300.328900 | 59th flr-Kitchen Platform | 11d | 2026-11-18 | 2026-11-28 | 1251, 1263 |  | 7 day week No holidays | 2502718 |
| 1265 | 36900.37000.37100.45300.329000 | 59th flr-Toilet dado & flooring | 11d | 2026-07-30 | 2026-08-09 | 454, 1252 |  | 7 day week No holidays | 2502728 |
| 1266 | 36900.37000.37100.45300.329100 | 59th flr-Fire sprinkler pipe | 9d | 2026-06-29 | 2026-07-07 | 1253FS-30d, 1263FS-2d |  | 7 day week No holidays | 2502738 |
| 1267 | 36900.37000.37100.45300.329200 | 59th flr-Flat flooring | 11d | 2026-08-10 | 2026-08-20 | 1254, 1265 |  | 7 day week No holidays | 2502748 |
| 1268 | 36900.37000.37100.45300.329300 | 59th flr-Main door fixing & frame fixing | 11d | 2027-12-06 | 2027-12-17 | 1255, 1267 |  | 7 day week No holidays | 2502758 |
| 1269 | 36900.37000.37100.45300.329400 | 59th flr-Window fixing | 11d | 2026-09-03 | 2026-09-13 | 1256, 1267 |  | 7 day week No holidays | 2502768 |
| 1270 | 36900.37000.37100.45300.329500 | 59th flr-Railing Fixing | 11d | 2028-11-06 | 2028-11-17 | 1257, 1267 |  | 7 day week No holidays | 2502778 |
| 1271 | 36900.37000.37100.45300.329600 | 59th flr-Internal painting - putty / primer application | 11d | 2028-01-15 | 2028-01-26 | 1258, 1267 |  | 7 day week No holidays | 2502788 |
| 1272 | 36900.37000.37100.45300.329700 | 59th flr-Flat electrical wiring | 11d | 2028-06-14 | 2028-06-25 | 1259, 1268 |  | 7 day week No holidays | 2502798 |
| 1273 | 36900.37000.37100.45300.329800 | 59th flr-Internal painting | 11d | 2028-06-25 | 2028-07-06 | 1260, 1272 |  | 7 day week No holidays | 2502808 |
| 1274 | 36900.37000.37100.45300.329900 | 59th flr-Internal shutter fixing | 11d | 2029-02-23 | 2029-03-06 | 1261, 1271 |  | 7 day week No holidays | 2502818 |

| ID | WBS | Task | Duration | Start | Finish | Predecessors | Constraint | Calendar | Unique_Task_ID |
| --- | --- | --- | --- | --- | --- | --- | --- | --- | --- |
| 1275 | 36900.37000.37100.45400 | **60th Floor** | 975.25d | 2026-07-16 | 2029-03-17 |  | start no earlier than 2026-07-16 | 7 day week No holidays | 7285464 |
| 1276 | 36900.37000.37100.45400.330000 | 60th flr-Gypsum Plaster | 11d | 2026-07-16 | 2026-07-26 | 456, 468, 1263 |  | 7 day week No holidays | 2502828 |
| 1277 | 36900.37000.37100.45400.330100 | 60th flr-Kitchen Platform | 11d | 2026-11-29 | 2026-12-09 | 1264, 1276 |  | 7 day week No holidays | 2502838 |
| 1278 | 36900.37000.37100.45400.330200 | 60th flr-Toilet dado & flooring | 11d | 2026-08-29 | 2026-09-08 | 460, 1265 |  | 7 day week No holidays | 2502848 |
| 1279 | 36900.37000.37100.45400.330300 | 60th flr-Fire sprinkler pipe | 11d | 2026-07-27 | 2026-08-06 | 1266, 1276 |  | 7 day week No holidays | 2502858 |
| 1280 | 36900.37000.37100.45400.330400 | 60th flr-Flat flooring | 11d | 2026-09-09 | 2026-09-19 | 1267, 1278 |  | 7 day week No holidays | 2502868 |
| 1281 | 36900.37000.37100.45400.330500 | 60th flr-Main door fixing & frame fixing | 11d | 2027-12-17 | 2027-12-28 | 1268, 1280 |  | 7 day week No holidays | 2502878 |
| 1282 | 36900.37000.37100.45400.330600 | 60th flr-Window fixing | 11d | 2026-09-20 | 2026-09-30 | 1269, 1280 |  | 7 day week No holidays | 2502888 |
| 1283 | 36900.37000.37100.45400.330700 | 60th flr-Railing Fixing | 11d | 2028-11-17 | 2028-11-28 | 1270, 1280 |  | 7 day week No holidays | 2502898 |
| 1284 | 36900.37000.37100.45400.330800 | 60th flr-Internal painting - putty / primer application | 11d | 2028-01-26 | 2028-02-06 | 1271, 1280 |  | 7 day week No holidays | 2502908 |
| 1285 | 36900.37000.37100.45400.330900 | 60th flr-Flat electrical wiring | 11d | 2028-06-25 | 2028-07-06 | 1272, 1281 |  | 7 day week No holidays | 2502918 |
| 1286 | 36900.37000.37100.45400.331000 | 60th flr-Internal painting | 11d | 2028-07-06 | 2028-07-17 | 1273, 1285 |  | 7 day week No holidays | 2502928 |
| 1287 | 36900.37000.37100.45400.331100 | 60th flr-Internal shutter fixing | 11d | 2029-03-06 | 2029-03-17 | 1274, 1284 |  | 7 day week No holidays | 2502938 |
| 1288 | 36900.37000.37100.45500 | **61st Floor** | 970.25d | 2026-08-01 | 2029-03-28 |  | start no earlier than 2026-08-01 | 7 day week No holidays | 7285474 |
| 1289 | 36900.37000.37100.45500.331200 | 61st flr-Gypsum Plaster | 11d | 2026-08-01 | 2026-08-11 | 462, 474, 1276 |  | 7 day week No holidays | 2502948 |
| 1290 | 36900.37000.37100.45500.331300 | 61st flr-Kitchen Platform | 11d | 2026-12-10 | 2026-12-20 | 1277, 1289 |  | 7 day week No holidays | 2502958 |
| 1291 | 36900.37000.37100.45500.331400 | 61st flr-Toilet dado & flooring | 11d | 2026-09-18 | 2026-09-28 | 466, 1278 |  | 7 day week No holidays | 2502968 |
| 1292 | 36900.37000.37100.45500.331500 | 61st flr-Fire sprinkler pipe | 11d | 2026-08-12 | 2026-08-22 | 1279, 1289 |  | 7 day week No holidays | 2502978 |
| 1293 | 36900.37000.37100.45500.331600 | 61st flr-Flat flooring | 11d | 2026-09-29 | 2026-10-09 | 1280, 1291 |  | 7 day week No holidays | 2502988 |
| 1294 | 36900.37000.37100.45500.331700 | 61st flr-Main door fixing & frame fixing | 11d | 2027-12-28 | 2028-01-08 | 1281, 1293 |  | 7 day week No holidays | 2502998 |
| 1295 | 36900.37000.37100.45500.331800 | 61st flr-Window fixing | 11d | 2026-10-10 | 2026-10-20 | 1282, 1293 |  | 7 day week No holidays | 2503008 |
| 1296 | 36900.37000.37100.45500.331900 | 61st flr-Railing Fixing | 11d | 2028-11-28 | 2028-12-09 | 1283, 1293 |  | 7 day week No holidays | 2503018 |
| 1297 | 36900.37000.37100.45500.332000 | 61st flr-Internal painting - putty / primer application | 11d | 2028-02-06 | 2028-02-17 | 1284, 1293 |  | 7 day week No holidays | 2503028 |
| 1298 | 36900.37000.37100.45500.332100 | 61st flr-Flat electrical wiring | 11d | 2028-07-06 | 2028-07-17 | 1285, 1294 |  | 7 day week No holidays | 2503038 |
| 1299 | 36900.37000.37100.45500.332200 | 61st flr-Internal painting | 11d | 2028-07-17 | 2028-07-28 | 1286, 1298 |  | 7 day week No holidays | 2503048 |
| 1300 | 36900.37000.37100.45500.332300 | 61st flr-Internal shutter fixing | 11d | 2029-03-17 | 2029-03-28 | 1287, 1297 |  | 7 day week No holidays | 2503058 |

| ID | WBS | Task | Duration | Start | Finish | Predecessors | Constraint | Calendar | Unique_Task_ID |
| --- | --- | --- | --- | --- | --- | --- | --- | --- | --- |
| 1301 | 36900.37000.37100.45600 | **62nd Floor** | 965.25d | 2026-08-17 | 2029-04-08 |  | start no earlier than 2026-08-17 | 7 day week No holidays | 7285504 |
| 1302 | 36900.37000.37100.45600.332400 | 62nd flr-Gypsum Plaster | 11d | 2026-08-17 | 2026-08-27 | 468, 480, 1289 |  | 7 day week No holidays | 2503068 |
| 1303 | 36900.37000.37100.45600.332500 | 62nd flr-Kitchen Platform | 11d | 2026-12-21 | 2026-12-31 | 1290, 1302 |  | 7 day week No holidays | 2503078 |
| 1304 | 36900.37000.37100.45600.332600 | 62nd flr-Toilet dado & flooring | 11d | 2026-10-08 | 2026-10-18 | 472, 1291 |  | 7 day week No holidays | 2503088 |
| 1305 | 36900.37000.37100.45600.332700 | 62nd flr-Fire sprinkler pipe | 11d | 2026-08-28 | 2026-09-07 | 1292, 1302 |  | 7 day week No holidays | 2503098 |
| 1306 | 36900.37000.37100.45600.332800 | 62nd flr-Flat flooring | 11d | 2026-10-19 | 2026-10-29 | 1293, 1304 |  | 7 day week No holidays | 2503108 |
| 1307 | 36900.37000.37100.45600.332900 | 62nd flr-Main door fixing & frame fixing | 11d | 2028-01-08 | 2028-01-19 | 1294, 1306 |  | 7 day week No holidays | 2503118 |
| 1308 | 36900.37000.37100.45600.333000 | 62nd flr-Window fixing | 11d | 2026-10-30 | 2026-11-09 | 1295, 1306 |  | 7 day week No holidays | 2503128 |
| 1309 | 36900.37000.37100.45600.333100 | 62nd flr-Railing Fixing | 11d | 2028-12-09 | 2028-12-20 | 1296, 1306 |  | 7 day week No holidays | 2503138 |
| 1310 | 36900.37000.37100.45600.333200 | 62nd flr-Internal painting - putty / primer application | 11d | 2028-02-17 | 2028-02-28 | 1297, 1306 |  | 7 day week No holidays | 2503148 |
| 1311 | 36900.37000.37100.45600.333300 | 62nd flr-Flat electrical wiring | 11d | 2028-07-17 | 2028-07-28 | 1298, 1307 |  | 7 day week No holidays | 2503158 |
| 1312 | 36900.37000.37100.45600.333400 | 62nd flr-Internal painting | 11d | 2028-07-28 | 2028-08-08 | 1299, 1311 |  | 7 day week No holidays | 2503168 |
| 1313 | 36900.37000.37100.45600.333500 | 62nd flr-Internal shutter fixing | 11d | 2029-03-28 | 2029-04-08 | 1300, 1310 |  | 7 day week No holidays | 2503178 |
| 1314 | 36900.37000.37100.45700 | **63rd Floor** | 960.25d | 2026-09-02 | 2029-04-19 |  | start no earlier than 2026-09-02 | 7 day week No holidays | 7285514 |
| 1315 | 36900.37000.37100.45700.333600 | 63rd flr-Gypsum Plaster | 11d | 2026-09-02 | 2026-09-12 | 474, 486, 1302 |  | 7 day week No holidays | 2503188 |
| 1316 | 36900.37000.37100.45700.333700 | 63rd flr-Kitchen Platform | 11d | 2027-01-01 | 2027-01-11 | 1303, 1315 |  | 7 day week No holidays | 2503198 |
| 1317 | 36900.37000.37100.45700.333800 | 63rd flr-Toilet dado & flooring | 11d | 2026-11-07 | 2026-11-17 | 478, 1304 |  | 7 day week No holidays | 2503208 |
| 1318 | 36900.37000.37100.45700.333900 | 63rd flr-Fire sprinkler pipe | 11d | 2026-09-13 | 2026-09-23 | 1305, 1315 |  | 7 day week No holidays | 2503218 |
| 1319 | 36900.37000.37100.45700.334000 | 63rd flr-Flat flooring | 11d | 2026-11-18 | 2026-11-28 | 1306, 1317 |  | 7 day week No holidays | 2503228 |
| 1320 | 36900.37000.37100.45700.334100 | 63rd flr-Main door fixing & frame fixing | 11d | 2028-01-19 | 2028-01-30 | 1307, 1319 |  | 7 day week No holidays | 2503238 |
| 1321 | 36900.37000.37100.45700.334200 | 63rd flr-Window fixing | 11d | 2026-11-29 | 2026-12-09 | 1308, 1319 |  | 7 day week No holidays | 2503248 |
| 1322 | 36900.37000.37100.45700.334300 | 63rd flr-Railing Fixing | 11d | 2028-12-20 | 2028-12-31 | 1309, 1319 |  | 7 day week No holidays | 2503258 |
| 1323 | 36900.37000.37100.45700.334400 | 63rd flr-Internal painting - putty / primer application | 11d | 2028-02-28 | 2028-03-10 | 1310, 1319 |  | 7 day week No holidays | 2503268 |
| 1324 | 36900.37000.37100.45700.334500 | 63rd flr-Flat electrical wiring | 11d | 2028-07-28 | 2028-08-08 | 1311, 1320 |  | 7 day week No holidays | 2503278 |
| 1325 | 36900.37000.37100.45700.334600 | 63rd flr-Internal painting | 11d | 2028-08-08 | 2028-08-19 | 1312, 1324 |  | 7 day week No holidays | 2503288 |
| 1326 | 36900.37000.37100.45700.334700 | 63rd flr-Internal shutter fixing | 11d | 2029-04-08 | 2029-04-19 | 1313, 1323 |  | 7 day week No holidays | 2503298 |

| ID | WBS | Task | Duration | Start | Finish | Predecessors | Constraint | Calendar | Unique_Task_ID |
| --- | --- | --- | --- | --- | --- | --- | --- | --- | --- |
| 1327 | 36900.37000.37100.45800 | **64th Floor** | 955.25d | 2026-09-18 | 2029-04-30 |  | start no earlier than 2026-09-18 | 7 day week No holidays | 7285524 |
| 1328 | 36900.37000.37100.45800.334800 | 64th flr-Gypsum Plaster | 11d | 2026-09-18 | 2026-09-28 | 480, 492, 1315 |  | 7 day week No holidays | 2503308 |
| 1329 | 36900.37000.37100.45800.334900 | 64th flr-Kitchen Platform | 11d | 2027-01-12 | 2027-01-22 | 1316, 1328 |  | 7 day week No holidays | 2503318 |
| 1330 | 36900.37000.37100.45800.335000 | 64th flr-Toilet dado & flooring | 11d | 2027-07-13 | 2027-07-23 | 484, 1317 |  | 7 day week No holidays | 2503328 |
| 1331 | 36900.37000.37100.45800.335100 | 64th flr-Fire sprinkler pipe | 11d | 2026-09-29 | 2026-10-09 | 1318, 1328 |  | 7 day week No holidays | 2503338 |
| 1332 | 36900.37000.37100.45800.335200 | 64th flr-Flat flooring | 11d | 2027-07-24 | 2027-08-03 | 1319, 1330 |  | 7 day week No holidays | 2503348 |
| 1333 | 36900.37000.37100.45800.335300 | 64th flr-Main door fixing & frame fixing | 11d | 2028-01-30 | 2028-02-10 | 1320, 1332 |  | 7 day week No holidays | 2503358 |
| 1334 | 36900.37000.37100.45800.335400 | 64th flr-Window fixing | 11d | 2027-08-04 | 2027-08-14 | 1321, 1332 |  | 7 day week No holidays | 2503368 |
| 1335 | 36900.37000.37100.45800.335500 | 64th flr-Railing Fixing | 11d | 2028-12-31 | 2029-01-11 | 1322, 1332 |  | 7 day week No holidays | 2503378 |
| 1336 | 36900.37000.37100.45800.335600 | 64th flr-Internal painting - putty / primer application | 11d | 2028-03-10 | 2028-03-21 | 1323, 1332 |  | 7 day week No holidays | 2503388 |
| 1337 | 36900.37000.37100.45800.335700 | 64th flr-Flat electrical wiring | 11d | 2028-08-08 | 2028-08-19 | 1324, 1333 |  | 7 day week No holidays | 2503398 |
| 1338 | 36900.37000.37100.45800.335800 | 64th flr-Internal painting | 11d | 2028-08-19 | 2028-08-30 | 1325, 1337 |  | 7 day week No holidays | 2503408 |
| 1339 | 36900.37000.37100.45800.335900 | 64th flr-Internal shutter fixing | 11d | 2029-04-19 | 2029-04-30 | 1326, 1336 |  | 7 day week No holidays | 2503418 |
| 1340 | 36900.37000.37100.45900 | **65th Floor** | 950.25d | 2026-10-04 | 2029-05-11 |  | start no earlier than 2026-10-04 | 7 day week No holidays | 7285534 |
| 1341 | 36900.37000.37100.45900.336000 | 65th flr-Gypsum Plaster | 11d | 2026-10-04 | 2026-10-14 | 486, 498, 1328 |  | 7 day week No holidays | 2503428 |
| 1342 | 36900.37000.37100.45900.336100 | 65th flr-Kitchen Platform | 11d | 2027-01-23 | 2027-02-02 | 1329, 1341 |  | 7 day week No holidays | 2503438 |
| 1343 | 36900.37000.37100.45900.336200 | 65th flr-Toilet dado & flooring | 11d | 2027-07-24 | 2027-08-03 | 490, 1330 |  | 7 day week No holidays | 2503448 |
| 1344 | 36900.37000.37100.45900.336300 | 65th flr-Fire sprinkler pipe | 11d | 2026-10-15 | 2026-10-25 | 1331, 1341 |  | 7 day week No holidays | 2503458 |
| 1345 | 36900.37000.37100.45900.336400 | 65th flr-Flat flooring | 11d | 2027-08-04 | 2027-08-14 | 1332, 1343 |  | 7 day week No holidays | 2503468 |
| 1346 | 36900.37000.37100.45900.336500 | 65th flr-Main door fixing & frame fixing | 11d | 2028-02-10 | 2028-02-21 | 1333, 1345 |  | 7 day week No holidays | 2503478 |
| 1347 | 36900.37000.37100.45900.336600 | 65th flr-Window fixing | 11d | 2027-08-15 | 2027-08-25 | 1334, 1345 |  | 7 day week No holidays | 2503488 |
| 1348 | 36900.37000.37100.45900.336700 | 65th flr-Railing Fixing | 11d | 2029-01-11 | 2029-01-22 | 1335, 1345 |  | 7 day week No holidays | 2503498 |
| 1349 | 36900.37000.37100.45900.336800 | 65th flr-Internal painting - putty / primer application | 11d | 2028-03-21 | 2028-04-01 | 1336, 1345 |  | 7 day week No holidays | 2503508 |
| 1350 | 36900.37000.37100.45900.336900 | 65th flr-Flat electrical wiring | 11d | 2028-08-19 | 2028-08-30 | 1337, 1346 |  | 7 day week No holidays | 2503518 |
| 1351 | 36900.37000.37100.45900.337000 | 65th flr-Internal painting | 11d | 2028-08-30 | 2028-09-10 | 1338, 1350 |  | 7 day week No holidays | 2503528 |
| 1352 | 36900.37000.37100.45900.337100 | 65th flr-Internal shutter fixing | 11d | 2029-04-30 | 2029-05-11 | 1339, 1349 |  | 7 day week No holidays | 2503538 |

| ID | WBS | Task | Duration | Start | Finish | Predecessors | Constraint | Calendar | Unique_Task_ID |
| --- | --- | --- | --- | --- | --- | --- | --- | --- | --- |
| 1353 | 36900.37000.37100.46000 | **66th Floor** | 951.25d | 2026-10-15 | 2029-05-23 |  | start no earlier than 2026-10-15 | 7 day week No holidays | 7285544 |
| 1354 | 36900.37000.37100.46000.337200 | 66th flr-Gypsum Plaster | 14d | 2026-10-15 | 2026-10-28 | 492, 504, 1341 |  | 7 day week No holidays | 2503548 |
| 1355 | 36900.37000.37100.46000.337300 | 66th flr-Kitchen Platform | 8d | 2027-02-03 | 2027-02-10 | 1342, 1354 |  | 7 day week No holidays | 2503558 |
| 1356 | 36900.37000.37100.46000.337400 | 66th flr-Toilet dado & flooring | 14d | 2027-08-04 | 2027-08-17 | 496, 1343 |  | 7 day week No holidays | 2503568 |
| 1357 | 36900.37000.37100.46000.337500 | 66th flr-Fire sprinkler pipe | 12d | 2026-10-29 | 2026-11-09 | 1344, 1354 |  | 7 day week No holidays | 2503578 |
| 1358 | 36900.37000.37100.46000.337600 | 66th flr-Flat flooring | 14d | 2027-08-18 | 2027-08-31 | 1345, 1356 |  | 7 day week No holidays | 2503588 |
| 1359 | 36900.37000.37100.46000.337700 | 66th flr-Main door fixing & frame fixing | 14d | 2028-02-21 | 2028-03-06 | 1346, 1358 |  | 7 day week No holidays | 2503598 |
| 1360 | 36900.37000.37100.46000.337800 | 66th flr-Window fixing | 14d | 2027-09-01 | 2027-09-14 | 1347, 1358 |  | 7 day week No holidays | 2503608 |
| 1361 | 36900.37000.37100.46000.337900 | 66th flr-Railing Fixing | 14d | 2029-01-22 | 2029-02-05 | 1348, 1358 |  | 7 day week No holidays | 2503618 |
| 1362 | 36900.37000.37100.46000.338000 | 66th flr-Internal painting - putty / primer application | 14d | 2028-04-01 | 2028-04-15 | 1349, 1358 |  | 7 day week No holidays | 2503628 |
| 1363 | 36900.37000.37100.46000.338100 | 66th flr-Flat electrical wiring | 12d | 2028-08-30 | 2028-09-11 | 1350, 1359 |  | 7 day week No holidays | 2503638 |
| 1364 | 36900.37000.37100.46000.338200 | 66th flr-Internal painting | 10d | 2028-09-11 | 2028-09-21 | 1351, 1363 |  | 7 day week No holidays | 2503648 |
| 1365 | 36900.37000.37100.46000.338300 | 66th flr-Internal shutter fixing | 12d | 2029-05-11 | 2029-05-23 | 1352, 1362 |  | 7 day week No holidays | 2503658 |
| 1366 | 36900.37000.37100.46100 | **67th Floor** | 949.25d | 2026-10-29 | 2029-06-04 |  | start no earlier than 2026-10-29 | 7 day week No holidays | 7285924 |
| 1367 | 36900.37000.37100.46100.338400 | 67th flr-Gypsum Plaster | 14d | 2026-10-29 | 2026-11-11 | 498, 510, 1354 |  | 7 day week No holidays | 2503668 |
| 1368 | 36900.37000.37100.46100.338500 | 67th flr-Kitchen Platform | 8d | 2027-02-11 | 2027-02-18 | 1355, 1367 |  | 7 day week No holidays | 2503678 |
| 1369 | 36900.37000.37100.46100.338600 | 67th flr-Toilet dado & flooring | 14d | 2027-08-18 | 2027-08-31 | 502, 1356 |  | 7 day week No holidays | 2503688 |
| 1370 | 36900.37000.37100.46100.338700 | 67th flr-Fire sprinkler pipe | 12d | 2026-11-12 | 2026-11-23 | 1357, 1367 |  | 7 day week No holidays | 2503698 |
| 1371 | 36900.37000.37100.46100.338800 | 67th flr-Flat flooring | 14d | 2027-09-01 | 2027-09-14 | 1358, 1369 |  | 7 day week No holidays | 2503708 |
| 1372 | 36900.37000.37100.46100.338900 | 67th flr-Main door fixing & frame fixing | 14d | 2028-03-06 | 2028-03-20 | 1359, 1371 |  | 7 day week No holidays | 2503718 |
| 1373 | 36900.37000.37100.46100.339000 | 67th flr-Window fixing | 14d | 2027-09-15 | 2027-09-28 | 1360, 1371 |  | 7 day week No holidays | 2503728 |
| 1374 | 36900.37000.37100.46100.339100 | 67th flr-Railing Fixing | 14d | 2029-02-05 | 2029-02-19 | 1361, 1371 |  | 7 day week No holidays | 2503738 |
| 1375 | 36900.37000.37100.46100.339200 | 67th flr-Internal painting - putty / primer application | 14d | 2028-04-15 | 2028-04-29 | 1362, 1371 |  | 7 day week No holidays | 2503748 |
| 1376 | 36900.37000.37100.46100.339300 | 67th flr-Flat electrical wiring | 12d | 2028-09-11 | 2028-09-23 | 1363, 1372 |  | 7 day week No holidays | 2503758 |
| 1377 | 36900.37000.37100.46100.339400 | 67th flr-Internal painting | 10d | 2028-09-23 | 2028-10-03 | 1364, 1376 |  | 7 day week No holidays | 2503768 |
| 1378 | 36900.37000.37100.46100.339500 | 67th flr-Internal shutter fixing | 12d | 2029-05-23 | 2029-06-04 | 1365, 1375 |  | 7 day week No holidays | 2503778 |

| ID | WBS | Task | Duration | Start | Finish | Predecessors | Constraint | Calendar | Unique_Task_ID |
| --- | --- | --- | --- | --- | --- | --- | --- | --- | --- |
| 1379 | 36900.37000.37100.46200 | **68th Floor** | 947.25d | 2026-11-12 | 2029-06-16 |  | start no earlier than 2026-11-12 | 7 day week No holidays | 7285564 |
| 1380 | 36900.37000.37100.46200.339600 | 68th flr-Gypsum Plaster | 14d | 2026-11-12 | 2026-11-25 | 504, 516, 1367 |  | 7 day week No holidays | 2503788 |
| 1381 | 36900.37000.37100.46200.339700 | 68th flr-Kitchen Platform | 8d | 2027-02-19 | 2027-02-26 | 1368, 1380 |  | 7 day week No holidays | 2503798 |
| 1382 | 36900.37000.37100.46200.339800 | 68th flr-Toilet dado & flooring | 14d | 2027-09-01 | 2027-09-14 | 508, 1369 |  | 7 day week No holidays | 2503808 |
| 1383 | 36900.37000.37100.46200.339900 | 68th flr-Fire sprinkler pipe | 12d | 2026-11-26 | 2026-12-07 | 1370, 1380 |  | 7 day week No holidays | 2503818 |
| 1384 | 36900.37000.37100.46200.340000 | 68th flr-Flat flooring | 14d | 2027-09-15 | 2027-09-28 | 1371, 1382 |  | 7 day week No holidays | 2503828 |
| 1385 | 36900.37000.37100.46200.340100 | 68th flr-Main door fixing & frame fixing | 14d | 2028-03-20 | 2028-04-03 | 1372, 1384 |  | 7 day week No holidays | 2503838 |
| 1386 | 36900.37000.37100.46200.340200 | 68th flr-Window fixing | 14d | 2027-09-29 | 2027-10-12 | 1373, 1384 |  | 7 day week No holidays | 2503848 |
| 1387 | 36900.37000.37100.46200.340300 | 68th flr-Railing Fixing | 14d | 2029-02-19 | 2029-03-05 | 1374, 1384 |  | 7 day week No holidays | 2503858 |
| 1388 | 36900.37000.37100.46200.340400 | 68th flr-Internal painting - putty / primer application | 14d | 2028-04-29 | 2028-05-13 | 1375, 1384 |  | 7 day week No holidays | 2503868 |
| 1389 | 36900.37000.37100.46200.340500 | 68th flr-Flat electrical wiring | 12d | 2028-09-23 | 2028-10-05 | 1376, 1385 |  | 7 day week No holidays | 2503878 |
| 1390 | 36900.37000.37100.46200.340600 | 68th flr-Internal painting | 10d | 2028-10-05 | 2028-10-15 | 1377, 1389 |  | 7 day week No holidays | 2503888 |
| 1391 | 36900.37000.37100.46200.340700 | 68th flr-Internal shutter fixing | 12d | 2029-06-04 | 2029-06-16 | 1378, 1388 |  | 7 day week No holidays | 2503898 |
| 1392 | 36900.37000.37100.46300 | **69th Floor** | 945.25d | 2026-11-26 | 2029-06-28 |  | start no earlier than 2026-11-26 | 7 day week No holidays | 7285574 |
| 1393 | 36900.37000.37100.46300.340800 | 69th flr-Gypsum Plaster | 14d | 2026-11-26 | 2026-12-09 | 510, 522, 1380 |  | 7 day week No holidays | 2503908 |
| 1394 | 36900.37000.37100.46300.340900 | 69th flr-Kitchen Platform | 8d | 2027-02-27 | 2027-03-06 | 1381, 1393 |  | 7 day week No holidays | 2503918 |
| 1395 | 36900.37000.37100.46300.341000 | 69th flr-Toilet dado & flooring | 14d | 2027-09-15 | 2027-09-28 | 514, 1382 |  | 7 day week No holidays | 2503928 |
| 1396 | 36900.37000.37100.46300.341100 | 69th flr-Fire sprinkler pipe | 12d | 2026-12-10 | 2026-12-21 | 1383, 1393 |  | 7 day week No holidays | 2503938 |
| 1397 | 36900.37000.37100.46300.341200 | 69th flr-Flat flooring | 14d | 2027-09-29 | 2027-10-12 | 1384, 1395 |  | 7 day week No holidays | 2503948 |
| 1398 | 36900.37000.37100.46300.341400 | 69th flr-Main door fixing & frame fixing | 14d | 2028-04-03 | 2028-04-17 | 1385, 1397 |  | 7 day week No holidays | 2503958 |
| 1399 | 36900.37000.37100.46300.341500 | 69th flr-Window fixing | 14d | 2027-10-13 | 2027-10-26 | 1386, 1397 |  | 7 day week No holidays | 2503968 |
| 1400 | 36900.37000.37100.46300.341600 | 69th flr-Railing Fixing | 14d | 2029-03-05 | 2029-03-19 | 1387, 1397 |  | 7 day week No holidays | 2503978 |
| 1401 | 36900.37000.37100.46300.341700 | 69th flr-Internal painting - putty / primer application | 14d | 2028-05-13 | 2028-05-27 | 1388, 1397 |  | 7 day week No holidays | 2503988 |
| 1402 | 36900.37000.37100.46300.341800 | 69th flr-Flat electrical wiring | 12d | 2028-10-05 | 2028-10-17 | 1389, 1398 |  | 7 day week No holidays | 2503998 |
| 1403 | 36900.37000.37100.46300.341900 | 69th flr-Internal painting | 10d | 2028-10-17 | 2028-10-27 | 1390, 1402 |  | 7 day week No holidays | 2504008 |
| 1404 | 36900.37000.37100.46300.342000 | 69th flr-Internal shutter fixing | 12d | 2029-06-16 | 2029-06-28 | 1391, 1401 |  | 7 day week No holidays | 2504018 |

| ID | WBS | Task | Duration | Start | Finish | Predecessors | Constraint | Calendar | Unique_Task_ID |
| --- | --- | --- | --- | --- | --- | --- | --- | --- | --- |
| 1405 | 36900.37000.37100.46400 | **70th Floor** | 943.25d | 2026-12-10 | 2029-07-10 |  | start no earlier than 2026-12-10 | 7 day week No holidays | 7285584 |
| 1406 | 36900.37000.37100.46400.342100 | 70th flr-Gypsum Plaster | 14d | 2026-12-10 | 2026-12-23 | 516, 528, 1393 |  | 7 day week No holidays | 2504028 |
| 1407 | 36900.37000.37100.46400.342200 | 70th flr-Kitchen Platform | 8d | 2027-03-07 | 2027-03-14 | 1394, 1406 |  | 7 day week No holidays | 2504038 |
| 1408 | 36900.37000.37100.46400.342300 | 70th flr-Toilet dado & flooring | 14d | 2027-09-29 | 2027-10-12 | 520, 1395 |  | 7 day week No holidays | 2504048 |
| 1409 | 36900.37000.37100.46400.342400 | 70th flr-Fire sprinkler pipe | 12d | 2026-12-24 | 2027-01-04 | 1396, 1406 |  | 7 day week No holidays | 2504058 |
| 1410 | 36900.37000.37100.46400.342500 | 70th flr-Flat flooring | 14d | 2027-10-13 | 2027-10-26 | 1397, 1408 |  | 7 day week No holidays | 2504068 |
| 1411 | 36900.37000.37100.46400.342600 | 70th flr-Main door fixing & frame fixing | 14d | 2028-04-17 | 2028-05-01 | 1398, 1410 |  | 7 day week No holidays | 2504078 |
| 1412 | 36900.37000.37100.46400.342700 | 70th flr-Window fixing | 14d | 2027-10-27 | 2027-11-09 | 1399, 1410 |  | 7 day week No holidays | 2504088 |
| 1413 | 36900.37000.37100.46400.342800 | 70th flr-Railing Fixing | 14d | 2029-03-19 | 2029-04-02 | 1400, 1410 |  | 7 day week No holidays | 2504098 |
| 1414 | 36900.37000.37100.46400.342900 | 70th flr-Internal painting - putty / primer application | 14d | 2028-05-27 | 2028-06-10 | 1401, 1410 |  | 7 day week No holidays | 2504108 |
| 1415 | 36900.37000.37100.46400.343000 | 70th flr-Flat electrical wiring | 12d | 2028-10-17 | 2028-10-29 | 1402, 1411 |  | 7 day week No holidays | 2504118 |
| 1416 | 36900.37000.37100.46400.343100 | 70th flr-Internal painting | 10d | 2028-10-29 | 2028-11-08 | 1403, 1415 |  | 7 day week No holidays | 2504128 |
| 1417 | 36900.37000.37100.46400.343200 | 70th flr-Internal shutter fixing | 12d | 2029-06-28 | 2029-07-10 | 1404, 1414 |  | 7 day week No holidays | 2504138 |
| 1418 | 36900.37000.37100.46500 | **71st Floor** | 941.25d | 2026-12-24 | 2029-07-22 |  | start no earlier than 2026-12-24 | 7 day week No holidays | 7285594 |
| 1419 | 36900.37000.37100.46500.343300 | 71st flr-Gypsum Plaster | 14d | 2026-12-24 | 2027-01-06 | 522, 1406 |  | 7 day week No holidays | 2504148 |
| 1420 | 36900.37000.37100.46500.343400 | 71st flr-Kitchen Platform | 8d | 2027-03-15 | 2027-03-22 | 1407, 1419 |  | 7 day week No holidays | 2504158 |
| 1421 | 36900.37000.37100.46500.343500 | 71st flr-Toilet dado & flooring | 14d | 2027-10-13 | 2027-10-26 | 526, 1408 |  | 7 day week No holidays | 2504168 |
| 1422 | 36900.37000.37100.46500.343600 | 71st flr-Fire sprinkler pipe | 12d | 2027-01-07 | 2027-01-18 | 1409, 1419 |  | 7 day week No holidays | 2504178 |
| 1423 | 36900.37000.37100.46500.343700 | 71st flr-Flat flooring | 14d | 2027-10-27 | 2027-11-09 | 1410, 1421 |  | 7 day week No holidays | 2504188 |
| 1424 | 36900.37000.37100.46500.343800 | 71st flr-Main door fixing & frame fixing | 14d | 2028-05-01 | 2028-05-15 | 1411, 1423 |  | 7 day week No holidays | 2504198 |
| 1425 | 36900.37000.37100.46500.343900 | 71st flr-Window fixing | 14d | 2027-11-10 | 2027-11-23 | 1412, 1423 |  | 7 day week No holidays | 2504208 |
| 1426 | 36900.37000.37100.46500.344000 | 71st flr-Railing Fixing | 14d | 2029-04-02 | 2029-04-16 | 1413, 1423 |  | 7 day week No holidays | 2504218 |
| 1427 | 36900.37000.37100.46500.344100 | 71st flr-Internal painting - putty / primer application | 14d | 2028-06-10 | 2028-06-24 | 1414, 1423 |  | 7 day week No holidays | 2504228 |
| 1428 | 36900.37000.37100.46500.344200 | 71st flr-Flat electrical wiring | 12d | 2028-10-29 | 2028-11-10 | 1415, 1424 |  | 7 day week No holidays | 2504238 |
| 1429 | 36900.37000.37100.46500.344300 | 71st flr-Internal painting | 10d | 2028-11-10 | 2028-11-20 | 1416, 1428 |  | 7 day week No holidays | 2504248 |
| 1430 | 36900.37000.37100.46500.344400 | 71st flr-Internal shutter fixing | 12d | 2029-07-10 | 2029-07-22 | 1417, 1427 |  | 7 day week No holidays | 2504258 |

| ID | WBS | Task | Duration | Start | Finish | Predecessors | Complete | Constraint | Calendar | Unique_Task_ID |
| --- | --- | --- | --- | --- | --- | --- | --- | --- | --- | --- |
| 1431 | 36900.37000.37100.46600 | **72nd Floor** | 939.25d | 2027-01-07 | 2029-08-03 |  |  | start no earlier than 2027-01-07 | 7 day week No holidays | 7285604 |
| 1432 | 36900.37000.37100.46600.344500 | 72nd flr-Gypsum Plaster | 14d | 2027-01-07 | 2027-01-20 | 528, 1419 |  |  | 7 day week No holidays | 2504268 |
| 1433 | 36900.37000.37100.46600.344600 | 72nd flr-Kitchen Platform | 8d | 2027-03-23 | 2027-03-30 | 1420, 1432 |  |  | 7 day week No holidays | 2504278 |
| 1434 | 36900.37000.37100.46600.344700 | 72nd flr-Toilet dado & flooring | 14d | 2027-10-27 | 2027-11-09 | 532, 1421 |  |  | 7 day week No holidays | 2504288 |
| 1435 | 36900.37000.37100.46600.344800 | 72nd flr-Fire sprinkler pipe | 12d | 2027-01-21 | 2027-02-01 | 1422, 1432 |  |  | 7 day week No holidays | 2504298 |
| 1436 | 36900.37000.37100.46600.344900 | 72nd flr-Flat flooring | 14d | 2027-11-10 | 2027-11-23 | 1423, 1434 |  |  | 7 day week No holidays | 2504308 |
| 1437 | 36900.37000.37100.46600.345000 | 72nd flr-Main door fixing & frame fixing | 14d | 2028-05-15 | 2028-05-29 | 1424, 1436 |  |  | 7 day week No holidays | 2504318 |
| 1438 | 36900.37000.37100.46600.345100 | 72nd flr-Window fixing | 14d | 2027-11-24 | 2027-12-07 | 1425, 1436 |  |  | 7 day week No holidays | 2504328 |
| 1439 | 36900.37000.37100.46600.345200 | 72nd flr-Railing Fixing | 14d | 2029-04-16 | 2029-04-30 | 1426, 1436 |  |  | 7 day week No holidays | 2504338 |
| 1440 | 36900.37000.37100.46600.345300 | 72nd flr-Internal painting - putty / primer application | 14d | 2028-06-24 | 2028-07-08 | 1427, 1436 |  |  | 7 day week No holidays | 2504348 |
| 1441 | 36900.37000.37100.46600.345400 | 72nd flr-Flat electrical wiring | 12d | 2028-11-10 | 2028-11-22 | 1428, 1437 |  |  | 7 day week No holidays | 2504358 |
| 1442 | 36900.37000.37100.46600.345500 | 72nd flr-Internal painting | 10d | 2028-11-22 | 2028-12-02 | 1429, 1441 |  |  | 7 day week No holidays | 2504368 |
| 1443 | 36900.37000.37100.46600.345600 | 72nd flr-Internal shutter fixing | 12d | 2029-07-22 | 2029-08-03 | 1430, 1440 |  |  | 7 day week No holidays | 2504378 |
| 1444 | 36900.37000.123300 | Basement(1 & 2) - Internal finishing & services | 90d | 2029-05-11 | 2029-08-09 | 539, 1340 |  |  | 7 day week No holidays | 7289314 |
| 1445 | 36900.37000.123400 | Podium Floors - Internal finishing & Services | 150d | 2029-03-17 | 2029-08-14 | 1275 |  |  | 7 day week No holidays | 7289324 |
| 1446 | 36900.37000.123500 | GF - Internal finishing & services | 180d | 2029-05-11 | 2029-11-07 | 551, 1340 |  |  | 7 day week No holidays | 7289334 |
| 1447 | 36900.79600 | Facade PMU + Shop dwg | 53.55d | 2025-03-21 | 2025-10-24 |  | 80% | start no earlier than 2025-03-21 | Indian Calendar | 10338849 |
| 1448 | 36900.79700 | Other coc packages | 800d | 2025-01-04 | 2027-11-25 |  | 45% | start no earlier than 2025-01-04 | Indian Calendar | 10338869 |
| 1449 | 36900.51100 | **Common MEP Works** | 845d | 2025-10-13 | 2028-02-04 |  |  | start no earlier than 2025-10-13 | 7 day week No holidays | 7285964 |
| 1450 | 36900.51100.67100 | **Lift** | 640d | 2025-10-13 | 2027-07-14 |  |  | start no earlier than 2025-10-13 | 7 day week No holidays | 7289284 |
| 1451 | 36900.51100.67100.143300 | Lift Shaft Handover | 30d | 2026-11-02 | 2026-12-01 | 70 |  |  | 7 day week No holidays | 7290354 |
| 1452 | 36900.51100.67100.143400 | Lift installation work | 210d | 2026-12-02 | 2027-06-29 | 1451 |  |  | 7 day week No holidays | 7290364 |
| 1453 | 36900.51100.67100.143500 | Lift pressurization | 15d | 2027-06-30 | 2027-07-14 | 1452 |  |  | 7 day week No holidays | 7290374 |
| 1454 | 36900.51100.67100.143600 | Lift-Order Date | 1d | 2025-10-13 | 2025-10-13 | 46 |  |  | 7 day week No holidays | 7562233 |
| 1455 | 36900.51100.67100.143700 | Lift-Shop Drawing Approval Date | 90d | 2026-01-22 | 2026-04-21 | 1454FS+100d |  |  | 7 day week No holidays | 7562243 |
| 1456 | 36900.51100.67100.143800 | Lift-Start of Supply for first lot date | 180d | 2026-08-04 | 2027-01-30 | 69, 1455FF |  |  | 7 day week No holidays | 7562253 |

| ID | WBS | Task | Duration | Start | Finish | Predecessors | Constraint | Calendar | Unique_Task_ID |
| --- | --- | --- | --- | --- | --- | --- | --- | --- | --- |
| 1457 | 36900.51100.77900 | **Plumbing works** | 845d | 2025-10-13 | 2028-02-04 |  | start no earlier than 2025-10-13 | 7 day week No holidays | 7289274 |
| 1458 | 36900.51100.77900.143900 | Shaft Plumbing | 800d | 2025-10-13 | 2027-12-21 | 276 |  | 7 day week No holidays | 7290384 |
| 1459 | 36900.51100.77900.144000 | Terrace looping | 45d | 2026-11-02 | 2026-12-16 | 70 |  | 7 day week No holidays | 7290394 |
| 1460 | 36900.51100.77900.144100 | Sanitary fittings | 45d | 2027-12-22 | 2028-02-04 | 1458 |  | 7 day week No holidays | 7290404 |
| 1461 | 36900.51100.77900.144200 | Solar water heater | 90d | 2026-12-17 | 2027-03-16 | 1459 |  | 7 day week No holidays | 7290414 |
| 1462 | 36900.51100.78400 | **Fire Fighting works** | 800d | 2025-10-13 | 2027-12-21 |  | start no earlier than 2025-10-13 | 7 day week No holidays | 7289294 |
| 1463 | 36900.51100.78400.144300 | Fire duct downtake | 800d | 2025-10-13 | 2027-12-21 | 276 |  | 7 day week No holidays | 7290424 |
| 1464 | 36900.51100.78400.144400 | FA & PA | 800d | 2025-10-13 | 2027-12-21 | 276FS-10d |  | 7 day week No holidays | 7290434 |
| 1465 | 36900.51100.78400.144500 | Fire accessories fitting | 800d | 2025-10-13 | 2027-12-21 | 276 |  | 7 day week No holidays | 7290444 |
| 1466 | 36900.51100.68400 | **Electrical works** | 560d | 2026-04-06 | 2027-10-17 |  | start no earlier than 2026-04-06 | 7 day week No holidays | 7289114 |
| 1467 | 36900.51100.68400.144600 | Shaft, Common area wiring & DB fixing | 500d | 2026-04-06 | 2027-08-18 | 276FS+500d |  | 7 day week No holidays | 7290454 |
| 1468 | 36900.51100.68400.144700 | Meter room erection | 60d | 2027-08-19 | 2027-10-17 | 1467 |  | 7 day week No holidays | 7290464 |
| 1469 | 36900.51100.68400.144800 | Panel erection | 60d | 2027-08-19 | 2027-10-17 | 2070, 1467 |  | 7 day week No holidays | 7290474 |
| 1470 | 36900.51100.68400.144900 | DG Installtion | 60d | 2027-08-19 | 2027-10-17 | 2071, 1467 |  | 7 day week No holidays | 7290484 |
| 1471 | 36900.51100.68400.145000 | Transformer erection | 60d | 2027-08-19 | 2027-10-17 | 2072, 1467 |  | 7 day week No holidays | 7290494 |
| 1472 | 36900.51100.123600 | Services completion | 30d | 2027-12-22 | 2028-01-20 | 1458, 1459, 1464, 1471, 1465 |  | 7 day week No holidays | 7289344 |
| 1473 | 36900.37200 | **Lift Lobby & Staircase Finishing Works** | 426d | 2026-07-17 | 2027-09-15 |  | start no earlier than 2026-07-17 | 7 day week No holidays | 7284394 |
| 1474 | 36900.37200.62600 | **GF Floor** | 42d | 2026-07-17 | 2026-08-27 |  | start no earlier than 2026-07-17 | 7 day week No holidays | 7285984 |
| 1475 | 36900.37200.62600.145100 | Lift blockwork | 6d | 2026-07-17 | 2026-07-22 | 456FS+60d |  | 7 day week No holidays | 7290504 |
| 1476 | 36900.37200.62600.145200 | Lobby architrave work | 10d | 2026-07-23 | 2026-08-01 | 1475 |  | 7 day week No holidays | 7290514 |
| 1477 | 36900.37200.62600.145300 | Lobby gypsum plaster | 8d | 2026-08-02 | 2026-08-09 | 1476 |  | 7 day week No holidays | 7290524 |
| 1478 | 36900.37200.62600.145400 | Staircase epoxy paint | 10d | 2026-08-10 | 2026-08-19 | 1477 |  | 7 day week No holidays | 7290534 |
| 1479 | 36900.37200.62600.145500 | Staircase railing | 6d | 2026-08-10 | 2026-08-15 | 1477 |  | 7 day week No holidays | 7290544 |
| 1480 | 36900.37200.62600.145600 | Lobby flooring work | 8d | 2026-08-10 | 2026-08-17 | 1477 |  | 7 day week No holidays | 7290554 |
| 1481 | 36900.37200.62600.145700 | Painting | 10d | 2026-08-18 | 2026-08-27 | 1480 |  | 7 day week No holidays | 7290564 |
| 1482 | 36900.37200.62600.145800 | Fire rated doors | 6d | 2026-08-18 | 2026-08-23 | 1480 |  | 7 day week No holidays | 7290574 |

| ID | WBS | Task | Duration | Start | Finish | Predecessors | Constraint | Calendar | Unique_Task_ID |
| --- | --- | --- | --- | --- | --- | --- | --- | --- | --- |
| 1483 | 36900.37200.62800 | **Podium Floors** | 42d | 2026-07-23 | 2026-09-02 |  | start no earlier than 2026-07-23 | 7 day week No holidays | 7285994 |
| 1484 | 36900.37200.62800.145900 | Lift blockwork | 6d | 2026-07-23 | 2026-07-28 | 1475 |  | 7 day week No holidays | 7290584 |
| 1485 | 36900.37200.62800.146000 | Lobby architrave work | 10d | 2026-07-29 | 2026-08-07 | 1484 |  | 7 day week No holidays | 7290594 |
| 1486 | 36900.37200.62800.146100 | Lobby gypsum plaster | 8d | 2026-08-08 | 2026-08-15 | 1485 |  | 7 day week No holidays | 7290604 |
| 1487 | 36900.37200.62800.146200 | Staircase epoxy paint | 10d | 2026-08-16 | 2026-08-25 | 1486 |  | 7 day week No holidays | 7290614 |
| 1488 | 36900.37200.62800.146300 | Staircase railing | 6d | 2026-08-16 | 2026-08-21 | 1486 |  | 7 day week No holidays | 7290624 |
| 1489 | 36900.37200.62800.146400 | Lobby flooring work | 8d | 2026-08-16 | 2026-08-23 | 1486 |  | 7 day week No holidays | 7290634 |
| 1490 | 36900.37200.62800.146500 | Painting | 10d | 2026-08-24 | 2026-09-02 | 1489 |  | 7 day week No holidays | 7290644 |
| 1491 | 36900.37200.62800.146600 | Fire rated doors | 6d | 2026-08-24 | 2026-08-29 | 1489 |  | 7 day week No holidays | 7290654 |
| 1492 | 36900.37200.62700 | **9th Floor** | 42d | 2026-07-29 | 2026-09-08 |  | start no earlier than 2026-07-29 | 7 day week No holidays | 7286004 |
| 1493 | 36900.37200.62700.146700 | Lift blockwork | 6d | 2026-07-29 | 2026-08-03 | 1484 |  | 7 day week No holidays | 7290664 |
| 1494 | 36900.37200.62700.146800 | Lobby architrave work | 10d | 2026-08-04 | 2026-08-13 | 1493 |  | 7 day week No holidays | 7290674 |
| 1495 | 36900.37200.62700.146900 | Lobby gypsum plaster | 8d | 2026-08-14 | 2026-08-21 | 1494 |  | 7 day week No holidays | 7290684 |
| 1496 | 36900.37200.62700.147000 | Staircase epoxy paint | 10d | 2026-08-22 | 2026-08-31 | 1495 |  | 7 day week No holidays | 7290694 |
| 1497 | 36900.37200.62700.147100 | Staircase railing | 6d | 2026-08-22 | 2026-08-27 | 1495 |  | 7 day week No holidays | 7290704 |
| 1498 | 36900.37200.62700.147200 | Lobby flooring work | 8d | 2026-08-22 | 2026-08-29 | 1495 |  | 7 day week No holidays | 7290714 |
| 1499 | 36900.37200.62700.147300 | Painting | 10d | 2026-08-30 | 2026-09-08 | 1498 |  | 7 day week No holidays | 7290724 |
| 1500 | 36900.37200.62700.147400 | Fire rated doors | 6d | 2026-08-30 | 2026-09-04 | 1498 |  | 7 day week No holidays | 7290734 |
| 1501 | 36900.37200.62500 | **10th Floor** | 42d | 2026-08-04 | 2026-09-14 |  | start no earlier than 2026-08-04 | 7 day week No holidays | 7286014 |
| 1502 | 36900.37200.62500.147500 | Lift blockwork | 6d | 2026-08-04 | 2026-08-09 | 1493 |  | 7 day week No holidays | 7290744 |
| 1503 | 36900.37200.62500.147600 | Lobby architrave work | 10d | 2026-08-10 | 2026-08-19 | 1502 |  | 7 day week No holidays | 7290754 |
| 1504 | 36900.37200.62500.147700 | Lobby gypsum plaster | 8d | 2026-08-20 | 2026-08-27 | 1503 |  | 7 day week No holidays | 7290764 |
| 1505 | 36900.37200.62500.147800 | Staircase epoxy paint | 10d | 2026-08-28 | 2026-09-06 | 1504 |  | 7 day week No holidays | 7290774 |
| 1506 | 36900.37200.62500.147900 | Staircase railing | 6d | 2026-08-28 | 2026-09-02 | 1504 |  | 7 day week No holidays | 7290784 |
| 1507 | 36900.37200.62500.148000 | Lobby flooring work | 8d | 2026-08-28 | 2026-09-04 | 1504 |  | 7 day week No holidays | 7290794 |
| 1508 | 36900.37200.62500.148100 | Painting | 10d | 2026-09-05 | 2026-09-14 | 1507 |  | 7 day week No holidays | 7290804 |
| 1509 | 36900.37200.62500.148200 | Fire rated doors | 6d | 2026-09-05 | 2026-09-10 | 1507 |  | 7 day week No holidays | 7290814 |

| ID | WBS | Task | Duration | Start | Finish | Predecessors | Constraint | Calendar | Unique_Task_ID |
| --- | --- | --- | --- | --- | --- | --- | --- | --- | --- |
| 1510 | 36900.37200.62400 | **11th Floor** | 42d | 2026-08-10 | 2026-09-20 |  | start no earlier than 2026-08-10 | 7 day week No holidays | 7286024 |
| 1511 | 36900.37200.62400.148300 | Lift blockwork | 6d | 2026-08-10 | 2026-08-15 | 1502 |  | 7 day week No holidays | 7290824 |
| 1512 | 36900.37200.62400.148400 | Lobby architrave work | 10d | 2026-08-16 | 2026-08-25 | 1511 |  | 7 day week No holidays | 7290834 |
| 1513 | 36900.37200.62400.148500 | Lobby gypsum plaster | 8d | 2026-08-26 | 2026-09-02 | 1512 |  | 7 day week No holidays | 7290844 |
| 1514 | 36900.37200.62400.148600 | Staircase epoxy paint | 10d | 2026-09-03 | 2026-09-12 | 1513 |  | 7 day week No holidays | 7290854 |
| 1515 | 36900.37200.62400.148700 | Staircase railing | 6d | 2026-09-03 | 2026-09-08 | 1513 |  | 7 day week No holidays | 7290864 |
| 1516 | 36900.37200.62400.148800 | Lobby flooring work | 8d | 2026-09-03 | 2026-09-10 | 1513 |  | 7 day week No holidays | 7290874 |
| 1517 | 36900.37200.62400.148900 | Painting | 10d | 2026-09-11 | 2026-09-20 | 1516 |  | 7 day week No holidays | 7290884 |
| 1518 | 36900.37200.62400.149000 | Fire rated doors | 6d | 2026-09-11 | 2026-09-16 | 1516 |  | 7 day week No holidays | 7290894 |
| 1519 | 36900.37200.62300 | **12th Floor** | 42d | 2026-08-16 | 2026-09-26 |  | start no earlier than 2026-08-16 | 7 day week No holidays | 7286034 |
| 1520 | 36900.37200.62300.149100 | Lift blockwork | 6d | 2026-08-16 | 2026-08-21 | 1511 |  | 7 day week No holidays | 7290904 |
| 1521 | 36900.37200.62300.149200 | Lobby architrave work | 10d | 2026-08-22 | 2026-08-31 | 1520 |  | 7 day week No holidays | 7290914 |
| 1522 | 36900.37200.62300.149300 | Lobby gypsum plaster | 8d | 2026-09-01 | 2026-09-08 | 1521 |  | 7 day week No holidays | 7290924 |
| 1523 | 36900.37200.62300.149400 | Staircase epoxy paint | 10d | 2026-09-09 | 2026-09-18 | 1522 |  | 7 day week No holidays | 7290934 |
| 1524 | 36900.37200.62300.149500 | Staircase railing | 6d | 2026-09-09 | 2026-09-14 | 1522 |  | 7 day week No holidays | 7290944 |
| 1525 | 36900.37200.62300.149600 | Lobby flooring work | 8d | 2026-09-09 | 2026-09-16 | 1522 |  | 7 day week No holidays | 7290954 |
| 1526 | 36900.37200.62300.149700 | Painting | 10d | 2026-09-17 | 2026-09-26 | 1525 |  | 7 day week No holidays | 7290964 |
| 1527 | 36900.37200.62300.149800 | Fire rated doors | 6d | 2026-09-17 | 2026-09-22 | 1525 |  | 7 day week No holidays | 7290974 |
| 1528 | 36900.37200.62200 | **13th Floor** | 79d | 2026-08-22 | 2026-11-08 |  | start no earlier than 2026-08-22 | 7 day week No holidays | 7286044 |
| 1529 | 36900.37200.62200.149900 | Lift blockwork | 6d | 2026-08-22 | 2026-08-27 | 1520 |  | 7 day week No holidays | 7290984 |
| 1530 | 36900.37200.62200.150000 | Lobby architrave work | 10d | 2026-08-28 | 2026-09-06 | 1529 |  | 7 day week No holidays | 7290994 |
| 1531 | 36900.37200.62200.150100 | Lobby gypsum plaster | 8d | 2026-09-07 | 2026-09-14 | 1530 |  | 7 day week No holidays | 7291004 |
| 1532 | 36900.37200.62200.150200 | Staircase epoxy paint | 10d | 2026-09-15 | 2026-09-24 | 1531 |  | 7 day week No holidays | 7291014 |
| 1533 | 36900.37200.62200.150300 | Staircase railing | 6d | 2026-09-15 | 2026-09-20 | 1531 |  | 7 day week No holidays | 7291024 |
| 1534 | 36900.37200.62200.150400 | Lobby flooring work | 55d | 2026-09-15 | 2026-11-08 | 1531 |  | 7 day week No holidays | 7291034 |
| 1535 | 36900.37200.62200.150500 | Painting | 10d | 2026-09-17 | 2026-09-26 | 1525 |  | 7 day week No holidays | 7291044 |
| 1536 | 36900.37200.62200.150600 | Fire rated doors | 6d | 2026-09-17 | 2026-09-22 | 1525 |  | 7 day week No holidays | 7291054 |

| ID | WBS | Task | Duration | Start | Finish | Predecessors | Constraint | Calendar | Unique_Task_ID |
| --- | --- | --- | --- | --- | --- | --- | --- | --- | --- |
| 1537 | 36900.37200.62000 | **14th Floor** | 98d | 2026-08-28 | 2026-12-03 |  | start no earlier than 2026-08-28 | 7 day week No holidays | 7286054 |
| 1538 | 36900.37200.62000.150700 | Lift blockwork | 6d | 2026-08-28 | 2026-09-02 | 1529 |  | 7 day week No holidays | 7291064 |
| 1539 | 36900.37200.62000.150800 | Lobby architrave work | 10d | 2026-09-03 | 2026-09-12 | 1538 |  | 7 day week No holidays | 7291074 |
| 1540 | 36900.37200.62000.150900 | Lobby gypsum plaster | 8d | 2026-09-13 | 2026-09-20 | 1539 |  | 7 day week No holidays | 7291084 |
| 1541 | 36900.37200.62000.151000 | Staircase epoxy paint | 10d | 2026-09-21 | 2026-09-30 | 1540 |  | 7 day week No holidays | 7291094 |
| 1542 | 36900.37200.62000.151100 | Staircase railing | 6d | 2026-09-21 | 2026-09-26 | 1540 |  | 7 day week No holidays | 7291104 |
| 1543 | 36900.37200.62000.151200 | Lobby flooring work | 15d | 2026-11-09 | 2026-11-23 | 1534 |  | 7 day week No holidays | 7291114 |
| 1544 | 36900.37200.62000.151300 | Painting | 10d | 2026-11-24 | 2026-12-03 | 1543 |  | 7 day week No holidays | 7291124 |
| 1545 | 36900.37200.62000.151400 | Fire rated doors | 6d | 2026-11-24 | 2026-11-29 | 1543 |  | 7 day week No holidays | 7291134 |
| 1546 | 36900.37200.61900 | **15th Floor** | 100d | 2026-09-03 | 2026-12-11 |  | start no earlier than 2026-09-03 | 7 day week No holidays | 7286064 |
| 1547 | 36900.37200.61900.151500 | Lift blockwork | 6d | 2026-09-03 | 2026-09-08 | 1538 |  | 7 day week No holidays | 7291144 |
| 1548 | 36900.37200.61900.151600 | Lobby architrave work | 10d | 2026-09-09 | 2026-09-18 | 1547 |  | 7 day week No holidays | 7291154 |
| 1549 | 36900.37200.61900.151700 | Lobby gypsum plaster | 8d | 2026-09-19 | 2026-09-26 | 1548 |  | 7 day week No holidays | 7291164 |
| 1550 | 36900.37200.61900.151800 | Staircase epoxy paint | 10d | 2026-09-27 | 2026-10-06 | 1549 |  | 7 day week No holidays | 7291174 |
| 1551 | 36900.37200.61900.151900 | Staircase railing | 6d | 2026-09-27 | 2026-10-02 | 1549 |  | 7 day week No holidays | 7291184 |
| 1552 | 36900.37200.61900.152000 | Lobby flooring work | 8d | 2026-11-24 | 2026-12-01 | 1543 |  | 7 day week No holidays | 7291194 |
| 1553 | 36900.37200.61900.152100 | Painting | 10d | 2026-12-02 | 2026-12-11 | 1552 |  | 7 day week No holidays | 7291204 |
| 1554 | 36900.37200.61900.152200 | Fire rated doors | 6d | 2026-12-02 | 2026-12-07 | 1552 |  | 7 day week No holidays | 7291214 |
| 1555 | 36900.37200.61100 | **16th Floor** | 109d | 2026-09-09 | 2026-12-26 |  | start no earlier than 2026-09-09 | 7 day week No holidays | 7286074 |
| 1556 | 36900.37200.61100.152300 | Lift blockwork | 6d | 2026-09-09 | 2026-09-14 | 1547 |  | 7 day week No holidays | 7291224 |
| 1557 | 36900.37200.61100.152400 | Lobby architrave work | 10d | 2026-09-15 | 2026-09-24 | 1556 |  | 7 day week No holidays | 7291234 |
| 1558 | 36900.37200.61100.152500 | Lobby gypsum plaster | 8d | 2026-09-25 | 2026-10-02 | 1557 |  | 7 day week No holidays | 7291244 |
| 1559 | 36900.37200.61100.152600 | Staircase epoxy paint | 10d | 2026-10-03 | 2026-10-12 | 1558 |  | 7 day week No holidays | 7291254 |
| 1560 | 36900.37200.61100.152700 | Staircase railing | 6d | 2026-10-03 | 2026-10-08 | 1558 |  | 7 day week No holidays | 7291264 |
| 1561 | 36900.37200.61100.152800 | Lobby flooring work | 15d | 2026-12-02 | 2026-12-16 | 1552 |  | 7 day week No holidays | 7291274 |
| 1562 | 36900.37200.61100.152900 | Painting | 10d | 2026-12-17 | 2026-12-26 | 1561 |  | 7 day week No holidays | 7291284 |
| 1563 | 36900.37200.61100.153000 | Fire rated doors | 6d | 2026-12-17 | 2026-12-22 | 1561 |  | 7 day week No holidays | 7291294 |

| ID | WBS | Task | Duration | Start | Finish | Predecessors | Constraint | Calendar | Unique_Task_ID |
| --- | --- | --- | --- | --- | --- | --- | --- | --- | --- |
| 1564 | 36900.37200.57700 | **17th Floor** | 115d | 2026-09-15 | 2027-01-07 |  | start no earlier than 2026-09-15 | 7 day week No holidays | 7286084 |
| 1565 | 36900.37200.57700.153100 | Lift blockwork | 6d | 2026-09-15 | 2026-09-20 | 1556 |  | 7 day week No holidays | 7291304 |
| 1566 | 36900.37200.57700.153200 | Lobby architrave work | 10d | 2026-09-21 | 2026-09-30 | 1565 |  | 7 day week No holidays | 7291314 |
| 1567 | 36900.37200.57700.153300 | Lobby gypsum plaster | 15d | 2026-10-01 | 2026-10-15 | 1566 |  | 7 day week No holidays | 7291324 |
| 1568 | 36900.37200.57700.153400 | Staircase epoxy paint | 10d | 2026-10-16 | 2026-10-25 | 1567 |  | 7 day week No holidays | 7291334 |
| 1569 | 36900.37200.57700.153500 | Staircase railing | 6d | 2026-10-16 | 2026-10-21 | 1567 |  | 7 day week No holidays | 7291344 |
| 1570 | 36900.37200.57700.153600 | Lobby flooring work | 12d | 2026-12-17 | 2026-12-28 | 1561 |  | 7 day week No holidays | 7291354 |
| 1571 | 36900.37200.57700.153700 | Painting | 10d | 2026-12-29 | 2027-01-07 | 1570 |  | 7 day week No holidays | 7291364 |
| 1572 | 36900.37200.57700.153800 | Fire rated doors | 6d | 2026-12-29 | 2027-01-03 | 1570 |  | 7 day week No holidays | 7291374 |
| 1573 | 36900.37200.57000 | **18th Floor** | 121d | 2026-09-21 | 2027-01-19 |  | start no earlier than 2026-09-21 | 7 day week No holidays | 7286094 |
| 1574 | 36900.37200.57000.153900 | Lift blockwork | 6d | 2026-09-21 | 2026-09-26 | 1565 |  | 7 day week No holidays | 7291384 |
| 1575 | 36900.37200.57000.154000 | Lobby architrave work | 10d | 2026-09-27 | 2026-10-06 | 1574 |  | 7 day week No holidays | 7291394 |
| 1576 | 36900.37200.57000.154100 | Lobby gypsum plaster | 8d | 2026-10-07 | 2026-10-14 | 1575 |  | 7 day week No holidays | 7291404 |
| 1577 | 36900.37200.57000.154200 | Staircase epoxy paint | 10d | 2026-10-15 | 2026-10-24 | 1576 |  | 7 day week No holidays | 7291414 |
| 1578 | 36900.37200.57000.154300 | Staircase railing | 6d | 2026-10-15 | 2026-10-20 | 1576 |  | 7 day week No holidays | 7291424 |
| 1579 | 36900.37200.57000.154400 | Lobby flooring work | 12d | 2026-12-29 | 2027-01-09 | 1570 |  | 7 day week No holidays | 7291434 |
| 1580 | 36900.37200.57000.154500 | Painting | 10d | 2027-01-10 | 2027-01-19 | 1579 |  | 7 day week No holidays | 7291444 |
| 1581 | 36900.37200.57000.154600 | Fire rated doors | 6d | 2027-01-10 | 2027-01-15 | 1579 |  | 7 day week No holidays | 7291454 |
| 1582 | 36900.37200.56900 | **19th Floor** | 127d | 2026-09-27 | 2027-01-31 |  | start no earlier than 2026-09-27 | 7 day week No holidays | 7286104 |
| 1583 | 36900.37200.56900.154700 | Lift blockwork | 6d | 2026-09-27 | 2026-10-02 | 1574 |  | 7 day week No holidays | 7291464 |
| 1584 | 36900.37200.56900.154800 | Lobby architrave work | 10d | 2026-10-03 | 2026-10-12 | 1583 |  | 7 day week No holidays | 7291474 |
| 1585 | 36900.37200.56900.154900 | Lobby gypsum plaster | 8d | 2026-10-13 | 2026-10-20 | 1584 |  | 7 day week No holidays | 7291484 |
| 1586 | 36900.37200.56900.155000 | Staircase epoxy paint | 10d | 2026-10-21 | 2026-10-30 | 1585 |  | 7 day week No holidays | 7291494 |
| 1587 | 36900.37200.56900.155100 | Staircase railing | 6d | 2026-10-21 | 2026-10-26 | 1585 |  | 7 day week No holidays | 7291504 |
| 1588 | 36900.37200.56900.155200 | Lobby flooring work | 12d | 2027-01-10 | 2027-01-21 | 1579 |  | 7 day week No holidays | 7291514 |
| 1589 | 36900.37200.56900.155300 | Painting | 10d | 2027-01-22 | 2027-01-31 | 1588 |  | 7 day week No holidays | 7291524 |
| 1590 | 36900.37200.56900.155400 | Fire rated doors | 6d | 2027-01-22 | 2027-01-27 | 1588 |  | 7 day week No holidays | 7291534 |

| ID | WBS | Task | Duration | Start | Finish | Predecessors | Constraint | Calendar | Unique_Task_ID |
| --- | --- | --- | --- | --- | --- | --- | --- | --- | --- |
| 1591 | 36900.37200.56800 | **20th Floor** | 133d | 2026-10-03 | 2027-02-12 |  | start no earlier than 2026-10-03 | 7 day week No holidays | 7286114 |
| 1592 | 36900.37200.56800.155500 | Lift blockwork | 6d | 2026-10-03 | 2026-10-08 | 1583 |  | 7 day week No holidays | 7291544 |
| 1593 | 36900.37200.56800.155600 | Lobby architrave work | 10d | 2026-10-09 | 2026-10-18 | 1592 |  | 7 day week No holidays | 7291554 |
| 1594 | 36900.37200.56800.155700 | Lobby gypsum plaster | 8d | 2026-10-19 | 2026-10-26 | 1593 |  | 7 day week No holidays | 7291564 |
| 1595 | 36900.37200.56800.155800 | Staircase epoxy paint | 10d | 2026-10-27 | 2026-11-05 | 1594 |  | 7 day week No holidays | 7291574 |
| 1596 | 36900.37200.56800.155900 | Staircase railing | 6d | 2026-10-27 | 2026-11-01 | 1594 |  | 7 day week No holidays | 7291584 |
| 1597 | 36900.37200.56800.156000 | Lobby flooring work | 12d | 2027-01-22 | 2027-02-02 | 1588 |  | 7 day week No holidays | 7291594 |
| 1598 | 36900.37200.56800.156100 | Painting | 10d | 2027-02-03 | 2027-02-12 | 1597 |  | 7 day week No holidays | 7291604 |
| 1599 | 36900.37200.56800.156200 | Fire rated doors | 6d | 2027-02-03 | 2027-02-08 | 1597 |  | 7 day week No holidays | 7291614 |
| 1600 | 36900.37200.51500 | **21st Floor** | 139d | 2026-10-09 | 2027-02-24 |  | start no earlier than 2026-10-09 | 7 day week No holidays | 7286124 |
| 1601 | 36900.37200.51500.156300 | Lift blockwork | 6d | 2026-10-09 | 2026-10-14 | 1592 |  | 7 day week No holidays | 7291624 |
| 1602 | 36900.37200.51500.156400 | Lobby architrave work | 10d | 2026-10-15 | 2026-10-24 | 1601 |  | 7 day week No holidays | 7291634 |
| 1603 | 36900.37200.51500.156500 | Lobby gypsum plaster | 8d | 2026-10-25 | 2026-11-01 | 1602 |  | 7 day week No holidays | 7291644 |
| 1604 | 36900.37200.51500.156600 | Staircase epoxy paint | 10d | 2026-11-02 | 2026-11-11 | 1603 |  | 7 day week No holidays | 7291654 |
| 1605 | 36900.37200.51500.156700 | Staircase railing | 6d | 2026-11-02 | 2026-11-07 | 1603 |  | 7 day week No holidays | 7291664 |
| 1606 | 36900.37200.51500.156800 | Lobby flooring work | 12d | 2027-02-03 | 2027-02-14 | 1597 |  | 7 day week No holidays | 7291674 |
| 1607 | 36900.37200.51500.156900 | Painting | 10d | 2027-02-15 | 2027-02-24 | 1606 |  | 7 day week No holidays | 7291684 |
| 1608 | 36900.37200.51500.157000 | Fire rated doors | 6d | 2027-02-15 | 2027-02-20 | 1606 |  | 7 day week No holidays | 7291694 |
| 1609 | 36900.37200.51600 | **22nd Floor** | 145d | 2026-10-15 | 2027-03-08 |  | start no earlier than 2026-10-15 | 7 day week No holidays | 7286134 |
| 1610 | 36900.37200.51600.157100 | Lift blockwork | 6d | 2026-10-15 | 2026-10-20 | 1601 |  | 7 day week No holidays | 7291704 |
| 1611 | 36900.37200.51600.157200 | Lobby architrave work | 10d | 2026-10-21 | 2026-10-30 | 1610 |  | 7 day week No holidays | 7291714 |
| 1612 | 36900.37200.51600.157300 | Lobby gypsum plaster | 8d | 2026-10-31 | 2026-11-07 | 1611 |  | 7 day week No holidays | 7291724 |
| 1613 | 36900.37200.51600.157400 | Staircase epoxy paint | 10d | 2026-11-08 | 2026-11-17 | 1612 |  | 7 day week No holidays | 7291734 |
| 1614 | 36900.37200.51600.157500 | Staircase railing | 6d | 2026-11-08 | 2026-11-13 | 1612 |  | 7 day week No holidays | 7291744 |
| 1615 | 36900.37200.51600.157600 | Lobby flooring work | 12d | 2027-02-15 | 2027-02-26 | 1606 |  | 7 day week No holidays | 7291754 |
| 1616 | 36900.37200.51600.157700 | Painting | 10d | 2027-02-27 | 2027-03-08 | 1615 |  | 7 day week No holidays | 7291764 |
| 1617 | 36900.37200.51600.157800 | Fire rated doors | 6d | 2027-02-27 | 2027-03-04 | 1615 |  | 7 day week No holidays | 7291774 |

| ID | WBS | Task | Duration | Start | Finish | Predecessors | Constraint | Calendar | Unique_Task_ID |
| --- | --- | --- | --- | --- | --- | --- | --- | --- | --- |
| 1618 | 36900.37200.51700 | **23rd Floor** | 151d | 2026-10-21 | 2027-03-20 |  | start no earlier than 2026-10-21 | 7 day week No holidays | 7286144 |
| 1619 | 36900.37200.51700.157900 | Lift blockwork | 6d | 2026-10-21 | 2026-10-26 | 1610 |  | 7 day week No holidays | 7291784 |
| 1620 | 36900.37200.51700.158000 | Lobby architrave work | 10d | 2026-10-27 | 2026-11-05 | 1619 |  | 7 day week No holidays | 7291794 |
| 1621 | 36900.37200.51700.158100 | Lobby gypsum plaster | 8d | 2026-11-06 | 2026-11-13 | 1620 |  | 7 day week No holidays | 7291804 |
| 1622 | 36900.37200.51700.158200 | Staircase epoxy paint | 10d | 2026-11-14 | 2026-11-23 | 1621 |  | 7 day week No holidays | 7291814 |
| 1623 | 36900.37200.51700.158300 | Staircase railing | 6d | 2026-11-14 | 2026-11-19 | 1621 |  | 7 day week No holidays | 7291824 |
| 1624 | 36900.37200.51700.158400 | Lobby flooring work | 12d | 2027-02-27 | 2027-03-10 | 1615 |  | 7 day week No holidays | 7291834 |
| 1625 | 36900.37200.51700.158500 | Painting | 10d | 2027-03-11 | 2027-03-20 | 1624 |  | 7 day week No holidays | 7291844 |
| 1626 | 36900.37200.51700.158600 | Fire rated doors | 6d | 2027-03-11 | 2027-03-16 | 1624 |  | 7 day week No holidays | 7291854 |
| 1627 | 36900.37200.51800 | **24th Floor** | 157d | 2026-10-27 | 2027-04-01 |  | start no earlier than 2026-10-27 | 7 day week No holidays | 7286154 |
| 1628 | 36900.37200.51800.158700 | Lift blockwork | 6d | 2026-10-27 | 2026-11-01 | 1619 |  | 7 day week No holidays | 7291864 |
| 1629 | 36900.37200.51800.158800 | Lobby architrave work | 10d | 2026-11-02 | 2026-11-11 | 1628 |  | 7 day week No holidays | 7291874 |
| 1630 | 36900.37200.51800.158900 | Lobby gypsum plaster | 8d | 2026-11-12 | 2026-11-19 | 1629 |  | 7 day week No holidays | 7291884 |
| 1631 | 36900.37200.51800.159000 | Staircase epoxy paint | 10d | 2026-11-20 | 2026-11-29 | 1630 |  | 7 day week No holidays | 7291894 |
| 1632 | 36900.37200.51800.159100 | Staircase railing | 6d | 2026-11-20 | 2026-11-25 | 1630 |  | 7 day week No holidays | 7291904 |
| 1633 | 36900.37200.51800.159200 | Lobby flooring work | 12d | 2027-03-11 | 2027-03-22 | 1624 |  | 7 day week No holidays | 7291914 |
| 1634 | 36900.37200.51800.159300 | Painting | 10d | 2027-03-23 | 2027-04-01 | 1633 |  | 7 day week No holidays | 7291924 |
| 1635 | 36900.37200.51800.159400 | Fire rated doors | 6d | 2027-03-23 | 2027-03-28 | 1633 |  | 7 day week No holidays | 7291934 |
| 1636 | 36900.37200.51900 | **25th Floor** | 163d | 2026-11-02 | 2027-04-13 |  | start no earlier than 2026-11-02 | 7 day week No holidays | 7286164 |
| 1637 | 36900.37200.51900.159500 | Lift blockwork | 6d | 2026-11-02 | 2026-11-07 | 1628 |  | 7 day week No holidays | 7291944 |
| 1638 | 36900.37200.51900.159600 | Lobby architrave work | 10d | 2026-11-08 | 2026-11-17 | 1637 |  | 7 day week No holidays | 7291954 |
| 1639 | 36900.37200.51900.159700 | Lobby gypsum plaster | 8d | 2026-11-18 | 2026-11-25 | 1638 |  | 7 day week No holidays | 7291964 |
| 1640 | 36900.37200.51900.159800 | Staircase epoxy paint | 10d | 2026-11-26 | 2026-12-05 | 1639 |  | 7 day week No holidays | 7291974 |
| 1641 | 36900.37200.51900.159900 | Staircase railing | 6d | 2026-11-26 | 2026-12-01 | 1639 |  | 7 day week No holidays | 7291984 |
| 1642 | 36900.37200.51900.160000 | Lobby flooring work | 12d | 2027-03-23 | 2027-04-03 | 1633 |  | 7 day week No holidays | 7291994 |
| 1643 | 36900.37200.51900.160100 | Painting | 10d | 2027-04-04 | 2027-04-13 | 1642 |  | 7 day week No holidays | 7292004 |
| 1644 | 36900.37200.51900.160200 | Fire rated doors | 6d | 2027-04-04 | 2027-04-09 | 1642 |  | 7 day week No holidays | 7292014 |

| ID | WBS | Task | Duration | Start | Finish | Predecessors | Constraint | Calendar | Unique_Task_ID |
| --- | --- | --- | --- | --- | --- | --- | --- | --- | --- |
| 1645 | 36900.37200.52000 | **26th Floor** | 169d | 2026-11-08 | 2027-04-25 |  | start no earlier than 2026-11-08 | 7 day week No holidays | 7286794 |
| 1646 | 36900.37200.52000.160300 | Lift blockwork | 6d | 2026-11-08 | 2026-11-13 | 1637 |  | 7 day week No holidays | 7292024 |
| 1647 | 36900.37200.52000.160400 | Lobby architrave work | 10d | 2026-11-14 | 2026-11-23 | 1646 |  | 7 day week No holidays | 7292034 |
| 1648 | 36900.37200.52000.160500 | Lobby gypsum plaster | 8d | 2026-11-24 | 2026-12-01 | 1647 |  | 7 day week No holidays | 7292044 |
| 1649 | 36900.37200.52000.160600 | Staircase epoxy paint | 10d | 2026-12-02 | 2026-12-11 | 1648 |  | 7 day week No holidays | 7292054 |
| 1650 | 36900.37200.52000.160700 | Staircase railing | 6d | 2026-12-02 | 2026-12-07 | 1648 |  | 7 day week No holidays | 7292064 |
| 1651 | 36900.37200.52000.160800 | Lobby flooring work | 12d | 2027-04-04 | 2027-04-15 | 1642 |  | 7 day week No holidays | 7292074 |
| 1652 | 36900.37200.52000.160900 | Painting | 10d | 2027-04-16 | 2027-04-25 | 1651 |  | 7 day week No holidays | 7292084 |
| 1653 | 36900.37200.52000.161000 | Fire rated doors | 6d | 2027-04-16 | 2027-04-21 | 1651 |  | 7 day week No holidays | 7292094 |
| 1654 | 36900.37200.52100 | **27th Floor** | 181d | 2026-11-08 | 2027-05-07 |  | start no earlier than 2026-11-08 | 7 day week No holidays | 7286804 |
| 1655 | 36900.37200.52100.161100 | Lift blockwork | 6d | 2026-11-08 | 2026-11-13 | 1637 |  | 7 day week No holidays | 7292104 |
| 1656 | 36900.37200.52100.161200 | Lobby architrave work | 10d | 2026-11-14 | 2026-11-23 | 1655 |  | 7 day week No holidays | 7292114 |
| 1657 | 36900.37200.52100.161300 | Lobby gypsum plaster | 8d | 2026-11-24 | 2026-12-01 | 1656 |  | 7 day week No holidays | 7292124 |
| 1658 | 36900.37200.52100.161400 | Staircase epoxy paint | 10d | 2026-12-02 | 2026-12-11 | 1657 |  | 7 day week No holidays | 7292134 |
| 1659 | 36900.37200.52100.161500 | Staircase railing | 6d | 2026-12-02 | 2026-12-07 | 1657 |  | 7 day week No holidays | 7292144 |
| 1660 | 36900.37200.52100.161600 | Lobby flooring work | 12d | 2027-04-16 | 2027-04-27 | 1651 |  | 7 day week No holidays | 7292154 |
| 1661 | 36900.37200.52100.161700 | Painting | 10d | 2027-04-28 | 2027-05-07 | 1660 |  | 7 day week No holidays | 7292164 |
| 1662 | 36900.37200.52100.161800 | Fire rated doors | 6d | 2027-04-28 | 2027-05-03 | 1660 |  | 7 day week No holidays | 7292174 |
| 1663 | 36900.37200.52200 | **28th Floor** | 187d | 2026-11-14 | 2027-05-19 |  | start no earlier than 2026-11-14 | 7 day week No holidays | 7286814 |
| 1664 | 36900.37200.52200.161900 | Lift blockwork | 6d | 2026-11-14 | 2026-11-19 | 1655 |  | 7 day week No holidays | 7292184 |
| 1665 | 36900.37200.52200.162000 | Lobby architrave work | 10d | 2026-11-20 | 2026-11-29 | 1664 |  | 7 day week No holidays | 7292194 |
| 1666 | 36900.37200.52200.162100 | Lobby gypsum plaster | 8d | 2026-11-30 | 2026-12-07 | 1665 |  | 7 day week No holidays | 7292204 |
| 1667 | 36900.37200.52200.162200 | Staircase epoxy paint | 10d | 2026-12-08 | 2026-12-17 | 1666 |  | 7 day week No holidays | 7292214 |
| 1668 | 36900.37200.52200.162300 | Staircase railing | 6d | 2026-12-08 | 2026-12-13 | 1666 |  | 7 day week No holidays | 7292224 |
| 1669 | 36900.37200.52200.162400 | Lobby flooring work | 12d | 2027-04-28 | 2027-05-09 | 1660 |  | 7 day week No holidays | 7292234 |
| 1670 | 36900.37200.52200.162500 | Painting | 10d | 2027-05-10 | 2027-05-19 | 1669 |  | 7 day week No holidays | 7292244 |
| 1671 | 36900.37200.52200.162600 | Fire rated doors | 6d | 2027-05-10 | 2027-05-15 | 1669 |  | 7 day week No holidays | 7292254 |

| ID | WBS | Task | Duration | Start | Finish | Predecessors | Constraint | Calendar | Unique_Task_ID |
| --- | --- | --- | --- | --- | --- | --- | --- | --- | --- |
| 1672 | 36900.37200.52300 | **29th Floor** | 193d | 2026-11-20 | 2027-05-31 |  | start no earlier than 2026-11-20 | 7 day week No holidays | 7286824 |
| 1673 | 36900.37200.52300.162700 | Lift blockwork | 6d | 2026-11-20 | 2026-11-25 | 1664 |  | 7 day week No holidays | 7292264 |
| 1674 | 36900.37200.52300.162800 | Lobby architrave work | 10d | 2026-11-26 | 2026-12-05 | 1673 |  | 7 day week No holidays | 7292274 |
| 1675 | 36900.37200.52300.162900 | Lobby gypsum plaster | 8d | 2026-12-06 | 2026-12-13 | 1674 |  | 7 day week No holidays | 7292284 |
| 1676 | 36900.37200.52300.163000 | Staircase epoxy paint | 10d | 2026-12-14 | 2026-12-23 | 1675 |  | 7 day week No holidays | 7292294 |
| 1677 | 36900.37200.52300.163100 | Staircase railing | 6d | 2026-12-14 | 2026-12-19 | 1675 |  | 7 day week No holidays | 7292304 |
| 1678 | 36900.37200.52300.163200 | Lobby flooring work | 12d | 2027-05-10 | 2027-05-21 | 1669 |  | 7 day week No holidays | 7292314 |
| 1679 | 36900.37200.52300.163300 | Painting | 10d | 2027-05-22 | 2027-05-31 | 1678 |  | 7 day week No holidays | 7292324 |
| 1680 | 36900.37200.52300.163400 | Fire rated doors | 6d | 2027-05-22 | 2027-05-27 | 1678 |  | 7 day week No holidays | 7292334 |
| 1681 | 36900.37200.52400 | **30th Floor** | 199d | 2026-11-26 | 2027-06-12 |  | start no earlier than 2026-11-26 | 7 day week No holidays | 7287184 |
| 1682 | 36900.37200.52400.163500 | Lift blockwork | 6d | 2026-11-26 | 2026-12-01 | 1673 |  | 7 day week No holidays | 7292344 |
| 1683 | 36900.37200.52400.163600 | Lobby architrave work | 10d | 2026-12-02 | 2026-12-11 | 1682 |  | 7 day week No holidays | 7292354 |
| 1684 | 36900.37200.52400.163700 | Lobby gypsum plaster | 8d | 2026-12-12 | 2026-12-19 | 1683 |  | 7 day week No holidays | 7292364 |
| 1685 | 36900.37200.52400.163800 | Staircase epoxy paint | 10d | 2026-12-20 | 2026-12-29 | 1684 |  | 7 day week No holidays | 7292374 |
| 1686 | 36900.37200.52400.163900 | Staircase railing | 6d | 2026-12-20 | 2026-12-25 | 1684 |  | 7 day week No holidays | 7292384 |
| 1687 | 36900.37200.52400.164000 | Lobby flooring work | 12d | 2027-05-22 | 2027-06-02 | 1678 |  | 7 day week No holidays | 7292394 |
| 1688 | 36900.37200.52400.164100 | Painting | 10d | 2027-06-03 | 2027-06-12 | 1687 |  | 7 day week No holidays | 7292404 |
| 1689 | 36900.37200.52400.164200 | Fire rated doors | 6d | 2027-06-03 | 2027-06-08 | 1687 |  | 7 day week No holidays | 7292414 |
| 1690 | 36900.37200.52500 | **31st Floor** | 205d | 2026-12-02 | 2027-06-24 |  | start no earlier than 2026-12-02 | 7 day week No holidays | 7287194 |
| 1691 | 36900.37200.52500.164300 | Lift blockwork | 6d | 2026-12-02 | 2026-12-07 | 1682 |  | 7 day week No holidays | 7292424 |
| 1692 | 36900.37200.52500.164400 | Lobby architrave work | 10d | 2026-12-08 | 2026-12-17 | 1691 |  | 7 day week No holidays | 7292434 |
| 1693 | 36900.37200.52500.164500 | Lobby gypsum plaster | 8d | 2026-12-18 | 2026-12-25 | 1692 |  | 7 day week No holidays | 7292444 |
| 1694 | 36900.37200.52500.164600 | Staircase epoxy paint | 10d | 2026-12-26 | 2027-01-04 | 1693 |  | 7 day week No holidays | 7292454 |
| 1695 | 36900.37200.52500.164700 | Staircase railing | 6d | 2026-12-26 | 2026-12-31 | 1693 |  | 7 day week No holidays | 7292464 |
| 1696 | 36900.37200.52500.164800 | Lobby flooring work | 12d | 2027-06-03 | 2027-06-14 | 1687 |  | 7 day week No holidays | 7292474 |
| 1697 | 36900.37200.52500.164900 | Painting | 10d | 2027-06-15 | 2027-06-24 | 1696 |  | 7 day week No holidays | 7292484 |
| 1698 | 36900.37200.52500.165000 | Fire rated doors | 6d | 2027-06-15 | 2027-06-20 | 1696 |  | 7 day week No holidays | 7292494 |

| ID | WBS | Task | Duration | Start | Finish | Predecessors | Constraint | Calendar | Unique_Task_ID |
| --- | --- | --- | --- | --- | --- | --- | --- | --- | --- |
| 1699 | 36900.37200.52600 | **32nd Floor** | 211d | 2026-12-08 | 2027-07-06 |  | start no earlier than 2026-12-08 | 7 day week No holidays | 7287204 |
| 1700 | 36900.37200.52600.165100 | Lift blockwork | 6d | 2026-12-08 | 2026-12-13 | 1691 |  | 7 day week No holidays | 7292504 |
| 1701 | 36900.37200.52600.165200 | Lobby architrave work | 10d | 2026-12-14 | 2026-12-23 | 1700 |  | 7 day week No holidays | 7292514 |
| 1702 | 36900.37200.52600.165300 | Lobby gypsum plaster | 8d | 2026-12-24 | 2026-12-31 | 1701 |  | 7 day week No holidays | 7292524 |
| 1703 | 36900.37200.52600.165400 | Staircase epoxy paint | 10d | 2027-01-01 | 2027-01-10 | 1702 |  | 7 day week No holidays | 7292534 |
| 1704 | 36900.37200.52600.165500 | Staircase railing | 6d | 2027-01-01 | 2027-01-06 | 1702 |  | 7 day week No holidays | 7292544 |
| 1705 | 36900.37200.52600.165600 | Lobby flooring work | 12d | 2027-06-15 | 2027-06-26 | 1696 |  | 7 day week No holidays | 7292554 |
| 1706 | 36900.37200.52600.165700 | Painting | 10d | 2027-06-27 | 2027-07-06 | 1705 |  | 7 day week No holidays | 7292564 |
| 1707 | 36900.37200.52600.165800 | Fire rated doors | 6d | 2027-06-27 | 2027-07-02 | 1705 |  | 7 day week No holidays | 7292574 |
| 1708 | 36900.37200.52700 | **33rd Floor** | 217d | 2026-12-14 | 2027-07-18 |  | start no earlier than 2026-12-14 | 7 day week No holidays | 7287214 |
| 1709 | 36900.37200.52700.165900 | Lift blockwork | 6d | 2026-12-14 | 2026-12-19 | 1700 |  | 7 day week No holidays | 7292584 |
| 1710 | 36900.37200.52700.166000 | Lobby architrave work | 10d | 2026-12-20 | 2026-12-29 | 1709 |  | 7 day week No holidays | 7292594 |
| 1711 | 36900.37200.52700.166100 | Lobby gypsum plaster | 8d | 2026-12-30 | 2027-01-06 | 1710 |  | 7 day week No holidays | 7292604 |
| 1712 | 36900.37200.52700.166200 | Staircase epoxy paint | 10d | 2027-01-07 | 2027-01-16 | 1711 |  | 7 day week No holidays | 7292614 |
| 1713 | 36900.37200.52700.166300 | Staircase railing | 6d | 2027-01-07 | 2027-01-12 | 1711 |  | 7 day week No holidays | 7292624 |
| 1714 | 36900.37200.52700.166400 | Lobby flooring work | 12d | 2027-06-27 | 2027-07-08 | 1705 |  | 7 day week No holidays | 7292634 |
| 1715 | 36900.37200.52700.166500 | Painting | 10d | 2027-07-09 | 2027-07-18 | 1714 |  | 7 day week No holidays | 7292644 |
| 1716 | 36900.37200.52700.166600 | Fire rated doors | 6d | 2027-07-09 | 2027-07-14 | 1714 |  | 7 day week No holidays | 7292654 |
| 1717 | 36900.37200.52800 | **34th Floor** | 223d | 2026-12-20 | 2027-07-30 |  | start no earlier than 2026-12-20 | 7 day week No holidays | 7287224 |
| 1718 | 36900.37200.52800.166700 | Lift blockwork | 6d | 2026-12-20 | 2026-12-25 | 1709 |  | 7 day week No holidays | 7292664 |
| 1719 | 36900.37200.52800.166800 | Lobby architrave work | 10d | 2026-12-26 | 2027-01-04 | 1718 |  | 7 day week No holidays | 7292674 |
| 1720 | 36900.37200.52800.166900 | Lobby gypsum plaster | 8d | 2027-01-05 | 2027-01-12 | 1719 |  | 7 day week No holidays | 7292684 |
| 1721 | 36900.37200.52800.167000 | Staircase epoxy paint | 10d | 2027-01-13 | 2027-01-22 | 1720 |  | 7 day week No holidays | 7292694 |
| 1722 | 36900.37200.52800.167100 | Staircase railing | 6d | 2027-01-13 | 2027-01-18 | 1720 |  | 7 day week No holidays | 7292704 |
| 1723 | 36900.37200.52800.167200 | Lobby flooring work | 12d | 2027-07-09 | 2027-07-20 | 1714 |  | 7 day week No holidays | 7292714 |
| 1724 | 36900.37200.52800.167300 | Painting | 10d | 2027-07-21 | 2027-07-30 | 1723 |  | 7 day week No holidays | 7292724 |
| 1725 | 36900.37200.52800.167400 | Fire rated doors | 6d | 2027-07-21 | 2027-07-26 | 1723 |  | 7 day week No holidays | 7292734 |

| ID | WBS | Task | Duration | Start | Finish | Predecessors | Constraint | Calendar | Unique_Task_ID |
| --- | --- | --- | --- | --- | --- | --- | --- | --- | --- |
| 1726 | 36900.37200.52900 | **35th Floor** | 229d | 2026-12-26 | 2027-08-11 |  | start no earlier than 2026-12-26 | 7 day week No holidays | 7287234 |
| 1727 | 36900.37200.52900.167500 | Lift blockwork | 6d | 2026-12-26 | 2026-12-31 | 1718 |  | 7 day week No holidays | 7292744 |
| 1728 | 36900.37200.52900.167600 | Lobby architrave work | 10d | 2027-01-01 | 2027-01-10 | 1727 |  | 7 day week No holidays | 7292754 |
| 1729 | 36900.37200.52900.167700 | Lobby gypsum plaster | 8d | 2027-01-11 | 2027-01-18 | 1728 |  | 7 day week No holidays | 7292764 |
| 1730 | 36900.37200.52900.167800 | Staircase epoxy paint | 10d | 2027-01-19 | 2027-01-28 | 1729 |  | 7 day week No holidays | 7292774 |
| 1731 | 36900.37200.52900.167900 | Staircase railing | 6d | 2027-01-19 | 2027-01-24 | 1729 |  | 7 day week No holidays | 7292784 |
| 1732 | 36900.37200.52900.168000 | Lobby flooring work | 12d | 2027-07-21 | 2027-08-01 | 1723 |  | 7 day week No holidays | 7292794 |
| 1733 | 36900.37200.52900.168100 | Painting | 10d | 2027-08-02 | 2027-08-11 | 1732 |  | 7 day week No holidays | 7292804 |
| 1734 | 36900.37200.52900.168200 | Fire rated doors | 6d | 2027-08-02 | 2027-08-07 | 1732 |  | 7 day week No holidays | 7292814 |
| 1735 | 36900.37200.53000 | **36th Floor** | 243d | 2027-01-01 | 2027-08-31 |  | start no earlier than 2027-01-01 | 7 day week No holidays | 7287244 |
| 1736 | 36900.37200.53000.168300 | Lift blockwork | 6d | 2027-01-01 | 2027-01-06 | 1727 |  | 7 day week No holidays | 7292824 |
| 1737 | 36900.37200.53000.168400 | Lobby architrave work | 10d | 2027-01-07 | 2027-01-16 | 1736 |  | 7 day week No holidays | 7292834 |
| 1738 | 36900.37200.53000.168500 | Lobby gypsum plaster | 8d | 2027-01-17 | 2027-01-24 | 1737 |  | 7 day week No holidays | 7292844 |
| 1739 | 36900.37200.53000.168600 | Staircase epoxy paint | 10d | 2027-01-25 | 2027-02-03 | 1738 |  | 7 day week No holidays | 7292854 |
| 1740 | 36900.37200.53000.168700 | Staircase railing | 6d | 2027-01-25 | 2027-01-30 | 1738 |  | 7 day week No holidays | 7292864 |
| 1741 | 36900.37200.53000.168800 | Lobby flooring work | 20d | 2027-08-02 | 2027-08-21 | 1732 |  | 7 day week No holidays | 7292874 |
| 1742 | 36900.37200.53000.168900 | Painting | 10d | 2027-08-22 | 2027-08-31 | 1741 |  | 7 day week No holidays | 7292884 |
| 1743 | 36900.37200.53000.169000 | Fire rated doors | 6d | 2027-08-22 | 2027-08-27 | 1741 |  | 7 day week No holidays | 7292894 |
| 1744 | 36900.37200.53100 | **37th Floor** | 42d | 2027-01-07 | 2027-02-17 |  | start no earlier than 2027-01-07 | 7 day week No holidays | 7287254 |
| 1745 | 36900.37200.53100.169100 | Lift blockwork | 6d | 2027-01-07 | 2027-01-12 | 1736 |  | 7 day week No holidays | 7292904 |
| 1746 | 36900.37200.53100.169200 | Lobby architrave work | 10d | 2027-01-13 | 2027-01-22 | 1745 |  | 7 day week No holidays | 7292914 |
| 1747 | 36900.37200.53100.169300 | Lobby gypsum plaster | 8d | 2027-01-23 | 2027-01-30 | 1746 |  | 7 day week No holidays | 7292924 |
| 1748 | 36900.37200.53100.169400 | Staircase epoxy paint | 10d | 2027-01-31 | 2027-02-09 | 1747 |  | 7 day week No holidays | 7292934 |
| 1749 | 36900.37200.53100.169500 | Staircase railing | 6d | 2027-01-31 | 2027-02-05 | 1747 |  | 7 day week No holidays | 7292944 |
| 1750 | 36900.37200.53100.169600 | Lobby flooring work | 8d | 2027-01-31 | 2027-02-07 | 1747 |  | 7 day week No holidays | 7292954 |
| 1751 | 36900.37200.53100.169700 | Painting | 10d | 2027-02-08 | 2027-02-17 | 1750 |  | 7 day week No holidays | 7292964 |
| 1752 | 36900.37200.53100.169800 | Fire rated doors | 6d | 2027-02-08 | 2027-02-13 | 1750 |  | 7 day week No holidays | 7292974 |

| ID | WBS | Task | Duration | Start | Finish | Predecessors | Constraint | Calendar | Unique_Task_ID |
| --- | --- | --- | --- | --- | --- | --- | --- | --- | --- |
| 1753 | 36900.37200.62900 | **38th Floor** | 42d | 2027-01-13 | 2027-02-23 |  | start no earlier than 2027-01-13 | 7 day week No holidays | 7287264 |
| 1754 | 36900.37200.62900.169900 | Lift blockwork | 6d | 2027-01-13 | 2027-01-18 | 1745 |  | 7 day week No holidays | 7292984 |
| 1755 | 36900.37200.62900.170000 | Lobby architrave work | 10d | 2027-01-19 | 2027-01-28 | 1754 |  | 7 day week No holidays | 7292994 |
| 1756 | 36900.37200.62900.170100 | Lobby gypsum plaster | 8d | 2027-01-29 | 2027-02-05 | 1755 |  | 7 day week No holidays | 7293004 |
| 1757 | 36900.37200.62900.170200 | Staircase epoxy paint | 10d | 2027-02-06 | 2027-02-15 | 1756 |  | 7 day week No holidays | 7293014 |
| 1758 | 36900.37200.62900.170300 | Staircase railing | 6d | 2027-02-06 | 2027-02-11 | 1756 |  | 7 day week No holidays | 7293024 |
| 1759 | 36900.37200.62900.170400 | Lobby flooring work | 8d | 2027-02-06 | 2027-02-13 | 1756 |  | 7 day week No holidays | 7293034 |
| 1760 | 36900.37200.62900.170500 | Painting | 10d | 2027-02-14 | 2027-02-23 | 1759 |  | 7 day week No holidays | 7293044 |
| 1761 | 36900.37200.62900.170600 | Fire rated doors | 6d | 2027-02-14 | 2027-02-19 | 1759 |  | 7 day week No holidays | 7293054 |
| 1762 | 36900.37200.53200 | **39th Floor** | 42d | 2027-01-19 | 2027-03-01 |  | start no earlier than 2027-01-19 | 7 day week No holidays | 7287274 |
| 1763 | 36900.37200.53200.170700 | Lift blockwork | 6d | 2027-01-19 | 2027-01-24 | 1754 |  | 7 day week No holidays | 7293064 |
| 1764 | 36900.37200.53200.170800 | Lobby architrave work | 10d | 2027-01-25 | 2027-02-03 | 1763 |  | 7 day week No holidays | 7293074 |
| 1765 | 36900.37200.53200.170900 | Lobby gypsum plaster | 8d | 2027-02-04 | 2027-02-11 | 1764 |  | 7 day week No holidays | 7293084 |
| 1766 | 36900.37200.53200.171000 | Staircase epoxy paint | 10d | 2027-02-12 | 2027-02-21 | 1765 |  | 7 day week No holidays | 7293094 |
| 1767 | 36900.37200.53200.171100 | Staircase railing | 6d | 2027-02-12 | 2027-02-17 | 1765 |  | 7 day week No holidays | 7293104 |
| 1768 | 36900.37200.53200.171200 | Lobby flooring work | 8d | 2027-02-12 | 2027-02-19 | 1765 |  | 7 day week No holidays | 7293114 |
| 1769 | 36900.37200.53200.171300 | Painting | 10d | 2027-02-20 | 2027-03-01 | 1768 |  | 7 day week No holidays | 7293124 |
| 1770 | 36900.37200.53200.171400 | Fire rated doors | 6d | 2027-02-20 | 2027-02-25 | 1768 |  | 7 day week No holidays | 7293134 |
| 1771 | 36900.37200.53300 | **40th Floor** | 42d | 2027-01-25 | 2027-03-07 |  | start no earlier than 2027-01-25 | 7 day week No holidays | 7287284 |
| 1772 | 36900.37200.53300.171500 | Lift blockwork | 6d | 2027-01-25 | 2027-01-30 | 1763 |  | 7 day week No holidays | 7293144 |
| 1773 | 36900.37200.53300.171600 | Lobby architrave work | 10d | 2027-01-31 | 2027-02-09 | 1772 |  | 7 day week No holidays | 7293154 |
| 1774 | 36900.37200.53300.171700 | Lobby gypsum plaster | 8d | 2027-02-10 | 2027-02-17 | 1773 |  | 7 day week No holidays | 7293164 |
| 1775 | 36900.37200.53300.171800 | Staircase epoxy paint | 10d | 2027-02-18 | 2027-02-27 | 1774 |  | 7 day week No holidays | 7293174 |
| 1776 | 36900.37200.53300.171900 | Staircase railing | 6d | 2027-02-18 | 2027-02-23 | 1774 |  | 7 day week No holidays | 7293184 |
| 1777 | 36900.37200.53300.172000 | Lobby flooring work | 8d | 2027-02-18 | 2027-02-25 | 1774 |  | 7 day week No holidays | 7293194 |
| 1778 | 36900.37200.53300.172100 | Painting | 10d | 2027-02-26 | 2027-03-07 | 1777 |  | 7 day week No holidays | 7293204 |
| 1779 | 36900.37200.53300.172200 | Fire rated doors | 6d | 2027-02-26 | 2027-03-03 | 1777 |  | 7 day week No holidays | 7293214 |

| ID | WBS | Task | Duration | Start | Finish | Predecessors | Constraint | Calendar | Unique_Task_ID |
| --- | --- | --- | --- | --- | --- | --- | --- | --- | --- |
| 1780 | 36900.37200.53400 | **41st Floor** | 42d | 2027-01-31 | 2027-03-13 |  | start no earlier than 2027-01-31 | 7 day week No holidays | 7287294 |
| 1781 | 36900.37200.53400.172300 | Lift blockwork | 6d | 2027-01-31 | 2027-02-05 | 1772 |  | 7 day week No holidays | 7293224 |
| 1782 | 36900.37200.53400.172400 | Lobby architrave work | 10d | 2027-02-06 | 2027-02-15 | 1781 |  | 7 day week No holidays | 7293234 |
| 1783 | 36900.37200.53400.172500 | Lobby gypsum plaster | 8d | 2027-02-16 | 2027-02-23 | 1782 |  | 7 day week No holidays | 7293244 |
| 1784 | 36900.37200.53400.172600 | Staircase epoxy paint | 10d | 2027-02-24 | 2027-03-05 | 1783 |  | 7 day week No holidays | 7293254 |
| 1785 | 36900.37200.53400.172700 | Staircase railing | 6d | 2027-02-24 | 2027-03-01 | 1783 |  | 7 day week No holidays | 7293264 |
| 1786 | 36900.37200.53400.172800 | Lobby flooring work | 8d | 2027-02-24 | 2027-03-03 | 1783 |  | 7 day week No holidays | 7293274 |
| 1787 | 36900.37200.53400.172900 | Painting | 10d | 2027-03-04 | 2027-03-13 | 1786 |  | 7 day week No holidays | 7293284 |
| 1788 | 36900.37200.53400.173000 | Fire rated doors | 6d | 2027-03-04 | 2027-03-09 | 1786 |  | 7 day week No holidays | 7293294 |
| 1789 | 36900.37200.53500 | **42nd Floor** | 42d | 2027-02-06 | 2027-03-19 |  | start no earlier than 2027-02-06 | 7 day week No holidays | 7287304 |
| 1790 | 36900.37200.53500.173100 | Lift blockwork | 6d | 2027-02-06 | 2027-02-11 | 1781 |  | 7 day week No holidays | 7293304 |
| 1791 | 36900.37200.53500.173200 | Lobby architrave work | 10d | 2027-02-12 | 2027-02-21 | 1790 |  | 7 day week No holidays | 7293314 |
| 1792 | 36900.37200.53500.173300 | Lobby gypsum plaster | 8d | 2027-02-22 | 2027-03-01 | 1791 |  | 7 day week No holidays | 7293324 |
| 1793 | 36900.37200.53500.173400 | Staircase epoxy paint | 10d | 2027-03-02 | 2027-03-11 | 1792 |  | 7 day week No holidays | 7293334 |
| 1794 | 36900.37200.53500.173500 | Staircase railing | 6d | 2027-03-02 | 2027-03-07 | 1792 |  | 7 day week No holidays | 7293344 |
| 1795 | 36900.37200.53500.173600 | Lobby flooring work | 8d | 2027-03-02 | 2027-03-09 | 1792 |  | 7 day week No holidays | 7293354 |
| 1796 | 36900.37200.53500.173700 | Painting | 10d | 2027-03-10 | 2027-03-19 | 1795 |  | 7 day week No holidays | 7293364 |
| 1797 | 36900.37200.53500.173800 | Fire rated doors | 6d | 2027-03-10 | 2027-03-15 | 1795 |  | 7 day week No holidays | 7293374 |
| 1798 | 36900.37200.53600 | **43rd Floor** | 42d | 2027-02-12 | 2027-03-25 |  | start no earlier than 2027-02-12 | 7 day week No holidays | 7287314 |
| 1799 | 36900.37200.53600.173900 | Lift blockwork | 6d | 2027-02-12 | 2027-02-17 | 1790 |  | 7 day week No holidays | 7293384 |
| 1800 | 36900.37200.53600.174000 | Lobby architrave work | 10d | 2027-02-18 | 2027-02-27 | 1799 |  | 7 day week No holidays | 7293394 |
| 1801 | 36900.37200.53600.174100 | Lobby gypsum plaster | 8d | 2027-02-28 | 2027-03-07 | 1800 |  | 7 day week No holidays | 7293404 |
| 1802 | 36900.37200.53600.174200 | Staircase epoxy paint | 10d | 2027-03-08 | 2027-03-17 | 1801 |  | 7 day week No holidays | 7293414 |
| 1803 | 36900.37200.53600.174300 | Staircase railing | 6d | 2027-03-08 | 2027-03-13 | 1801 |  | 7 day week No holidays | 7293424 |
| 1804 | 36900.37200.53600.174400 | Lobby flooring work | 8d | 2027-03-08 | 2027-03-15 | 1801 |  | 7 day week No holidays | 7293434 |
| 1805 | 36900.37200.53600.174500 | Painting | 10d | 2027-03-16 | 2027-03-25 | 1804 |  | 7 day week No holidays | 7293444 |
| 1806 | 36900.37200.53600.174600 | Fire rated doors | 6d | 2027-03-16 | 2027-03-21 | 1804 |  | 7 day week No holidays | 7293454 |

| ID | WBS | Task | Duration | Start | Finish | Predecessors | Constraint | Calendar | Unique_Task_ID |
| --- | --- | --- | --- | --- | --- | --- | --- | --- | --- |
| 1807 | 36900.37200.53700 | **44th Floor** | 42d | 2027-02-18 | 2027-03-31 |  | start no earlier than 2027-02-18 | 7 day week No holidays | 7287324 |
| 1808 | 36900.37200.53700.174700 | Lift blockwork | 6d | 2027-02-18 | 2027-02-23 | 1799 |  | 7 day week No holidays | 7293464 |
| 1809 | 36900.37200.53700.174800 | Lobby architrave work | 10d | 2027-02-24 | 2027-03-05 | 1808 |  | 7 day week No holidays | 7293474 |
| 1810 | 36900.37200.53700.174900 | Lobby gypsum plaster | 8d | 2027-03-06 | 2027-03-13 | 1809 |  | 7 day week No holidays | 7293484 |
| 1811 | 36900.37200.53700.175000 | Staircase epoxy paint | 10d | 2027-03-14 | 2027-03-23 | 1810 |  | 7 day week No holidays | 7293494 |
| 1812 | 36900.37200.53700.175100 | Staircase railing | 6d | 2027-03-14 | 2027-03-19 | 1810 |  | 7 day week No holidays | 7293504 |
| 1813 | 36900.37200.53700.175200 | Lobby flooring work | 8d | 2027-03-14 | 2027-03-21 | 1810 |  | 7 day week No holidays | 7293514 |
| 1814 | 36900.37200.53700.175300 | Painting | 10d | 2027-03-22 | 2027-03-31 | 1813 |  | 7 day week No holidays | 7293524 |
| 1815 | 36900.37200.53700.175400 | Fire rated doors | 6d | 2027-03-22 | 2027-03-27 | 1813 |  | 7 day week No holidays | 7293534 |
| 1816 | 36900.37200.53800 | **45th Floor** | 42d | 2027-02-24 | 2027-04-06 |  | start no earlier than 2027-02-24 | 7 day week No holidays | 7287334 |
| 1817 | 36900.37200.53800.175500 | Lift blockwork | 6d | 2027-02-24 | 2027-03-01 | 1808 |  | 7 day week No holidays | 7293544 |
| 1818 | 36900.37200.53800.175600 | Lobby architrave work | 10d | 2027-03-02 | 2027-03-11 | 1817 |  | 7 day week No holidays | 7293554 |
| 1819 | 36900.37200.53800.175700 | Lobby gypsum plaster | 8d | 2027-03-12 | 2027-03-19 | 1818 |  | 7 day week No holidays | 7293564 |
| 1820 | 36900.37200.53800.175800 | Staircase epoxy paint | 10d | 2027-03-20 | 2027-03-29 | 1819 |  | 7 day week No holidays | 7293574 |
| 1821 | 36900.37200.53800.175900 | Staircase railing | 6d | 2027-03-20 | 2027-03-25 | 1819 |  | 7 day week No holidays | 7293584 |
| 1822 | 36900.37200.53800.176000 | Lobby flooring work | 8d | 2027-03-20 | 2027-03-27 | 1819 |  | 7 day week No holidays | 7293594 |
| 1823 | 36900.37200.53800.176100 | Painting | 10d | 2027-03-28 | 2027-04-06 | 1822 |  | 7 day week No holidays | 7293604 |
| 1824 | 36900.37200.53800.176200 | Fire rated doors | 6d | 2027-03-28 | 2027-04-02 | 1822 |  | 7 day week No holidays | 7293614 |
| 1825 | 36900.37200.53900 | **46th Floor** | 42d | 2027-03-02 | 2027-04-12 |  | start no earlier than 2027-03-02 | 7 day week No holidays | 7287344 |
| 1826 | 36900.37200.53900.176300 | Lift blockwork | 6d | 2027-03-02 | 2027-03-07 | 1817 |  | 7 day week No holidays | 7293624 |
| 1827 | 36900.37200.53900.176400 | Lobby architrave work | 10d | 2027-03-08 | 2027-03-17 | 1826 |  | 7 day week No holidays | 7293634 |
| 1828 | 36900.37200.53900.176500 | Lobby gypsum plaster | 8d | 2027-03-18 | 2027-03-25 | 1827 |  | 7 day week No holidays | 7293644 |
| 1829 | 36900.37200.53900.176600 | Staircase epoxy paint | 10d | 2027-03-26 | 2027-04-04 | 1828 |  | 7 day week No holidays | 7293654 |
| 1830 | 36900.37200.53900.176700 | Staircase railing | 6d | 2027-03-26 | 2027-03-31 | 1828 |  | 7 day week No holidays | 7293664 |
| 1831 | 36900.37200.53900.176800 | Lobby flooring work | 8d | 2027-03-26 | 2027-04-02 | 1828 |  | 7 day week No holidays | 7293674 |
| 1832 | 36900.37200.53900.176900 | Painting | 10d | 2027-04-03 | 2027-04-12 | 1831 |  | 7 day week No holidays | 7293684 |
| 1833 | 36900.37200.53900.177000 | Fire rated doors | 6d | 2027-04-03 | 2027-04-08 | 1831 |  | 7 day week No holidays | 7293694 |

| ID | WBS | Task | Duration | Start | Finish | Predecessors | Constraint | Calendar | Unique_Task_ID |
| --- | --- | --- | --- | --- | --- | --- | --- | --- | --- |
| 1834 | 36900.37200.54000 | **47th Floor** | 42d | 2027-03-08 | 2027-04-18 |  | start no earlier than 2027-03-08 | 7 day week No holidays | 7287354 |
| 1835 | 36900.37200.54000.177100 | Lift blockwork | 6d | 2027-03-08 | 2027-03-13 | 1826 |  | 7 day week No holidays | 7293704 |
| 1836 | 36900.37200.54000.177200 | Lobby architrave work | 10d | 2027-03-14 | 2027-03-23 | 1835 |  | 7 day week No holidays | 7293714 |
| 1837 | 36900.37200.54000.177300 | Lobby gypsum plaster | 8d | 2027-03-24 | 2027-03-31 | 1836 |  | 7 day week No holidays | 7293724 |
| 1838 | 36900.37200.54000.177400 | Staircase epoxy paint | 10d | 2027-04-01 | 2027-04-10 | 1837 |  | 7 day week No holidays | 7293734 |
| 1839 | 36900.37200.54000.177500 | Staircase railing | 6d | 2027-04-01 | 2027-04-06 | 1837 |  | 7 day week No holidays | 7293744 |
| 1840 | 36900.37200.54000.177600 | Lobby flooring work | 8d | 2027-04-01 | 2027-04-08 | 1837 |  | 7 day week No holidays | 7293754 |
| 1841 | 36900.37200.54000.177700 | Painting | 10d | 2027-04-09 | 2027-04-18 | 1840 |  | 7 day week No holidays | 7293764 |
| 1842 | 36900.37200.54000.177800 | Fire rated doors | 6d | 2027-04-09 | 2027-04-14 | 1840 |  | 7 day week No holidays | 7293774 |
| 1843 | 36900.37200.54100 | **48th Floor** | 42d | 2027-03-14 | 2027-04-24 |  | start no earlier than 2027-03-14 | 7 day week No holidays | 7287364 |
| 1844 | 36900.37200.54100.177900 | Lift blockwork | 6d | 2027-03-14 | 2027-03-19 | 1835 |  | 7 day week No holidays | 7293784 |
| 1845 | 36900.37200.54100.178000 | Lobby architrave work | 10d | 2027-03-20 | 2027-03-29 | 1844 |  | 7 day week No holidays | 7293794 |
| 1846 | 36900.37200.54100.178100 | Lobby gypsum plaster | 8d | 2027-03-30 | 2027-04-06 | 1845 |  | 7 day week No holidays | 7293804 |
| 1847 | 36900.37200.54100.178200 | Staircase epoxy paint | 10d | 2027-04-07 | 2027-04-16 | 1846 |  | 7 day week No holidays | 7293814 |
| 1848 | 36900.37200.54100.178300 | Staircase railing | 6d | 2027-04-07 | 2027-04-12 | 1846 |  | 7 day week No holidays | 7293824 |
| 1849 | 36900.37200.54100.178400 | Lobby flooring work | 8d | 2027-04-07 | 2027-04-14 | 1846 |  | 7 day week No holidays | 7293834 |
| 1850 | 36900.37200.54100.178500 | Painting | 10d | 2027-04-15 | 2027-04-24 | 1849 |  | 7 day week No holidays | 7293844 |
| 1851 | 36900.37200.54100.178600 | Fire rated doors | 6d | 2027-04-15 | 2027-04-20 | 1849 |  | 7 day week No holidays | 7293854 |
| 1852 | 36900.37200.54200 | **49th Floor** | 42d | 2027-03-20 | 2027-04-30 |  | start no earlier than 2027-03-20 | 7 day week No holidays | 7287374 |
| 1853 | 36900.37200.54200.178700 | Lift blockwork | 6d | 2027-03-20 | 2027-03-25 | 1844 |  | 7 day week No holidays | 7293864 |
| 1854 | 36900.37200.54200.178800 | Lobby architrave work | 10d | 2027-03-26 | 2027-04-04 | 1853 |  | 7 day week No holidays | 7293874 |
| 1855 | 36900.37200.54200.178900 | Lobby gypsum plaster | 8d | 2027-04-05 | 2027-04-12 | 1854 |  | 7 day week No holidays | 7293884 |
| 1856 | 36900.37200.54200.179000 | Staircase epoxy paint | 10d | 2027-04-13 | 2027-04-22 | 1855 |  | 7 day week No holidays | 7293894 |
| 1857 | 36900.37200.54200.179100 | Staircase railing | 6d | 2027-04-13 | 2027-04-18 | 1855 |  | 7 day week No holidays | 7293904 |
| 1858 | 36900.37200.54200.179200 | Lobby flooring work | 8d | 2027-04-13 | 2027-04-20 | 1855 |  | 7 day week No holidays | 7293914 |
| 1859 | 36900.37200.54200.179300 | Painting | 10d | 2027-04-21 | 2027-04-30 | 1858 |  | 7 day week No holidays | 7293924 |
| 1860 | 36900.37200.54200.179400 | Fire rated doors | 6d | 2027-04-21 | 2027-04-26 | 1858 |  | 7 day week No holidays | 7293934 |

| ID | WBS | Task | Duration | Start | Finish | Predecessors | Constraint | Calendar | Unique_Task_ID |
| --- | --- | --- | --- | --- | --- | --- | --- | --- | --- |
| 1861 | 36900.37200.54300 | **50th Floor** | 42d | 2027-03-26 | 2027-05-06 |  | start no earlier than 2027-03-26 | 7 day week No holidays | 7287384 |
| 1862 | 36900.37200.54300.179500 | Lift blockwork | 6d | 2027-03-26 | 2027-03-31 | 1853 |  | 7 day week No holidays | 7293944 |
| 1863 | 36900.37200.54300.179600 | Lobby architrave work | 10d | 2027-04-01 | 2027-04-10 | 1862 |  | 7 day week No holidays | 7293954 |
| 1864 | 36900.37200.54300.179700 | Lobby gypsum plaster | 8d | 2027-04-11 | 2027-04-18 | 1863 |  | 7 day week No holidays | 7293964 |
| 1865 | 36900.37200.54300.179800 | Staircase epoxy paint | 10d | 2027-04-19 | 2027-04-28 | 1864 |  | 7 day week No holidays | 7293974 |
| 1866 | 36900.37200.54300.179900 | Staircase railing | 6d | 2027-04-19 | 2027-04-24 | 1864 |  | 7 day week No holidays | 7293984 |
| 1867 | 36900.37200.54300.180000 | Lobby flooring work | 8d | 2027-04-19 | 2027-04-26 | 1864 |  | 7 day week No holidays | 7293994 |
| 1868 | 36900.37200.54300.180100 | Painting | 10d | 2027-04-27 | 2027-05-06 | 1867 |  | 7 day week No holidays | 7294004 |
| 1869 | 36900.37200.54300.180200 | Fire rated doors | 6d | 2027-04-27 | 2027-05-02 | 1867 |  | 7 day week No holidays | 7294014 |
| 1870 | 36900.37200.54400 | **51st Floor** | 42d | 2027-04-01 | 2027-05-12 |  | start no earlier than 2027-04-01 | 7 day week No holidays | 7287394 |
| 1871 | 36900.37200.54400.180300 | Lift blockwork | 6d | 2027-04-01 | 2027-04-06 | 1862 |  | 7 day week No holidays | 7294024 |
| 1872 | 36900.37200.54400.180400 | Lobby architrave work | 10d | 2027-04-07 | 2027-04-16 | 1871 |  | 7 day week No holidays | 7294034 |
| 1873 | 36900.37200.54400.180500 | Lobby gypsum plaster | 8d | 2027-04-17 | 2027-04-24 | 1872 |  | 7 day week No holidays | 7294044 |
| 1874 | 36900.37200.54400.180600 | Staircase epoxy paint | 10d | 2027-04-25 | 2027-05-04 | 1873 |  | 7 day week No holidays | 7294054 |
| 1875 | 36900.37200.54400.180700 | Staircase railing | 6d | 2027-04-25 | 2027-04-30 | 1873 |  | 7 day week No holidays | 7294064 |
| 1876 | 36900.37200.54400.180800 | Lobby flooring work | 8d | 2027-04-25 | 2027-05-02 | 1873 |  | 7 day week No holidays | 7294074 |
| 1877 | 36900.37200.54400.180900 | Painting | 10d | 2027-05-03 | 2027-05-12 | 1876 |  | 7 day week No holidays | 7294084 |
| 1878 | 36900.37200.54400.181000 | Fire rated doors | 6d | 2027-05-03 | 2027-05-08 | 1876 |  | 7 day week No holidays | 7294094 |
| 1879 | 36900.37200.54500 | **52nd Floor** | 42d | 2027-04-07 | 2027-05-18 |  | start no earlier than 2027-04-07 | 7 day week No holidays | 7287404 |
| 1880 | 36900.37200.54500.181100 | Lift blockwork | 6d | 2027-04-07 | 2027-04-12 | 1871 |  | 7 day week No holidays | 7294104 |
| 1881 | 36900.37200.54500.181200 | Lobby architrave work | 10d | 2027-04-13 | 2027-04-22 | 1880 |  | 7 day week No holidays | 7294114 |
| 1882 | 36900.37200.54500.181300 | Lobby gypsum plaster | 8d | 2027-04-23 | 2027-04-30 | 1881 |  | 7 day week No holidays | 7294124 |
| 1883 | 36900.37200.54500.181400 | Staircase epoxy paint | 10d | 2027-05-01 | 2027-05-10 | 1882 |  | 7 day week No holidays | 7294134 |
| 1884 | 36900.37200.54500.181500 | Staircase railing | 6d | 2027-05-01 | 2027-05-06 | 1882 |  | 7 day week No holidays | 7294144 |
| 1885 | 36900.37200.54500.181600 | Lobby flooring work | 8d | 2027-05-01 | 2027-05-08 | 1882 |  | 7 day week No holidays | 7294154 |
| 1886 | 36900.37200.54500.181700 | Painting | 10d | 2027-05-09 | 2027-05-18 | 1885 |  | 7 day week No holidays | 7294164 |
| 1887 | 36900.37200.54500.181800 | Fire rated doors | 6d | 2027-05-09 | 2027-05-14 | 1885 |  | 7 day week No holidays | 7294174 |

| ID | WBS | Task | Duration | Start | Finish | Predecessors | Constraint | Calendar | Unique_Task_ID |
| --- | --- | --- | --- | --- | --- | --- | --- | --- | --- |
| 1888 | 36900.37200.54600 | **53rd Floor** | 42d | 2027-04-13 | 2027-05-24 |  | start no earlier than 2027-04-13 | 7 day week No holidays | 7287414 |
| 1889 | 36900.37200.54600.181900 | Lift blockwork | 6d | 2027-04-13 | 2027-04-18 | 1880 |  | 7 day week No holidays | 7294184 |
| 1890 | 36900.37200.54600.182000 | Lobby architrave work | 10d | 2027-04-19 | 2027-04-28 | 1889 |  | 7 day week No holidays | 7294194 |
| 1891 | 36900.37200.54600.182100 | Lobby gypsum plaster | 8d | 2027-04-29 | 2027-05-06 | 1890 |  | 7 day week No holidays | 7294204 |
| 1892 | 36900.37200.54600.182200 | Staircase epoxy paint | 10d | 2027-05-07 | 2027-05-16 | 1891 |  | 7 day week No holidays | 7294214 |
| 1893 | 36900.37200.54600.182300 | Staircase railing | 6d | 2027-05-07 | 2027-05-12 | 1891 |  | 7 day week No holidays | 7294224 |
| 1894 | 36900.37200.54600.182400 | Lobby flooring work | 8d | 2027-05-07 | 2027-05-14 | 1891 |  | 7 day week No holidays | 7294234 |
| 1895 | 36900.37200.54600.182500 | Painting | 10d | 2027-05-15 | 2027-05-24 | 1894 |  | 7 day week No holidays | 7294244 |
| 1896 | 36900.37200.54600.182600 | Fire rated doors | 6d | 2027-05-15 | 2027-05-20 | 1894 |  | 7 day week No holidays | 7294254 |
| 1897 | 36900.37200.54700 | **54th Floor** | 42d | 2027-04-19 | 2027-05-30 |  | start no earlier than 2027-04-19 | 7 day week No holidays | 7287424 |
| 1898 | 36900.37200.54700.182700 | Lift blockwork | 6d | 2027-04-19 | 2027-04-24 | 1889 |  | 7 day week No holidays | 7294264 |
| 1899 | 36900.37200.54700.182800 | Lobby architrave work | 10d | 2027-04-25 | 2027-05-04 | 1898 |  | 7 day week No holidays | 7294274 |
| 1900 | 36900.37200.54700.182900 | Lobby gypsum plaster | 8d | 2027-05-05 | 2027-05-12 | 1899 |  | 7 day week No holidays | 7294284 |
| 1901 | 36900.37200.54700.183000 | Staircase epoxy paint | 10d | 2027-05-13 | 2027-05-22 | 1900 |  | 7 day week No holidays | 7294294 |
| 1902 | 36900.37200.54700.183100 | Staircase railing | 6d | 2027-05-13 | 2027-05-18 | 1900 |  | 7 day week No holidays | 7294304 |
| 1903 | 36900.37200.54700.183200 | Lobby flooring work | 8d | 2027-05-13 | 2027-05-20 | 1900 |  | 7 day week No holidays | 7294314 |
| 1904 | 36900.37200.54700.183300 | Painting | 10d | 2027-05-21 | 2027-05-30 | 1903 |  | 7 day week No holidays | 7294324 |
| 1905 | 36900.37200.54700.183400 | Fire rated doors | 6d | 2027-05-21 | 2027-05-26 | 1903 |  | 7 day week No holidays | 7294334 |
| 1906 | 36900.37200.54800 | **55th Floor** | 42d | 2027-04-25 | 2027-06-05 |  | start no earlier than 2027-04-25 | 7 day week No holidays | 7288374 |
| 1907 | 36900.37200.54800.183500 | Lift blockwork | 6d | 2027-04-25 | 2027-04-30 | 1898 |  | 7 day week No holidays | 7294344 |
| 1908 | 36900.37200.54800.183600 | Lobby architrave work | 10d | 2027-05-01 | 2027-05-10 | 1907 |  | 7 day week No holidays | 7294354 |
| 1909 | 36900.37200.54800.183700 | Lobby gypsum plaster | 8d | 2027-05-11 | 2027-05-18 | 1908 |  | 7 day week No holidays | 7294364 |
| 1910 | 36900.37200.54800.183800 | Staircase epoxy paint | 10d | 2027-05-19 | 2027-05-28 | 1909 |  | 7 day week No holidays | 7294374 |
| 1911 | 36900.37200.54800.183900 | Staircase railing | 6d | 2027-05-19 | 2027-05-24 | 1909 |  | 7 day week No holidays | 7294384 |
| 1912 | 36900.37200.54800.184000 | Lobby flooring work | 8d | 2027-05-19 | 2027-05-26 | 1909 |  | 7 day week No holidays | 7294394 |
| 1913 | 36900.37200.54800.184100 | Painting | 10d | 2027-05-27 | 2027-06-05 | 1912 |  | 7 day week No holidays | 7294404 |
| 1914 | 36900.37200.54800.184200 | Fire rated doors | 6d | 2027-05-27 | 2027-06-01 | 1912 |  | 7 day week No holidays | 7294414 |

| ID | WBS | Task | Duration | Start | Finish | Predecessors | Constraint | Calendar | Unique_Task_ID |
| --- | --- | --- | --- | --- | --- | --- | --- | --- | --- |
| 1915 | 36900.37200.54900 | **56th Floor** | 42d | 2027-05-01 | 2027-06-11 |  | start no earlier than 2027-05-01 | 7 day week No holidays | 7288384 |
| 1916 | 36900.37200.54900.184300 | Lift blockwork | 6d | 2027-05-01 | 2027-05-06 | 1907 |  | 7 day week No holidays | 7294424 |
| 1917 | 36900.37200.54900.184400 | Lobby architrave work | 10d | 2027-05-07 | 2027-05-16 | 1916 |  | 7 day week No holidays | 7294434 |
| 1918 | 36900.37200.54900.184500 | Lobby gypsum plaster | 8d | 2027-05-17 | 2027-05-24 | 1917 |  | 7 day week No holidays | 7294444 |
| 1919 | 36900.37200.54900.184600 | Staircase epoxy paint | 10d | 2027-05-25 | 2027-06-03 | 1918 |  | 7 day week No holidays | 7294454 |
| 1920 | 36900.37200.54900.184700 | Staircase railing | 6d | 2027-05-25 | 2027-05-30 | 1918 |  | 7 day week No holidays | 7294464 |
| 1921 | 36900.37200.54900.184800 | Lobby flooring work | 8d | 2027-05-25 | 2027-06-01 | 1918 |  | 7 day week No holidays | 7294474 |
| 1922 | 36900.37200.54900.184900 | Painting | 10d | 2027-06-02 | 2027-06-11 | 1921 |  | 7 day week No holidays | 7294484 |
| 1923 | 36900.37200.54900.185000 | Fire rated doors | 6d | 2027-06-02 | 2027-06-07 | 1921 |  | 7 day week No holidays | 7294494 |
| 1924 | 36900.37200.55000 | **57th Floor** | 42d | 2027-05-07 | 2027-06-17 |  | start no earlier than 2027-05-07 | 7 day week No holidays | 7288394 |
| 1925 | 36900.37200.55000.185100 | Lift blockwork | 6d | 2027-05-07 | 2027-05-12 | 1916 |  | 7 day week No holidays | 7294504 |
| 1926 | 36900.37200.55000.185200 | Lobby architrave work | 10d | 2027-05-13 | 2027-05-22 | 1925 |  | 7 day week No holidays | 7294514 |
| 1927 | 36900.37200.55000.185300 | Lobby gypsum plaster | 8d | 2027-05-23 | 2027-05-30 | 1926 |  | 7 day week No holidays | 7294524 |
| 1928 | 36900.37200.55000.185400 | Staircase epoxy paint | 10d | 2027-05-31 | 2027-06-09 | 1927 |  | 7 day week No holidays | 7294534 |
| 1929 | 36900.37200.55000.185500 | Staircase railing | 6d | 2027-05-31 | 2027-06-05 | 1927 |  | 7 day week No holidays | 7294544 |
| 1930 | 36900.37200.55000.185600 | Lobby flooring work | 8d | 2027-05-31 | 2027-06-07 | 1927 |  | 7 day week No holidays | 7294554 |
| 1931 | 36900.37200.55000.185700 | Painting | 10d | 2027-06-08 | 2027-06-17 | 1930 |  | 7 day week No holidays | 7294564 |
| 1932 | 36900.37200.55000.185800 | Fire rated doors | 6d | 2027-06-08 | 2027-06-13 | 1930 |  | 7 day week No holidays | 7294574 |
| 1933 | 36900.37200.55100 | **58th Floor** | 42d | 2027-05-13 | 2027-06-23 |  | start no earlier than 2027-05-13 | 7 day week No holidays | 7288404 |
| 1934 | 36900.37200.55100.185900 | Lift blockwork | 6d | 2027-05-13 | 2027-05-18 | 1925 |  | 7 day week No holidays | 7294584 |
| 1935 | 36900.37200.55100.186000 | Lobby architrave work | 10d | 2027-05-19 | 2027-05-28 | 1934 |  | 7 day week No holidays | 7294594 |
| 1936 | 36900.37200.55100.186100 | Lobby gypsum plaster | 8d | 2027-05-29 | 2027-06-05 | 1935 |  | 7 day week No holidays | 7294604 |
| 1937 | 36900.37200.55100.186200 | Staircase epoxy paint | 10d | 2027-06-06 | 2027-06-15 | 1936 |  | 7 day week No holidays | 7294614 |
| 1938 | 36900.37200.55100.186300 | Staircase railing | 6d | 2027-06-06 | 2027-06-11 | 1936 |  | 7 day week No holidays | 7294624 |
| 1939 | 36900.37200.55100.186400 | Lobby flooring work | 8d | 2027-06-06 | 2027-06-13 | 1936 |  | 7 day week No holidays | 7294634 |
| 1940 | 36900.37200.55100.186500 | Painting | 10d | 2027-06-14 | 2027-06-23 | 1939 |  | 7 day week No holidays | 7294644 |
| 1941 | 36900.37200.55100.186600 | Fire rated doors | 6d | 2027-06-14 | 2027-06-19 | 1939 |  | 7 day week No holidays | 7294654 |

| ID | WBS | Task | Duration | Start | Finish | Predecessors | Constraint | Calendar | Unique_Task_ID |
| --- | --- | --- | --- | --- | --- | --- | --- | --- | --- |
| 1942 | 36900.37200.55200 | **59th Floor** | 42d | 2027-05-19 | 2027-06-29 |  | start no earlier than 2027-05-19 | 7 day week No holidays | 7288414 |
| 1943 | 36900.37200.55200.186700 | Lift blockwork | 6d | 2027-05-19 | 2027-05-24 | 1934 |  | 7 day week No holidays | 7294664 |
| 1944 | 36900.37200.55200.186800 | Lobby architrave work | 10d | 2027-05-25 | 2027-06-03 | 1943 |  | 7 day week No holidays | 7294674 |
| 1945 | 36900.37200.55200.186900 | Lobby gypsum plaster | 8d | 2027-06-04 | 2027-06-11 | 1944 |  | 7 day week No holidays | 7294684 |
| 1946 | 36900.37200.55200.187000 | Staircase epoxy paint | 10d | 2027-06-12 | 2027-06-21 | 1945 |  | 7 day week No holidays | 7294694 |
| 1947 | 36900.37200.55200.187100 | Staircase railing | 6d | 2027-06-12 | 2027-06-17 | 1945 |  | 7 day week No holidays | 7294704 |
| 1948 | 36900.37200.55200.187200 | Lobby flooring work | 8d | 2027-06-12 | 2027-06-19 | 1945 |  | 7 day week No holidays | 7294714 |
| 1949 | 36900.37200.55200.187300 | Painting | 10d | 2027-06-20 | 2027-06-29 | 1948 |  | 7 day week No holidays | 7294724 |
| 1950 | 36900.37200.55200.187400 | Fire rated doors | 6d | 2027-06-20 | 2027-06-25 | 1948 |  | 7 day week No holidays | 7294734 |
| 1951 | 36900.37200.55300 | **60th Floor** | 42d | 2027-05-25 | 2027-07-05 |  | start no earlier than 2027-05-25 | 7 day week No holidays | 7288424 |
| 1952 | 36900.37200.55300.187500 | Lift blockwork | 6d | 2027-05-25 | 2027-05-30 | 1943 |  | 7 day week No holidays | 7294744 |
| 1953 | 36900.37200.55300.187600 | Lobby architrave work | 10d | 2027-05-31 | 2027-06-09 | 1952 |  | 7 day week No holidays | 7294754 |
| 1954 | 36900.37200.55300.187700 | Lobby gypsum plaster | 8d | 2027-06-10 | 2027-06-17 | 1953 |  | 7 day week No holidays | 7294764 |
| 1955 | 36900.37200.55300.187800 | Staircase epoxy paint | 10d | 2027-06-18 | 2027-06-27 | 1954 |  | 7 day week No holidays | 7294774 |
| 1956 | 36900.37200.55300.187900 | Staircase railing | 6d | 2027-06-18 | 2027-06-23 | 1954 |  | 7 day week No holidays | 7294784 |
| 1957 | 36900.37200.55300.188000 | Lobby flooring work | 8d | 2027-06-18 | 2027-06-25 | 1954 |  | 7 day week No holidays | 7294794 |
| 1958 | 36900.37200.55300.188100 | Painting | 10d | 2027-06-26 | 2027-07-05 | 1957 |  | 7 day week No holidays | 7294804 |
| 1959 | 36900.37200.55300.188200 | Fire rated doors | 6d | 2027-06-26 | 2027-07-01 | 1957 |  | 7 day week No holidays | 7294814 |
| 1960 | 36900.37200.55400 | **61st Floor** | 42d | 2027-05-31 | 2027-07-11 |  | start no earlier than 2027-05-31 | 7 day week No holidays | 7288434 |
| 1961 | 36900.37200.55400.188300 | Lift blockwork | 6d | 2027-05-31 | 2027-06-05 | 1952 |  | 7 day week No holidays | 7294824 |
| 1962 | 36900.37200.55400.188400 | Lobby architrave work | 10d | 2027-06-06 | 2027-06-15 | 1961 |  | 7 day week No holidays | 7294834 |
| 1963 | 36900.37200.55400.188500 | Lobby gypsum plaster | 8d | 2027-06-16 | 2027-06-23 | 1962 |  | 7 day week No holidays | 7294844 |
| 1964 | 36900.37200.55400.188600 | Staircase epoxy paint | 10d | 2027-06-24 | 2027-07-03 | 1963 |  | 7 day week No holidays | 7294854 |
| 1965 | 36900.37200.55400.188700 | Staircase railing | 6d | 2027-06-24 | 2027-06-29 | 1963 |  | 7 day week No holidays | 7294864 |
| 1966 | 36900.37200.55400.188800 | Lobby flooring work | 8d | 2027-06-24 | 2027-07-01 | 1963 |  | 7 day week No holidays | 7294874 |
| 1967 | 36900.37200.55400.188900 | Painting | 10d | 2027-07-02 | 2027-07-11 | 1966 |  | 7 day week No holidays | 7294884 |
| 1968 | 36900.37200.55400.189000 | Fire rated doors | 6d | 2027-07-02 | 2027-07-07 | 1966 |  | 7 day week No holidays | 7294894 |

| ID | WBS | Task | Duration | Start | Finish | Predecessors | Constraint | Calendar | Unique_Task_ID |
| --- | --- | --- | --- | --- | --- | --- | --- | --- | --- |
| 1969 | 36900.37200.55500 | **62nd Floor** | 42d | 2027-06-06 | 2027-07-17 |  | start no earlier than 2027-06-06 | 7 day week No holidays | 7288444 |
| 1970 | 36900.37200.55500.189100 | Lift blockwork | 6d | 2027-06-06 | 2027-06-11 | 1961 |  | 7 day week No holidays | 7294904 |
| 1971 | 36900.37200.55500.189200 | Lobby architrave work | 10d | 2027-06-12 | 2027-06-21 | 1970 |  | 7 day week No holidays | 7294914 |
| 1972 | 36900.37200.55500.189300 | Lobby gypsum plaster | 8d | 2027-06-22 | 2027-06-29 | 1971 |  | 7 day week No holidays | 7294924 |
| 1973 | 36900.37200.55500.189400 | Staircase epoxy paint | 10d | 2027-06-30 | 2027-07-09 | 1972 |  | 7 day week No holidays | 7294934 |
| 1974 | 36900.37200.55500.189500 | Staircase railing | 6d | 2027-06-30 | 2027-07-05 | 1972 |  | 7 day week No holidays | 7294944 |
| 1975 | 36900.37200.55500.189600 | Lobby flooring work | 8d | 2027-06-30 | 2027-07-07 | 1972 |  | 7 day week No holidays | 7294954 |
| 1976 | 36900.37200.55500.189700 | Painting | 10d | 2027-07-08 | 2027-07-17 | 1975 |  | 7 day week No holidays | 7294964 |
| 1977 | 36900.37200.55500.189800 | Fire rated doors | 6d | 2027-07-08 | 2027-07-13 | 1975 |  | 7 day week No holidays | 7294974 |
| 1978 | 36900.37200.55600 | **63rd Floor** | 42d | 2027-06-12 | 2027-07-23 |  | start no earlier than 2027-06-12 | 7 day week No holidays | 7288454 |
| 1979 | 36900.37200.55600.189900 | Lift blockwork | 6d | 2027-06-12 | 2027-06-17 | 1970 |  | 7 day week No holidays | 7294984 |
| 1980 | 36900.37200.55600.190000 | Lobby architrave work | 10d | 2027-06-18 | 2027-06-27 | 1979 |  | 7 day week No holidays | 7294994 |
| 1981 | 36900.37200.55600.190100 | Lobby gypsum plaster | 8d | 2027-06-28 | 2027-07-05 | 1980 |  | 7 day week No holidays | 7295004 |
| 1982 | 36900.37200.55600.190200 | Staircase epoxy paint | 10d | 2027-07-06 | 2027-07-15 | 1981 |  | 7 day week No holidays | 7295014 |
| 1983 | 36900.37200.55600.190300 | Staircase railing | 6d | 2027-07-06 | 2027-07-11 | 1981 |  | 7 day week No holidays | 7295024 |
| 1984 | 36900.37200.55600.190400 | Lobby flooring work | 8d | 2027-07-06 | 2027-07-13 | 1981 |  | 7 day week No holidays | 7295034 |
| 1985 | 36900.37200.55600.190500 | Painting | 10d | 2027-07-14 | 2027-07-23 | 1984 |  | 7 day week No holidays | 7295044 |
| 1986 | 36900.37200.55600.190600 | Fire rated doors | 6d | 2027-07-14 | 2027-07-19 | 1984 |  | 7 day week No holidays | 7295054 |
| 1987 | 36900.37200.55700 | **64th Floor** | 42d | 2027-06-18 | 2027-07-29 |  | start no earlier than 2027-06-18 | 7 day week No holidays | 7288464 |
| 1988 | 36900.37200.55700.190700 | Lift blockwork | 6d | 2027-06-18 | 2027-06-23 | 1979 |  | 7 day week No holidays | 7295064 |
| 1989 | 36900.37200.55700.190800 | Lobby architrave work | 10d | 2027-06-24 | 2027-07-03 | 1988 |  | 7 day week No holidays | 7295074 |
| 1990 | 36900.37200.55700.190900 | Lobby gypsum plaster | 8d | 2027-07-04 | 2027-07-11 | 1989 |  | 7 day week No holidays | 7295084 |
| 1991 | 36900.37200.55700.191000 | Staircase epoxy paint | 10d | 2027-07-12 | 2027-07-21 | 1990 |  | 7 day week No holidays | 7295094 |
| 1992 | 36900.37200.55700.191100 | Staircase railing | 6d | 2027-07-12 | 2027-07-17 | 1990 |  | 7 day week No holidays | 7295104 |
| 1993 | 36900.37200.55700.191200 | Lobby flooring work | 8d | 2027-07-12 | 2027-07-19 | 1990 |  | 7 day week No holidays | 7295114 |
| 1994 | 36900.37200.55700.191300 | Painting | 10d | 2027-07-20 | 2027-07-29 | 1993 |  | 7 day week No holidays | 7295124 |
| 1995 | 36900.37200.55700.191400 | Fire rated doors | 6d | 2027-07-20 | 2027-07-25 | 1993 |  | 7 day week No holidays | 7295134 |

| ID | WBS | Task | Duration | Start | Finish | Predecessors | Constraint | Calendar | Unique_Task_ID |
| --- | --- | --- | --- | --- | --- | --- | --- | --- | --- |
| 1996 | 36900.37200.55800 | **65th Floor** | 42d | 2027-06-24 | 2027-08-04 |  | start no earlier than 2027-06-24 | 7 day week No holidays | 7288474 |
| 1997 | 36900.37200.55800.191500 | Lift blockwork | 6d | 2027-06-24 | 2027-06-29 | 1988 |  | 7 day week No holidays | 7295144 |
| 1998 | 36900.37200.55800.191600 | Lobby architrave work | 10d | 2027-06-30 | 2027-07-09 | 1997 |  | 7 day week No holidays | 7295154 |
| 1999 | 36900.37200.55800.191700 | Lobby gypsum plaster | 8d | 2027-07-10 | 2027-07-17 | 1998 |  | 7 day week No holidays | 7295164 |
| 2000 | 36900.37200.55800.191800 | Staircase epoxy paint | 10d | 2027-07-18 | 2027-07-27 | 1999 |  | 7 day week No holidays | 7295174 |
| 2001 | 36900.37200.55800.191900 | Staircase railing | 6d | 2027-07-18 | 2027-07-23 | 1999 |  | 7 day week No holidays | 7295184 |
| 2002 | 36900.37200.55800.192000 | Lobby flooring work | 8d | 2027-07-18 | 2027-07-25 | 1999 |  | 7 day week No holidays | 7295194 |
| 2003 | 36900.37200.55800.192100 | Painting | 10d | 2027-07-26 | 2027-08-04 | 2002 |  | 7 day week No holidays | 7295204 |
| 2004 | 36900.37200.55800.192200 | Fire rated doors | 6d | 2027-07-26 | 2027-07-31 | 2002 |  | 7 day week No holidays | 7295214 |
| 2005 | 36900.37200.55900 | **66th Floor** | 42d | 2027-06-30 | 2027-08-10 |  | start no earlier than 2027-06-30 | 7 day week No holidays | 7288484 |
| 2006 | 36900.37200.55900.192300 | Lift blockwork | 6d | 2027-06-30 | 2027-07-05 | 1997 |  | 7 day week No holidays | 7295224 |
| 2007 | 36900.37200.55900.192400 | Lobby architrave work | 10d | 2027-07-06 | 2027-07-15 | 2006 |  | 7 day week No holidays | 7295234 |
| 2008 | 36900.37200.55900.192500 | Lobby gypsum plaster | 8d | 2027-07-16 | 2027-07-23 | 2007 |  | 7 day week No holidays | 7295244 |
| 2009 | 36900.37200.55900.192600 | Staircase epoxy paint | 10d | 2027-07-24 | 2027-08-02 | 2008 |  | 7 day week No holidays | 7295254 |
| 2010 | 36900.37200.55900.192700 | Staircase railing | 6d | 2027-07-24 | 2027-07-29 | 2008 |  | 7 day week No holidays | 7295264 |
| 2011 | 36900.37200.55900.192800 | Lobby flooring work | 8d | 2027-07-24 | 2027-07-31 | 2008 |  | 7 day week No holidays | 7295274 |
| 2012 | 36900.37200.55900.192900 | Painting | 10d | 2027-08-01 | 2027-08-10 | 2011 |  | 7 day week No holidays | 7295284 |
| 2013 | 36900.37200.55900.193000 | Fire rated doors | 6d | 2027-08-01 | 2027-08-06 | 2011 |  | 7 day week No holidays | 7295294 |
| 2014 | 36900.37200.56000 | **67th Floor** | 42d | 2027-07-06 | 2027-08-16 |  | start no earlier than 2027-07-06 | 7 day week No holidays | 7288494 |
| 2015 | 36900.37200.56000.193100 | Lift blockwork | 6d | 2027-07-06 | 2027-07-11 | 2006 |  | 7 day week No holidays | 7295304 |
| 2016 | 36900.37200.56000.193200 | Lobby architrave work | 10d | 2027-07-12 | 2027-07-21 | 2015 |  | 7 day week No holidays | 7295314 |
| 2017 | 36900.37200.56000.193300 | Lobby gypsum plaster | 8d | 2027-07-22 | 2027-07-29 | 2016 |  | 7 day week No holidays | 7295324 |
| 2018 | 36900.37200.56000.193400 | Staircase epoxy paint | 10d | 2027-07-30 | 2027-08-08 | 2017 |  | 7 day week No holidays | 7295334 |
| 2019 | 36900.37200.56000.193500 | Staircase railing | 6d | 2027-07-30 | 2027-08-04 | 2017 |  | 7 day week No holidays | 7295344 |
| 2020 | 36900.37200.56000.193600 | Lobby flooring work | 8d | 2027-07-30 | 2027-08-06 | 2017 |  | 7 day week No holidays | 7295354 |
| 2021 | 36900.37200.56000.193700 | Painting | 10d | 2027-08-07 | 2027-08-16 | 2020 |  | 7 day week No holidays | 7295364 |
| 2022 | 36900.37200.56000.193800 | Fire rated doors | 6d | 2027-08-07 | 2027-08-12 | 2020 |  | 7 day week No holidays | 7295374 |

| ID | WBS | Task | Duration | Start | Finish | Predecessors | Constraint | Calendar | Unique_Task_ID |
| --- | --- | --- | --- | --- | --- | --- | --- | --- | --- |
| 2023 | 36900.37200.56100 | **68th Floor** | 42d | 2027-07-12 | 2027-08-22 |  | start no earlier than 2027-07-12 | 7 day week No holidays | 7288504 |
| 2024 | 36900.37200.56100.193900 | Lift blockwork | 6d | 2027-07-12 | 2027-07-17 | 2015 |  | 7 day week No holidays | 2492968 |
| 2025 | 36900.37200.56100.194000 | Lobby architrave work | 10d | 2027-07-18 | 2027-07-27 | 2024 |  | 7 day week No holidays | 7295384 |
| 2026 | 36900.37200.56100.194100 | Lobby gypsum plaster | 8d | 2027-07-28 | 2027-08-04 | 2025 |  | 7 day week No holidays | 7295394 |
| 2027 | 36900.37200.56100.194200 | Staircase epoxy paint | 10d | 2027-08-05 | 2027-08-14 | 2026 |  | 7 day week No holidays | 7295404 |
| 2028 | 36900.37200.56100.194300 | Staircase railing | 6d | 2027-08-05 | 2027-08-10 | 2026 |  | 7 day week No holidays | 7295414 |
| 2029 | 36900.37200.56100.194400 | Lobby flooring work | 8d | 2027-08-05 | 2027-08-12 | 2026 |  | 7 day week No holidays | 7295424 |
| 2030 | 36900.37200.56100.194500 | Painting | 10d | 2027-08-13 | 2027-08-22 | 2029 |  | 7 day week No holidays | 7295434 |
| 2031 | 36900.37200.56100.194600 | Fire rated doors | 6d | 2027-08-13 | 2027-08-18 | 2029 |  | 7 day week No holidays | 7295444 |
| 2032 | 36900.37200.56200 | **69th Floor** | 42d | 2027-07-18 | 2027-08-28 |  | start no earlier than 2027-07-18 | 7 day week No holidays | 7288514 |
| 2033 | 36900.37200.56200.194700 | Lift blockwork | 6d | 2027-07-18 | 2027-07-23 | 2024 |  | 7 day week No holidays | 7295454 |
| 2034 | 36900.37200.56200.194800 | Lobby architrave work | 10d | 2027-07-24 | 2027-08-02 | 2033 |  | 7 day week No holidays | 7295464 |
| 2035 | 36900.37200.56200.194900 | Lobby gypsum plaster | 8d | 2027-08-03 | 2027-08-10 | 2034 |  | 7 day week No holidays | 7295474 |
| 2036 | 36900.37200.56200.195000 | Staircase epoxy paint | 10d | 2027-08-11 | 2027-08-20 | 2035 |  | 7 day week No holidays | 7295484 |
| 2037 | 36900.37200.56200.195100 | Staircase railing | 6d | 2027-08-11 | 2027-08-16 | 2035 |  | 7 day week No holidays | 7295494 |
| 2038 | 36900.37200.56200.195200 | Lobby flooring work | 8d | 2027-08-11 | 2027-08-18 | 2035 |  | 7 day week No holidays | 7295504 |
| 2039 | 36900.37200.56200.195300 | Painting | 10d | 2027-08-19 | 2027-08-28 | 2038 |  | 7 day week No holidays | 7295514 |
| 2040 | 36900.37200.56200.195400 | Fire rated doors | 6d | 2027-08-19 | 2027-08-24 | 2038 |  | 7 day week No holidays | 7295524 |
| 2041 | 36900.37200.56300 | **70th Floor** | 42d | 2027-07-24 | 2027-09-03 |  | start no earlier than 2027-07-24 | 7 day week No holidays | 7288524 |
| 2042 | 36900.37200.56300.195500 | Lift blockwork | 6d | 2027-07-24 | 2027-07-29 | 2033 |  | 7 day week No holidays | 7295534 |
| 2043 | 36900.37200.56300.195600 | Lobby architrave work | 10d | 2027-07-30 | 2027-08-08 | 2042 |  | 7 day week No holidays | 7295544 |
| 2044 | 36900.37200.56300.195700 | Lobby gypsum plaster | 8d | 2027-08-09 | 2027-08-16 | 2043 |  | 7 day week No holidays | 7295554 |
| 2045 | 36900.37200.56300.195800 | Staircase epoxy paint | 10d | 2027-08-17 | 2027-08-26 | 2044 |  | 7 day week No holidays | 7295564 |
| 2046 | 36900.37200.56300.195900 | Staircase railing | 6d | 2027-08-17 | 2027-08-22 | 2044 |  | 7 day week No holidays | 7295574 |
| 2047 | 36900.37200.56300.196000 | Lobby flooring work | 8d | 2027-08-17 | 2027-08-24 | 2044 |  | 7 day week No holidays | 7295584 |
| 2048 | 36900.37200.56300.196100 | Painting | 10d | 2027-08-25 | 2027-09-03 | 2047 |  | 7 day week No holidays | 7295594 |
| 2049 | 36900.37200.56300.196200 | Fire rated doors | 6d | 2027-08-25 | 2027-08-30 | 2047 |  | 7 day week No holidays | 7295604 |

| ID | WBS | Task | Duration | Start | Finish | Predecessors | Constraint | Calendar | Unique_Task_ID |
| --- | --- | --- | --- | --- | --- | --- | --- | --- | --- |
| 2050 | 36900.37200.56400 | **71st Floor** | 42d | 2027-07-30 | 2027-09-09 |  | start no earlier than 2027-07-30 | 7 day week No holidays | 7288534 |
| 2051 | 36900.37200.56400.196300 | Lift blockwork | 6d | 2027-07-30 | 2027-08-04 | 2042 |  | 7 day week No holidays | 7295614 |
| 2052 | 36900.37200.56400.196400 | Lobby architrave work | 10d | 2027-08-05 | 2027-08-14 | 2051 |  | 7 day week No holidays | 7295624 |
| 2053 | 36900.37200.56400.196500 | Lobby gypsum plaster | 8d | 2027-08-15 | 2027-08-22 | 2052 |  | 7 day week No holidays | 7295634 |
| 2054 | 36900.37200.56400.196600 | Staircase epoxy paint | 10d | 2027-08-23 | 2027-09-01 | 2053 |  | 7 day week No holidays | 7295644 |
| 2055 | 36900.37200.56400.196700 | Staircase railing | 6d | 2027-08-23 | 2027-08-28 | 2053 |  | 7 day week No holidays | 7295654 |
| 2056 | 36900.37200.56400.196800 | Lobby flooring work | 8d | 2027-08-23 | 2027-08-30 | 2053 |  | 7 day week No holidays | 7295664 |
| 2057 | 36900.37200.56400.196900 | Painting | 10d | 2027-08-31 | 2027-09-09 | 2056 |  | 7 day week No holidays | 7295674 |
| 2058 | 36900.37200.56400.197000 | Fire rated doors | 6d | 2027-08-31 | 2027-09-05 | 2056 |  | 7 day week No holidays | 7295684 |
| 2059 | 36900.37200.56500 | **72nd Floor** | 42d | 2027-08-05 | 2027-09-15 |  | start no earlier than 2027-08-05 | 7 day week No holidays | 7288544 |
| 2060 | 36900.37200.56500.197100 | Lift blockwork | 6d | 2027-08-05 | 2027-08-10 | 2051 |  | 7 day week No holidays | 7295694 |
| 2061 | 36900.37200.56500.197200 | Lobby architrave work | 10d | 2027-08-11 | 2027-08-20 | 2060 |  | 7 day week No holidays | 7295704 |
| 2062 | 36900.37200.56500.197300 | Lobby gypsum plaster | 8d | 2027-08-21 | 2027-08-28 | 2061 |  | 7 day week No holidays | 7295714 |
| 2063 | 36900.37200.56500.197400 | Staircase epoxy paint | 10d | 2027-08-29 | 2027-09-07 | 2062 |  | 7 day week No holidays | 7295724 |
| 2064 | 36900.37200.56500.197500 | Staircase railing | 6d | 2027-08-29 | 2027-09-03 | 2062 |  | 7 day week No holidays | 7295734 |
| 2065 | 36900.37200.56500.197600 | Lobby flooring work | 8d | 2027-08-29 | 2027-09-05 | 2062 |  | 7 day week No holidays | 7295744 |
| 2066 | 36900.37200.56500.197700 | Painting | 10d | 2027-09-06 | 2027-09-15 | 2065 |  | 7 day week No holidays | 7295754 |
| 2067 | 36900.37200.56500.197800 | Fire rated doors | 6d | 2027-09-06 | 2027-09-11 | 2065 |  | 7 day week No holidays | 7295764 |
| 2068 | 36900.77500 | **Capex Item procurement** | 240d | 2026-07-05 | 2027-03-01 |  | start no earlier than 2026-07-05 | 7 day week No holidays | 7288774 |
| 2069 | 36900.77500.123700 | Lift | 120d | 2026-07-05 | 2026-11-01 | 7FS-120d |  | 7 day week No holidays | 7289354 |
| 2070 | 36900.77500.123800 | Panel | 120d | 2026-11-02 | 2027-03-01 | 7 |  | 7 day week No holidays | 7289364 |
| 2071 | 36900.77500.123900 | DG procurement | 120d | 2026-11-02 | 2027-03-01 | 7 |  | 7 day week No holidays | 7289374 |
| 2072 | 36900.77500.124000 | Transformer | 120d | 2026-11-02 | 2027-03-01 | 7 |  | 7 day week No holidays | 7289384 |
| 2073 | 36900.77500.124100 | Pumps | 120d | 2026-11-02 | 2027-03-01 | 7 |  | 7 day week No holidays | 7289394 |

| ID | WBS | Task | Duration | Start | Finish | Predecessors | Constraint | Calendar | Unique_Task_ID |
| --- | --- | --- | --- | --- | --- | --- | --- | --- | --- |
| 2074 | 36900.77400 | **External Services** | 180d | 2026-11-02 | 2027-04-30 |  | start no earlier than 2026-11-02 | 7 day week No holidays | 7288764 |
| 2075 | 36900.77400.124200 | Plumbing network | 180d | 2026-11-02 | 2027-04-30 | 70 |  | 7 day week No holidays | 7289404 |
| 2076 | 36900.77400.124300 | Electrical network | 180d | 2026-11-02 | 2027-04-30 | 70 |  | 7 day week No holidays | 7289414 |
| 2077 | 36900.77400.124400 | Electrical lighting | 180d | 2026-11-02 | 2027-04-30 | 70 |  | 7 day week No holidays | 7289424 |
| 2078 | 36900.77400.124500 | Fire fighting | 180d | 2026-11-02 | 2027-04-30 | 70 |  | 7 day week No holidays | 7289434 |
| 2079 | 36900.77400.124600 | CCTV works | 180d | 2026-11-02 | 2027-04-30 | 70 |  | 7 day week No holidays | 2504388 |
| 2080 | 36900.40100 | **Infra Works** | 120d | 2026-11-02 | 2027-03-01 |  | start no earlier than 2026-11-02 | 7 day week No holidays | 7284954 |
| 2081 | 36900.40100.124700 | Compound wall | 60d | 2026-11-02 | 2026-12-31 | 70 |  | 7 day week No holidays | 7289444 |
| 2082 | 36900.40100.124800 | Entrance gate | 30d | 2026-11-02 | 2026-12-01 | 70 |  | 7 day week No holidays | 7289454 |
| 2083 | 36900.40100.124900 | STP | 120d | 2026-11-02 | 2027-03-01 | 70 |  | 7 day week No holidays | 7289464 |
| 2084 | 36900.40100.125000 | WTP | 90d | 2026-11-02 | 2027-01-30 | 70 |  | 7 day week No holidays | 7289474 |
| 2085 | 36900.40100.125100 | OWC | 45d | 2026-11-02 | 2026-12-16 | 70 |  | 7 day week No holidays | 7289484 |
| 2086 | 36900.40100.125200 | Road | 90d | 2026-11-02 | 2027-01-30 | 70 |  | 7 day week No holidays | 7289494 |
| 2087 | 36900.40100.125300 | Storm water drain | 45d | 2026-11-02 | 2026-12-16 | 70 |  | 7 day week No holidays | 7289504 |
| 2088 | 36900.40100.125400 | HIghside electrical network | 45d | 2026-11-02 | 2026-12-16 | 70 |  | 7 day week No holidays | 7289514 |
| 2089 | 36900.40100.125500 | Softscaping | 45d | 2026-11-02 | 2026-12-16 | 70 |  | 7 day week No holidays | 7289524 |
| 2090 | 36900.40100.125600 | Rain water harvesting | 45d | 2026-11-02 | 2026-12-16 | 70 |  | 7 day week No holidays | 7289534 |
| 2091 | 36900.40100.125700 | Hardscaping | 45d | 2026-11-02 | 2026-12-16 | 70 |  | 7 day week No holidays | 7289544 |
| 2092 | 36900.40100.125800 | External secturity | 45d | 2026-11-02 | 2026-12-16 | 70 |  | 7 day week No holidays | 7289554 |
| 2093 | 36900.40100.125900 | Signages | 45d | 2026-11-02 | 2026-12-16 | 70 |  | 7 day week No holidays | 7289564 |
| 2094 | 36900.40100.126000 | Green building certification | 45d | 2026-11-02 | 2026-12-16 | 70 |  | 7 day week No holidays | 7289574 |
| 2095 | 36900.78900 | **CFO** | 31d | 2028-02-05 | 2028-03-06 |  | start no earlier than 2028-02-05 | 7 day week No holidays | 2484769 |
| 2096 | 36900.78900.126100 | CFO Application | 1d | 2028-02-05 | 2028-02-05 | 1473, 2074, 1450, 1457, 1462, 1466, 2091, 2092, 2093 |  | 7 day week No holidays | 2484770 |
| 2097 | 36900.78900.126200 | CFO Receipt | 30d | 2028-02-06 | 2028-03-06 | 2096 |  | 7 day week No holidays | 2484771 |

| ID | WBS | Task | Type | Duration | Start | Finish | Predecessors | Complete | Constraint | Calendar | Unique_Task_ID |
| --- | --- | --- | --- | --- | --- | --- | --- | --- | --- | --- | --- |
| 2098 | 36900.79200 | **OC** |  | 31d | 2028-03-07 | 2028-04-06 |  |  | start no earlier than 2028-03-07 | 7 day week No holidays | 2526448 |
| 2099 | 36900.79200.126300 | OC Application |  | 1d | 2028-03-07 | 2028-03-07 | 2097 |  |  | 7 day week No holidays | 2526458 |
| 2100 | 36900.79200.126400 | OC Receipt |  | 30d | 2028-03-08 | 2028-04-06 | 2099 |  |  | 7 day week No holidays | 2526468 |
| 2101 | 36900.51300 | **Handing Over activities** |  | 56d | 2029-11-07 | 2030-01-02 |  |  | start no earlier than 2029-11-07 | 7 day week No holidays | 7285974 |
| 2102 | 36900.51300.63100 | **Acid Wash** |  | 49d | 2029-11-07 | 2029-12-26 |  |  | start no earlier than 2029-11-07 | 7 day week No holidays | 7288564 |
| 2103 | 36900.51300.63100.197900 | 1st to 10th Fl |  | 7d | 2029-11-07 | 2029-11-14 | 605, 2098 |  |  | 7 day week No holidays | 7295774 |
| 2104 | 36900.51300.63100.198000 | 11th to 20th Fl |  | 7d | 2029-11-14 | 2029-11-21 | 2103 |  |  | 7 day week No holidays | 7295784 |
| 2105 | 36900.51300.63100.198100 | 21st to 30th Fl |  | 7d | 2029-11-21 | 2029-11-28 | 2104 |  |  | 7 day week No holidays | 7295794 |
| 2106 | 36900.51300.63100.198200 | 31st to 40th Fl |  | 7d | 2029-11-28 | 2029-12-05 | 2105 |  |  | 7 day week No holidays | 7295804 |
| 2107 | 36900.51300.63100.198300 | 41st to 50th Fl |  | 7d | 2029-12-05 | 2029-12-12 | 2106 |  |  | 7 day week No holidays | 7295814 |
| 2108 | 36900.51300.63100.198400 | 51st to 60th Fl |  | 7d | 2029-12-12 | 2029-12-19 | 2107 |  |  | 7 day week No holidays | 7295824 |
| 2109 | 36900.51300.63100.198500 | 61st to 72nd fl |  | 7d | 2029-12-19 | 2029-12-26 | 2108 |  |  | 7 day week No holidays | 7295834 |
| 2110 | 36900.51300.63000 | **CP & Sanitory fittings** |  | 49d | 2029-11-14 | 2030-01-02 |  |  | start no earlier than 2029-11-14 | 7 day week No holidays | 7288554 |
| 2111 | 36900.51300.63000.198600 | 1st to 10th Fl |  | 7d | 2029-11-14 | 2029-11-21 | 2103 |  |  | 7 day week No holidays | 7295844 |
| 2112 | 36900.51300.63000.198700 | 11th to 20th Fl |  | 7d | 2029-11-21 | 2029-11-28 | 2111 |  |  | 7 day week No holidays | 7295854 |
| 2113 | 36900.51300.63000.198800 | 21st to 30th Fl |  | 7d | 2029-11-28 | 2029-12-05 | 2112 |  |  | 7 day week No holidays | 7295864 |
| 2114 | 36900.51300.63000.198900 | 31st to 40th Fl |  | 7d | 2029-12-05 | 2029-12-12 | 2113 |  |  | 7 day week No holidays | 7295874 |
| 2115 | 36900.51300.63000.199000 | 41st to 50th Fl |  | 7d | 2029-12-12 | 2029-12-19 | 2114 |  |  | 7 day week No holidays | 7295884 |
| 2116 | 36900.51300.63000.199100 | 51st to 60th Fl |  | 7d | 2029-12-19 | 2029-12-26 | 2115 |  |  | 7 day week No holidays | 7295894 |
| 2117 | 36900.51300.63000.199200 | 61st to 72nd fl |  | 7d | 2029-12-26 | 2030-01-02 | 2116 |  |  | 7 day week No holidays | 7295904 |
| 2118 | 36900.39100 | **TA Milestones** |  | 1370d | 2023-12-31 | 2027-09-30 |  | 53% | start no earlier than 2023-12-31 | 7 day week No holidays | 8605794 |
| 2119 | 36900.39100.39300 | **Milestones** |  | 1370d | 2023-12-31 | 2027-09-30 |  | 74% | start no earlier than 2023-12-31 | 7 day week No holidays | 8605804 |
| 2120 | 36900.39100.39300.199300 | Initiation of 20th Floor slab |  | 1d | 2023-12-31 | 2023-12-31 |  | 100% | start no earlier than 2023-12-31 | 7 day week No holidays | 8605824 |
| 2121 | 36900.39100.39300.199400 | Initiation of 25th Floor slab |  | 1d | 2024-03-12 | 2024-03-12 |  | 100% | start no earlier than 2024-03-12 | 7 day week No holidays | 8605834 |
| 2122 | 36900.39100.39300.199500 | Completion 27th Floor slab |  | 1d | 2024-05-07 | 2024-05-07 |  | 100% | start no earlier than 2024-05-07 | 7 day week No holidays | 8605844 |
| 2123 | 36900.39100.39300.199600 | Initiation of 30th Floor slab |  | 1d | 2024-06-10 | 2024-06-10 |  | 100% | start no earlier than 2024-06-10 | 7 day week No holidays | 8605854 |
| 2124 | 36900.39100.39300.199700 | Completion 31st Floor Slab |  | 1d | 2024-07-07 | 2024-07-07 |  | 100% | start no earlier than 2024-07-07 | 7 day week No holidays | 8605864 |
| 2125 | 36900.39100.39300.199800 | Initiation of 35th Floor slab |  | 1d | 2024-08-27 | 2024-08-27 |  | 100% | start no earlier than 2024-08-27 | 7 day week No holidays | 8605874 |
| 2126 | 36900.39100.39300.199900 | Completion 36th Floor slab |  | 1d | 2024-09-28 | 2024-09-28 |  | 100% | start no earlier than 2024-09-28 | 7 day week No holidays | 8605884 |
| 2127 | 36900.39100.39300.200000 | Initiation of 40th Floor slab |  | 1d | 2025-01-27 | 2025-01-27 |  | 100% | start no earlier than 2025-01-27 | 7 day week No holidays | 8605885 |
| 2128 | 36900.39100.39300.200100 | Completion 45th Floor slab |  | 1d | 2025-05-12 | 2025-05-12 |  | 100% | start no earlier than 2025-05-12 | 7 day week No holidays | 8605886 |
| 2129 | 36900.39100.39300.200200 | Initiation of 45th Floor slab |  | 1d | 2025-04-27 | 2025-04-27 |  | 100% | start no earlier than 2025-04-27 | 7 day week No holidays | 8605887 |
| 2130 | 36900.39100.39300.200300 | Completion 48th Floor slab |  | 11d | 2025-07-03 | 2025-07-13 |  | 100% | start no earlier than 2025-07-03 | 7 day week No holidays | 8605814 |
| 2131 | 36900.39100.39300.200400 | Initiation of 48th Floor slab |  | 1d | 2025-06-25 | 2025-06-25 |  | 100% | start no earlier than 2025-06-25 | 7 day week No holidays | 8606324 |
| 2132 | 36900.39100.39300.200500 | Completion 49th Floor slab |  | 1d | 2025-08-02 | 2025-08-02 |  | 100% | start no earlier than 2025-08-02 | 7 day week No holidays | 8605888 |
| 2133 | 36900.39100.39300.200600 | Initiation of 50th Floor slab |  | 1d | 2025-07-19 | 2025-07-19 |  | 100% | start no earlier than 2025-07-19 | 7 day week No holidays | 8605889 |
| 2134 | 36900.39100.39300.423700 | Completion 54th Floor slab |  | 1d | 2027-09-18 | 2027-09-18 |  |  | start no earlier than 2027-09-18 | 7 day week No holidays | 8605890 |
| 2135 | 36900.39100.39300.423600 | Initiation of 60th Floor slab |  | 0.12d | 2025-12-27 | 2025-12-27 |  |  | start no earlier than 2025-12-27 | 7 day week No holidays | 8605900 |
| 2139 | 36900.39100.39300.423500 | On Completion of Terrace Slab |  | 1d | 2027-09-30 | 2027-09-30 |  |  | start no earlier than 2027-09-30 | Indian Calendar | 8605891 |
| 2140 | 36900.39100.39300.423400 | On completion of the walls, internal plaster, floorings of the said Apartment |  | 1d | 2027-09-30 | 2027-09-30 |  |  | start no earlier than 2027-09-30 | Indian Calendar | 8605892 |
| 2141 | 36900.39100.39300.423300 | On completion of the staircases and lift wells |  | 1d | 2027-09-30 | 2027-09-30 |  |  | start no earlier than 2027-09-30 | Indian Calendar | 8605893 |
| 2142 | 36900.39100.39300.423200 | On completion of Elevation and external plumbing of said apartment |  | 1d | 2027-09-30 | 2027-09-30 |  |  | start no earlier than 2027-09-30 | Indian Calendar | 8605903 |
| 2143 | 36900.39100.39300.423100 | On completion of water Pumps and Electrical Fittings of said apartment |  | 1d | 2027-09-30 | 2027-09-30 |  |  | start no earlier than 2027-09-30 | Indian Calendar | 8605913 |
| 2144 | 36900.39100.39300.423000 | On Application of OC |  | 1d | 2027-09-30 | 2027-09-30 |  |  | start no earlier than 2027-09-30 | Indian Calendar | 8605923 |
| 2145 | 36900.39100.39300.422900 | On Intimation Of Possession |  | 1d | 2027-09-30 | 2027-09-30 |  |  | start no earlier than 2027-09-30 | Indian Calendar | 8606184 |
| 2159 | 36900.341300 | FW AT DECK LEVEL PROPS COST | milestone | 0d | 2025-11-28 | 2025-11-28 |  |  | start no earlier than 2025-11-28 | Indian Calendar | 10724088 |
| 2160 | 36900.79800 | FW AT DECK LEVEL PROPS COST |  | 5d | 2025-11-25 | 2025-11-29 |  | 100% | start no earlier than 2025-11-25 | Indian Calendar | 10724098 |

| ID | WBS | Task | Duration | Start | Finish | Predecessors | Complete | Constraint | Calendar | Unique_Task_ID |
| --- | --- | --- | --- | --- | --- | --- | --- | --- | --- | --- |
| 2161 | 37300 | **Tower B** | 3102.28d | 2021-12-08 | 2030-06-06 |  | 10% | start no earlier than 2021-12-08 | 7 day week No holidays | 2505908 |
| 2162 | 37300.37500 | **RCC Work** | 2800.28d | 2021-12-08 | 2029-08-08 |  | 59% | start no earlier than 2021-12-08 | 7 day week No holidays | 2505968 |
| 2163 | 37300.37500.80800 | Transit Demolition & Evacuation | 32d | 2023-09-29 | 2023-10-30 |  | 100% | must start on 2023-04-01 | 7 day week No holidays | 2526098 |
| 2164 | 37300.37500.80900 | Piling Work & Rock Anchoring | 215.43d | 2023-10-15 | 2025-01-30 | 2163FS-434.65d | 100% | start no earlier than 2023-10-15 | 7 day week No holidays | 2505969 |
| 2165 | 37300.37500.126500 | Piling Work & Rock Anchoring | 10d | 2025-10-13 | 2025-10-23 |  |  | start no earlier than 2025-10-13 | Indian Calendar | 9781596 |
| 2166 | 37300.37500.81000 | Excavation Work | 1177.28d | 2021-12-08 | 2025-02-27 | 2164FS-387.63d | 100% |  | 7 day week No holidays | 2505970 |
| 2167 | 37300.37500.81100 | Excavation work 1 | 381.31d | 2023-12-22 | 2025-03-29 |  | 100% | start no earlier than 2023-12-22 | Indian Calendar | 9446174 |
| 2168 | 37300.37500.81200 | PCC | 39.86d | 2025-02-15 | 2025-04-29 |  | 100% | start no earlier than 2025-02-15 | Indian Calendar | 2505971 |
| 2169 | 37300.37500.37900 | **RCC work** | 1562d | 2025-01-30 | 2029-05-10 |  | 12% | start no earlier than 2025-01-30 | 7 day week No holidays | 2505978 |
| 2170 | 37300.37500.37900.200700 | Work Stoppage | 321d | 2027-08-25 | 2028-07-10 | 2214 |  |  | 7 day week No holidays | 2508649 |
| 2171 | 37300.37500.37900.78600 | **Aluform Mobilization** | 104d | 2025-11-06 | 2026-03-06 |  |  | start no earlier than 2025-11-06 | Indian Calendar | 7562263 |
| 2172 | 37300.37500.37900.78600.345700 | Aluform-Order Date | 1d | 2025-11-06 | 2025-11-06 | 2178 |  |  | 7 day week No holidays | 7562273 |
| 2173 | 37300.37500.37900.78600.345800 | Aluform-Shop Drawing Approval Date | 60d | 2025-11-07 | 2026-01-05 | 2172 |  |  | 7 day week No holidays | 7562283 |
| 2174 | 37300.37500.37900.78600.345900 | Aluform-Start of Supply for first lot date | 60d | 2026-01-06 | 2026-03-06 | 2173 |  |  | 7 day week No holidays | 7562293 |
| 2175 | 37300.37500.37900.89200 | Tower B Retaining wall waterproofing | 45d | 2025-11-15 | 2026-01-06 |  | 20% | start no earlier than 2025-11-15 | Indian Calendar | 10723808 |
| 2176 | 37300.37500.37900.89300 | RCC - B2 floor | 40d | 2025-05-17 | 2025-08-18 | 2215FS-66d | 100% | start no earlier than 2025-05-17 | 7 day week No holidays | 2505980 |
| 2177 | 37300.37500.37900.89400 | RCC - B1 floor | 23d | 2025-06-26 | 2025-09-21 | 2215FS-81d | 100% | start no earlier than 2025-06-26 | 7 day week No holidays | 2505981 |
| 2178 | 37300.37500.37900.89500 | RCC - GF | 31d | 2025-09-27 | 2025-11-05 | 2177FS+36d | 90% | start no earlier than 2025-09-27 | 7 day week No holidays | 2505982 |
| 2179 | 37300.37500.37900.89600 | RCC - 1st Podium | 25d | 2025-11-14 | 2025-12-08 | 2178FS+8d | 84% | start no earlier than 2025-11-14 | 7 day week No holidays | 2505983 |
| 2180 | 37300.37500.37900.89700 | RCC - 2nd Podium | 25d | 2025-12-09 | 2026-01-02 | 2179 | 12% | start no earlier than 2025-12-09 | 7 day week No holidays | 2505984 |
| 2181 | 37300.37500.37900.200800 | RCC - 3rd Podium | 25d | 2026-01-03 | 2026-01-27 | 2180 |  |  | 7 day week No holidays | 2505985 |
| 2182 | 37300.37500.37900.200900 | RCC - 4th Podium | 25d | 2026-01-28 | 2026-02-21 | 2181 |  |  | 7 day week No holidays | 2505986 |
| 2183 | 37300.37500.37900.201000 | RCC - 5th Podium | 25d | 2026-02-27 | 2026-03-23 | 2182FS+5d |  |  | 7 day week No holidays | 7295914 |
| 2184 | 37300.37500.37900.201100 | RCC - 6th Podium | 25d | 2026-03-24 | 2026-04-17 | 2183 |  |  | 7 day week No holidays | 7295924 |
| 2185 | 37300.37500.37900.201200 | RCC - 7th Podium | 25d | 2026-04-18 | 2026-05-12 | 2184 |  |  | 7 day week No holidays | 7295934 |
| 2186 | 37300.37500.37900.89800 | RCC - B1 floor 2nd lift | 20d | 2025-09-08 | 2025-10-22 |  | 90% | start no earlier than 2025-09-08 | Indian Calendar | 2505991 |
| 2187 | 37300.37500.37900.201300 | RCC - 8th Floor/Service | 31d | 2026-05-13 | 2026-06-12 | 2185 |  |  | 7 day week No holidays | 7295944 |
| 2188 | 37300.37500.37900.201400 | RCC - 9th Floor | 21d | 2026-06-14 | 2026-07-04 | 2187FS+1d |  |  | 7 day week No holidays | 7295954 |
| 2189 | 37300.37500.37900.201500 | RCC - 10th Floor | 16d | 2026-07-05 | 2026-07-20 | 2188 |  |  | 7 day week No holidays | 7295964 |
| 2190 | 37300.37500.37900.201600 | RCC - 11th Floor | 16d | 2026-07-21 | 2026-08-05 | 2189 |  |  | 7 day week No holidays | 7295974 |
| 2191 | 37300.37500.37900.201700 | RCC - 12th Floor | 16d | 2026-08-06 | 2026-08-21 | 2190 |  |  | 7 day week No holidays | 7295984 |
| 2192 | 37300.37500.37900.201800 | RCC - 13th Floor | 16d | 2026-08-22 | 2026-09-06 | 2191 |  |  | 7 day week No holidays | 7295994 |
| 2193 | 37300.37500.37900.201900 | RCC - 14th Floor | 16d | 2026-09-07 | 2026-09-22 | 2192 |  |  | 7 day week No holidays | 7296004 |
| 2194 | 37300.37500.37900.202000 | RCC - 15th Floor | 16d | 2026-09-23 | 2026-10-08 | 2193 |  |  | 7 day week No holidays | 2508448 |
| 2195 | 37300.37500.37900.202100 | RCC - 16th Floor | 16d | 2026-10-09 | 2026-10-24 | 2194 |  |  | 7 day week No holidays | 2508458 |
| 2196 | 37300.37500.37900.202200 | RCC - 17th Floor | 16d | 2026-10-25 | 2026-11-09 | 2195 |  |  | 7 day week No holidays | 2508468 |
| 2197 | 37300.37500.37900.202300 | RCC - 18th Floor | 16d | 2026-11-10 | 2026-11-25 | 2196 |  |  | 7 day week No holidays | 2508478 |
| 2198 | 37300.37500.37900.202400 | RCC - 19th Floor | 16d | 2026-11-26 | 2026-12-11 | 2197 |  |  | 7 day week No holidays | 2508488 |
| 2199 | 37300.37500.37900.202500 | RCC - 20th Floor | 16d | 2026-12-12 | 2026-12-27 | 2198 |  |  | 7 day week No holidays | 2508498 |
| 2200 | 37300.37500.37900.202600 | RCC - 21st Floor | 16d | 2026-12-28 | 2027-01-12 | 2199 |  |  | 7 day week No holidays | 2508508 |
| 2201 | 37300.37500.37900.202700 | RCC - 22nd Floor | 16d | 2027-01-13 | 2027-01-28 | 2200 |  |  | 7 day week No holidays | 2508518 |
| 2202 | 37300.37500.37900.202800 | RCC - 23rd Floor | 16d | 2027-01-29 | 2027-02-13 | 2201 |  |  | 7 day week No holidays | 2508528 |
| 2203 | 37300.37500.37900.202900 | RCC - 24th Floor | 16d | 2027-02-14 | 2027-03-01 | 2202 |  |  | 7 day week No holidays | 2508538 |
| 2204 | 37300.37500.37900.203000 | RCC - 25th Floor | 16d | 2027-03-02 | 2027-03-17 | 2203 |  |  | 7 day week No holidays | 2508548 |
| 2205 | 37300.37500.37900.203100 | RCC - 26th Floor | 16d | 2027-03-18 | 2027-04-02 | 2204 |  |  | 7 day week No holidays | 2508558 |
| 2206 | 37300.37500.37900.203200 | RCC - 27th Floor | 16d | 2027-04-03 | 2027-04-18 | 2205 |  |  | 7 day week No holidays | 2508568 |
| 2207 | 37300.37500.37900.203300 | RCC - 28th Floor | 16d | 2027-04-19 | 2027-05-04 | 2206 |  |  | 7 day week No holidays | 2508578 |
| 2208 | 37300.37500.37900.203400 | RCC - 29th Floor | 16d | 2027-05-05 | 2027-05-20 | 2207 |  |  | 7 day week No holidays | 2508588 |
| 2209 | 37300.37500.37900.203500 | RCC - 30th Floor | 16d | 2027-05-21 | 2027-06-05 | 2208 |  |  | 7 day week No holidays | 2508598 |
| 2210 | 37300.37500.37900.203600 | RCC - 31st Floor | 16d | 2027-06-06 | 2027-06-21 | 2209 |  |  | 7 day week No holidays | 2508608 |
| 2211 | 37300.37500.37900.203700 | RCC - 32nd Floor | 16d | 2027-06-22 | 2027-07-07 | 2210 |  |  | 7 day week No holidays | 2508618 |
| 2212 | 37300.37500.37900.203800 | RCC - 33rd Floor | 16d | 2027-07-08 | 2027-07-23 | 2211 |  |  | 7 day week No holidays | 2508628 |
| 2213 | 37300.37500.37900.203900 | RCC - 34th Floor | 16d | 2027-07-24 | 2027-08-08 | 2212 |  |  | 7 day week No holidays | 2508638 |
| 2214 | 37300.37500.37900.204000 | RCC - 35th Floor | 16d | 2027-08-09 | 2027-08-24 | 2213 |  |  | 7 day week No holidays | 2508648 |
| 2215 | 37300.37500.37900.89900 | Raft | 64d | 2025-01-30 | 2025-10-19 | 2168FS-82.3d | 89% | start no earlier than 2025-01-30 | 7 day week No holidays | 2505979 |
| 2216 | 37300.37500.37900.204100 | RCC - 36th Floor | 16d | 2028-07-11 | 2028-07-26 | 2170 |  |  | 7 day week No holidays | 2508658 |
| 2217 | 37300.37500.37900.204200 | RCC - Service Floor | 16d | 2028-07-27 | 2028-08-11 | 2216 |  |  | 7 day week No holidays | 2508668 |
| 2218 | 37300.37500.37900.204300 | RCC - 37th Floor | 16d | 2028-08-12 | 2028-08-27 | 2217 |  |  | 7 day week No holidays | 2508678 |
| 2219 | 37300.37500.37900.204400 | RCC - 38th Floor | 16d | 2028-08-28 | 2028-09-12 | 2218 |  |  | 7 day week No holidays | 2508688 |
| 2220 | 37300.37500.37900.204500 | RCC - 39th Floor | 16d | 2028-09-13 | 2028-09-28 | 2219 |  |  | 7 day week No holidays | 2508698 |
| 2221 | 37300.37500.37900.204600 | RCC - 40th Floor | 16d | 2028-09-29 | 2028-10-14 | 2220 |  |  | 7 day week No holidays | 2508708 |
| 2222 | 37300.37500.37900.204700 | RCC - 41st Floor | 16d | 2028-10-15 | 2028-10-30 | 2221 |  |  | 7 day week No holidays | 2508718 |
| 2223 | 37300.37500.37900.204800 | RCC - 42nd Floor | 16d | 2028-10-31 | 2028-11-15 | 2222 |  |  | 7 day week No holidays | 2508728 |
| 2224 | 37300.37500.37900.204900 | RCC - 43rd Floor | 16d | 2028-11-16 | 2028-12-01 | 2223 |  |  | 7 day week No holidays | 2508738 |
| 2225 | 37300.37500.37900.205000 | RCC - 44th Floor | 16d | 2028-12-02 | 2028-12-17 | 2224 |  |  | 7 day week No holidays | 2508748 |
| 2226 | 37300.37500.37900.205100 | RCC - 45th Floor | 16d | 2028-12-18 | 2029-01-02 | 2225 |  |  | 7 day week No holidays | 2508758 |
| 2227 | 37300.37500.37900.205200 | RCC - 46th Floor | 16d | 2029-01-03 | 2029-01-18 | 2226 |  |  | 7 day week No holidays | 2508768 |
| 2228 | 37300.37500.37900.205300 | RCC - 47th Floor | 16d | 2029-01-19 | 2029-02-03 | 2227 |  |  | 7 day week No holidays | 2508778 |
| 2229 | 37300.37500.37900.205400 | RCC - 48th Floor | 16d | 2029-02-04 | 2029-02-19 | 2228 |  |  | 7 day week No holidays | 2508788 |
| 2230 | 37300.37500.37900.205500 | RCC - 49th Floor | 16d | 2029-02-20 | 2029-03-07 | 2229 |  |  | 7 day week No holidays | 2508798 |

| ID | WBS | Task | Duration | Start | Finish | Predecessors | Complete | Constraint | Calendar | Unique_Task_ID |
| --- | --- | --- | --- | --- | --- | --- | --- | --- | --- | --- |
| 2231 | 37300.37500.37900.205600 | RCC - 50th Floor | 16d | 2029-03-08 | 2029-03-23 | 2230 |  |  | 7 day week No holidays | 2508808 |
| 2232 | 37300.37500.37900.205700 | RCC - 51st Floor | 16d | 2029-03-24 | 2029-04-08 | 2231 |  |  | 7 day week No holidays | 2508818 |
| 2233 | 37300.37500.37900.205800 | RCC - 52nd Floor | 16d | 2029-04-09 | 2029-04-24 | 2232 |  |  | 7 day week No holidays | 2508828 |
| 2234 | 37300.37500.37900.205900 | RCC - Terrace | 16d | 2029-04-25 | 2029-05-10 | 2233 |  |  | 7 day week No holidays | 2509038 |
| 2235 | 37300.37500.126600 | RCC Work Above terrace | 90d | 2029-05-11 | 2029-08-08 | 2234 |  |  | 7 day week No holidays | 2508158 |
| 2236 | 37300.37500.38600 | **Post pour works** | 1345d | 2023-03-23 | 2026-11-26 |  | 65% | start no earlier than 2023-03-23 | 7 day week No holidays | 10722048 |
| 2237 | 37300.37500.38600.206000 | 15th floor | 311d | 2023-03-23 | 2024-01-27 |  | 100% | start no earlier than 2023-03-23 | 7 day week No holidays | 10722058 |
| 2238 | 37300.37500.38600.206100 | 16th floor | 10d | 2024-01-29 | 2024-02-07 |  | 100% | start no earlier than 2024-01-29 | 7 day week No holidays | 10722078 |
| 2239 | 37300.37500.38600.206200 | 17th floor | 10d | 2024-02-21 | 2024-03-01 |  | 100% | start no earlier than 2024-02-21 | 7 day week No holidays | 10722228 |
| 2240 | 37300.37500.38600.206300 | 18th floor | 10d | 2024-03-14 | 2024-03-23 |  | 100% | start no earlier than 2024-03-14 | 7 day week No holidays | 10722238 |
| 2241 | 37300.37500.38600.206400 | 19th floor | 10d | 2024-05-30 | 2024-06-08 |  | 100% | start no earlier than 2024-05-30 | 7 day week No holidays | 10722248 |
| 2242 | 37300.37500.38600.206500 | 20th floor | 10d | 2024-06-21 | 2024-06-30 |  | 100% | start no earlier than 2024-06-21 | 7 day week No holidays | 10722258 |
| 2243 | 37300.37500.38600.206600 | 21st floor | 10d | 2024-07-14 | 2024-07-23 |  | 100% | start no earlier than 2024-07-14 | 7 day week No holidays | 10722268 |
| 2244 | 37300.37500.38600.206700 | 22nd floor | 10d | 2024-07-05 | 2024-07-14 |  | 100% | start no earlier than 2024-07-05 | 7 day week No holidays | 10722278 |
| 2245 | 37300.37500.38600.206800 | 23rd floor | 14d | 2024-07-13 | 2024-07-26 |  | 100% | start no earlier than 2024-07-13 | 7 day week No holidays | 10722288 |
| 2246 | 37300.37500.38600.206900 | 24th floor | 33d | 2024-07-31 | 2024-09-01 |  | 100% | start no earlier than 2024-07-31 | 7 day week No holidays | 10722298 |
| 2247 | 37300.37500.38600.207000 | 25th floor | 10d | 2024-08-04 | 2024-08-13 |  | 100% | start no earlier than 2024-08-04 | 7 day week No holidays | 10722308 |
| 2248 | 37300.37500.38600.207100 | 26th floor | 10d | 2024-08-07 | 2024-08-16 |  | 100% | start no earlier than 2024-08-07 | 7 day week No holidays | 10722318 |
| 2249 | 37300.37500.38600.207200 | 27th floor | 10d | 2024-08-07 | 2024-08-16 |  | 100% | start no earlier than 2024-08-07 | 7 day week No holidays | 10722328 |
| 2250 | 37300.37500.38600.207300 | 28th floor | 10d | 2024-11-14 | 2024-11-23 |  | 100% | start no earlier than 2024-11-14 | 7 day week No holidays | 10722338 |
| 2251 | 37300.37500.38600.207400 | 29th floor | 39d | 2024-09-30 | 2024-11-07 |  | 100% | start no earlier than 2024-09-30 | 7 day week No holidays | 10722348 |
| 2252 | 37300.37500.38600.207500 | 30th floor | 10d | 2024-11-14 | 2024-11-23 |  | 100% | start no earlier than 2024-11-14 | 7 day week No holidays | 10722358 |
| 2253 | 37300.37500.38600.207600 | 31st floor | 10d | 2024-11-26 | 2024-12-05 |  | 100% | start no earlier than 2024-11-26 | 7 day week No holidays | 10722368 |
| 2254 | 37300.37500.38600.207700 | 32nd floor | 10d | 2024-11-28 | 2024-12-07 |  | 100% | start no earlier than 2024-11-28 | 7 day week No holidays | 10722378 |
| 2255 | 37300.37500.38600.207800 | 33rd floor | 10d | 2025-10-13 | 2025-10-22 |  |  | start no earlier than 2025-10-13 | 7 day week No holidays | 10722388 |
| 2256 | 37300.37500.38600.207900 | 34th floor | 10d | 2025-10-13 | 2025-10-22 |  |  | start no earlier than 2025-10-13 | 7 day week No holidays | 10722398 |
| 2257 | 37300.37500.38600.208000 | 35th floor | 10d | 2025-10-13 | 2025-10-22 |  |  | start no earlier than 2025-10-13 | 7 day week No holidays | 10722408 |
| 2258 | 37300.37500.38600.208100 | 36th floor | 10d | 2025-10-13 | 2025-10-22 |  |  | start no earlier than 2025-10-13 | 7 day week No holidays | 10722418 |
| 2259 | 37300.37500.38600.208200 | Service floor | 10d | 2025-10-13 | 2025-10-22 |  |  | start no earlier than 2025-10-13 | 7 day week No holidays | 10722428 |
| 2260 | 37300.37500.38600.208300 | 37th floor | 10d | 2025-10-13 | 2025-10-22 |  |  | start no earlier than 2025-10-13 | 7 day week No holidays | 10722438 |
| 2261 | 37300.37500.38600.208400 | 38th floor | 10d | 2025-10-13 | 2025-10-22 |  |  | start no earlier than 2025-10-13 | 7 day week No holidays | 10722448 |
| 2262 | 37300.37500.38600.208500 | 39th floor | 10d | 2025-10-13 | 2025-10-22 |  |  | start no earlier than 2025-10-13 | 7 day week No holidays | 10722458 |
| 2263 | 37300.37500.38600.208600 | 40th floor | 10d | 2025-10-13 | 2025-10-22 |  |  | start no earlier than 2025-10-13 | 7 day week No holidays | 10722468 |
| 2264 | 37300.37500.38600.208700 | 41th floor | 10d | 2025-10-13 | 2025-10-22 |  |  | start no earlier than 2025-10-13 | 7 day week No holidays | 10722478 |
| 2265 | 37300.37500.38600.208800 | 42th floor | 10d | 2025-10-13 | 2025-10-22 |  |  | start no earlier than 2025-10-13 | 7 day week No holidays | 10722488 |
| 2266 | 37300.37500.38600.208900 | 43th floor | 10d | 2025-10-13 | 2025-10-22 |  |  | start no earlier than 2025-10-13 | 7 day week No holidays | 10722498 |
| 2267 | 37300.37500.38600.209000 | 44th floor | 10d | 2025-10-13 | 2025-10-22 |  |  | start no earlier than 2025-10-13 | 7 day week No holidays | 10722508 |
| 2268 | 37300.37500.38600.209100 | 45th floor | 10d | 2025-10-13 | 2025-10-22 |  |  | start no earlier than 2025-10-13 | 7 day week No holidays | 10722518 |
| 2269 | 37300.37500.38600.209200 | 46th floor | 10d | 2025-10-13 | 2025-10-22 |  |  | start no earlier than 2025-10-13 | 7 day week No holidays | 10722528 |
| 2270 | 37300.37500.38600.209300 | 47th floor | 10d | 2025-10-13 | 2025-10-22 |  |  | start no earlier than 2025-10-13 | 7 day week No holidays | 10722538 |
| 2271 | 37300.37500.38600.209400 | 48th floor | 10d | 2025-10-13 | 2025-10-22 |  |  | start no earlier than 2025-10-13 | 7 day week No holidays | 10722548 |
| 2272 | 37300.37500.38600.209500 | 49th floor | 10d | 2025-10-13 | 2025-10-22 |  |  | start no earlier than 2025-10-13 | 7 day week No holidays | 10722558 |
| 2273 | 37300.37500.38600.209600 | 50th floor | 10d | 2025-10-13 | 2025-10-22 |  |  | start no earlier than 2025-10-13 | 7 day week No holidays | 10722568 |
| 2274 | 37300.37500.38600.209700 | 51st floor | 10d | 2025-11-01 | 2025-11-10 |  |  | start no earlier than 2025-11-01 | 7 day week No holidays | 10722578 |
| 2275 | 37300.37500.38600.209800 | 52nd floor | 10d | 2025-11-17 | 2025-11-26 |  |  | start no earlier than 2025-11-17 | 7 day week No holidays | 10722588 |
| 2276 | 37300.37500.38600.209900 | 53rd floor | 10d | 2025-12-08 | 2025-12-17 |  |  | start no earlier than 2025-12-08 | 7 day week No holidays | 10722598 |
| 2277 | 37300.37500.38600.210000 | 54th floor | 10d | 2025-12-24 | 2026-01-02 |  |  | start no earlier than 2025-12-24 | 7 day week No holidays | 10722608 |
| 2278 | 37300.37500.38600.210100 | 55th floor | 10d | 2026-01-09 | 2026-01-18 |  |  | start no earlier than 2026-01-09 | 7 day week No holidays | 10722618 |
| 2279 | 37300.37500.38600.210200 | 56th floor | 10d | 2026-01-25 | 2026-02-03 |  |  | start no earlier than 2026-01-25 | 7 day week No holidays | 10722628 |
| 2280 | 37300.37500.38600.210300 | 57th floor | 10d | 2026-02-10 | 2026-02-19 |  |  | start no earlier than 2026-02-10 | 7 day week No holidays | 10722638 |
| 2281 | 37300.37500.38600.210400 | 58th floor | 10d | 2026-02-26 | 2026-03-07 |  |  | start no earlier than 2026-02-26 | 7 day week No holidays | 10722648 |
| 2282 | 37300.37500.38600.210500 | Above Terrace | 10d | 2026-11-17 | 2026-11-26 |  |  | start no earlier than 2026-11-17 | 7 day week No holidays | 10722808 |

| ID | WBS | Task | Duration | Start | Finish | Predecessors | Constraint | Calendar | Unique_Task_ID |
| --- | --- | --- | --- | --- | --- | --- | --- | --- | --- |
| 2283 | 37300.38400 | **Civil Finishing works (Brick work, Plaster,conduiting, concled plumbing, waterproofing)** | 1303d | 2026-01-21 | 2029-08-15 |  | start no earlier than 2026-01-21 | 7 day week No holidays | 2505948 |
| 2284 | 37300.38400.38500 | **Flat - Civil Work** | 1266d | 2026-01-21 | 2029-07-09 |  | start no earlier than 2026-01-21 | 7 day week No holidays | 2505958 |
| 2285 | 37300.38400.38500.68700 | **9th Floor** | 40d | 2026-08-22 | 2026-09-30 |  | start no earlier than 2026-08-22 | 7 day week No holidays | 2507488 |
| 2286 | 37300.38400.38500.68700.346000 | 9th Flr -Blockwork | 10d | 2026-08-22 | 2026-08-31 | 2191 |  | 7 day week No holidays | 2515218 |
| 2287 | 37300.38400.38500.68700.346100 | 9th Flr -Concealed electrical conduiting | 9d | 2026-09-01 | 2026-09-09 | 2286 |  | 7 day week No holidays | 2515228 |
| 2288 | 37300.38400.38500.68700.346200 | 9th Flr -Backcoat Plaster | 8d | 2026-09-01 | 2026-09-08 | 2286 |  | 7 day week No holidays | 2515238 |
| 2289 | 37300.38400.38500.68700.346300 | 9th Flr -Concealed Plumbing | 10d | 2026-09-09 | 2026-09-18 | 2288 |  | 7 day week No holidays | 2515248 |
| 2290 | 37300.38400.38500.68700.346400 | 9th Flr -Waterproofing Work | 12d | 2026-09-19 | 2026-09-30 | 2289 |  | 7 day week No holidays | 2515258 |
| 2291 | 37300.38400.38500.68800 | **10th Floor** | 40d | 2026-09-07 | 2026-10-16 |  | start no earlier than 2026-09-07 | 7 day week No holidays | 2507498 |
| 2292 | 37300.38400.38500.68800.346500 | 10th Flr -Blockwork | 10d | 2026-09-07 | 2026-09-16 | 2192, 2286 |  | 7 day week No holidays | 2515268 |
| 2293 | 37300.38400.38500.68800.346600 | 10th Flr -Concealed electrical conduiting | 9d | 2026-09-17 | 2026-09-25 | 2287, 2292 |  | 7 day week No holidays | 2515278 |
| 2294 | 37300.38400.38500.68800.346700 | 10th Flr -Backcoat Plaster | 8d | 2026-09-17 | 2026-09-24 | 2288, 2292 |  | 7 day week No holidays | 2515288 |
| 2295 | 37300.38400.38500.68800.346800 | 10th Flr -Concealed Plumbing | 10d | 2026-09-25 | 2026-10-04 | 2289, 2294 |  | 7 day week No holidays | 2515298 |
| 2296 | 37300.38400.38500.68800.346900 | 10th Flr -Waterproofing Work | 12d | 2026-10-05 | 2026-10-16 | 2290, 2295 |  | 7 day week No holidays | 2515308 |
| 2297 | 37300.38400.38500.68900 | **11th Floor** | 40d | 2026-09-23 | 2026-11-01 |  | start no earlier than 2026-09-23 | 7 day week No holidays | 2507508 |
| 2298 | 37300.38400.38500.68900.347000 | 11th Flr -Blockwork | 10d | 2026-09-23 | 2026-10-02 | 2193, 2292 |  | 7 day week No holidays | 2515318 |
| 2299 | 37300.38400.38500.68900.347100 | 11th Flr -Concealed electrical conduiting | 9d | 2026-10-03 | 2026-10-11 | 2293, 2298 |  | 7 day week No holidays | 2515328 |
| 2300 | 37300.38400.38500.68900.347200 | 11th Flr -Backcoat Plaster | 8d | 2026-10-03 | 2026-10-10 | 2294, 2298 |  | 7 day week No holidays | 2515338 |
| 2301 | 37300.38400.38500.68900.347300 | 11th Flr -Concealed Plumbing | 10d | 2026-10-11 | 2026-10-20 | 2295, 2300 |  | 7 day week No holidays | 2515348 |
| 2302 | 37300.38400.38500.68900.347400 | 11th Flr -Waterproofing Work | 12d | 2026-10-21 | 2026-11-01 | 2296, 2301 |  | 7 day week No holidays | 2515358 |
| 2303 | 37300.38400.38500.69000 | **12th Floor** | 40d | 2026-10-09 | 2026-11-17 |  | start no earlier than 2026-10-09 | 7 day week No holidays | 2507518 |
| 2304 | 37300.38400.38500.69000.347500 | 12th Flr -Blockwork | 10d | 2026-10-09 | 2026-10-18 | 2194, 2298 |  | 7 day week No holidays | 2515368 |
| 2305 | 37300.38400.38500.69000.347600 | 12th Flr -Concealed electrical conduiting | 9d | 2026-10-19 | 2026-10-27 | 2299, 2304 |  | 7 day week No holidays | 2515378 |
| 2306 | 37300.38400.38500.69000.347700 | 12th Flr -Backcoat Plaster | 8d | 2026-10-19 | 2026-10-26 | 2300, 2304 |  | 7 day week No holidays | 2515388 |
| 2307 | 37300.38400.38500.69000.347800 | 12th Flr -Concealed Plumbing | 10d | 2026-10-27 | 2026-11-05 | 2301, 2306 |  | 7 day week No holidays | 2515398 |
| 2308 | 37300.38400.38500.69000.347900 | 12th Flr -Waterproofing Work | 12d | 2026-11-06 | 2026-11-17 | 2302, 2307 |  | 7 day week No holidays | 2515408 |

| ID | WBS | Task | Duration | Start | Finish | Predecessors | Constraint | Calendar | Unique_Task_ID |
| --- | --- | --- | --- | --- | --- | --- | --- | --- | --- |
| 2309 | 37300.38400.38500.69100 | **13th Floor** | 40d | 2026-10-25 | 2026-12-03 |  | start no earlier than 2026-10-25 | 7 day week No holidays | 2507528 |
| 2310 | 37300.38400.38500.69100.348000 | 13th Flr -Blockwork | 10d | 2026-10-25 | 2026-11-03 | 2195, 2304 |  | 7 day week No holidays | 2515418 |
| 2311 | 37300.38400.38500.69100.348100 | 13th Flr -Concealed electrical conduiting | 9d | 2026-11-04 | 2026-11-12 | 2305, 2310 |  | 7 day week No holidays | 2515428 |
| 2312 | 37300.38400.38500.69100.348200 | 13th Flr -Backcoat Plaster | 8d | 2026-11-04 | 2026-11-11 | 2306, 2310 |  | 7 day week No holidays | 2515438 |
| 2313 | 37300.38400.38500.69100.348300 | 13th Flr -Concealed Plumbing | 10d | 2026-11-12 | 2026-11-21 | 2307, 2312 |  | 7 day week No holidays | 2515448 |
| 2314 | 37300.38400.38500.69100.348400 | 13th Flr -Waterproofing Work | 12d | 2026-11-22 | 2026-12-03 | 2308, 2313 |  | 7 day week No holidays | 2515458 |
| 2315 | 37300.38400.38500.69200 | **14th Floor** | 40d | 2026-11-10 | 2026-12-19 |  | start no earlier than 2026-11-10 | 7 day week No holidays | 2507538 |
| 2316 | 37300.38400.38500.69200.348500 | 14th Flr -Blockwork | 10d | 2026-11-10 | 2026-11-19 | 2196, 2310 |  | 7 day week No holidays | 2515468 |
| 2317 | 37300.38400.38500.69200.348600 | 14th Flr -Concealed electrical conduiting | 9d | 2026-11-20 | 2026-11-28 | 2311, 2316 |  | 7 day week No holidays | 2515478 |
| 2318 | 37300.38400.38500.69200.348700 | 14th Flr -Backcoat Plaster | 8d | 2026-11-20 | 2026-11-27 | 2312, 2316 |  | 7 day week No holidays | 2515488 |
| 2319 | 37300.38400.38500.69200.348800 | 14th Flr -Concealed Plumbing | 10d | 2026-11-28 | 2026-12-07 | 2313, 2318 |  | 7 day week No holidays | 2515498 |
| 2320 | 37300.38400.38500.69200.348900 | 14th Flr -Waterproofing Work | 12d | 2026-12-08 | 2026-12-19 | 2314, 2319 |  | 7 day week No holidays | 2515508 |
| 2321 | 37300.38400.38500.69300 | **15th Floor** | 40d | 2026-11-26 | 2027-01-04 |  | start no earlier than 2026-11-26 | 7 day week No holidays | 2507548 |
| 2322 | 37300.38400.38500.69300.349000 | 15th Flr -Blockwork | 10d | 2026-11-26 | 2026-12-05 | 2197, 2316 |  | 7 day week No holidays | 2515518 |
| 2323 | 37300.38400.38500.69300.349100 | 15th Flr -Concealed electrical conduiting | 9d | 2026-12-06 | 2026-12-14 | 2317, 2322 |  | 7 day week No holidays | 2515528 |
| 2324 | 37300.38400.38500.69300.349200 | 15th Flr -Backcoat Plaster | 8d | 2026-12-06 | 2026-12-13 | 2318, 2322 |  | 7 day week No holidays | 2515538 |
| 2325 | 37300.38400.38500.69300.349300 | 15th Flr -Concealed Plumbing | 10d | 2026-12-14 | 2026-12-23 | 2319, 2324 |  | 7 day week No holidays | 2515548 |
| 2326 | 37300.38400.38500.69300.349400 | 15th Flr -Waterproofing Work | 12d | 2026-12-24 | 2027-01-04 | 2320, 2325 |  | 7 day week No holidays | 2515558 |
| 2327 | 37300.38400.38500.69400 | **16th Floor** | 40d | 2026-12-12 | 2027-01-20 |  | start no earlier than 2026-12-12 | 7 day week No holidays | 2507558 |
| 2328 | 37300.38400.38500.69400.349500 | 16th Flr -Blockwork | 10d | 2026-12-12 | 2026-12-21 | 2198, 2322 |  | 7 day week No holidays | 2515568 |
| 2329 | 37300.38400.38500.69400.349600 | 16th Flr -Concealed electrical conduiting | 9d | 2026-12-22 | 2026-12-30 | 2323, 2328 |  | 7 day week No holidays | 2515578 |
| 2330 | 37300.38400.38500.69400.349700 | 16th Flr -Backcoat Plaster | 8d | 2026-12-22 | 2026-12-29 | 2324, 2328 |  | 7 day week No holidays | 2515588 |
| 2331 | 37300.38400.38500.69400.349800 | 16th Flr -Concealed Plumbing | 10d | 2026-12-30 | 2027-01-08 | 2325, 2330 |  | 7 day week No holidays | 2515598 |
| 2332 | 37300.38400.38500.69400.349900 | 16th Flr -Waterproofing Work | 12d | 2027-01-09 | 2027-01-20 | 2326, 2331 |  | 7 day week No holidays | 2515608 |

| ID | WBS | Task | Duration | Start | Finish | Predecessors | Constraint | Calendar | Unique_Task_ID |
| --- | --- | --- | --- | --- | --- | --- | --- | --- | --- |
| 2333 | 37300.38400.38500.69500 | **17th Floor** | 40d | 2026-12-28 | 2027-02-05 |  | start no earlier than 2026-12-28 | 7 day week No holidays | 2507568 |
| 2334 | 37300.38400.38500.69500.350000 | 17th Flr -Blockwork | 10d | 2026-12-28 | 2027-01-06 | 2199, 2328 |  | 7 day week No holidays | 2515618 |
| 2335 | 37300.38400.38500.69500.350100 | 17th Flr -Concealed electrical conduiting | 9d | 2027-01-07 | 2027-01-15 | 2329, 2334 |  | 7 day week No holidays | 2515628 |
| 2336 | 37300.38400.38500.69500.350200 | 17th Flr -Backcoat Plaster | 8d | 2027-01-07 | 2027-01-14 | 2330, 2334 |  | 7 day week No holidays | 2515638 |
| 2337 | 37300.38400.38500.69500.350300 | 17th Flr -Concealed Plumbing | 10d | 2027-01-15 | 2027-01-24 | 2331, 2336 |  | 7 day week No holidays | 2515648 |
| 2338 | 37300.38400.38500.69500.350400 | 17th Flr -Waterproofing Work | 12d | 2027-01-25 | 2027-02-05 | 2332, 2337 |  | 7 day week No holidays | 2515658 |
| 2339 | 37300.38400.38500.69600 | **18th Floor** | 40d | 2027-01-13 | 2027-02-21 |  | start no earlier than 2027-01-13 | 7 day week No holidays | 2507578 |
| 2340 | 37300.38400.38500.69600.350500 | 18th Flr -Blockwork | 10d | 2027-01-13 | 2027-01-22 | 2200, 2334 |  | 7 day week No holidays | 2515668 |
| 2341 | 37300.38400.38500.69600.350600 | 18th Flr -Concealed electrical conduiting | 9d | 2027-01-23 | 2027-01-31 | 2335, 2340 |  | 7 day week No holidays | 2515678 |
| 2342 | 37300.38400.38500.69600.350700 | 18th Flr -Backcoat Plaster | 8d | 2027-01-23 | 2027-01-30 | 2336, 2340 |  | 7 day week No holidays | 2515688 |
| 2343 | 37300.38400.38500.69600.350800 | 18th Flr -Concealed Plumbing | 10d | 2027-01-31 | 2027-02-09 | 2337, 2342 |  | 7 day week No holidays | 2515698 |
| 2344 | 37300.38400.38500.69600.350900 | 18th Flr -Waterproofing Work | 12d | 2027-02-10 | 2027-02-21 | 2338, 2343 |  | 7 day week No holidays | 2515708 |
| 2345 | 37300.38400.38500.69700 | **19th Floor** | 40d | 2027-01-29 | 2027-03-09 |  | start no earlier than 2027-01-29 | 7 day week No holidays | 2507588 |
| 2346 | 37300.38400.38500.69700.351000 | 19th Flr -Blockwork | 10d | 2027-01-29 | 2027-02-07 | 2201, 2340 |  | 7 day week No holidays | 2515718 |
| 2347 | 37300.38400.38500.69700.351100 | 19th Flr -Concealed electrical conduiting | 9d | 2027-02-08 | 2027-02-16 | 2341, 2346 |  | 7 day week No holidays | 2515728 |
| 2348 | 37300.38400.38500.69700.351200 | 19th Flr -Backcoat Plaster | 8d | 2027-02-08 | 2027-02-15 | 2342, 2346 |  | 7 day week No holidays | 2515738 |
| 2349 | 37300.38400.38500.69700.351300 | 19th Flr -Concealed Plumbing | 10d | 2027-02-16 | 2027-02-25 | 2343, 2348 |  | 7 day week No holidays | 2515748 |
| 2350 | 37300.38400.38500.69700.351400 | 19th Flr -Waterproofing Work | 12d | 2027-02-26 | 2027-03-09 | 2344, 2349 |  | 7 day week No holidays | 2515758 |
| 2351 | 37300.38400.38500.69800 | **20th Floor** | 40d | 2027-02-14 | 2027-03-25 |  | start no earlier than 2027-02-14 | 7 day week No holidays | 2507598 |
| 2352 | 37300.38400.38500.69800.351500 | 20th Flr -Blockwork | 10d | 2027-02-14 | 2027-02-23 | 2202, 2346 |  | 7 day week No holidays | 2515768 |
| 2353 | 37300.38400.38500.69800.351600 | 20th Flr -Concealed electrical conduiting | 9d | 2027-02-24 | 2027-03-04 | 2347, 2352 |  | 7 day week No holidays | 2515778 |
| 2354 | 37300.38400.38500.69800.351700 | 20th Flr -Backcoat Plaster | 8d | 2027-02-24 | 2027-03-03 | 2348, 2352 |  | 7 day week No holidays | 2515788 |
| 2355 | 37300.38400.38500.69800.351800 | 20th Flr -Concealed Plumbing | 10d | 2027-03-04 | 2027-03-13 | 2349, 2354 |  | 7 day week No holidays | 2515798 |
| 2356 | 37300.38400.38500.69800.351900 | 20th Flr -Waterproofing Work | 12d | 2027-03-14 | 2027-03-25 | 2350, 2355 |  | 7 day week No holidays | 2515808 |

| ID | WBS | Task | Duration | Start | Finish | Predecessors | Constraint | Calendar | Unique_Task_ID |
| --- | --- | --- | --- | --- | --- | --- | --- | --- | --- |
| 2357 | 37300.38400.38500.69900 | **21th Floor** | 40d | 2027-03-02 | 2027-04-10 |  | start no earlier than 2027-03-02 | 7 day week No holidays | 2507608 |
| 2358 | 37300.38400.38500.69900.352000 | 21th Flr -Blockwork | 10d | 2027-03-02 | 2027-03-11 | 2203, 2352 |  | 7 day week No holidays | 2515818 |
| 2359 | 37300.38400.38500.69900.352100 | 21th Flr -Concealed electrical conduiting | 9d | 2027-03-12 | 2027-03-20 | 2353, 2358 |  | 7 day week No holidays | 2515828 |
| 2360 | 37300.38400.38500.69900.352200 | 21th Flr -Backcoat Plaster | 8d | 2027-03-12 | 2027-03-19 | 2354, 2358 |  | 7 day week No holidays | 2515838 |
| 2361 | 37300.38400.38500.69900.352300 | 21th Flr -Concealed Plumbing | 10d | 2027-03-20 | 2027-03-29 | 2355, 2360 |  | 7 day week No holidays | 7303574 |
| 2362 | 37300.38400.38500.69900.352400 | 21th Flr -Waterproofing Work | 12d | 2027-03-30 | 2027-04-10 | 2356, 2361 |  | 7 day week No holidays | 2515858 |
| 2363 | 37300.38400.38500.70000 | **22th Floor** | 40d | 2027-03-18 | 2027-04-26 |  | start no earlier than 2027-03-18 | 7 day week No holidays | 2507618 |
| 2364 | 37300.38400.38500.70000.352500 | 22nd Flr -Blockwork | 10d | 2027-03-18 | 2027-03-27 | 2204, 2358 |  | 7 day week No holidays | 7303584 |
| 2365 | 37300.38400.38500.70000.352600 | 22nd Flr -Concealed electrical conduiting | 9d | 2027-03-28 | 2027-04-05 | 2359, 2364 |  | 7 day week No holidays | 2515878 |
| 2366 | 37300.38400.38500.70000.352700 | 22nd Flr -Backcoat Plaster | 8d | 2027-03-28 | 2027-04-04 | 2360, 2364 |  | 7 day week No holidays | 7303594 |
| 2367 | 37300.38400.38500.70000.352800 | 22nd Flr -Concealed Plumbing | 10d | 2027-04-05 | 2027-04-14 | 2361, 2366 |  | 7 day week No holidays | 2515898 |
| 2368 | 37300.38400.38500.70000.352900 | 22nd Flr -Waterproofing Work | 12d | 2027-04-15 | 2027-04-26 | 2362, 2367 |  | 7 day week No holidays | 7303604 |
| 2369 | 37300.38400.38500.70100 | **23th Floor** | 477d | 2026-01-21 | 2027-05-12 |  | start no earlier than 2026-01-21 | 7 day week No holidays | 2507628 |
| 2370 | 37300.38400.38500.70100.420800 | 23rd Flr -Blockwork | 1d | 2026-01-21 | 2026-01-21 |  | start no earlier than 2026-01-21 | Indian Calendar | 2507629 |
| 2371 | 37300.38400.38500.70100.353000 | 23rd Flr -Blockwork | 10d | 2027-04-03 | 2027-04-12 | 2205, 2364, 2370 |  | 7 day week No holidays | 2515918 |
| 2372 | 37300.38400.38500.70100.353100 | 23rd Flr -Concealed electrical conduiting | 9d | 2027-04-13 | 2027-04-21 | 2365, 2371 |  | 7 day week No holidays | 7303614 |
| 2373 | 37300.38400.38500.70100.353200 | 23rd Flr -Backcoat Plaster | 8d | 2027-04-13 | 2027-04-20 | 2366, 2371 |  | 7 day week No holidays | 2515938 |
| 2374 | 37300.38400.38500.70100.353300 | 23rd Flr -Concealed Plumbing | 10d | 2027-04-21 | 2027-04-30 | 2367, 2373 |  | 7 day week No holidays | 7303624 |
| 2375 | 37300.38400.38500.70100.353400 | 23rd Flr -Waterproofing Work | 12d | 2027-05-01 | 2027-05-12 | 2368, 2374 |  | 7 day week No holidays | 2515958 |
| 2376 | 37300.38400.38500.70200 | **24th Floor** | 40d | 2027-04-19 | 2027-05-28 |  | start no earlier than 2027-04-19 | 7 day week No holidays | 2507638 |
| 2377 | 37300.38400.38500.70200.353500 | 24th Flr -Blockwork | 10d | 2027-04-19 | 2027-04-28 | 2206, 2371 |  | 7 day week No holidays | 7303634 |
| 2378 | 37300.38400.38500.70200.353600 | 24th Flr -Concealed electrical conduiting | 9d | 2027-04-29 | 2027-05-07 | 2372, 2377 |  | 7 day week No holidays | 2515978 |
| 2379 | 37300.38400.38500.70200.353700 | 24th Flr -Backcoat Plaster | 8d | 2027-04-29 | 2027-05-06 | 2373, 2377 |  | 7 day week No holidays | 2515988 |
| 2380 | 37300.38400.38500.70200.353800 | 24th Flr -Concealed Plumbing | 10d | 2027-05-07 | 2027-05-16 | 2374, 2379 |  | 7 day week No holidays | 2515998 |
| 2381 | 37300.38400.38500.70200.353900 | 24th Flr -Waterproofing Work | 12d | 2027-05-17 | 2027-05-28 | 2375, 2380 |  | 7 day week No holidays | 2516008 |

| ID | WBS | Task | Duration | Start | Finish | Predecessors | Constraint | Calendar | Unique_Task_ID |
| --- | --- | --- | --- | --- | --- | --- | --- | --- | --- |
| 2382 | 37300.38400.38500.70300 | **25th Floor** | 40d | 2027-05-05 | 2027-06-13 |  | start no earlier than 2027-05-05 | 7 day week No holidays | 2507648 |
| 2383 | 37300.38400.38500.70300.354000 | 25th Flr -Blockwork | 10d | 2027-05-05 | 2027-05-14 | 2207, 2377 |  | 7 day week No holidays | 2516018 |
| 2384 | 37300.38400.38500.70300.354100 | 25th Flr -Concealed electrical conduiting | 9d | 2027-05-15 | 2027-05-23 | 2378, 2383 |  | 7 day week No holidays | 2516028 |
| 2385 | 37300.38400.38500.70300.354200 | 25th Flr -Backcoat Plaster | 8d | 2027-05-15 | 2027-05-22 | 2379, 2383 |  | 7 day week No holidays | 2516038 |
| 2386 | 37300.38400.38500.70300.354300 | 25th Flr -Concealed Plumbing | 10d | 2027-05-23 | 2027-06-01 | 2380, 2385 |  | 7 day week No holidays | 2516048 |
| 2387 | 37300.38400.38500.70300.354400 | 25th Flr -Waterproofing Work | 12d | 2027-06-02 | 2027-06-13 | 2381, 2386 |  | 7 day week No holidays | 2516058 |
| 2388 | 37300.38400.38500.70400 | **26th Floor** | 40d | 2027-05-21 | 2027-06-29 |  | start no earlier than 2027-05-21 | 7 day week No holidays | 2507658 |
| 2389 | 37300.38400.38500.70400.354500 | 26th Flr -Blockwork | 10d | 2027-05-21 | 2027-05-30 | 2208, 2383 |  | 7 day week No holidays | 2516068 |
| 2390 | 37300.38400.38500.70400.354600 | 26th Flr -Concealed electrical conduiting | 9d | 2027-05-31 | 2027-06-08 | 2384, 2389 |  | 7 day week No holidays | 2516078 |
| 2391 | 37300.38400.38500.70400.354700 | 26th Flr -Backcoat Plaster | 8d | 2027-05-31 | 2027-06-07 | 2385, 2389 |  | 7 day week No holidays | 2516088 |
| 2392 | 37300.38400.38500.70400.354800 | 26th Flr -Concealed Plumbing | 10d | 2027-06-08 | 2027-06-17 | 2386, 2391 |  | 7 day week No holidays | 2516098 |
| 2393 | 37300.38400.38500.70400.354900 | 26th Flr -Waterproofing Work | 12d | 2027-06-18 | 2027-06-29 | 2387, 2392 |  | 7 day week No holidays | 2516108 |
| 2394 | 37300.38400.38500.70500 | **27th Floor** | 40d | 2027-06-06 | 2027-07-15 |  | start no earlier than 2027-06-06 | 7 day week No holidays | 2507668 |
| 2395 | 37300.38400.38500.70500.355000 | 27th Flr -Blockwork | 10d | 2027-06-06 | 2027-06-15 | 2209, 2389 |  | 7 day week No holidays | 2516118 |
| 2396 | 37300.38400.38500.70500.355100 | 27th Flr -Concealed electrical conduiting | 9d | 2027-06-16 | 2027-06-24 | 2390, 2395 |  | 7 day week No holidays | 2516128 |
| 2397 | 37300.38400.38500.70500.355200 | 27th Flr -Backcoat Plaster | 8d | 2027-06-16 | 2027-06-23 | 2391, 2395 |  | 7 day week No holidays | 2516138 |
| 2398 | 37300.38400.38500.70500.355300 | 27th Flr -Concealed Plumbing | 10d | 2027-06-24 | 2027-07-03 | 2392, 2397 |  | 7 day week No holidays | 2516148 |
| 2399 | 37300.38400.38500.70500.355400 | 27th Flr -Waterproofing Work | 12d | 2027-07-04 | 2027-07-15 | 2393, 2398 |  | 7 day week No holidays | 2516158 |
| 2400 | 37300.38400.38500.70600 | **28th Floor** | 40d | 2027-06-22 | 2027-07-31 |  | start no earlier than 2027-06-22 | 7 day week No holidays | 2507678 |
| 2401 | 37300.38400.38500.70600.355500 | 28th Flr -Blockwork | 10d | 2027-06-22 | 2027-07-01 | 2210, 2395 |  | 7 day week No holidays | 2516168 |
| 2402 | 37300.38400.38500.70600.355600 | 28th Flr -Concealed electrical conduiting | 9d | 2027-07-02 | 2027-07-10 | 2396, 2401 |  | 7 day week No holidays | 2516178 |
| 2403 | 37300.38400.38500.70600.355700 | 28th Flr -Backcoat Plaster | 8d | 2027-07-02 | 2027-07-09 | 2397, 2401 |  | 7 day week No holidays | 2516188 |
| 2404 | 37300.38400.38500.70600.355800 | 28th Flr -Concealed Plumbing | 10d | 2027-07-10 | 2027-07-19 | 2398, 2403 |  | 7 day week No holidays | 2516198 |
| 2405 | 37300.38400.38500.70600.355900 | 28th Flr -Waterproofing Work | 12d | 2027-07-20 | 2027-07-31 | 2399, 2404 |  | 7 day week No holidays | 2516208 |

| ID | WBS | Task | Duration | Start | Finish | Predecessors | Constraint | Calendar | Unique_Task_ID |
| --- | --- | --- | --- | --- | --- | --- | --- | --- | --- |
| 2406 | 37300.38400.38500.70700 | **29th Floor** | 40d | 2027-07-08 | 2027-08-16 |  | start no earlier than 2027-07-08 | 7 day week No holidays | 2507688 |
| 2407 | 37300.38400.38500.70700.356000 | 29th Flr -Blockwork | 10d | 2027-07-08 | 2027-07-17 | 2211, 2401 |  | 7 day week No holidays | 2516218 |
| 2408 | 37300.38400.38500.70700.356100 | 29th Flr -Concealed electrical conduiting | 9d | 2027-07-18 | 2027-07-26 | 2402, 2407 |  | 7 day week No holidays | 2516228 |
| 2409 | 37300.38400.38500.70700.356200 | 29th Flr -Backcoat Plaster | 8d | 2027-07-18 | 2027-07-25 | 2403, 2407 |  | 7 day week No holidays | 2516238 |
| 2410 | 37300.38400.38500.70700.356300 | 29th Flr -Concealed Plumbing | 10d | 2027-07-26 | 2027-08-04 | 2404, 2409 |  | 7 day week No holidays | 2516248 |
| 2411 | 37300.38400.38500.70700.356400 | 29th Flr -Waterproofing Work | 12d | 2027-08-05 | 2027-08-16 | 2405, 2410 |  | 7 day week No holidays | 2516258 |
| 2412 | 37300.38400.38500.70800 | **30th Floor** | 40d | 2027-07-24 | 2027-09-01 |  | start no earlier than 2027-07-24 | 7 day week No holidays | 2507698 |
| 2413 | 37300.38400.38500.70800.356500 | 30th Flr -Blockwork | 10d | 2027-07-24 | 2027-08-02 | 2212, 2407 |  | 7 day week No holidays | 2516268 |
| 2414 | 37300.38400.38500.70800.356600 | 30th Flr -Concealed electrical conduiting | 9d | 2027-08-03 | 2027-08-11 | 2408, 2413 |  | 7 day week No holidays | 2516278 |
| 2415 | 37300.38400.38500.70800.356700 | 30th Flr -Backcoat Plaster | 8d | 2027-08-03 | 2027-08-10 | 2409, 2413 |  | 7 day week No holidays | 2516288 |
| 2416 | 37300.38400.38500.70800.356800 | 30th Flr -Concealed Plumbing | 10d | 2027-08-11 | 2027-08-20 | 2410, 2415 |  | 7 day week No holidays | 2516298 |
| 2417 | 37300.38400.38500.70800.356900 | 30th Flr -Waterproofing Work | 12d | 2027-08-21 | 2027-09-01 | 2411, 2416 |  | 7 day week No holidays | 2516308 |
| 2418 | 37300.38400.38500.70900 | **31th Floor** | 40d | 2027-08-09 | 2027-09-17 |  | start no earlier than 2027-08-09 | 7 day week No holidays | 2507708 |
| 2419 | 37300.38400.38500.70900.357000 | 31st Flr -Blockwork | 10d | 2027-08-09 | 2027-08-18 | 2213, 2413 |  | 7 day week No holidays | 2516318 |
| 2420 | 37300.38400.38500.70900.357100 | 31st Flr -Concealed electrical conduiting | 9d | 2027-08-19 | 2027-08-27 | 2414, 2419 |  | 7 day week No holidays | 2516328 |
| 2421 | 37300.38400.38500.70900.357200 | 31st Flr -Backcoat Plaster | 8d | 2027-08-19 | 2027-08-26 | 2415, 2419 |  | 7 day week No holidays | 2516338 |
| 2422 | 37300.38400.38500.70900.357300 | 31st Flr -Concealed Plumbing | 10d | 2027-08-27 | 2027-09-05 | 2416, 2421 |  | 7 day week No holidays | 2516348 |
| 2423 | 37300.38400.38500.70900.357400 | 31st Flr -Waterproofing Work | 12d | 2027-09-06 | 2027-09-17 | 2417, 2422 |  | 7 day week No holidays | 2516358 |
| 2424 | 37300.38400.38500.71000 | **32th Floor** | 40d | 2027-08-25 | 2027-10-03 |  | start no earlier than 2027-08-25 | 7 day week No holidays | 2507718 |
| 2425 | 37300.38400.38500.71000.357500 | 32nd Flr -Blockwork | 10d | 2027-08-25 | 2027-09-03 | 2214, 2419 |  | 7 day week No holidays | 2516368 |
| 2426 | 37300.38400.38500.71000.357600 | 32nd Flr -Concealed electrical conduiting | 9d | 2027-09-04 | 2027-09-12 | 2420, 2425 |  | 7 day week No holidays | 2516378 |
| 2427 | 37300.38400.38500.71000.357700 | 32nd Flr -Backcoat Plaster | 8d | 2027-09-04 | 2027-09-11 | 2421, 2425 |  | 7 day week No holidays | 2516388 |
| 2428 | 37300.38400.38500.71000.357800 | 32nd Flr -Concealed Plumbing | 10d | 2027-09-12 | 2027-09-21 | 2422, 2427 |  | 7 day week No holidays | 2516398 |
| 2429 | 37300.38400.38500.71000.357900 | 32nd Flr -Waterproofing Work | 12d | 2027-09-22 | 2027-10-03 | 2423, 2428 |  | 7 day week No holidays | 2516408 |

| ID | WBS | Task | Duration | Start | Finish | Predecessors | Constraint | Calendar | Unique_Task_ID |
| --- | --- | --- | --- | --- | --- | --- | --- | --- | --- |
| 2430 | 37300.38400.38500.71100 | **33th Floor** | 40d | 2028-07-27 | 2028-09-04 |  | start no earlier than 2028-07-27 | 7 day week No holidays | 2507728 |
| 2431 | 37300.38400.38500.71100.358000 | 33rd Flr -Blockwork | 10d | 2028-07-27 | 2028-08-05 | 2216, 2425 |  | 7 day week No holidays | 2516418 |
| 2432 | 37300.38400.38500.71100.358100 | 33rd Flr -Concealed electrical conduiting | 9d | 2028-08-06 | 2028-08-14 | 2426, 2431 |  | 7 day week No holidays | 2516428 |
| 2433 | 37300.38400.38500.71100.358200 | 33rd Flr -Backcoat Plaster | 8d | 2028-08-06 | 2028-08-13 | 2427, 2431 |  | 7 day week No holidays | 2516438 |
| 2434 | 37300.38400.38500.71100.358300 | 33rd Flr -Concealed Plumbing | 10d | 2028-08-14 | 2028-08-23 | 2428, 2433 |  | 7 day week No holidays | 2516448 |
| 2435 | 37300.38400.38500.71100.358400 | 33rd Flr -Waterproofing Work | 12d | 2028-08-24 | 2028-09-04 | 2429, 2434 |  | 7 day week No holidays | 2516458 |
| 2436 | 37300.38400.38500.71200 | **34th Floor** | 40d | 2028-08-28 | 2028-10-06 |  | start no earlier than 2028-08-28 | 7 day week No holidays | 2507738 |
| 2437 | 37300.38400.38500.71200.358500 | 34th Flr -Blockwork | 10d | 2028-08-28 | 2028-09-06 | 2218, 2431 |  | 7 day week No holidays | 2516468 |
| 2438 | 37300.38400.38500.71200.358600 | 34th Flr -Concealed electrical conduiting | 9d | 2028-09-07 | 2028-09-15 | 2432, 2437 |  | 7 day week No holidays | 2516478 |
| 2439 | 37300.38400.38500.71200.358700 | 34th Flr -Backcoat Plaster | 8d | 2028-09-07 | 2028-09-14 | 2433, 2437 |  | 7 day week No holidays | 2516488 |
| 2440 | 37300.38400.38500.71200.358800 | 34th Flr -Concealed Plumbing | 10d | 2028-09-15 | 2028-09-24 | 2434, 2439 |  | 7 day week No holidays | 2516498 |
| 2441 | 37300.38400.38500.71200.358900 | 34th Flr -Waterproofing Work | 12d | 2028-09-25 | 2028-10-06 | 2435, 2440 |  | 7 day week No holidays | 2516508 |
| 2442 | 37300.38400.38500.71300 | **35th Floor** | 40d | 2028-09-13 | 2028-10-22 |  | start no earlier than 2028-09-13 | 7 day week No holidays | 2507748 |
| 2443 | 37300.38400.38500.71300.359000 | 35th Flr -Blockwork | 10d | 2028-09-13 | 2028-09-22 | 2219, 2437 |  | 7 day week No holidays | 2516518 |
| 2444 | 37300.38400.38500.71300.359100 | 35th Flr -Concealed electrical conduiting | 9d | 2028-09-23 | 2028-10-01 | 2438, 2443 |  | 7 day week No holidays | 2516528 |
| 2445 | 37300.38400.38500.71300.359200 | 35th Flr -Backcoat Plaster | 8d | 2028-09-23 | 2028-09-30 | 2439, 2443 |  | 7 day week No holidays | 2516538 |
| 2446 | 37300.38400.38500.71300.359300 | 35th Flr -Concealed Plumbing | 10d | 2028-10-01 | 2028-10-10 | 2440, 2445 |  | 7 day week No holidays | 2516548 |
| 2447 | 37300.38400.38500.71300.359400 | 35th Flr -Waterproofing Work | 12d | 2028-10-11 | 2028-10-22 | 2441, 2446 |  | 7 day week No holidays | 2516558 |
| 2448 | 37300.38400.38500.71400 | **36th Floor** | 40d | 2028-09-29 | 2028-11-07 |  | start no earlier than 2028-09-29 | 7 day week No holidays | 2507758 |
| 2449 | 37300.38400.38500.71400.359500 | 36th Flr -Blockwork | 10d | 2028-09-29 | 2028-10-08 | 2220, 2443 |  | 7 day week No holidays | 2516568 |
| 2450 | 37300.38400.38500.71400.359600 | 36th Flr -Concealed electrical conduiting | 9d | 2028-10-09 | 2028-10-17 | 2444, 2449 |  | 7 day week No holidays | 2516578 |
| 2451 | 37300.38400.38500.71400.359700 | 36th Flr -Backcoat Plaster | 8d | 2028-10-09 | 2028-10-16 | 2445, 2449 |  | 7 day week No holidays | 2516588 |
| 2452 | 37300.38400.38500.71400.359800 | 36th Flr -Concealed Plumbing | 10d | 2028-10-17 | 2028-10-26 | 2446, 2451 |  | 7 day week No holidays | 2516598 |
| 2453 | 37300.38400.38500.71400.359900 | 36th Flr -Waterproofing Work | 12d | 2028-10-27 | 2028-11-07 | 2447, 2452 |  | 7 day week No holidays | 2516608 |

| ID | WBS | Task | Duration | Start | Finish | Predecessors | Constraint | Calendar | Unique_Task_ID |
| --- | --- | --- | --- | --- | --- | --- | --- | --- | --- |
| 2454 | 37300.38400.38500.71500 | **37th Floor** | 40d | 2028-10-15 | 2028-11-23 |  | start no earlier than 2028-10-15 | 7 day week No holidays | 2507768 |
| 2455 | 37300.38400.38500.71500.360000 | 37th Flr -Blockwork | 10d | 2028-10-15 | 2028-10-24 | 2221, 2449 |  | 7 day week No holidays | 2516618 |
| 2456 | 37300.38400.38500.71500.360100 | 37th Flr -Concealed electrical conduiting | 9d | 2028-10-25 | 2028-11-02 | 2450, 2455 |  | 7 day week No holidays | 2516628 |
| 2457 | 37300.38400.38500.71500.360200 | 37th Flr -Backcoat Plaster | 8d | 2028-10-25 | 2028-11-01 | 2451, 2455 |  | 7 day week No holidays | 2516638 |
| 2458 | 37300.38400.38500.71500.360300 | 37th Flr -Concealed Plumbing | 10d | 2028-11-02 | 2028-11-11 | 2452, 2457 |  | 7 day week No holidays | 2516648 |
| 2459 | 37300.38400.38500.71500.360400 | 37th Flr -Waterproofing Work | 12d | 2028-11-12 | 2028-11-23 | 2453, 2458 |  | 7 day week No holidays | 2516658 |
| 2460 | 37300.38400.38500.71600 | **38th Floor** | 40d | 2028-10-31 | 2028-12-09 |  | start no earlier than 2028-10-31 | 7 day week No holidays | 2507778 |
| 2461 | 37300.38400.38500.71600.360500 | 38th Flr -Blockwork | 10d | 2028-10-31 | 2028-11-09 | 2222, 2455 |  | 7 day week No holidays | 2516668 |
| 2462 | 37300.38400.38500.71600.360600 | 38th Flr -Concealed electrical conduiting | 9d | 2028-11-10 | 2028-11-18 | 2456, 2461 |  | 7 day week No holidays | 2516678 |
| 2463 | 37300.38400.38500.71600.360700 | 38th Flr -Backcoat Plaster | 8d | 2028-11-10 | 2028-11-17 | 2457, 2461 |  | 7 day week No holidays | 2516688 |
| 2464 | 37300.38400.38500.71600.360800 | 38th Flr -Concealed Plumbing | 10d | 2028-11-18 | 2028-11-27 | 2458, 2463 |  | 7 day week No holidays | 2516698 |
| 2465 | 37300.38400.38500.71600.360900 | 38th Flr -Waterproofing Work | 12d | 2028-11-28 | 2028-12-09 | 2459, 2464 |  | 7 day week No holidays | 2516708 |
| 2466 | 37300.38400.38500.71700 | **39th Floor** | 40d | 2028-11-16 | 2028-12-25 |  | start no earlier than 2028-11-16 | 7 day week No holidays | 2507788 |
| 2467 | 37300.38400.38500.71700.361000 | 39th Flr -Blockwork | 10d | 2028-11-16 | 2028-11-25 | 2223, 2461 |  | 7 day week No holidays | 2516718 |
| 2468 | 37300.38400.38500.71700.361100 | 39th Flr -Concealed electrical conduiting | 9d | 2028-11-26 | 2028-12-04 | 2462, 2467 |  | 7 day week No holidays | 2516728 |
| 2469 | 37300.38400.38500.71700.361200 | 39th Flr -Backcoat Plaster | 8d | 2028-11-26 | 2028-12-03 | 2463, 2467 |  | 7 day week No holidays | 2516738 |
| 2470 | 37300.38400.38500.71700.361300 | 39th Flr -Concealed Plumbing | 10d | 2028-12-04 | 2028-12-13 | 2464, 2469 |  | 7 day week No holidays | 2516748 |
| 2471 | 37300.38400.38500.71700.361400 | 39th Flr -Waterproofing Work | 12d | 2028-12-14 | 2028-12-25 | 2465, 2470 |  | 7 day week No holidays | 2516758 |
| 2472 | 37300.38400.38500.71800 | **40th Floor** | 40d | 2028-12-02 | 2029-01-10 |  | start no earlier than 2028-12-02 | 7 day week No holidays | 2507798 |
| 2473 | 37300.38400.38500.71800.361500 | 40th Flr -Blockwork | 10d | 2028-12-02 | 2028-12-11 | 2224, 2467 |  | 7 day week No holidays | 2516768 |
| 2474 | 37300.38400.38500.71800.361600 | 40th Flr -Concealed electrical conduiting | 9d | 2028-12-12 | 2028-12-20 | 2468, 2473 |  | 7 day week No holidays | 2516778 |
| 2475 | 37300.38400.38500.71800.361700 | 40th Flr -Backcoat Plaster | 8d | 2028-12-12 | 2028-12-19 | 2469, 2473 |  | 7 day week No holidays | 2516788 |
| 2476 | 37300.38400.38500.71800.361800 | 40th Flr -Concealed Plumbing | 10d | 2028-12-20 | 2028-12-29 | 2470, 2475 |  | 7 day week No holidays | 2516798 |
| 2477 | 37300.38400.38500.71800.361900 | 40th Flr -Waterproofing Work | 12d | 2028-12-30 | 2029-01-10 | 2471, 2476 |  | 7 day week No holidays | 2516808 |

| ID | WBS | Task | Duration | Start | Finish | Predecessors | Constraint | Calendar | Unique_Task_ID |
| --- | --- | --- | --- | --- | --- | --- | --- | --- | --- |
| 2478 | 37300.38400.38500.71900 | **41th Floor** | 40d | 2028-12-18 | 2029-01-26 |  | start no earlier than 2028-12-18 | 7 day week No holidays | 2507808 |
| 2479 | 37300.38400.38500.71900.362000 | 41st Flr -Blockwork | 10d | 2028-12-18 | 2028-12-27 | 2225, 2473 |  | 7 day week No holidays | 2516818 |
| 2480 | 37300.38400.38500.71900.362100 | 41st Flr -Concealed electrical conduiting | 9d | 2028-12-28 | 2029-01-05 | 2474, 2479 |  | 7 day week No holidays | 2516828 |
| 2481 | 37300.38400.38500.71900.362200 | 41st Flr -Backcoat Plaster | 8d | 2028-12-28 | 2029-01-04 | 2475, 2479 |  | 7 day week No holidays | 2516838 |
| 2482 | 37300.38400.38500.71900.362300 | 41st Flr -Concealed Plumbing | 10d | 2029-01-05 | 2029-01-14 | 2476, 2481 |  | 7 day week No holidays | 2516848 |
| 2483 | 37300.38400.38500.71900.362400 | 41st Flr -Waterproofing Work | 12d | 2029-01-15 | 2029-01-26 | 2477, 2482 |  | 7 day week No holidays | 2516858 |
| 2484 | 37300.38400.38500.72000 | **42th Floor** | 40d | 2029-01-03 | 2029-02-11 |  | start no earlier than 2029-01-03 | 7 day week No holidays | 2507818 |
| 2485 | 37300.38400.38500.72000.362500 | 42nd Flr -Blockwork | 10d | 2029-01-03 | 2029-01-12 | 2226, 2479 |  | 7 day week No holidays | 2516868 |
| 2486 | 37300.38400.38500.72000.362600 | 42nd Flr -Concealed electrical conduiting | 9d | 2029-01-13 | 2029-01-21 | 2480, 2485 |  | 7 day week No holidays | 2516878 |
| 2487 | 37300.38400.38500.72000.362700 | 42nd Flr -Backcoat Plaster | 8d | 2029-01-13 | 2029-01-20 | 2481, 2485 |  | 7 day week No holidays | 2516888 |
| 2488 | 37300.38400.38500.72000.362800 | 42nd Flr -Concealed Plumbing | 10d | 2029-01-21 | 2029-01-30 | 2482, 2487 |  | 7 day week No holidays | 2516898 |
| 2489 | 37300.38400.38500.72000.362900 | 42nd Flr -Waterproofing Work | 12d | 2029-01-31 | 2029-02-11 | 2483, 2488 |  | 7 day week No holidays | 2516908 |
| 2490 | 37300.38400.38500.72100 | **43th Floor** | 40d | 2029-01-19 | 2029-02-27 |  | start no earlier than 2029-01-19 | 7 day week No holidays | 2507828 |
| 2491 | 37300.38400.38500.72100.363000 | 43rd Flr -Blockwork | 10d | 2029-01-19 | 2029-01-28 | 2227, 2485 |  | 7 day week No holidays | 2516918 |
| 2492 | 37300.38400.38500.72100.363100 | 43rd Flr -Concealed electrical conduiting | 9d | 2029-01-29 | 2029-02-06 | 2486, 2491 |  | 7 day week No holidays | 2516928 |
| 2493 | 37300.38400.38500.72100.363200 | 43rd Flr -Backcoat Plaster | 8d | 2029-01-29 | 2029-02-05 | 2487, 2491 |  | 7 day week No holidays | 2516938 |
| 2494 | 37300.38400.38500.72100.363300 | 43rd Flr -Concealed Plumbing | 10d | 2029-02-06 | 2029-02-15 | 2488, 2493 |  | 7 day week No holidays | 2516948 |
| 2495 | 37300.38400.38500.72100.363400 | 43rd Flr -Waterproofing Work | 12d | 2029-02-16 | 2029-02-27 | 2489, 2494 |  | 7 day week No holidays | 2516958 |
| 2496 | 37300.38400.38500.72200 | **44th Floor** | 40d | 2029-02-04 | 2029-03-15 |  | start no earlier than 2029-02-04 | 7 day week No holidays | 2507838 |
| 2497 | 37300.38400.38500.72200.363500 | 44th Flr -Blockwork | 10d | 2029-02-04 | 2029-02-13 | 2228, 2491 |  | 7 day week No holidays | 2516968 |
| 2498 | 37300.38400.38500.72200.363600 | 44th Flr -Concealed electrical conduiting | 9d | 2029-02-14 | 2029-02-22 | 2492, 2497 |  | 7 day week No holidays | 2516978 |
| 2499 | 37300.38400.38500.72200.363700 | 44th Flr -Backcoat Plaster | 8d | 2029-02-14 | 2029-02-21 | 2493, 2497 |  | 7 day week No holidays | 2516988 |
| 2500 | 37300.38400.38500.72200.363800 | 44th Flr -Concealed Plumbing | 10d | 2029-02-22 | 2029-03-03 | 2494, 2499 |  | 7 day week No holidays | 2516998 |
| 2501 | 37300.38400.38500.72200.363900 | 44th Flr -Waterproofing Work | 12d | 2029-03-04 | 2029-03-15 | 2495, 2500 |  | 7 day week No holidays | 2517008 |

| ID | WBS | Task | Duration | Start | Finish | Predecessors | Constraint | Calendar | Unique_Task_ID |
| --- | --- | --- | --- | --- | --- | --- | --- | --- | --- |
| 2502 | 37300.38400.38500.72300 | **45th Floor** | 40d | 2029-02-20 | 2029-03-31 |  | start no earlier than 2029-02-20 | 7 day week No holidays | 2507848 |
| 2503 | 37300.38400.38500.72300.364000 | 45th Flr -Blockwork | 10d | 2029-02-20 | 2029-03-01 | 2229, 2497 |  | 7 day week No holidays | 2517018 |
| 2504 | 37300.38400.38500.72300.364100 | 45th Flr -Concealed electrical conduiting | 9d | 2029-03-02 | 2029-03-10 | 2498, 2503 |  | 7 day week No holidays | 2517028 |
| 2505 | 37300.38400.38500.72300.364200 | 45th Flr -Backcoat Plaster | 8d | 2029-03-02 | 2029-03-09 | 2499, 2503 |  | 7 day week No holidays | 2517038 |
| 2506 | 37300.38400.38500.72300.364300 | 45th Flr -Concealed Plumbing | 10d | 2029-03-10 | 2029-03-19 | 2500, 2505 |  | 7 day week No holidays | 2517048 |
| 2507 | 37300.38400.38500.72300.364400 | 45th Flr -Waterproofing Work | 12d | 2029-03-20 | 2029-03-31 | 2501, 2506 |  | 7 day week No holidays | 2517058 |
| 2508 | 37300.38400.38500.72400 | **46th Floor** | 40d | 2029-03-08 | 2029-04-16 |  | start no earlier than 2029-03-08 | 7 day week No holidays | 2507858 |
| 2509 | 37300.38400.38500.72400.364500 | 46th Flr -Blockwork | 10d | 2029-03-08 | 2029-03-17 | 2230, 2503 |  | 7 day week No holidays | 2517068 |
| 2510 | 37300.38400.38500.72400.364600 | 46th Flr -Concealed electrical conduiting | 9d | 2029-03-18 | 2029-03-26 | 2504, 2509 |  | 7 day week No holidays | 2517078 |
| 2511 | 37300.38400.38500.72400.364700 | 46th Flr -Backcoat Plaster | 8d | 2029-03-18 | 2029-03-25 | 2505, 2509 |  | 7 day week No holidays | 2517088 |
| 2512 | 37300.38400.38500.72400.364800 | 46th Flr -Concealed Plumbing | 10d | 2029-03-26 | 2029-04-04 | 2506, 2511 |  | 7 day week No holidays | 2517098 |
| 2513 | 37300.38400.38500.72400.364900 | 46th Flr -Waterproofing Work | 12d | 2029-04-05 | 2029-04-16 | 2507, 2512 |  | 7 day week No holidays | 2517108 |
| 2514 | 37300.38400.38500.72500 | **47th Floor** | 40d | 2029-03-24 | 2029-05-02 |  | start no earlier than 2029-03-24 | 7 day week No holidays | 2507868 |
| 2515 | 37300.38400.38500.72500.365000 | 47th Flr -Blockwork | 10d | 2029-03-24 | 2029-04-02 | 2231, 2509 |  | 7 day week No holidays | 2517118 |
| 2516 | 37300.38400.38500.72500.365100 | 47th Flr -Concealed electrical conduiting | 9d | 2029-04-03 | 2029-04-11 | 2510, 2515 |  | 7 day week No holidays | 2517128 |
| 2517 | 37300.38400.38500.72500.365200 | 47th Flr -Backcoat Plaster | 8d | 2029-04-03 | 2029-04-10 | 2511, 2515 |  | 7 day week No holidays | 2517138 |
| 2518 | 37300.38400.38500.72500.365300 | 47th Flr -Concealed Plumbing | 10d | 2029-04-11 | 2029-04-20 | 2512, 2517 |  | 7 day week No holidays | 2517148 |
| 2519 | 37300.38400.38500.72500.365400 | 47th Flr -Waterproofing Work | 12d | 2029-04-21 | 2029-05-02 | 2513, 2518 |  | 7 day week No holidays | 2517158 |
| 2520 | 37300.38400.38500.72600 | **48th Floor** | 40d | 2029-04-09 | 2029-05-18 |  | start no earlier than 2029-04-09 | 7 day week No holidays | 2507878 |
| 2521 | 37300.38400.38500.72600.365500 | 48th Flr -Blockwork | 10d | 2029-04-09 | 2029-04-18 | 2232, 2515 |  | 7 day week No holidays | 2517168 |
| 2522 | 37300.38400.38500.72600.365600 | 48th Flr -Concealed electrical conduiting | 9d | 2029-04-19 | 2029-04-27 | 2516, 2521 |  | 7 day week No holidays | 2517178 |
| 2523 | 37300.38400.38500.72600.365700 | 48th Flr -Backcoat Plaster | 8d | 2029-04-19 | 2029-04-26 | 2517, 2521 |  | 7 day week No holidays | 2517188 |
| 2524 | 37300.38400.38500.72600.365800 | 48th Flr -Concealed Plumbing | 10d | 2029-04-27 | 2029-05-06 | 2518, 2523 |  | 7 day week No holidays | 2517198 |
| 2525 | 37300.38400.38500.72600.365900 | 48th Flr -Waterproofing Work | 12d | 2029-05-07 | 2029-05-18 | 2519, 2524 |  | 7 day week No holidays | 2517208 |

| ID | WBS | Task | Duration | Start | Finish | Predecessors | Constraint | Calendar | Unique_Task_ID |
| --- | --- | --- | --- | --- | --- | --- | --- | --- | --- |
| 2526 | 37300.38400.38500.72700 | **49th Floor** | 40d | 2029-04-25 | 2029-06-03 |  | start no earlier than 2029-04-25 | 7 day week No holidays | 2507888 |
| 2527 | 37300.38400.38500.72700.366000 | 49th Flr -Blockwork | 10d | 2029-04-25 | 2029-05-04 | 2233, 2521 |  | 7 day week No holidays | 2517218 |
| 2528 | 37300.38400.38500.72700.366100 | 49th Flr -Concealed electrical conduiting | 9d | 2029-05-05 | 2029-05-13 | 2522, 2527 |  | 7 day week No holidays | 2517228 |
| 2529 | 37300.38400.38500.72700.366200 | 49th Flr -Backcoat Plaster | 8d | 2029-05-05 | 2029-05-12 | 2523, 2527 |  | 7 day week No holidays | 2517238 |
| 2530 | 37300.38400.38500.72700.366300 | 49th Flr -Concealed Plumbing | 10d | 2029-05-13 | 2029-05-22 | 2524, 2529 |  | 7 day week No holidays | 2517248 |
| 2531 | 37300.38400.38500.72700.366400 | 49th Flr -Waterproofing Work | 12d | 2029-05-23 | 2029-06-03 | 2525, 2530 |  | 7 day week No holidays | 2517258 |
| 2532 | 37300.38400.38500.72800 | **50th Floor** | 42d | 2029-05-05 | 2029-06-15 |  | start no earlier than 2029-05-05 | 7 day week No holidays | 2507898 |
| 2533 | 37300.38400.38500.72800.366500 | 50th Flr -Blockwork | 10d | 2029-05-05 | 2029-05-14 | 2527 |  | 7 day week No holidays | 2517268 |
| 2534 | 37300.38400.38500.72800.366600 | 50th Flr -Concealed electrical conduiting | 9d | 2029-05-15 | 2029-05-23 | 2528, 2533 |  | 7 day week No holidays | 2517278 |
| 2535 | 37300.38400.38500.72800.366700 | 50th Flr -Backcoat Plaster | 8d | 2029-05-15 | 2029-05-22 | 2529, 2533 |  | 7 day week No holidays | 2517288 |
| 2536 | 37300.38400.38500.72800.366800 | 50th Flr -Concealed Plumbing | 10d | 2029-05-23 | 2029-06-01 | 2530, 2535 |  | 7 day week No holidays | 2517298 |
| 2537 | 37300.38400.38500.72800.366900 | 50th Flr -Waterproofing Work | 12d | 2029-06-04 | 2029-06-15 | 2531, 2536 |  | 7 day week No holidays | 2517308 |
| 2538 | 37300.38400.38500.72900 | **51th Floor** | 44d | 2029-05-15 | 2029-06-27 |  | start no earlier than 2029-05-15 | 7 day week No holidays | 2507908 |
| 2539 | 37300.38400.38500.72900.367000 | 51st Flr -Blockwork | 10d | 2029-05-15 | 2029-05-24 | 2533 |  | 7 day week No holidays | 2517318 |
| 2540 | 37300.38400.38500.72900.367100 | 51st Flr -Concealed electrical conduiting | 9d | 2029-05-25 | 2029-06-02 | 2534, 2539 |  | 7 day week No holidays | 2517328 |
| 2541 | 37300.38400.38500.72900.367200 | 51st Flr -Backcoat Plaster | 8d | 2029-05-25 | 2029-06-01 | 2535, 2539 |  | 7 day week No holidays | 2517338 |
| 2542 | 37300.38400.38500.72900.367300 | 51st Flr -Concealed Plumbing | 10d | 2029-06-02 | 2029-06-11 | 2536, 2541 |  | 7 day week No holidays | 2517348 |
| 2543 | 37300.38400.38500.72900.367400 | 51st Flr -Waterproofing Work | 12d | 2029-06-16 | 2029-06-27 | 2537, 2542 |  | 7 day week No holidays | 2517358 |
| 2544 | 37300.38400.38500.73000 | **52th Floor** | 46d | 2029-05-25 | 2029-07-09 |  | start no earlier than 2029-05-25 | 7 day week No holidays | 2507918 |
| 2545 | 37300.38400.38500.73000.367500 | 52nd Flr -Blockwork | 10d | 2029-05-25 | 2029-06-03 | 2539 |  | 7 day week No holidays | 2517368 |
| 2546 | 37300.38400.38500.73000.367600 | 52nd Flr -Concealed electrical conduiting | 9d | 2029-06-04 | 2029-06-12 | 2540, 2545 |  | 7 day week No holidays | 2517378 |
| 2547 | 37300.38400.38500.73000.367700 | 52nd Flr -Backcoat Plaster | 8d | 2029-06-04 | 2029-06-11 | 2541, 2545 |  | 7 day week No holidays | 2517388 |
| 2548 | 37300.38400.38500.73000.367800 | 52nd Flr -Concealed Plumbing | 10d | 2029-06-12 | 2029-06-21 | 2542, 2547 |  | 7 day week No holidays | 2517398 |
| 2549 | 37300.38400.38500.73000.367900 | 52nd Flr -Waterproofing Work | 12d | 2029-06-28 | 2029-07-09 | 2543, 2548 |  | 7 day week No holidays | 2517408 |

| ID | WBS | Task | Duration | Start | Finish | Predecessors | Constraint | Calendar | Unique_Task_ID |
| --- | --- | --- | --- | --- | --- | --- | --- | --- | --- |
| 2550 | 37300.38400.75700 | **Terrace floor - Civil Work** | 73d | 2029-06-04 | 2029-08-15 |  | start no earlier than 2029-06-04 | 7 day week No holidays | 2507358 |
| 2551 | 37300.38400.75700.210600 | Terrace floor - Blockwork | 10d | 2029-06-04 | 2029-06-13 | 2545 |  | 7 day week No holidays | 2509048 |
| 2552 | 37300.38400.75700.210700 | Terrace floor - Concealed electrical conduiting | 9d | 2029-06-14 | 2029-06-22 | 2551 |  | 7 day week No holidays | 2509058 |
| 2553 | 37300.38400.75700.210800 | Terrace floor - Backcoat Plaster | 8d | 2029-06-14 | 2029-06-21 | 2551 |  | 7 day week No holidays | 2509068 |
| 2554 | 37300.38400.75700.210900 | Terrace floor - Concealed Plumbing | 10d | 2029-06-22 | 2029-07-01 | 2553 |  | 7 day week No holidays | 2509078 |
| 2555 | 37300.38400.75700.211000 | Terrace floor - Waterproofing Work | 45d | 2029-07-02 | 2029-08-15 | 2554 |  | 7 day week No holidays | 2509088 |
| 2556 | 37300.38400.75800 | **Basement-2 - Civil Work** | 75d | 2028-10-25 | 2029-01-07 |  | start no earlier than 2028-10-25 | 7 day week No holidays | 2507368 |
| 2557 | 37300.38400.75800.211100 | Basement-2 Blockwork | 15d | 2028-10-25 | 2028-11-08 | 2455 |  | 7 day week No holidays | 2509098 |
| 2558 | 37300.38400.75800.211200 | Basement-2 Concealed electrical conduiting | 15d | 2028-11-09 | 2028-11-23 | 2557 |  | 7 day week No holidays | 2509108 |
| 2559 | 37300.38400.75800.211300 | Basement-2 Backcoat Plaster | 15d | 2028-11-24 | 2028-12-08 | 2558 |  | 7 day week No holidays | 2509118 |
| 2560 | 37300.38400.75800.211400 | Basement-2 Concealed Plumbing | 15d | 2028-12-09 | 2028-12-23 | 2559 |  | 7 day week No holidays | 2509128 |
| 2561 | 37300.38400.75800.211500 | Basement-2 Waterproofing Work | 15d | 2028-12-24 | 2029-01-07 | 2560 |  | 7 day week No holidays | 2509138 |
| 2562 | 37300.38400.75900 | **Basement 1 - Civil Work** | 75d | 2028-11-09 | 2029-01-22 |  | start no earlier than 2028-11-09 | 7 day week No holidays | 2507378 |
| 2563 | 37300.38400.75900.211600 | Basement 1 - Blockwork | 15d | 2028-11-09 | 2028-11-23 | 2557 |  | 7 day week No holidays | 2509148 |
| 2564 | 37300.38400.75900.211700 | Basement 1 - Concealed electrical conduiting | 15d | 2028-11-24 | 2028-12-08 | 2558, 2563 |  | 7 day week No holidays | 2509158 |
| 2565 | 37300.38400.75900.211800 | Basement 1 - Backcoat Plaster | 15d | 2028-12-09 | 2028-12-23 | 2559, 2563 |  | 7 day week No holidays | 2509168 |
| 2566 | 37300.38400.75900.211900 | Basement 1 - Concealed Plumbing | 15d | 2028-12-24 | 2029-01-07 | 2560, 2565 |  | 7 day week No holidays | 2509178 |
| 2567 | 37300.38400.75900.212000 | Basement 1 - Waterproofing Work | 15d | 2029-01-08 | 2029-01-22 | 2561, 2566 |  | 7 day week No holidays | 2509188 |
| 2568 | 37300.38400.76000 | **GF - Civil Work** | 75d | 2028-11-24 | 2029-02-06 |  | start no earlier than 2028-11-24 | 7 day week No holidays | 2507388 |
| 2569 | 37300.38400.76000.212100 | Blockwork | 15d | 2028-11-24 | 2028-12-08 | 2563 |  | 7 day week No holidays | 2509198 |
| 2570 | 37300.38400.76000.212200 | Concealed electrical conduiting | 15d | 2028-12-09 | 2028-12-23 | 2564, 2569 |  | 7 day week No holidays | 2509208 |
| 2571 | 37300.38400.76000.212300 | Backcoat Plaster | 15d | 2028-12-24 | 2029-01-07 | 2565, 2569 |  | 7 day week No holidays | 2509218 |
| 2572 | 37300.38400.76000.212400 | Concealed Plumbing | 15d | 2029-01-08 | 2029-01-22 | 2566, 2571 |  | 7 day week No holidays | 2509228 |
| 2573 | 37300.38400.76000.212500 | Waterproofing Work | 15d | 2029-01-23 | 2029-02-06 | 2567, 2572 |  | 7 day week No holidays | 2509238 |

| ID | WBS | Task | Duration | Start | Finish | Predecessors | Constraint | Calendar | Unique_Task_ID |
| --- | --- | --- | --- | --- | --- | --- | --- | --- | --- |
| 2574 | 37300.38400.76100 | **Podium-1 - Civil Work** | 75d | 2028-12-09 | 2029-02-21 |  | start no earlier than 2028-12-09 | 7 day week No holidays | 2507398 |
| 2575 | 37300.38400.76100.212600 | Podium-1 -Blockwork | 15d | 2028-12-09 | 2028-12-23 | 2569 |  | 7 day week No holidays | 2509248 |
| 2576 | 37300.38400.76100.212700 | Podium-1 -Concealed electrical conduiting | 20d | 2028-12-24 | 2029-01-12 | 2570, 2575 |  | 7 day week No holidays | 2509258 |
| 2577 | 37300.38400.76100.212800 | Podium-1 -Backcoat Plaster | 15d | 2029-01-08 | 2029-01-22 | 2571, 2575 |  | 7 day week No holidays | 2509268 |
| 2578 | 37300.38400.76100.212900 | Podium-1 -Concealed Plumbing | 15d | 2029-01-23 | 2029-02-06 | 2572, 2577 |  | 7 day week No holidays | 2509278 |
| 2579 | 37300.38400.76100.213000 | Podium-1 -Waterproofing Work | 15d | 2029-02-07 | 2029-02-21 | 2573, 2578 |  | 7 day week No holidays | 2509288 |
| 2580 | 37300.38400.76200 | **Podium-2 - Civil Work** | 75d | 2028-12-24 | 2029-03-08 |  | start no earlier than 2028-12-24 | 7 day week No holidays | 2507408 |
| 2581 | 37300.38400.76200.213100 | Podium-2 -Blockwork | 15d | 2028-12-24 | 2029-01-07 | 2575 |  | 7 day week No holidays | 2509298 |
| 2582 | 37300.38400.76200.213200 | Podium-2 -Concealed electrical conduiting | 10d | 2029-01-13 | 2029-01-22 | 2576, 2581 |  | 7 day week No holidays | 2509308 |
| 2583 | 37300.38400.76200.213300 | Podium-2 -Backcoat Plaster | 15d | 2029-01-23 | 2029-02-06 | 2577, 2581 |  | 7 day week No holidays | 2509318 |
| 2584 | 37300.38400.76200.213400 | Podium-2 -Concealed Plumbing | 15d | 2029-02-07 | 2029-02-21 | 2578, 2583 |  | 7 day week No holidays | 2509328 |
| 2585 | 37300.38400.76200.213500 | Podium-2 -Waterproofing Work | 15d | 2029-02-22 | 2029-03-08 | 2579, 2584 |  | 7 day week No holidays | 2509338 |
| 2586 | 37300.38400.76300 | **Podium-3 - Civil Work** | 75d | 2029-01-08 | 2029-03-23 |  | start no earlier than 2029-01-08 | 7 day week No holidays | 2507418 |
| 2587 | 37300.38400.76300.213600 | Podium-3 -Blockwork | 15d | 2029-01-08 | 2029-01-22 | 2581 |  | 7 day week No holidays | 2509348 |
| 2588 | 37300.38400.76300.213700 | Podium-3 -Concealed electrical conduiting | 10d | 2029-01-23 | 2029-02-01 | 2582, 2587 |  | 7 day week No holidays | 2509358 |
| 2589 | 37300.38400.76300.213800 | Podium-3 -Backcoat Plaster | 15d | 2029-02-07 | 2029-02-21 | 2583, 2587 |  | 7 day week No holidays | 2509368 |
| 2590 | 37300.38400.76300.213900 | Podium-3 -Concealed Plumbing | 15d | 2029-02-22 | 2029-03-08 | 2584, 2589 |  | 7 day week No holidays | 2509378 |
| 2591 | 37300.38400.76300.214000 | Podium-3 -Waterproofing Work | 15d | 2029-03-09 | 2029-03-23 | 2585, 2590 |  | 7 day week No holidays | 2509388 |
| 2592 | 37300.38400.76400 | **Podium-4 - Civil Work** | 75d | 2029-01-23 | 2029-04-07 |  | start no earlier than 2029-01-23 | 7 day week No holidays | 2507428 |
| 2593 | 37300.38400.76400.214100 | Podium-4 - Blockwork | 15d | 2029-01-23 | 2029-02-06 | 2587 |  | 7 day week No holidays | 2509398 |
| 2594 | 37300.38400.76400.214200 | Podium-4 -Concealed electrical conduiting | 10d | 2029-02-07 | 2029-02-16 | 2588, 2593 |  | 7 day week No holidays | 2509408 |
| 2595 | 37300.38400.76400.214300 | Podium-4 -Backcoat Plaster | 15d | 2029-02-22 | 2029-03-08 | 2589, 2593 |  | 7 day week No holidays | 2509418 |
| 2596 | 37300.38400.76400.214400 | Podium-4 -Concealed Plumbing | 15d | 2029-03-09 | 2029-03-23 | 2590, 2595 |  | 7 day week No holidays | 2509428 |
| 2597 | 37300.38400.76400.214500 | Podium-4 -Waterproofing Work | 15d | 2029-03-24 | 2029-04-07 | 2591, 2596 |  | 7 day week No holidays | 2509438 |

| ID | WBS | Task | Duration | Start | Finish | Predecessors | Constraint | Calendar | Unique_Task_ID |
| --- | --- | --- | --- | --- | --- | --- | --- | --- | --- |
| 2598 | 37300.38400.76500 | **Podium-5 - Civil Work** | 75d | 2029-02-07 | 2029-04-22 |  | start no earlier than 2029-02-07 | 7 day week No holidays | 2507438 |
| 2599 | 37300.38400.76500.214600 | Podium-5 -Blockwork | 15d | 2029-02-07 | 2029-02-21 | 2593 |  | 7 day week No holidays | 2509448 |
| 2600 | 37300.38400.76500.214700 | Podium-5 -Concealed electrical conduiting | 10d | 2029-02-22 | 2029-03-03 | 2594, 2599 |  | 7 day week No holidays | 2509458 |
| 2601 | 37300.38400.76500.214800 | Podium-5 -Backcoat Plaster | 15d | 2029-03-09 | 2029-03-23 | 2595, 2599 |  | 7 day week No holidays | 2509468 |
| 2602 | 37300.38400.76500.214900 | Podium-5 -Concealed Plumbing | 15d | 2029-03-24 | 2029-04-07 | 2596, 2601 |  | 7 day week No holidays | 2509478 |
| 2603 | 37300.38400.76500.215000 | Podium-5 -Waterproofing Work | 15d | 2029-04-08 | 2029-04-22 | 2597, 2602 |  | 7 day week No holidays | 2509488 |
| 2604 | 37300.38400.76600 | **Podium-6 - Civil Work** | 75d | 2029-02-22 | 2029-05-07 |  | start no earlier than 2029-02-22 | 7 day week No holidays | 2507448 |
| 2605 | 37300.38400.76600.215100 | Podium-6 -Blockwork | 15d | 2029-02-22 | 2029-03-08 | 2599 |  | 7 day week No holidays | 2509498 |
| 2606 | 37300.38400.76600.215200 | Podium-6 -Concealed electrical conduiting | 10d | 2029-03-09 | 2029-03-18 | 2600, 2605 |  | 7 day week No holidays | 2509508 |
| 2607 | 37300.38400.76600.215300 | Podium-6 -Backcoat Plaster | 15d | 2029-03-24 | 2029-04-07 | 2601, 2605 |  | 7 day week No holidays | 2509518 |
| 2608 | 37300.38400.76600.215400 | Podium-6 -Concealed Plumbing | 15d | 2029-04-08 | 2029-04-22 | 2602, 2607 |  | 7 day week No holidays | 2509528 |
| 2609 | 37300.38400.76600.215500 | Podium-6 -Waterproofing Work | 15d | 2029-04-23 | 2029-05-07 | 2603, 2608 |  | 7 day week No holidays | 2509538 |
| 2610 | 37300.38400.76700 | **Podium-7 - Service Floor** | 75d | 2029-03-09 | 2029-05-22 |  | start no earlier than 2029-03-09 | 7 day week No holidays | 2507458 |
| 2611 | 37300.38400.76700.215600 | Podium-7 -Blockwork | 15d | 2029-03-09 | 2029-03-23 | 2605 |  | 7 day week No holidays | 2509548 |
| 2612 | 37300.38400.76700.215700 | Podium-7 -Concealed electrical conduiting | 10d | 2029-03-24 | 2029-04-02 | 2606, 2611 |  | 7 day week No holidays | 2509558 |
| 2613 | 37300.38400.76700.215800 | Podium-7 -Backcoat Plaster | 15d | 2029-04-08 | 2029-04-22 | 2607, 2611 |  | 7 day week No holidays | 2509568 |
| 2614 | 37300.38400.76700.215900 | Podium-7 -Concealed Plumbing | 15d | 2029-04-23 | 2029-05-07 | 2608, 2613 |  | 7 day week No holidays | 2509578 |
| 2615 | 37300.38400.76700.216000 | Podium-7 -Waterproofing Work | 15d | 2029-05-08 | 2029-05-22 | 2609, 2614 |  | 7 day week No holidays | 2509588 |
| 2616 | 37300.38400.76800 | **Podium-8 - Civil Work** | 75d | 2029-03-24 | 2029-06-06 |  | start no earlier than 2029-03-24 | 7 day week No holidays | 2507468 |
| 2617 | 37300.38400.76800.216100 | Podium-8 -Blockwork | 15d | 2029-03-24 | 2029-04-07 | 2611 |  | 7 day week No holidays | 2509598 |
| 2618 | 37300.38400.76800.216200 | Podium-8 -Concealed electrical conduiting | 10d | 2029-04-08 | 2029-04-17 | 2612, 2617 |  | 7 day week No holidays | 2509608 |
| 2619 | 37300.38400.76800.216300 | Podium-8 -Backcoat Plaster | 15d | 2029-04-23 | 2029-05-07 | 2613, 2617 |  | 7 day week No holidays | 2509618 |
| 2620 | 37300.38400.76800.216400 | Podium-8 -Concealed Plumbing | 15d | 2029-05-08 | 2029-05-22 | 2614, 2619 |  | 7 day week No holidays | 2509628 |
| 2621 | 37300.38400.76800.216500 | Podium--8 -Waterproofing Work | 15d | 2029-05-23 | 2029-06-06 | 2615, 2620 |  | 7 day week No holidays | 2509638 |

| ID | WBS | Task | Duration | Start | Finish | Predecessors | Constraint | Calendar | Unique_Task_ID |
| --- | --- | --- | --- | --- | --- | --- | --- | --- | --- |
| 2622 | 37300.38100 | **Internal Finishing & Services** | 1097d | 2026-09-17 | 2029-09-17 |  | start no earlier than 2026-09-17 | 7 day week No holidays | 2505918 |
| 2623 | 37300.38100.78200 | **Windows mobilization** | 103d | 2026-09-17 | 2027-01-14 |  | start no earlier than 2026-09-17 | Indian Calendar | 7562303 |
| 2624 | 37300.38100.78200.216600 | Aluminium Windows-Order Date | 1d | 2026-09-17 | 2026-09-17 | 2625SS |  | 7 day week No holidays | 7562323 |
| 2625 | 37300.38100.78200.216700 | Aluminium Windows-Shop Drawing Approval Date | 60d | 2026-09-17 | 2026-11-15 | 2626SS |  | 7 day week No holidays | 7562313 |
| 2626 | 37300.38100.78200.216800 | Aluminium Windows-Start of supply for first lot date | 120d | 2026-09-17 | 2027-01-14 | 2635FF |  | 7 day week No holidays | 7562333 |
| 2627 | 37300.38100.38200 | **Flat - Internal finishing & Services** | 1065d | 2026-10-19 | 2029-09-17 |  | start no earlier than 2026-10-19 | 7 day week No holidays | 2505928 |
| 2628 | 37300.38100.38200.46700 | **9th Floor** | 194d | 2026-10-19 | 2027-04-30 |  | start no earlier than 2026-10-19 | 7 day week No holidays | 2505998 |
| 2629 | 37300.38100.38200.46700.368000 | 9th flr-Gypsum Plaster | 14d | 2026-10-19 | 2026-11-01 | 2286, 2304 |  | 7 day week No holidays | 2518418 |
| 2630 | 37300.38100.38200.46700.368100 | 9th flr-Kitchen Platform | 8d | 2026-11-02 | 2026-11-09 | 2629 |  | 7 day week No holidays | 2518428 |
| 2631 | 37300.38100.38200.46700.368200 | 9th flr-Toilet dado & flooring | 14d | 2026-12-04 | 2026-12-17 | 2290, 2314 |  | 7 day week No holidays | 2518438 |
| 2632 | 37300.38100.38200.46700.368300 | 9th flr-Fire sprinkler pipe | 12d | 2026-11-02 | 2026-11-13 | 2629 |  | 7 day week No holidays | 2518448 |
| 2633 | 37300.38100.38200.46700.368400 | 9th flr-Flat flooring | 14d | 2026-12-18 | 2026-12-31 | 2631 |  | 7 day week No holidays | 2518458 |
| 2634 | 37300.38100.38200.46700.368500 | 9th flr-Main door fixing & frame fixing | 14d | 2027-03-26 | 2027-04-08 | 2633, 2711 |  | 7 day week No holidays | 2518468 |
| 2635 | 37300.38100.38200.46700.368600 | 9th flr-Window fixing | 14d | 2027-01-01 | 2027-01-14 | 2633 |  | 7 day week No holidays | 2518478 |
| 2636 | 37300.38100.38200.46700.368700 | 9th flr-Railing Fixing | 14d | 2027-01-01 | 2027-01-14 | 2633 |  | 7 day week No holidays | 2518488 |
| 2637 | 37300.38100.38200.46700.368800 | 9th flr-Internal painting - putty / primer application | 14d | 2027-01-01 | 2027-01-14 | 2633 |  | 7 day week No holidays | 2518498 |
| 2638 | 37300.38100.38200.46700.368900 | 9th flr-Flat electrical wiring | 12d | 2027-04-09 | 2027-04-20 | 2634 |  | 7 day week No holidays | 2518508 |
| 2639 | 37300.38100.38200.46700.369000 | 9th flr-Internal painting | 10d | 2027-04-21 | 2027-04-30 | 2638 |  | 7 day week No holidays | 2518518 |
| 2640 | 37300.38100.38200.46700.369100 | 9th flr-Internal shutter fixing | 12d | 2027-01-15 | 2027-01-26 | 2637 |  | 7 day week No holidays | 2518528 |
| 2641 | 37300.38100.38200.46800 | **10th Floor** | 192d | 2026-11-04 | 2027-05-14 |  | start no earlier than 2026-11-04 | 7 day week No holidays | 2506008 |
| 2642 | 37300.38100.38200.46800.369200 | 10th flr-Gypsum Plaster | 14d | 2026-11-04 | 2026-11-17 | 2292, 2310, 2629 |  | 7 day week No holidays | 2518538 |
| 2643 | 37300.38100.38200.46800.369300 | 10th flr-Kitchen Platform | 8d | 2026-11-18 | 2026-11-25 | 2630, 2642 |  | 7 day week No holidays | 2518548 |
| 2644 | 37300.38100.38200.46800.369400 | 10th flr-Toilet dado & flooring | 14d | 2026-12-18 | 2026-12-31 | 2296, 2631 |  | 7 day week No holidays | 2518558 |
| 2645 | 37300.38100.38200.46800.369500 | 10th flr-Fire sprinkler pipe | 12d | 2026-11-18 | 2026-11-29 | 2632, 2642 |  | 7 day week No holidays | 2518568 |
| 2646 | 37300.38100.38200.46800.369600 | 10th flr-Flat flooring | 14d | 2027-01-01 | 2027-01-14 | 2633, 2644 |  | 7 day week No holidays | 2518578 |
| 2647 | 37300.38100.38200.46800.369700 | 10th flr-Main door fixing & frame fixing | 14d | 2027-04-09 | 2027-04-22 | 2634, 2646 |  | 7 day week No holidays | 2518588 |
| 2648 | 37300.38100.38200.46800.369800 | 10th flr-Window fixing | 14d | 2027-01-15 | 2027-01-28 | 2635, 2646 |  | 7 day week No holidays | 2518598 |
| 2649 | 37300.38100.38200.46800.369900 | 10th flr-Railing Fixing | 14d | 2027-01-15 | 2027-01-28 | 2636, 2646 |  | 7 day week No holidays | 2518608 |
| 2650 | 37300.38100.38200.46800.370000 | 10th flr-Internal painting - putty / primer application | 14d | 2027-01-15 | 2027-01-28 | 2637, 2646 |  | 7 day week No holidays | 2518618 |
| 2651 | 37300.38100.38200.46800.370100 | 10th flr-Flat electrical wiring | 12d | 2027-04-23 | 2027-05-04 | 2638, 2647 |  | 7 day week No holidays | 2518628 |
| 2652 | 37300.38100.38200.46800.370200 | 10th flr-Internal painting | 10d | 2027-05-05 | 2027-05-14 | 2639, 2651 |  | 7 day week No holidays | 2518638 |
| 2653 | 37300.38100.38200.46800.370300 | 10th flr-Internal shutter fixing | 12d | 2027-01-29 | 2027-02-09 | 2640, 2650 |  | 7 day week No holidays | 2518648 |

| ID | WBS | Task | Duration | Start | Finish | Predecessors | Constraint | Calendar | Unique_Task_ID |
| --- | --- | --- | --- | --- | --- | --- | --- | --- | --- |
| 2654 | 37300.38100.38200.46900 | **11th Floor** | 190d | 2026-11-20 | 2027-05-28 |  | start no earlier than 2026-11-20 | 7 day week No holidays | 2506018 |
| 2655 | 37300.38100.38200.46900.370400 | 11th flr-Gypsum Plaster | 14d | 2026-11-20 | 2026-12-03 | 2298, 2316, 2642 |  | 7 day week No holidays | 2518658 |
| 2656 | 37300.38100.38200.46900.370500 | 11th flr-Kitchen Platform | 8d | 2026-12-04 | 2026-12-11 | 2643, 2655 |  | 7 day week No holidays | 2518668 |
| 2657 | 37300.38100.38200.46900.370600 | 11th flr-Toilet dado & flooring | 14d | 2027-01-01 | 2027-01-14 | 2302, 2644 |  | 7 day week No holidays | 2518678 |
| 2658 | 37300.38100.38200.46900.370700 | 11th flr-Fire sprinkler pipe | 12d | 2026-12-04 | 2026-12-15 | 2645, 2655 |  | 7 day week No holidays | 2518688 |
| 2659 | 37300.38100.38200.46900.370800 | 11th flr-Flat flooring | 14d | 2027-01-15 | 2027-01-28 | 2646, 2657 |  | 7 day week No holidays | 2518698 |
| 2660 | 37300.38100.38200.46900.370900 | 11th flr-Main door fixing & frame fixing | 14d | 2027-04-23 | 2027-05-06 | 2647, 2659 |  | 7 day week No holidays | 2518708 |
| 2661 | 37300.38100.38200.46900.371000 | 11th flr-Window fixing | 14d | 2027-01-29 | 2027-02-11 | 2648, 2659 |  | 7 day week No holidays | 2518718 |
| 2662 | 37300.38100.38200.46900.371100 | 11th flr-Railing Fixing | 14d | 2027-01-29 | 2027-02-11 | 2649, 2659 |  | 7 day week No holidays | 2518728 |
| 2663 | 37300.38100.38200.46900.371200 | 11th flr-Internal painting - putty / primer application | 14d | 2027-01-29 | 2027-02-11 | 2650, 2659 |  | 7 day week No holidays | 2518738 |
| 2664 | 37300.38100.38200.46900.371300 | 11th flr-Flat electrical wiring | 12d | 2027-05-07 | 2027-05-18 | 2651, 2660 |  | 7 day week No holidays | 2518748 |
| 2665 | 37300.38100.38200.46900.371400 | 11th flr-Internal painting | 10d | 2027-05-19 | 2027-05-28 | 2652, 2664 |  | 7 day week No holidays | 2518758 |
| 2666 | 37300.38100.38200.46900.371500 | 11th flr-Internal shutter fixing | 12d | 2027-02-12 | 2027-02-23 | 2653, 2663 |  | 7 day week No holidays | 2518768 |
| 2667 | 37300.38100.38200.47000 | **12th Floor** | 188d | 2026-12-06 | 2027-06-11 |  | start no earlier than 2026-12-06 | 7 day week No holidays | 2506028 |
| 2668 | 37300.38100.38200.47000.371600 | 12th flr-Gypsum Plaster | 14d | 2026-12-06 | 2026-12-19 | 2304, 2322, 2655 |  | 7 day week No holidays | 2518778 |
| 2669 | 37300.38100.38200.47000.371700 | 12th flr-Kitchen Platform | 8d | 2026-12-20 | 2026-12-27 | 2656, 2668 |  | 7 day week No holidays | 2518788 |
| 2670 | 37300.38100.38200.47000.371800 | 12th flr-Toilet dado & flooring | 14d | 2027-01-15 | 2027-01-28 | 2308, 2657 |  | 7 day week No holidays | 2518798 |
| 2671 | 37300.38100.38200.47000.371900 | 12th flr-Fire sprinkler pipe | 12d | 2026-12-20 | 2026-12-31 | 2658, 2668 |  | 7 day week No holidays | 2518808 |
| 2672 | 37300.38100.38200.47000.372000 | 12th flr-Flat flooring | 14d | 2027-01-29 | 2027-02-11 | 2659, 2670 |  | 7 day week No holidays | 2518818 |
| 2673 | 37300.38100.38200.47000.372100 | 12th flr-Main door fixing & frame fixing | 14d | 2027-05-07 | 2027-05-20 | 2660, 2672 |  | 7 day week No holidays | 2518828 |
| 2674 | 37300.38100.38200.47000.372200 | 12th flr-Window fixing | 14d | 2027-02-12 | 2027-02-25 | 2661, 2672 |  | 7 day week No holidays | 2518838 |
| 2675 | 37300.38100.38200.47000.372300 | 12th flr-Railing Fixing | 14d | 2027-02-12 | 2027-02-25 | 2662, 2672 |  | 7 day week No holidays | 2518848 |
| 2676 | 37300.38100.38200.47000.372400 | 12th flr-Internal painting - putty / primer application | 14d | 2027-02-12 | 2027-02-25 | 2663, 2672 |  | 7 day week No holidays | 2518858 |
| 2677 | 37300.38100.38200.47000.372500 | 12th flr-Flat electrical wiring | 12d | 2027-05-21 | 2027-06-01 | 2664, 2673 |  | 7 day week No holidays | 2518868 |
| 2678 | 37300.38100.38200.47000.372600 | 12th flr-Internal painting | 10d | 2027-06-02 | 2027-06-11 | 2665, 2677 |  | 7 day week No holidays | 2518878 |
| 2679 | 37300.38100.38200.47000.372700 | 12th flr-Internal shutter fixing | 12d | 2027-02-26 | 2027-03-09 | 2666, 2676 |  | 7 day week No holidays | 2518888 |

| ID | WBS | Task | Duration | Start | Finish | Predecessors | Constraint | Calendar | Unique_Task_ID |
| --- | --- | --- | --- | --- | --- | --- | --- | --- | --- |
| 2680 | 37300.38100.38200.47100 | **13th Floor** | 186d | 2026-12-22 | 2027-06-25 |  | start no earlier than 2026-12-22 | 7 day week No holidays | 2506038 |
| 2681 | 37300.38100.38200.47100.372800 | 13th flr-Gypsum Plaster | 14d | 2026-12-22 | 2027-01-04 | 2310, 2328, 2668 |  | 7 day week No holidays | 2518898 |
| 2682 | 37300.38100.38200.47100.372900 | 13th flr-Kitchen Platform | 8d | 2027-01-05 | 2027-01-12 | 2669, 2681 |  | 7 day week No holidays | 2518908 |
| 2683 | 37300.38100.38200.47100.373000 | 13th flr-Toilet dado & flooring | 14d | 2027-01-29 | 2027-02-11 | 2314, 2670 |  | 7 day week No holidays | 2518918 |
| 2684 | 37300.38100.38200.47100.373100 | 13th flr-Fire sprinkler pipe | 12d | 2027-01-05 | 2027-01-16 | 2671, 2681 |  | 7 day week No holidays | 2518928 |
| 2685 | 37300.38100.38200.47100.373200 | 13th flr-Flat flooring | 14d | 2027-02-12 | 2027-02-25 | 2672, 2683 |  | 7 day week No holidays | 2518938 |
| 2686 | 37300.38100.38200.47100.373300 | 13th flr-Main door fixing & frame fixing | 14d | 2027-05-21 | 2027-06-03 | 2673, 2685 |  | 7 day week No holidays | 2518948 |
| 2687 | 37300.38100.38200.47100.373400 | 13th flr-Window fixing | 14d | 2027-02-26 | 2027-03-11 | 2674, 2685 |  | 7 day week No holidays | 2518958 |
| 2688 | 37300.38100.38200.47100.373500 | 13th flr-Railing Fixing | 14d | 2027-02-26 | 2027-03-11 | 2675, 2685 |  | 7 day week No holidays | 2518968 |
| 2689 | 37300.38100.38200.47100.373600 | 13th flr-Internal painting - putty / primer application | 14d | 2027-02-26 | 2027-03-11 | 2676, 2685 |  | 7 day week No holidays | 2518978 |
| 2690 | 37300.38100.38200.47100.373700 | 13th flr-Flat electrical wiring | 12d | 2027-06-04 | 2027-06-15 | 2677, 2686 |  | 7 day week No holidays | 2518988 |
| 2691 | 37300.38100.38200.47100.373800 | 13th flr-Internal painting | 10d | 2027-06-16 | 2027-06-25 | 2678, 2690 |  | 7 day week No holidays | 2518998 |
| 2692 | 37300.38100.38200.47100.373900 | 13th flr-Internal shutter fixing | 12d | 2027-03-12 | 2027-03-23 | 2679, 2689 |  | 7 day week No holidays | 2519008 |
| 2693 | 37300.38100.38200.47200 | **14th Floor** | 184d | 2027-01-07 | 2027-07-09 |  | start no earlier than 2027-01-07 | 7 day week No holidays | 2506048 |
| 2694 | 37300.38100.38200.47200.374000 | 14th flr-Gypsum Plaster | 14d | 2027-01-07 | 2027-01-20 | 2316, 2334, 2681 |  | 7 day week No holidays | 2519018 |
| 2695 | 37300.38100.38200.47200.374100 | 14th flr-Kitchen Platform | 8d | 2027-01-21 | 2027-01-28 | 2682, 2694 |  | 7 day week No holidays | 2519028 |
| 2696 | 37300.38100.38200.47200.374200 | 14th flr-Toilet dado & flooring | 14d | 2027-02-12 | 2027-02-25 | 2320, 2683 |  | 7 day week No holidays | 2519038 |
| 2697 | 37300.38100.38200.47200.374300 | 14th flr-Fire sprinkler pipe | 12d | 2027-01-21 | 2027-02-01 | 2684, 2694 |  | 7 day week No holidays | 2519048 |
| 2698 | 37300.38100.38200.47200.374400 | 14th flr-Flat flooring | 14d | 2027-02-26 | 2027-03-11 | 2685, 2696 |  | 7 day week No holidays | 2519058 |
| 2699 | 37300.38100.38200.47200.374500 | 14th flr-Main door fixing & frame fixing | 14d | 2027-06-04 | 2027-06-17 | 2686, 2698 |  | 7 day week No holidays | 2519068 |
| 2700 | 37300.38100.38200.47200.374600 | 14th flr-Window fixing | 14d | 2027-03-12 | 2027-03-25 | 2687, 2698 |  | 7 day week No holidays | 2519078 |
| 2701 | 37300.38100.38200.47200.374700 | 14th flr-Railing Fixing | 14d | 2027-03-12 | 2027-03-25 | 2688, 2698 |  | 7 day week No holidays | 2519088 |
| 2702 | 37300.38100.38200.47200.374800 | 14th flr-Internal painting - putty / primer application | 14d | 2027-03-12 | 2027-03-25 | 2689, 2698 |  | 7 day week No holidays | 2519098 |
| 2703 | 37300.38100.38200.47200.374900 | 14th flr-Flat electrical wiring | 12d | 2027-06-18 | 2027-06-29 | 2690, 2699 |  | 7 day week No holidays | 2519108 |
| 2704 | 37300.38100.38200.47200.375000 | 14th flr-Internal painting | 10d | 2027-06-30 | 2027-07-09 | 2691, 2703 |  | 7 day week No holidays | 2519118 |
| 2705 | 37300.38100.38200.47200.375100 | 14th flr-Internal shutter fixing | 12d | 2027-03-26 | 2027-04-06 | 2692, 2702 |  | 7 day week No holidays | 2519128 |

| ID | WBS | Task | Duration | Start | Finish | Predecessors | Constraint | Calendar | Unique_Task_ID |
| --- | --- | --- | --- | --- | --- | --- | --- | --- | --- |
| 2706 | 37300.38100.38200.47300 | **15th Floor** | 182d | 2027-01-23 | 2027-07-23 |  | start no earlier than 2027-01-23 | 7 day week No holidays | 2506058 |
| 2707 | 37300.38100.38200.47300.375200 | 15th flr-Gypsum Plaster | 14d | 2027-01-23 | 2027-02-05 | 2322, 2340, 2694 |  | 7 day week No holidays | 2519138 |
| 2708 | 37300.38100.38200.47300.375300 | 15th flr-Kitchen Platform | 8d | 2027-02-06 | 2027-02-13 | 2695, 2707 |  | 7 day week No holidays | 2519148 |
| 2709 | 37300.38100.38200.47300.375400 | 15th flr-Toilet dado & flooring | 14d | 2027-02-26 | 2027-03-11 | 2326, 2696 |  | 7 day week No holidays | 2519158 |
| 2710 | 37300.38100.38200.47300.375500 | 15th flr-Fire sprinkler pipe | 12d | 2027-02-06 | 2027-02-17 | 2697, 2707 |  | 7 day week No holidays | 2519168 |
| 2711 | 37300.38100.38200.47300.375600 | 15th flr-Flat flooring | 14d | 2027-03-12 | 2027-03-25 | 2698, 2709 |  | 7 day week No holidays | 2519178 |
| 2712 | 37300.38100.38200.47300.375700 | 15th flr-Main door fixing & frame fixing | 14d | 2027-06-18 | 2027-07-01 | 2699, 2711 |  | 7 day week No holidays | 2519188 |
| 2713 | 37300.38100.38200.47300.375800 | 15th flr-Window fixing | 14d | 2027-03-26 | 2027-04-08 | 2700, 2711 |  | 7 day week No holidays | 2519198 |
| 2714 | 37300.38100.38200.47300.375900 | 15th flr-Railing Fixing | 14d | 2027-03-26 | 2027-04-08 | 2701, 2711 |  | 7 day week No holidays | 2519208 |
| 2715 | 37300.38100.38200.47300.376000 | 15th flr-Internal painting - putty / primer application | 14d | 2027-03-26 | 2027-04-08 | 2702, 2711 |  | 7 day week No holidays | 2519218 |
| 2716 | 37300.38100.38200.47300.376100 | 15th flr-Flat electrical wiring | 12d | 2027-07-02 | 2027-07-13 | 2703, 2712 |  | 7 day week No holidays | 2519228 |
| 2717 | 37300.38100.38200.47300.376200 | 15th flr-Internal painting | 10d | 2027-07-14 | 2027-07-23 | 2704, 2716 |  | 7 day week No holidays | 2519238 |
| 2718 | 37300.38100.38200.47300.376300 | 15th flr-Internal shutter fixing | 12d | 2027-04-09 | 2027-04-20 | 2705, 2715 |  | 7 day week No holidays | 2519248 |
| 2719 | 37300.38100.38200.47400 | **16th Floor** | 180d | 2027-02-08 | 2027-08-06 |  | start no earlier than 2027-02-08 | 7 day week No holidays | 2506068 |
| 2720 | 37300.38100.38200.47400.376400 | 16th flr-Gypsum Plaster | 14d | 2027-02-08 | 2027-02-21 | 2328, 2346, 2707 |  | 7 day week No holidays | 2519258 |
| 2721 | 37300.38100.38200.47400.376500 | 16th flr-Kitchen Platform | 8d | 2027-02-22 | 2027-03-01 | 2708, 2720 |  | 7 day week No holidays | 2519268 |
| 2722 | 37300.38100.38200.47400.376600 | 16th flr-Toilet dado & flooring | 14d | 2027-03-12 | 2027-03-25 | 2332, 2709 |  | 7 day week No holidays | 2519278 |
| 2723 | 37300.38100.38200.47400.376700 | 16th flr-Fire sprinkler pipe | 12d | 2027-02-22 | 2027-03-05 | 2710, 2720 |  | 7 day week No holidays | 2519288 |
| 2724 | 37300.38100.38200.47400.376800 | 16th flr-Flat flooring | 14d | 2027-03-26 | 2027-04-08 | 2711, 2722 |  | 7 day week No holidays | 2519298 |
| 2725 | 37300.38100.38200.47400.376900 | 16th flr-Main door fixing & frame fixing | 14d | 2027-07-02 | 2027-07-15 | 2712, 2724 |  | 7 day week No holidays | 2519308 |
| 2726 | 37300.38100.38200.47400.377000 | 16th flr-Window fixing | 14d | 2027-04-09 | 2027-04-22 | 2713, 2724 |  | 7 day week No holidays | 2519318 |
| 2727 | 37300.38100.38200.47400.377100 | 16th flr-Railing Fixing | 14d | 2027-04-09 | 2027-04-22 | 2714, 2724 |  | 7 day week No holidays | 2519328 |
| 2728 | 37300.38100.38200.47400.377200 | 16th flr-Internal painting - putty / primer application | 14d | 2027-04-09 | 2027-04-22 | 2715, 2724 |  | 7 day week No holidays | 2519338 |
| 2729 | 37300.38100.38200.47400.377300 | 16th flr-Flat electrical wiring | 12d | 2027-07-16 | 2027-07-27 | 2716, 2725 |  | 7 day week No holidays | 2519348 |
| 2730 | 37300.38100.38200.47400.377400 | 16th flr-Internal painting | 10d | 2027-07-28 | 2027-08-06 | 2717, 2729 |  | 7 day week No holidays | 2519358 |
| 2731 | 37300.38100.38200.47400.377500 | 16th flr-Internal shutter fixing | 12d | 2027-04-23 | 2027-05-04 | 2718, 2728 |  | 7 day week No holidays | 2519368 |

| ID | WBS | Task | Duration | Start | Finish | Predecessors | Constraint | Calendar | Unique_Task_ID |
| --- | --- | --- | --- | --- | --- | --- | --- | --- | --- |
| 2732 | 37300.38100.38200.47500 | **17th Floor** | 178d | 2027-02-24 | 2027-08-20 |  | start no earlier than 2027-02-24 | 7 day week No holidays | 2506078 |
| 2733 | 37300.38100.38200.47500.377600 | 17th flr-Gypsum Plaster | 14d | 2027-02-24 | 2027-03-09 | 2334, 2352, 2720 |  | 7 day week No holidays | 2519378 |
| 2734 | 37300.38100.38200.47500.377700 | 17th flr-Kitchen Platform | 8d | 2027-03-10 | 2027-03-17 | 2721, 2733 |  | 7 day week No holidays | 2519388 |
| 2735 | 37300.38100.38200.47500.377800 | 17th flr-Toilet dado & flooring | 14d | 2027-03-26 | 2027-04-08 | 2338, 2722 |  | 7 day week No holidays | 2519398 |
| 2736 | 37300.38100.38200.47500.377900 | 17th flr-Fire sprinkler pipe | 12d | 2027-03-10 | 2027-03-21 | 2723, 2733 |  | 7 day week No holidays | 2519408 |
| 2737 | 37300.38100.38200.47500.378000 | 17th flr-Flat flooring | 14d | 2027-04-09 | 2027-04-22 | 2724, 2735 |  | 7 day week No holidays | 2519418 |
| 2738 | 37300.38100.38200.47500.378100 | 17th flr-Main door fixing & frame fixing | 14d | 2027-07-16 | 2027-07-29 | 2725, 2737 |  | 7 day week No holidays | 2519428 |
| 2739 | 37300.38100.38200.47500.378200 | 17th flr-Window fixing | 14d | 2027-04-23 | 2027-05-06 | 2726, 2737 |  | 7 day week No holidays | 2519438 |
| 2740 | 37300.38100.38200.47500.378300 | 17th flr-Railing Fixing | 14d | 2027-04-23 | 2027-05-06 | 2727, 2737 |  | 7 day week No holidays | 2519448 |
| 2741 | 37300.38100.38200.47500.378400 | 17th flr-Internal painting - putty / primer application | 14d | 2027-04-23 | 2027-05-06 | 2728, 2737 |  | 7 day week No holidays | 2519458 |
| 2742 | 37300.38100.38200.47500.378500 | 17th flr-Flat electrical wiring | 12d | 2027-07-30 | 2027-08-10 | 2729, 2738 |  | 7 day week No holidays | 2519468 |
| 2743 | 37300.38100.38200.47500.378600 | 17th flr-Internal painting | 10d | 2027-08-11 | 2027-08-20 | 2730, 2742 |  | 7 day week No holidays | 2519478 |
| 2744 | 37300.38100.38200.47500.378700 | 17th flr-Internal shutter fixing | 12d | 2027-05-07 | 2027-05-18 | 2731, 2741 |  | 7 day week No holidays | 2519488 |
| 2745 | 37300.38100.38200.47600 | **18th Floor** | 176d | 2027-03-12 | 2027-09-03 |  | start no earlier than 2027-03-12 | 7 day week No holidays | 2506088 |
| 2746 | 37300.38100.38200.47600.378800 | 18th flr-Gypsum Plaster | 14d | 2027-03-12 | 2027-03-25 | 2340, 2358, 2733 |  | 7 day week No holidays | 2519498 |
| 2747 | 37300.38100.38200.47600.378900 | 18th flr-Kitchen Platform | 8d | 2027-03-26 | 2027-04-02 | 2734, 2746 |  | 7 day week No holidays | 2519508 |
| 2748 | 37300.38100.38200.47600.379000 | 18th flr-Toilet dado & flooring | 14d | 2027-04-09 | 2027-04-22 | 2344, 2735 |  | 7 day week No holidays | 2519518 |
| 2749 | 37300.38100.38200.47600.379100 | 18th flr-Fire sprinkler pipe | 12d | 2027-03-26 | 2027-04-06 | 2736, 2746 |  | 7 day week No holidays | 2519528 |
| 2750 | 37300.38100.38200.47600.379200 | 18th flr-Flat flooring | 14d | 2027-04-23 | 2027-05-06 | 2737, 2748 |  | 7 day week No holidays | 2519538 |
| 2751 | 37300.38100.38200.47600.379300 | 18th flr-Main door fixing & frame fixing | 14d | 2027-07-30 | 2027-08-12 | 2738, 2750 |  | 7 day week No holidays | 2519548 |
| 2752 | 37300.38100.38200.47600.379400 | 18th flr-Window fixing | 14d | 2027-05-07 | 2027-05-20 | 2739, 2750 |  | 7 day week No holidays | 2519558 |
| 2753 | 37300.38100.38200.47600.379500 | 18th flr-Railing Fixing | 14d | 2027-05-07 | 2027-05-20 | 2740, 2750 |  | 7 day week No holidays | 2519568 |
| 2754 | 37300.38100.38200.47600.379600 | 18th flr-Internal painting - putty / primer application | 14d | 2027-05-07 | 2027-05-20 | 2741, 2750 |  | 7 day week No holidays | 2519578 |
| 2755 | 37300.38100.38200.47600.379700 | 18th flr-Flat electrical wiring | 12d | 2027-08-13 | 2027-08-24 | 2742, 2751 |  | 7 day week No holidays | 2519588 |
| 2756 | 37300.38100.38200.47600.379800 | 18th flr-Internal painting | 10d | 2027-08-25 | 2027-09-03 | 2743, 2755 |  | 7 day week No holidays | 2519598 |
| 2757 | 37300.38100.38200.47600.379900 | 18th flr-Internal shutter fixing | 12d | 2027-05-21 | 2027-06-01 | 2744, 2754 |  | 7 day week No holidays | 2519608 |

| ID | WBS | Task | Duration | Start | Finish | Predecessors | Constraint | Calendar | Unique_Task_ID |
| --- | --- | --- | --- | --- | --- | --- | --- | --- | --- |
| 2758 | 37300.38100.38200.47700 | **19th Floor** | 174d | 2027-03-28 | 2027-09-17 |  | start no earlier than 2027-03-28 | 7 day week No holidays | 2506098 |
| 2759 | 37300.38100.38200.47700.380000 | 19th flr-Gypsum Plaster | 14d | 2027-03-28 | 2027-04-10 | 2346, 2364, 2746 |  | 7 day week No holidays | 2519618 |
| 2760 | 37300.38100.38200.47700.380100 | 19th flr-Kitchen Platform | 8d | 2027-04-11 | 2027-04-18 | 2747, 2759 |  | 7 day week No holidays | 2519628 |
| 2761 | 37300.38100.38200.47700.380200 | 19th flr-Toilet dado & flooring | 14d | 2027-04-23 | 2027-05-06 | 2350, 2748 |  | 7 day week No holidays | 2519638 |
| 2762 | 37300.38100.38200.47700.380300 | 19th flr-Fire sprinkler pipe | 12d | 2027-04-11 | 2027-04-22 | 2749, 2759 |  | 7 day week No holidays | 2519648 |
| 2763 | 37300.38100.38200.47700.380400 | 19th flr-Flat flooring | 14d | 2027-05-07 | 2027-05-20 | 2750, 2761 |  | 7 day week No holidays | 2519658 |
| 2764 | 37300.38100.38200.47700.380500 | 19th flr-Main door fixing & frame fixing | 14d | 2027-08-13 | 2027-08-26 | 2751, 2763 |  | 7 day week No holidays | 2519668 |
| 2765 | 37300.38100.38200.47700.380600 | 19th flr-Window fixing | 14d | 2027-05-21 | 2027-06-03 | 2752, 2763 |  | 7 day week No holidays | 2519678 |
| 2766 | 37300.38100.38200.47700.380700 | 19th flr-Railing Fixing | 14d | 2027-05-21 | 2027-06-03 | 2753, 2763 |  | 7 day week No holidays | 2519688 |
| 2767 | 37300.38100.38200.47700.380800 | 19th flr-Internal painting - putty / primer application | 14d | 2027-05-21 | 2027-06-03 | 2754, 2763 |  | 7 day week No holidays | 2519698 |
| 2768 | 37300.38100.38200.47700.380900 | 19th flr-Flat electrical wiring | 12d | 2027-08-27 | 2027-09-07 | 2755, 2764 |  | 7 day week No holidays | 2519708 |
| 2769 | 37300.38100.38200.47700.381000 | 19th flr-Internal painting | 10d | 2027-09-08 | 2027-09-17 | 2756, 2768 |  | 7 day week No holidays | 2519718 |
| 2770 | 37300.38100.38200.47700.381100 | 19th flr-Internal shutter fixing | 12d | 2027-06-04 | 2027-06-15 | 2757, 2767 |  | 7 day week No holidays | 2519728 |
| 2771 | 37300.38100.38200.47800 | **20th Floor** | 172d | 2027-04-13 | 2027-10-01 |  | start no earlier than 2027-04-13 | 7 day week No holidays | 2506108 |
| 2772 | 37300.38100.38200.47800.381200 | 20th flr-Gypsum Plaster | 14d | 2027-04-13 | 2027-04-26 | 2352, 2371, 2759 |  | 7 day week No holidays | 2519738 |
| 2773 | 37300.38100.38200.47800.381300 | 20th flr-Kitchen Platform | 8d | 2027-04-27 | 2027-05-04 | 2760, 2772 |  | 7 day week No holidays | 2519748 |
| 2774 | 37300.38100.38200.47800.381400 | 20th flr-Toilet dado & flooring | 14d | 2027-05-07 | 2027-05-20 | 2356, 2761 |  | 7 day week No holidays | 2519758 |
| 2775 | 37300.38100.38200.47800.381500 | 20th flr-Fire sprinkler pipe | 12d | 2027-04-27 | 2027-05-08 | 2762, 2772 |  | 7 day week No holidays | 2519768 |
| 2776 | 37300.38100.38200.47800.381600 | 20th flr-Flat flooring | 14d | 2027-05-21 | 2027-06-03 | 2763, 2774 |  | 7 day week No holidays | 2519778 |
| 2777 | 37300.38100.38200.47800.381700 | 20th flr-Main door fixing & frame fixing | 14d | 2027-08-27 | 2027-09-09 | 2764, 2776 |  | 7 day week No holidays | 2519788 |
| 2778 | 37300.38100.38200.47800.381800 | 20th flr-Window fixing | 14d | 2027-06-04 | 2027-06-17 | 2765, 2776 |  | 7 day week No holidays | 2519798 |
| 2779 | 37300.38100.38200.47800.381900 | 20th flr-Railing Fixing | 14d | 2027-06-04 | 2027-06-17 | 2766, 2776 |  | 7 day week No holidays | 2519808 |
| 2780 | 37300.38100.38200.47800.382000 | 20th flr-Internal painting - putty / primer application | 14d | 2027-06-04 | 2027-06-17 | 2767, 2776 |  | 7 day week No holidays | 2519818 |
| 2781 | 37300.38100.38200.47800.382100 | 20th flr-Flat electrical wiring | 12d | 2027-09-10 | 2027-09-21 | 2768, 2777 |  | 7 day week No holidays | 2519828 |
| 2782 | 37300.38100.38200.47800.382200 | 20th flr-Internal painting | 10d | 2027-09-22 | 2027-10-01 | 2769, 2781 |  | 7 day week No holidays | 2519838 |
| 2783 | 37300.38100.38200.47800.382300 | 20th flr-Internal shutter fixing | 12d | 2027-06-18 | 2027-06-29 | 2770, 2780 |  | 7 day week No holidays | 2519848 |

| ID | WBS | Task | Duration | Start | Finish | Predecessors | Constraint | Calendar | Unique_Task_ID |
| --- | --- | --- | --- | --- | --- | --- | --- | --- | --- |
| 2784 | 37300.38100.38200.47900 | **21th Floor** | 170d | 2027-04-29 | 2027-10-15 |  | start no earlier than 2027-04-29 | 7 day week No holidays | 2506118 |
| 2785 | 37300.38100.38200.47900.382400 | 21st flr-Gypsum Plaster | 14d | 2027-04-29 | 2027-05-12 | 2358, 2377, 2772 |  | 7 day week No holidays | 2519858 |
| 2786 | 37300.38100.38200.47900.382500 | 21st flr-Kitchen Platform | 8d | 2027-05-13 | 2027-05-20 | 2773, 2785 |  | 7 day week No holidays | 2519868 |
| 2787 | 37300.38100.38200.47900.382600 | 21st flr-Toilet dado & flooring | 14d | 2027-05-21 | 2027-06-03 | 2362, 2774 |  | 7 day week No holidays | 2519878 |
| 2788 | 37300.38100.38200.47900.382700 | 21st flr-Fire sprinkler pipe | 12d | 2027-05-13 | 2027-05-24 | 2775, 2785 |  | 7 day week No holidays | 2519888 |
| 2789 | 37300.38100.38200.47900.382800 | 21st flr-Flat flooring | 14d | 2027-06-04 | 2027-06-17 | 2776, 2787 |  | 7 day week No holidays | 2519898 |
| 2790 | 37300.38100.38200.47900.382900 | 21st flr-Main door fixing & frame fixing | 14d | 2027-09-10 | 2027-09-23 | 2777, 2789 |  | 7 day week No holidays | 2519908 |
| 2791 | 37300.38100.38200.47900.383000 | 21st flr-Window fixing | 14d | 2027-06-18 | 2027-07-01 | 2778, 2789 |  | 7 day week No holidays | 2519918 |
| 2792 | 37300.38100.38200.47900.383100 | 21st flr-Railing Fixing | 14d | 2027-06-18 | 2027-07-01 | 2779, 2789 |  | 7 day week No holidays | 2519928 |
| 2793 | 37300.38100.38200.47900.383200 | 21st flr-Internal painting - putty / primer application | 14d | 2027-06-18 | 2027-07-01 | 2780, 2789 |  | 7 day week No holidays | 2519938 |
| 2794 | 37300.38100.38200.47900.383300 | 21st flr-Flat electrical wiring | 12d | 2027-09-24 | 2027-10-05 | 2781, 2790 |  | 7 day week No holidays | 2519948 |
| 2795 | 37300.38100.38200.47900.383400 | 21st flr-Internal painting | 10d | 2027-10-06 | 2027-10-15 | 2782, 2794 |  | 7 day week No holidays | 2519958 |
| 2796 | 37300.38100.38200.47900.383500 | 21st flr-Internal shutter fixing | 12d | 2027-07-02 | 2027-07-13 | 2783, 2793 |  | 7 day week No holidays | 2519968 |
| 2797 | 37300.38100.38200.48000 | **22nd Floor** | 168d | 2027-05-15 | 2027-10-29 |  | start no earlier than 2027-05-15 | 7 day week No holidays | 2506128 |
| 2798 | 37300.38100.38200.48000.383600 | 22nd flr-Gypsum Plaster | 14d | 2027-05-15 | 2027-05-28 | 2364, 2383, 2785 |  | 7 day week No holidays | 2519978 |
| 2799 | 37300.38100.38200.48000.383700 | 22nd flr-Kitchen Platform | 8d | 2027-05-29 | 2027-06-05 | 2786, 2798 |  | 7 day week No holidays | 2519988 |
| 2800 | 37300.38100.38200.48000.383800 | 22nd flr-Toilet dado & flooring | 14d | 2027-06-04 | 2027-06-17 | 2368, 2787 |  | 7 day week No holidays | 2519998 |
| 2801 | 37300.38100.38200.48000.383900 | 22nd flr-Fire sprinkler pipe | 12d | 2027-05-29 | 2027-06-09 | 2788, 2798 |  | 7 day week No holidays | 2520008 |
| 2802 | 37300.38100.38200.48000.384000 | 22nd flr-Flat flooring | 14d | 2027-06-18 | 2027-07-01 | 2789, 2800 |  | 7 day week No holidays | 2520018 |
| 2803 | 37300.38100.38200.48000.384100 | 22nd flr-Main door fixing & frame fixing | 14d | 2027-09-24 | 2027-10-07 | 2790, 2802 |  | 7 day week No holidays | 2520028 |
| 2804 | 37300.38100.38200.48000.384200 | 22nd flr-Window fixing | 14d | 2027-07-02 | 2027-07-15 | 2791, 2802 |  | 7 day week No holidays | 2520038 |
| 2805 | 37300.38100.38200.48000.384300 | 22nd flr-Railing Fixing | 14d | 2027-07-02 | 2027-07-15 | 2792, 2802 |  | 7 day week No holidays | 2520048 |
| 2806 | 37300.38100.38200.48000.384400 | 22nd flr-Internal painting - putty / primer application | 14d | 2027-07-02 | 2027-07-15 | 2793, 2802 |  | 7 day week No holidays | 2520058 |
| 2807 | 37300.38100.38200.48000.384500 | 22nd flr-Flat electrical wiring | 12d | 2027-10-08 | 2027-10-19 | 2794, 2803 |  | 7 day week No holidays | 2520068 |
| 2808 | 37300.38100.38200.48000.384600 | 22nd flr-Internal painting | 10d | 2027-10-20 | 2027-10-29 | 2795, 2807 |  | 7 day week No holidays | 2520078 |
| 2809 | 37300.38100.38200.48000.384700 | 22nd flr-Internal shutter fixing | 12d | 2027-07-16 | 2027-07-27 | 2796, 2806 |  | 7 day week No holidays | 2520088 |

| ID | WBS | Task | Duration | Start | Finish | Predecessors | Constraint | Calendar | Unique_Task_ID |
| --- | --- | --- | --- | --- | --- | --- | --- | --- | --- |
| 2810 | 37300.38100.38200.48100 | **23rd Floor** | 166d | 2027-05-31 | 2027-11-12 |  | start no earlier than 2027-05-31 | 7 day week No holidays | 2506138 |
| 2811 | 37300.38100.38200.48100.384800 | 23rd flr-Gypsum Plaster | 14d | 2027-05-31 | 2027-06-13 | 2371, 2389, 2798 |  | 7 day week No holidays | 2520098 |
| 2812 | 37300.38100.38200.48100.384900 | 23rd flr-Kitchen Platform | 8d | 2027-06-14 | 2027-06-21 | 2799, 2811 |  | 7 day week No holidays | 2520108 |
| 2813 | 37300.38100.38200.48100.385000 | 23rd flr-Toilet dado & flooring | 14d | 2027-06-18 | 2027-07-01 | 2375, 2800 |  | 7 day week No holidays | 2520118 |
| 2814 | 37300.38100.38200.48100.385100 | 23rd flr-Fire sprinkler pipe | 12d | 2027-06-14 | 2027-06-25 | 2801, 2811 |  | 7 day week No holidays | 2520128 |
| 2815 | 37300.38100.38200.48100.385200 | 23rd flr-Flat flooring | 14d | 2027-07-02 | 2027-07-15 | 2802, 2813 |  | 7 day week No holidays | 2520138 |
| 2816 | 37300.38100.38200.48100.385300 | 23rd flr-Main door fixing & frame fixing | 14d | 2027-10-08 | 2027-10-21 | 2803, 2815 |  | 7 day week No holidays | 2520148 |
| 2817 | 37300.38100.38200.48100.385400 | 23rd flr-Window fixing | 14d | 2027-07-16 | 2027-07-29 | 2804, 2815 |  | 7 day week No holidays | 2520158 |
| 2818 | 37300.38100.38200.48100.385500 | 23rd flr-Railing Fixing | 14d | 2027-07-16 | 2027-07-29 | 2805, 2815 |  | 7 day week No holidays | 2520168 |
| 2819 | 37300.38100.38200.48100.385600 | 23rd flr-Internal painting - putty / primer application | 14d | 2027-07-16 | 2027-07-29 | 2806, 2815 |  | 7 day week No holidays | 2520178 |
| 2820 | 37300.38100.38200.48100.385700 | 23rd flr-Flat electrical wiring | 12d | 2027-10-22 | 2027-11-02 | 2807, 2816 |  | 7 day week No holidays | 2520188 |
| 2821 | 37300.38100.38200.48100.385800 | 23rd flr-Internal painting | 10d | 2027-11-03 | 2027-11-12 | 2808, 2820 |  | 7 day week No holidays | 2520198 |
| 2822 | 37300.38100.38200.48100.385900 | 23rd flr-Internal shutter fixing | 12d | 2027-07-30 | 2027-08-10 | 2809, 2819 |  | 7 day week No holidays | 2520208 |
| 2823 | 37300.38100.38200.48200 | **24th Floor** | 164d | 2027-06-16 | 2027-11-26 |  | start no earlier than 2027-06-16 | 7 day week No holidays | 2506148 |
| 2824 | 37300.38100.38200.48200.386000 | 24th flr-Gypsum Plaster | 14d | 2027-06-16 | 2027-06-29 | 2377, 2395, 2811 |  | 7 day week No holidays | 2520218 |
| 2825 | 37300.38100.38200.48200.386100 | 24th flr-Kitchen Platform | 8d | 2027-06-30 | 2027-07-07 | 2812, 2824 |  | 7 day week No holidays | 2520228 |
| 2826 | 37300.38100.38200.48200.386200 | 24th flr-Toilet dado & flooring | 14d | 2027-07-02 | 2027-07-15 | 2381, 2813 |  | 7 day week No holidays | 2520238 |
| 2827 | 37300.38100.38200.48200.386300 | 24th flr-Fire sprinkler pipe | 12d | 2027-06-30 | 2027-07-11 | 2814, 2824 |  | 7 day week No holidays | 2520248 |
| 2828 | 37300.38100.38200.48200.386400 | 24th flr-Flat flooring | 14d | 2027-07-16 | 2027-07-29 | 2815, 2826 |  | 7 day week No holidays | 2520258 |
| 2829 | 37300.38100.38200.48200.386500 | 24th flr-Main door fixing & frame fixing | 14d | 2027-10-22 | 2027-11-04 | 2816, 2828 |  | 7 day week No holidays | 2520268 |
| 2830 | 37300.38100.38200.48200.386600 | 24th flr-Window fixing | 14d | 2027-07-30 | 2027-08-12 | 2817, 2828 |  | 7 day week No holidays | 2520278 |
| 2831 | 37300.38100.38200.48200.386700 | 24th flr-Railing Fixing | 14d | 2027-07-30 | 2027-08-12 | 2818, 2828 |  | 7 day week No holidays | 2520288 |
| 2832 | 37300.38100.38200.48200.386800 | 24th flr-Internal painting - putty / primer application | 14d | 2027-07-30 | 2027-08-12 | 2819, 2828 |  | 7 day week No holidays | 2520298 |
| 2833 | 37300.38100.38200.48200.386900 | 24th flr-Flat electrical wiring | 12d | 2027-11-05 | 2027-11-16 | 2820, 2829 |  | 7 day week No holidays | 2520308 |
| 2834 | 37300.38100.38200.48200.387000 | 24th flr-Internal painting | 10d | 2027-11-17 | 2027-11-26 | 2821, 2833 |  | 7 day week No holidays | 2520318 |
| 2835 | 37300.38100.38200.48200.387100 | 24th flr-Internal shutter fixing | 12d | 2027-08-13 | 2027-08-24 | 2822, 2832 |  | 7 day week No holidays | 2520328 |

| ID | WBS | Task | Duration | Start | Finish | Predecessors | Constraint | Calendar | Unique_Task_ID |
| --- | --- | --- | --- | --- | --- | --- | --- | --- | --- |
| 2836 | 37300.38100.38200.48300 | **25th Floor** | 162d | 2027-07-02 | 2027-12-10 |  | start no earlier than 2027-07-02 | 7 day week No holidays | 2506158 |
| 2837 | 37300.38100.38200.48300.387200 | 25th flr-Gypsum Plaster | 14d | 2027-07-02 | 2027-07-15 | 2383, 2401, 2824 |  | 7 day week No holidays | 2520338 |
| 2838 | 37300.38100.38200.48300.387300 | 25th flr-Kitchen Platform | 8d | 2027-07-16 | 2027-07-23 | 2825, 2837 |  | 7 day week No holidays | 2520348 |
| 2839 | 37300.38100.38200.48300.387400 | 25th flr-Toilet dado & flooring | 14d | 2027-07-16 | 2027-07-29 | 2387, 2826 |  | 7 day week No holidays | 2520358 |
| 2840 | 37300.38100.38200.48300.387500 | 25th flr-Fire sprinkler pipe | 12d | 2027-07-16 | 2027-07-27 | 2827, 2837 |  | 7 day week No holidays | 2520368 |
| 2841 | 37300.38100.38200.48300.387600 | 25th flr-Flat flooring | 14d | 2027-07-30 | 2027-08-12 | 2828, 2839 |  | 7 day week No holidays | 2520378 |
| 2842 | 37300.38100.38200.48300.387700 | 25th flr-Main door fixing & frame fixing | 14d | 2027-11-05 | 2027-11-18 | 2829, 2841 |  | 7 day week No holidays | 2520388 |
| 2843 | 37300.38100.38200.48300.387800 | 25th flr-Window fixing | 14d | 2027-08-13 | 2027-08-26 | 2830, 2841 |  | 7 day week No holidays | 2520398 |
| 2844 | 37300.38100.38200.48300.387900 | 25th flr-Railing Fixing | 14d | 2027-08-13 | 2027-08-26 | 2831, 2841 |  | 7 day week No holidays | 2520408 |
| 2845 | 37300.38100.38200.48300.388000 | 25th flr-Internal painting - putty / primer application | 14d | 2027-08-13 | 2027-08-26 | 2832, 2841 |  | 7 day week No holidays | 2520418 |
| 2846 | 37300.38100.38200.48300.388100 | 25th flr-Flat electrical wiring | 12d | 2027-11-19 | 2027-11-30 | 2833, 2842 |  | 7 day week No holidays | 2520428 |
| 2847 | 37300.38100.38200.48300.388200 | 25th flr-Internal painting | 10d | 2027-12-01 | 2027-12-10 | 2834, 2846 |  | 7 day week No holidays | 2520438 |
| 2848 | 37300.38100.38200.48300.388300 | 25th flr-Internal shutter fixing | 12d | 2027-08-27 | 2027-09-07 | 2835, 2845 |  | 7 day week No holidays | 2520448 |
| 2849 | 37300.38100.38200.48400 | **26th Floor** | 160d | 2027-07-18 | 2027-12-24 |  | start no earlier than 2027-07-18 | 7 day week No holidays | 2506168 |
| 2850 | 37300.38100.38200.48400.388400 | 26th flr-Gypsum Plaster | 14d | 2027-07-18 | 2027-07-31 | 2389, 2407, 2837 |  | 7 day week No holidays | 2520458 |
| 2851 | 37300.38100.38200.48400.388500 | 26th flr-Kitchen Platform | 8d | 2027-08-01 | 2027-08-08 | 2838, 2850 |  | 7 day week No holidays | 2520468 |
| 2852 | 37300.38100.38200.48400.388600 | 26th flr-Toilet dado & flooring | 14d | 2027-07-30 | 2027-08-12 | 2393, 2839 |  | 7 day week No holidays | 2520478 |
| 2853 | 37300.38100.38200.48400.388700 | 26th flr-Fire sprinkler pipe | 12d | 2027-08-01 | 2027-08-12 | 2840, 2850 |  | 7 day week No holidays | 2520488 |
| 2854 | 37300.38100.38200.48400.388800 | 26th flr-Flat flooring | 14d | 2027-08-13 | 2027-08-26 | 2841, 2852 |  | 7 day week No holidays | 2520498 |
| 2855 | 37300.38100.38200.48400.388900 | 26th flr-Main door fixing & frame fixing | 14d | 2027-11-19 | 2027-12-02 | 2842, 2854 |  | 7 day week No holidays | 2520508 |
| 2856 | 37300.38100.38200.48400.389000 | 26th flr-Window fixing | 14d | 2027-08-27 | 2027-09-09 | 2843, 2854 |  | 7 day week No holidays | 2520518 |
| 2857 | 37300.38100.38200.48400.389100 | 26th flr-Railing Fixing | 14d | 2027-08-27 | 2027-09-09 | 2844, 2854 |  | 7 day week No holidays | 2520528 |
| 2858 | 37300.38100.38200.48400.389200 | 26th flr-Internal painting - putty / primer application | 14d | 2027-08-27 | 2027-09-09 | 2845, 2854 |  | 7 day week No holidays | 2520538 |
| 2859 | 37300.38100.38200.48400.389300 | 26th flr-Flat electrical wiring | 12d | 2027-12-03 | 2027-12-14 | 2846, 2855 |  | 7 day week No holidays | 2520548 |
| 2860 | 37300.38100.38200.48400.389400 | 26th flr-Internal painting | 10d | 2027-12-15 | 2027-12-24 | 2847, 2859 |  | 7 day week No holidays | 2520558 |
| 2861 | 37300.38100.38200.48400.389500 | 26th flr-Internal shutter fixing | 12d | 2027-09-10 | 2027-09-21 | 2848, 2858 |  | 7 day week No holidays | 2520568 |

| ID | WBS | Task | Duration | Start | Finish | Predecessors | Constraint | Calendar | Unique_Task_ID |
| --- | --- | --- | --- | --- | --- | --- | --- | --- | --- |
| 2862 | 37300.38100.38200.48500 | **27th Floor** | 158d | 2027-08-03 | 2028-01-07 |  | start no earlier than 2027-08-03 | 7 day week No holidays | 2506178 |
| 2863 | 37300.38100.38200.48500.389600 | 27th flr-Gypsum Plaster | 14d | 2027-08-03 | 2027-08-16 | 2395, 2413, 2850 |  | 7 day week No holidays | 2520578 |
| 2864 | 37300.38100.38200.48500.389700 | 27th flr-Kitchen Platform | 8d | 2027-08-17 | 2027-08-24 | 2851, 2863 |  | 7 day week No holidays | 2520588 |
| 2865 | 37300.38100.38200.48500.389800 | 27th flr-Toilet dado & flooring | 14d | 2027-08-13 | 2027-08-26 | 2399, 2852 |  | 7 day week No holidays | 2520598 |
| 2866 | 37300.38100.38200.48500.389900 | 27th flr-Fire sprinkler pipe | 12d | 2027-08-17 | 2027-08-28 | 2853, 2863 |  | 7 day week No holidays | 2520608 |
| 2867 | 37300.38100.38200.48500.390000 | 27th flr-Flat flooring | 14d | 2027-08-27 | 2027-09-09 | 2854, 2865 |  | 7 day week No holidays | 2520618 |
| 2868 | 37300.38100.38200.48500.390100 | 27th flr-Main door fixing & frame fixing | 14d | 2027-12-03 | 2027-12-16 | 2855, 2867 |  | 7 day week No holidays | 2520628 |
| 2869 | 37300.38100.38200.48500.390200 | 27th flr-Window fixing | 14d | 2027-09-10 | 2027-09-23 | 2856, 2867 |  | 7 day week No holidays | 2520638 |
| 2870 | 37300.38100.38200.48500.390300 | 27th flr-Railing Fixing | 14d | 2027-09-10 | 2027-09-23 | 2857, 2867 |  | 7 day week No holidays | 2520648 |
| 2871 | 37300.38100.38200.48500.390400 | 27th flr-Internal painting - putty / primer application | 14d | 2027-09-10 | 2027-09-23 | 2858, 2867 |  | 7 day week No holidays | 2520658 |
| 2872 | 37300.38100.38200.48500.390500 | 27th flr-Flat electrical wiring | 12d | 2027-12-17 | 2027-12-28 | 2859, 2868 |  | 7 day week No holidays | 2520668 |
| 2873 | 37300.38100.38200.48500.390600 | 27th flr-Internal painting | 10d | 2027-12-29 | 2028-01-07 | 2860, 2872 |  | 7 day week No holidays | 2520678 |
| 2874 | 37300.38100.38200.48500.390700 | 27th flr-Internal shutter fixing | 12d | 2027-09-24 | 2027-10-05 | 2861, 2871 |  | 7 day week No holidays | 2520688 |
| 2875 | 37300.38100.38200.48600 | **28th Floor** | 156d | 2027-08-19 | 2028-01-21 |  | start no earlier than 2027-08-19 | 7 day week No holidays | 2506188 |
| 2876 | 37300.38100.38200.48600.390800 | 28th flr-Gypsum Plaster | 14d | 2027-08-19 | 2027-09-01 | 2401, 2419, 2863 |  | 7 day week No holidays | 2520698 |
| 2877 | 37300.38100.38200.48600.390900 | 28th flr-Kitchen Platform | 8d | 2027-09-02 | 2027-09-09 | 2864, 2876 |  | 7 day week No holidays | 2520708 |
| 2878 | 37300.38100.38200.48600.391000 | 28th flr-Toilet dado & flooring | 14d | 2027-08-27 | 2027-09-09 | 2405, 2865 |  | 7 day week No holidays | 2520718 |
| 2879 | 37300.38100.38200.48600.391100 | 28th flr-Fire sprinkler pipe | 12d | 2027-09-02 | 2027-09-13 | 2866, 2876 |  | 7 day week No holidays | 2520728 |
| 2880 | 37300.38100.38200.48600.391200 | 28th flr-Flat flooring | 14d | 2027-09-10 | 2027-09-23 | 2867, 2878 |  | 7 day week No holidays | 2520738 |
| 2881 | 37300.38100.38200.48600.391300 | 28th flr-Main door fixing & frame fixing | 14d | 2027-12-17 | 2027-12-30 | 2868, 2880 |  | 7 day week No holidays | 2520748 |
| 2882 | 37300.38100.38200.48600.391400 | 28th flr-Window fixing | 14d | 2027-09-24 | 2027-10-07 | 2869, 2880 |  | 7 day week No holidays | 2520758 |
| 2883 | 37300.38100.38200.48600.391500 | 28th flr-Railing Fixing | 14d | 2027-09-24 | 2027-10-07 | 2870, 2880 |  | 7 day week No holidays | 2520768 |
| 2884 | 37300.38100.38200.48600.391600 | 28th flr-Internal painting - putty / primer application | 14d | 2027-09-24 | 2027-10-07 | 2871, 2880 |  | 7 day week No holidays | 2520778 |
| 2885 | 37300.38100.38200.48600.391700 | 28th flr-Flat electrical wiring | 12d | 2027-12-31 | 2028-01-11 | 2872, 2881 |  | 7 day week No holidays | 2520788 |
| 2886 | 37300.38100.38200.48600.391800 | 28th flr-Internal painting | 10d | 2028-01-12 | 2028-01-21 | 2873, 2885 |  | 7 day week No holidays | 2520798 |
| 2887 | 37300.38100.38200.48600.391900 | 28th flr-Internal shutter fixing | 12d | 2027-10-08 | 2027-10-19 | 2874, 2884 |  | 7 day week No holidays | 2520808 |

| ID | WBS | Task | Duration | Start | Finish | Predecessors | Constraint | Calendar | Unique_Task_ID |
| --- | --- | --- | --- | --- | --- | --- | --- | --- | --- |
| 2888 | 37300.38100.38200.48700 | **29th Floor** | 154d | 2027-09-04 | 2028-02-04 |  | start no earlier than 2027-09-04 | 7 day week No holidays | 2506198 |
| 2889 | 37300.38100.38200.48700.392000 | 29th flr-Gypsum Plaster | 14d | 2027-09-04 | 2027-09-17 | 2407, 2425, 2876 |  | 7 day week No holidays | 2520818 |
| 2890 | 37300.38100.38200.48700.392100 | 29th flr-Kitchen Platform | 8d | 2027-09-18 | 2027-09-25 | 2877, 2889 |  | 7 day week No holidays | 2520828 |
| 2891 | 37300.38100.38200.48700.392200 | 29th flr-Toilet dado & flooring | 14d | 2027-09-10 | 2027-09-23 | 2411, 2878 |  | 7 day week No holidays | 2520838 |
| 2892 | 37300.38100.38200.48700.392300 | 29th flr-Fire sprinkler pipe | 12d | 2027-09-18 | 2027-09-29 | 2879, 2889 |  | 7 day week No holidays | 2520848 |
| 2893 | 37300.38100.38200.48700.392400 | 29th flr-Flat flooring | 14d | 2027-09-24 | 2027-10-07 | 2880, 2891 |  | 7 day week No holidays | 2520858 |
| 2894 | 37300.38100.38200.48700.392500 | 29th flr-Main door fixing & frame fixing | 14d | 2027-12-31 | 2028-01-13 | 2881, 2893 |  | 7 day week No holidays | 2520868 |
| 2895 | 37300.38100.38200.48700.392600 | 29th flr-Window fixing | 14d | 2027-10-08 | 2027-10-21 | 2882, 2893 |  | 7 day week No holidays | 2520878 |
| 2896 | 37300.38100.38200.48700.392700 | 29th flr-Railing Fixing | 14d | 2027-10-08 | 2027-10-21 | 2883, 2893 |  | 7 day week No holidays | 2520888 |
| 2897 | 37300.38100.38200.48700.392800 | 29th flr-Internal painting - putty / primer application | 14d | 2027-10-08 | 2027-10-21 | 2884, 2893 |  | 7 day week No holidays | 2520898 |
| 2898 | 37300.38100.38200.48700.392900 | 29th flr-Flat electrical wiring | 12d | 2028-01-14 | 2028-01-25 | 2885, 2894 |  | 7 day week No holidays | 2520908 |
| 2899 | 37300.38100.38200.48700.393000 | 29th flr-Internal painting | 10d | 2028-01-26 | 2028-02-04 | 2886, 2898 |  | 7 day week No holidays | 2520918 |
| 2900 | 37300.38100.38200.48700.393100 | 29th flr-Internal shutter fixing | 12d | 2027-10-22 | 2027-11-02 | 2887, 2897 |  | 7 day week No holidays | 2520928 |
| 2901 | 37300.38100.38200.48800 | **30th Floor** | 343d | 2027-09-24 | 2028-08-31 |  | start no earlier than 2027-09-24 | 7 day week No holidays | 2506208 |
| 2902 | 37300.38100.38200.48800.393200 | 30th flr-Gypsum Plaster | 14d | 2028-08-06 | 2028-08-19 | 2413, 2431, 2889 |  | 7 day week No holidays | 2520938 |
| 2903 | 37300.38100.38200.48800.393300 | 30th flr-Kitchen Platform | 8d | 2028-08-20 | 2028-08-27 | 2890, 2902 |  | 7 day week No holidays | 2520948 |
| 2904 | 37300.38100.38200.48800.393400 | 30th flr-Toilet dado & flooring | 14d | 2027-09-24 | 2027-10-07 | 2417, 2891 |  | 7 day week No holidays | 2520958 |
| 2905 | 37300.38100.38200.48800.393500 | 30th flr-Fire sprinkler pipe | 12d | 2028-08-20 | 2028-08-31 | 2892, 2902 |  | 7 day week No holidays | 2520968 |
| 2906 | 37300.38100.38200.48800.393600 | 30th flr-Flat flooring | 14d | 2027-10-08 | 2027-10-21 | 2893, 2904 |  | 7 day week No holidays | 2520978 |
| 2907 | 37300.38100.38200.48800.393700 | 30th flr-Main door fixing & frame fixing | 14d | 2028-01-14 | 2028-01-27 | 2894, 2906 |  | 7 day week No holidays | 2520988 |
| 2908 | 37300.38100.38200.48800.393800 | 30th flr-Window fixing | 14d | 2027-10-22 | 2027-11-04 | 2895, 2906 |  | 7 day week No holidays | 2520998 |
| 2909 | 37300.38100.38200.48800.393900 | 30th flr-Railing Fixing | 14d | 2027-10-22 | 2027-11-04 | 2896, 2906 |  | 7 day week No holidays | 2521008 |
| 2910 | 37300.38100.38200.48800.394000 | 30th flr-Internal painting - putty / primer application | 14d | 2027-10-22 | 2027-11-04 | 2897, 2906 |  | 7 day week No holidays | 2521018 |
| 2911 | 37300.38100.38200.48800.394100 | 30th flr-Flat electrical wiring | 12d | 2028-01-28 | 2028-02-08 | 2898, 2907 |  | 7 day week No holidays | 2521028 |
| 2912 | 37300.38100.38200.48800.394200 | 30th flr-Internal painting | 10d | 2028-02-09 | 2028-02-18 | 2899, 2911 |  | 7 day week No holidays | 2521038 |
| 2913 | 37300.38100.38200.48800.394300 | 30th flr-Internal shutter fixing | 12d | 2027-11-05 | 2027-11-16 | 2900, 2910 |  | 7 day week No holidays | 2521048 |

| ID | WBS | Task | Duration | Start | Finish | Predecessors | Constraint | Calendar | Unique_Task_ID |
| --- | --- | --- | --- | --- | --- | --- | --- | --- | --- |
| 2914 | 37300.38100.38200.48900 | **31st Floor** | 361d | 2027-10-08 | 2028-10-02 |  | start no earlier than 2027-10-08 | 7 day week No holidays | 2506218 |
| 2915 | 37300.38100.38200.48900.394400 | 31st flr-Gypsum Plaster | 14d | 2028-09-07 | 2028-09-20 | 2419, 2437, 2902 |  | 7 day week No holidays | 2521058 |
| 2916 | 37300.38100.38200.48900.394500 | 31st flr-Kitchen Platform | 8d | 2028-09-21 | 2028-09-28 | 2903, 2915 |  | 7 day week No holidays | 2521068 |
| 2917 | 37300.38100.38200.48900.394600 | 31st flr-Toilet dado & flooring | 14d | 2027-10-08 | 2027-10-21 | 2423, 2904 |  | 7 day week No holidays | 2521078 |
| 2918 | 37300.38100.38200.48900.394700 | 31st flr-Fire sprinkler pipe | 12d | 2028-09-21 | 2028-10-02 | 2905, 2915 |  | 7 day week No holidays | 2521088 |
| 2919 | 37300.38100.38200.48900.394800 | 31st flr-Flat flooring | 14d | 2027-10-22 | 2027-11-04 | 2906, 2917 |  | 7 day week No holidays | 2521098 |
| 2920 | 37300.38100.38200.48900.394900 | 31st flr-Main door fixing & frame fixing | 14d | 2028-01-28 | 2028-02-10 | 2907, 2919 |  | 7 day week No holidays | 2521108 |
| 2921 | 37300.38100.38200.48900.395000 | 31st flr-Window fixing | 14d | 2027-11-05 | 2027-11-18 | 2908, 2919 |  | 7 day week No holidays | 2521118 |
| 2922 | 37300.38100.38200.48900.395100 | 31st flr-Railing Fixing | 14d | 2027-11-05 | 2027-11-18 | 2909, 2919 |  | 7 day week No holidays | 2521128 |
| 2923 | 37300.38100.38200.48900.395200 | 31st flr-Internal painting - putty / primer application | 14d | 2027-11-05 | 2027-11-18 | 2910, 2919 |  | 7 day week No holidays | 2521138 |
| 2924 | 37300.38100.38200.48900.395300 | 31st flr-Flat electrical wiring | 12d | 2028-02-11 | 2028-02-22 | 2911, 2920 |  | 7 day week No holidays | 2521148 |
| 2925 | 37300.38100.38200.48900.395400 | 31st flr-Internal painting | 10d | 2028-02-23 | 2028-03-03 | 2912, 2924 |  | 7 day week No holidays | 2521158 |
| 2926 | 37300.38100.38200.48900.395500 | 31st flr-Internal shutter fixing | 12d | 2027-11-19 | 2027-11-30 | 2913, 2923 |  | 7 day week No holidays | 2521168 |
| 2927 | 37300.38100.38200.49000 | **32nd Floor** | 363d | 2027-10-22 | 2028-10-18 |  | start no earlier than 2027-10-22 | 7 day week No holidays | 2506228 |
| 2928 | 37300.38100.38200.49000.395600 | 32nd flr-Gypsum Plaster | 14d | 2028-09-23 | 2028-10-06 | 2425, 2443, 2915 |  | 7 day week No holidays | 2521178 |
| 2929 | 37300.38100.38200.49000.395700 | 32nd flr-Kitchen Platform | 8d | 2028-10-07 | 2028-10-14 | 2916, 2928 |  | 7 day week No holidays | 2521188 |
| 2930 | 37300.38100.38200.49000.395800 | 32nd flr-Toilet dado & flooring | 14d | 2027-10-22 | 2027-11-04 | 2429, 2917 |  | 7 day week No holidays | 2521198 |
| 2931 | 37300.38100.38200.49000.395900 | 32nd flr-Fire sprinkler pipe | 12d | 2028-10-07 | 2028-10-18 | 2918, 2928 |  | 7 day week No holidays | 2521208 |
| 2932 | 37300.38100.38200.49000.396000 | 32nd flr-Flat flooring | 14d | 2027-11-05 | 2027-11-18 | 2919, 2930 |  | 7 day week No holidays | 2521218 |
| 2933 | 37300.38100.38200.49000.396100 | 32nd flr-Main door fixing & frame fixing | 14d | 2028-02-11 | 2028-02-24 | 2920, 2932 |  | 7 day week No holidays | 2521228 |
| 2934 | 37300.38100.38200.49000.396200 | 32nd flr-Window fixing | 14d | 2027-11-19 | 2027-12-02 | 2921, 2932 |  | 7 day week No holidays | 2521238 |
| 2935 | 37300.38100.38200.49000.396300 | 32nd flr-Railing Fixing | 14d | 2027-11-19 | 2027-12-02 | 2922, 2932 |  | 7 day week No holidays | 2521248 |
| 2936 | 37300.38100.38200.49000.396400 | 32nd flr-Internal painting - putty / primer application | 14d | 2027-11-19 | 2027-12-02 | 2923, 2932 |  | 7 day week No holidays | 2521258 |
| 2937 | 37300.38100.38200.49000.396500 | 32nd flr-Flat electrical wiring | 12d | 2028-02-25 | 2028-03-07 | 2924, 2933 |  | 7 day week No holidays | 2521268 |
| 2938 | 37300.38100.38200.49000.396600 | 32nd flr-Internal painting | 10d | 2028-03-08 | 2028-03-17 | 2925, 2937 |  | 7 day week No holidays | 2521278 |
| 2939 | 37300.38100.38200.49000.396700 | 32nd flr-Internal shutter fixing | 12d | 2027-12-03 | 2027-12-14 | 2926, 2936 |  | 7 day week No holidays | 2521288 |

| ID | WBS | Task | Duration | Start | Finish | Predecessors | Constraint | Calendar | Unique_Task_ID |
| --- | --- | --- | --- | --- | --- | --- | --- | --- | --- |
| 2940 | 37300.38100.38200.49100 | **33rd Floor** | 64d | 2028-09-05 | 2028-11-07 |  | start no earlier than 2028-09-05 | 7 day week No holidays | 2506238 |
| 2941 | 37300.38100.38200.49100.396800 | 33rd flr-Gypsum Plaster | 14d | 2028-10-09 | 2028-10-22 | 2431, 2449, 2928 |  | 7 day week No holidays | 2521298 |
| 2942 | 37300.38100.38200.49100.396900 | 33rd flr-Kitchen Platform | 8d | 2028-10-23 | 2028-10-30 | 2929, 2941 |  | 7 day week No holidays | 2521308 |
| 2943 | 37300.38100.38200.49100.397000 | 33rd flr-Toilet dado & flooring | 14d | 2028-09-05 | 2028-09-18 | 2435, 2930 |  | 7 day week No holidays | 2521318 |
| 2944 | 37300.38100.38200.49100.397100 | 33rd flr-Fire sprinkler pipe | 12d | 2028-10-23 | 2028-11-03 | 2931, 2941 |  | 7 day week No holidays | 2521328 |
| 2945 | 37300.38100.38200.49100.397200 | 33rd flr-Flat flooring | 14d | 2028-09-19 | 2028-10-02 | 2932, 2943 |  | 7 day week No holidays | 7303644 |
| 2946 | 37300.38100.38200.49100.397300 | 33rd flr-Main door fixing & frame fixing | 14d | 2028-10-03 | 2028-10-16 | 2933, 2945 |  | 7 day week No holidays | 2521348 |
| 2947 | 37300.38100.38200.49100.397400 | 33rd flr-Window fixing | 14d | 2028-10-03 | 2028-10-16 | 2934, 2945 |  | 7 day week No holidays | 2521358 |
| 2948 | 37300.38100.38200.49100.397500 | 33rd flr-Railing Fixing | 14d | 2028-10-03 | 2028-10-16 | 2935, 2945 |  | 7 day week No holidays | 2521368 |
| 2949 | 37300.38100.38200.49100.397600 | 33rd flr-Internal painting - putty / primer application | 14d | 2028-10-03 | 2028-10-16 | 2936, 2945 |  | 7 day week No holidays | 2521378 |
| 2950 | 37300.38100.38200.49100.397700 | 33rd flr-Flat electrical wiring | 12d | 2028-10-17 | 2028-10-28 | 2937, 2946 |  | 7 day week No holidays | 2521388 |
| 2951 | 37300.38100.38200.49100.397800 | 33rd flr-Internal painting | 10d | 2028-10-29 | 2028-11-07 | 2938, 2950 |  | 7 day week No holidays | 2521398 |
| 2952 | 37300.38100.38200.49100.397900 | 33rd flr-Internal shutter fixing | 12d | 2028-10-17 | 2028-10-28 | 2939, 2949 |  | 7 day week No holidays | 2521408 |
| 2953 | 37300.38100.38200.49200 | **34th Floor** | 64d | 2028-10-07 | 2028-12-09 |  | start no earlier than 2028-10-07 | 7 day week No holidays | 2506248 |
| 2954 | 37300.38100.38200.49200.398000 | 34th flr-Gypsum Plaster | 14d | 2028-10-25 | 2028-11-07 | 2437, 2455, 2941 |  | 7 day week No holidays | 2521418 |
| 2955 | 37300.38100.38200.49200.398100 | 34th flr-Kitchen Platform | 8d | 2028-11-08 | 2028-11-15 | 2942, 2954 |  | 7 day week No holidays | 2521428 |
| 2956 | 37300.38100.38200.49200.398200 | 34th flr-Toilet dado & flooring | 14d | 2028-10-07 | 2028-10-20 | 2441, 2943 |  | 7 day week No holidays | 2521438 |
| 2957 | 37300.38100.38200.49200.398300 | 34th flr-Fire sprinkler pipe | 12d | 2028-11-08 | 2028-11-19 | 2944, 2954 |  | 7 day week No holidays | 2521448 |
| 2958 | 37300.38100.38200.49200.398400 | 34th flr-Flat flooring | 14d | 2028-10-21 | 2028-11-03 | 2945, 2956 |  | 7 day week No holidays | 2521458 |
| 2959 | 37300.38100.38200.49200.398500 | 34th flr-Main door fixing & frame fixing | 14d | 2028-11-04 | 2028-11-17 | 2946, 2958 |  | 7 day week No holidays | 2521468 |
| 2960 | 37300.38100.38200.49200.398600 | 34th flr-Window fixing | 14d | 2028-11-04 | 2028-11-17 | 2947, 2958 |  | 7 day week No holidays | 2521478 |
| 2961 | 37300.38100.38200.49200.398700 | 34th flr-Railing Fixing | 14d | 2028-11-04 | 2028-11-17 | 2948, 2958 |  | 7 day week No holidays | 2521488 |
| 2962 | 37300.38100.38200.49200.398800 | 34th flr-Internal painting - putty / primer application | 14d | 2028-11-04 | 2028-11-17 | 2949, 2958 |  | 7 day week No holidays | 2521498 |
| 2963 | 37300.38100.38200.49200.398900 | 34th flr-Flat electrical wiring | 12d | 2028-11-18 | 2028-11-29 | 2950, 2959 |  | 7 day week No holidays | 2521508 |
| 2964 | 37300.38100.38200.49200.399000 | 34th flr-Internal painting | 10d | 2028-11-30 | 2028-12-09 | 2951, 2963 |  | 7 day week No holidays | 2521518 |
| 2965 | 37300.38100.38200.49200.399100 | 34th flr-Internal shutter fixing | 12d | 2028-11-18 | 2028-11-29 | 2952, 2962 |  | 7 day week No holidays | 2521528 |

| ID | WBS | Task | Duration | Start | Finish | Predecessors | Constraint | Calendar | Unique_Task_ID |
| --- | --- | --- | --- | --- | --- | --- | --- | --- | --- |
| 2966 | 37300.38100.38200.49300 | **35th Floor** | 64d | 2028-10-23 | 2028-12-25 |  | start no earlier than 2028-10-23 | 7 day week No holidays | 2506258 |
| 2967 | 37300.38100.38200.49300.399200 | 35th flr-Gypsum Plaster | 14d | 2028-11-10 | 2028-11-23 | 2443, 2461, 2954 |  | 7 day week No holidays | 2521538 |
| 2968 | 37300.38100.38200.49300.399300 | 35th flr-Kitchen Platform | 8d | 2028-11-24 | 2028-12-01 | 2955, 2967 |  | 7 day week No holidays | 2521548 |
| 2969 | 37300.38100.38200.49300.399400 | 35th flr-Toilet dado & flooring | 14d | 2028-10-23 | 2028-11-05 | 2447, 2956 |  | 7 day week No holidays | 2521558 |
| 2970 | 37300.38100.38200.49300.399500 | 35th flr-Fire sprinkler pipe | 12d | 2028-11-24 | 2028-12-05 | 2957, 2967 |  | 7 day week No holidays | 2521568 |
| 2971 | 37300.38100.38200.49300.399600 | 35th flr-Flat flooring | 14d | 2028-11-06 | 2028-11-19 | 2958, 2969 |  | 7 day week No holidays | 2521578 |
| 2972 | 37300.38100.38200.49300.399700 | 35th flr-Main door fixing & frame fixing | 14d | 2028-11-20 | 2028-12-03 | 2959, 2971 |  | 7 day week No holidays | 2521588 |
| 2973 | 37300.38100.38200.49300.399800 | 35th flr-Window fixing | 14d | 2028-11-20 | 2028-12-03 | 2960, 2971 |  | 7 day week No holidays | 2521598 |
| 2974 | 37300.38100.38200.49300.399900 | 35th flr-Railing Fixing | 14d | 2028-11-20 | 2028-12-03 | 2961, 2971 |  | 7 day week No holidays | 2521608 |
| 2975 | 37300.38100.38200.49300.400000 | 35th flr-Internal painting - putty / primer application | 14d | 2028-11-20 | 2028-12-03 | 2962, 2971 |  | 7 day week No holidays | 2521618 |
| 2976 | 37300.38100.38200.49300.400100 | 35th flr-Flat electrical wiring | 12d | 2028-12-04 | 2028-12-15 | 2963, 2972 |  | 7 day week No holidays | 2521628 |
| 2977 | 37300.38100.38200.49300.400200 | 35th flr-Internal painting | 10d | 2028-12-16 | 2028-12-25 | 2964, 2976 |  | 7 day week No holidays | 2521638 |
| 2978 | 37300.38100.38200.49300.400300 | 35th flr-Internal shutter fixing | 12d | 2028-12-04 | 2028-12-15 | 2965, 2975 |  | 7 day week No holidays | 2521648 |
| 2979 | 37300.38100.38200.49400 | **36th Floor** | 64d | 2028-11-08 | 2029-01-10 |  | start no earlier than 2028-11-08 | 7 day week No holidays | 2506268 |
| 2980 | 37300.38100.38200.49400.400400 | 36th flr-Gypsum Plaster | 14d | 2028-11-26 | 2028-12-09 | 2449, 2467, 2967 |  | 7 day week No holidays | 2521658 |
| 2981 | 37300.38100.38200.49400.400500 | 36th flr-Kitchen Platform | 8d | 2028-12-10 | 2028-12-17 | 2968, 2980 |  | 7 day week No holidays | 2521668 |
| 2982 | 37300.38100.38200.49400.400600 | 36th flr-Toilet dado & flooring | 14d | 2028-11-08 | 2028-11-21 | 2453, 2969 |  | 7 day week No holidays | 2521678 |
| 2983 | 37300.38100.38200.49400.400700 | 36th flr-Fire sprinkler pipe | 12d | 2028-12-10 | 2028-12-21 | 2970, 2980 |  | 7 day week No holidays | 2521688 |
| 2984 | 37300.38100.38200.49400.400800 | 36th flr-Flat flooring | 14d | 2028-11-22 | 2028-12-05 | 2971, 2982 |  | 7 day week No holidays | 2521698 |
| 2985 | 37300.38100.38200.49400.400900 | 36th flr-Main door fixing & frame fixing | 14d | 2028-12-06 | 2028-12-19 | 2972, 2984 |  | 7 day week No holidays | 2521708 |
| 2986 | 37300.38100.38200.49400.401000 | 36th flr-Window fixing | 14d | 2028-12-06 | 2028-12-19 | 2973, 2984 |  | 7 day week No holidays | 2521718 |
| 2987 | 37300.38100.38200.49400.401100 | 36th flr-Railing Fixing | 14d | 2028-12-06 | 2028-12-19 | 2974, 2984 |  | 7 day week No holidays | 2521728 |
| 2988 | 37300.38100.38200.49400.401200 | 36th flr-Internal painting - putty / primer application | 14d | 2028-12-06 | 2028-12-19 | 2975, 2984 |  | 7 day week No holidays | 2521738 |
| 2989 | 37300.38100.38200.49400.401300 | 36th flr-Flat electrical wiring | 12d | 2028-12-20 | 2028-12-31 | 2976, 2985 |  | 7 day week No holidays | 2521748 |
| 2990 | 37300.38100.38200.49400.401400 | 36th flr-Internal painting | 10d | 2029-01-01 | 2029-01-10 | 2977, 2989 |  | 7 day week No holidays | 2521758 |
| 2991 | 37300.38100.38200.49400.401500 | 36th flr-Internal shutter fixing | 12d | 2028-12-20 | 2028-12-31 | 2978, 2988 |  | 7 day week No holidays | 2521768 |

| ID | WBS | Task | Duration | Start | Finish | Predecessors | Constraint | Calendar | Unique_Task_ID |
| --- | --- | --- | --- | --- | --- | --- | --- | --- | --- |
| 2992 | 37300.38100.38200.49500 | **37th Floor** | 64d | 2028-11-24 | 2029-01-26 |  | start no earlier than 2028-11-24 | 7 day week No holidays | 2506278 |
| 2993 | 37300.38100.38200.49500.401600 | 37th flr-Gypsum Plaster | 14d | 2028-12-12 | 2028-12-25 | 2455, 2473, 2980 |  | 7 day week No holidays | 2521778 |
| 2994 | 37300.38100.38200.49500.401700 | 37th flr-Kitchen Platform | 8d | 2028-12-26 | 2029-01-02 | 2981, 2993 |  | 7 day week No holidays | 2521788 |
| 2995 | 37300.38100.38200.49500.401800 | 37th flr-Toilet dado & flooring | 14d | 2028-11-24 | 2028-12-07 | 2459, 2982 |  | 7 day week No holidays | 2521798 |
| 2996 | 37300.38100.38200.49500.401900 | 37th flr-Fire sprinkler pipe | 12d | 2028-12-26 | 2029-01-06 | 2983, 2993 |  | 7 day week No holidays | 2521808 |
| 2997 | 37300.38100.38200.49500.402000 | 37th flr-Flat flooring | 14d | 2028-12-08 | 2028-12-21 | 2984, 2995 |  | 7 day week No holidays | 2521818 |
| 2998 | 37300.38100.38200.49500.402100 | 37th flr-Main door fixing & frame fixing | 14d | 2028-12-22 | 2029-01-04 | 2985, 2997 |  | 7 day week No holidays | 2521828 |
| 2999 | 37300.38100.38200.49500.402200 | 37th flr-Window fixing | 14d | 2028-12-22 | 2029-01-04 | 2986, 2997 |  | 7 day week No holidays | 2521838 |
| 3000 | 37300.38100.38200.49500.402300 | 37th flr-Railing Fixing | 14d | 2028-12-22 | 2029-01-04 | 2987, 2997 |  | 7 day week No holidays | 2521848 |
| 3001 | 37300.38100.38200.49500.402400 | 37th flr-Internal painting - putty / primer application | 14d | 2028-12-22 | 2029-01-04 | 2988, 2997 |  | 7 day week No holidays | 2521858 |
| 3002 | 37300.38100.38200.49500.402500 | 37th flr-Flat electrical wiring | 12d | 2029-01-05 | 2029-01-16 | 2989, 2998 |  | 7 day week No holidays | 2521868 |
| 3003 | 37300.38100.38200.49500.402600 | 37th flr-Internal painting | 10d | 2029-01-17 | 2029-01-26 | 2990, 3002 |  | 7 day week No holidays | 2521878 |
| 3004 | 37300.38100.38200.49500.402700 | 37th flr-Internal shutter fixing | 12d | 2029-01-05 | 2029-01-16 | 2991, 3001 |  | 7 day week No holidays | 2521888 |
| 3005 | 37300.38100.38200.49600 | **38th Floor** | 64d | 2028-12-10 | 2029-02-11 |  | start no earlier than 2028-12-10 | 7 day week No holidays | 2506288 |
| 3006 | 37300.38100.38200.49600.402800 | 38th flr-Gypsum Plaster | 14d | 2028-12-28 | 2029-01-10 | 2461, 2479, 2993 |  | 7 day week No holidays | 2521898 |
| 3007 | 37300.38100.38200.49600.402900 | 38th flr-Kitchen Platform | 8d | 2029-01-11 | 2029-01-18 | 2994, 3006 |  | 7 day week No holidays | 2521908 |
| 3008 | 37300.38100.38200.49600.403000 | 38th flr-Toilet dado & flooring | 14d | 2028-12-10 | 2028-12-23 | 2465, 2995 |  | 7 day week No holidays | 2521918 |
| 3009 | 37300.38100.38200.49600.403100 | 38th flr-Fire sprinkler pipe | 12d | 2029-01-11 | 2029-01-22 | 2996, 3006 |  | 7 day week No holidays | 2521928 |
| 3010 | 37300.38100.38200.49600.403200 | 38th flr-Flat flooring | 14d | 2028-12-24 | 2029-01-06 | 2997, 3008 |  | 7 day week No holidays | 2521938 |
| 3011 | 37300.38100.38200.49600.403300 | 38th flr-Main door fixing & frame fixing | 14d | 2029-01-07 | 2029-01-20 | 2998, 3010 |  | 7 day week No holidays | 2521948 |
| 3012 | 37300.38100.38200.49600.403400 | 38th flr-Window fixing | 14d | 2029-01-07 | 2029-01-20 | 2999, 3010 |  | 7 day week No holidays | 2521958 |
| 3013 | 37300.38100.38200.49600.403500 | 38th flr-Railing Fixing | 14d | 2029-01-07 | 2029-01-20 | 3000, 3010 |  | 7 day week No holidays | 2521968 |
| 3014 | 37300.38100.38200.49600.403600 | 38th flr-Internal painting - putty / primer application | 14d | 2029-01-07 | 2029-01-20 | 3001, 3010 |  | 7 day week No holidays | 2521978 |
| 3015 | 37300.38100.38200.49600.403700 | 38th flr-Flat electrical wiring | 12d | 2029-01-21 | 2029-02-01 | 3002, 3011 |  | 7 day week No holidays | 2521988 |
| 3016 | 37300.38100.38200.49600.403800 | 38th flr-Internal painting | 10d | 2029-02-02 | 2029-02-11 | 3003, 3015 |  | 7 day week No holidays | 2521998 |
| 3017 | 37300.38100.38200.49600.403900 | 38th flr-Internal shutter fixing | 12d | 2029-01-21 | 2029-02-01 | 3004, 3014 |  | 7 day week No holidays | 2522008 |

| ID | WBS | Task | Duration | Start | Finish | Predecessors | Constraint | Calendar | Unique_Task_ID |
| --- | --- | --- | --- | --- | --- | --- | --- | --- | --- |
| 3018 | 37300.38100.38200.49700 | **39th Floor** | 64d | 2028-12-26 | 2029-02-27 |  | start no earlier than 2028-12-26 | 7 day week No holidays | 2506298 |
| 3019 | 37300.38100.38200.49700.404000 | 39th flr-Gypsum Plaster | 14d | 2029-01-13 | 2029-01-26 | 2467, 2485, 3006 |  | 7 day week No holidays | 2522018 |
| 3020 | 37300.38100.38200.49700.404100 | 39th flr-Kitchen Platform | 8d | 2029-01-27 | 2029-02-03 | 3007, 3019 |  | 7 day week No holidays | 2522028 |
| 3021 | 37300.38100.38200.49700.404200 | 39th flr-Toilet dado & flooring | 14d | 2028-12-26 | 2029-01-08 | 2471, 3008 |  | 7 day week No holidays | 2522038 |
| 3022 | 37300.38100.38200.49700.404300 | 39th flr-Fire sprinkler pipe | 12d | 2029-01-27 | 2029-02-07 | 3009, 3019 |  | 7 day week No holidays | 2522048 |
| 3023 | 37300.38100.38200.49700.404400 | 39th flr-Flat flooring | 14d | 2029-01-09 | 2029-01-22 | 3010, 3021 |  | 7 day week No holidays | 2522058 |
| 3024 | 37300.38100.38200.49700.404500 | 39th flr-Main door fixing & frame fixing | 14d | 2029-01-23 | 2029-02-05 | 3011, 3023 |  | 7 day week No holidays | 2522068 |
| 3025 | 37300.38100.38200.49700.404600 | 39th flr-Window fixing | 14d | 2029-01-23 | 2029-02-05 | 3012, 3023 |  | 7 day week No holidays | 2522078 |
| 3026 | 37300.38100.38200.49700.404700 | 39th flr-Railing Fixing | 14d | 2029-01-23 | 2029-02-05 | 3013, 3023 |  | 7 day week No holidays | 2522088 |
| 3027 | 37300.38100.38200.49700.404800 | 39th flr-Internal painting - putty / primer application | 14d | 2029-01-23 | 2029-02-05 | 3014, 3023 |  | 7 day week No holidays | 2522098 |
| 3028 | 37300.38100.38200.49700.404900 | 39th flr-Flat electrical wiring | 12d | 2029-02-06 | 2029-02-17 | 3015, 3024 |  | 7 day week No holidays | 2522108 |
| 3029 | 37300.38100.38200.49700.405000 | 39th flr-Internal painting | 10d | 2029-02-18 | 2029-02-27 | 3016, 3028 |  | 7 day week No holidays | 2522118 |
| 3030 | 37300.38100.38200.49700.405100 | 39th flr-Internal shutter fixing | 12d | 2029-02-06 | 2029-02-17 | 3017, 3027 |  | 7 day week No holidays | 2522128 |
| 3031 | 37300.38100.38200.49800 | **40th Floor** | 64d | 2029-01-11 | 2029-03-15 |  | start no earlier than 2029-01-11 | 7 day week No holidays | 2506308 |
| 3032 | 37300.38100.38200.49800.405200 | 40th flr-Gypsum Plaster | 14d | 2029-01-29 | 2029-02-11 | 2473, 2491, 3019 |  | 7 day week No holidays | 2522138 |
| 3033 | 37300.38100.38200.49800.405300 | 40th flr-Kitchen Platform | 8d | 2029-02-12 | 2029-02-19 | 3020, 3032 |  | 7 day week No holidays | 2522148 |
| 3034 | 37300.38100.38200.49800.405400 | 40th flr-Toilet dado & flooring | 14d | 2029-01-11 | 2029-01-24 | 2477, 3021 |  | 7 day week No holidays | 2522158 |
| 3035 | 37300.38100.38200.49800.405500 | 40th flr-Fire sprinkler pipe | 12d | 2029-02-12 | 2029-02-23 | 3022, 3032 |  | 7 day week No holidays | 2522168 |
| 3036 | 37300.38100.38200.49800.405600 | 40th flr-Flat flooring | 14d | 2029-01-25 | 2029-02-07 | 3023, 3034 |  | 7 day week No holidays | 2522178 |
| 3037 | 37300.38100.38200.49800.405700 | 40th flr-Main door fixing & frame fixing | 14d | 2029-02-08 | 2029-02-21 | 3024, 3036 |  | 7 day week No holidays | 2522188 |
| 3038 | 37300.38100.38200.49800.405800 | 40th flr-Window fixing | 14d | 2029-02-08 | 2029-02-21 | 3025, 3036 |  | 7 day week No holidays | 2522198 |
| 3039 | 37300.38100.38200.49800.405900 | 40th flr-Railing Fixing | 14d | 2029-02-08 | 2029-02-21 | 3026, 3036 |  | 7 day week No holidays | 2522208 |
| 3040 | 37300.38100.38200.49800.406000 | 40th flr-Internal painting - putty / primer application | 14d | 2029-02-08 | 2029-02-21 | 3027, 3036 |  | 7 day week No holidays | 2522218 |
| 3041 | 37300.38100.38200.49800.406100 | 40th flr-Flat electrical wiring | 12d | 2029-02-22 | 2029-03-05 | 3028, 3037 |  | 7 day week No holidays | 2522228 |
| 3042 | 37300.38100.38200.49800.406200 | 40th flr-Internal painting | 10d | 2029-03-06 | 2029-03-15 | 3029, 3041 |  | 7 day week No holidays | 2522238 |
| 3043 | 37300.38100.38200.49800.406300 | 40th flr-Internal shutter fixing | 12d | 2029-02-22 | 2029-03-05 | 3030, 3040 |  | 7 day week No holidays | 2522248 |

| ID | WBS | Task | Duration | Start | Finish | Predecessors | Constraint | Calendar | Unique_Task_ID |
| --- | --- | --- | --- | --- | --- | --- | --- | --- | --- |
| 3044 | 37300.38100.38200.49900 | **41th Floor** | 64d | 2029-01-27 | 2029-03-31 |  | start no earlier than 2029-01-27 | 7 day week No holidays | 2506318 |
| 3045 | 37300.38100.38200.49900.406400 | 41st flr-Gypsum Plaster | 14d | 2029-02-14 | 2029-02-27 | 2479, 2497, 3032 |  | 7 day week No holidays | 2522258 |
| 3046 | 37300.38100.38200.49900.406500 | 41st flr-Kitchen Platform | 8d | 2029-02-28 | 2029-03-07 | 3033, 3045 |  | 7 day week No holidays | 2522268 |
| 3047 | 37300.38100.38200.49900.406600 | 41st flr-Toilet dado & flooring | 14d | 2029-01-27 | 2029-02-09 | 2483, 3034 |  | 7 day week No holidays | 2522278 |
| 3048 | 37300.38100.38200.49900.406700 | 41st flr-Fire sprinkler pipe | 12d | 2029-02-28 | 2029-03-11 | 3035, 3045 |  | 7 day week No holidays | 2522288 |
| 3049 | 37300.38100.38200.49900.406800 | 41st flr-Flat flooring | 14d | 2029-02-10 | 2029-02-23 | 3036, 3047 |  | 7 day week No holidays | 2522298 |
| 3050 | 37300.38100.38200.49900.406900 | 41st flr-Main door fixing & frame fixing | 14d | 2029-02-24 | 2029-03-09 | 3037, 3049 |  | 7 day week No holidays | 2522308 |
| 3051 | 37300.38100.38200.49900.407000 | 41st flr-Window fixing | 14d | 2029-02-24 | 2029-03-09 | 3038, 3049 |  | 7 day week No holidays | 2522318 |
| 3052 | 37300.38100.38200.49900.407100 | 41st flr-Railing Fixing | 14d | 2029-02-24 | 2029-03-09 | 3039, 3049 |  | 7 day week No holidays | 2522328 |
| 3053 | 37300.38100.38200.49900.407200 | 41st flr-Internal painting - putty / primer application | 14d | 2029-02-24 | 2029-03-09 | 3040, 3049 |  | 7 day week No holidays | 2522338 |
| 3054 | 37300.38100.38200.49900.407300 | 41st flr-Flat electrical wiring | 12d | 2029-03-10 | 2029-03-21 | 3041, 3050 |  | 7 day week No holidays | 2522348 |
| 3055 | 37300.38100.38200.49900.407400 | 41st flr-Internal painting | 10d | 2029-03-22 | 2029-03-31 | 3042, 3054 |  | 7 day week No holidays | 2522358 |
| 3056 | 37300.38100.38200.49900.407500 | 41st flr-Internal shutter fixing | 12d | 2029-03-10 | 2029-03-21 | 3043, 3053 |  | 7 day week No holidays | 2522368 |
| 3057 | 37300.38100.38200.50000 | **42nd Floor** | 64d | 2029-02-12 | 2029-04-16 |  | start no earlier than 2029-02-12 | 7 day week No holidays | 2506328 |
| 3058 | 37300.38100.38200.50000.407600 | 42nd flr-Gypsum Plaster | 14d | 2029-03-02 | 2029-03-15 | 2485, 2503, 3045 |  | 7 day week No holidays | 2522378 |
| 3059 | 37300.38100.38200.50000.407700 | 42nd flr-Kitchen Platform | 8d | 2029-03-16 | 2029-03-23 | 3046, 3058 |  | 7 day week No holidays | 2522388 |
| 3060 | 37300.38100.38200.50000.407800 | 42nd flr-Toilet dado & flooring | 14d | 2029-02-12 | 2029-02-25 | 2489, 3047 |  | 7 day week No holidays | 2522398 |
| 3061 | 37300.38100.38200.50000.407900 | 42nd flr-Fire sprinkler pipe | 12d | 2029-03-16 | 2029-03-27 | 3048, 3058 |  | 7 day week No holidays | 2522408 |
| 3062 | 37300.38100.38200.50000.408000 | 42nd flr-Flat flooring | 14d | 2029-02-26 | 2029-03-11 | 3049, 3060 |  | 7 day week No holidays | 2522418 |
| 3063 | 37300.38100.38200.50000.408100 | 42nd flr-Main door fixing & frame fixing | 14d | 2029-03-12 | 2029-03-25 | 3050, 3062 |  | 7 day week No holidays | 2522428 |
| 3064 | 37300.38100.38200.50000.408200 | 42nd flr-Window fixing | 14d | 2029-03-12 | 2029-03-25 | 3051, 3062 |  | 7 day week No holidays | 2522438 |
| 3065 | 37300.38100.38200.50000.408300 | 42nd flr-Railing Fixing | 14d | 2029-03-12 | 2029-03-25 | 3052, 3062 |  | 7 day week No holidays | 2522448 |
| 3066 | 37300.38100.38200.50000.408400 | 42nd flr-Internal painting - putty / primer application | 14d | 2029-03-12 | 2029-03-25 | 3053, 3062 |  | 7 day week No holidays | 2522458 |
| 3067 | 37300.38100.38200.50000.408500 | 42nd flr-Flat electrical wiring | 12d | 2029-03-26 | 2029-04-06 | 3054, 3063 |  | 7 day week No holidays | 2522468 |
| 3068 | 37300.38100.38200.50000.408600 | 42nd flr-Internal painting | 10d | 2029-04-07 | 2029-04-16 | 3055, 3067 |  | 7 day week No holidays | 2522478 |
| 3069 | 37300.38100.38200.50000.408700 | 42nd flr-Internal shutter fixing | 12d | 2029-03-26 | 2029-04-06 | 3056, 3066 |  | 7 day week No holidays | 2522488 |

| ID | WBS | Task | Duration | Start | Finish | Predecessors | Constraint | Calendar | Unique_Task_ID |
| --- | --- | --- | --- | --- | --- | --- | --- | --- | --- |
| 3070 | 37300.38100.38200.50100 | **43rd Floor** | 64d | 2029-02-28 | 2029-05-02 |  | start no earlier than 2029-02-28 | 7 day week No holidays | 2506338 |
| 3071 | 37300.38100.38200.50100.408800 | 43rd flr-Gypsum Plaster | 14d | 2029-03-18 | 2029-03-31 | 2491, 2509, 3058 |  | 7 day week No holidays | 2522498 |
| 3072 | 37300.38100.38200.50100.408900 | 43rd flr-Kitchen Platform | 8d | 2029-04-01 | 2029-04-08 | 3059, 3071 |  | 7 day week No holidays | 2522508 |
| 3073 | 37300.38100.38200.50100.409000 | 43rd flr-Toilet dado & flooring | 14d | 2029-02-28 | 2029-03-13 | 2495, 3060 |  | 7 day week No holidays | 2522518 |
| 3074 | 37300.38100.38200.50100.409100 | 43rd flr-Fire sprinkler pipe | 12d | 2029-04-01 | 2029-04-12 | 3061, 3071 |  | 7 day week No holidays | 2522528 |
| 3075 | 37300.38100.38200.50100.409200 | 43rd flr-Flat flooring | 14d | 2029-03-14 | 2029-03-27 | 3062, 3073 |  | 7 day week No holidays | 2522538 |
| 3076 | 37300.38100.38200.50100.409300 | 43rd flr-Main door fixing & frame fixing | 14d | 2029-03-28 | 2029-04-10 | 3063, 3075 |  | 7 day week No holidays | 2522548 |
| 3077 | 37300.38100.38200.50100.409400 | 43rd flr-Window fixing | 14d | 2029-03-28 | 2029-04-10 | 3064, 3075 |  | 7 day week No holidays | 2522558 |
| 3078 | 37300.38100.38200.50100.409500 | 43rd flr-Railing Fixing | 14d | 2029-03-28 | 2029-04-10 | 3065, 3075 |  | 7 day week No holidays | 2522568 |
| 3079 | 37300.38100.38200.50100.409600 | 43rd flr-Internal painting - putty / primer application | 14d | 2029-03-28 | 2029-04-10 | 3066, 3075 |  | 7 day week No holidays | 2522578 |
| 3080 | 37300.38100.38200.50100.409700 | 43rd flr-Flat electrical wiring | 12d | 2029-04-11 | 2029-04-22 | 3067, 3076 |  | 7 day week No holidays | 2522588 |
| 3081 | 37300.38100.38200.50100.409800 | 43rd flr-Internal painting | 10d | 2029-04-23 | 2029-05-02 | 3068, 3080 |  | 7 day week No holidays | 2522598 |
| 3082 | 37300.38100.38200.50100.409900 | 43rd flr-Internal shutter fixing | 12d | 2029-04-11 | 2029-04-22 | 3069, 3079 |  | 7 day week No holidays | 2522608 |
| 3083 | 37300.38100.38200.50200 | **44th Floor** | 64d | 2029-03-16 | 2029-05-18 |  | start no earlier than 2029-03-16 | 7 day week No holidays | 2506348 |
| 3084 | 37300.38100.38200.50200.410000 | 44th flr-Gypsum Plaster | 14d | 2029-04-03 | 2029-04-16 | 2497, 2515, 3071 |  | 7 day week No holidays | 2522618 |
| 3085 | 37300.38100.38200.50200.410100 | 44th flr-Kitchen Platform | 8d | 2029-04-17 | 2029-04-24 | 3072, 3084 |  | 7 day week No holidays | 2522628 |
| 3086 | 37300.38100.38200.50200.410200 | 44th flr-Toilet dado & flooring | 14d | 2029-03-16 | 2029-03-29 | 2501, 3073 |  | 7 day week No holidays | 2522638 |
| 3087 | 37300.38100.38200.50200.410300 | 44th flr-Fire sprinkler pipe | 12d | 2029-04-17 | 2029-04-28 | 3074, 3084 |  | 7 day week No holidays | 2522648 |
| 3088 | 37300.38100.38200.50200.410400 | 44th flr-Flat flooring | 14d | 2029-03-30 | 2029-04-12 | 3075, 3086 |  | 7 day week No holidays | 2522658 |
| 3089 | 37300.38100.38200.50200.410500 | 44th flr-Main door fixing & frame fixing | 14d | 2029-04-13 | 2029-04-26 | 3076, 3088 |  | 7 day week No holidays | 2522668 |
| 3090 | 37300.38100.38200.50200.410600 | 44th flr-Window fixing | 14d | 2029-04-13 | 2029-04-26 | 3077, 3088 |  | 7 day week No holidays | 2522678 |
| 3091 | 37300.38100.38200.50200.410700 | 44th flr-Railing Fixing | 14d | 2029-04-13 | 2029-04-26 | 3078, 3088 |  | 7 day week No holidays | 2522688 |
| 3092 | 37300.38100.38200.50200.410800 | 44th flr-Internal painting - putty / primer application | 14d | 2029-04-13 | 2029-04-26 | 3079, 3088 |  | 7 day week No holidays | 2522698 |
| 3093 | 37300.38100.38200.50200.410900 | 44th flr-Flat electrical wiring | 12d | 2029-04-27 | 2029-05-08 | 3080, 3089 |  | 7 day week No holidays | 2522708 |
| 3094 | 37300.38100.38200.50200.411000 | 44th flr-Internal painting | 10d | 2029-05-09 | 2029-05-18 | 3081, 3093 |  | 7 day week No holidays | 2522718 |
| 3095 | 37300.38100.38200.50200.411100 | 44th flr-Internal shutter fixing | 12d | 2029-04-27 | 2029-05-08 | 3082, 3092 |  | 7 day week No holidays | 2522728 |

| ID | WBS | Task | Duration | Start | Finish | Predecessors | Constraint | Calendar | Unique_Task_ID |
| --- | --- | --- | --- | --- | --- | --- | --- | --- | --- |
| 3096 | 37300.38100.38200.50300 | **45th Floor** | 64d | 2029-04-01 | 2029-06-03 |  | start no earlier than 2029-04-01 | 7 day week No holidays | 2506358 |
| 3097 | 37300.38100.38200.50300.411200 | 45th flr-Gypsum Plaster | 14d | 2029-04-19 | 2029-05-02 | 2503, 2521, 3084 |  | 7 day week No holidays | 2522738 |
| 3098 | 37300.38100.38200.50300.411300 | 45th flr-Kitchen Platform | 8d | 2029-05-03 | 2029-05-10 | 3085, 3097 |  | 7 day week No holidays | 2522748 |
| 3099 | 37300.38100.38200.50300.411400 | 45th flr-Toilet dado & flooring | 14d | 2029-04-01 | 2029-04-14 | 2507, 3086 |  | 7 day week No holidays | 2522758 |
| 3100 | 37300.38100.38200.50300.411500 | 45th flr-Fire sprinkler pipe | 12d | 2029-05-03 | 2029-05-14 | 3087, 3097 |  | 7 day week No holidays | 2522768 |
| 3101 | 37300.38100.38200.50300.411600 | 45th flr-Flat flooring | 14d | 2029-04-15 | 2029-04-28 | 3088, 3099 |  | 7 day week No holidays | 2522778 |
| 3102 | 37300.38100.38200.50300.411700 | 45th flr-Main door fixing & frame fixing | 14d | 2029-04-29 | 2029-05-12 | 3089, 3101 |  | 7 day week No holidays | 2522788 |
| 3103 | 37300.38100.38200.50300.411800 | 45th flr-Window fixing | 14d | 2029-04-29 | 2029-05-12 | 3090, 3101 |  | 7 day week No holidays | 2522798 |
| 3104 | 37300.38100.38200.50300.411900 | 45th flr-Railing Fixing | 14d | 2029-04-29 | 2029-05-12 | 3091, 3101 |  | 7 day week No holidays | 2522808 |
| 3105 | 37300.38100.38200.50300.412000 | 45th flr-Internal painting - putty / primer application | 14d | 2029-04-29 | 2029-05-12 | 3092, 3101 |  | 7 day week No holidays | 2522818 |
| 3106 | 37300.38100.38200.50300.412100 | 45th flr-Flat electrical wiring | 12d | 2029-05-13 | 2029-05-24 | 3093, 3102 |  | 7 day week No holidays | 2522828 |
| 3107 | 37300.38100.38200.50300.412200 | 45th flr-Internal painting | 10d | 2029-05-25 | 2029-06-03 | 3094, 3106 |  | 7 day week No holidays | 2522838 |
| 3108 | 37300.38100.38200.50300.412300 | 45th flr-Internal shutter fixing | 12d | 2029-05-13 | 2029-05-24 | 3095, 3105 |  | 7 day week No holidays | 2522848 |
| 3109 | 37300.38100.38200.50400 | **46th Floor** | 64d | 2029-04-17 | 2029-06-19 |  | start no earlier than 2029-04-17 | 7 day week No holidays | 2506368 |
| 3110 | 37300.38100.38200.50400.412400 | 46th flr-Gypsum Plaster | 14d | 2029-05-05 | 2029-05-18 | 2509, 2527, 3097 |  | 7 day week No holidays | 2522858 |
| 3111 | 37300.38100.38200.50400.412500 | 46th flr-Kitchen Platform | 8d | 2029-05-19 | 2029-05-26 | 3098, 3110 |  | 7 day week No holidays | 2522868 |
| 3112 | 37300.38100.38200.50400.412600 | 46th flr-Toilet dado & flooring | 14d | 2029-04-17 | 2029-04-30 | 2513, 3099 |  | 7 day week No holidays | 2522878 |
| 3113 | 37300.38100.38200.50400.412700 | 46th flr-Fire sprinkler pipe | 12d | 2029-05-19 | 2029-05-30 | 3100, 3110 |  | 7 day week No holidays | 2522888 |
| 3114 | 37300.38100.38200.50400.412800 | 46th flr-Flat flooring | 14d | 2029-05-01 | 2029-05-14 | 3101, 3112 |  | 7 day week No holidays | 2522898 |
| 3115 | 37300.38100.38200.50400.412900 | 46th flr-Main door fixing & frame fixing | 14d | 2029-05-15 | 2029-05-28 | 3102, 3114 |  | 7 day week No holidays | 2522908 |
| 3116 | 37300.38100.38200.50400.413000 | 46th flr-Window fixing | 14d | 2029-05-15 | 2029-05-28 | 3103, 3114 |  | 7 day week No holidays | 2522918 |
| 3117 | 37300.38100.38200.50400.413100 | 46th flr-Railing Fixing | 14d | 2029-05-15 | 2029-05-28 | 3104, 3114 |  | 7 day week No holidays | 2522928 |
| 3118 | 37300.38100.38200.50400.413200 | 46th flr-Internal painting - putty / primer application | 14d | 2029-05-15 | 2029-05-28 | 3105, 3114 |  | 7 day week No holidays | 2522938 |
| 3119 | 37300.38100.38200.50400.413300 | 46th flr-Flat electrical wiring | 12d | 2029-05-29 | 2029-06-09 | 3106, 3115 |  | 7 day week No holidays | 2522948 |
| 3120 | 37300.38100.38200.50400.413400 | 46th flr-Internal painting | 10d | 2029-06-10 | 2029-06-19 | 3107, 3119 |  | 7 day week No holidays | 2522958 |
| 3121 | 37300.38100.38200.50400.413500 | 46th flr-Internal shutter fixing | 12d | 2029-05-29 | 2029-06-09 | 3108, 3118 |  | 7 day week No holidays | 2522968 |

| ID | WBS | Task | Duration | Start | Finish | Predecessors | Constraint | Calendar | Unique_Task_ID |
| --- | --- | --- | --- | --- | --- | --- | --- | --- | --- |
| 3122 | 37300.38100.38200.50500 | **47th Floor** | 64d | 2029-05-03 | 2029-07-05 |  | start no earlier than 2029-05-03 | 7 day week No holidays | 2506378 |
| 3123 | 37300.38100.38200.50500.413600 | 47th flr-Gypsum Plaster | 14d | 2029-05-19 | 2029-06-01 | 2515, 2533, 3110 |  | 7 day week No holidays | 2522978 |
| 3124 | 37300.38100.38200.50500.413700 | 47th flr-Kitchen Platform | 8d | 2029-06-02 | 2029-06-09 | 3111, 3123 |  | 7 day week No holidays | 2522988 |
| 3125 | 37300.38100.38200.50500.413800 | 47th flr-Toilet dado & flooring | 14d | 2029-05-03 | 2029-05-16 | 2519, 3112 |  | 7 day week No holidays | 2522998 |
| 3126 | 37300.38100.38200.50500.413900 | 47th flr-Fire sprinkler pipe | 12d | 2029-06-02 | 2029-06-13 | 3113, 3123 |  | 7 day week No holidays | 2523008 |
| 3127 | 37300.38100.38200.50500.414000 | 47th flr-Flat flooring | 14d | 2029-05-17 | 2029-05-30 | 3114, 3125 |  | 7 day week No holidays | 2523018 |
| 3128 | 37300.38100.38200.50500.414100 | 47th flr-Main door fixing & frame fixing | 14d | 2029-05-31 | 2029-06-13 | 3115, 3127 |  | 7 day week No holidays | 2523028 |
| 3129 | 37300.38100.38200.50500.414200 | 47th flr-Window fixing | 14d | 2029-05-31 | 2029-06-13 | 3116, 3127 |  | 7 day week No holidays | 2523038 |
| 3130 | 37300.38100.38200.50500.414300 | 47th flr-Railing Fixing | 14d | 2029-05-31 | 2029-06-13 | 3117, 3127 |  | 7 day week No holidays | 2523048 |
| 3131 | 37300.38100.38200.50500.414400 | 47th flr-Internal painting - putty / primer application | 14d | 2029-05-31 | 2029-06-13 | 3118, 3127 |  | 7 day week No holidays | 2523058 |
| 3132 | 37300.38100.38200.50500.414500 | 47th flr-Flat electrical wiring | 12d | 2029-06-14 | 2029-06-25 | 3119, 3128 |  | 7 day week No holidays | 2523068 |
| 3133 | 37300.38100.38200.50500.414600 | 47th flr-Internal painting | 10d | 2029-06-26 | 2029-07-05 | 3120, 3132 |  | 7 day week No holidays | 2523078 |
| 3134 | 37300.38100.38200.50500.414700 | 47th flr-Internal shutter fixing | 12d | 2029-06-14 | 2029-06-25 | 3121, 3131 |  | 7 day week No holidays | 2523088 |
| 3135 | 37300.38100.38200.50600 | **48th Floor** | 64d | 2029-05-19 | 2029-07-21 |  | start no earlier than 2029-05-19 | 7 day week No holidays | 2506388 |
| 3136 | 37300.38100.38200.50600.414800 | 48th flr-Gypsum Plaster | 14d | 2029-06-02 | 2029-06-15 | 2521, 2539, 3123 |  | 7 day week No holidays | 2523098 |
| 3137 | 37300.38100.38200.50600.414900 | 48th flr-Kitchen Platform | 8d | 2029-06-16 | 2029-06-23 | 3124, 3136 |  | 7 day week No holidays | 2523108 |
| 3138 | 37300.38100.38200.50600.415000 | 48th flr-Toilet dado & flooring | 14d | 2029-05-19 | 2029-06-01 | 2525, 3125 |  | 7 day week No holidays | 2523118 |
| 3139 | 37300.38100.38200.50600.415100 | 48th flr-Fire sprinkler pipe | 12d | 2029-06-16 | 2029-06-27 | 3126, 3136 |  | 7 day week No holidays | 2523128 |
| 3140 | 37300.38100.38200.50600.415200 | 48th flr-Flat flooring | 14d | 2029-06-02 | 2029-06-15 | 3127, 3138 |  | 7 day week No holidays | 2523138 |
| 3141 | 37300.38100.38200.50600.415300 | 48th flr-Main door fixing & frame fixing | 14d | 2029-06-16 | 2029-06-29 | 3128, 3140 |  | 7 day week No holidays | 2523148 |
| 3142 | 37300.38100.38200.50600.415400 | 48th flr-Window fixing | 14d | 2029-06-16 | 2029-06-29 | 3129, 3140 |  | 7 day week No holidays | 2523158 |
| 3143 | 37300.38100.38200.50600.415500 | 48th flr-Railing Fixing | 14d | 2029-06-16 | 2029-06-29 | 3130, 3140 |  | 7 day week No holidays | 2523168 |
| 3144 | 37300.38100.38200.50600.415600 | 48th flr-Internal painting - putty / primer application | 14d | 2029-06-16 | 2029-06-29 | 3131, 3140 |  | 7 day week No holidays | 2523178 |
| 3145 | 37300.38100.38200.50600.415700 | 48th flr-Flat electrical wiring | 12d | 2029-06-30 | 2029-07-11 | 3132, 3141 |  | 7 day week No holidays | 2523188 |
| 3146 | 37300.38100.38200.50600.415800 | 48th flr-Internal painting | 10d | 2029-07-12 | 2029-07-21 | 3133, 3145 |  | 7 day week No holidays | 2523198 |
| 3147 | 37300.38100.38200.50600.415900 | 48th flr-Internal shutter fixing | 12d | 2029-06-30 | 2029-07-11 | 3134, 3144 |  | 7 day week No holidays | 2523208 |

| ID | WBS | Task | Duration | Start | Finish | Predecessors | Constraint | Calendar | Unique_Task_ID |
| --- | --- | --- | --- | --- | --- | --- | --- | --- | --- |
| 3148 | 37300.38100.38200.50700 | **49th Floor** | 64d | 2029-06-04 | 2029-08-06 |  | start no earlier than 2029-06-04 | 7 day week No holidays | 2506398 |
| 3149 | 37300.38100.38200.50700.416000 | 49th flr-Gypsum Plaster | 14d | 2029-06-16 | 2029-06-29 | 2527, 2545, 3136 |  | 7 day week No holidays | 2523218 |
| 3150 | 37300.38100.38200.50700.416100 | 49th flr-Kitchen Platform | 8d | 2029-06-30 | 2029-07-07 | 3137, 3149 |  | 7 day week No holidays | 2523228 |
| 3151 | 37300.38100.38200.50700.416200 | 49th flr-Toilet dado & flooring | 14d | 2029-06-04 | 2029-06-17 | 2531, 3138 |  | 7 day week No holidays | 2523238 |
| 3152 | 37300.38100.38200.50700.416300 | 49th flr-Fire sprinkler pipe | 12d | 2029-06-30 | 2029-07-11 | 3139, 3149 |  | 7 day week No holidays | 2523248 |
| 3153 | 37300.38100.38200.50700.416400 | 49th flr-Flat flooring | 14d | 2029-06-18 | 2029-07-01 | 3140, 3151 |  | 7 day week No holidays | 2523258 |
| 3154 | 37300.38100.38200.50700.416500 | 49th flr-Main door fixing & frame fixing | 14d | 2029-07-02 | 2029-07-15 | 3141, 3153 |  | 7 day week No holidays | 2523268 |
| 3155 | 37300.38100.38200.50700.416600 | 49th flr-Window fixing | 14d | 2029-07-02 | 2029-07-15 | 3142, 3153 |  | 7 day week No holidays | 2523278 |
| 3156 | 37300.38100.38200.50700.416700 | 49th flr-Railing Fixing | 14d | 2029-07-02 | 2029-07-15 | 3143, 3153 |  | 7 day week No holidays | 2523288 |
| 3157 | 37300.38100.38200.50700.416800 | 49th flr-Internal painting - putty / primer application | 14d | 2029-07-02 | 2029-07-15 | 3144, 3153 |  | 7 day week No holidays | 2523298 |
| 3158 | 37300.38100.38200.50700.416900 | 49th flr-Flat electrical wiring | 12d | 2029-07-16 | 2029-07-27 | 3145, 3154 |  | 7 day week No holidays | 2523308 |
| 3159 | 37300.38100.38200.50700.417000 | 49th flr-Internal painting | 10d | 2029-07-28 | 2029-08-06 | 3146, 3158 |  | 7 day week No holidays | 2523318 |
| 3160 | 37300.38100.38200.50700.417100 | 49th flr-Internal shutter fixing | 12d | 2029-07-16 | 2029-07-27 | 3147, 3157 |  | 7 day week No holidays | 2523328 |
| 3161 | 37300.38100.38200.50800 | **50th Floor** | 98d | 2029-05-15 | 2029-08-20 |  | start no earlier than 2029-05-15 | 7 day week No holidays | 2506408 |
| 3162 | 37300.38100.38200.50800.417200 | 50th flr-Gypsum Plaster | 14d | 2029-05-15 | 2029-05-28 | 2533 |  | 7 day week No holidays | 2523338 |
| 3163 | 37300.38100.38200.50800.417300 | 50th flr-Kitchen Platform | 8d | 2029-07-08 | 2029-07-15 | 3150, 3162 |  | 7 day week No holidays | 2523348 |
| 3164 | 37300.38100.38200.50800.417400 | 50th flr-Toilet dado & flooring | 14d | 2029-06-18 | 2029-07-01 | 2537, 3151 |  | 7 day week No holidays | 2523358 |
| 3165 | 37300.38100.38200.50800.417500 | 50th flr-Fire sprinkler pipe | 12d | 2029-07-12 | 2029-07-23 | 3152, 3162 |  | 7 day week No holidays | 2523368 |
| 3166 | 37300.38100.38200.50800.417600 | 50th flr-Flat flooring | 14d | 2029-07-02 | 2029-07-15 | 3153, 3164 |  | 7 day week No holidays | 2523378 |
| 3167 | 37300.38100.38200.50800.417700 | 50th flr-Main door fixing & frame fixing | 14d | 2029-07-16 | 2029-07-29 | 3154, 3166 |  | 7 day week No holidays | 2523388 |
| 3168 | 37300.38100.38200.50800.417800 | 50th flr-Window fixing | 14d | 2029-07-16 | 2029-07-29 | 3155, 3166 |  | 7 day week No holidays | 2523398 |
| 3169 | 37300.38100.38200.50800.417900 | 50th flr-Railing Fixing | 14d | 2029-07-16 | 2029-07-29 | 3156, 3166 |  | 7 day week No holidays | 2523408 |
| 3170 | 37300.38100.38200.50800.418000 | 50th flr-Internal painting - putty / primer application | 14d | 2029-07-16 | 2029-07-29 | 3157, 3166 |  | 7 day week No holidays | 2523418 |
| 3171 | 37300.38100.38200.50800.418100 | 50th flr-Flat electrical wiring | 12d | 2029-07-30 | 2029-08-10 | 3158, 3167 |  | 7 day week No holidays | 2523428 |
| 3172 | 37300.38100.38200.50800.418200 | 50th flr-Internal painting | 10d | 2029-08-11 | 2029-08-20 | 3159, 3171 |  | 7 day week No holidays | 2523438 |
| 3173 | 37300.38100.38200.50800.418300 | 50th flr-Internal shutter fixing | 12d | 2029-07-30 | 2029-08-10 | 3160, 3170 |  | 7 day week No holidays | 2523448 |

| ID | WBS | Task | Duration | Start | Finish | Predecessors | Constraint | Calendar | Unique_Task_ID |
| --- | --- | --- | --- | --- | --- | --- | --- | --- | --- |
| 3174 | 37300.38100.38200.50900 | **51th Floor** | 102d | 2029-05-25 | 2029-09-03 |  | start no earlier than 2029-05-25 | 7 day week No holidays | 2506418 |
| 3175 | 37300.38100.38200.50900.418400 | 51st flr-Gypsum Plaster | 14d | 2029-05-25 | 2029-06-07 | 2539 |  | 7 day week No holidays | 2523458 |
| 3176 | 37300.38100.38200.50900.418500 | 51st flr-Kitchen Platform | 8d | 2029-07-16 | 2029-07-23 | 3163, 3175 |  | 7 day week No holidays | 2523468 |
| 3177 | 37300.38100.38200.50900.418600 | 51st flr-Toilet dado & flooring | 14d | 2029-07-02 | 2029-07-15 | 2543, 3164 |  | 7 day week No holidays | 2523478 |
| 3178 | 37300.38100.38200.50900.418700 | 51st flr-Fire sprinkler pipe | 12d | 2029-07-24 | 2029-08-04 | 3165, 3175 |  | 7 day week No holidays | 2523488 |
| 3179 | 37300.38100.38200.50900.418800 | 51st flr-Flat flooring | 14d | 2029-07-16 | 2029-07-29 | 3166, 3177 |  | 7 day week No holidays | 2523498 |
| 3180 | 37300.38100.38200.50900.418900 | 51st flr-Main door fixing & frame fixing | 14d | 2029-07-30 | 2029-08-12 | 3167, 3179 |  | 7 day week No holidays | 2523508 |
| 3181 | 37300.38100.38200.50900.419000 | 51st flr-Window fixing | 14d | 2029-07-30 | 2029-08-12 | 3168, 3179 |  | 7 day week No holidays | 2523518 |
| 3182 | 37300.38100.38200.50900.419100 | 51st flr-Railing Fixing | 14d | 2029-07-30 | 2029-08-12 | 3169, 3179 |  | 7 day week No holidays | 2523528 |
| 3183 | 37300.38100.38200.50900.419200 | 51st flr-Internal painting - putty / primer application | 14d | 2029-07-30 | 2029-08-12 | 3170, 3179 |  | 7 day week No holidays | 2523538 |
| 3184 | 37300.38100.38200.50900.419300 | 51st flr-Flat electrical wiring | 12d | 2029-08-13 | 2029-08-24 | 3171, 3180 |  | 7 day week No holidays | 2523548 |
| 3185 | 37300.38100.38200.50900.419400 | 51st flr-Internal painting | 10d | 2029-08-25 | 2029-09-03 | 3172, 3184 |  | 7 day week No holidays | 2523558 |
| 3186 | 37300.38100.38200.50900.419500 | 51st flr-Internal shutter fixing | 12d | 2029-08-13 | 2029-08-24 | 3173, 3183 |  | 7 day week No holidays | 2523568 |
| 3187 | 37300.38100.38200.51000 | **52ndFloor** | 106d | 2029-06-04 | 2029-09-17 |  | start no earlier than 2029-06-04 | 7 day week No holidays | 2506428 |
| 3188 | 37300.38100.38200.51000.419600 | 52nd flr-Gypsum Plaster | 14d | 2029-06-04 | 2029-06-17 | 2545 |  | 7 day week No holidays | 2523578 |
| 3189 | 37300.38100.38200.51000.419700 | 52nd flr-Kitchen Platform | 8d | 2029-07-24 | 2029-07-31 | 3176, 3188 |  | 7 day week No holidays | 2523588 |
| 3190 | 37300.38100.38200.51000.419800 | 52nd flr-Toilet dado & flooring | 14d | 2029-07-16 | 2029-07-29 | 2549, 3177 |  | 7 day week No holidays | 2523598 |
| 3191 | 37300.38100.38200.51000.419900 | 52nd flr-Fire sprinkler pipe | 12d | 2029-08-05 | 2029-08-16 | 3178, 3188 |  | 7 day week No holidays | 2523608 |
| 3192 | 37300.38100.38200.51000.420000 | 52nd flr-Flat flooring | 14d | 2029-07-30 | 2029-08-12 | 3179, 3190 |  | 7 day week No holidays | 2523618 |
| 3193 | 37300.38100.38200.51000.420100 | 52nd flr-Main door fixing & frame fixing | 14d | 2029-08-13 | 2029-08-26 | 3180, 3192 |  | 7 day week No holidays | 2523628 |
| 3194 | 37300.38100.38200.51000.420200 | 52nd flr-Window fixing | 14d | 2029-08-13 | 2029-08-26 | 3181, 3192 |  | 7 day week No holidays | 2523638 |
| 3195 | 37300.38100.38200.51000.420300 | 52nd flr-Railing Fixing | 14d | 2029-08-13 | 2029-08-26 | 3182, 3192 |  | 7 day week No holidays | 2523648 |
| 3196 | 37300.38100.38200.51000.420400 | 52nd flr-Internal painting - putty / primer application | 14d | 2029-08-13 | 2029-08-26 | 3183, 3192 |  | 7 day week No holidays | 2523658 |
| 3197 | 37300.38100.38200.51000.420500 | 52nd flr-Flat electrical wiring | 12d | 2029-08-27 | 2029-09-07 | 3184, 3193 |  | 7 day week No holidays | 2523668 |
| 3198 | 37300.38100.38200.51000.420600 | 52nd flr-Internal painting | 10d | 2029-09-08 | 2029-09-17 | 3185, 3197 |  | 7 day week No holidays | 2523678 |
| 3199 | 37300.38100.38200.51000.420700 | 52nd flr-Internal shutter fixing | 12d | 2029-08-27 | 2029-09-07 | 3186, 3196 |  | 7 day week No holidays | 2523688 |
| 3200 | 37300.38100.126700 | Basement(1 & 2) - Internal finishing & services | 90d | 2029-01-08 | 2029-04-07 | 2556 |  | 7 day week No holidays | 2508168 |
| 3201 | 37300.38100.126800 | Podium Floors - Internal finishing & Services | 150d | 2029-03-16 | 2029-08-12 | 3031 |  | 7 day week No holidays | 2508178 |
| 3202 | 37300.38100.126900 | GF - Internal finishing & services | 90d | 2029-02-07 | 2029-05-07 | 2568 |  | 7 day week No holidays | 2508188 |

| ID | WBS | Task | Duration | Start | Finish | Predecessors | Constraint | Calendar | Unique_Task_ID |
| --- | --- | --- | --- | --- | --- | --- | --- | --- | --- |
| 3203 | 37300.51200 | **Common MEP Works** | 987d | 2027-07-24 | 2030-04-05 |  | start no earlier than 2027-07-24 | 7 day week No holidays | 2506648 |
| 3204 | 37300.51200.66700 | **Lift** | 540d | 2028-10-13 | 2030-04-05 |  | start no earlier than 2028-10-13 | 7 day week No holidays | 2508138 |
| 3205 | 37300.51200.66700.216900 | Lift Shaft Handover | 45d | 2029-08-09 | 2029-09-22 | 2235 |  | 7 day week No holidays | 2509648 |
| 3206 | 37300.51200.66700.217000 | Lift installation work | 180d | 2029-09-23 | 2030-03-21 | 3205 |  | 7 day week No holidays | 2509658 |
| 3207 | 37300.51200.66700.217100 | Lift pressurization | 15d | 2030-03-22 | 2030-04-05 | 3206 |  | 7 day week No holidays | 2509668 |
| 3208 | 37300.51200.66700.217200 | Lift-Order Date | 1d | 2028-10-13 | 2028-10-13 | 3209SS |  | 7 day week No holidays | 7562343 |
| 3209 | 37300.51200.66700.217300 | Lift-Shop Drawing Approval Date | 30d | 2028-10-13 | 2028-11-11 | 3210SS |  | 7 day week No holidays | 7562353 |
| 3210 | 37300.51200.66700.217400 | Lift-Start of Supply for first lot date | 210d | 2028-10-13 | 2029-05-10 | 2234FF |  | 7 day week No holidays | 7562363 |
| 3211 | 37300.51200.78000 | **Plumbing works** | 779d | 2027-08-03 | 2029-09-19 |  | start no earlier than 2027-08-03 | 7 day week No holidays | 2508128 |
| 3212 | 37300.51200.78000.217500 | Shaft Plumbing | 600d | 2027-08-03 | 2029-03-24 | 2413 |  | 7 day week No holidays | 2509678 |
| 3213 | 37300.51200.78000.217600 | Terrace looping | 35d | 2029-08-16 | 2029-09-19 | 2555 |  | 7 day week No holidays | 2509688 |
| 3214 | 37300.51200.78000.217700 | Sanitary fittings | 45d | 2029-03-25 | 2029-05-08 | 3212 |  | 7 day week No holidays | 2509698 |
| 3215 | 37300.51200.78000.217800 | Solar water heater | 90d | 2029-03-25 | 2029-06-22 | 3212 |  | 7 day week No holidays | 2509708 |
| 3216 | 37300.51200.78300 | **Fire Fighting works** | 610d | 2027-07-24 | 2029-03-24 |  | start no earlier than 2027-07-24 | 7 day week No holidays | 2508148 |
| 3217 | 37300.51200.78300.217900 | Fire duct downtake | 600d | 2027-08-03 | 2029-03-24 | 2413 |  | 7 day week No holidays | 2509718 |
| 3218 | 37300.51200.78300.218000 | FA & PA | 580d | 2027-07-24 | 2029-02-22 | 2413FS-10d |  | 7 day week No holidays | 2509728 |
| 3219 | 37300.51200.78300.218100 | Fire accessories fitting | 600d | 2027-08-03 | 2029-03-24 | 2413 |  | 7 day week No holidays | 2509738 |
| 3220 | 37300.51200.77000 | **Electrical works** | 802d | 2027-08-03 | 2029-10-12 |  | start no earlier than 2027-08-03 | 7 day week No holidays | 2507478 |
| 3221 | 37300.51200.77000.218200 | Shaft, Common area wiring & DB fixing | 700d | 2027-08-03 | 2029-07-02 | 2413 |  | 7 day week No holidays | 2509748 |
| 3222 | 37300.51200.77000.218300 | Meter room erection | 90d | 2029-07-03 | 2029-09-30 | 3221 |  | 7 day week No holidays | 2509758 |
| 3223 | 37300.51200.77000.218400 | Panel erection | 35d | 2029-09-08 | 2029-10-12 | 3644, 3221 |  | 7 day week No holidays | 2509768 |
| 3224 | 37300.51200.77000.218500 | DG Installtion | 30d | 2029-09-08 | 2029-10-07 | 3645, 3221 |  | 7 day week No holidays | 2509778 |
| 3225 | 37300.51200.77000.218600 | Transformer erection | 30d | 2029-09-08 | 2029-10-07 | 3646, 3221 |  | 7 day week No holidays | 2509788 |
| 3226 | 37300.51200.127000 | Services completion | 30d | 2029-10-08 | 2029-11-06 | 3212, 3213, 3218, 3225, 3219 |  | 7 day week No holidays | 2508198 |

| ID | WBS | Task | Duration | Start | Finish | Predecessors | Constraint | Calendar | Unique_Task_ID |
| --- | --- | --- | --- | --- | --- | --- | --- | --- | --- |
| 3227 | 37300.38300 | **Lift Lobby & Staircase Finishing Works** | 306d | 2029-03-02 | 2030-01-01 |  | start no earlier than 2029-03-02 | 7 day week No holidays | 2505938 |
| 3228 | 37300.38300.57200 | **GF Floor** | 39d | 2029-03-02 | 2029-04-09 |  | start no earlier than 2029-03-02 | 7 day week No holidays | 2506658 |
| 3229 | 37300.38300.57200.218700 | Lift blockwork | 6d | 2029-03-02 | 2029-03-07 | 2503 |  | 7 day week No holidays | 2509798 |
| 3230 | 37300.38300.57200.218800 | Lobby architrave work | 7d | 2029-03-08 | 2029-03-14 | 3229 |  | 7 day week No holidays | 2509808 |
| 3231 | 37300.38300.57200.218900 | Lobby gypsum plaster | 8d | 2029-03-15 | 2029-03-22 | 3230 |  | 7 day week No holidays | 2509818 |
| 3232 | 37300.38300.57200.219000 | Staircase epoxy paint | 10d | 2029-03-23 | 2029-04-01 | 3231 |  | 7 day week No holidays | 2509828 |
| 3233 | 37300.38300.57200.219100 | Staircase railing | 6d | 2029-03-23 | 2029-03-28 | 3231 |  | 7 day week No holidays | 2509838 |
| 3234 | 37300.38300.57200.219200 | Lobby flooring work | 8d | 2029-03-23 | 2029-03-30 | 3231 |  | 7 day week No holidays | 2509848 |
| 3235 | 37300.38300.57200.219300 | Painting | 10d | 2029-03-31 | 2029-04-09 | 3234 |  | 7 day week No holidays | 2509858 |
| 3236 | 37300.38300.57200.219400 | Fire rated doors | 6d | 2029-03-31 | 2029-04-05 | 3234 |  | 7 day week No holidays | 2509868 |
| 3237 | 37300.38300.57300 | **Podium Floors** | 42d | 2029-03-08 | 2029-04-18 |  | start no earlier than 2029-03-08 | 7 day week No holidays | 2506668 |
| 3238 | 37300.38300.57300.219500 | Lift blockwork | 6d | 2029-03-08 | 2029-03-13 | 3229 |  | 7 day week No holidays | 2509878 |
| 3239 | 37300.38300.57300.219600 | Lobby architrave work | 10d | 2029-03-14 | 2029-03-23 | 3238 |  | 7 day week No holidays | 2509888 |
| 3240 | 37300.38300.57300.219700 | Lobby gypsum plaster | 8d | 2029-03-24 | 2029-03-31 | 3239 |  | 7 day week No holidays | 2509898 |
| 3241 | 37300.38300.57300.219800 | Staircase epoxy paint | 10d | 2029-04-01 | 2029-04-10 | 3240 |  | 7 day week No holidays | 2509908 |
| 3242 | 37300.38300.57300.219900 | Staircase railing | 6d | 2029-04-01 | 2029-04-06 | 3240 |  | 7 day week No holidays | 2509918 |
| 3243 | 37300.38300.57300.220000 | Lobby flooring work | 8d | 2029-04-01 | 2029-04-08 | 3240 |  | 7 day week No holidays | 2509928 |
| 3244 | 37300.38300.57300.220100 | Painting | 10d | 2029-04-09 | 2029-04-18 | 3243 |  | 7 day week No holidays | 2509938 |
| 3245 | 37300.38300.57300.220200 | Fire rated doors | 6d | 2029-04-09 | 2029-04-14 | 3243 |  | 7 day week No holidays | 2509948 |
| 3246 | 37300.38300.57400 | **9th Floor** | 42d | 2029-03-14 | 2029-04-24 |  | start no earlier than 2029-03-14 | 7 day week No holidays | 2506678 |
| 3247 | 37300.38300.57400.220300 | Lift blockwork | 6d | 2029-03-14 | 2029-03-19 | 3238 |  | 7 day week No holidays | 2509958 |
| 3248 | 37300.38300.57400.220400 | Lobby architrave work | 10d | 2029-03-20 | 2029-03-29 | 3247 |  | 7 day week No holidays | 2509968 |
| 3249 | 37300.38300.57400.220500 | Lobby gypsum plaster | 8d | 2029-03-30 | 2029-04-06 | 3248 |  | 7 day week No holidays | 2509978 |
| 3250 | 37300.38300.57400.220600 | Staircase epoxy paint | 10d | 2029-04-07 | 2029-04-16 | 3249 |  | 7 day week No holidays | 2509988 |
| 3251 | 37300.38300.57400.220700 | Staircase railing | 6d | 2029-04-07 | 2029-04-12 | 3249 |  | 7 day week No holidays | 2509998 |
| 3252 | 37300.38300.57400.220800 | Lobby flooring work | 8d | 2029-04-07 | 2029-04-14 | 3249 |  | 7 day week No holidays | 2510008 |
| 3253 | 37300.38300.57400.220900 | Painting | 10d | 2029-04-15 | 2029-04-24 | 3252 |  | 7 day week No holidays | 2510018 |
| 3254 | 37300.38300.57400.221000 | Fire rated doors | 6d | 2029-04-15 | 2029-04-20 | 3252 |  | 7 day week No holidays | 2510028 |

| ID | WBS | Task | Duration | Start | Finish | Predecessors | Constraint | Calendar | Unique_Task_ID |
| --- | --- | --- | --- | --- | --- | --- | --- | --- | --- |
| 3255 | 37300.38300.57500 | **10th Floor** | 42d | 2029-03-20 | 2029-04-30 |  | start no earlier than 2029-03-20 | 7 day week No holidays | 2506688 |
| 3256 | 37300.38300.57500.221100 | Lift blockwork | 6d | 2029-03-20 | 2029-03-25 | 3247 |  | 7 day week No holidays | 2510038 |
| 3257 | 37300.38300.57500.221200 | Lobby architrave work | 10d | 2029-03-26 | 2029-04-04 | 3256 |  | 7 day week No holidays | 2510048 |
| 3258 | 37300.38300.57500.221300 | Lobby gypsum plaster | 8d | 2029-04-05 | 2029-04-12 | 3257 |  | 7 day week No holidays | 2510058 |
| 3259 | 37300.38300.57500.221400 | Staircase epoxy paint | 10d | 2029-04-13 | 2029-04-22 | 3258 |  | 7 day week No holidays | 2510068 |
| 3260 | 37300.38300.57500.221500 | Staircase railing | 6d | 2029-04-13 | 2029-04-18 | 3258 |  | 7 day week No holidays | 2510078 |
| 3261 | 37300.38300.57500.221600 | Lobby flooring work | 8d | 2029-04-13 | 2029-04-20 | 3258 |  | 7 day week No holidays | 2510088 |
| 3262 | 37300.38300.57500.221700 | Painting | 10d | 2029-04-21 | 2029-04-30 | 3261 |  | 7 day week No holidays | 2510098 |
| 3263 | 37300.38300.57500.221800 | Fire rated doors | 6d | 2029-04-21 | 2029-04-26 | 3261 |  | 7 day week No holidays | 2510108 |
| 3264 | 37300.38300.57600 | **11th Floor** | 42d | 2029-03-26 | 2029-05-06 |  | start no earlier than 2029-03-26 | 7 day week No holidays | 2506698 |
| 3265 | 37300.38300.57600.221900 | Lift blockwork | 6d | 2029-03-26 | 2029-03-31 | 3256 |  | 7 day week No holidays | 2510118 |
| 3266 | 37300.38300.57600.222000 | Lobby architrave work | 10d | 2029-04-01 | 2029-04-10 | 3265 |  | 7 day week No holidays | 2510128 |
| 3267 | 37300.38300.57600.222100 | Lobby gypsum plaster | 8d | 2029-04-11 | 2029-04-18 | 3266 |  | 7 day week No holidays | 2510138 |
| 3268 | 37300.38300.57600.222200 | Staircase epoxy paint | 10d | 2029-04-19 | 2029-04-28 | 3267 |  | 7 day week No holidays | 2510148 |
| 3269 | 37300.38300.57600.222300 | Staircase railing | 6d | 2029-04-19 | 2029-04-24 | 3267 |  | 7 day week No holidays | 2510158 |
| 3270 | 37300.38300.57600.222400 | Lobby flooring work | 8d | 2029-04-19 | 2029-04-26 | 3267 |  | 7 day week No holidays | 2510168 |
| 3271 | 37300.38300.57600.222500 | Painting | 10d | 2029-04-27 | 2029-05-06 | 3270 |  | 7 day week No holidays | 2510178 |
| 3272 | 37300.38300.57600.222600 | Fire rated doors | 6d | 2029-04-27 | 2029-05-02 | 3270 |  | 7 day week No holidays | 2510188 |
| 3273 | 37300.38300.57800 | **12th Floor** | 42d | 2029-04-01 | 2029-05-12 |  | start no earlier than 2029-04-01 | 7 day week No holidays | 2506708 |
| 3274 | 37300.38300.57800.222700 | Lift blockwork | 6d | 2029-04-01 | 2029-04-06 | 3265 |  | 7 day week No holidays | 2510198 |
| 3275 | 37300.38300.57800.222800 | Lobby architrave work | 10d | 2029-04-07 | 2029-04-16 | 3274 |  | 7 day week No holidays | 2510208 |
| 3276 | 37300.38300.57800.222900 | Lobby gypsum plaster | 8d | 2029-04-17 | 2029-04-24 | 3275 |  | 7 day week No holidays | 2510218 |
| 3277 | 37300.38300.57800.223000 | Staircase epoxy paint | 10d | 2029-04-25 | 2029-05-04 | 3276 |  | 7 day week No holidays | 2510228 |
| 3278 | 37300.38300.57800.223100 | Staircase railing | 6d | 2029-04-25 | 2029-04-30 | 3276 |  | 7 day week No holidays | 2510238 |
| 3279 | 37300.38300.57800.223200 | Lobby flooring work | 8d | 2029-04-25 | 2029-05-02 | 3276 |  | 7 day week No holidays | 2510248 |
| 3280 | 37300.38300.57800.223300 | Painting | 10d | 2029-05-03 | 2029-05-12 | 3279 |  | 7 day week No holidays | 2510258 |
| 3281 | 37300.38300.57800.223400 | Fire rated doors | 6d | 2029-05-03 | 2029-05-08 | 3279 |  | 7 day week No holidays | 2510268 |

| ID | WBS | Task | Duration | Start | Finish | Predecessors | Constraint | Calendar | Unique_Task_ID |
| --- | --- | --- | --- | --- | --- | --- | --- | --- | --- |
| 3282 | 37300.38300.57900 | **13th Floor** | 42d | 2029-04-07 | 2029-05-18 |  | start no earlier than 2029-04-07 | 7 day week No holidays | 2506718 |
| 3283 | 37300.38300.57900.223500 | Lift blockwork | 6d | 2029-04-07 | 2029-04-12 | 3274 |  | 7 day week No holidays | 2510278 |
| 3284 | 37300.38300.57900.223600 | Lobby architrave work | 10d | 2029-04-13 | 2029-04-22 | 3283 |  | 7 day week No holidays | 2510288 |
| 3285 | 37300.38300.57900.223700 | Lobby gypsum plaster | 8d | 2029-04-23 | 2029-04-30 | 3284 |  | 7 day week No holidays | 2510298 |
| 3286 | 37300.38300.57900.223800 | Staircase epoxy paint | 10d | 2029-05-01 | 2029-05-10 | 3285 |  | 7 day week No holidays | 2510308 |
| 3287 | 37300.38300.57900.223900 | Staircase railing | 6d | 2029-05-01 | 2029-05-06 | 3285 |  | 7 day week No holidays | 2510318 |
| 3288 | 37300.38300.57900.224000 | Lobby flooring work | 8d | 2029-05-01 | 2029-05-08 | 3285 |  | 7 day week No holidays | 2510328 |
| 3289 | 37300.38300.57900.224100 | Painting | 10d | 2029-05-09 | 2029-05-18 | 3288 |  | 7 day week No holidays | 2510338 |
| 3290 | 37300.38300.57900.224200 | Fire rated doors | 6d | 2029-05-09 | 2029-05-14 | 3288 |  | 7 day week No holidays | 2510348 |
| 3291 | 37300.38300.58000 | **14th Floor** | 42d | 2029-04-13 | 2029-05-24 |  | start no earlier than 2029-04-13 | 7 day week No holidays | 2506728 |
| 3292 | 37300.38300.58000.224300 | Lift blockwork | 6d | 2029-04-13 | 2029-04-18 | 3283 |  | 7 day week No holidays | 2510358 |
| 3293 | 37300.38300.58000.224400 | Lobby architrave work | 10d | 2029-04-19 | 2029-04-28 | 3292 |  | 7 day week No holidays | 2510368 |
| 3294 | 37300.38300.58000.224500 | Lobby gypsum plaster | 8d | 2029-04-29 | 2029-05-06 | 3293 |  | 7 day week No holidays | 2510378 |
| 3295 | 37300.38300.58000.224600 | Staircase epoxy paint | 10d | 2029-05-07 | 2029-05-16 | 3294 |  | 7 day week No holidays | 2510388 |
| 3296 | 37300.38300.58000.224700 | Staircase railing | 6d | 2029-05-07 | 2029-05-12 | 3294 |  | 7 day week No holidays | 2510398 |
| 3297 | 37300.38300.58000.224800 | Lobby flooring work | 8d | 2029-05-07 | 2029-05-14 | 3294 |  | 7 day week No holidays | 2510408 |
| 3298 | 37300.38300.58000.224900 | Painting | 10d | 2029-05-15 | 2029-05-24 | 3297 |  | 7 day week No holidays | 2510418 |
| 3299 | 37300.38300.58000.225000 | Fire rated doors | 6d | 2029-05-15 | 2029-05-20 | 3297 |  | 7 day week No holidays | 2510428 |
| 3300 | 37300.38300.58100 | **15th Floor** | 42d | 2029-04-19 | 2029-05-30 |  | start no earlier than 2029-04-19 | 7 day week No holidays | 2506738 |
| 3301 | 37300.38300.58100.225100 | Lift blockwork | 6d | 2029-04-19 | 2029-04-24 | 3292 |  | 7 day week No holidays | 2510438 |
| 3302 | 37300.38300.58100.225200 | Lobby architrave work | 10d | 2029-04-25 | 2029-05-04 | 3301 |  | 7 day week No holidays | 2510448 |
| 3303 | 37300.38300.58100.225300 | Lobby gypsum plaster | 8d | 2029-05-05 | 2029-05-12 | 3302 |  | 7 day week No holidays | 2510458 |
| 3304 | 37300.38300.58100.225400 | Staircase epoxy paint | 10d | 2029-05-13 | 2029-05-22 | 3303 |  | 7 day week No holidays | 2510468 |
| 3305 | 37300.38300.58100.225500 | Staircase railing | 6d | 2029-05-13 | 2029-05-18 | 3303 |  | 7 day week No holidays | 2510478 |
| 3306 | 37300.38300.58100.225600 | Lobby flooring work | 8d | 2029-05-13 | 2029-05-20 | 3303 |  | 7 day week No holidays | 2510488 |
| 3307 | 37300.38300.58100.225700 | Painting | 10d | 2029-05-21 | 2029-05-30 | 3306 |  | 7 day week No holidays | 2510498 |
| 3308 | 37300.38300.58100.225800 | Fire rated doors | 6d | 2029-05-21 | 2029-05-26 | 3306 |  | 7 day week No holidays | 2510508 |

| ID | WBS | Task | Duration | Start | Finish | Predecessors | Constraint | Calendar | Unique_Task_ID |
| --- | --- | --- | --- | --- | --- | --- | --- | --- | --- |
| 3309 | 37300.38300.58200 | **16th Floor** | 42d | 2029-04-25 | 2029-06-05 |  | start no earlier than 2029-04-25 | 7 day week No holidays | 2506748 |
| 3310 | 37300.38300.58200.225900 | Lift blockwork | 6d | 2029-04-25 | 2029-04-30 | 3301 |  | 7 day week No holidays | 2510518 |
| 3311 | 37300.38300.58200.226000 | Lobby architrave work | 10d | 2029-05-01 | 2029-05-10 | 3310 |  | 7 day week No holidays | 2510528 |
| 3312 | 37300.38300.58200.226100 | Lobby gypsum plaster | 8d | 2029-05-11 | 2029-05-18 | 3311 |  | 7 day week No holidays | 2510538 |
| 3313 | 37300.38300.58200.226200 | Staircase epoxy paint | 10d | 2029-05-19 | 2029-05-28 | 3312 |  | 7 day week No holidays | 2510548 |
| 3314 | 37300.38300.58200.226300 | Staircase railing | 6d | 2029-05-19 | 2029-05-24 | 3312 |  | 7 day week No holidays | 2510558 |
| 3315 | 37300.38300.58200.226400 | Lobby flooring work | 8d | 2029-05-19 | 2029-05-26 | 3312 |  | 7 day week No holidays | 2510568 |
| 3316 | 37300.38300.58200.226500 | Painting | 10d | 2029-05-27 | 2029-06-05 | 3315 |  | 7 day week No holidays | 2510578 |
| 3317 | 37300.38300.58200.226600 | Fire rated doors | 6d | 2029-05-27 | 2029-06-01 | 3315 |  | 7 day week No holidays | 2510588 |
| 3318 | 37300.38300.58300 | **17th Floor** | 42d | 2029-05-01 | 2029-06-11 |  | start no earlier than 2029-05-01 | 7 day week No holidays | 2506758 |
| 3319 | 37300.38300.58300.226700 | Lift blockwork | 6d | 2029-05-01 | 2029-05-06 | 3310 |  | 7 day week No holidays | 2510598 |
| 3320 | 37300.38300.58300.226800 | Lobby architrave work | 10d | 2029-05-07 | 2029-05-16 | 3319 |  | 7 day week No holidays | 2510608 |
| 3321 | 37300.38300.58300.226900 | Lobby gypsum plaster | 8d | 2029-05-17 | 2029-05-24 | 3320 |  | 7 day week No holidays | 2510618 |
| 3322 | 37300.38300.58300.227000 | Staircase epoxy paint | 10d | 2029-05-25 | 2029-06-03 | 3321 |  | 7 day week No holidays | 2510628 |
| 3323 | 37300.38300.58300.227100 | Staircase railing | 6d | 2029-05-25 | 2029-05-30 | 3321 |  | 7 day week No holidays | 2510638 |
| 3324 | 37300.38300.58300.227200 | Lobby flooring work | 8d | 2029-05-25 | 2029-06-01 | 3321 |  | 7 day week No holidays | 2510648 |
| 3325 | 37300.38300.58300.227300 | Painting | 10d | 2029-06-02 | 2029-06-11 | 3324 |  | 7 day week No holidays | 2510658 |
| 3326 | 37300.38300.58300.227400 | Fire rated doors | 6d | 2029-06-02 | 2029-06-07 | 3324 |  | 7 day week No holidays | 2510668 |
| 3327 | 37300.38300.58400 | **18th Floor** | 42d | 2029-05-07 | 2029-06-17 |  | start no earlier than 2029-05-07 | 7 day week No holidays | 2506768 |
| 3328 | 37300.38300.58400.227500 | Lift blockwork | 6d | 2029-05-07 | 2029-05-12 | 3319 |  | 7 day week No holidays | 2510678 |
| 3329 | 37300.38300.58400.227600 | Lobby architrave work | 10d | 2029-05-13 | 2029-05-22 | 3328 |  | 7 day week No holidays | 2510688 |
| 3330 | 37300.38300.58400.227700 | Lobby gypsum plaster | 8d | 2029-05-23 | 2029-05-30 | 3329 |  | 7 day week No holidays | 2510698 |
| 3331 | 37300.38300.58400.227800 | Staircase epoxy paint | 10d | 2029-05-31 | 2029-06-09 | 3330 |  | 7 day week No holidays | 2510708 |
| 3332 | 37300.38300.58400.227900 | Staircase railing | 6d | 2029-05-31 | 2029-06-05 | 3330 |  | 7 day week No holidays | 2510718 |
| 3333 | 37300.38300.58400.228000 | Lobby flooring work | 8d | 2029-05-31 | 2029-06-07 | 3330 |  | 7 day week No holidays | 2510728 |
| 3334 | 37300.38300.58400.228100 | Painting | 10d | 2029-06-08 | 2029-06-17 | 3333 |  | 7 day week No holidays | 2510738 |
| 3335 | 37300.38300.58400.228200 | Fire rated doors | 6d | 2029-06-08 | 2029-06-13 | 3333 |  | 7 day week No holidays | 2510748 |

| ID | WBS | Task | Duration | Start | Finish | Predecessors | Constraint | Calendar | Unique_Task_ID |
| --- | --- | --- | --- | --- | --- | --- | --- | --- | --- |
| 3336 | 37300.38300.58500 | **19th Floor** | 42d | 2029-05-13 | 2029-06-23 |  | start no earlier than 2029-05-13 | 7 day week No holidays | 2506778 |
| 3337 | 37300.38300.58500.228300 | Lift blockwork | 6d | 2029-05-13 | 2029-05-18 | 3328 |  | 7 day week No holidays | 2510758 |
| 3338 | 37300.38300.58500.228400 | Lobby architrave work | 10d | 2029-05-19 | 2029-05-28 | 3337 |  | 7 day week No holidays | 2510768 |
| 3339 | 37300.38300.58500.228500 | Lobby gypsum plaster | 8d | 2029-05-29 | 2029-06-05 | 3338 |  | 7 day week No holidays | 2510778 |
| 3340 | 37300.38300.58500.228600 | Staircase epoxy paint | 10d | 2029-06-06 | 2029-06-15 | 3339 |  | 7 day week No holidays | 2510788 |
| 3341 | 37300.38300.58500.228700 | Staircase railing | 6d | 2029-06-06 | 2029-06-11 | 3339 |  | 7 day week No holidays | 2510798 |
| 3342 | 37300.38300.58500.228800 | Lobby flooring work | 8d | 2029-06-06 | 2029-06-13 | 3339 |  | 7 day week No holidays | 2510808 |
| 3343 | 37300.38300.58500.228900 | Painting | 10d | 2029-06-14 | 2029-06-23 | 3342 |  | 7 day week No holidays | 2510818 |
| 3344 | 37300.38300.58500.229000 | Fire rated doors | 6d | 2029-06-14 | 2029-06-19 | 3342 |  | 7 day week No holidays | 2510828 |
| 3345 | 37300.38300.58600 | **20th Floor** | 42d | 2029-05-19 | 2029-06-29 |  | start no earlier than 2029-05-19 | 7 day week No holidays | 2506788 |
| 3346 | 37300.38300.58600.229100 | Lift blockwork | 6d | 2029-05-19 | 2029-05-24 | 3337 |  | 7 day week No holidays | 2510838 |
| 3347 | 37300.38300.58600.229200 | Lobby architrave work | 10d | 2029-05-25 | 2029-06-03 | 3346 |  | 7 day week No holidays | 2510848 |
| 3348 | 37300.38300.58600.229300 | Lobby gypsum plaster | 8d | 2029-06-04 | 2029-06-11 | 3347 |  | 7 day week No holidays | 2510858 |
| 3349 | 37300.38300.58600.229400 | Staircase epoxy paint | 10d | 2029-06-12 | 2029-06-21 | 3348 |  | 7 day week No holidays | 2510868 |
| 3350 | 37300.38300.58600.229500 | Staircase railing | 6d | 2029-06-12 | 2029-06-17 | 3348 |  | 7 day week No holidays | 2510878 |
| 3351 | 37300.38300.58600.229600 | Lobby flooring work | 8d | 2029-06-12 | 2029-06-19 | 3348 |  | 7 day week No holidays | 2510888 |
| 3352 | 37300.38300.58600.229700 | Painting | 10d | 2029-06-20 | 2029-06-29 | 3351 |  | 7 day week No holidays | 2510898 |
| 3353 | 37300.38300.58600.229800 | Fire rated doors | 6d | 2029-06-20 | 2029-06-25 | 3351 |  | 7 day week No holidays | 2510908 |
| 3354 | 37300.38300.58700 | **21st Floor** | 42d | 2029-05-25 | 2029-07-05 |  | start no earlier than 2029-05-25 | 7 day week No holidays | 2506798 |
| 3355 | 37300.38300.58700.229900 | Lift blockwork | 6d | 2029-05-25 | 2029-05-30 | 3346 |  | 7 day week No holidays | 2510918 |
| 3356 | 37300.38300.58700.230000 | Lobby architrave work | 10d | 2029-05-31 | 2029-06-09 | 3355 |  | 7 day week No holidays | 2510928 |
| 3357 | 37300.38300.58700.230100 | Lobby gypsum plaster | 8d | 2029-06-10 | 2029-06-17 | 3356 |  | 7 day week No holidays | 2510938 |
| 3358 | 37300.38300.58700.230200 | Staircase epoxy paint | 10d | 2029-06-18 | 2029-06-27 | 3357 |  | 7 day week No holidays | 2510948 |
| 3359 | 37300.38300.58700.230300 | Staircase railing | 6d | 2029-06-18 | 2029-06-23 | 3357 |  | 7 day week No holidays | 2510958 |
| 3360 | 37300.38300.58700.230400 | Lobby flooring work | 8d | 2029-06-18 | 2029-06-25 | 3357 |  | 7 day week No holidays | 2510968 |
| 3361 | 37300.38300.58700.230500 | Painting | 10d | 2029-06-26 | 2029-07-05 | 3360 |  | 7 day week No holidays | 2510978 |
| 3362 | 37300.38300.58700.230600 | Fire rated doors | 6d | 2029-06-26 | 2029-07-01 | 3360 |  | 7 day week No holidays | 2510988 |

| ID | WBS | Task | Duration | Start | Finish | Predecessors | Constraint | Calendar | Unique_Task_ID |
| --- | --- | --- | --- | --- | --- | --- | --- | --- | --- |
| 3363 | 37300.38300.58800 | **22nd Floor** | 42d | 2029-05-31 | 2029-07-11 |  | start no earlier than 2029-05-31 | 7 day week No holidays | 2506808 |
| 3364 | 37300.38300.58800.230700 | Lift blockwork | 6d | 2029-05-31 | 2029-06-05 | 3355 |  | 7 day week No holidays | 2510998 |
| 3365 | 37300.38300.58800.230800 | Lobby architrave work | 10d | 2029-06-06 | 2029-06-15 | 3364 |  | 7 day week No holidays | 2511008 |
| 3366 | 37300.38300.58800.230900 | Lobby gypsum plaster | 8d | 2029-06-16 | 2029-06-23 | 3365 |  | 7 day week No holidays | 2511018 |
| 3367 | 37300.38300.58800.231000 | Staircase epoxy paint | 10d | 2029-06-24 | 2029-07-03 | 3366 |  | 7 day week No holidays | 2511028 |
| 3368 | 37300.38300.58800.231100 | Staircase railing | 6d | 2029-06-24 | 2029-06-29 | 3366 |  | 7 day week No holidays | 2511038 |
| 3369 | 37300.38300.58800.231200 | Lobby flooring work | 8d | 2029-06-24 | 2029-07-01 | 3366 |  | 7 day week No holidays | 2511048 |
| 3370 | 37300.38300.58800.231300 | Painting | 10d | 2029-07-02 | 2029-07-11 | 3369 |  | 7 day week No holidays | 2511058 |
| 3371 | 37300.38300.58800.231400 | Fire rated doors | 6d | 2029-07-02 | 2029-07-07 | 3369 |  | 7 day week No holidays | 2511068 |
| 3372 | 37300.38300.58900 | **23rd Floor** | 42d | 2029-06-06 | 2029-07-17 |  | start no earlier than 2029-06-06 | 7 day week No holidays | 2506818 |
| 3373 | 37300.38300.58900.231500 | Lift blockwork | 6d | 2029-06-06 | 2029-06-11 | 3364 |  | 7 day week No holidays | 2511078 |
| 3374 | 37300.38300.58900.231600 | Lobby architrave work | 10d | 2029-06-12 | 2029-06-21 | 3373 |  | 7 day week No holidays | 2511088 |
| 3375 | 37300.38300.58900.231700 | Lobby gypsum plaster | 8d | 2029-06-22 | 2029-06-29 | 3374 |  | 7 day week No holidays | 2511098 |
| 3376 | 37300.38300.58900.231800 | Staircase epoxy paint | 10d | 2029-06-30 | 2029-07-09 | 3375 |  | 7 day week No holidays | 2511108 |
| 3377 | 37300.38300.58900.231900 | Staircase railing | 6d | 2029-06-30 | 2029-07-05 | 3375 |  | 7 day week No holidays | 2511118 |
| 3378 | 37300.38300.58900.232000 | Lobby flooring work | 8d | 2029-06-30 | 2029-07-07 | 3375 |  | 7 day week No holidays | 2511128 |
| 3379 | 37300.38300.58900.232100 | Painting | 10d | 2029-07-08 | 2029-07-17 | 3378 |  | 7 day week No holidays | 2511138 |
| 3380 | 37300.38300.58900.232200 | Fire rated doors | 6d | 2029-07-08 | 2029-07-13 | 3378 |  | 7 day week No holidays | 2511148 |
| 3381 | 37300.38300.59000 | **24th Floor** | 42d | 2029-06-12 | 2029-07-23 |  | start no earlier than 2029-06-12 | 7 day week No holidays | 2506828 |
| 3382 | 37300.38300.59000.232300 | Lift blockwork | 6d | 2029-06-12 | 2029-06-17 | 3373 |  | 7 day week No holidays | 2511158 |
| 3383 | 37300.38300.59000.232400 | Lobby architrave work | 10d | 2029-06-18 | 2029-06-27 | 3382 |  | 7 day week No holidays | 2511168 |
| 3384 | 37300.38300.59000.232500 | Lobby gypsum plaster | 8d | 2029-06-28 | 2029-07-05 | 3383 |  | 7 day week No holidays | 2511178 |
| 3385 | 37300.38300.59000.232600 | Staircase epoxy paint | 10d | 2029-07-06 | 2029-07-15 | 3384 |  | 7 day week No holidays | 2511188 |
| 3386 | 37300.38300.59000.232700 | Staircase railing | 6d | 2029-07-06 | 2029-07-11 | 3384 |  | 7 day week No holidays | 2511198 |
| 3387 | 37300.38300.59000.232800 | Lobby flooring work | 8d | 2029-07-06 | 2029-07-13 | 3384 |  | 7 day week No holidays | 2511208 |
| 3388 | 37300.38300.59000.232900 | Painting | 10d | 2029-07-14 | 2029-07-23 | 3387 |  | 7 day week No holidays | 2511218 |
| 3389 | 37300.38300.59000.233000 | Fire rated doors | 6d | 2029-07-14 | 2029-07-19 | 3387 |  | 7 day week No holidays | 2511228 |

| ID | WBS | Task | Duration | Start | Finish | Predecessors | Constraint | Calendar | Unique_Task_ID |
| --- | --- | --- | --- | --- | --- | --- | --- | --- | --- |
| 3390 | 37300.38300.59100 | **25th Floor** | 42d | 2029-06-18 | 2029-07-29 |  | start no earlier than 2029-06-18 | 7 day week No holidays | 2506838 |
| 3391 | 37300.38300.59100.233100 | Lift blockwork | 6d | 2029-06-18 | 2029-06-23 | 3382 |  | 7 day week No holidays | 2511238 |
| 3392 | 37300.38300.59100.233200 | Lobby architrave work | 10d | 2029-06-24 | 2029-07-03 | 3391 |  | 7 day week No holidays | 2511248 |
| 3393 | 37300.38300.59100.233300 | Lobby gypsum plaster | 8d | 2029-07-04 | 2029-07-11 | 3392 |  | 7 day week No holidays | 2511258 |
| 3394 | 37300.38300.59100.233400 | Staircase epoxy paint | 10d | 2029-07-12 | 2029-07-21 | 3393 |  | 7 day week No holidays | 2511268 |
| 3395 | 37300.38300.59100.233500 | Staircase railing | 6d | 2029-07-12 | 2029-07-17 | 3393 |  | 7 day week No holidays | 2511278 |
| 3396 | 37300.38300.59100.233600 | Lobby flooring work | 8d | 2029-07-12 | 2029-07-19 | 3393 |  | 7 day week No holidays | 2511288 |
| 3397 | 37300.38300.59100.233700 | Painting | 10d | 2029-07-20 | 2029-07-29 | 3396 |  | 7 day week No holidays | 2511298 |
| 3398 | 37300.38300.59100.233800 | Fire rated doors | 6d | 2029-07-20 | 2029-07-25 | 3396 |  | 7 day week No holidays | 2511308 |
| 3399 | 37300.38300.59200 | **26th Floor** | 42d | 2029-06-24 | 2029-08-04 |  | start no earlier than 2029-06-24 | 7 day week No holidays | 2506848 |
| 3400 | 37300.38300.59200.233900 | Lift blockwork | 6d | 2029-06-24 | 2029-06-29 | 3391 |  | 7 day week No holidays | 2511318 |
| 3401 | 37300.38300.59200.234000 | Lobby architrave work | 10d | 2029-06-30 | 2029-07-09 | 3400 |  | 7 day week No holidays | 2511328 |
| 3402 | 37300.38300.59200.234100 | Lobby gypsum plaster | 8d | 2029-07-10 | 2029-07-17 | 3401 |  | 7 day week No holidays | 2511338 |
| 3403 | 37300.38300.59200.234200 | Staircase epoxy paint | 10d | 2029-07-18 | 2029-07-27 | 3402 |  | 7 day week No holidays | 2511348 |
| 3404 | 37300.38300.59200.234300 | Staircase railing | 6d | 2029-07-18 | 2029-07-23 | 3402 |  | 7 day week No holidays | 2511358 |
| 3405 | 37300.38300.59200.234400 | Lobby flooring work | 8d | 2029-07-18 | 2029-07-25 | 3402 |  | 7 day week No holidays | 2511368 |
| 3406 | 37300.38300.59200.234500 | Painting | 10d | 2029-07-26 | 2029-08-04 | 3405 |  | 7 day week No holidays | 2511378 |
| 3407 | 37300.38300.59200.234600 | Fire rated doors | 6d | 2029-07-26 | 2029-07-31 | 3405 |  | 7 day week No holidays | 2511388 |
| 3408 | 37300.38300.59300 | **27th Floor** | 42d | 2029-06-24 | 2029-08-04 |  | start no earlier than 2029-06-24 | 7 day week No holidays | 2506858 |
| 3409 | 37300.38300.59300.234700 | Lift blockwork | 6d | 2029-06-24 | 2029-06-29 | 3391 |  | 7 day week No holidays | 2511398 |
| 3410 | 37300.38300.59300.234800 | Lobby architrave work | 10d | 2029-06-30 | 2029-07-09 | 3409 |  | 7 day week No holidays | 2511408 |
| 3411 | 37300.38300.59300.234900 | Lobby gypsum plaster | 8d | 2029-07-10 | 2029-07-17 | 3410 |  | 7 day week No holidays | 2511418 |
| 3412 | 37300.38300.59300.235000 | Staircase epoxy paint | 10d | 2029-07-18 | 2029-07-27 | 3411 |  | 7 day week No holidays | 2511428 |
| 3413 | 37300.38300.59300.235100 | Staircase railing | 6d | 2029-07-18 | 2029-07-23 | 3411 |  | 7 day week No holidays | 2511438 |
| 3414 | 37300.38300.59300.235200 | Lobby flooring work | 8d | 2029-07-18 | 2029-07-25 | 3411 |  | 7 day week No holidays | 2511448 |
| 3415 | 37300.38300.59300.235300 | Painting | 10d | 2029-07-26 | 2029-08-04 | 3414 |  | 7 day week No holidays | 2511458 |
| 3416 | 37300.38300.59300.235400 | Fire rated doors | 6d | 2029-07-26 | 2029-07-31 | 3414 |  | 7 day week No holidays | 2511468 |

| ID | WBS | Task | Duration | Start | Finish | Predecessors | Constraint | Calendar | Unique_Task_ID |
| --- | --- | --- | --- | --- | --- | --- | --- | --- | --- |
| 3417 | 37300.38300.59400 | **28th Floor** | 42d | 2029-06-30 | 2029-08-10 |  | start no earlier than 2029-06-30 | 7 day week No holidays | 2506868 |
| 3418 | 37300.38300.59400.235500 | Lift blockwork | 6d | 2029-06-30 | 2029-07-05 | 3409 |  | 7 day week No holidays | 2511478 |
| 3419 | 37300.38300.59400.235600 | Lobby architrave work | 10d | 2029-07-06 | 2029-07-15 | 3418 |  | 7 day week No holidays | 2511488 |
| 3420 | 37300.38300.59400.235700 | Lobby gypsum plaster | 8d | 2029-07-16 | 2029-07-23 | 3419 |  | 7 day week No holidays | 2511498 |
| 3421 | 37300.38300.59400.235800 | Staircase epoxy paint | 10d | 2029-07-24 | 2029-08-02 | 3420 |  | 7 day week No holidays | 2511508 |
| 3422 | 37300.38300.59400.235900 | Staircase railing | 6d | 2029-07-24 | 2029-07-29 | 3420 |  | 7 day week No holidays | 2511518 |
| 3423 | 37300.38300.59400.236000 | Lobby flooring work | 8d | 2029-07-24 | 2029-07-31 | 3420 |  | 7 day week No holidays | 2511528 |
| 3424 | 37300.38300.59400.236100 | Painting | 10d | 2029-08-01 | 2029-08-10 | 3423 |  | 7 day week No holidays | 2511538 |
| 3425 | 37300.38300.59400.236200 | Fire rated doors | 6d | 2029-08-01 | 2029-08-06 | 3423 |  | 7 day week No holidays | 2511548 |
| 3426 | 37300.38300.59500 | **29th Floor** | 42d | 2029-07-06 | 2029-08-16 |  | start no earlier than 2029-07-06 | 7 day week No holidays | 2506878 |
| 3427 | 37300.38300.59500.236300 | Lift blockwork | 6d | 2029-07-06 | 2029-07-11 | 3418 |  | 7 day week No holidays | 2511558 |
| 3428 | 37300.38300.59500.236400 | Lobby architrave work | 10d | 2029-07-12 | 2029-07-21 | 3427 |  | 7 day week No holidays | 2511568 |
| 3429 | 37300.38300.59500.236500 | Lobby gypsum plaster | 8d | 2029-07-22 | 2029-07-29 | 3428 |  | 7 day week No holidays | 2511578 |
| 3430 | 37300.38300.59500.236600 | Staircase epoxy paint | 10d | 2029-07-30 | 2029-08-08 | 3429 |  | 7 day week No holidays | 2511588 |
| 3431 | 37300.38300.59500.236700 | Staircase railing | 6d | 2029-07-30 | 2029-08-04 | 3429 |  | 7 day week No holidays | 2511598 |
| 3432 | 37300.38300.59500.236800 | Lobby flooring work | 8d | 2029-07-30 | 2029-08-06 | 3429 |  | 7 day week No holidays | 2511608 |
| 3433 | 37300.38300.59500.236900 | Painting | 10d | 2029-08-07 | 2029-08-16 | 3432 |  | 7 day week No holidays | 2511618 |
| 3434 | 37300.38300.59500.237000 | Fire rated doors | 6d | 2029-08-07 | 2029-08-12 | 3432 |  | 7 day week No holidays | 2511628 |
| 3435 | 37300.38300.59600 | **30th Floor** | 42d | 2029-07-12 | 2029-08-22 |  | start no earlier than 2029-07-12 | 7 day week No holidays | 2506888 |
| 3436 | 37300.38300.59600.237100 | Lift blockwork | 6d | 2029-07-12 | 2029-07-17 | 3427 |  | 7 day week No holidays | 2511638 |
| 3437 | 37300.38300.59600.237200 | Lobby architrave work | 10d | 2029-07-18 | 2029-07-27 | 3436 |  | 7 day week No holidays | 2511648 |
| 3438 | 37300.38300.59600.237300 | Lobby gypsum plaster | 8d | 2029-07-28 | 2029-08-04 | 3437 |  | 7 day week No holidays | 2511658 |
| 3439 | 37300.38300.59600.237400 | Staircase epoxy paint | 10d | 2029-08-05 | 2029-08-14 | 3438 |  | 7 day week No holidays | 2511668 |
| 3440 | 37300.38300.59600.237500 | Staircase railing | 6d | 2029-08-05 | 2029-08-10 | 3438 |  | 7 day week No holidays | 2511678 |
| 3441 | 37300.38300.59600.237600 | Lobby flooring work | 8d | 2029-08-05 | 2029-08-12 | 3438 |  | 7 day week No holidays | 2511688 |
| 3442 | 37300.38300.59600.237700 | Painting | 10d | 2029-08-13 | 2029-08-22 | 3441 |  | 7 day week No holidays | 2511698 |
| 3443 | 37300.38300.59600.237800 | Fire rated doors | 6d | 2029-08-13 | 2029-08-18 | 3441 |  | 7 day week No holidays | 2511708 |

| ID | WBS | Task | Duration | Start | Finish | Predecessors | Constraint | Calendar | Unique_Task_ID |
| --- | --- | --- | --- | --- | --- | --- | --- | --- | --- |
| 3444 | 37300.38300.59700 | **31st Floor** | 42d | 2029-07-18 | 2029-08-28 |  | start no earlier than 2029-07-18 | 7 day week No holidays | 2506898 |
| 3445 | 37300.38300.59700.237900 | Lift blockwork | 6d | 2029-07-18 | 2029-07-23 | 3436 |  | 7 day week No holidays | 2511718 |
| 3446 | 37300.38300.59700.238000 | Lobby architrave work | 10d | 2029-07-24 | 2029-08-02 | 3445 |  | 7 day week No holidays | 2511728 |
| 3447 | 37300.38300.59700.238100 | Lobby gypsum plaster | 8d | 2029-08-03 | 2029-08-10 | 3446 |  | 7 day week No holidays | 2511738 |
| 3448 | 37300.38300.59700.238200 | Staircase epoxy paint | 10d | 2029-08-11 | 2029-08-20 | 3447 |  | 7 day week No holidays | 2511748 |
| 3449 | 37300.38300.59700.238300 | Staircase railing | 6d | 2029-08-11 | 2029-08-16 | 3447 |  | 7 day week No holidays | 2511758 |
| 3450 | 37300.38300.59700.238400 | Lobby flooring work | 8d | 2029-08-11 | 2029-08-18 | 3447 |  | 7 day week No holidays | 2511768 |
| 3451 | 37300.38300.59700.238500 | Painting | 10d | 2029-08-19 | 2029-08-28 | 3450 |  | 7 day week No holidays | 2511778 |
| 3452 | 37300.38300.59700.238600 | Fire rated doors | 6d | 2029-08-19 | 2029-08-24 | 3450 |  | 7 day week No holidays | 2511788 |
| 3453 | 37300.38300.59800 | **32nd Floor** | 42d | 2029-07-24 | 2029-09-03 |  | start no earlier than 2029-07-24 | 7 day week No holidays | 2506908 |
| 3454 | 37300.38300.59800.238700 | Lift blockwork | 6d | 2029-07-24 | 2029-07-29 | 3445 |  | 7 day week No holidays | 2511798 |
| 3455 | 37300.38300.59800.238800 | Lobby architrave work | 10d | 2029-07-30 | 2029-08-08 | 3454 |  | 7 day week No holidays | 2511808 |
| 3456 | 37300.38300.59800.238900 | Lobby gypsum plaster | 8d | 2029-08-09 | 2029-08-16 | 3455 |  | 7 day week No holidays | 2511818 |
| 3457 | 37300.38300.59800.239000 | Staircase epoxy paint | 10d | 2029-08-17 | 2029-08-26 | 3456 |  | 7 day week No holidays | 2511828 |
| 3458 | 37300.38300.59800.239100 | Staircase railing | 6d | 2029-08-17 | 2029-08-22 | 3456 |  | 7 day week No holidays | 2511838 |
| 3459 | 37300.38300.59800.239200 | Lobby flooring work | 8d | 2029-08-17 | 2029-08-24 | 3456 |  | 7 day week No holidays | 2511848 |
| 3460 | 37300.38300.59800.239300 | Painting | 10d | 2029-08-25 | 2029-09-03 | 3459 |  | 7 day week No holidays | 2511858 |
| 3461 | 37300.38300.59800.239400 | Fire rated doors | 6d | 2029-08-25 | 2029-08-30 | 3459 |  | 7 day week No holidays | 2511868 |
| 3462 | 37300.38300.59900 | **33rd Floor** | 42d | 2029-07-30 | 2029-09-09 |  | start no earlier than 2029-07-30 | 7 day week No holidays | 2506918 |
| 3463 | 37300.38300.59900.239500 | Lift blockwork | 6d | 2029-07-30 | 2029-08-04 | 3454 |  | 7 day week No holidays | 2511878 |
| 3464 | 37300.38300.59900.239600 | Lobby architrave work | 10d | 2029-08-05 | 2029-08-14 | 3463 |  | 7 day week No holidays | 2511888 |
| 3465 | 37300.38300.59900.239700 | Lobby gypsum plaster | 8d | 2029-08-15 | 2029-08-22 | 3464 |  | 7 day week No holidays | 2511898 |
| 3466 | 37300.38300.59900.239800 | Staircase epoxy paint | 10d | 2029-08-23 | 2029-09-01 | 3465 |  | 7 day week No holidays | 2511908 |
| 3467 | 37300.38300.59900.239900 | Staircase railing | 6d | 2029-08-23 | 2029-08-28 | 3465 |  | 7 day week No holidays | 2511918 |
| 3468 | 37300.38300.59900.240000 | Lobby flooring work | 8d | 2029-08-23 | 2029-08-30 | 3465 |  | 7 day week No holidays | 2511928 |
| 3469 | 37300.38300.59900.240100 | Painting | 10d | 2029-08-31 | 2029-09-09 | 3468 |  | 7 day week No holidays | 2511938 |
| 3470 | 37300.38300.59900.240200 | Fire rated doors | 6d | 2029-08-31 | 2029-09-05 | 3468 |  | 7 day week No holidays | 2511948 |

| ID | WBS | Task | Duration | Start | Finish | Predecessors | Constraint | Calendar | Unique_Task_ID |
| --- | --- | --- | --- | --- | --- | --- | --- | --- | --- |
| 3471 | 37300.38300.60000 | **34th Floor** | 42d | 2029-08-05 | 2029-09-15 |  | start no earlier than 2029-08-05 | 7 day week No holidays | 2506928 |
| 3472 | 37300.38300.60000.240300 | Lift blockwork | 6d | 2029-08-05 | 2029-08-10 | 3463 |  | 7 day week No holidays | 2511958 |
| 3473 | 37300.38300.60000.240400 | Lobby architrave work | 10d | 2029-08-11 | 2029-08-20 | 3472 |  | 7 day week No holidays | 2511968 |
| 3474 | 37300.38300.60000.240500 | Lobby gypsum plaster | 8d | 2029-08-21 | 2029-08-28 | 3473 |  | 7 day week No holidays | 2511978 |
| 3475 | 37300.38300.60000.240600 | Staircase epoxy paint | 10d | 2029-08-29 | 2029-09-07 | 3474 |  | 7 day week No holidays | 2511988 |
| 3476 | 37300.38300.60000.240700 | Staircase railing | 6d | 2029-08-29 | 2029-09-03 | 3474 |  | 7 day week No holidays | 2511998 |
| 3477 | 37300.38300.60000.240800 | Lobby flooring work | 8d | 2029-08-29 | 2029-09-05 | 3474 |  | 7 day week No holidays | 2512008 |
| 3478 | 37300.38300.60000.240900 | Painting | 10d | 2029-09-06 | 2029-09-15 | 3477 |  | 7 day week No holidays | 2512018 |
| 3479 | 37300.38300.60000.241000 | Fire rated doors | 6d | 2029-09-06 | 2029-09-11 | 3477 |  | 7 day week No holidays | 2512028 |
| 3480 | 37300.38300.60100 | **35th Floor** | 42d | 2029-08-11 | 2029-09-21 |  | start no earlier than 2029-08-11 | 7 day week No holidays | 2506938 |
| 3481 | 37300.38300.60100.241100 | Lift blockwork | 6d | 2029-08-11 | 2029-08-16 | 3472 |  | 7 day week No holidays | 2512038 |
| 3482 | 37300.38300.60100.241200 | Lobby architrave work | 10d | 2029-08-17 | 2029-08-26 | 3481 |  | 7 day week No holidays | 2512048 |
| 3483 | 37300.38300.60100.241300 | Lobby gypsum plaster | 8d | 2029-08-27 | 2029-09-03 | 3482 |  | 7 day week No holidays | 2512058 |
| 3484 | 37300.38300.60100.241400 | Staircase epoxy paint | 10d | 2029-09-04 | 2029-09-13 | 3483 |  | 7 day week No holidays | 2512068 |
| 3485 | 37300.38300.60100.241500 | Staircase railing | 6d | 2029-09-04 | 2029-09-09 | 3483 |  | 7 day week No holidays | 2512078 |
| 3486 | 37300.38300.60100.241600 | Lobby flooring work | 8d | 2029-09-04 | 2029-09-11 | 3483 |  | 7 day week No holidays | 2512088 |
| 3487 | 37300.38300.60100.241700 | Painting | 10d | 2029-09-12 | 2029-09-21 | 3486 |  | 7 day week No holidays | 2512098 |
| 3488 | 37300.38300.60100.241800 | Fire rated doors | 6d | 2029-09-12 | 2029-09-17 | 3486 |  | 7 day week No holidays | 2512108 |
| 3489 | 37300.38300.60200 | **36th Floor** | 42d | 2029-08-17 | 2029-09-27 |  | start no earlier than 2029-08-17 | 7 day week No holidays | 2506948 |
| 3490 | 37300.38300.60200.241900 | Lift blockwork | 6d | 2029-08-17 | 2029-08-22 | 3481 |  | 7 day week No holidays | 2512118 |
| 3491 | 37300.38300.60200.242000 | Lobby architrave work | 10d | 2029-08-23 | 2029-09-01 | 3490 |  | 7 day week No holidays | 2512128 |
| 3492 | 37300.38300.60200.242100 | Lobby gypsum plaster | 8d | 2029-09-02 | 2029-09-09 | 3491 |  | 7 day week No holidays | 2512138 |
| 3493 | 37300.38300.60200.242200 | Staircase epoxy paint | 10d | 2029-09-10 | 2029-09-19 | 3492 |  | 7 day week No holidays | 2512148 |
| 3494 | 37300.38300.60200.242300 | Staircase railing | 6d | 2029-09-10 | 2029-09-15 | 3492 |  | 7 day week No holidays | 2512158 |
| 3495 | 37300.38300.60200.242400 | Lobby flooring work | 8d | 2029-09-10 | 2029-09-17 | 3492 |  | 7 day week No holidays | 2512168 |
| 3496 | 37300.38300.60200.242500 | Painting | 10d | 2029-09-18 | 2029-09-27 | 3495 |  | 7 day week No holidays | 2512178 |
| 3497 | 37300.38300.60200.242600 | Fire rated doors | 6d | 2029-09-18 | 2029-09-23 | 3495 |  | 7 day week No holidays | 2512188 |

| ID | WBS | Task | Duration | Start | Finish | Predecessors | Constraint | Calendar | Unique_Task_ID |
| --- | --- | --- | --- | --- | --- | --- | --- | --- | --- |
| 3498 | 37300.38300.60300 | **37th Floor** | 42d | 2029-08-23 | 2029-10-03 |  | start no earlier than 2029-08-23 | 7 day week No holidays | 2506958 |
| 3499 | 37300.38300.60300.242700 | Lift blockwork | 6d | 2029-08-23 | 2029-08-28 | 3490 |  | 7 day week No holidays | 2512198 |
| 3500 | 37300.38300.60300.242800 | Lobby architrave work | 10d | 2029-08-29 | 2029-09-07 | 3499 |  | 7 day week No holidays | 2512208 |
| 3501 | 37300.38300.60300.242900 | Lobby gypsum plaster | 8d | 2029-09-08 | 2029-09-15 | 3500 |  | 7 day week No holidays | 2512218 |
| 3502 | 37300.38300.60300.243000 | Staircase epoxy paint | 10d | 2029-09-16 | 2029-09-25 | 3501 |  | 7 day week No holidays | 2512228 |
| 3503 | 37300.38300.60300.243100 | Staircase railing | 6d | 2029-09-16 | 2029-09-21 | 3501 |  | 7 day week No holidays | 2512238 |
| 3504 | 37300.38300.60300.243200 | Lobby flooring work | 8d | 2029-09-16 | 2029-09-23 | 3501 |  | 7 day week No holidays | 2512248 |
| 3505 | 37300.38300.60300.243300 | Painting | 10d | 2029-09-24 | 2029-10-03 | 3504 |  | 7 day week No holidays | 2512258 |
| 3506 | 37300.38300.60300.243400 | Fire rated doors | 6d | 2029-09-24 | 2029-09-29 | 3504 |  | 7 day week No holidays | 2512268 |
| 3507 | 37300.38300.60400 | **38th Floor** | 42d | 2029-08-29 | 2029-10-09 |  | start no earlier than 2029-08-29 | 7 day week No holidays | 2506968 |
| 3508 | 37300.38300.60400.243500 | Lift blockwork | 6d | 2029-08-29 | 2029-09-03 | 3499 |  | 7 day week No holidays | 2512278 |
| 3509 | 37300.38300.60400.243600 | Lobby architrave work | 10d | 2029-09-04 | 2029-09-13 | 3508 |  | 7 day week No holidays | 2512288 |
| 3510 | 37300.38300.60400.243700 | Lobby gypsum plaster | 8d | 2029-09-14 | 2029-09-21 | 3509 |  | 7 day week No holidays | 2512298 |
| 3511 | 37300.38300.60400.243800 | Staircase epoxy paint | 10d | 2029-09-22 | 2029-10-01 | 3510 |  | 7 day week No holidays | 2512308 |
| 3512 | 37300.38300.60400.243900 | Staircase railing | 6d | 2029-09-22 | 2029-09-27 | 3510 |  | 7 day week No holidays | 2512318 |
| 3513 | 37300.38300.60400.244000 | Lobby flooring work | 8d | 2029-09-22 | 2029-09-29 | 3510 |  | 7 day week No holidays | 2512328 |
| 3514 | 37300.38300.60400.244100 | Painting | 10d | 2029-09-30 | 2029-10-09 | 3513 |  | 7 day week No holidays | 2512338 |
| 3515 | 37300.38300.60400.244200 | Fire rated doors | 6d | 2029-09-30 | 2029-10-05 | 3513 |  | 7 day week No holidays | 2512348 |
| 3516 | 37300.38300.60500 | **39th Floor** | 42d | 2029-09-04 | 2029-10-15 |  | start no earlier than 2029-09-04 | 7 day week No holidays | 2506978 |
| 3517 | 37300.38300.60500.244300 | Lift blockwork | 6d | 2029-09-04 | 2029-09-09 | 3508 |  | 7 day week No holidays | 2512358 |
| 3518 | 37300.38300.60500.244400 | Lobby architrave work | 10d | 2029-09-10 | 2029-09-19 | 3517 |  | 7 day week No holidays | 2512368 |
| 3519 | 37300.38300.60500.244500 | Lobby gypsum plaster | 8d | 2029-09-20 | 2029-09-27 | 3518 |  | 7 day week No holidays | 2512378 |
| 3520 | 37300.38300.60500.244600 | Staircase epoxy paint | 10d | 2029-09-28 | 2029-10-07 | 3519 |  | 7 day week No holidays | 2512388 |
| 3521 | 37300.38300.60500.244700 | Staircase railing | 6d | 2029-09-28 | 2029-10-03 | 3519 |  | 7 day week No holidays | 2512398 |
| 3522 | 37300.38300.60500.244800 | Lobby flooring work | 8d | 2029-09-28 | 2029-10-05 | 3519 |  | 7 day week No holidays | 2512408 |
| 3523 | 37300.38300.60500.244900 | Painting | 10d | 2029-10-06 | 2029-10-15 | 3522 |  | 7 day week No holidays | 2512418 |
| 3524 | 37300.38300.60500.245000 | Fire rated doors | 6d | 2029-10-06 | 2029-10-11 | 3522 |  | 7 day week No holidays | 2512428 |

| ID | WBS | Task | Duration | Start | Finish | Predecessors | Constraint | Calendar | Unique_Task_ID |
| --- | --- | --- | --- | --- | --- | --- | --- | --- | --- |
| 3525 | 37300.38300.60600 | **40th Floor** | 42d | 2029-09-10 | 2029-10-21 |  | start no earlier than 2029-09-10 | 7 day week No holidays | 2506988 |
| 3526 | 37300.38300.60600.245100 | Lift blockwork | 6d | 2029-09-10 | 2029-09-15 | 3517 |  | 7 day week No holidays | 2512438 |
| 3527 | 37300.38300.60600.245200 | Lobby architrave work | 10d | 2029-09-16 | 2029-09-25 | 3526 |  | 7 day week No holidays | 2512448 |
| 3528 | 37300.38300.60600.245300 | Lobby gypsum plaster | 8d | 2029-09-26 | 2029-10-03 | 3527 |  | 7 day week No holidays | 2512458 |
| 3529 | 37300.38300.60600.245400 | Staircase epoxy paint | 10d | 2029-10-04 | 2029-10-13 | 3528 |  | 7 day week No holidays | 2512468 |
| 3530 | 37300.38300.60600.245500 | Staircase railing | 6d | 2029-10-04 | 2029-10-09 | 3528 |  | 7 day week No holidays | 2512478 |
| 3531 | 37300.38300.60600.245600 | Lobby flooring work | 8d | 2029-10-04 | 2029-10-11 | 3528 |  | 7 day week No holidays | 2512488 |
| 3532 | 37300.38300.60600.245700 | Painting | 10d | 2029-10-12 | 2029-10-21 | 3531 |  | 7 day week No holidays | 2512498 |
| 3533 | 37300.38300.60600.245800 | Fire rated doors | 6d | 2029-10-12 | 2029-10-17 | 3531 |  | 7 day week No holidays | 2512508 |
| 3534 | 37300.38300.60700 | **41st Floor** | 42d | 2029-09-16 | 2029-10-27 |  | start no earlier than 2029-09-16 | 7 day week No holidays | 2506998 |
| 3535 | 37300.38300.60700.245900 | Lift blockwork | 6d | 2029-09-16 | 2029-09-21 | 3526 |  | 7 day week No holidays | 2512518 |
| 3536 | 37300.38300.60700.246000 | Lobby architrave work | 10d | 2029-09-22 | 2029-10-01 | 3535 |  | 7 day week No holidays | 2512528 |
| 3537 | 37300.38300.60700.246100 | Lobby gypsum plaster | 8d | 2029-10-02 | 2029-10-09 | 3536 |  | 7 day week No holidays | 2512538 |
| 3538 | 37300.38300.60700.246200 | Staircase epoxy paint | 10d | 2029-10-10 | 2029-10-19 | 3537 |  | 7 day week No holidays | 2512548 |
| 3539 | 37300.38300.60700.246300 | Staircase railing | 6d | 2029-10-10 | 2029-10-15 | 3537 |  | 7 day week No holidays | 2512558 |
| 3540 | 37300.38300.60700.246400 | Lobby flooring work | 8d | 2029-10-10 | 2029-10-17 | 3537 |  | 7 day week No holidays | 2512568 |
| 3541 | 37300.38300.60700.246500 | Painting | 10d | 2029-10-18 | 2029-10-27 | 3540 |  | 7 day week No holidays | 2512578 |
| 3542 | 37300.38300.60700.246600 | Fire rated doors | 6d | 2029-10-18 | 2029-10-23 | 3540 |  | 7 day week No holidays | 2512588 |
| 3543 | 37300.38300.60800 | **42nd Floor** | 42d | 2029-09-22 | 2029-11-02 |  | start no earlier than 2029-09-22 | 7 day week No holidays | 2507008 |
| 3544 | 37300.38300.60800.246700 | Lift blockwork | 6d | 2029-09-22 | 2029-09-27 | 3535 |  | 7 day week No holidays | 2512598 |
| 3545 | 37300.38300.60800.246800 | Lobby architrave work | 10d | 2029-09-28 | 2029-10-07 | 3544 |  | 7 day week No holidays | 2512608 |
| 3546 | 37300.38300.60800.246900 | Lobby gypsum plaster | 8d | 2029-10-08 | 2029-10-15 | 3545 |  | 7 day week No holidays | 2512618 |
| 3547 | 37300.38300.60800.247000 | Staircase epoxy paint | 10d | 2029-10-16 | 2029-10-25 | 3546 |  | 7 day week No holidays | 2512628 |
| 3548 | 37300.38300.60800.247100 | Staircase railing | 6d | 2029-10-16 | 2029-10-21 | 3546 |  | 7 day week No holidays | 2512638 |
| 3549 | 37300.38300.60800.247200 | Lobby flooring work | 8d | 2029-10-16 | 2029-10-23 | 3546 |  | 7 day week No holidays | 2512648 |
| 3550 | 37300.38300.60800.247300 | Painting | 10d | 2029-10-24 | 2029-11-02 | 3549 |  | 7 day week No holidays | 2512658 |
| 3551 | 37300.38300.60800.247400 | Fire rated doors | 6d | 2029-10-24 | 2029-10-29 | 3549 |  | 7 day week No holidays | 2512668 |

| ID | WBS | Task | Duration | Start | Finish | Predecessors | Constraint | Calendar | Unique_Task_ID |
| --- | --- | --- | --- | --- | --- | --- | --- | --- | --- |
| 3552 | 37300.38300.60900 | **43rd Floor** | 42d | 2029-09-28 | 2029-11-08 |  | start no earlier than 2029-09-28 | 7 day week No holidays | 2507018 |
| 3553 | 37300.38300.60900.247500 | Lift blockwork | 6d | 2029-09-28 | 2029-10-03 | 3544 |  | 7 day week No holidays | 2512678 |
| 3554 | 37300.38300.60900.247600 | Lobby architrave work | 10d | 2029-10-04 | 2029-10-13 | 3553 |  | 7 day week No holidays | 2512688 |
| 3555 | 37300.38300.60900.247700 | Lobby gypsum plaster | 8d | 2029-10-14 | 2029-10-21 | 3554 |  | 7 day week No holidays | 2512698 |
| 3556 | 37300.38300.60900.247800 | Staircase epoxy paint | 10d | 2029-10-22 | 2029-10-31 | 3555 |  | 7 day week No holidays | 2512708 |
| 3557 | 37300.38300.60900.247900 | Staircase railing | 6d | 2029-10-22 | 2029-10-27 | 3555 |  | 7 day week No holidays | 2512718 |
| 3558 | 37300.38300.60900.248000 | Lobby flooring work | 8d | 2029-10-22 | 2029-10-29 | 3555 |  | 7 day week No holidays | 2512728 |
| 3559 | 37300.38300.60900.248100 | Painting | 10d | 2029-10-30 | 2029-11-08 | 3558 |  | 7 day week No holidays | 2512738 |
| 3560 | 37300.38300.60900.248200 | Fire rated doors | 6d | 2029-10-30 | 2029-11-04 | 3558 |  | 7 day week No holidays | 2512748 |
| 3561 | 37300.38300.61000 | **44th Floor** | 42d | 2029-10-04 | 2029-11-14 |  | start no earlier than 2029-10-04 | 7 day week No holidays | 2507028 |
| 3562 | 37300.38300.61000.248300 | Lift blockwork | 6d | 2029-10-04 | 2029-10-09 | 3553 |  | 7 day week No holidays | 2512758 |
| 3563 | 37300.38300.61000.248400 | Lobby architrave work | 10d | 2029-10-10 | 2029-10-19 | 3562 |  | 7 day week No holidays | 2512768 |
| 3564 | 37300.38300.61000.248500 | Lobby gypsum plaster | 8d | 2029-10-20 | 2029-10-27 | 3563 |  | 7 day week No holidays | 2512778 |
| 3565 | 37300.38300.61000.248600 | Staircase epoxy paint | 10d | 2029-10-28 | 2029-11-06 | 3564 |  | 7 day week No holidays | 2512788 |
| 3566 | 37300.38300.61000.248700 | Staircase railing | 6d | 2029-10-28 | 2029-11-02 | 3564 |  | 7 day week No holidays | 2512798 |
| 3567 | 37300.38300.61000.248800 | Lobby flooring work | 8d | 2029-10-28 | 2029-11-04 | 3564 |  | 7 day week No holidays | 2512808 |
| 3568 | 37300.38300.61000.248900 | Painting | 10d | 2029-11-05 | 2029-11-14 | 3567 |  | 7 day week No holidays | 2512818 |
| 3569 | 37300.38300.61000.249000 | Fire rated doors | 6d | 2029-11-05 | 2029-11-10 | 3567 |  | 7 day week No holidays | 2512828 |
| 3570 | 37300.38300.61200 | **45th Floor** | 42d | 2029-10-10 | 2029-11-20 |  | start no earlier than 2029-10-10 | 7 day week No holidays | 2507038 |
| 3571 | 37300.38300.61200.249100 | Lift blockwork | 6d | 2029-10-10 | 2029-10-15 | 3562 |  | 7 day week No holidays | 2512838 |
| 3572 | 37300.38300.61200.249200 | Lobby architrave work | 10d | 2029-10-16 | 2029-10-25 | 3571 |  | 7 day week No holidays | 2512848 |
| 3573 | 37300.38300.61200.249300 | Lobby gypsum plaster | 8d | 2029-10-26 | 2029-11-02 | 3572 |  | 7 day week No holidays | 2512858 |
| 3574 | 37300.38300.61200.249400 | Staircase epoxy paint | 10d | 2029-11-03 | 2029-11-12 | 3573 |  | 7 day week No holidays | 2512868 |
| 3575 | 37300.38300.61200.249500 | Staircase railing | 6d | 2029-11-03 | 2029-11-08 | 3573 |  | 7 day week No holidays | 2512878 |
| 3576 | 37300.38300.61200.249600 | Lobby flooring work | 8d | 2029-11-03 | 2029-11-10 | 3573 |  | 7 day week No holidays | 2512888 |
| 3577 | 37300.38300.61200.249700 | Painting | 10d | 2029-11-11 | 2029-11-20 | 3576 |  | 7 day week No holidays | 2512898 |
| 3578 | 37300.38300.61200.249800 | Fire rated doors | 6d | 2029-11-11 | 2029-11-16 | 3576 |  | 7 day week No holidays | 2512908 |

| ID | WBS | Task | Duration | Start | Finish | Predecessors | Constraint | Calendar | Unique_Task_ID |
| --- | --- | --- | --- | --- | --- | --- | --- | --- | --- |
| 3579 | 37300.38300.61300 | **46th Floor** | 42d | 2029-10-16 | 2029-11-26 |  | start no earlier than 2029-10-16 | 7 day week No holidays | 2507048 |
| 3580 | 37300.38300.61300.249900 | Lift blockwork | 6d | 2029-10-16 | 2029-10-21 | 3571 |  | 7 day week No holidays | 2512918 |
| 3581 | 37300.38300.61300.250000 | Lobby architrave work | 10d | 2029-10-22 | 2029-10-31 | 3580 |  | 7 day week No holidays | 2512928 |
| 3582 | 37300.38300.61300.250100 | Lobby gypsum plaster | 8d | 2029-11-01 | 2029-11-08 | 3581 |  | 7 day week No holidays | 2512938 |
| 3583 | 37300.38300.61300.250200 | Staircase epoxy paint | 10d | 2029-11-09 | 2029-11-18 | 3582 |  | 7 day week No holidays | 2512948 |
| 3584 | 37300.38300.61300.250300 | Staircase railing | 6d | 2029-11-09 | 2029-11-14 | 3582 |  | 7 day week No holidays | 2512958 |
| 3585 | 37300.38300.61300.250400 | Lobby flooring work | 8d | 2029-11-09 | 2029-11-16 | 3582 |  | 7 day week No holidays | 2512968 |
| 3586 | 37300.38300.61300.250500 | Painting | 10d | 2029-11-17 | 2029-11-26 | 3585 |  | 7 day week No holidays | 2512978 |
| 3587 | 37300.38300.61300.250600 | Fire rated doors | 6d | 2029-11-17 | 2029-11-22 | 3585 |  | 7 day week No holidays | 2512988 |
| 3588 | 37300.38300.61400 | **47th Floor** | 42d | 2029-10-22 | 2029-12-02 |  | start no earlier than 2029-10-22 | 7 day week No holidays | 2507058 |
| 3589 | 37300.38300.61400.250700 | Lift blockwork | 6d | 2029-10-22 | 2029-10-27 | 3580 |  | 7 day week No holidays | 2512998 |
| 3590 | 37300.38300.61400.250800 | Lobby architrave work | 10d | 2029-10-28 | 2029-11-06 | 3589 |  | 7 day week No holidays | 2513008 |
| 3591 | 37300.38300.61400.250900 | Lobby gypsum plaster | 8d | 2029-11-07 | 2029-11-14 | 3590 |  | 7 day week No holidays | 2513018 |
| 3592 | 37300.38300.61400.251000 | Staircase epoxy paint | 10d | 2029-11-15 | 2029-11-24 | 3591 |  | 7 day week No holidays | 2513028 |
| 3593 | 37300.38300.61400.251100 | Staircase railing | 6d | 2029-11-15 | 2029-11-20 | 3591 |  | 7 day week No holidays | 2513038 |
| 3594 | 37300.38300.61400.251200 | Lobby flooring work | 8d | 2029-11-15 | 2029-11-22 | 3591 |  | 7 day week No holidays | 2513048 |
| 3595 | 37300.38300.61400.251300 | Painting | 10d | 2029-11-23 | 2029-12-02 | 3594 |  | 7 day week No holidays | 2513058 |
| 3596 | 37300.38300.61400.251400 | Fire rated doors | 6d | 2029-11-23 | 2029-11-28 | 3594 |  | 7 day week No holidays | 2513068 |
| 3597 | 37300.38300.61500 | **48th Floor** | 42d | 2029-10-28 | 2029-12-08 |  | start no earlier than 2029-10-28 | 7 day week No holidays | 2507068 |
| 3598 | 37300.38300.61500.251500 | Lift blockwork | 6d | 2029-10-28 | 2029-11-02 | 3589 |  | 7 day week No holidays | 2513078 |
| 3599 | 37300.38300.61500.251600 | Lobby architrave work | 10d | 2029-11-03 | 2029-11-12 | 3598 |  | 7 day week No holidays | 2513088 |
| 3600 | 37300.38300.61500.251700 | Lobby gypsum plaster | 8d | 2029-11-13 | 2029-11-20 | 3599 |  | 7 day week No holidays | 2513098 |
| 3601 | 37300.38300.61500.251800 | Staircase epoxy paint | 10d | 2029-11-21 | 2029-11-30 | 3600 |  | 7 day week No holidays | 2513108 |
| 3602 | 37300.38300.61500.251900 | Staircase railing | 6d | 2029-11-21 | 2029-11-26 | 3600 |  | 7 day week No holidays | 2513118 |
| 3603 | 37300.38300.61500.252000 | Lobby flooring work | 8d | 2029-11-21 | 2029-11-28 | 3600 |  | 7 day week No holidays | 2513128 |
| 3604 | 37300.38300.61500.252100 | Painting | 10d | 2029-11-29 | 2029-12-08 | 3603 |  | 7 day week No holidays | 2513138 |
| 3605 | 37300.38300.61500.252200 | Fire rated doors | 6d | 2029-11-29 | 2029-12-04 | 3603 |  | 7 day week No holidays | 2513148 |

| ID | WBS | Task | Duration | Start | Finish | Predecessors | Constraint | Calendar | Unique_Task_ID |
| --- | --- | --- | --- | --- | --- | --- | --- | --- | --- |
| 3606 | 37300.38300.61600 | **49th Floor** | 42d | 2029-11-03 | 2029-12-14 |  | start no earlier than 2029-11-03 | 7 day week No holidays | 2507078 |
| 3607 | 37300.38300.61600.252300 | Lift blockwork | 6d | 2029-11-03 | 2029-11-08 | 3598 |  | 7 day week No holidays | 2513158 |
| 3608 | 37300.38300.61600.252400 | Lobby architrave work | 10d | 2029-11-09 | 2029-11-18 | 3607 |  | 7 day week No holidays | 2513168 |
| 3609 | 37300.38300.61600.252500 | Lobby gypsum plaster | 8d | 2029-11-19 | 2029-11-26 | 3608 |  | 7 day week No holidays | 2513178 |
| 3610 | 37300.38300.61600.252600 | Staircase epoxy paint | 10d | 2029-11-27 | 2029-12-06 | 3609 |  | 7 day week No holidays | 2513188 |
| 3611 | 37300.38300.61600.252700 | Staircase railing | 6d | 2029-11-27 | 2029-12-02 | 3609 |  | 7 day week No holidays | 2513198 |
| 3612 | 37300.38300.61600.252800 | Lobby flooring work | 8d | 2029-11-27 | 2029-12-04 | 3609 |  | 7 day week No holidays | 2513208 |
| 3613 | 37300.38300.61600.252900 | Painting | 10d | 2029-12-05 | 2029-12-14 | 3612 |  | 7 day week No holidays | 2513218 |
| 3614 | 37300.38300.61600.253000 | Fire rated doors | 6d | 2029-12-05 | 2029-12-10 | 3612 |  | 7 day week No holidays | 2513228 |
| 3615 | 37300.38300.61700 | **50th Floor** | 42d | 2029-11-09 | 2029-12-20 |  | start no earlier than 2029-11-09 | 7 day week No holidays | 2507088 |
| 3616 | 37300.38300.61700.253100 | Lift blockwork | 6d | 2029-11-09 | 2029-11-14 | 3607 |  | 7 day week No holidays | 2513238 |
| 3617 | 37300.38300.61700.253200 | Lobby architrave work | 10d | 2029-11-15 | 2029-11-24 | 3616 |  | 7 day week No holidays | 2513248 |
| 3618 | 37300.38300.61700.253300 | Lobby gypsum plaster | 8d | 2029-11-25 | 2029-12-02 | 3617 |  | 7 day week No holidays | 2513258 |
| 3619 | 37300.38300.61700.253400 | Staircase epoxy paint | 10d | 2029-12-03 | 2029-12-12 | 3618 |  | 7 day week No holidays | 2513268 |
| 3620 | 37300.38300.61700.253500 | Staircase railing | 6d | 2029-12-03 | 2029-12-08 | 3618 |  | 7 day week No holidays | 2513278 |
| 3621 | 37300.38300.61700.253600 | Lobby flooring work | 8d | 2029-12-03 | 2029-12-10 | 3618 |  | 7 day week No holidays | 2513288 |
| 3622 | 37300.38300.61700.253700 | Painting | 10d | 2029-12-11 | 2029-12-20 | 3621 |  | 7 day week No holidays | 2513298 |
| 3623 | 37300.38300.61700.253800 | Fire rated doors | 6d | 2029-12-11 | 2029-12-16 | 3621 |  | 7 day week No holidays | 2513308 |
| 3624 | 37300.38300.61800 | **51st Floor** | 42d | 2029-11-15 | 2029-12-26 |  | start no earlier than 2029-11-15 | 7 day week No holidays | 2507098 |
| 3625 | 37300.38300.61800.253900 | Lift blockwork | 6d | 2029-11-15 | 2029-11-20 | 3616 |  | 7 day week No holidays | 2513318 |
| 3626 | 37300.38300.61800.254000 | Lobby architrave work | 10d | 2029-11-21 | 2029-11-30 | 3625 |  | 7 day week No holidays | 2513328 |
| 3627 | 37300.38300.61800.254100 | Lobby gypsum plaster | 8d | 2029-12-01 | 2029-12-08 | 3626 |  | 7 day week No holidays | 2513338 |
| 3628 | 37300.38300.61800.254200 | Staircase epoxy paint | 10d | 2029-12-09 | 2029-12-18 | 3627 |  | 7 day week No holidays | 2513348 |
| 3629 | 37300.38300.61800.254300 | Staircase railing | 6d | 2029-12-09 | 2029-12-14 | 3627 |  | 7 day week No holidays | 2513358 |
| 3630 | 37300.38300.61800.254400 | Lobby flooring work | 8d | 2029-12-09 | 2029-12-16 | 3627 |  | 7 day week No holidays | 2513368 |
| 3631 | 37300.38300.61800.254500 | Painting | 10d | 2029-12-17 | 2029-12-26 | 3630 |  | 7 day week No holidays | 2513378 |
| 3632 | 37300.38300.61800.254600 | Fire rated doors | 6d | 2029-12-17 | 2029-12-22 | 3630 |  | 7 day week No holidays | 2513388 |

| ID | WBS | Task | Duration | Start | Finish | Predecessors | Constraint | Calendar | Unique_Task_ID |
| --- | --- | --- | --- | --- | --- | --- | --- | --- | --- |
| 3633 | 37300.38300.62100 | **52nd Floor** | 42d | 2029-11-21 | 2030-01-01 |  | start no earlier than 2029-11-21 | 7 day week No holidays | 2507108 |
| 3634 | 37300.38300.62100.254700 | Lift blockwork | 6d | 2029-11-21 | 2029-11-26 | 3625 |  | 7 day week No holidays | 2513398 |
| 3635 | 37300.38300.62100.254800 | Lobby architrave work | 10d | 2029-11-27 | 2029-12-06 | 3634 |  | 7 day week No holidays | 2513408 |
| 3636 | 37300.38300.62100.254900 | Lobby gypsum plaster | 8d | 2029-12-07 | 2029-12-14 | 3635 |  | 7 day week No holidays | 2513418 |
| 3637 | 37300.38300.62100.255000 | Staircase epoxy paint | 10d | 2029-12-15 | 2029-12-24 | 3636 |  | 7 day week No holidays | 2513428 |
| 3638 | 37300.38300.62100.255100 | Staircase railing | 6d | 2029-12-15 | 2029-12-20 | 3636 |  | 7 day week No holidays | 2513438 |
| 3639 | 37300.38300.62100.255200 | Lobby flooring work | 8d | 2029-12-15 | 2029-12-22 | 3636 |  | 7 day week No holidays | 2513448 |
| 3640 | 37300.38300.62100.255300 | Painting | 10d | 2029-12-23 | 2030-01-01 | 3639 |  | 7 day week No holidays | 2513458 |
| 3641 | 37300.38300.62100.255400 | Fire rated doors | 6d | 2029-12-23 | 2029-12-28 | 3639 |  | 7 day week No holidays | 2513468 |
| 3642 | 37300.67300 | **Capex Item procurement** | 120d | 2029-05-11 | 2029-09-07 |  | start no earlier than 2029-05-11 | 7 day week No holidays | 2507338 |
| 3643 | 37300.67300.127100 | Lift | 120d | 2029-05-11 | 2029-09-07 | 2169 |  | 7 day week No holidays | 2508208 |
| 3644 | 37300.67300.127200 | Panel | 120d | 2029-05-11 | 2029-09-07 | 2169 |  | 7 day week No holidays | 2508218 |
| 3645 | 37300.67300.127300 | DG procurement | 120d | 2029-05-11 | 2029-09-07 | 2169 |  | 7 day week No holidays | 2508228 |
| 3646 | 37300.67300.127400 | Transformer | 120d | 2029-05-11 | 2029-09-07 | 2169 |  | 7 day week No holidays | 2508238 |
| 3647 | 37300.67300.127500 | Pumps | 120d | 2029-05-11 | 2029-09-07 | 2169 |  | 7 day week No holidays | 2508248 |
| 3648 | 37300.67200 | **External Services** | 180d | 2029-08-09 | 2030-02-04 |  | start no earlier than 2029-08-09 | 7 day week No holidays | 2507348 |
| 3649 | 37300.67200.127600 | Plumbing network | 180d | 2029-08-09 | 2030-02-04 | 2235 |  | 7 day week No holidays | 2508258 |
| 3650 | 37300.67200.127700 | Electrical network | 180d | 2029-08-09 | 2030-02-04 | 2235 |  | 7 day week No holidays | 2508268 |
| 3651 | 37300.67200.127800 | Electrical lighting | 180d | 2029-08-09 | 2030-02-04 | 2235 |  | 7 day week No holidays | 2508278 |
| 3652 | 37300.67200.127900 | Fire fighting | 180d | 2029-08-09 | 2030-02-04 | 2235 |  | 7 day week No holidays | 2508288 |
| 3653 | 37300.67200.128000 | CCTV works | 90d | 2029-08-09 | 2029-11-06 | 2235 |  | 7 day week No holidays | 2508298 |
| 3654 | 37300.40200 | **Infra Works** | 180d | 2029-08-09 | 2030-02-04 |  | start no earlier than 2029-08-09 | 7 day week No holidays | 2505988 |
| 3655 | 37300.40200.128100 | Compound wall | 90d | 2029-11-07 | 2030-02-04 | 2235FS+90d |  | 7 day week No holidays | 2508308 |
| 3656 | 37300.40200.128200 | Entrance gate | 30d | 2029-11-07 | 2029-12-06 | 2235FS+90d |  | 7 day week No holidays | 2508318 |
| 3657 | 37300.40200.128300 | STP | 120d | 2029-08-09 | 2029-12-06 | 2235 |  | 7 day week No holidays | 2508328 |
| 3658 | 37300.40200.128400 | WTP | 90d | 2029-08-09 | 2029-11-06 | 2235 |  | 7 day week No holidays | 2508338 |
| 3659 | 37300.40200.128500 | OWC | 45d | 2029-08-09 | 2029-09-22 | 2235 |  | 7 day week No holidays | 2508348 |
| 3660 | 37300.40200.128600 | Road | 90d | 2029-08-09 | 2029-11-06 | 2235 |  | 7 day week No holidays | 2508358 |
| 3661 | 37300.40200.128700 | Storm water drain | 45d | 2029-08-09 | 2029-09-22 | 2235 |  | 7 day week No holidays | 2508368 |
| 3662 | 37300.40200.128800 | HIghside electrical network | 45d | 2029-08-09 | 2029-09-22 | 2235 |  | 7 day week No holidays | 2508378 |
| 3663 | 37300.40200.128900 | Softscaping | 45d | 2029-08-09 | 2029-09-22 | 2235 |  | 7 day week No holidays | 2508388 |
| 3664 | 37300.40200.129000 | Rain water harvesting | 45d | 2029-08-09 | 2029-09-22 | 2235 |  | 7 day week No holidays | 2508398 |
| 3665 | 37300.40200.129100 | Hardscaping | 45d | 2029-08-09 | 2029-09-22 | 2235 |  | 7 day week No holidays | 2508408 |
| 3666 | 37300.40200.129200 | External secturity | 45d | 2029-08-09 | 2029-09-22 | 2235 |  | 7 day week No holidays | 2508418 |
| 3667 | 37300.40200.129300 | Signages | 45d | 2029-08-09 | 2029-09-22 | 2235 |  | 7 day week No holidays | 2508428 |
| 3668 | 37300.40200.129400 | Green building certification | 45d | 2029-08-09 | 2029-09-22 | 2235 |  | 7 day week No holidays | 2508438 |

| ID | WBS | Task | Duration | Start | Finish | Predecessors | Complete | Constraint | Calendar | Unique_Task_ID |
| --- | --- | --- | --- | --- | --- | --- | --- | --- | --- | --- |
| 3669 | 37300.79300 | **CFO** | 31d | 2030-04-06 | 2030-05-06 |  |  | start no earlier than 2030-04-06 | 7 day week No holidays | 2526478 |
| 3670 | 37300.79300.129500 | CFO Application | 1d | 2030-04-06 | 2030-04-06 | 3203, 3648, 3665, 3666, 3667 |  |  | 7 day week No holidays | 2526498 |
| 3671 | 37300.79300.129600 | CFO Receipt | 30d | 2030-04-07 | 2030-05-06 | 3670 |  |  | 7 day week No holidays | 2526508 |
| 3672 | 37300.79400 | **OC** | 31d | 2030-05-07 | 2030-06-06 |  |  | start no earlier than 2030-05-07 | 7 day week No holidays | 2526488 |
| 3673 | 37300.79400.129700 | OC Application | 1d | 2030-05-07 | 2030-05-07 | 3671 |  |  | 7 day week No holidays | 2526518 |
| 3674 | 37300.79400.129800 | OC Receipt | 30d | 2030-05-08 | 2030-06-06 | 3673 |  |  | 7 day week No holidays | 2526528 |
| 3675 | 37300.57100 | **Handing Over activities** | 42d | 2029-09-18 | 2029-10-29 |  |  | start no earlier than 2029-09-18 | 7 day week No holidays | 2506638 |
| 3676 | 37300.57100.77700 | **Acid Wash** | 35d | 2029-09-18 | 2029-10-22 |  |  | start no earlier than 2029-09-18 | 7 day week No holidays | 2507328 |
| 3677 | 37300.57100.77700.255500 | 1st to 10th Fl | 7d | 2029-09-18 | 2029-09-24 | 2622 |  |  | 7 day week No holidays | 2515078 |
| 3678 | 37300.57100.77700.255600 | 11th to 20th Fl | 7d | 2029-09-25 | 2029-10-01 | 3677 |  |  | 7 day week No holidays | 2515088 |
| 3679 | 37300.57100.77700.255700 | 21st to 30th Fl | 7d | 2029-10-02 | 2029-10-08 | 3678 |  |  | 7 day week No holidays | 2515098 |
| 3680 | 37300.57100.77700.255800 | 31st to 40th Fl | 7d | 2029-10-09 | 2029-10-15 | 3679 |  |  | 7 day week No holidays | 2515108 |
| 3681 | 37300.57100.77700.255900 | 41st to 52nd Fl | 7d | 2029-10-16 | 2029-10-22 | 3680 |  |  | 7 day week No holidays | 2515118 |
| 3682 | 37300.57100.77800 | **CP & Sanitory fittings** | 35d | 2029-09-25 | 2029-10-29 |  |  | start no earlier than 2029-09-25 | 7 day week No holidays | 2507318 |
| 3683 | 37300.57100.77800.256000 | 1st to 10th Fl | 7d | 2029-09-25 | 2029-10-01 | 3677 |  |  | 7 day week No holidays | 2515148 |
| 3684 | 37300.57100.77800.256100 | 11th to 20th Fl | 7d | 2029-10-02 | 2029-10-08 | 3683 |  |  | 7 day week No holidays | 2515158 |
| 3685 | 37300.57100.77800.256200 | 21st to 30th Fl | 7d | 2029-10-09 | 2029-10-15 | 3684 |  |  | 7 day week No holidays | 2515168 |
| 3686 | 37300.57100.77800.256300 | 31st to 40th Fl | 7d | 2029-10-16 | 2029-10-22 | 3685 |  |  | 7 day week No holidays | 2515178 |
| 3687 | 37300.57100.77800.256400 | 41st to 52nd Fl | 7d | 2029-10-23 | 2029-10-29 | 3686 |  |  | 7 day week No holidays | 2515188 |
| 3688 | 37300.38900 | **TB Milestones** | 1579d | 2024-10-14 | 2029-02-08 |  | 20% | start no earlier than 2024-10-14 | 7 day week No holidays | 8606054 |
| 3689 | 37300.38900.39000 | **TB Milestones** | 1579d | 2024-10-14 | 2029-02-08 |  | 20% | start no earlier than 2024-10-14 | 7 day week No holidays | 8606064 |
| 3690 | 37300.38900.39000.256500 | On Initiation of Excavation | 1d | 2024-10-14 | 2024-10-14 |  | 100% | start no earlier than 2024-10-14 | Indian Calendar | 8606065 |
| 3691 | 37300.38900.39000.256600 | On Completion of Excavation | 1d | 2025-10-13 | 2025-10-13 |  |  | start no earlier than 2025-10-13 | 7 day week No holidays | 8606084 |
| 3692 | 37300.38900.39000.256700 | Completion of Raft | 1d | 2025-10-13 | 2025-10-13 |  |  | start no earlier than 2025-10-13 | 7 day week No holidays | 8606094 |
| 3693 | 37300.38900.39000.256800 | Completion of 1st basement slab | 1d | 2025-10-13 | 2025-10-13 |  |  | start no earlier than 2025-10-13 | 7 day week No holidays | 8606104 |
| 3694 | 37300.38900.39000.256900 | On completion of Plinth | 5d | 2025-10-13 | 2025-10-17 |  | 100% | start no earlier than 2025-10-13 | 7 day week No holidays | 8606114 |
| 3695 | 37300.38900.39000.257000 | Completion 1st Floor slab | 1d | 2025-10-13 | 2025-10-13 |  |  | start no earlier than 2025-10-13 | 7 day week No holidays | 8606124 |
| 3696 | 37300.38900.39000.422800 | Completion 3rd Floor slab | 1d | 2025-11-05 | 2025-11-05 |  |  | start no earlier than 2025-11-05 | Indian Calendar | 8606125 |
| 3697 | 37300.38900.39000.422700 | On Completion of Lobby | 1d | 2025-10-25 | 2025-10-25 |  |  | start no earlier than 2025-10-25 | Indian Calendar | 8606134 |
| 3698 | 37300.38900.39000.422600 | Completion 9th Floor slab | 1d | 2029-01-01 | 2029-01-01 |  |  | start no earlier than 2029-01-01 | Indian Calendar | 8606144 |
| 3699 | 37300.38900.39000.422500 | initiation of 10th slab | 1d | 2029-01-01 | 2029-01-01 |  |  | start no earlier than 2029-01-01 | Indian Calendar | 8606154 |
| 3700 | 37300.38900.39000.422400 | Completion 18th Floor slab | 1d | 2029-01-01 | 2029-01-01 |  |  | start no earlier than 2029-01-01 | Indian Calendar | 8606164 |
| 3701 | 37300.38900.39000.422300 | initiation of 20th slab | 1d | 2029-01-01 | 2029-01-01 |  |  | start no earlier than 2029-01-01 | Indian Calendar | 8606174 |
| 3702 | 37300.38900.39000.422200 | Completion 27th Floor slab | 1d | 2029-01-01 | 2029-01-01 |  |  | start no earlier than 2029-01-01 | Indian Calendar | 8606194 |
| 3703 | 37300.38900.39000.422100 | initiation of 30th slab | 1d | 2029-01-01 | 2029-01-01 |  |  | start no earlier than 2029-01-01 | Indian Calendar | 8606204 |
| 3704 | 37300.38900.39000.422000 | Completion 36th Floor slab | 1d | 2029-01-01 | 2029-01-01 |  |  | start no earlier than 2029-01-01 | Indian Calendar | 8606214 |
| 3705 | 37300.38900.39000.421900 | initiation of 40th slab | 1d | 2029-01-01 | 2029-01-01 |  |  | start no earlier than 2029-01-01 | Indian Calendar | 8606224 |
| 3706 | 37300.38900.39000.421800 | Completion 45th Floor slab | 1d | 2029-01-01 | 2029-01-01 |  |  | start no earlier than 2029-01-01 | Indian Calendar | 8606234 |
| 3707 | 37300.38900.39000.421700 | Completion 54th Floor slab | 1d | 2029-01-01 | 2029-01-01 |  |  | start no earlier than 2029-01-01 | Indian Calendar | 8606244 |
| 3708 | 37300.38900.39000.421600 | On Completion of Terrace Slab | 1d | 2029-01-01 | 2029-01-01 |  |  | start no earlier than 2029-01-01 | Indian Calendar | 8606254 |
| 3709 | 37300.38900.39000.421500 | On completion of the walls, internal plaster, floorings of the said Apartment | 1d | 2029-01-01 | 2029-01-01 |  |  | start no earlier than 2029-01-01 | Indian Calendar | 8606264 |
| 3710 | 37300.38900.39000.421400 | On completion of the staircases and lift wells | 1d | 2029-01-01 | 2029-01-01 |  |  | start no earlier than 2029-01-01 | Indian Calendar | 8606274 |
| 3711 | 37300.38900.39000.421300 | On completion of Elevation and external plumbing of said apartment | 1d | 2029-01-01 | 2029-01-01 |  |  | start no earlier than 2029-01-01 | Indian Calendar | 8606284 |
| 3712 | 37300.38900.39000.421200 | On completion of water Pumps and Electrical Fittings of said apartment | 1d | 2029-01-01 | 2029-01-01 |  |  | start no earlier than 2029-01-01 | Indian Calendar | 8606294 |
| 3713 | 37300.38900.39000.421100 | On Application of OC | 1d | 2029-01-01 | 2029-01-01 |  |  | start no earlier than 2029-01-01 | Indian Calendar | 8606304 |
| 3714 | 37300.38900.39000.421000 | Possession | 1d | 2029-02-08 | 2029-02-08 |  |  | start no earlier than 2029-02-08 | Indian Calendar | 8606314 |

| ID | WBS | Task | Duration | Start | Finish | Predecessors | Complete | Constraint | Calendar | Unique_Task_ID |
| --- | --- | --- | --- | --- | --- | --- | --- | --- | --- | --- |
| 3721 | 38700 | **NTA** | 2173d | 2023-05-30 | 2029-05-10 |  | 19% | start no earlier than 2023-05-30 | 7 day week No holidays | 2449848 |
| 3722 | 38700.39400 | **NTA - Part 1 Rehab** | 1509d | 2024-01-04 | 2028-02-20 |  | 19% | start no earlier than 2024-01-04 | 7 day week No holidays | 2449788 |
| 3723 | 38700.39400.81300 | Piling Work & Rock Anchoring | 99d | 2024-01-04 | 2025-03-31 |  | 100% | must start on 2023-05-25 | 7 day week No holidays | 2449789 |
| 3724 | 38700.39400.81400 | Piling Work & Rock | 70d | 2025-04-17 | 2025-10-01 | 3723FS-66d | 100% | start no earlier than 2025-04-17 | Indian Calendar | 10032669 |
| 3725 | 38700.39400.81500 | Excavation | 183d | 2025-03-29 | 2025-12-11 | 3724FS-185d | 97% | start no earlier than 2025-03-29 | 7 day week No holidays | 2449790 |
| 3726 | 38700.39400.81600 | UGT & pumproom shifting | 11d | 2025-03-22 | 2025-10-23 | 3725FS-498d | 9% |  | Indian Calendar | 2449791 |
| 3727 | 38700.39400.63300 | **RCC - Upto Plinth** | 329d | 2025-07-26 | 2026-06-19 |  | 46% | start no earlier than 2025-07-26 | 7 day week No holidays | 2449808 |
| 3728 | 38700.39400.63300.90000 | PCC | 45d | 2025-07-26 | 2025-11-25 |  | 62% | start no earlier than 2025-07-26 | Indian Calendar | 2449818 |
| 3729 | 38700.39400.63300.90100 | Passive rock anchor | 60d | 2025-09-01 | 2025-12-17 |  | 95% | start no earlier than 2025-09-01 | Indian Calendar | 2449828 |
| 3730 | 38700.39400.63300.90200 | Waterproofing | 75d | 2025-09-30 | 2025-12-25 |  | 52% | start no earlier than 2025-09-30 | Indian Calendar | 2449838 |
| 3731 | 38700.39400.63300.90300 | Raft | 26d | 2026-03-07 | 2026-04-01 | 3726FS+134d | 38% | start no earlier than 2026-03-07 | 7 day week No holidays | 2504598 |
| 3732 | 38700.39400.63300.257100 | RCC - Basement 2 | 25d | 2026-03-28 | 2026-04-21 | 3731FS-5d |  |  | 7 day week No holidays | 2504608 |
| 3733 | 38700.39400.63300.257200 | RCC - Basement 1 | 28d | 2026-04-22 | 2026-05-19 | 3732 |  |  | 7 day week No holidays | 2504618 |
| 3734 | 38700.39400.63300.257300 | RCC - Ground fl | 31d | 2026-05-20 | 2026-06-19 | 3733 |  |  | 7 day week No holidays | 2504628 |
| 3735 | 38700.39400.63400 | **RCC - Above Plinth** | 181d | 2026-06-20 | 2026-12-17 |  |  | start no earlier than 2026-06-20 | 7 day week No holidays | 2449798 |
| 3736 | 38700.39400.63400.257400 | RCC - Podium 1 | 25d | 2026-06-20 | 2026-07-14 | 3734 |  |  | 7 day week No holidays | 2449799 |
| 3737 | 38700.39400.63400.257500 | RCC - Podium 2 | 30d | 2026-07-15 | 2026-08-13 | 3736 |  |  | 7 day week No holidays | 2449809 |
| 3738 | 38700.39400.63400.257600 | RCC - Podium 3 | 25d | 2026-08-14 | 2026-09-07 | 3737 |  |  | 7 day week No holidays | 2449819 |
| 3739 | 38700.39400.63400.257700 | RCC - Podium 4 | 25d | 2026-09-03 | 2026-09-27 | 3738FS-5d |  |  | 7 day week No holidays | 2449829 |
| 3740 | 38700.39400.63400.257800 | RCC - Podium 5 | 25d | 2026-09-23 | 2026-10-17 | 3739FS-5d |  |  | 7 day week No holidays | 2449839 |
| 3741 | 38700.39400.63400.257900 | RCC - Podium 6 | 31d | 2026-10-28 | 2026-11-27 | 3740FS+10d |  |  | 7 day week No holidays | 2449849 |
| 3742 | 38700.39400.63400.258000 | RCC - Podium 7/Terrace | 20d | 2026-11-28 | 2026-12-17 | 3741 |  |  | 7 day week No holidays | 2449859 |
| 3743 | 38700.39400.39600 | **Finishing & Services** | 430d | 2026-12-18 | 2028-02-20 |  |  | start no earlier than 2026-12-18 | 7 day week No holidays | 2449870 |
| 3744 | 38700.39400.39600.258100 | Blockwork | 40d | 2026-12-18 | 2027-01-26 | 3735 |  |  | 7 day week No holidays | 2449871 |
| 3745 | 38700.39400.39600.258200 | RCC Shaft Readiness/Postpour work | 45d | 2026-12-18 | 2027-01-31 | 3742 |  |  | 7 day week No holidays | 2449881 |
| 3746 | 38700.39400.39600.258300 | Electrical Work | 15d | 2027-01-27 | 2027-02-10 | 3744 |  |  | 7 day week No holidays | 2449872 |
| 3747 | 38700.39400.39600.258400 | Plumbing | 240d | 2027-02-01 | 2027-09-28 | 3745 |  |  | 7 day week No holidays | 2449882 |
| 3748 | 38700.39400.39600.258500 | Fire Fighting | 240d | 2027-02-01 | 2027-09-28 | 3745 |  |  | 7 day week No holidays | 2449892 |
| 3749 | 38700.39400.39600.258600 | Staircase Gypsum | 120d | 2027-01-27 | 2027-05-26 | 3744 |  |  | 7 day week No holidays | 2449912 |
| 3750 | 38700.39400.39600.258700 | Staircase Flooring | 180d | 2027-05-27 | 2027-11-22 | 3749 |  |  | 7 day week No holidays | 2449922 |
| 3751 | 38700.39400.39600.258800 | Staircase-Door FRD | 90d | 2027-11-23 | 2028-02-20 | 3750 |  |  | 7 day week No holidays | 2449932 |
| 3752 | 38700.39400.39600.258900 | Gypsum work | 45d | 2027-02-11 | 2027-03-27 | 3746 |  |  | 7 day week No holidays | 2449873 |
| 3753 | 38700.39400.39600.259000 | FAPA | 90d | 2027-02-01 | 2027-05-01 | 3745 |  |  | 7 day week No holidays | 2449874 |
| 3754 | 38700.39400.39600.259100 | Lift installation | 120d | 2027-02-01 | 2027-05-31 | 3745 |  |  | 7 day week No holidays | 2449884 |
| 3755 | 38700.39400.39600.259200 | Railing work | 15d | 2027-03-28 | 2027-04-11 | 3752 |  |  | 7 day week No holidays | 2449875 |
| 3756 | 38700.39400.39600.259300 | Toilet completion | 30d | 2027-03-28 | 2027-04-26 | 3752 |  |  | 7 day week No holidays | 2449876 |
| 3757 | 38700.39400.39600.259400 | VDF Flooring | 120d | 2027-02-01 | 2027-05-31 | 3745 |  |  | 7 day week No holidays | 2449886 |
| 3758 | 38700.39400.39600.259500 | Basement Gratings | 60d | 2027-11-23 | 2028-01-21 | 3750 |  |  | 7 day week No holidays | 2449894 |
| 3759 | 38700.39400.39600.259600 | External Painting | 120d | 2027-03-28 | 2027-07-25 | 3752 |  |  | 7 day week No holidays | 2449902 |
| 3760 | 38700.39400.39600.259700 | Internal Painting | 30d | 2027-06-01 | 2027-06-30 | 3757 |  |  | 7 day week No holidays | 7296014 |

| ID | WBS | Task | Duration | Start | Finish | Predecessors | Complete | Constraint | Calendar | Unique_Task_ID |
| --- | --- | --- | --- | --- | --- | --- | --- | --- | --- | --- |
| 3761 | 38700.38800 | **NTA - Part 2A MOSA** | 1588d | 2023-05-30 | 2027-10-03 |  | 42% | start no earlier than 2023-05-30 | 7 day week No holidays | 2504778 |
| 3762 | 38700.38800.81700 | Piling Work | 0.82d | 2023-05-30 | 2023-05-30 |  | 100% | start no earlier than 2023-05-30 | 7 day week No holidays | 2504808 |
| 3763 | 38700.38800.81800 | Excavation | 80.58d | 2023-08-23 | 2024-12-08 | 3762FS-470.75d | 100% |  | 7 day week No holidays | 2504818 |
| 3764 | 38700.38800.79000 | **RCC - Upto Plinth** | 431d | 2023-10-05 | 2024-12-08 |  | 100% | start no earlier than 2023-10-05 | 7 day week No holidays | 2504798 |
| 3765 | 38700.38800.79000.90400 | RCC - Ground fl | 181.42d | 2023-10-05 | 2024-12-08 | 3763FS-409.07d | 100% |  | 7 day week No holidays | 2504838 |
| 3766 | 38700.38800.79100 | **NTA - Part 2A Pour 3** | 353d | 2024-12-24 | 2025-12-11 |  | 66% | start no earlier than 2024-12-24 | 7 day week No holidays | 2504839 |
| 3767 | 38700.38800.79100.90500 | RCC upto ground floor | 100d | 2024-12-24 | 2025-12-11 |  | 66% | start no earlier than 2024-12-24 | 7 day week No holidays | 9360624 |
| 3768 | 38700.38800.81900 | RCC - Podium 2 -Columns | 15d | 2025-01-29 | 2025-10-24 | 3767FS-347d | 100% | start no earlier than 2025-01-29 | 7 day week No holidays | 9417634 |
| 3769 | 38700.38800.82000 | RCC - Podium 2 - Slab | 7.83d | 2025-04-17 | 2025-04-25 | 3767FS-39.82d | 100% | start no earlier than 2025-04-17 | Indian Calendar | 9417635 |
| 3770 | 38700.38800.82100 | RCC - Podium 3 | 84.31d | 2025-03-30 | 2025-06-22 | 3769FS-0.22d | 100% | start no earlier than 2025-03-30 | 7 day week No holidays | 9417644 |
| 3771 | 38700.38800.82200 | RCC - Podium 4 | 33d | 2025-06-07 | 2025-07-10 | 3770FS+29.42d | 100% | start no earlier than 2025-06-07 | 7 day week No holidays | 9417654 |
| 3772 | 38700.38800.82300 | RCC - Podium 5 | 9d | 2025-07-13 | 2025-07-26 | 3771 | 100% | start no earlier than 2025-07-13 | 7 day week No holidays | 9417664 |
| 3773 | 38700.38800.82400 | RCC - Podium 6 | 25d | 2025-07-23 | 2025-08-16 | 3772 | 100% | start no earlier than 2025-07-23 | 7 day week No holidays | 9417674 |
| 3774 | 38700.38800.82500 | RCC - Podium 7 | 35d | 2025-08-04 | 2025-09-27 | 3773 | 100% | start no earlier than 2025-08-04 | 7 day week No holidays | 9417684 |
| 3775 | 38700.38800.51400 | **RCC - Above Plinth Pour 1 & Pour 2** | 497d | 2023-09-22 | 2025-01-30 |  | 100% | start no earlier than 2023-09-22 | 7 day week No holidays | 2504788 |
| 3776 | 38700.38800.51400.90600 | RCC - Podium 1 | 120d | 2023-09-22 | 2024-01-19 |  | 100% | start no earlier than 2023-09-22 | 7 day week No holidays | 2504848 |
| 3777 | 38700.38800.51400.90700 | RCC - Podium 2 | 72.66d | 2024-01-20 | 2024-09-29 | 3776FS-183.94d | 100% |  | 7 day week No holidays | 2504858 |
| 3778 | 38700.38800.51400.90800 | RCC - Podium 3 | 58.97d | 2024-04-27 | 2024-10-19 | 3777FS-164.74d | 100% |  | 7 day week No holidays | 2504898 |
| 3779 | 38700.38800.51400.90900 | RCC - Podium 4 | 34d | 2024-06-29 | 2024-10-30 | 3778FS-93d | 100% | start no earlier than 2024-06-29 | 7 day week No holidays | 2504908 |
| 3780 | 38700.38800.51400.91000 | RCC - Podium 5 | 4d | 2024-07-29 | 2024-12-08 | 3779FS-132d | 100% |  | 7 day week No holidays | 2504918 |
| 3781 | 38700.38800.51400.91100 | RCC - Podium 6 | 396.66d | 2023-11-08 | 2024-12-08 | 3780FS-385.85d | 100% |  | 7 day week No holidays | 2504928 |
| 3782 | 38700.38800.51400.91200 | RCC - Podium 7/Terrace Pour 1 | 10d | 2024-09-23 | 2024-12-31 | 3781FS-97d | 100% | start no earlier than 2024-09-23 | 7 day week No holidays | 2504938 |
| 3783 | 38700.38800.51400.91300 | RCC - Podium 7/Terrace Pour 2 | 4d | 2025-01-27 | 2025-01-30 |  | 100% | start no earlier than 2025-01-27 | 7 day week No holidays | 2504939 |
| 3784 | 38700.38800.82600 | Pending Elements NTA 2A | 60d | 2025-10-13 | 2025-12-20 |  | 30% | start no earlier than 2025-10-13 | Indian Calendar | 2504940 |

| ID | WBS | Task | Duration | Start | Finish | Predecessors | Complete | Constraint | Calendar | Unique_Task_ID |
| --- | --- | --- | --- | --- | --- | --- | --- | --- | --- | --- |
| 3785 | 38700.38800.40000 | **Finishing & Services** | 430d | 2026-07-31 | 2027-10-03 |  |  | start no earlier than 2026-07-31 | 7 day week No holidays | 2505068 |
| 3786 | 38700.38800.40000.259800 | Blockwork | 40d | 2026-07-31 | 2026-09-08 | 3847 |  |  | 7 day week No holidays | 2505078 |
| 3787 | 38700.38800.40000.259900 | RCC Shaft Readiness/Postpour work | 45d | 2026-09-09 | 2026-10-23 | 3786 |  |  | 7 day week No holidays | 2505079 |
| 3788 | 38700.38800.40000.260000 | Electrical Work | 15d | 2026-09-09 | 2026-09-23 | 3786 |  |  | 7 day week No holidays | 2505088 |
| 3789 | 38700.38800.40000.260100 | Plumbing | 240d | 2026-10-24 | 2027-06-20 | 3787 |  |  | 7 day week No holidays | 2505089 |
| 3790 | 38700.38800.40000.260200 | Fire fighting | 240d | 2026-10-24 | 2027-06-20 | 3787 |  |  | 7 day week No holidays | 2505090 |
| 3791 | 38700.38800.40000.260300 | Staircase Gypsum | 120d | 2026-09-09 | 2027-01-06 | 3786 |  |  | 7 day week No holidays | 2505092 |
| 3792 | 38700.38800.40000.260400 | Staircase Flooring | 180d | 2027-01-07 | 2027-07-05 | 3791 |  |  | 7 day week No holidays | 2505093 |
| 3793 | 38700.38800.40000.260500 | Staircase-Door FRD | 90d | 2027-07-06 | 2027-10-03 | 3792 |  |  | 7 day week No holidays | 2505094 |
| 3794 | 38700.38800.40000.260600 | Gypsum work | 45d | 2026-09-24 | 2026-11-07 | 3788 |  |  | 7 day week No holidays | 2505098 |
| 3795 | 38700.38800.40000.260700 | FAPA | 90d | 2026-10-24 | 2027-01-21 | 3787 |  |  | 7 day week No holidays | 2505099 |
| 3796 | 38700.38800.40000.260800 | Lift installation | 120d | 2026-10-24 | 2027-02-20 | 3787 |  |  | 7 day week No holidays | 2505100 |
| 3797 | 38700.38800.40000.260900 | Railing work | 15d | 2026-11-08 | 2026-11-22 | 3794 |  |  | 7 day week No holidays | 2505118 |
| 3798 | 38700.38800.40000.261000 | Toilet completion | 30d | 2026-11-08 | 2026-12-07 | 3794 |  |  | 7 day week No holidays | 2505128 |
| 3799 | 38700.38800.40000.261100 | VDF Flooring | 120d | 2026-10-24 | 2027-02-20 | 3787 |  |  | 7 day week No holidays | 2505129 |
| 3800 | 38700.38800.40000.261200 | Basement Gratings | 60d | 2027-07-06 | 2027-09-03 | 3792 |  |  | 7 day week No holidays | 2505101 |
| 3801 | 38700.38800.40000.261300 | External Painting | 120d | 2026-11-08 | 2027-03-07 | 3794 |  |  | 7 day week No holidays | 2505091 |
| 3802 | 38700.38800.40000.261400 | Internal Painting | 30d | 2026-12-08 | 2027-01-06 | 3798 |  |  | 7 day week No holidays | 2505138 |
| 3803 | 38700.38800.82700 | Ground floor landscape | 180d | 2025-06-01 | 2026-04-06 |  | 55% | start no earlier than 2025-06-01 | Indian Calendar | 2505139 |
| 3804 | 38700.38800.129900 | Ground Floor entrance driveway finishes | 11.25d | 2025-10-13 | 2025-10-25 | 3779 |  |  | Indian Calendar | 2505148 |
| 3805 | 38700.38800.130000 | Ground Floor entrance driveway finishes | 90d | 2026-02-14 | 2026-05-30 | 3804 |  |  | Indian Calendar | 2505158 |
| 3806 | 38700.39200 | **NTA - Part 2B MOSA** | 1586.68d | 2023-07-28 | 2027-11-30 |  | 5% | start no earlier than 2023-07-28 | 7 day week No holidays | 2526108 |
| 3807 | 38700.39200.130100 | Piling Work | 48.43d | 2023-07-28 | 2025-11-18 | 3763FS-844.18d | 24% |  | 7 day week No holidays | 2526148 |
| 3808 | 38700.39200.82800 | Additional Piles Due to Revised DWG | 60d | 2025-09-01 | 2025-12-10 |  | 88% | start no earlier than 2025-09-01 | Indian Calendar | 2526149 |
| 3809 | 38700.39200.82900 | Excavation | 7d | 2024-03-16 | 2024-04-04 | 3807FS+19.11d | 100% | start no earlier than 2024-03-16 | 7 day week No holidays | 2526158 |

| ID | WBS | Task | Duration | Start | Finish | Predecessors | Complete | Constraint | Calendar | Unique_Task_ID |
| --- | --- | --- | --- | --- | --- | --- | --- | --- | --- | --- |
| 3810 | 38700.39200.39900 | **RCC - Upto Plinth** | 741d | 2024-04-28 | 2026-05-08 |  | 38% | start no earlier than 2024-04-28 | 7 day week No holidays | 2526138 |
| 3811 | 38700.39200.39900.91400 | RCC - Ground fl - Pile Caps, Tie beams & Columns | 59d | 2024-04-28 | 2025-03-30 | 3809FS-8d | 100% | start no earlier than 2024-04-28 | 7 day week No holidays | 2526168 |
| 3813 | 38700.39200.39900.261500 | Pathway removal | 90d | 2026-01-24 | 2026-05-08 | 3834 |  |  | Indian Calendar | 2526169 |
| 3829 | 38700.39200.56600 | **RCC - Above Plinth** | 459d | 2025-01-30 | 2026-05-03 |  |  | start no earlier than 2025-01-30 | 7 day week No holidays | 2526128 |
| 3830 | 38700.39200.56600.261600 | Ground floor | 25d | 2025-10-13 | 2025-11-10 | 3811 |  |  | Indian Calendar | 2526129 |
| 3831 | 38700.39200.56600.261700 | RCC - Podium 1 | 25d | 2025-11-10 | 2025-12-04 | 3830FS-1d |  |  | 7 day week No holidays | 2526178 |
| 3832 | 38700.39200.56600.91500 | RCC - Podium 2 | 25d | 2025-01-30 | 2025-12-04 | 3830FS-285d | 8% |  | 7 day week No holidays | 2526188 |
| 3833 | 38700.39200.56600.261800 | RCC - Podium 3 | 25d | 2025-12-05 | 2025-12-29 | 3832 |  |  | 7 day week No holidays | 2526198 |
| 3834 | 38700.39200.56600.261900 | RCC - Podium 4 | 25d | 2025-12-30 | 2026-01-23 | 3833 |  |  | 7 day week No holidays | 2526208 |
| 3835 | 38700.39200.56600.262000 | RCC - Podium 5 | 25d | 2026-01-24 | 2026-02-17 | 3834 |  |  | 7 day week No holidays | 2526218 |
| 3836 | 38700.39200.56600.262100 | RCC - Podium 6 | 25d | 2026-02-18 | 2026-03-14 | 3835 |  |  | 7 day week No holidays | 2526228 |
| 3837 | 38700.39200.56600.262200 | RCC - Podium 7/Terrace | 50d | 2026-03-15 | 2026-05-03 | 3836 |  |  | 7 day week No holidays | 2526238 |
| 3838 | 38700.39200.56700 | **RCC Above plinth Pour 3** | 406d | 2025-04-14 | 2026-07-30 |  | 6% | start no earlier than 2025-04-14 | Indian Calendar | 9837006 |
| 3839 | 38700.39200.56700.262300 | RCC - Ground fl | 25d | 2026-01-24 | 2026-02-21 | 3834 |  |  | Indian Calendar | 9837016 |
| 3840 | 38700.39200.56700.262400 | RCC - Podium 2 | 21d | 2025-04-14 | 2025-10-20 |  | 66% | start no earlier than 2025-04-14 | Indian Calendar | 9837017 |
| 3841 | 38700.39200.56700.262500 | RCC - Podium 2 | 15d | 2026-02-23 | 2026-03-11 | 3839, 3840 |  |  | Indian Calendar | 9837026 |
| 3842 | 38700.39200.56700.262600 | RCC - Podium 2 | 31d | 2026-01-23 | 2026-02-27 | 3839FS-26d |  |  | Indian Calendar | 9837027 |
| 3843 | 38700.39200.56700.262700 | RCC - Podium 3 | 21d | 2026-02-28 | 2026-03-24 | 3842 |  |  | Indian Calendar | 9837036 |
| 3844 | 38700.39200.56700.262800 | RCC - Podium 4 | 25d | 2026-03-21 | 2026-04-18 | 3843FS-3d |  |  | Indian Calendar | 9837046 |
| 3845 | 38700.39200.56700.262900 | RCC - Podium 5 | 24d | 2026-04-16 | 2026-05-13 | 3844FS-3d |  |  | Indian Calendar | 9837056 |
| 3846 | 38700.39200.56700.263000 | RCC - Podium 6 | 24d | 2026-05-23 | 2026-06-19 | 3845FS+8d |  |  | Indian Calendar | 9837066 |
| 3847 | 38700.39200.56700.263100 | RCC - Podium 7/Terrace | 35d | 2026-06-20 | 2026-07-30 | 3846 |  |  | Indian Calendar | 9837076 |
| 3849 | 38700.39200.39800 | **Finishing & Services** | 626d | 2026-03-15 | 2027-11-30 |  |  | start no earlier than 2026-03-15 | 7 day week No holidays | 2526118 |
| 3850 | 38700.39200.39800.263200 | Blockwork | 40d | 2026-09-27 | 2026-11-05 | 3847FS+58d |  |  | 7 day week No holidays | 2526248 |
| 3851 | 38700.39200.39800.263300 | RCC Shaft Readiness/Postpour work | 50d | 2026-03-15 | 2026-05-03 | 3836 |  |  | 7 day week No holidays | 2526258 |
| 3852 | 38700.39200.39800.263400 | Electrical Work | 15d | 2026-11-06 | 2026-11-20 | 3850 |  |  | 7 day week No holidays | 2526268 |
| 3853 | 38700.39200.39800.263500 | Plumbing | 240d | 2026-05-04 | 2026-12-29 | 3851 |  |  | 7 day week No holidays | 2526278 |
| 3854 | 38700.39200.39800.263600 | Fire fighting | 240d | 2026-05-04 | 2026-12-29 | 3851 |  |  | 7 day week No holidays | 2526288 |
| 3855 | 38700.39200.39800.263700 | Staircase Gypsum | 120d | 2026-11-06 | 2027-03-05 | 3850 |  |  | 7 day week No holidays | 2526298 |
| 3856 | 38700.39200.39800.263800 | Staircase Flooring | 180d | 2027-03-06 | 2027-09-01 | 3855 |  |  | 7 day week No holidays | 2526308 |
| 3857 | 38700.39200.39800.263900 | Staircase-Door FRD | 90d | 2027-09-02 | 2027-11-30 | 3856 |  |  | 7 day week No holidays | 2526318 |
| 3858 | 38700.39200.39800.264000 | Gypsum work | 45d | 2026-11-21 | 2027-01-04 | 3852 |  |  | 7 day week No holidays | 2526328 |
| 3859 | 38700.39200.39800.264100 | FAPA | 90d | 2026-05-04 | 2026-08-01 | 3851 |  |  | 7 day week No holidays | 2526338 |
| 3860 | 38700.39200.39800.264200 | Lift installation | 120d | 2026-05-04 | 2026-08-31 | 3851 |  |  | 7 day week No holidays | 2526348 |
| 3861 | 38700.39200.39800.264300 | Railing work | 15d | 2027-01-05 | 2027-01-19 | 3858 |  |  | 7 day week No holidays | 2526358 |
| 3862 | 38700.39200.39800.264400 | Toilet completion | 30d | 2027-01-05 | 2027-02-03 | 3858 |  |  | 7 day week No holidays | 2526368 |
| 3863 | 38700.39200.39800.264500 | VDF Flooring | 120d | 2026-05-04 | 2026-08-31 | 3851 |  |  | 7 day week No holidays | 2526378 |
| 3864 | 38700.39200.39800.264600 | Basement Gratings | 60d | 2027-09-02 | 2027-10-31 | 3856 |  |  | 7 day week No holidays | 2526388 |
| 3865 | 38700.39200.39800.264700 | External Painting | 120d | 2027-01-05 | 2027-05-04 | 3858 |  |  | 7 day week No holidays | 2526398 |
| 3866 | 38700.39200.39800.264800 | Internal Painting | 30d | 2027-02-04 | 2027-03-05 | 3862 |  |  | 7 day week No holidays | 2526408 |

| ID | WBS | Task | Duration | Start | Finish | Predecessors | Complete | Constraint | Calendar | Unique_Task_ID |
| --- | --- | --- | --- | --- | --- | --- | --- | --- | --- | --- |
| 3869 | 38700.39200.63600 | **PATHWAY Slab** | 300d | 2026-10-31 | 2027-10-15 |  |  | start no earlier than 2026-10-31 | Indian Calendar | 2526409 |
| 3870 | 38700.39200.63600.264900 | Podium 2 slab -PW | 100d | 2026-10-31 | 2027-02-24 | 3813FS+150d |  |  | Indian Calendar | 7927212 |
| 3871 | 38700.39200.63600.265000 | Podium 3 slab -PW | 35d | 2027-02-25 | 2027-04-06 | 3870 |  |  | Indian Calendar | 7927222 |
| 3872 | 38700.39200.63600.265100 | Podium 4 Slab- PW | 25d | 2027-04-07 | 2027-05-05 | 3871 |  |  | Indian Calendar | 7927232 |
| 3873 | 38700.39200.63600.265200 | Podium 5 slab- PW | 35d | 2027-05-06 | 2027-06-15 | 3872 |  |  | Indian Calendar | 7927242 |
| 3874 | 38700.39200.63600.265300 | Podium 6 Slab -PW | 45d | 2027-06-16 | 2027-08-06 | 3873 |  |  | Indian Calendar | 7927252 |
| 3875 | 38700.39200.63600.265400 | Podium 7 Slab -PW | 60d | 2027-08-07 | 2027-10-15 | 3874 |  |  | Indian Calendar | 7927262 |
| 3876 | 38700.39500 | **NTA - Part 3 PPL** | 1960d | 2023-12-29 | 2029-05-10 |  | 1% | start no earlier than 2023-12-29 | 7 day week No holidays | 7284444 |
| 3877 | 38700.39500.83000 | Piling Work | 100d | 2023-12-29 | 2025-12-27 |  | 24% | must start on 2024-04-01 | 7 day week No holidays | 7289584 |
| 3878 | 38700.39500.130200 | Excavation | 270d | 2026-09-08 | 2027-06-04 | 3738 |  |  | 7 day week No holidays | 7289594 |
| 3879 | 38700.39500.78100 | **RCC - Upto Plinth** | 101d | 2027-06-05 | 2027-09-13 |  |  | start no earlier than 2027-06-05 | 7 day week No holidays | 2449768 |
| 3880 | 38700.39500.78100.265500 | Raft | 26d | 2027-06-05 | 2027-06-30 | 3878 |  |  | 7 day week No holidays | 2449769 |
| 3881 | 38700.39500.78100.265600 | RCC - Basement 2 | 25d | 2027-07-01 | 2027-07-25 | 3880 |  |  | 7 day week No holidays | 2449770 |
| 3882 | 38700.39500.78100.265700 | RCC - Basement 1 | 25d | 2027-07-26 | 2027-08-19 | 3881 |  |  | 7 day week No holidays | 2449771 |
| 3883 | 38700.39500.78100.265800 | RCC - Ground fl | 25d | 2027-08-20 | 2027-09-13 | 3882 |  |  | 7 day week No holidays | 2449772 |
| 3884 | 38700.39500.63200 | **RCC - Above Plinth** | 175d | 2027-09-14 | 2028-03-06 |  |  | start no earlier than 2027-09-14 | 7 day week No holidays | 2449778 |
| 3885 | 38700.39500.63200.265900 | RCC - Podium 1 | 25d | 2027-09-14 | 2027-10-08 | 3883 |  |  | 7 day week No holidays | 2449779 |
| 3886 | 38700.39500.63200.266000 | RCC - Podium 2 | 25d | 2027-10-09 | 2027-11-02 | 3885 |  |  | 7 day week No holidays | 2504948 |
| 3887 | 38700.39500.63200.266100 | RCC - Podium 3 | 25d | 2027-11-03 | 2027-11-27 | 3886 |  |  | 7 day week No holidays | 2504958 |
| 3888 | 38700.39500.63200.266200 | RCC - Podium 4 | 25d | 2027-11-28 | 2027-12-22 | 3887 |  |  | 7 day week No holidays | 2504968 |
| 3889 | 38700.39500.63200.266300 | RCC - Podium 5 | 25d | 2027-12-23 | 2028-01-16 | 3888 |  |  | 7 day week No holidays | 2504978 |
| 3890 | 38700.39500.63200.266400 | RCC - Podium 6 | 25d | 2028-01-17 | 2028-02-10 | 3889 |  |  | 7 day week No holidays | 2504988 |
| 3891 | 38700.39500.63200.266500 | RCC - Podium 7/Terrace | 25d | 2028-02-11 | 2028-03-06 | 3890 |  |  | 7 day week No holidays | 2504998 |
| 3892 | 38700.39500.130300 | Above Terrace Work | 40d | 2028-03-07 | 2028-04-15 | 3891 |  |  | 7 day week No holidays | 2505008 |

| ID | WBS | Task | Duration | Start | Finish | Predecessors | Constraint | Calendar | Unique_Task_ID |
| --- | --- | --- | --- | --- | --- | --- | --- | --- | --- |
| 3893 | 38700.39500.39700 | **Finishing & Services** | 430d | 2028-03-07 | 2029-05-10 |  | start no earlier than 2028-03-07 | 7 day week No holidays | 7284454 |
| 3894 | 38700.39500.39700.266600 | Blockwork | 40d | 2028-03-07 | 2028-04-15 | 3884 |  | 7 day week No holidays | 2505298 |
| 3895 | 38700.39500.39700.266700 | RCC Shaft Readiness/Postpour work | 45d | 2028-03-07 | 2028-04-20 | 3891 |  | 7 day week No holidays | 2505299 |
| 3896 | 38700.39500.39700.266800 | Electrical Conduiting | 15d | 2028-04-16 | 2028-04-30 | 3894 |  | 7 day week No holidays | 2505308 |
| 3897 | 38700.39500.39700.266900 | Plumbing | 240d | 2028-04-21 | 2028-12-16 | 3895 |  | 7 day week No holidays | 2505309 |
| 3898 | 38700.39500.39700.267000 | Fire fighting | 240d | 2028-04-21 | 2028-12-16 | 3895 |  | 7 day week No holidays | 2505310 |
| 3899 | 38700.39500.39700.267100 | Staircase Gypsum | 120d | 2028-04-16 | 2028-08-13 | 3894 |  | 7 day week No holidays | 2526438 |
| 3900 | 38700.39500.39700.267200 | Staircase Flooring | 180d | 2028-08-14 | 2029-02-09 | 3899 |  | 7 day week No holidays | 2505320 |
| 3901 | 38700.39500.39700.267300 | Staircase-Door FRD | 90d | 2029-02-10 | 2029-05-10 | 3900 |  | 7 day week No holidays | 2505311 |
| 3902 | 38700.39500.39700.267400 | Gypsum work | 45d | 2028-05-01 | 2028-06-14 | 3896 |  | 7 day week No holidays | 2505318 |
| 3903 | 38700.39500.39700.267500 | FAPA | 90d | 2028-04-21 | 2028-07-19 | 3895 |  | 7 day week No holidays | 2505328 |
| 3904 | 38700.39500.39700.267600 | Lift installation | 120d | 2028-04-21 | 2028-08-18 | 3895 |  | 7 day week No holidays | 2505319 |
| 3905 | 38700.39500.39700.267700 | Railing work | 15d | 2028-06-15 | 2028-06-29 | 3902 |  | 7 day week No holidays | 2505338 |
| 3906 | 38700.39500.39700.267800 | Toilet completion | 30d | 2028-06-15 | 2028-07-14 | 3902 |  | 7 day week No holidays | 2505348 |
| 3907 | 38700.39500.39700.267900 | VDF Flooring | 120d | 2028-04-21 | 2028-08-18 | 3895 |  | 7 day week No holidays | 2526428 |
| 3908 | 38700.39500.39700.268000 | Basement gartings | 60d | 2029-02-10 | 2029-04-10 | 3900 |  | 7 day week No holidays | 2526418 |
| 3909 | 38700.39500.39700.268100 | External Painting | 120d | 2028-06-15 | 2028-10-12 | 3902 |  | 7 day week No holidays | 2505349 |
| 3910 | 38700.39500.39700.268200 | Internal Painting | 30d | 2028-07-15 | 2028-08-13 | 3906 |  | 7 day week No holidays | 2505358 |
