Schedule from MS Project XML, 2023-09-06 to 2029-04-05.

## Calendars

- Standard: Mon-Fri 08:00-12:00, 13:00-17:00; Sat-Sun off. Exceptions (off unless hours are given): 2023-12-25 to 2024-01-07, 2024-03-29 to 2024-04-01, 2024-05-06, 2024-05-27, 2024-08-26, 2024-12-23 to 2025-01-05, 2025-04-18 to 2025-04-21, 2025-05-05, 2025-05-26, 2025-08-25, 2025-12-22 to 2026-01-04, 2026-03-27 to 2026-03-30, 2026-05-04, 2026-05-23 to 2026-05-25, 2026-08-29 to 2026-08-31, 2026-12-21 to 2027-01-03, 2027-04-16 to 2027-04-19, 2027-05-01 to 2027-05-03, 2027-05-29 to 2027-05-31, 2027-08-30, 2027-12-25 to 2028-01-09, 2028-03-31 to 2028-04-03, 2028-04-29 to 2028-05-01, 2028-05-27 to 2028-05-29, 2028-08-26 to 2028-08-28, 2028-12-23 to 2029-01-07, 2029-03-23 to 2029-03-26.
- Indian Calendar: Mon-Sat 08:00-12:00, 13:00-17:00; Sun off. Exceptions (off unless hours are given): 2023-11-15 to 2023-12-15, 2024-07-01 to 2024-07-06 08:00-10:00, 14:00-17:00, 2024-07-07, 2024-07-08 to 2024-07-13 08:00-10:00, 14:00-17:00, 2024-07-14, 2024-07-15 to 2024-07-20 08:00-10:00, 14:00-17:00, 2024-07-21, 2024-07-22 to 2024-07-27 08:00-10:00, 14:00-17:00, 2024-07-28, 2024-07-29 to 2024-07-31 08:00-10:00, 14:00-17:00, 2024-08-01 to 2024-08-03 08:00-10:00, 11:00-12:00, 13:00-17:00, 2024-08-04, 2024-08-05 to 2024-08-10 08:00-10:00, 11:00-12:00, 13:00-17:00, 2024-08-11, 2024-08-12 to 2024-08-17 08:00-10:00, 11:00-12:00, 13:00-17:00, 2024-08-18, 2024-08-19 to 2024-08-24 08:00-10:00, 11:00-12:00, 13:00-17:00, 2024-08-25, 2024-08-26 to 2024-08-31 08:00-10:00, 11:00-12:00, 13:00-17:00, 2024-09-01, 2024-09-02 to 2024-09-07 08:00-10:00, 11:00-12:00, 13:00-17:00, 2024-09-08, 2024-09-09 to 2024-09-14 08:00-10:00, 11:00-12:00, 13:00-17:00, 2024-09-15, 2024-09-16 to 2024-09-21 08:00-10:00, 11:00-12:00, 13:00-17:00, 2024-09-22, 2024-09-23 to 2024-09-28 08:00-10:00, 11:00-12:00, 13:00-17:00, 2024-09-29, 2024-09-30 08:00-10:00, 11:00-12:00, 13:00-17:00.
- RGA -FINISHING: Mon-Sun 08:00-12:00, 13:00-17:00.
- 5 day week, Bank Hols Xmas: Mon-Fri 08:00-12:00, 13:00-17:00; Sat-Sun off. Exceptions (off unless hours are given): 2023-12-25 to 2024-01-07, 2024-03-29 to 2024-04-01, 2024-05-06, 2024-05-27, 2024-08-26, 2024-12-23 to 2025-01-05, 2025-04-18 to 2025-04-21, 2025-05-05, 2025-05-26, 2025-08-25, 2025-12-22 to 2026-01-04, 2026-03-27 to 2026-03-30, 2026-05-04, 2026-05-23 to 2026-05-25, 2026-08-29 to 2026-08-31, 2026-12-21 to 2027-01-03, 2027-04-16 to 2027-04-19, 2027-05-01 to 2027-05-03, 2027-05-29 to 2027-05-31, 2027-08-30, 2027-12-25 to 2028-01-09, 2028-03-31 to 2028-04-03, 2028-04-29 to 2028-05-01, 2028-05-27 to 2028-05-29, 2028-08-26 to 2028-08-28, 2028-12-23 to 2029-01-07, 2029-03-23 to 2029-03-26.
- RGA - STRUCTURE: Mon-Sun 08:00-12:00, 13:00-17:00. Exceptions (off unless hours are given): 2023-10-02, 2023-11-15 to 2023-12-15 08:00-12:00, 13:00-17:00, 2024-01-26, 2024-03-14, 2024-05-01, 2024-06-16 to 2024-07-15 08:00-12:00, 13:00-17:00, 2024-08-15, 2024-10-02, 2024-10-22, 2024-11-15 to 2024-12-14 08:00-12:00, 13:00-17:00, 2025-01-26, 2025-03-14, 2025-05-01, 2025-06-16 to 2025-07-15 08:00-12:00, 13:00-17:00, 2025-08-15, 2025-10-02, 2025-10-28, 2025-11-16 to 2025-12-15 08:00-12:00, 13:00-17:00, 2026-01-26, 2026-05-01, 2026-06-16 to 2026-07-15 08:00-12:00, 2026-08-15, 2026-10-02, 2026-11-16 to 2026-12-15 08:00-12:00.

## Resources

| Resource |
| --- |
| RGA - P1 |
| RGA |
| Woodscapes project |
| Yeshwanthpur |
| Cost |
| BAGALURU |
| GPL Revenue |
| Project Costs |
| Woodscapes |

## Schedule

| ID | WBS | Task | Type | Duration | Start | Finish | Predecessors | Complete | Constraint | Calendar | Unique_Task_ID |
| --- | --- | --- | --- | --- | --- | --- | --- | --- | --- | --- | --- |
| 1 | 40200 | **RGA Land 2** |  | 2038.25ed | 2023-09-06 | 2029-04-05 |  | 6% | start no earlier than 2023-09-06 |  | 7803112 |
| 2 | 40200.40300 | **RGA -Land 2** |  | 1991.62d | 2023-09-06 | 2029-04-05 |  | 6% | start no earlier than 2023-09-06 | RGA - STRUCTURE | 7803122 |
| 3 | 40200.40300.1171600 | Project Start date | milestone | 0d | 2025-11-30 | 2025-11-30 |  |  | must start on 2022-02-21 | RGA - STRUCTURE | 7847692 |
| 4 | 40200.40300.40500 | **TOWER 7 - (B+G+25 Floors+Terrace)** |  | 1688.62d | 2024-05-02 | 2029-01-27 |  | 7% | start no earlier than 2024-05-02 | RGA - STRUCTURE | 7803152 |
| 5 | 40200.40300.40500.1170000 | Start date for Tower7 | milestone | 0d | 2026-01-18 | 2026-01-18 | 992SS+7d |  |  | RGA - STRUCTURE | 7847682 |
| 6 | 40200.40300.40500.459400 | **Earth work** |  | 178d | 2025-02-20 | 2025-08-19 |  | 100% | start no earlier than 2025-02-20 | RGA - STRUCTURE | 7811732 |
| 7 | 40200.40300.40500.459400.542200 | EXCAVATION - Tower Area |  | 27d | 2025-02-20 | 2025-07-15 | 5SS-140d | 100% | start no earlier than 2025-02-20 | RGA - STRUCTURE | 7812652 |
| 8 | 40200.40300.40500.459400.542100 | Excavation - Non Tower Area |  | 80d | 2025-02-26 | 2025-08-19 | 7FS-119d | 100% | start no earlier than 2025-02-26 | 5 day week, Bank Hols Xmas | 7433455 |
| 9 | 40200.40300.40500.69700 | **Substructure works (Works up to plinth)** |  | 1050d | 2025-07-07 | 2028-06-27 |  | 4% | start no earlier than 2025-07-07 | RGA - STRUCTURE | 7803862 |
| 10 | 40200.40300.40500.69700.167000 | **Civil works (Shell & Core basement)** |  | 170d | 2025-07-07 | 2025-12-26 |  | 69% | start no earlier than 2025-07-07 | RGA - STRUCTURE | 7806192 |
| 11 | 40200.40300.40500.69700.167000.252100 | **RCC Works - Tower area- 1st Basement** |  | 143d | 2025-07-07 | 2025-11-30 |  | 100% | start no earlier than 2025-07-07 | RGA - STRUCTURE | 7808222 |
| 12 | 40200.40300.40500.69700.167000.252100.368700 | **Foundation** |  | 37d | 2025-07-07 | 2025-08-12 |  | 100% | start no earlier than 2025-07-07 | RGA - STRUCTURE | 7809292 |
| 13 | 40200.40300.40500.69700.167000.252100.368700.525000 | Pocket Excavation |  | 2d | 2025-07-07 | 2025-07-08 | 8 | 100% | start no earlier than 2025-07-07 | RGA - STRUCTURE | 7832632 |
| 14 | 40200.40300.40500.69700.167000.252100.368700.525100 | Footing PCC (Construction start for Tower 7) |  | 7d | 2025-07-13 | 2025-07-30 | 13 | 100% | start no earlier than 2025-07-13 | RGA - STRUCTURE | 7832642 |
| 15 | 40200.40300.40500.69700.167000.252100.368700.525200 | Footing / Raft works |  | 4d | 2025-07-23 | 2025-08-12 | 14FS-6d | 100% | start no earlier than 2025-07-23 | RGA - STRUCTURE | 7832652 |
| 16 | 40200.40300.40500.69700.167000.252100.486100 | **UB Floor Slab** |  | 0d | 2025-11-30 | 2025-11-30 |  |  | start no earlier than 2025-11-30 | RGA - STRUCTURE | 7811592 |
| 17 | 40200.40300.40500.69700.167000.252100.486100.1171700 | Columns in Upper basement | milestone | 0d | 2025-11-30 | 2025-11-30 | 15 |  |  | RGA - STRUCTURE | 7832662 |
| 18 | 40200.40300.40500.69700.167000.252100.486100.1171800 | Upper Basement slab | milestone | 0d | 2025-11-30 | 2025-11-30 | 17 |  |  | RGA - STRUCTURE | 7832672 |
| 19 | 40200.40300.40500.69700.167000.392500 | **Ground Floor Slab** |  | 128d | 2025-08-19 | 2025-12-26 |  | 64% | start no earlier than 2025-08-19 | RGA - STRUCTURE | 7811472 |
| 20 | 40200.40300.40500.69700.167000.392500.529400 | Columns in Upper basement |  | 25d | 2025-08-19 | 2025-12-06 | 18FS-101d | 72% |  | RGA - STRUCTURE | 7821002 |
| 21 | 40200.40300.40500.69700.167000.392500.529300 | Upper Basement slab |  | 51d | 2025-09-18 | 2025-12-26 | 20FS-78d | 60% |  | RGA - STRUCTURE | 7821012 |
| 22 | 40200.40300.40500.69700.502300 | **Basement Block work and Plaster finishing** |  | 90d | 2027-02-19 | 2027-05-19 |  |  | start no earlier than 2027-02-19 | RGA - STRUCTURE | 7811462 |
| 23 | 40200.40300.40500.69700.502300.851800 | Upper basement |  | 45d | 2027-02-19 | 2027-04-04 | 135 |  |  | RGA - STRUCTURE | 7820052 |
| 24 | 40200.40300.40500.69700.502300.851900 | 2nd Basement |  | 45d | 2027-04-05 | 2027-05-19 | 23 |  |  | RGA - STRUCTURE | 7820062 |

Notes:
- 6: 2 Months for Excavation

| ID | WBS | Task | Duration | Start | Finish | Predecessors | Constraint | Calendar | Unique_Task_ID |
| --- | --- | --- | --- | --- | --- | --- | --- | --- | --- |
| 25 | 40200.40300.40500.69700.160500 | **Services** | 450d | 2027-04-05 | 2028-06-27 |  | start no earlier than 2027-04-05 | RGA -FINISHING | 7805292 |
| 26 | 40200.40300.40500.69700.160500.364500 | **Plumbing** | 180d | 2027-04-05 | 2027-10-01 |  | start no earlier than 2027-04-05 | RGA -FINISHING | 7808762 |
| 27 | 40200.40300.40500.69700.160500.364500.486000 | **Upper Basement Plumbing** | 180d | 2027-04-05 | 2027-10-01 |  | start no earlier than 2027-04-05 | RGA -FINISHING | 7811602 |
| 28 | 40200.40300.40500.69700.160500.364500.486000.2214600 | Upper Basement Plumbing | 90d | 2027-04-05 | 2027-07-03 | 23 |  | RGA -FINISHING | 7832682 |
| 29 | 40200.40300.40500.69700.160500.364500.486000.2214700 | Upper Basement Plumbing | 90d | 2027-07-04 | 2027-10-01 | 28 |  | RGA -FINISHING | 7832692 |
| 30 | 40200.40300.40500.69700.160500.364600 | **Fire fighting** | 180d | 2027-07-04 | 2027-12-30 |  | start no earlier than 2027-07-04 | RGA -FINISHING | 7808772 |
| 31 | 40200.40300.40500.69700.160500.364600.485900 | **Upper Basement Fire fighting** | 180d | 2027-07-04 | 2027-12-30 |  | start no earlier than 2027-07-04 | RGA -FINISHING | 7811612 |
| 32 | 40200.40300.40500.69700.160500.364600.485900.2214800 | Upper Basement Fire fighting | 90d | 2027-07-04 | 2027-10-01 | 28 |  | RGA -FINISHING | 7832702 |
| 33 | 40200.40300.40500.69700.160500.364600.485900.2214900 | Upper Basement Fire fighting | 90d | 2027-10-02 | 2027-12-30 | 32 |  | RGA -FINISHING | 7832712 |
| 34 | 40200.40300.40500.69700.160500.364700 | **Ventilation** | 180d | 2027-10-02 | 2028-03-29 |  | start no earlier than 2027-10-02 | RGA -FINISHING | 7808782 |
| 35 | 40200.40300.40500.69700.160500.364700.485800 | **Upper Basement ventilation** | 180d | 2027-10-02 | 2028-03-29 |  | start no earlier than 2027-10-02 | RGA -FINISHING | 7811622 |
| 36 | 40200.40300.40500.69700.160500.364700.485800.2215000 | Upper Basement ventilation | 90d | 2027-10-02 | 2027-12-30 | 32 |  | RGA -FINISHING | 7832722 |
| 37 | 40200.40300.40500.69700.160500.364700.485800.2215100 | Upper Basement ventilation | 90d | 2027-12-31 | 2028-03-29 | 36 |  | RGA -FINISHING | 7832732 |
| 38 | 40200.40300.40500.69700.160500.364800 | **Electrification** | 180d | 2027-12-31 | 2028-06-27 |  | start no earlier than 2027-12-31 | RGA -FINISHING | 7808802 |
| 39 | 40200.40300.40500.69700.160500.364800.485600 | **Upper Basement Electrification** | 180d | 2027-12-31 | 2028-06-27 |  | start no earlier than 2027-12-31 | RGA -FINISHING | 7811632 |
| 40 | 40200.40300.40500.69700.160500.364800.485600.2215200 | Upper Basement Electrification | 90d | 2027-12-31 | 2028-03-29 | 36 |  | RGA -FINISHING | 7832742 |
| 41 | 40200.40300.40500.69700.160500.364800.485600.2215300 | Upper Basement Electrification | 90d | 2028-03-30 | 2028-06-27 | 40 |  | RGA -FINISHING | 7832752 |
| 42 | 40200.40300.40500.69700.160500.364900 | **Security installations** | 30d | 2028-03-30 | 2028-04-28 |  | start no earlier than 2028-03-30 | RGA -FINISHING | 7808812 |
| 43 | 40200.40300.40500.69700.160500.364900.485300 | **Upper Basement Security installations** | 30d | 2028-03-30 | 2028-04-28 |  | start no earlier than 2028-03-30 | RGA -FINISHING | 7811642 |
| 44 | 40200.40300.40500.69700.160500.364900.485300.2215400 | Upper Basement Security installations | 15d | 2028-03-30 | 2028-04-13 | 40 |  | RGA -FINISHING | 7832762 |
| 45 | 40200.40300.40500.69700.160500.364900.485300.2215500 | Upper Basement Security installations | 15d | 2028-04-14 | 2028-04-28 | 44 |  | RGA -FINISHING | 7832772 |
| 46 | 40200.40300.40500.69700.348900 | **Finishing work** | 270d | 2027-08-03 | 2028-04-28 |  | start no earlier than 2027-08-03 | RGA -FINISHING | 7808292 |
| 47 | 40200.40300.40500.69700.348900.499400 | **Basement Flooring** | 180d | 2027-08-03 | 2028-01-29 |  | start no earlier than 2027-08-03 | RGA -FINISHING | 7811482 |
| 48 | 40200.40300.40500.69700.348900.499400.886200 | 1st Basement ventilation | 90d | 2027-08-03 | 2027-10-31 | 54 |  | RGA -FINISHING | 7821022 |
| 49 | 40200.40300.40500.69700.348900.499400.886300 | 1st Basement ventilation | 90d | 2027-11-01 | 2028-01-29 | 48 |  | RGA -FINISHING | 7821032 |

| ID | WBS | Task | Duration | Start | Finish | Predecessors | Complete | Constraint | Calendar | Unique_Task_ID |
| --- | --- | --- | --- | --- | --- | --- | --- | --- | --- | --- |
| 50 | 40200.40300.40500.69700.348900.499300 | **Basement Painting (1st Coat)** | 180d | 2027-11-01 | 2028-04-28 |  |  | start no earlier than 2027-11-01 | RGA -FINISHING | 7811492 |
| 51 | 40200.40300.40500.69700.348900.499300.886400 | 2nd Basement ventilation | 90d | 2027-11-01 | 2028-01-29 | 48 |  |  | RGA -FINISHING | 7821042 |
| 52 | 40200.40300.40500.69700.348900.499300.886500 | 2nd Basement ventilation | 90d | 2028-01-30 | 2028-04-28 | 51 |  |  | RGA -FINISHING | 7821052 |
| 53 | 40200.40300.40500.69700.502200 | **Water Proofing work** | 180d | 2027-05-05 | 2027-10-31 |  |  | start no earlier than 2027-05-05 | RGA -FINISHING | 7811452 |
| 54 | 40200.40300.40500.69700.502200.852000 | 1st Basement | 90d | 2027-05-05 | 2027-08-02 | 23FS+30d |  |  | RGA -FINISHING | 7820072 |
| 55 | 40200.40300.40500.69700.502200.852100 | 2nd Basement | 90d | 2027-08-03 | 2027-10-31 | 54 |  |  | RGA -FINISHING | 7820082 |
| 56 | 40200.40300.40500.56200 | **Superstructure works** | 880d | 2025-11-25 | 2028-05-26 |  |  | start no earlier than 2025-11-25 | RGA - STRUCTURE | 7803362 |
| 57 | 40200.40300.40500.56200.58500 | **Civil works** | 790d | 2025-11-25 | 2028-02-26 |  |  | start no earlier than 2025-11-25 | RGA - STRUCTURE | 7803432 |
| 58 | 40200.40300.40500.56200.58500.62000 | **Superstructure RCC Work** | 564d | 2025-11-25 | 2027-07-15 |  |  | start no earlier than 2025-11-25 | RGA - STRUCTURE | 7803652 |
| 59 | 40200.40300.40500.56200.58500.62000.62800 | **Slab RCC works** | 528d | 2025-11-25 | 2027-06-09 |  |  | start no earlier than 2025-11-25 | RGA - STRUCTURE | 7803662 |
| 60 | 40200.40300.40500.56200.58500.62000.62800.499500 | **1st Floor Slab (Combo Height More)** | 62d | 2025-11-25 | 2026-01-25 |  | 14% | start no earlier than 2025-11-25 | RGA - STRUCTURE | 7811662 |
| 61 | 40200.40300.40500.56200.58500.62000.62800.499500.525600 | Columns | 15d | 2025-11-25 | 2026-01-05 | 21FS-32d | 33% |  | RGA - STRUCTURE | 7848212 |
| 62 | 40200.40300.40500.56200.58500.62000.62800.499500.2588500 | Slab Works | 20d | 2026-01-06 | 2026-01-25 | 61 |  |  | RGA - STRUCTURE | 7848222 |
| 63 | 40200.40300.40500.56200.58500.62000.62800.499600 | **2nd Floor Slab (Combo Height More)** | 35d | 2026-01-27 | 2026-03-02 |  |  | start no earlier than 2026-01-27 | RGA - STRUCTURE | 7811652 |
| 64 | 40200.40300.40500.56200.58500.62000.62800.499600.2588600 | Columns | 15d | 2026-01-27 | 2026-02-10 | 62 |  |  | RGA - STRUCTURE | 7848232 |
| 65 | 40200.40300.40500.56200.58500.62000.62800.499600.2588700 | Concreting | 20d | 2026-02-11 | 2026-03-02 | 64 |  |  | RGA - STRUCTURE | 7848242 |
| 66 | 40200.40300.40500.56200.58500.62000.62800.397700 | **3rd Floor Slab (1st Set Up)** | 30d | 2026-03-03 | 2026-04-01 |  |  | start no earlier than 2026-03-03 | RGA - STRUCTURE | 7809342 |
| 67 | 40200.40300.40500.56200.58500.62000.62800.397700.2588800 | Wall Rebar & Formwork | 15d | 2026-03-03 | 2026-03-17 | 65 |  |  | RGA - STRUCTURE | 7848252 |
| 68 | 40200.40300.40500.56200.58500.62000.62800.397700.2588900 | Slab Formwork & Rebar | 14d | 2026-03-18 | 2026-03-31 | 67 |  |  | RGA - STRUCTURE | 7848262 |
| 69 | 40200.40300.40500.56200.58500.62000.62800.397700.2589000 | Concreting | 1d | 2026-04-01 | 2026-04-01 | 68 |  |  | RGA - STRUCTURE | 7848272 |
| 70 | 40200.40300.40500.56200.58500.62000.62800.397600 | **4th Floor Slab(2nd Set Up)** | 28d | 2026-04-02 | 2026-04-29 |  |  | start no earlier than 2026-04-02 | RGA - STRUCTURE | 7809352 |
| 71 | 40200.40300.40500.56200.58500.62000.62800.397600.2589100 | Wall Rebar & Formwork | 14d | 2026-04-02 | 2026-04-15 | 69 |  |  | RGA - STRUCTURE | 7848282 |
| 72 | 40200.40300.40500.56200.58500.62000.62800.397600.2589200 | Slab Formwork & Rebar | 13d | 2026-04-16 | 2026-04-28 | 71 |  |  | RGA - STRUCTURE | 7848292 |
| 73 | 40200.40300.40500.56200.58500.62000.62800.397600.2589300 | Concreting | 1d | 2026-04-29 | 2026-04-29 | 72 |  |  | RGA - STRUCTURE | 7848302 |

Notes:
- 63: AVg Slab Cycle of 21 days
- 66: AVg Slab Cycle of 21 days
- 70: AVg Slab Cycle of 21 days

| ID | WBS | Task | Duration | Start | Finish | Predecessors | Constraint | Calendar | Unique_Task_ID |
| --- | --- | --- | --- | --- | --- | --- | --- | --- | --- |
| 74 | 40200.40300.40500.56200.58500.62000.62800.397500 | **5th Floor slab** | 17d | 2026-04-30 | 2026-05-17 |  | start no earlier than 2026-04-30 | RGA - STRUCTURE | 7809362 |
| 75 | 40200.40300.40500.56200.58500.62000.62800.397500.2589400 | Wall Rebar & Formwork | 8d | 2026-04-30 | 2026-05-08 | 73 |  | RGA - STRUCTURE | 7848312 |
| 76 | 40200.40300.40500.56200.58500.62000.62800.397500.2589500 | Slab Formwork & Rebar | 8d | 2026-05-09 | 2026-05-16 | 75 |  | RGA - STRUCTURE | 7848322 |
| 77 | 40200.40300.40500.56200.58500.62000.62800.397500.2589600 | Concreting | 1d | 2026-05-17 | 2026-05-17 | 76 |  | RGA - STRUCTURE | 7848332 |
| 78 | 40200.40300.40500.56200.58500.62000.62800.397400 | **6th Floor slab** | 17d | 2026-05-17 | 2026-06-02 |  | start no earlier than 2026-05-17 | RGA - STRUCTURE | 7809372 |
| 79 | 40200.40300.40500.56200.58500.62000.62800.397400.2589700 | Wall Rebar & Formwork | 8d | 2026-05-17 | 2026-05-24 | 76 |  | RGA - STRUCTURE | 7848342 |
| 80 | 40200.40300.40500.56200.58500.62000.62800.397400.2589800 | Slab Formwork & Rebar | 8d | 2026-05-25 | 2026-06-01 | 79 |  | RGA - STRUCTURE | 7848352 |
| 81 | 40200.40300.40500.56200.58500.62000.62800.397400.2589900 | Concreting | 1d | 2026-06-02 | 2026-06-02 | 80 |  | RGA - STRUCTURE | 7848362 |
| 82 | 40200.40300.40500.56200.58500.62000.62800.397300 | **7th Floor slab** | 17d | 2026-06-03 | 2026-06-23 |  | start no earlier than 2026-06-03 | RGA - STRUCTURE | 7809382 |
| 83 | 40200.40300.40500.56200.58500.62000.62800.397300.2590000 | Wall Rebar & Formwork | 8d | 2026-06-03 | 2026-06-10 | 81 |  | RGA - STRUCTURE | 7848372 |
| 84 | 40200.40300.40500.56200.58500.62000.62800.397300.2590100 | Slab Formwork & Rebar | 8d | 2026-06-11 | 2026-06-21 | 83 |  | RGA - STRUCTURE | 7848382 |
| 85 | 40200.40300.40500.56200.58500.62000.62800.397300.2590200 | Concreting | 1d | 2026-06-22 | 2026-06-23 | 84 |  | RGA - STRUCTURE | 7848392 |
| 86 | 40200.40300.40500.56200.58500.62000.62800.397200 | **8th Floor slab** | 17d | 2026-06-24 | 2026-07-21 |  | start no earlier than 2026-06-24 | RGA - STRUCTURE | 7809392 |
| 87 | 40200.40300.40500.56200.58500.62000.62800.397200.2590300 | Wall Rebar & Formwork | 8d | 2026-06-24 | 2026-07-09 | 85 |  | RGA - STRUCTURE | 7848402 |
| 88 | 40200.40300.40500.56200.58500.62000.62800.397200.2590400 | Slab Formwork & Rebar | 8d | 2026-07-10 | 2026-07-20 | 87 |  | RGA - STRUCTURE | 7848412 |
| 89 | 40200.40300.40500.56200.58500.62000.62800.397200.2590500 | Concreting | 1d | 2026-07-21 | 2026-07-21 | 88 |  | RGA - STRUCTURE | 7848422 |
| 90 | 40200.40300.40500.56200.58500.62000.62800.397100 | **9th Floor slab** | 17d | 2026-07-22 | 2026-08-07 |  | start no earlier than 2026-07-22 | RGA - STRUCTURE | 7809402 |
| 91 | 40200.40300.40500.56200.58500.62000.62800.397100.2590600 | Wall Rebar & Formwork | 8d | 2026-07-22 | 2026-07-29 | 89 |  | RGA - STRUCTURE | 7848432 |
| 92 | 40200.40300.40500.56200.58500.62000.62800.397100.2590700 | Slab Formwork & Rebar | 8d | 2026-07-30 | 2026-08-06 | 91 |  | RGA - STRUCTURE | 7848442 |
| 93 | 40200.40300.40500.56200.58500.62000.62800.397100.2590800 | Concreting | 1d | 2026-08-07 | 2026-08-07 | 92 |  | RGA - STRUCTURE | 7848452 |
| 94 | 40200.40300.40500.56200.58500.62000.62800.397000 | **10th Floor slab** | 17d | 2026-08-08 | 2026-08-25 |  | start no earlier than 2026-08-08 | RGA - STRUCTURE | 7809412 |
| 95 | 40200.40300.40500.56200.58500.62000.62800.397000.2590900 | Wall Rebar & Formwork | 8d | 2026-08-08 | 2026-08-16 | 93 |  | RGA - STRUCTURE | 7848462 |
| 96 | 40200.40300.40500.56200.58500.62000.62800.397000.2591000 | Slab Formwork & Rebar | 8d | 2026-08-17 | 2026-08-24 | 95 |  | RGA - STRUCTURE | 7848472 |
| 97 | 40200.40300.40500.56200.58500.62000.62800.397000.2591100 | Concreting | 1d | 2026-08-25 | 2026-08-25 | 96 |  | RGA - STRUCTURE | 7848482 |

| ID | WBS | Task | Duration | Start | Finish | Predecessors | Constraint | Calendar | Unique_Task_ID |
| --- | --- | --- | --- | --- | --- | --- | --- | --- | --- |
| 98 | 40200.40300.40500.56200.58500.62000.62800.396900 | **11th Floor slab** | 17d | 2026-08-26 | 2026-09-11 |  | start no earlier than 2026-08-26 | RGA - STRUCTURE | 7809422 |
| 99 | 40200.40300.40500.56200.58500.62000.62800.396900.2591200 | Wall & Slab Form work | 8d | 2026-08-26 | 2026-09-02 | 97 |  | RGA - STRUCTURE | 7848492 |
| 100 | 40200.40300.40500.56200.58500.62000.62800.396900.2591300 | Slab & Beam Reinf. | 8d | 2026-09-03 | 2026-09-10 | 99 |  | RGA - STRUCTURE | 7848502 |
| 101 | 40200.40300.40500.56200.58500.62000.62800.396900.2591400 | Concreting | 1d | 2026-09-11 | 2026-09-11 | 100 |  | RGA - STRUCTURE | 7848512 |
| 102 | 40200.40300.40500.56200.58500.62000.62800.396800 | **12th Floor slab** | 17d | 2026-09-12 | 2026-09-28 |  | start no earlier than 2026-09-12 | RGA - STRUCTURE | 7809432 |
| 103 | 40200.40300.40500.56200.58500.62000.62800.396800.2591500 | Wall & Slab Form work | 8d | 2026-09-12 | 2026-09-19 | 101 |  | RGA - STRUCTURE | 7848522 |
| 104 | 40200.40300.40500.56200.58500.62000.62800.396800.2591600 | Slab & Beam Reinf. | 8d | 2026-09-20 | 2026-09-27 | 103 |  | RGA - STRUCTURE | 7848532 |
| 105 | 40200.40300.40500.56200.58500.62000.62800.396800.2591700 | Concreting | 1d | 2026-09-28 | 2026-09-28 | 104 |  | RGA - STRUCTURE | 7848542 |
| 106 | 40200.40300.40500.56200.58500.62000.62800.396700 | **13th Floor slab** | 17d | 2026-09-29 | 2026-10-16 |  | start no earlier than 2026-09-29 | RGA - STRUCTURE | 7809442 |
| 107 | 40200.40300.40500.56200.58500.62000.62800.396700.2591800 | Wall & Slab Form work | 8d | 2026-09-29 | 2026-10-07 | 105 |  | RGA - STRUCTURE | 7848552 |
| 108 | 40200.40300.40500.56200.58500.62000.62800.396700.2591900 | Slab & Beam Reinf. | 8d | 2026-10-08 | 2026-10-15 | 107 |  | RGA - STRUCTURE | 7848562 |
| 109 | 40200.40300.40500.56200.58500.62000.62800.396700.2592000 | Concreting | 1d | 2026-10-16 | 2026-10-16 | 108 |  | RGA - STRUCTURE | 7848572 |
| 110 | 40200.40300.40500.56200.58500.62000.62800.396600 | **14th Floor slab** | 17d | 2026-10-17 | 2026-11-02 |  | start no earlier than 2026-10-17 | RGA - STRUCTURE | 7809452 |
| 111 | 40200.40300.40500.56200.58500.62000.62800.396600.2592100 | Wall & Slab Form work | 8d | 2026-10-17 | 2026-10-24 | 109 |  | RGA - STRUCTURE | 7848582 |
| 112 | 40200.40300.40500.56200.58500.62000.62800.396600.2592200 | Slab & Beam Reinf. | 8d | 2026-10-25 | 2026-11-01 | 111 |  | RGA - STRUCTURE | 7848592 |
| 113 | 40200.40300.40500.56200.58500.62000.62800.396600.2592300 | Concreting | 1d | 2026-11-02 | 2026-11-02 | 112 |  | RGA - STRUCTURE | 7848602 |
| 114 | 40200.40300.40500.56200.58500.62000.62800.396500 | **15th Floor slab** | 17d | 2026-11-03 | 2026-11-23 |  | start no earlier than 2026-11-03 | RGA - STRUCTURE | 7809462 |
| 115 | 40200.40300.40500.56200.58500.62000.62800.396500.2592400 | Wall & Slab Form work | 8d | 2026-11-03 | 2026-11-10 | 113 |  | RGA - STRUCTURE | 7848612 |
| 116 | 40200.40300.40500.56200.58500.62000.62800.396500.2592500 | Slab & Beam Reinf. | 8d | 2026-11-11 | 2026-11-21 | 115 |  | RGA - STRUCTURE | 7848622 |
| 117 | 40200.40300.40500.56200.58500.62000.62800.396500.2592600 | Concreting | 1d | 2026-11-22 | 2026-11-23 | 116 |  | RGA - STRUCTURE | 7848632 |
| 118 | 40200.40300.40500.56200.58500.62000.62800.396400 | **16th Floor slab** | 17d | 2026-11-24 | 2026-12-21 |  | start no earlier than 2026-11-24 | RGA - STRUCTURE | 7809472 |
| 119 | 40200.40300.40500.56200.58500.62000.62800.396400.2592700 | Wall & Slab Form work | 8d | 2026-11-24 | 2026-12-09 | 117 |  | RGA - STRUCTURE | 7848642 |
| 120 | 40200.40300.40500.56200.58500.62000.62800.396400.2592800 | Slab & Beam Reinf. | 8d | 2026-12-10 | 2026-12-20 | 119 |  | RGA - STRUCTURE | 7848652 |
| 121 | 40200.40300.40500.56200.58500.62000.62800.396400.2592900 | Concreting | 1d | 2026-12-21 | 2026-12-21 | 120 |  | RGA - STRUCTURE | 7848662 |

Notes:
- 102: AVg Slab Cycle of 21 days
- 106: AVg Slab Cycle of 21 days
- 110: AVg Slab Cycle of 21 days

| ID | WBS | Task | Duration | Start | Finish | Predecessors | Constraint | Calendar | Unique_Task_ID |
| --- | --- | --- | --- | --- | --- | --- | --- | --- | --- |
| 122 | 40200.40300.40500.56200.58500.62000.62800.396300 | **17th Floor slab** | 17d | 2026-12-22 | 2027-01-07 |  | start no earlier than 2026-12-22 | RGA - STRUCTURE | 7809482 |
| 123 | 40200.40300.40500.56200.58500.62000.62800.396300.2593000 | Wall & Slab Form work | 8d | 2026-12-22 | 2026-12-29 | 121 |  | RGA - STRUCTURE | 7848672 |
| 124 | 40200.40300.40500.56200.58500.62000.62800.396300.2593100 | Slab & Beam Reinf. | 8d | 2026-12-30 | 2027-01-06 | 123 |  | RGA - STRUCTURE | 7848682 |
| 125 | 40200.40300.40500.56200.58500.62000.62800.396300.2593200 | Concreting | 1d | 2027-01-07 | 2027-01-07 | 124 |  | RGA - STRUCTURE | 7848692 |
| 126 | 40200.40300.40500.56200.58500.62000.62800.396200 | **18th Floor slab** | 17d | 2027-01-08 | 2027-01-24 |  | start no earlier than 2027-01-08 | RGA - STRUCTURE | 7809492 |
| 127 | 40200.40300.40500.56200.58500.62000.62800.396200.2593300 | Wall & Slab Form work | 8d | 2027-01-08 | 2027-01-15 | 125 |  | RGA - STRUCTURE | 7848702 |
| 128 | 40200.40300.40500.56200.58500.62000.62800.396200.2593400 | Slab & Beam Reinf. | 8d | 2027-01-16 | 2027-01-23 | 127 |  | RGA - STRUCTURE | 7848712 |
| 129 | 40200.40300.40500.56200.58500.62000.62800.396200.2593500 | Concreting | 1d | 2027-01-24 | 2027-01-24 | 128 |  | RGA - STRUCTURE | 7848722 |
| 130 | 40200.40300.40500.56200.58500.62000.62800.396100 | **19th Floor slab** | 17d | 2027-01-25 | 2027-02-10 |  | start no earlier than 2027-01-25 | RGA - STRUCTURE | 7809502 |
| 131 | 40200.40300.40500.56200.58500.62000.62800.396100.2593600 | Wall & Slab Form work | 8d | 2027-01-25 | 2027-02-01 | 129 |  | RGA - STRUCTURE | 7848732 |
| 132 | 40200.40300.40500.56200.58500.62000.62800.396100.2593700 | Slab & Beam Reinf. | 8d | 2027-02-02 | 2027-02-09 | 131 |  | RGA - STRUCTURE | 7848742 |
| 133 | 40200.40300.40500.56200.58500.62000.62800.396100.2593800 | Concreting | 1d | 2027-02-10 | 2027-02-10 | 132 |  | RGA - STRUCTURE | 7848752 |
| 134 | 40200.40300.40500.56200.58500.62000.62800.396000 | **20th Floor slab (Refuge Floor)** | 17d | 2027-02-11 | 2027-02-27 |  | start no earlier than 2027-02-11 | RGA - STRUCTURE | 7809512 |
| 135 | 40200.40300.40500.56200.58500.62000.62800.396000.2593900 | Wall & Slab Form work | 8d | 2027-02-11 | 2027-02-18 | 133 |  | RGA - STRUCTURE | 7848762 |
| 136 | 40200.40300.40500.56200.58500.62000.62800.396000.2594000 | Slab & Beam Reinf. | 8d | 2027-02-19 | 2027-02-26 | 135 |  | RGA - STRUCTURE | 7848772 |
| 137 | 40200.40300.40500.56200.58500.62000.62800.396000.2594100 | Concreting | 1d | 2027-02-27 | 2027-02-27 | 136 |  | RGA - STRUCTURE | 7848782 |
| 138 | 40200.40300.40500.56200.58500.62000.62800.395900 | **21th Floor slab** | 17d | 2027-02-28 | 2027-03-16 |  | start no earlier than 2027-02-28 | RGA - STRUCTURE | 7809522 |
| 139 | 40200.40300.40500.56200.58500.62000.62800.395900.2594200 | Wall & Slab Form work | 8d | 2027-02-28 | 2027-03-07 | 137 |  | RGA - STRUCTURE | 7848792 |
| 140 | 40200.40300.40500.56200.58500.62000.62800.395900.2594300 | Slab & Beam Reinf. | 8d | 2027-03-08 | 2027-03-15 | 139 |  | RGA - STRUCTURE | 7848802 |
| 141 | 40200.40300.40500.56200.58500.62000.62800.395900.2594400 | Concreting | 1d | 2027-03-16 | 2027-03-16 | 140 |  | RGA - STRUCTURE | 7848812 |
| 142 | 40200.40300.40500.56200.58500.62000.62800.395800 | **22th Floor slab** | 17d | 2027-03-17 | 2027-04-02 |  | start no earlier than 2027-03-17 | RGA - STRUCTURE | 7809532 |
| 143 | 40200.40300.40500.56200.58500.62000.62800.395800.2594500 | Wall & Slab Form work | 8d | 2027-03-17 | 2027-03-24 | 141 |  | RGA - STRUCTURE | 7848822 |
| 144 | 40200.40300.40500.56200.58500.62000.62800.395800.2594600 | Slab & Beam Reinf. | 8d | 2027-03-25 | 2027-04-01 | 143 |  | RGA - STRUCTURE | 7848832 |
| 145 | 40200.40300.40500.56200.58500.62000.62800.395800.2594700 | Concreting | 1d | 2027-04-02 | 2027-04-02 | 144 |  | RGA - STRUCTURE | 7848842 |

| ID | WBS | Task | Duration | Start | Finish | Predecessors | Constraint | Calendar | Unique_Task_ID |
| --- | --- | --- | --- | --- | --- | --- | --- | --- | --- |
| 146 | 40200.40300.40500.56200.58500.62000.62800.395700 | **23th Floor slab** | 17d | 2027-04-03 | 2027-04-19 |  | start no earlier than 2027-04-03 | RGA - STRUCTURE | 7809542 |
| 147 | 40200.40300.40500.56200.58500.62000.62800.395700.2594800 | Wall & Slab Form work | 8d | 2027-04-03 | 2027-04-10 | 145 |  | RGA - STRUCTURE | 7848852 |
| 148 | 40200.40300.40500.56200.58500.62000.62800.395700.2594900 | Slab & Beam Reinf. | 8d | 2027-04-11 | 2027-04-18 | 147 |  | RGA - STRUCTURE | 7848862 |
| 149 | 40200.40300.40500.56200.58500.62000.62800.395700.2595000 | Concreting | 1d | 2027-04-19 | 2027-04-19 | 148 |  | RGA - STRUCTURE | 7848872 |
| 150 | 40200.40300.40500.56200.58500.62000.62800.395600 | **24th Floor slab** | 17d | 2027-04-20 | 2027-05-06 |  | start no earlier than 2027-04-20 | RGA - STRUCTURE | 7809552 |
| 151 | 40200.40300.40500.56200.58500.62000.62800.395600.2595100 | Wall & Slab Form work | 8d | 2027-04-20 | 2027-04-27 | 149 |  | RGA - STRUCTURE | 7848882 |
| 152 | 40200.40300.40500.56200.58500.62000.62800.395600.2595200 | Slab & Beam Reinf. | 8d | 2027-04-28 | 2027-05-05 | 151 |  | RGA - STRUCTURE | 7848892 |
| 153 | 40200.40300.40500.56200.58500.62000.62800.395600.2595300 | Concreting | 1d | 2027-05-06 | 2027-05-06 | 152 |  | RGA - STRUCTURE | 7848902 |
| 154 | 40200.40300.40500.56200.58500.62000.62800.395500 | **32 nd Floor slab** | 17d | 2027-05-07 | 2027-05-23 |  | start no earlier than 2027-05-07 | RGA - STRUCTURE | 7433215 |
| 155 | 40200.40300.40500.56200.58500.62000.62800.395500.2595400 | Wall & Slab Form work | 8d | 2027-05-07 | 2027-05-14 | 153 |  | RGA - STRUCTURE | 7433225 |
| 156 | 40200.40300.40500.56200.58500.62000.62800.395500.2595500 | Slab & Beam Reinf. | 8d | 2027-05-15 | 2027-05-22 | 155 |  | RGA - STRUCTURE | 7433235 |
| 157 | 40200.40300.40500.56200.58500.62000.62800.395500.2595600 | Concreting | 1d | 2027-05-23 | 2027-05-23 | 156 |  | RGA - STRUCTURE | 7433245 |
| 158 | 40200.40300.40500.56200.58500.62000.62800.395400 | **Terrace Floor slab work** | 17d | 2027-05-24 | 2027-06-09 |  | start no earlier than 2027-05-24 | RGA - STRUCTURE | 7809612 |
| 159 | 40200.40300.40500.56200.58500.62000.62800.395400.2595700 | Wall & Slab Form work | 8d | 2027-05-24 | 2027-05-31 | 157 |  | RGA - STRUCTURE | 7849022 |
| 160 | 40200.40300.40500.56200.58500.62000.62800.395400.2595800 | Slab & Beam Reinf. | 8d | 2027-06-01 | 2027-06-08 | 159 |  | RGA - STRUCTURE | 7849032 |
| 161 | 40200.40300.40500.56200.58500.62000.62800.395400.2595900 | Concreting | 1d | 2027-06-09 | 2027-06-09 | 160 |  | RGA - STRUCTURE | 7849042 |
| 162 | 40200.40300.40500.56200.58500.62000.253300 | **RCC work above Terrace** | 36d | 2027-06-10 | 2027-07-15 |  | start no earlier than 2027-06-10 | RGA - STRUCTURE | 7806942 |
| 163 | 40200.40300.40500.56200.58500.62000.253300.371800 | **STAIRCASE & OHT CORE** | 36d | 2027-06-10 | 2027-07-15 |  | start no earlier than 2027-06-10 | RGA - STRUCTURE | 7808862 |
| 164 | 40200.40300.40500.56200.58500.62000.253300.371800.2596000 | STAIRCASE HEAD ROOM | 10d | 2027-06-10 | 2027-06-19 | 161 |  | RGA - STRUCTURE | 7849052 |
| 165 | 40200.40300.40500.56200.58500.62000.253300.371800.2596100 | OHT | 12d | 2027-06-20 | 2027-07-01 | 164 |  | RGA - STRUCTURE | 7849062 |
| 166 | 40200.40300.40500.56200.58500.62000.253300.371800.2596200 | SHAFT COVERING SLAB | 10d | 2027-06-10 | 2027-06-19 | 161 |  | RGA - STRUCTURE | 7849072 |
| 167 | 40200.40300.40500.56200.58500.62000.253300.371800.2596300 | DESHUTTERING OF OHT TOP SLAB | 7d | 2027-07-09 | 2027-07-15 | 165FS+7d |  | RGA - STRUCTURE | 7849082 |
| 168 | 40200.40300.40500.56200.58500.62000.253300.395300 | **LMR BOTTOM & TOP SLAB** | 18d | 2027-06-10 | 2027-06-27 |  | start no earlier than 2027-06-10 | RGA - STRUCTURE | 7809622 |
| 169 | 40200.40300.40500.56200.58500.62000.253300.395300.2596400 | LMR COLUMNS / WALLS | 5d | 2027-06-10 | 2027-06-14 | 161 |  | RGA - STRUCTURE | 7849092 |
| 170 | 40200.40300.40500.56200.58500.62000.253300.395300.2596500 | LMR TOP SLAB | 5d | 2027-06-15 | 2027-06-19 | 169 |  | RGA - STRUCTURE | 7849102 |
| 171 | 40200.40300.40500.56200.58500.62000.253300.395300.2596600 | DESHUTTERING | 8d | 2027-06-20 | 2027-06-27 | 170 |  | RGA - STRUCTURE | 7849112 |

Notes:
- 158: AVg Slab Cycle of 21 days

| ID | WBS | Task | Duration | Start | Finish | Predecessors | Constraint | Calendar | Unique_Task_ID |
| --- | --- | --- | --- | --- | --- | --- | --- | --- | --- |
| 172 | 40200.40300.40500.56200.58500.59700 | **Civil Finishing works (Brick work, Plaster,conduiting, concled plumbing, waterproofing)** | 819d | 2025-11-30 | 2028-02-26 |  | start no earlier than 2025-11-30 | RGA -FINISHING | 7803472 |
| 173 | 40200.40300.40500.56200.58500.59700.60700 | **Flat finishing works** | 665d | 2025-11-30 | 2027-09-25 |  | start no earlier than 2025-11-30 | RGA -FINISHING | 7803592 |
| 174 | 40200.40300.40500.56200.58500.59700.60700.260400 | **Ground FLOOR** | 201d | 2025-11-30 | 2026-06-18 |  | start no earlier than 2025-11-30 | RGA -FINISHING | 7807012 |
| 175 | 40200.40300.40500.56200.58500.59700.60700.260400.2596700 | BALCONY RAILING FIXING | 9d | 2026-03-23 | 2026-03-31 | 65FS+20d |  | RGA -FINISHING | 7849122 |
| 176 | 40200.40300.40500.56200.58500.59700.60700.260400.2596800 | Block work -Ledge Wall | 2d | 2026-06-17 | 2026-06-18 | 180 |  | RGA -FINISHING | 7849132 |
| 177 | 40200.40300.40500.56200.58500.59700.60700.260400.2596900 | CONCEALED ELEC CONDUITING & ITS FINISHING | 5d | 2025-11-30 | 2025-12-04 | 21SS-5d |  | RGA -FINISHING | 7849142 |
| 178 | 40200.40300.40500.56200.58500.59700.60700.260400.2597000 | PLASTER APPLICATION | 6d | 2026-05-21 | 2026-05-26 | 369FS+30d |  | RGA -FINISHING | 7849152 |
| 179 | 40200.40300.40500.56200.58500.59700.60700.260400.2597100 | CONCEALED PLUMBING | 9d | 2026-05-27 | 2026-06-04 | 178 |  | RGA -FINISHING | 7849162 |
| 180 | 40200.40300.40500.56200.58500.59700.60700.260400.2597200 | WATERPROOFING WORK FOR TOILETS, KITCHEN SUNK & PLANTERS | 12d | 2026-06-05 | 2026-06-16 | 179 |  | RGA -FINISHING | 7849172 |
| 181 | 40200.40300.40500.56200.58500.59700.60700.260500 | **1ST FLOOR** | 190d | 2026-01-21 | 2026-07-29 |  | start no earlier than 2026-01-21 | RGA -FINISHING | 7807022 |
| 182 | 40200.40300.40500.56200.58500.59700.60700.260500.2597300 | BALCONY RAILING FIXING | 9d | 2026-04-22 | 2026-04-30 | 69FS+20d |  | RGA -FINISHING | 7849182 |
| 183 | 40200.40300.40500.56200.58500.59700.60700.260500.2597400 | Block work | 2d | 2026-07-28 | 2026-07-29 | 187 |  | RGA -FINISHING | 7849192 |
| 184 | 40200.40300.40500.56200.58500.59700.60700.260500.2597500 | CONCEALED ELEC CONDUITING & ITS FINISHING | 5d | 2026-01-21 | 2026-01-25 | 60FS-5d |  | RGA -FINISHING | 7849202 |
| 185 | 40200.40300.40500.56200.58500.59700.60700.260500.2597600 | PLASTER APPLICATION | 6d | 2026-07-06 | 2026-07-11 | 382FS+30d |  | RGA -FINISHING | 7849212 |
| 186 | 40200.40300.40500.56200.58500.59700.60700.260500.2597700 | CONCEALED PLUMBING | 8d | 2026-07-12 | 2026-07-19 | 185 |  | RGA -FINISHING | 7849222 |
| 187 | 40200.40300.40500.56200.58500.59700.60700.260500.2597800 | WATERPROOFING WORK FOR TOILETS, KITCHEN SUNK & PLANTERS | 8d | 2026-07-20 | 2026-07-27 | 186 |  | RGA -FINISHING | 7849232 |
| 188 | 40200.40300.40500.56200.58500.59700.60700.260600 | **2nd FLOOR** | 183d | 2026-02-26 | 2026-08-27 |  | start no earlier than 2026-02-26 | RGA -FINISHING | 7807032 |
| 189 | 40200.40300.40500.56200.58500.59700.60700.260600.2597900 | BALCONY RAILING FIXING | 9d | 2026-05-21 | 2026-05-29 | 73FS+21d |  | RGA -FINISHING | 7849242 |
| 190 | 40200.40300.40500.56200.58500.59700.60700.260600.2598000 | Block work | 2d | 2026-08-26 | 2026-08-27 | 194 |  | RGA -FINISHING | 7849252 |
| 191 | 40200.40300.40500.56200.58500.59700.60700.260600.2598100 | CONCEALED ELEC CONDUITING & ITS FINISHING | 5d | 2026-02-26 | 2026-03-02 | 63FS-5d |  | RGA -FINISHING | 7849262 |
| 192 | 40200.40300.40500.56200.58500.59700.60700.260600.2598200 | PLASTER APPLICATION | 6d | 2026-08-04 | 2026-08-09 | 395FS+30d |  | RGA -FINISHING | 7849272 |
| 193 | 40200.40300.40500.56200.58500.59700.60700.260600.2598300 | CONCEALED PLUMBING | 8d | 2026-08-10 | 2026-08-17 | 192 |  | RGA -FINISHING | 7849282 |
| 194 | 40200.40300.40500.56200.58500.59700.60700.260600.2598400 | WATERPROOFING WORK FOR TOILETS, KITCHEN SUNK & PLANTERS | 8d | 2026-08-18 | 2026-08-25 | 193 |  | RGA -FINISHING | 7849292 |
| 195 | 40200.40300.40500.56200.58500.59700.60700.260700 | **3rd FLOOR** | 170d | 2026-03-28 | 2026-09-13 |  | start no earlier than 2026-03-28 | RGA -FINISHING | 7807042 |
| 196 | 40200.40300.40500.56200.58500.59700.60700.260700.2598500 | BALCONY RAILING FIXING | 9d | 2026-06-07 | 2026-06-15 | 77FS+20d |  | RGA -FINISHING | 7849302 |
| 197 | 40200.40300.40500.56200.58500.59700.60700.260700.2598600 | Block work | 2d | 2026-09-12 | 2026-09-13 | 201 |  | RGA -FINISHING | 7849312 |
| 198 | 40200.40300.40500.56200.58500.59700.60700.260700.2598700 | CONCEALED ELEC CONDUITING & ITS FINISHING | 5d | 2026-03-28 | 2026-04-01 | 66FS-5d |  | RGA -FINISHING | 7849322 |
| 199 | 40200.40300.40500.56200.58500.59700.60700.260700.2598800 | PLASTER APPLICATION | 6d | 2026-08-21 | 2026-08-26 | 408FS+30d |  | RGA -FINISHING | 7849332 |
| 200 | 40200.40300.40500.56200.58500.59700.60700.260700.2598900 | CONCEALED PLUMBING | 8d | 2026-08-27 | 2026-09-03 | 199 |  | RGA -FINISHING | 7849342 |
| 201 | 40200.40300.40500.56200.58500.59700.60700.260700.2599000 | WATERPROOFING WORK FOR TOILETS, KITCHEN SUNK & PLANTERS | 8d | 2026-09-04 | 2026-09-11 | 200 |  | RGA -FINISHING | 7849352 |

| ID | WBS | Task | Duration | Start | Finish | Predecessors | Constraint | Calendar | Unique_Task_ID |
| --- | --- | --- | --- | --- | --- | --- | --- | --- | --- |
| 202 | 40200.40300.40500.56200.58500.59700.60700.260800 | **4th FLOOR** | 164.5d | 2026-04-25 | 2026-10-06 |  | start no earlier than 2026-04-25 | RGA -FINISHING | 7807052 |
| 203 | 40200.40300.40500.56200.58500.59700.60700.260800.2599100 | BALCONY RAILING FIXING | 9d | 2026-06-29 | 2026-07-08 | 81FS+26.5d |  | RGA -FINISHING | 7849362 |
| 204 | 40200.40300.40500.56200.58500.59700.60700.260800.2599200 | Block work | 2d | 2026-10-04 | 2026-10-06 | 208 |  | RGA -FINISHING | 7849372 |
| 205 | 40200.40300.40500.56200.58500.59700.60700.260800.2599300 | CONCEALED ELEC CONDUITING & ITS FINISHING | 5d | 2026-04-25 | 2026-04-29 | 70FS-5d |  | RGA -FINISHING | 7849382 |
| 206 | 40200.40300.40500.56200.58500.59700.60700.260800.2599400 | PLASTER APPLICATION | 6d | 2026-09-12 | 2026-09-18 | 421FS+30d |  | RGA -FINISHING | 7849392 |
| 207 | 40200.40300.40500.56200.58500.59700.60700.260800.2599500 | CONCEALED PLUMBING | 8d | 2026-09-18 | 2026-09-26 | 206 |  | RGA -FINISHING | 7849402 |
| 208 | 40200.40300.40500.56200.58500.59700.60700.260800.2599600 | WATERPROOFING WORK FOR TOILETS, KITCHEN SUNK & PLANTERS | 8d | 2026-09-26 | 2026-10-04 | 207 |  | RGA -FINISHING | 7849412 |
| 209 | 40200.40300.40500.56200.58500.59700.60700.260900 | **5th FLOOR** | 167d | 2026-05-13 | 2026-10-26 |  | start no earlier than 2026-05-13 | RGA -FINISHING | 7807062 |
| 210 | 40200.40300.40500.56200.58500.59700.60700.260900.2599700 | BALCONY RAILING FIXING | 9d | 2026-07-20 | 2026-07-28 | 85FS+26.5d |  | RGA -FINISHING | 7849422 |
| 211 | 40200.40300.40500.56200.58500.59700.60700.260900.2599800 | Block work | 2d | 2026-10-25 | 2026-10-26 | 215 |  | RGA -FINISHING | 7849432 |
| 212 | 40200.40300.40500.56200.58500.59700.60700.260900.2599900 | CONCEALED ELEC CONDUITING & ITS FINISHING | 5d | 2026-05-13 | 2026-05-17 | 74FS-5d |  | RGA -FINISHING | 7849442 |
| 213 | 40200.40300.40500.56200.58500.59700.60700.260900.2600000 | PLASTER APPLICATION | 6d | 2026-10-03 | 2026-10-08 | 434FS+30d |  | RGA -FINISHING | 7849452 |
| 214 | 40200.40300.40500.56200.58500.59700.60700.260900.2600100 | CONCEALED PLUMBING | 8d | 2026-10-09 | 2026-10-16 | 213 |  | RGA -FINISHING | 7849462 |
| 215 | 40200.40300.40500.56200.58500.59700.60700.260900.2600200 | WATERPROOFING WORK FOR TOILETS, KITCHEN SUNK & PLANTERS | 8d | 2026-10-17 | 2026-10-24 | 214 |  | RGA -FINISHING | 7849472 |
| 216 | 40200.40300.40500.56200.58500.59700.60700.261000 | **6th FLOOR** | 153d | 2026-05-29 | 2026-10-28 |  | start no earlier than 2026-05-29 | RGA -FINISHING | 7807072 |
| 217 | 40200.40300.40500.56200.58500.59700.60700.261000.2600300 | BALCONY RAILING FIXING | 9d | 2026-08-11 | 2026-08-19 | 89FS+20d |  | RGA -FINISHING | 7849482 |
| 218 | 40200.40300.40500.56200.58500.59700.60700.261000.2600400 | Block work | 2d | 2026-10-27 | 2026-10-28 | 222 |  | RGA -FINISHING | 7849492 |
| 219 | 40200.40300.40500.56200.58500.59700.60700.261000.2600500 | CONCEALED ELEC CONDUITING & ITS FINISHING | 5d | 2026-05-29 | 2026-06-02 | 78FS-5d |  | RGA -FINISHING | 7849502 |
| 220 | 40200.40300.40500.56200.58500.59700.60700.261000.2600600 | PLASTER APPLICATION | 6d | 2026-10-05 | 2026-10-10 | 447FS+10d |  | RGA -FINISHING | 7849512 |
| 221 | 40200.40300.40500.56200.58500.59700.60700.261000.2600700 | CONCEALED PLUMBING | 8d | 2026-10-11 | 2026-10-18 | 220 |  | RGA -FINISHING | 7849522 |
| 222 | 40200.40300.40500.56200.58500.59700.60700.261000.2600800 | WATERPROOFING WORK FOR TOILETS, KITCHEN SUNK & PLANTERS | 8d | 2026-10-19 | 2026-10-26 | 221 |  | RGA -FINISHING | 7849532 |
| 223 | 40200.40300.40500.56200.58500.59700.60700.261100 | **7th FLOOR** | 192d | 2026-05-29 | 2026-12-06 |  | start no earlier than 2026-05-29 | RGA -FINISHING | 7807082 |
| 224 | 40200.40300.40500.56200.58500.59700.60700.261100.2600900 | BALCONY RAILING FIXING | 9d | 2026-08-30 | 2026-09-07 | 93FS+22d |  | RGA -FINISHING | 7849542 |
| 225 | 40200.40300.40500.56200.58500.59700.60700.261100.2601000 | Block work | 2d | 2026-12-05 | 2026-12-06 | 229 |  | RGA -FINISHING | 7849552 |
| 226 | 40200.40300.40500.56200.58500.59700.60700.261100.2601100 | CONCEALED ELEC CONDUITING & ITS FINISHING | 5d | 2026-05-29 | 2026-06-02 | 78FS-5d |  | RGA -FINISHING | 7849562 |
| 227 | 40200.40300.40500.56200.58500.59700.60700.261100.2601200 | PLASTER APPLICATION | 6d | 2026-11-13 | 2026-11-18 | 460FS+30d |  | RGA -FINISHING | 7849572 |
| 228 | 40200.40300.40500.56200.58500.59700.60700.261100.2601300 | CONCEALED PLUMBING | 8d | 2026-11-19 | 2026-11-26 | 227 |  | RGA -FINISHING | 7849582 |
| 229 | 40200.40300.40500.56200.58500.59700.60700.261100.2601400 | WATERPROOFING WORK FOR TOILETS, KITCHEN SUNK & PLANTERS | 8d | 2026-11-27 | 2026-12-04 | 228 |  | RGA -FINISHING | 7849592 |

| ID | WBS | Task | Duration | Start | Finish | Predecessors | Constraint | Calendar | Unique_Task_ID |
| --- | --- | --- | --- | --- | --- | --- | --- | --- | --- |
| 230 | 40200.40300.40500.56200.58500.59700.60700.261200 | **8th FLOOR** | 191d | 2026-06-15 | 2026-12-22 |  | start no earlier than 2026-06-15 | RGA -FINISHING | 7807092 |
| 231 | 40200.40300.40500.56200.58500.59700.60700.261200.2601500 | BALCONY RAILING FIXING | 9d | 2026-09-15 | 2026-09-23 | 97FS+20d |  | RGA -FINISHING | 7849602 |
| 232 | 40200.40300.40500.56200.58500.59700.60700.261200.2601600 | Block work | 2d | 2026-12-21 | 2026-12-22 | 236 |  | RGA -FINISHING | 7849612 |
| 233 | 40200.40300.40500.56200.58500.59700.60700.261200.2601700 | CONCEALED ELEC CONDUITING & ITS FINISHING | 5d | 2026-06-15 | 2026-06-19 | 82FS-8.5d |  | RGA -FINISHING | 7849622 |
| 234 | 40200.40300.40500.56200.58500.59700.60700.261200.2601800 | PLASTER APPLICATION | 6d | 2026-11-29 | 2026-12-04 | 473FS+30d |  | RGA -FINISHING | 7849632 |
| 235 | 40200.40300.40500.56200.58500.59700.60700.261200.2601900 | CONCEALED PLUMBING | 8d | 2026-12-05 | 2026-12-12 | 234 |  | RGA -FINISHING | 7849642 |
| 236 | 40200.40300.40500.56200.58500.59700.60700.261200.2602000 | WATERPROOFING WORK FOR TOILETS, KITCHEN SUNK & PLANTERS | 8d | 2026-12-13 | 2026-12-20 | 235 |  | RGA -FINISHING | 7849652 |
| 237 | 40200.40300.40500.56200.58500.59700.60700.261300 | **9th FLOOR** | 178d | 2026-07-17 | 2027-01-10 |  | start no earlier than 2026-07-17 | RGA -FINISHING | 7807102 |
| 238 | 40200.40300.40500.56200.58500.59700.60700.261300.2602100 | BALCONY RAILING FIXING | 9d | 2026-10-04 | 2026-10-12 | 101FS+22d |  | RGA -FINISHING | 7849662 |
| 239 | 40200.40300.40500.56200.58500.59700.60700.261300.2602200 | Block work | 2d | 2027-01-09 | 2027-01-10 | 243 |  | RGA -FINISHING | 7849672 |
| 240 | 40200.40300.40500.56200.58500.59700.60700.261300.2602300 | CONCEALED ELEC CONDUITING & ITS FINISHING | 5d | 2026-07-17 | 2026-07-21 | 86FS-5d |  | RGA -FINISHING | 7849682 |
| 241 | 40200.40300.40500.56200.58500.59700.60700.261300.2602400 | PLASTER APPLICATION | 6d | 2026-12-18 | 2026-12-23 | 486FS+30d |  | RGA -FINISHING | 7849692 |
| 242 | 40200.40300.40500.56200.58500.59700.60700.261300.2602500 | CONCEALED PLUMBING | 8d | 2026-12-24 | 2026-12-31 | 241 |  | RGA -FINISHING | 7849702 |
| 243 | 40200.40300.40500.56200.58500.59700.60700.261300.2602600 | WATERPROOFING WORK FOR TOILETS, KITCHEN SUNK & PLANTERS | 8d | 2027-01-01 | 2027-01-08 | 242 |  | RGA -FINISHING | 7849712 |
| 244 | 40200.40300.40500.56200.58500.59700.60700.261400 | **10th FLOOR** | 178d | 2026-08-03 | 2027-01-27 |  | start no earlier than 2026-08-03 | RGA -FINISHING | 7807112 |
| 245 | 40200.40300.40500.56200.58500.59700.60700.261400.2602700 | BALCONY RAILING FIXING | 9d | 2026-10-21 | 2026-10-29 | 105FS+22d |  | RGA -FINISHING | 7849722 |
| 246 | 40200.40300.40500.56200.58500.59700.60700.261400.2602800 | Block work | 2d | 2027-01-26 | 2027-01-27 | 250 |  | RGA -FINISHING | 7849732 |
| 247 | 40200.40300.40500.56200.58500.59700.60700.261400.2602900 | CONCEALED ELEC CONDUITING & ITS FINISHING | 5d | 2026-08-03 | 2026-08-07 | 90FS-5d |  | RGA -FINISHING | 7849742 |
| 248 | 40200.40300.40500.56200.58500.59700.60700.261400.2603000 | PLASTER APPLICATION | 6d | 2027-01-04 | 2027-01-09 | 499FS+30d |  | RGA -FINISHING | 7849752 |
| 249 | 40200.40300.40500.56200.58500.59700.60700.261400.2603100 | CONCEALED PLUMBING | 8d | 2027-01-10 | 2027-01-17 | 248 |  | RGA -FINISHING | 7849762 |
| 250 | 40200.40300.40500.56200.58500.59700.60700.261400.2603200 | WATERPROOFING WORK FOR TOILETS, KITCHEN SUNK & PLANTERS | 8d | 2027-01-18 | 2027-01-25 | 249 |  | RGA -FINISHING | 7849772 |
| 251 | 40200.40300.40500.56200.58500.59700.60700.261500 | **11th FLOOR** | 156d | 2026-08-21 | 2027-01-23 |  | start no earlier than 2026-08-21 | RGA -FINISHING | 7807122 |
| 252 | 40200.40300.40500.56200.58500.59700.60700.261500.2603300 | BALCONY RAILING FIXING | 9d | 2026-11-06 | 2026-11-14 | 109FS+20d |  | RGA -FINISHING | 7849782 |
| 253 | 40200.40300.40500.56200.58500.59700.60700.261500.2603400 | Block work | 2d | 2027-01-22 | 2027-01-23 | 257 |  | RGA -FINISHING | 7849792 |
| 254 | 40200.40300.40500.56200.58500.59700.60700.261500.2603500 | CONCEALED ELEC CONDUITING & ITS FINISHING | 5d | 2026-08-21 | 2026-08-25 | 94FS-5d |  | RGA -FINISHING | 7849802 |
| 255 | 40200.40300.40500.56200.58500.59700.60700.261500.2603600 | PLASTER APPLICATION | 6d | 2026-12-31 | 2027-01-05 | 512FS+10d |  | RGA -FINISHING | 7849812 |
| 256 | 40200.40300.40500.56200.58500.59700.60700.261500.2603700 | CONCEALED PLUMBING | 8d | 2027-01-06 | 2027-01-13 | 255 |  | RGA -FINISHING | 7849822 |
| 257 | 40200.40300.40500.56200.58500.59700.60700.261500.2603800 | WATERPROOFING WORK FOR TOILETS, KITCHEN SUNK & PLANTERS | 8d | 2027-01-14 | 2027-01-21 | 256 |  | RGA -FINISHING | 7849832 |

| ID | WBS | Task | Duration | Start | Finish | Predecessors | Constraint | Calendar | Unique_Task_ID |
| --- | --- | --- | --- | --- | --- | --- | --- | --- | --- |
| 258 | 40200.40300.40500.56200.58500.59700.60700.261600 | **12th FLOOR** | 162.5d | 2026-09-07 | 2027-02-16 |  | start no earlier than 2026-09-07 | RGA -FINISHING | 7807132 |
| 259 | 40200.40300.40500.56200.58500.59700.60700.261600.2603900 | BALCONY RAILING FIXING | 9d | 2026-11-29 | 2026-12-08 | 113FS+26.5d |  | RGA -FINISHING | 7849842 |
| 260 | 40200.40300.40500.56200.58500.59700.60700.261600.2604000 | Block work | 2d | 2027-02-14 | 2027-02-16 | 264 |  | RGA -FINISHING | 7849852 |
| 261 | 40200.40300.40500.56200.58500.59700.60700.261600.2604100 | CONCEALED ELEC CONDUITING & ITS FINISHING | 5d | 2026-09-07 | 2026-09-11 | 98FS-5d |  | RGA -FINISHING | 7849862 |
| 262 | 40200.40300.40500.56200.58500.59700.60700.261600.2604200 | PLASTER APPLICATION | 6d | 2027-01-23 | 2027-01-29 | 525FS+10d |  | RGA -FINISHING | 7849872 |
| 263 | 40200.40300.40500.56200.58500.59700.60700.261600.2604300 | CONCEALED PLUMBING | 8d | 2027-01-29 | 2027-02-06 | 262 |  | RGA -FINISHING | 7849882 |
| 264 | 40200.40300.40500.56200.58500.59700.60700.261600.2604400 | WATERPROOFING WORK FOR TOILETS, KITCHEN SUNK & PLANTERS | 8d | 2027-02-06 | 2027-02-14 | 263 |  | RGA -FINISHING | 7849892 |
| 265 | 40200.40300.40500.56200.58500.59700.60700.261700 | **13th FLOOR** | 171d | 2026-09-24 | 2027-03-13 |  | start no earlier than 2026-09-24 | RGA -FINISHING | 7807142 |
| 266 | 40200.40300.40500.56200.58500.59700.60700.261700.2604500 | BALCONY RAILING FIXING | 9d | 2026-12-25 | 2027-01-02 | 117FS+31.5d |  | RGA -FINISHING | 7849902 |
| 267 | 40200.40300.40500.56200.58500.59700.60700.261700.2604600 | Block work | 2d | 2027-03-12 | 2027-03-13 | 271 |  | RGA -FINISHING | 7849912 |
| 268 | 40200.40300.40500.56200.58500.59700.60700.261700.2604700 | CONCEALED ELEC CONDUITING & ITS FINISHING | 5d | 2026-09-24 | 2026-09-28 | 102FS-5d |  | RGA -FINISHING | 7849922 |
| 269 | 40200.40300.40500.56200.58500.59700.60700.261700.2604800 | PLASTER APPLICATION | 6d | 2027-02-18 | 2027-02-23 | 538FS+10d |  | RGA -FINISHING | 7849932 |
| 270 | 40200.40300.40500.56200.58500.59700.60700.261700.2604900 | CONCEALED PLUMBING | 8d | 2027-02-24 | 2027-03-03 | 269 |  | RGA -FINISHING | 7849942 |
| 271 | 40200.40300.40500.56200.58500.59700.60700.261700.2605000 | WATERPROOFING WORK FOR TOILETS, KITCHEN SUNK & PLANTERS | 8d | 2027-03-04 | 2027-03-11 | 270 |  | RGA -FINISHING | 7849952 |
| 272 | 40200.40300.40500.56200.58500.59700.60700.261800 | **14th FLOOR** | 190d | 2026-10-12 | 2027-04-19 |  | start no earlier than 2026-10-12 | RGA -FINISHING | 7807152 |
| 273 | 40200.40300.40500.56200.58500.59700.60700.261800.2605100 | BALCONY RAILING FIXING | 9d | 2027-01-11 | 2027-01-19 | 121FS+20d |  | RGA -FINISHING | 7849962 |
| 274 | 40200.40300.40500.56200.58500.59700.60700.261800.2605200 | Block work | 2d | 2027-04-18 | 2027-04-19 | 278 |  | RGA -FINISHING | 7849972 |
| 275 | 40200.40300.40500.56200.58500.59700.60700.261800.2605300 | CONCEALED ELEC CONDUITING & ITS FINISHING | 5d | 2026-10-12 | 2026-10-16 | 106FS-5d |  | RGA -FINISHING | 7849982 |
| 276 | 40200.40300.40500.56200.58500.59700.60700.261800.2605400 | PLASTER APPLICATION | 6d | 2027-03-27 | 2027-04-01 | 551FS+30d |  | RGA -FINISHING | 7849992 |
| 277 | 40200.40300.40500.56200.58500.59700.60700.261800.2605500 | CONCEALED PLUMBING | 8d | 2027-04-02 | 2027-04-09 | 276 |  | RGA -FINISHING | 7850002 |
| 278 | 40200.40300.40500.56200.58500.59700.60700.261800.2605600 | WATERPROOFING WORK FOR TOILETS, KITCHEN SUNK & PLANTERS | 8d | 2027-04-10 | 2027-04-17 | 277 |  | RGA -FINISHING | 7850012 |
| 279 | 40200.40300.40500.56200.58500.59700.60700.261900 | **15th FLOOR** | 170d | 2026-10-29 | 2027-04-16 |  | start no earlier than 2026-10-29 | RGA -FINISHING | 7807162 |
| 280 | 40200.40300.40500.56200.58500.59700.60700.261900.2605700 | BALCONY RAILING FIXING | 9d | 2027-01-28 | 2027-02-05 | 125FS+20d |  | RGA -FINISHING | 7850022 |
| 281 | 40200.40300.40500.56200.58500.59700.60700.261900.2605800 | Block work | 2d | 2027-04-15 | 2027-04-16 | 285 |  | RGA -FINISHING | 7850032 |
| 282 | 40200.40300.40500.56200.58500.59700.60700.261900.2605900 | CONCEALED ELEC CONDUITING & ITS FINISHING | 5d | 2026-10-29 | 2026-11-02 | 110FS-5d |  | RGA -FINISHING | 7850042 |
| 283 | 40200.40300.40500.56200.58500.59700.60700.261900.2606000 | PLASTER APPLICATION | 6d | 2027-03-24 | 2027-03-29 | 564FS+10d |  | RGA -FINISHING | 7850052 |
| 284 | 40200.40300.40500.56200.58500.59700.60700.261900.2606100 | CONCEALED PLUMBING | 8d | 2027-03-30 | 2027-04-06 | 283 |  | RGA -FINISHING | 7850062 |
| 285 | 40200.40300.40500.56200.58500.59700.60700.261900.2606200 | WATERPROOFING WORK FOR TOILETS, KITCHEN SUNK & PLANTERS | 8d | 2027-04-07 | 2027-04-14 | 284 |  | RGA -FINISHING | 7850072 |

| ID | WBS | Task | Duration | Start | Finish | Predecessors | Constraint | Calendar | Unique_Task_ID |
| --- | --- | --- | --- | --- | --- | --- | --- | --- | --- |
| 286 | 40200.40300.40500.56200.58500.59700.60700.262000 | **16th FLOOR** | 160d | 2026-11-15 | 2027-04-23 |  | start no earlier than 2026-11-15 | RGA -FINISHING | 7807172 |
| 287 | 40200.40300.40500.56200.58500.59700.60700.262000.2606300 | BALCONY RAILING FIXING | 9d | 2027-02-04 | 2027-02-12 | 129FS+10d |  | RGA -FINISHING | 7850082 |
| 288 | 40200.40300.40500.56200.58500.59700.60700.262000.2606400 | Block work | 2d | 2027-04-22 | 2027-04-23 | 292 |  | RGA -FINISHING | 7850092 |
| 289 | 40200.40300.40500.56200.58500.59700.60700.262000.2606500 | CONCEALED ELEC CONDUITING & ITS FINISHING | 5d | 2026-11-15 | 2026-11-19 | 114FS-8.5d |  | RGA -FINISHING | 7850102 |
| 290 | 40200.40300.40500.56200.58500.59700.60700.262000.2606600 | PLASTER APPLICATION | 6d | 2027-03-31 | 2027-04-05 | 577FS+10d |  | RGA -FINISHING | 7850112 |
| 291 | 40200.40300.40500.56200.58500.59700.60700.262000.2606700 | CONCEALED PLUMBING | 8d | 2027-04-06 | 2027-04-13 | 290 |  | RGA -FINISHING | 7850122 |
| 292 | 40200.40300.40500.56200.58500.59700.60700.262000.2606800 | WATERPROOFING WORK FOR TOILETS, KITCHEN SUNK & PLANTERS | 8d | 2027-04-14 | 2027-04-21 | 291 |  | RGA -FINISHING | 7850132 |
| 293 | 40200.40300.40500.56200.58500.59700.60700.262100 | **17th FLOOR** | 150d | 2026-12-17 | 2027-05-15 |  | start no earlier than 2026-12-17 | RGA -FINISHING | 7807182 |
| 294 | 40200.40300.40500.56200.58500.59700.60700.262100.2606900 | BALCONY RAILING FIXING | 9d | 2027-02-26 | 2027-03-06 | 133FS+15d |  | RGA -FINISHING | 7850142 |
| 295 | 40200.40300.40500.56200.58500.59700.60700.262100.2607000 | Block work | 2d | 2027-05-14 | 2027-05-15 | 299 |  | RGA -FINISHING | 7850152 |
| 296 | 40200.40300.40500.56200.58500.59700.60700.262100.2607100 | CONCEALED ELEC CONDUITING & ITS FINISHING | 5d | 2026-12-17 | 2026-12-21 | 118FS-5d |  | RGA -FINISHING | 7850162 |
| 297 | 40200.40300.40500.56200.58500.59700.60700.262100.2607200 | PLASTER APPLICATION | 6d | 2027-04-22 | 2027-04-27 | 590FS+10d |  | RGA -FINISHING | 7850172 |
| 298 | 40200.40300.40500.56200.58500.59700.60700.262100.2607300 | CONCEALED PLUMBING | 8d | 2027-04-28 | 2027-05-05 | 297 |  | RGA -FINISHING | 7850182 |
| 299 | 40200.40300.40500.56200.58500.59700.60700.262100.2607400 | WATERPROOFING WORK FOR TOILETS, KITCHEN SUNK & PLANTERS | 8d | 2027-05-06 | 2027-05-13 | 298 |  | RGA -FINISHING | 7850192 |
| 300 | 40200.40300.40500.56200.58500.59700.60700.262200 | **18th FLOOR** | 155d | 2027-01-03 | 2027-06-06 |  | start no earlier than 2027-01-03 | RGA -FINISHING | 7807192 |
| 301 | 40200.40300.40500.56200.58500.59700.60700.262200.2607500 | BALCONY RAILING FIXING | 9d | 2027-03-20 | 2027-03-28 | 137FS+20d |  | RGA -FINISHING | 7850202 |
| 302 | 40200.40300.40500.56200.58500.59700.60700.262200.2607600 | Block work | 2d | 2027-06-05 | 2027-06-06 | 306 |  | RGA -FINISHING | 7850212 |
| 303 | 40200.40300.40500.56200.58500.59700.60700.262200.2607700 | CONCEALED ELEC CONDUITING & ITS FINISHING | 5d | 2027-01-03 | 2027-01-07 | 122FS-5d |  | RGA -FINISHING | 7850222 |
| 304 | 40200.40300.40500.56200.58500.59700.60700.262200.2607800 | PLASTER APPLICATION | 6d | 2027-05-14 | 2027-05-19 | 603FS+10d |  | RGA -FINISHING | 7850232 |
| 305 | 40200.40300.40500.56200.58500.59700.60700.262200.2607900 | CONCEALED PLUMBING | 8d | 2027-05-20 | 2027-05-27 | 304 |  | RGA -FINISHING | 7850242 |
| 306 | 40200.40300.40500.56200.58500.59700.60700.262200.2608000 | WATERPROOFING WORK FOR TOILETS, KITCHEN SUNK & PLANTERS | 8d | 2027-05-28 | 2027-06-04 | 305 |  | RGA -FINISHING | 7850252 |
| 307 | 40200.40300.40500.56200.58500.59700.60700.262300 | **19th FLOOR** | 155d | 2027-01-20 | 2027-06-23 |  | start no earlier than 2027-01-20 | RGA -FINISHING | 7807202 |
| 308 | 40200.40300.40500.56200.58500.59700.60700.262300.2608100 | BALCONY RAILING FIXING | 9d | 2027-04-06 | 2027-04-14 | 141FS+20d |  | RGA -FINISHING | 7850262 |
| 309 | 40200.40300.40500.56200.58500.59700.60700.262300.2608200 | Block work | 2d | 2027-06-22 | 2027-06-23 | 313 |  | RGA -FINISHING | 7850272 |
| 310 | 40200.40300.40500.56200.58500.59700.60700.262300.2608300 | CONCEALED ELEC CONDUITING & ITS FINISHING | 5d | 2027-01-20 | 2027-01-24 | 126FS-5d |  | RGA -FINISHING | 7850282 |
| 311 | 40200.40300.40500.56200.58500.59700.60700.262300.2608400 | PLASTER APPLICATION | 6d | 2027-05-31 | 2027-06-05 | 616FS+10d |  | RGA -FINISHING | 7850292 |
| 312 | 40200.40300.40500.56200.58500.59700.60700.262300.2608500 | CONCEALED PLUMBING | 8d | 2027-06-06 | 2027-06-13 | 311 |  | RGA -FINISHING | 7850302 |
| 313 | 40200.40300.40500.56200.58500.59700.60700.262300.2608600 | WATERPROOFING WORK FOR TOILETS, KITCHEN SUNK & PLANTERS | 8d | 2027-06-14 | 2027-06-21 | 312 |  | RGA -FINISHING | 7850312 |

Notes:
- 302: Last floor BW completion 2 months post Last RCC
- 309: Last floor BW completion 2 months post Last RCC

| ID | WBS | Task | Duration | Start | Finish | Predecessors | Constraint | Calendar | Unique_Task_ID |
| --- | --- | --- | --- | --- | --- | --- | --- | --- | --- |
| 314 | 40200.40300.40500.56200.58500.59700.60700.262400 | **20th FLOOR** | 155d | 2027-02-06 | 2027-07-10 |  | start no earlier than 2027-02-06 | RGA -FINISHING | 7807212 |
| 315 | 40200.40300.40500.56200.58500.59700.60700.262400.2608700 | BALCONY RAILING FIXING | 9d | 2027-04-23 | 2027-05-01 | 145FS+20d |  | RGA -FINISHING | 7850322 |
| 316 | 40200.40300.40500.56200.58500.59700.60700.262400.2608800 | Block work | 2d | 2027-07-09 | 2027-07-10 | 320 |  | RGA -FINISHING | 7850332 |
| 317 | 40200.40300.40500.56200.58500.59700.60700.262400.2608900 | CONCEALED ELEC CONDUITING & ITS FINISHING | 5d | 2027-02-06 | 2027-02-10 | 130FS-5d |  | RGA -FINISHING | 7850342 |
| 318 | 40200.40300.40500.56200.58500.59700.60700.262400.2609000 | PLASTER APPLICATION | 6d | 2027-06-17 | 2027-06-22 | 629FS+10d |  | RGA -FINISHING | 7850352 |
| 319 | 40200.40300.40500.56200.58500.59700.60700.262400.2609100 | CONCEALED PLUMBING | 8d | 2027-06-23 | 2027-06-30 | 318 |  | RGA -FINISHING | 7850362 |
| 320 | 40200.40300.40500.56200.58500.59700.60700.262400.2609200 | WATERPROOFING WORK FOR TOILETS, KITCHEN SUNK & PLANTERS | 8d | 2027-07-01 | 2027-07-08 | 319 |  | RGA -FINISHING | 7850372 |
| 321 | 40200.40300.40500.56200.58500.59700.60700.262500 | **21st FLOOR** | 155d | 2027-02-23 | 2027-07-27 |  | start no earlier than 2027-02-23 | RGA -FINISHING | 7807222 |
| 322 | 40200.40300.40500.56200.58500.59700.60700.262500.2609300 | BALCONY RAILING FIXING | 9d | 2027-05-10 | 2027-05-18 | 149FS+20d |  | RGA -FINISHING | 7850382 |
| 323 | 40200.40300.40500.56200.58500.59700.60700.262500.2609400 | Block work | 2d | 2027-07-26 | 2027-07-27 | 327 |  | RGA -FINISHING | 7850392 |
| 324 | 40200.40300.40500.56200.58500.59700.60700.262500.2609500 | CONCEALED ELEC CONDUITING & ITS FINISHING | 5d | 2027-02-23 | 2027-02-27 | 134FS-5d |  | RGA -FINISHING | 7850402 |
| 325 | 40200.40300.40500.56200.58500.59700.60700.262500.2609600 | PLASTER APPLICATION | 6d | 2027-07-04 | 2027-07-09 | 642FS+10d |  | RGA -FINISHING | 7850412 |
| 326 | 40200.40300.40500.56200.58500.59700.60700.262500.2609700 | CONCEALED PLUMBING | 8d | 2027-07-10 | 2027-07-17 | 325 |  | RGA -FINISHING | 7850422 |
| 327 | 40200.40300.40500.56200.58500.59700.60700.262500.2609800 | WATERPROOFING WORK FOR TOILETS, KITCHEN SUNK & PLANTERS | 8d | 2027-07-18 | 2027-07-25 | 326 |  | RGA -FINISHING | 7850432 |
| 328 | 40200.40300.40500.56200.58500.59700.60700.262600 | **22th FLOOR** | 155d | 2027-03-12 | 2027-08-13 |  | start no earlier than 2027-03-12 | RGA -FINISHING | 7807232 |
| 329 | 40200.40300.40500.56200.58500.59700.60700.262600.2609900 | BALCONY RAILING FIXING | 9d | 2027-05-27 | 2027-06-04 | 153FS+20d |  | RGA -FINISHING | 7850442 |
| 330 | 40200.40300.40500.56200.58500.59700.60700.262600.2610000 | Block work | 2d | 2027-08-12 | 2027-08-13 | 334 |  | RGA -FINISHING | 7850452 |
| 331 | 40200.40300.40500.56200.58500.59700.60700.262600.2610100 | CONCEALED ELEC CONDUITING & ITS FINISHING | 5d | 2027-03-12 | 2027-03-16 | 138FS-5d |  | RGA -FINISHING | 7850462 |
| 332 | 40200.40300.40500.56200.58500.59700.60700.262600.2610200 | PLASTER APPLICATION | 6d | 2027-07-21 | 2027-07-26 | 655FS+10d |  | RGA -FINISHING | 7850472 |
| 333 | 40200.40300.40500.56200.58500.59700.60700.262600.2610300 | CONCEALED PLUMBING | 8d | 2027-07-27 | 2027-08-03 | 332 |  | RGA -FINISHING | 7850482 |
| 334 | 40200.40300.40500.56200.58500.59700.60700.262600.2610400 | WATERPROOFING WORK FOR TOILETS, KITCHEN SUNK & PLANTERS | 8d | 2027-08-04 | 2027-08-11 | 333 |  | RGA -FINISHING | 7850492 |
| 335 | 40200.40300.40500.56200.58500.59700.60700.262700 | **23th FLOOR** | 145d | 2027-03-29 | 2027-08-20 |  | start no earlier than 2027-03-29 | RGA -FINISHING | 7807242 |
| 336 | 40200.40300.40500.56200.58500.59700.60700.262700.2610500 | BALCONY RAILING FIXING | 9d | 2027-06-13 | 2027-06-21 | 157FS+20d |  | RGA -FINISHING | 7850502 |
| 337 | 40200.40300.40500.56200.58500.59700.60700.262700.2610600 | Block work | 2d | 2027-08-19 | 2027-08-20 | 341 |  | RGA -FINISHING | 7850512 |
| 338 | 40200.40300.40500.56200.58500.59700.60700.262700.2610700 | CONCEALED ELEC CONDUITING & ITS FINISHING | 5d | 2027-03-29 | 2027-04-02 | 142FS-5d |  | RGA -FINISHING | 7850522 |
| 339 | 40200.40300.40500.56200.58500.59700.60700.262700.2610800 | PLASTER APPLICATION | 6d | 2027-07-28 | 2027-08-02 | 668FS+10d |  | RGA -FINISHING | 7850532 |
| 340 | 40200.40300.40500.56200.58500.59700.60700.262700.2610900 | CONCEALED PLUMBING | 8d | 2027-08-03 | 2027-08-10 | 339 |  | RGA -FINISHING | 7850542 |
| 341 | 40200.40300.40500.56200.58500.59700.60700.262700.2611000 | WATERPROOFING WORK FOR TOILETS, KITCHEN SUNK & PLANTERS | 8d | 2027-08-11 | 2027-08-18 | 340 |  | RGA -FINISHING | 7850552 |

Notes:
- 316: Last floor BW completion 2 months post Last RCC
- 323: Last floor BW completion 2 months post Last RCC
- 330: Last floor BW completion 2 months post Last RCC
- 337: Last floor BW completion 2 months post Last RCC

| ID | WBS | Task | Duration | Start | Finish | Predecessors | Constraint | Calendar | Unique_Task_ID |
| --- | --- | --- | --- | --- | --- | --- | --- | --- | --- |
| 342 | 40200.40300.40500.56200.58500.59700.60700.262800 | **24th FLOOR** | 145d | 2027-04-15 | 2027-09-06 |  | start no earlier than 2027-04-15 | RGA -FINISHING | 7807252 |
| 343 | 40200.40300.40500.56200.58500.59700.60700.262800.2611100 | BALCONY RAILING FIXING | 9d | 2027-06-30 | 2027-07-08 | 161FS+20d |  | RGA -FINISHING | 7850562 |
| 344 | 40200.40300.40500.56200.58500.59700.60700.262800.2611200 | Block work | 2d | 2027-09-05 | 2027-09-06 | 348 |  | RGA -FINISHING | 7850572 |
| 345 | 40200.40300.40500.56200.58500.59700.60700.262800.2611300 | CONCEALED ELEC CONDUITING & ITS FINISHING | 5d | 2027-04-15 | 2027-04-19 | 146FS-5d |  | RGA -FINISHING | 7850582 |
| 346 | 40200.40300.40500.56200.58500.59700.60700.262800.2611400 | PLASTER APPLICATION | 6d | 2027-08-14 | 2027-08-19 | 681FS+10d |  | RGA -FINISHING | 7850592 |
| 347 | 40200.40300.40500.56200.58500.59700.60700.262800.2611500 | CONCEALED PLUMBING | 8d | 2027-08-20 | 2027-08-27 | 346 |  | RGA -FINISHING | 7850602 |
| 348 | 40200.40300.40500.56200.58500.59700.60700.262800.2611600 | WATERPROOFING WORK FOR TOILETS, KITCHEN SUNK & PLANTERS | 8d | 2027-08-28 | 2027-09-04 | 347 |  | RGA -FINISHING | 7850612 |
| 349 | 40200.40300.40500.56200.58500.59700.60700.262900 | **25thFLOOR** | 147d | 2027-05-02 | 2027-09-25 |  | start no earlier than 2027-05-02 | RGA -FINISHING | 7807262 |
| 350 | 40200.40300.40500.56200.58500.59700.60700.262900.2611700 | BALCONY RAILING FIXING | 9d | 2027-07-29 | 2027-08-06 | 343FS+20d |  | RGA -FINISHING | 7850622 |
| 351 | 40200.40300.40500.56200.58500.59700.60700.262900.2611800 | Block work | 2d | 2027-09-24 | 2027-09-25 | 355 |  | RGA -FINISHING | 7850632 |
| 352 | 40200.40300.40500.56200.58500.59700.60700.262900.2611900 | CONCEALED ELEC CONDUITING & ITS FINISHING | 5d | 2027-05-02 | 2027-05-06 | 150FS-5d |  | RGA -FINISHING | 7850642 |
| 353 | 40200.40300.40500.56200.58500.59700.60700.262900.2612000 | PLASTER APPLICATION | 6d | 2027-09-02 | 2027-09-07 | 694FS+10d |  | RGA -FINISHING | 7850652 |
| 354 | 40200.40300.40500.56200.58500.59700.60700.262900.2612100 | CONCEALED PLUMBING | 8d | 2027-09-08 | 2027-09-15 | 353 |  | RGA -FINISHING | 7850662 |
| 355 | 40200.40300.40500.56200.58500.59700.60700.262900.2612200 | WATERPROOFING WORK FOR TOILETS, KITCHEN SUNK & PLANTERS | 8d | 2027-09-16 | 2027-09-23 | 354 |  | RGA -FINISHING | 7850672 |
| 356 | 40200.40300.40500.56200.58500.59700.60700.371900 | **LMR (To be Deleted)** | 33d | 2027-06-28 | 2027-07-30 |  | start no earlier than 2027-06-28 | RGA -FINISHING | 7808892 |
| 357 | 40200.40300.40500.56200.58500.59700.60700.371900.2612300 | Block work | 8d | 2027-06-28 | 2027-07-05 | 171 |  | RGA -FINISHING | 7850802 |
| 358 | 40200.40300.40500.56200.58500.59700.60700.371900.2612400 | CONCEALED ELEC CONDUITING & ITS FINISHING | 7d | 2027-07-06 | 2027-07-12 | 357 |  | RGA -FINISHING | 7850812 |
| 359 | 40200.40300.40500.56200.58500.59700.60700.371900.2612500 | PLASTER APPLICATION | 15d | 2027-07-13 | 2027-07-27 | 358 |  | RGA -FINISHING | 7850822 |
| 360 | 40200.40300.40500.56200.58500.59700.60700.371900.2612600 | DOOR FRAME FIXING | 3d | 2027-07-28 | 2027-07-30 | 359 |  | RGA -FINISHING | 7850832 |
| 361 | 40200.40300.40500.56200.58500.59700.505900 | **Terrace Finishing works** | 30d | 2028-01-28 | 2028-02-26 |  | start no earlier than 2028-01-28 | RGA -FINISHING | 7812352 |
| 362 | 40200.40300.40500.56200.58500.59700.505900.2215600 | Terrace Waterproofing work | 30d | 2028-01-28 | 2028-02-26 | 364FS+7d |  | RGA -FINISHING | 7832782 |
| 363 | 40200.40300.40500.56200.58500.59700.506000 | **EXTERNAL Painting** | 225d | 2027-06-10 | 2028-01-20 |  | start no earlier than 2027-06-10 | RGA -FINISHING | 7812342 |
| 364 | 40200.40300.40500.56200.58500.59700.506000.2215700 | 2nd coat | 225d | 2027-06-10 | 2028-01-20 | 161 |  | RGA -FINISHING | 7832792 |
| 365 | 40200.40300.40500.56200.57900 | **Flat internal finishing & services works** | 648d | 2026-04-01 | 2028-01-08 |  | start no earlier than 2026-04-01 | RGA -FINISHING | 7803412 |
| 366 | 40200.40300.40500.56200.57900.72100 | **GROUND FLOOR** | 630d | 2026-04-01 | 2027-12-21 |  | start no earlier than 2026-04-01 | RGA -FINISHING | 7804522 |
| 367 | 40200.40300.40500.56200.57900.72100.886600 | TOILET DADO TILE FIXING | 10d | 2026-06-19 | 2026-06-28 | 176 |  | RGA -FINISHING | 7821062 |
| 368 | 40200.40300.40500.56200.57900.72100.886700 | TOILET FLOORING WORK | 7d | 2026-06-23 | 2026-06-29 | 367FF+1d |  | RGA -FINISHING | 7821072 |
| 369 | 40200.40300.40500.56200.57900.72100.886800 | FIRE FIGHTING | 20d | 2026-04-01 | 2026-04-20 | 175 |  | RGA -FINISHING | 7821082 |
| 370 | 40200.40300.40500.56200.57900.72100.886900 | INTERNAL PAINTING - PUTTY / PRIMER APPLICATION | 12d | 2026-07-27 | 2026-08-07 | 372 |  | RGA -FINISHING | 7821092 |
| 371 | 40200.40300.40500.56200.57900.72100.887000 | FLAT FLOORING | 15d | 2026-06-30 | 2026-07-14 | 368 |  | RGA -FINISHING | 7821102 |
| 372 | 40200.40300.40500.56200.57900.72100.887100 | WINDOW FIXING | 12d | 2026-07-15 | 2026-07-26 | 371 |  | RGA -FINISHING | 7821112 |
| 373 | 40200.40300.40500.56200.57900.72100.887200 | INTERNAL PAINTING - 1ST COAT | 12d | 2026-08-08 | 2026-08-19 | 370 |  | RGA -FINISHING | 7821122 |
| 374 | 40200.40300.40500.56200.57900.72100.887300 | INTERNAL DOOR FIXING | 15d | 2026-08-18 | 2026-09-01 | 373FS-2d |  | RGA -FINISHING | 7821132 |
| 375 | 40200.40300.40500.56200.57900.72100.887400 | WIRING & SWITCH PLATE FIXING | 8d | 2026-08-29 | 2026-09-05 | 374FS-4d |  | RGA -FINISHING | 7821142 |
| 376 | 40200.40300.40500.56200.57900.72100.887500 | TOILET FALSE CEILING | 7d | 2026-09-06 | 2026-09-12 | 375 |  | RGA -FINISHING | 7821152 |
| 377 | 40200.40300.40500.56200.57900.72100.887600 | MAIN DOOR FRAME SHUTTER FIXING | 6d | 2027-12-08 | 2027-12-13 | 709 |  | RGA -FINISHING | 7821162 |
| 378 | 40200.40300.40500.56200.57900.72100.887700 | FINAL COAT PAINT | 8d | 2027-12-14 | 2027-12-21 | 377 |  | RGA -FINISHING | 7821172 |

Notes:
- 344: Last floor BW completion 2 months post Last RCC
- 363: Ext Plaster (in 2 phases) completion 3.5 months post last BW
- 365: Completion in 12 months post last RCC

| ID | WBS | Task | Duration | Start | Finish | Predecessors | Constraint | Calendar | Unique_Task_ID |
| --- | --- | --- | --- | --- | --- | --- | --- | --- | --- |
| 379 | 40200.40300.40500.56200.57900.72200 | **1ST FLOOR** | 570d | 2026-05-31 | 2027-12-21 |  | start no earlier than 2026-05-31 | RGA -FINISHING | 7804512 |
| 380 | 40200.40300.40500.56200.57900.72200.887800 | TOILET DADO TILE FIXING | 7d | 2026-07-30 | 2026-08-05 | 183 |  | RGA -FINISHING | 7821182 |
| 381 | 40200.40300.40500.56200.57900.72200.887900 | TOILET FLOORING WORK | 7d | 2026-07-31 | 2026-08-06 | 380FF+1d |  | RGA -FINISHING | 7821192 |
| 382 | 40200.40300.40500.56200.57900.72200.888000 | FIRE FIGHTING | 6d | 2026-05-31 | 2026-06-05 | 182FS+30d |  | RGA -FINISHING | 7821202 |
| 383 | 40200.40300.40500.56200.57900.72200.888100 | INTERNAL PAINTING - PUTTY / PRIMER APPLICATION | 6d | 2026-08-24 | 2026-08-29 | 385 |  | RGA -FINISHING | 7821212 |
| 384 | 40200.40300.40500.56200.57900.72200.888200 | FLAT FLOORING | 5d | 2026-08-07 | 2026-08-11 | 381 |  | RGA -FINISHING | 7821222 |
| 385 | 40200.40300.40500.56200.57900.72200.888300 | WINDOW FIXING | 7d | 2026-08-17 | 2026-08-23 | 384FS+5d |  | RGA -FINISHING | 7821232 |
| 386 | 40200.40300.40500.56200.57900.72200.888400 | INTERNAL PAINTING - 1ST COAT | 7d | 2026-08-30 | 2026-09-05 | 383 |  | RGA -FINISHING | 7821242 |
| 387 | 40200.40300.40500.56200.57900.72200.888500 | INTERNAL DOOR FIXING | 15d | 2026-09-04 | 2026-09-18 | 386FS-2d |  | RGA -FINISHING | 7821252 |
| 388 | 40200.40300.40500.56200.57900.72200.888600 | WIRING & SWITCH PLATE FIXING | 8d | 2026-09-15 | 2026-09-22 | 387FS-4d |  | RGA -FINISHING | 7821262 |
| 389 | 40200.40300.40500.56200.57900.72200.888700 | TOILET FALSE CEILING | 7d | 2026-09-23 | 2026-09-29 | 388 |  | RGA -FINISHING | 7821272 |
| 390 | 40200.40300.40500.56200.57900.72200.888800 | MAIN DOOR FRAME SHUTTER FIXING | 6d | 2027-12-08 | 2027-12-13 | 717 |  | RGA -FINISHING | 7821282 |
| 391 | 40200.40300.40500.56200.57900.72200.888900 | FINAL COAT PAINT | 8d | 2027-12-14 | 2027-12-21 | 390 |  | RGA -FINISHING | 7821292 |
| 392 | 40200.40300.40500.56200.57900.72300 | **2ND FLOOR** | 541d | 2026-06-29 | 2027-12-21 |  | start no earlier than 2026-06-29 | RGA -FINISHING | 7804502 |
| 393 | 40200.40300.40500.56200.57900.72300.889000 | TOILET DADO TILE FIXING | 7d | 2026-08-28 | 2026-09-03 | 190 |  | RGA -FINISHING | 7821302 |
| 394 | 40200.40300.40500.56200.57900.72300.889100 | TOILET FLOORING WORK | 7d | 2026-08-29 | 2026-09-04 | 393FF+1d |  | RGA -FINISHING | 7821312 |
| 395 | 40200.40300.40500.56200.57900.72300.889200 | FIRE FIGHTING | 6d | 2026-06-29 | 2026-07-04 | 189FS+30d |  | RGA -FINISHING | 7821322 |
| 396 | 40200.40300.40500.56200.57900.72300.889300 | INTERNAL PAINTING - PUTTY / PRIMER APPLICATION | 6d | 2026-09-22 | 2026-09-27 | 398 |  | RGA -FINISHING | 7821332 |
| 397 | 40200.40300.40500.56200.57900.72300.889400 | FLAT FLOORING | 5d | 2026-09-05 | 2026-09-09 | 394 |  | RGA -FINISHING | 7821342 |
| 398 | 40200.40300.40500.56200.57900.72300.889500 | WINDOW FIXING | 7d | 2026-09-15 | 2026-09-21 | 397FS+5d |  | RGA -FINISHING | 7821352 |
| 399 | 40200.40300.40500.56200.57900.72300.889600 | INTERNAL PAINTING - 1ST COAT | 7d | 2026-09-28 | 2026-10-04 | 396 |  | RGA -FINISHING | 7821362 |
| 400 | 40200.40300.40500.56200.57900.72300.889700 | INTERNAL DOOR FIXING | 15d | 2026-10-03 | 2026-10-17 | 399FS-2d |  | RGA -FINISHING | 7821372 |
| 401 | 40200.40300.40500.56200.57900.72300.889800 | WIRING & SWITCH PLATE FIXING | 8d | 2026-10-14 | 2026-10-21 | 400FS-4d |  | RGA -FINISHING | 7821382 |
| 402 | 40200.40300.40500.56200.57900.72300.889900 | TOILET FALSE CEILING | 7d | 2026-10-22 | 2026-10-28 | 401 |  | RGA -FINISHING | 7821392 |
| 403 | 40200.40300.40500.56200.57900.72300.890000 | MAIN DOOR FRAME SHUTTER FIXING | 6d | 2027-12-08 | 2027-12-13 | 725 |  | RGA -FINISHING | 7821402 |
| 404 | 40200.40300.40500.56200.57900.72300.890100 | FINAL COAT PAINT | 8d | 2027-12-14 | 2027-12-21 | 403 |  | RGA -FINISHING | 7821412 |

| ID | WBS | Task | Duration | Start | Finish | Predecessors | Constraint | Calendar | Unique_Task_ID |
| --- | --- | --- | --- | --- | --- | --- | --- | --- | --- |
| 405 | 40200.40300.40500.56200.57900.72400 | **3RD FLOOR** | 527d | 2026-07-16 | 2027-12-24 |  | start no earlier than 2026-07-16 | RGA -FINISHING | 7804492 |
| 406 | 40200.40300.40500.56200.57900.72400.890200 | TOILET DADO TILE FIXING | 7d | 2026-09-14 | 2026-09-20 | 197 |  | RGA -FINISHING | 7821422 |
| 407 | 40200.40300.40500.56200.57900.72400.890300 | TOILET FLOORING WORK | 7d | 2026-09-15 | 2026-09-21 | 406FF+1d |  | RGA -FINISHING | 7821432 |
| 408 | 40200.40300.40500.56200.57900.72400.890400 | FIRE FIGHTING | 6d | 2026-07-16 | 2026-07-21 | 196FS+30d |  | RGA -FINISHING | 7821442 |
| 409 | 40200.40300.40500.56200.57900.72400.890500 | INTERNAL PAINTING - PUTTY / PRIMER APPLICATION | 6d | 2026-10-09 | 2026-10-14 | 411 |  | RGA -FINISHING | 7821452 |
| 410 | 40200.40300.40500.56200.57900.72400.890600 | FLAT FLOORING | 5d | 2026-09-22 | 2026-09-26 | 407 |  | RGA -FINISHING | 7821462 |
| 411 | 40200.40300.40500.56200.57900.72400.890700 | WINDOW FIXING | 7d | 2026-10-02 | 2026-10-08 | 410FS+5d |  | RGA -FINISHING | 7821472 |
| 412 | 40200.40300.40500.56200.57900.72400.890800 | INTERNAL PAINTING - 1ST COAT | 7d | 2026-10-15 | 2026-10-21 | 409 |  | RGA -FINISHING | 7821482 |
| 413 | 40200.40300.40500.56200.57900.72400.890900 | INTERNAL DOOR FIXING | 15d | 2026-10-20 | 2026-11-03 | 412FS-2d |  | RGA -FINISHING | 7821492 |
| 414 | 40200.40300.40500.56200.57900.72400.891000 | WIRING & SWITCH PLATE FIXING | 8d | 2026-10-31 | 2026-11-07 | 413FS-4d |  | RGA -FINISHING | 7821502 |
| 415 | 40200.40300.40500.56200.57900.72400.891100 | TOILET FALSE CEILING | 7d | 2026-11-08 | 2026-11-14 | 414 |  | RGA -FINISHING | 7821512 |
| 416 | 40200.40300.40500.56200.57900.72400.891200 | MAIN DOOR FRAME SHUTTER FIXING | 6d | 2027-12-11 | 2027-12-16 | 733 |  | RGA -FINISHING | 7821522 |
| 417 | 40200.40300.40500.56200.57900.72400.891300 | FINAL COAT PAINT | 8d | 2027-12-17 | 2027-12-24 | 416 |  | RGA -FINISHING | 7821532 |
| 418 | 40200.40300.40500.56200.57900.72500 | **4TH FLOOR** | 504.5d | 2026-08-07 | 2027-12-24 |  | start no earlier than 2026-08-07 | RGA -FINISHING | 7804482 |
| 419 | 40200.40300.40500.56200.57900.72500.891400 | TOILET DADO TILE FIXING | 7d | 2026-10-06 | 2026-10-13 | 204 |  | RGA -FINISHING | 7821542 |
| 420 | 40200.40300.40500.56200.57900.72500.891500 | TOILET FLOORING WORK | 7d | 2026-10-13 | 2026-10-20 | 419 |  | RGA -FINISHING | 7821552 |
| 421 | 40200.40300.40500.56200.57900.72500.891600 | FIRE FIGHTING | 6d | 2026-08-07 | 2026-08-13 | 203FS+30d |  | RGA -FINISHING | 7821562 |
| 422 | 40200.40300.40500.56200.57900.72500.891700 | INTERNAL PAINTING - PUTTY / PRIMER APPLICATION | 6d | 2026-11-06 | 2026-11-12 | 424 |  | RGA -FINISHING | 7821572 |
| 423 | 40200.40300.40500.56200.57900.72500.891800 | FLAT FLOORING | 5d | 2026-10-20 | 2026-10-25 | 420 |  | RGA -FINISHING | 7821582 |
| 424 | 40200.40300.40500.56200.57900.72500.891900 | WINDOW FIXING | 7d | 2026-10-30 | 2026-11-06 | 423FS+5d |  | RGA -FINISHING | 7821592 |
| 425 | 40200.40300.40500.56200.57900.72500.892000 | INTERNAL PAINTING - 1ST COAT | 7d | 2026-11-12 | 2026-11-19 | 422 |  | RGA -FINISHING | 7821602 |
| 426 | 40200.40300.40500.56200.57900.72500.892100 | INTERNAL DOOR FIXING | 15d | 2026-11-17 | 2026-12-02 | 425FS-2d |  | RGA -FINISHING | 7821612 |
| 427 | 40200.40300.40500.56200.57900.72500.892200 | WIRING & SWITCH PLATE FIXING | 8d | 2026-11-28 | 2026-12-06 | 426FS-4d |  | RGA -FINISHING | 7821622 |
| 428 | 40200.40300.40500.56200.57900.72500.892300 | TOILET FALSE CEILING | 7d | 2026-12-06 | 2026-12-13 | 427 |  | RGA -FINISHING | 7821632 |
| 429 | 40200.40300.40500.56200.57900.72500.892400 | MAIN DOOR FRAME SHUTTER FIXING | 6d | 2027-12-11 | 2027-12-16 | 741 |  | RGA -FINISHING | 7821642 |
| 430 | 40200.40300.40500.56200.57900.72500.892500 | FINAL COAT PAINT | 8d | 2027-12-17 | 2027-12-24 | 429 |  | RGA -FINISHING | 7821652 |

| ID | WBS | Task | Duration | Start | Finish | Predecessors | Constraint | Calendar | Unique_Task_ID |
| --- | --- | --- | --- | --- | --- | --- | --- | --- | --- |
| 431 | 40200.40300.40500.56200.57900.72600 | **5TH FLOOR** | 484d | 2026-08-28 | 2027-12-24 |  | start no earlier than 2026-08-28 | RGA -FINISHING | 7804472 |
| 432 | 40200.40300.40500.56200.57900.72600.892600 | TOILET DADO TILE FIXING | 7d | 2026-10-27 | 2026-11-02 | 211 |  | RGA -FINISHING | 7821662 |
| 433 | 40200.40300.40500.56200.57900.72600.892700 | TOILET FLOORING WORK | 7d | 2026-11-03 | 2026-11-09 | 432 |  | RGA -FINISHING | 7821672 |
| 434 | 40200.40300.40500.56200.57900.72600.892800 | FIRE FIGHTING | 6d | 2026-08-28 | 2026-09-02 | 210FS+30d |  | RGA -FINISHING | 7821682 |
| 435 | 40200.40300.40500.56200.57900.72600.892900 | INTERNAL PAINTING - PUTTY / PRIMER APPLICATION | 6d | 2026-11-27 | 2026-12-02 | 437 |  | RGA -FINISHING | 7821692 |
| 436 | 40200.40300.40500.56200.57900.72600.893000 | FLAT FLOORING | 5d | 2026-11-10 | 2026-11-14 | 433 |  | RGA -FINISHING | 7821702 |
| 437 | 40200.40300.40500.56200.57900.72600.893100 | WINDOW FIXING | 7d | 2026-11-20 | 2026-11-26 | 436FS+5d |  | RGA -FINISHING | 7821712 |
| 438 | 40200.40300.40500.56200.57900.72600.893200 | INTERNAL PAINTING - 1ST COAT | 7d | 2026-11-27 | 2026-12-03 | 437 |  | RGA -FINISHING | 7821722 |
| 439 | 40200.40300.40500.56200.57900.72600.893300 | INTERNAL DOOR FIXING | 15d | 2026-12-02 | 2026-12-16 | 438FS-2d |  | RGA -FINISHING | 7821732 |
| 440 | 40200.40300.40500.56200.57900.72600.893400 | WIRING & SWITCH PLATE FIXING | 8d | 2026-12-13 | 2026-12-20 | 439FS-4d |  | RGA -FINISHING | 7821742 |
| 441 | 40200.40300.40500.56200.57900.72600.893500 | TOILET FALSE CEILING | 7d | 2026-12-21 | 2026-12-27 | 440 |  | RGA -FINISHING | 7821752 |
| 442 | 40200.40300.40500.56200.57900.72600.893600 | MAIN DOOR FRAME SHUTTER FIXING | 6d | 2027-12-11 | 2027-12-16 | 749 |  | RGA -FINISHING | 7821762 |
| 443 | 40200.40300.40500.56200.57900.72600.893700 | FINAL COAT PAINT | 8d | 2027-12-17 | 2027-12-24 | 442 |  | RGA -FINISHING | 7821772 |
| 444 | 40200.40300.40500.56200.57900.72700 | **6TH FLOOR** | 465d | 2026-09-19 | 2027-12-27 |  | start no earlier than 2026-09-19 | RGA -FINISHING | 7804462 |
| 445 | 40200.40300.40500.56200.57900.72700.893800 | TOILET DADO TILE FIXING | 7d | 2026-10-29 | 2026-11-04 | 218 |  | RGA -FINISHING | 7821782 |
| 446 | 40200.40300.40500.56200.57900.72700.893900 | TOILET FLOORING WORK | 7d | 2026-11-05 | 2026-11-11 | 445 |  | RGA -FINISHING | 7821792 |
| 447 | 40200.40300.40500.56200.57900.72700.894000 | FIRE FIGHTING | 6d | 2026-09-19 | 2026-09-24 | 217FS+30d |  | RGA -FINISHING | 7821802 |
| 448 | 40200.40300.40500.56200.57900.72700.894100 | INTERNAL PAINTING - PUTTY / PRIMER APPLICATION | 6d | 2026-11-29 | 2026-12-04 | 450 |  | RGA -FINISHING | 7821812 |
| 449 | 40200.40300.40500.56200.57900.72700.894200 | FLAT FLOORING | 5d | 2026-11-12 | 2026-11-16 | 446 |  | RGA -FINISHING | 7821822 |
| 450 | 40200.40300.40500.56200.57900.72700.894300 | WINDOW FIXING | 7d | 2026-11-22 | 2026-11-28 | 449FS+5d |  | RGA -FINISHING | 7821832 |
| 451 | 40200.40300.40500.56200.57900.72700.894400 | INTERNAL PAINTING - 1ST COAT | 7d | 2026-12-05 | 2026-12-11 | 448 |  | RGA -FINISHING | 7821842 |
| 452 | 40200.40300.40500.56200.57900.72700.894500 | INTERNAL DOOR FIXING | 15d | 2026-12-10 | 2026-12-24 | 451FS-2d |  | RGA -FINISHING | 7821852 |
| 453 | 40200.40300.40500.56200.57900.72700.894600 | WIRING & SWITCH PLATE FIXING | 8d | 2026-12-21 | 2026-12-28 | 452FS-4d |  | RGA -FINISHING | 7821862 |
| 454 | 40200.40300.40500.56200.57900.72700.894700 | TOILET FALSE CEILING | 7d | 2026-12-29 | 2027-01-04 | 453 |  | RGA -FINISHING | 7821872 |
| 455 | 40200.40300.40500.56200.57900.72700.894800 | MAIN DOOR FRAME SHUTTER FIXING | 6d | 2027-12-14 | 2027-12-19 | 757 |  | RGA -FINISHING | 7821882 |
| 456 | 40200.40300.40500.56200.57900.72700.894900 | FINAL COAT PAINT | 8d | 2027-12-20 | 2027-12-27 | 455 |  | RGA -FINISHING | 7821892 |

| ID | WBS | Task | Duration | Start | Finish | Predecessors | Constraint | Calendar | Unique_Task_ID |
| --- | --- | --- | --- | --- | --- | --- | --- | --- | --- |
| 457 | 40200.40300.40500.56200.57900.72800 | **7TH FLOOR** | 446d | 2026-10-08 | 2027-12-27 |  | start no earlier than 2026-10-08 | RGA -FINISHING | 7804452 |
| 458 | 40200.40300.40500.56200.57900.72800.895000 | TOILET DADO TILE FIXING | 7d | 2026-12-07 | 2026-12-13 | 225 |  | RGA -FINISHING | 7821902 |
| 459 | 40200.40300.40500.56200.57900.72800.895100 | TOILET FLOORING WORK | 7d | 2026-12-14 | 2026-12-20 | 458 |  | RGA -FINISHING | 7821912 |
| 460 | 40200.40300.40500.56200.57900.72800.895200 | FIRE FIGHTING | 6d | 2026-10-08 | 2026-10-13 | 224FS+30d |  | RGA -FINISHING | 7821922 |
| 461 | 40200.40300.40500.56200.57900.72800.895300 | INTERNAL PAINTING - PUTTY / PRIMER APPLICATION | 6d | 2027-01-07 | 2027-01-12 | 463 |  | RGA -FINISHING | 7821932 |
| 462 | 40200.40300.40500.56200.57900.72800.895400 | FLAT FLOORING | 5d | 2026-12-21 | 2026-12-25 | 459 |  | RGA -FINISHING | 7821942 |
| 463 | 40200.40300.40500.56200.57900.72800.895500 | WINDOW FIXING | 7d | 2026-12-31 | 2027-01-06 | 462FS+5d |  | RGA -FINISHING | 7821952 |
| 464 | 40200.40300.40500.56200.57900.72800.895600 | INTERNAL PAINTING - 1ST COAT | 7d | 2027-01-13 | 2027-01-19 | 461 |  | RGA -FINISHING | 7821962 |
| 465 | 40200.40300.40500.56200.57900.72800.895700 | INTERNAL DOOR FIXING | 15d | 2027-01-18 | 2027-02-01 | 464FS-2d |  | RGA -FINISHING | 7821972 |
| 466 | 40200.40300.40500.56200.57900.72800.895800 | WIRING & SWITCH PLATE FIXING | 8d | 2027-01-29 | 2027-02-05 | 465FS-4d |  | RGA -FINISHING | 7821982 |
| 467 | 40200.40300.40500.56200.57900.72800.895900 | TOILET FALSE CEILING | 7d | 2027-02-06 | 2027-02-12 | 466 |  | RGA -FINISHING | 7821992 |
| 468 | 40200.40300.40500.56200.57900.72800.896000 | MAIN DOOR FRAME SHUTTER FIXING | 6d | 2027-12-14 | 2027-12-19 | 765 |  | RGA -FINISHING | 7822002 |
| 469 | 40200.40300.40500.56200.57900.72800.896100 | FINAL COAT PAINT | 8d | 2027-12-20 | 2027-12-27 | 468 |  | RGA -FINISHING | 7822012 |
| 470 | 40200.40300.40500.56200.57900.72900 | **8TH FLOOR** | 430d | 2026-10-24 | 2027-12-27 |  | start no earlier than 2026-10-24 | RGA -FINISHING | 7804442 |
| 471 | 40200.40300.40500.56200.57900.72900.896200 | TOILET DADO TILE FIXING | 7d | 2026-12-23 | 2026-12-29 | 232 |  | RGA -FINISHING | 7822022 |
| 472 | 40200.40300.40500.56200.57900.72900.896300 | TOILET FLOORING WORK | 7d | 2026-12-30 | 2027-01-05 | 471 |  | RGA -FINISHING | 7822032 |
| 473 | 40200.40300.40500.56200.57900.72900.896400 | FIRE FIGHTING | 6d | 2026-10-24 | 2026-10-29 | 231FS+30d |  | RGA -FINISHING | 7822042 |
| 474 | 40200.40300.40500.56200.57900.72900.896500 | INTERNAL PAINTING - PUTTY / PRIMER APPLICATION | 6d | 2027-01-23 | 2027-01-28 | 476 |  | RGA -FINISHING | 7822052 |
| 475 | 40200.40300.40500.56200.57900.72900.896600 | FLAT FLOORING | 5d | 2027-01-06 | 2027-01-10 | 472 |  | RGA -FINISHING | 7822062 |
| 476 | 40200.40300.40500.56200.57900.72900.896700 | WINDOW FIXING | 7d | 2027-01-16 | 2027-01-22 | 475FS+5d |  | RGA -FINISHING | 7822072 |
| 477 | 40200.40300.40500.56200.57900.72900.896800 | INTERNAL PAINTING - 1ST COAT | 7d | 2027-01-29 | 2027-02-04 | 474 |  | RGA -FINISHING | 7822082 |
| 478 | 40200.40300.40500.56200.57900.72900.896900 | INTERNAL DOOR FIXING | 15d | 2027-02-03 | 2027-02-17 | 477FS-2d |  | RGA -FINISHING | 7822092 |
| 479 | 40200.40300.40500.56200.57900.72900.897000 | WIRING & SWITCH PLATE FIXING | 8d | 2027-02-14 | 2027-02-21 | 478FS-4d |  | RGA -FINISHING | 7822102 |
| 480 | 40200.40300.40500.56200.57900.72900.897100 | TOILET FALSE CEILING | 7d | 2027-02-22 | 2027-02-28 | 479 |  | RGA -FINISHING | 7822112 |
| 481 | 40200.40300.40500.56200.57900.72900.897200 | MAIN DOOR FRAME SHUTTER FIXING | 6d | 2027-12-14 | 2027-12-19 | 773 |  | RGA -FINISHING | 7822122 |
| 482 | 40200.40300.40500.56200.57900.72900.897300 | FINAL COAT PAINT | 8d | 2027-12-20 | 2027-12-27 | 481 |  | RGA -FINISHING | 7822132 |

| ID | WBS | Task | Duration | Start | Finish | Predecessors | Constraint | Calendar | Unique_Task_ID |
| --- | --- | --- | --- | --- | --- | --- | --- | --- | --- |
| 483 | 40200.40300.40500.56200.57900.73000 | **9TH FLOOR** | 411d | 2026-11-12 | 2027-12-27 |  | start no earlier than 2026-11-12 | RGA -FINISHING | 7804432 |
| 484 | 40200.40300.40500.56200.57900.73000.897400 | TOILET DADO TILE FIXING | 7d | 2027-01-11 | 2027-01-17 | 239 |  | RGA -FINISHING | 7822142 |
| 485 | 40200.40300.40500.56200.57900.73000.897500 | TOILET FLOORING WORK | 7d | 2027-01-18 | 2027-01-24 | 484 |  | RGA -FINISHING | 7822152 |
| 486 | 40200.40300.40500.56200.57900.73000.897600 | FIRE FIGHTING | 6d | 2026-11-12 | 2026-11-17 | 238FS+30d |  | RGA -FINISHING | 7822162 |
| 487 | 40200.40300.40500.56200.57900.73000.897700 | INTERNAL PAINTING - PUTTY / PRIMER APPLICATION | 6d | 2027-02-16 | 2027-02-21 | 489 |  | RGA -FINISHING | 7822172 |
| 488 | 40200.40300.40500.56200.57900.73000.897800 | FLAT FLOORING | 5d | 2027-01-25 | 2027-01-29 | 485 |  | RGA -FINISHING | 7822182 |
| 489 | 40200.40300.40500.56200.57900.73000.897900 | WINDOW FIXING | 12d | 2027-02-04 | 2027-02-15 | 488FS+5d |  | RGA -FINISHING | 7822192 |
| 490 | 40200.40300.40500.56200.57900.73000.898000 | INTERNAL PAINTING - 1ST COAT | 12d | 2027-02-22 | 2027-03-05 | 487 |  | RGA -FINISHING | 7822202 |
| 491 | 40200.40300.40500.56200.57900.73000.898100 | INTERNAL DOOR FIXING | 15d | 2027-03-04 | 2027-03-18 | 490FS-2d |  | RGA -FINISHING | 7822212 |
| 492 | 40200.40300.40500.56200.57900.73000.898200 | WIRING & SWITCH PLATE FIXING | 8d | 2027-03-21 | 2027-03-28 | 491FS+2d |  | RGA -FINISHING | 7822222 |
| 493 | 40200.40300.40500.56200.57900.73000.898300 | TOILET FALSE CEILING | 7d | 2027-03-29 | 2027-04-04 | 492 |  | RGA -FINISHING | 7822232 |
| 494 | 40200.40300.40500.56200.57900.73000.898400 | MAIN DOOR FRAME SHUTTER FIXING | 6d | 2027-12-14 | 2027-12-19 | 781 |  | RGA -FINISHING | 7822242 |
| 495 | 40200.40300.40500.56200.57900.73000.898500 | FINAL COAT PAINT | 8d | 2027-12-20 | 2027-12-27 | 494 |  | RGA -FINISHING | 7822252 |
| 496 | 40200.40300.40500.56200.57900.73100 | **10TH FLOOR** | 397d | 2026-11-29 | 2027-12-30 |  | start no earlier than 2026-11-29 | RGA -FINISHING | 7804422 |
| 497 | 40200.40300.40500.56200.57900.73100.898600 | TOILET DADO TILE FIXING | 7d | 2027-01-28 | 2027-02-03 | 246 |  | RGA -FINISHING | 7822262 |
| 498 | 40200.40300.40500.56200.57900.73100.898700 | TOILET FLOORING WORK | 7d | 2027-02-04 | 2027-02-10 | 497 |  | RGA -FINISHING | 7822272 |
| 499 | 40200.40300.40500.56200.57900.73100.898800 | FIRE FIGHTING | 6d | 2026-11-29 | 2026-12-04 | 245FS+30d |  | RGA -FINISHING | 7822282 |
| 500 | 40200.40300.40500.56200.57900.73100.898900 | INTERNAL PAINTING - PUTTY / PRIMER APPLICATION | 6d | 2027-03-05 | 2027-03-10 | 502 |  | RGA -FINISHING | 7822292 |
| 501 | 40200.40300.40500.56200.57900.73100.899000 | FLAT FLOORING | 5d | 2027-02-11 | 2027-02-15 | 498 |  | RGA -FINISHING | 7822302 |
| 502 | 40200.40300.40500.56200.57900.73100.899100 | WINDOW FIXING | 12d | 2027-02-21 | 2027-03-04 | 501FS+5d |  | RGA -FINISHING | 7822312 |
| 503 | 40200.40300.40500.56200.57900.73100.899200 | INTERNAL PAINTING - 1ST COAT | 12d | 2027-03-11 | 2027-03-22 | 500 |  | RGA -FINISHING | 7822322 |
| 504 | 40200.40300.40500.56200.57900.73100.899300 | INTERNAL DOOR FIXING | 15d | 2027-03-21 | 2027-04-04 | 503FS-2d |  | RGA -FINISHING | 7822332 |
| 505 | 40200.40300.40500.56200.57900.73100.899400 | WIRING & SWITCH PLATE FIXING | 8d | 2027-04-01 | 2027-04-08 | 504FS-4d |  | RGA -FINISHING | 7822342 |
| 506 | 40200.40300.40500.56200.57900.73100.899500 | TOILET FALSE CEILING | 7d | 2027-04-09 | 2027-04-15 | 505 |  | RGA -FINISHING | 7822352 |
| 507 | 40200.40300.40500.56200.57900.73100.899600 | MAIN DOOR FRAME SHUTTER FIXING | 6d | 2027-12-17 | 2027-12-22 | 789 |  | RGA -FINISHING | 7822362 |
| 508 | 40200.40300.40500.56200.57900.73100.899700 | FINAL COAT PAINT | 8d | 2027-12-23 | 2027-12-30 | 507 |  | RGA -FINISHING | 7822372 |

| ID | WBS | Task | Duration | Start | Finish | Predecessors | Constraint | Calendar | Unique_Task_ID |
| --- | --- | --- | --- | --- | --- | --- | --- | --- | --- |
| 509 | 40200.40300.40500.56200.57900.73200 | **11TH FLOOR** | 381d | 2026-12-15 | 2027-12-30 |  | start no earlier than 2026-12-15 | RGA -FINISHING | 7804412 |
| 510 | 40200.40300.40500.56200.57900.73200.899800 | TOILET DADO TILE FIXING | 7d | 2027-01-24 | 2027-01-30 | 253 |  | RGA -FINISHING | 7822382 |
| 511 | 40200.40300.40500.56200.57900.73200.899900 | TOILET FLOORING WORK | 7d | 2027-01-31 | 2027-02-06 | 510 |  | RGA -FINISHING | 7822392 |
| 512 | 40200.40300.40500.56200.57900.73200.900000 | FIRE FIGHTING | 6d | 2026-12-15 | 2026-12-20 | 252FS+30d |  | RGA -FINISHING | 7822402 |
| 513 | 40200.40300.40500.56200.57900.73200.900100 | INTERNAL PAINTING - PUTTY / PRIMER APPLICATION | 6d | 2027-03-01 | 2027-03-06 | 515 |  | RGA -FINISHING | 7822412 |
| 514 | 40200.40300.40500.56200.57900.73200.900200 | FLAT FLOORING | 5d | 2027-02-07 | 2027-02-11 | 511 |  | RGA -FINISHING | 7822422 |
| 515 | 40200.40300.40500.56200.57900.73200.900300 | WINDOW FIXING | 12d | 2027-02-17 | 2027-02-28 | 514FS+5d |  | RGA -FINISHING | 7822432 |
| 516 | 40200.40300.40500.56200.57900.73200.900400 | INTERNAL PAINTING - 1ST COAT | 12d | 2027-03-07 | 2027-03-18 | 513 |  | RGA -FINISHING | 7822442 |
| 517 | 40200.40300.40500.56200.57900.73200.900500 | INTERNAL DOOR FIXING | 15d | 2027-03-19 | 2027-04-02 | 516 |  | RGA -FINISHING | 7822452 |
| 518 | 40200.40300.40500.56200.57900.73200.900600 | WIRING & SWITCH PLATE FIXING | 8d | 2027-04-01 | 2027-04-08 | 517FS-2d |  | RGA -FINISHING | 7822462 |
| 519 | 40200.40300.40500.56200.57900.73200.900700 | TOILET FALSE CEILING | 7d | 2027-04-05 | 2027-04-11 | 518FS-4d |  | RGA -FINISHING | 7822472 |
| 520 | 40200.40300.40500.56200.57900.73200.900800 | MAIN DOOR FRAME SHUTTER FIXING | 6d | 2027-12-17 | 2027-12-22 | 797 |  | RGA -FINISHING | 7822482 |
| 521 | 40200.40300.40500.56200.57900.73200.900900 | FINAL COAT PAINT | 8d | 2027-12-23 | 2027-12-30 | 520 |  | RGA -FINISHING | 7822492 |
| 522 | 40200.40300.40500.56200.57900.73300 | **12TH FLOOR** | 357.5d | 2027-01-07 | 2027-12-30 |  | start no earlier than 2027-01-07 | RGA -FINISHING | 7804402 |
| 523 | 40200.40300.40500.56200.57900.73300.901000 | TOILET DADO TILE FIXING | 7d | 2027-02-16 | 2027-02-23 | 260 |  | RGA -FINISHING | 7822502 |
| 524 | 40200.40300.40500.56200.57900.73300.901100 | TOILET FLOORING WORK | 7d | 2027-02-23 | 2027-03-02 | 523 |  | RGA -FINISHING | 7822512 |
| 525 | 40200.40300.40500.56200.57900.73300.901200 | FIRE FIGHTING | 6d | 2027-01-07 | 2027-01-13 | 259FS+30d |  | RGA -FINISHING | 7822522 |
| 526 | 40200.40300.40500.56200.57900.73300.901300 | INTERNAL PAINTING - PUTTY / PRIMER APPLICATION | 6d | 2027-03-24 | 2027-03-30 | 528 |  | RGA -FINISHING | 7822532 |
| 527 | 40200.40300.40500.56200.57900.73300.901400 | FLAT FLOORING | 5d | 2027-03-02 | 2027-03-07 | 524 |  | RGA -FINISHING | 7822542 |
| 528 | 40200.40300.40500.56200.57900.73300.901500 | WINDOW FIXING | 12d | 2027-03-12 | 2027-03-24 | 527FS+5d |  | RGA -FINISHING | 7822552 |
| 529 | 40200.40300.40500.56200.57900.73300.901600 | INTERNAL PAINTING - 1ST COAT | 12d | 2027-03-30 | 2027-04-11 | 526 |  | RGA -FINISHING | 7822562 |
| 530 | 40200.40300.40500.56200.57900.73300.901700 | INTERNAL DOOR FIXING | 15d | 2027-04-11 | 2027-04-26 | 529 |  | RGA -FINISHING | 7822572 |
| 531 | 40200.40300.40500.56200.57900.73300.901800 | WIRING & SWITCH PLATE FIXING | 8d | 2027-04-24 | 2027-05-02 | 530FS-2d |  | RGA -FINISHING | 7822582 |
| 532 | 40200.40300.40500.56200.57900.73300.901900 | TOILET FALSE CEILING | 7d | 2027-04-28 | 2027-05-05 | 531FS-4d |  | RGA -FINISHING | 7822592 |
| 533 | 40200.40300.40500.56200.57900.73300.902000 | MAIN DOOR FRAME SHUTTER FIXING | 6d | 2027-12-17 | 2027-12-22 | 805 |  | RGA -FINISHING | 7822602 |
| 534 | 40200.40300.40500.56200.57900.73300.902100 | FINAL COAT PAINT | 8d | 2027-12-23 | 2027-12-30 | 533 |  | RGA -FINISHING | 7822612 |

| ID | WBS | Task | Duration | Start | Finish | Predecessors | Constraint | Calendar | Unique_Task_ID |
| --- | --- | --- | --- | --- | --- | --- | --- | --- | --- |
| 535 | 40200.40300.40500.56200.57900.73400 | **13TH FLOOR** | 335d | 2027-02-02 | 2028-01-02 |  | start no earlier than 2027-02-02 | RGA -FINISHING | 7804392 |
| 536 | 40200.40300.40500.56200.57900.73400.902200 | TOILET DADO TILE FIXING | 10d | 2027-03-14 | 2027-03-23 | 267 |  | RGA -FINISHING | 7822622 |
| 537 | 40200.40300.40500.56200.57900.73400.902300 | TOILET FLOORING WORK | 7d | 2027-03-24 | 2027-03-30 | 536 |  | RGA -FINISHING | 7822632 |
| 538 | 40200.40300.40500.56200.57900.73400.902400 | FIRE FIGHTING | 6d | 2027-02-02 | 2027-02-07 | 266FS+30d |  | RGA -FINISHING | 7822642 |
| 539 | 40200.40300.40500.56200.57900.73400.902500 | INTERNAL PAINTING - PUTTY / PRIMER APPLICATION | 8d | 2027-04-27 | 2027-05-04 | 541 |  | RGA -FINISHING | 7822652 |
| 540 | 40200.40300.40500.56200.57900.73400.902600 | FLAT FLOORING | 10d | 2027-03-31 | 2027-04-09 | 537 |  | RGA -FINISHING | 7822662 |
| 541 | 40200.40300.40500.56200.57900.73400.902700 | WINDOW FIXING | 12d | 2027-04-15 | 2027-04-26 | 540FS+5d |  | RGA -FINISHING | 7822672 |
| 542 | 40200.40300.40500.56200.57900.73400.902800 | INTERNAL PAINTING - 1ST COAT | 12d | 2027-05-05 | 2027-05-16 | 539 |  | RGA -FINISHING | 7822682 |
| 543 | 40200.40300.40500.56200.57900.73400.902900 | INTERNAL DOOR FIXING | 15d | 2027-05-15 | 2027-05-29 | 542FS-2d |  | RGA -FINISHING | 7822692 |
| 544 | 40200.40300.40500.56200.57900.73400.903000 | WIRING & SWITCH PLATE FIXING | 8d | 2027-05-26 | 2027-06-02 | 543FS-4d |  | RGA -FINISHING | 7822702 |
| 545 | 40200.40300.40500.56200.57900.73400.903100 | TOILET FALSE CEILING | 7d | 2027-06-03 | 2027-06-09 | 544 |  | RGA -FINISHING | 7822712 |
| 546 | 40200.40300.40500.56200.57900.73400.903200 | MAIN DOOR FRAME SHUTTER FIXING | 6d | 2027-12-20 | 2027-12-25 | 813 |  | RGA -FINISHING | 7822722 |
| 547 | 40200.40300.40500.56200.57900.73400.903300 | FINAL COAT PAINT | 8d | 2027-12-26 | 2028-01-02 | 546 |  | RGA -FINISHING | 7822732 |
| 548 | 40200.40300.40500.56200.57900.73500 | **14TH FLOOR** | 318d | 2027-02-19 | 2028-01-02 |  | start no earlier than 2027-02-19 | RGA -FINISHING | 7804382 |
| 549 | 40200.40300.40500.56200.57900.73500.903400 | TOILET DADO TILE FIXING | 10d | 2027-04-20 | 2027-04-29 | 274 |  | RGA -FINISHING | 7822742 |
| 550 | 40200.40300.40500.56200.57900.73500.903500 | TOILET FLOORING WORK | 7d | 2027-04-30 | 2027-05-06 | 549 |  | RGA -FINISHING | 7822752 |
| 551 | 40200.40300.40500.56200.57900.73500.903600 | FIRE FIGHTING | 6d | 2027-02-19 | 2027-02-24 | 273FS+30d |  | RGA -FINISHING | 7822762 |
| 552 | 40200.40300.40500.56200.57900.73500.903700 | INTERNAL PAINTING - PUTTY / PRIMER APPLICATION | 8d | 2027-06-03 | 2027-06-10 | 554 |  | RGA -FINISHING | 7822772 |
| 553 | 40200.40300.40500.56200.57900.73500.903800 | FLAT FLOORING | 10d | 2027-05-07 | 2027-05-16 | 550 |  | RGA -FINISHING | 7822782 |
| 554 | 40200.40300.40500.56200.57900.73500.903900 | WINDOW FIXING | 12d | 2027-05-22 | 2027-06-02 | 553FS+5d |  | RGA -FINISHING | 7822792 |
| 555 | 40200.40300.40500.56200.57900.73500.904000 | INTERNAL PAINTING - 1ST COAT | 12d | 2027-06-11 | 2027-06-22 | 552 |  | RGA -FINISHING | 7822802 |
| 556 | 40200.40300.40500.56200.57900.73500.904100 | INTERNAL DOOR FIXING | 15d | 2027-06-21 | 2027-07-05 | 555FS-2d |  | RGA -FINISHING | 7822812 |
| 557 | 40200.40300.40500.56200.57900.73500.904200 | WIRING & SWITCH PLATE FIXING | 8d | 2027-07-02 | 2027-07-09 | 556FS-4d |  | RGA -FINISHING | 7822822 |
| 558 | 40200.40300.40500.56200.57900.73500.904300 | TOILET FALSE CEILING | 7d | 2027-07-10 | 2027-07-16 | 557 |  | RGA -FINISHING | 7822832 |
| 559 | 40200.40300.40500.56200.57900.73500.904400 | MAIN DOOR FRAME SHUTTER FIXING | 6d | 2027-12-20 | 2027-12-25 | 821 |  | RGA -FINISHING | 7822842 |
| 560 | 40200.40300.40500.56200.57900.73500.904500 | FINAL COAT PAINT | 8d | 2027-12-26 | 2028-01-02 | 559 |  | RGA -FINISHING | 7822852 |

| ID | WBS | Task | Duration | Start | Finish | Predecessors | Constraint | Calendar | Unique_Task_ID |
| --- | --- | --- | --- | --- | --- | --- | --- | --- | --- |
| 561 | 40200.40300.40500.56200.57900.73600 | **15TH FLOOR** | 301d | 2027-03-08 | 2028-01-02 |  | start no earlier than 2027-03-08 | RGA -FINISHING | 7804372 |
| 562 | 40200.40300.40500.56200.57900.73600.904600 | TOILET DADO TILE FIXING | 10d | 2027-04-17 | 2027-04-26 | 281 |  | RGA -FINISHING | 7822862 |
| 563 | 40200.40300.40500.56200.57900.73600.904700 | TOILET FLOORING WORK | 7d | 2027-04-27 | 2027-05-03 | 562 |  | RGA -FINISHING | 7822872 |
| 564 | 40200.40300.40500.56200.57900.73600.904800 | FIRE FIGHTING | 6d | 2027-03-08 | 2027-03-13 | 280FS+30d |  | RGA -FINISHING | 7822882 |
| 565 | 40200.40300.40500.56200.57900.73600.904900 | INTERNAL PAINTING - PUTTY / PRIMER APPLICATION | 8d | 2027-05-24 | 2027-05-31 | 567 |  | RGA -FINISHING | 7822892 |
| 566 | 40200.40300.40500.56200.57900.73600.905000 | FLAT FLOORING | 10d | 2027-05-04 | 2027-05-13 | 563 |  | RGA -FINISHING | 7822902 |
| 567 | 40200.40300.40500.56200.57900.73600.905100 | WINDOW FIXING | 5d | 2027-05-19 | 2027-05-23 | 566FS+5d |  | RGA -FINISHING | 7822912 |
| 568 | 40200.40300.40500.56200.57900.73600.905200 | INTERNAL PAINTING - 1ST COAT | 4d | 2027-06-01 | 2027-06-04 | 565 |  | RGA -FINISHING | 7822922 |
| 569 | 40200.40300.40500.56200.57900.73600.905300 | INTERNAL DOOR FIXING | 15d | 2027-06-03 | 2027-06-17 | 568FS-2d |  | RGA -FINISHING | 7822932 |
| 570 | 40200.40300.40500.56200.57900.73600.905400 | WIRING & SWITCH PLATE FIXING | 8d | 2027-06-14 | 2027-06-21 | 569FS-4d |  | RGA -FINISHING | 7822942 |
| 571 | 40200.40300.40500.56200.57900.73600.905500 | TOILET FALSE CEILING | 7d | 2027-06-22 | 2027-06-28 | 570 |  | RGA -FINISHING | 7822952 |
| 572 | 40200.40300.40500.56200.57900.73600.905600 | MAIN DOOR FRAME SHUTTER FIXING | 6d | 2027-12-20 | 2027-12-25 | 829 |  | RGA -FINISHING | 7822962 |
| 573 | 40200.40300.40500.56200.57900.73600.905700 | FINAL COAT PAINT | 8d | 2027-12-26 | 2028-01-02 | 572 |  | RGA -FINISHING | 7822972 |
| 574 | 40200.40300.40500.56200.57900.73700 | **16TH FLOOR** | 294d | 2027-03-15 | 2028-01-02 |  | start no earlier than 2027-03-15 | RGA -FINISHING | 7804352 |
| 575 | 40200.40300.40500.56200.57900.73700.905800 | TOILET DADO TILE FIXING | 10d | 2027-04-24 | 2027-05-03 | 288 |  | RGA -FINISHING | 7822982 |
| 576 | 40200.40300.40500.56200.57900.73700.905900 | TOILET FLOORING WORK | 7d | 2027-05-04 | 2027-05-10 | 575 |  | RGA -FINISHING | 7822992 |
| 577 | 40200.40300.40500.56200.57900.73700.906000 | FIRE FIGHTING | 6d | 2027-03-15 | 2027-03-20 | 287FS+30d |  | RGA -FINISHING | 7823002 |
| 578 | 40200.40300.40500.56200.57900.73700.906100 | INTERNAL PAINTING - PUTTY / PRIMER APPLICATION | 8d | 2027-05-31 | 2027-06-07 | 580 |  | RGA -FINISHING | 7823012 |
| 579 | 40200.40300.40500.56200.57900.73700.906200 | FLAT FLOORING | 10d | 2027-05-11 | 2027-05-20 | 576 |  | RGA -FINISHING | 7823022 |
| 580 | 40200.40300.40500.56200.57900.73700.906300 | WINDOW FIXING | 5d | 2027-05-26 | 2027-05-30 | 579FS+5d |  | RGA -FINISHING | 7823032 |
| 581 | 40200.40300.40500.56200.57900.73700.906400 | INTERNAL PAINTING - 1ST COAT | 4d | 2027-06-08 | 2027-06-11 | 578 |  | RGA -FINISHING | 7823042 |
| 582 | 40200.40300.40500.56200.57900.73700.906500 | INTERNAL DOOR FIXING | 15d | 2027-06-10 | 2027-06-24 | 581FS-2d |  | RGA -FINISHING | 7823052 |
| 583 | 40200.40300.40500.56200.57900.73700.906600 | WIRING & SWITCH PLATE FIXING | 8d | 2027-06-21 | 2027-06-28 | 582FS-4d |  | RGA -FINISHING | 7823062 |
| 584 | 40200.40300.40500.56200.57900.73700.906700 | TOILET FALSE CEILING | 7d | 2027-06-29 | 2027-07-05 | 583 |  | RGA -FINISHING | 7823072 |
| 585 | 40200.40300.40500.56200.57900.73700.906800 | MAIN DOOR FRAME SHUTTER FIXING | 6d | 2027-12-20 | 2027-12-25 | 837 |  | RGA -FINISHING | 7823082 |
| 586 | 40200.40300.40500.56200.57900.73700.906900 | FINAL COAT PAINT | 8d | 2027-12-26 | 2028-01-02 | 585 |  | RGA -FINISHING | 7823092 |

| ID | WBS | Task | Duration | Start | Finish | Predecessors | Constraint | Calendar | Unique_Task_ID |
| --- | --- | --- | --- | --- | --- | --- | --- | --- | --- |
| 587 | 40200.40300.40500.56200.57900.73800 | **17TH FLOOR** | 272d | 2027-04-06 | 2028-01-02 |  | start no earlier than 2027-04-06 | RGA -FINISHING | 7804342 |
| 588 | 40200.40300.40500.56200.57900.73800.907000 | TOILET DADO TILE FIXING | 10d | 2027-05-16 | 2027-05-25 | 295 |  | RGA -FINISHING | 7823102 |
| 589 | 40200.40300.40500.56200.57900.73800.907100 | TOILET FLOORING WORK | 7d | 2027-05-26 | 2027-06-01 | 588 |  | RGA -FINISHING | 7823112 |
| 590 | 40200.40300.40500.56200.57900.73800.907200 | FIRE FIGHTING | 6d | 2027-04-06 | 2027-04-11 | 294FS+30d |  | RGA -FINISHING | 7823122 |
| 591 | 40200.40300.40500.56200.57900.73800.907300 | INTERNAL PAINTING - PUTTY / PRIMER APPLICATION | 8d | 2027-06-22 | 2027-06-29 | 593 |  | RGA -FINISHING | 7823132 |
| 592 | 40200.40300.40500.56200.57900.73800.907400 | FLAT FLOORING | 10d | 2027-06-02 | 2027-06-11 | 589 |  | RGA -FINISHING | 7823142 |
| 593 | 40200.40300.40500.56200.57900.73800.907500 | WINDOW FIXING | 5d | 2027-06-17 | 2027-06-21 | 592FS+5d |  | RGA -FINISHING | 7823152 |
| 594 | 40200.40300.40500.56200.57900.73800.907600 | INTERNAL PAINTING - 1ST COAT | 4d | 2027-06-30 | 2027-07-03 | 591 |  | RGA -FINISHING | 7823162 |
| 595 | 40200.40300.40500.56200.57900.73800.907700 | INTERNAL DOOR FIXING | 15d | 2027-07-02 | 2027-07-16 | 594FS-2d |  | RGA -FINISHING | 7823172 |
| 596 | 40200.40300.40500.56200.57900.73800.907800 | WIRING & SWITCH PLATE FIXING | 8d | 2027-07-13 | 2027-07-20 | 595FS-4d |  | RGA -FINISHING | 7823182 |
| 597 | 40200.40300.40500.56200.57900.73800.907900 | TOILET FALSE CEILING | 7d | 2027-07-21 | 2027-07-27 | 596 |  | RGA -FINISHING | 7823192 |
| 598 | 40200.40300.40500.56200.57900.73800.908000 | MAIN DOOR FRAME SHUTTER FIXING | 6d | 2027-12-20 | 2027-12-25 | 845 |  | RGA -FINISHING | 7823202 |
| 599 | 40200.40300.40500.56200.57900.73800.908100 | FINAL COAT PAINT | 8d | 2027-12-26 | 2028-01-02 | 598 |  | RGA -FINISHING | 7823212 |
| 600 | 40200.40300.40500.56200.57900.73900 | **18TH FLOOR** | 253d | 2027-04-28 | 2028-01-05 |  | start no earlier than 2027-04-28 | RGA -FINISHING | 7804332 |
| 601 | 40200.40300.40500.56200.57900.73900.908200 | TOILET DADO TILE FIXING | 10d | 2027-06-07 | 2027-06-16 | 302 |  | RGA -FINISHING | 7823222 |
| 602 | 40200.40300.40500.56200.57900.73900.908300 | TOILET FLOORING WORK | 7d | 2027-06-17 | 2027-06-23 | 601 |  | RGA -FINISHING | 7823232 |
| 603 | 40200.40300.40500.56200.57900.73900.908400 | FIRE FIGHTING | 6d | 2027-04-28 | 2027-05-03 | 301FS+30d |  | RGA -FINISHING | 7823242 |
| 604 | 40200.40300.40500.56200.57900.73900.908500 | INTERNAL PAINTING - PUTTY / PRIMER APPLICATION | 8d | 2027-07-14 | 2027-07-21 | 606 |  | RGA -FINISHING | 7823252 |
| 605 | 40200.40300.40500.56200.57900.73900.908600 | FLAT FLOORING | 10d | 2027-06-24 | 2027-07-03 | 602 |  | RGA -FINISHING | 7823262 |
| 606 | 40200.40300.40500.56200.57900.73900.908700 | WINDOW FIXING | 5d | 2027-07-09 | 2027-07-13 | 605FS+5d |  | RGA -FINISHING | 7823272 |
| 607 | 40200.40300.40500.56200.57900.73900.908800 | INTERNAL PAINTING - 1ST COAT | 4d | 2027-07-22 | 2027-07-25 | 604 |  | RGA -FINISHING | 7823282 |
| 608 | 40200.40300.40500.56200.57900.73900.908900 | INTERNAL DOOR FIXING | 15d | 2027-07-24 | 2027-08-07 | 607FS-2d |  | RGA -FINISHING | 7823292 |
| 609 | 40200.40300.40500.56200.57900.73900.909000 | WIRING & SWITCH PLATE FIXING | 8d | 2027-08-04 | 2027-08-11 | 608FS-4d |  | RGA -FINISHING | 7823302 |
| 610 | 40200.40300.40500.56200.57900.73900.909100 | TOILET FALSE CEILING | 7d | 2027-08-12 | 2027-08-18 | 609 |  | RGA -FINISHING | 7823312 |
| 611 | 40200.40300.40500.56200.57900.73900.909200 | MAIN DOOR FRAME SHUTTER FIXING | 6d | 2027-12-23 | 2027-12-28 | 853 |  | RGA -FINISHING | 7823322 |
| 612 | 40200.40300.40500.56200.57900.73900.909300 | FINAL COAT PAINT | 8d | 2027-12-29 | 2028-01-05 | 611 |  | RGA -FINISHING | 7823332 |

| ID | WBS | Task | Duration | Start | Finish | Predecessors | Constraint | Calendar | Unique_Task_ID |
| --- | --- | --- | --- | --- | --- | --- | --- | --- | --- |
| 613 | 40200.40300.40500.56200.57900.74000 | **19TH FLOOR** | 236d | 2027-05-15 | 2028-01-05 |  | start no earlier than 2027-05-15 | RGA -FINISHING | 7804322 |
| 614 | 40200.40300.40500.56200.57900.74000.909400 | TOILET DADO TILE FIXING | 10d | 2027-06-24 | 2027-07-03 | 309 |  | RGA -FINISHING | 7823342 |
| 615 | 40200.40300.40500.56200.57900.74000.909500 | TOILET FLOORING WORK | 7d | 2027-07-04 | 2027-07-10 | 614 |  | RGA -FINISHING | 7823352 |
| 616 | 40200.40300.40500.56200.57900.74000.909600 | FIRE FIGHTING | 6d | 2027-05-15 | 2027-05-20 | 308FS+30d |  | RGA -FINISHING | 7823362 |
| 617 | 40200.40300.40500.56200.57900.74000.909700 | INTERNAL PAINTING - PUTTY / PRIMER APPLICATION | 8d | 2027-07-31 | 2027-08-07 | 619 |  | RGA -FINISHING | 7823372 |
| 618 | 40200.40300.40500.56200.57900.74000.909800 | FLAT FLOORING | 10d | 2027-07-11 | 2027-07-20 | 615 |  | RGA -FINISHING | 7823382 |
| 619 | 40200.40300.40500.56200.57900.74000.909900 | WINDOW FIXING | 5d | 2027-07-26 | 2027-07-30 | 618FS+5d |  | RGA -FINISHING | 7823392 |
| 620 | 40200.40300.40500.56200.57900.74000.910000 | INTERNAL PAINTING - 1ST COAT | 4d | 2027-08-08 | 2027-08-11 | 617 |  | RGA -FINISHING | 7823402 |
| 621 | 40200.40300.40500.56200.57900.74000.910100 | INTERNAL DOOR FIXING | 15d | 2027-08-14 | 2027-08-28 | 620FS+2d |  | RGA -FINISHING | 7823412 |
| 622 | 40200.40300.40500.56200.57900.74000.910200 | WIRING & SWITCH PLATE FIXING | 8d | 2027-08-25 | 2027-09-01 | 621FS-4d |  | RGA -FINISHING | 7823422 |
| 623 | 40200.40300.40500.56200.57900.74000.910300 | TOILET FALSE CEILING | 7d | 2027-09-02 | 2027-09-08 | 622 |  | RGA -FINISHING | 7823432 |
| 624 | 40200.40300.40500.56200.57900.74000.910400 | MAIN DOOR FRAME SHUTTER FIXING | 6d | 2027-12-23 | 2027-12-28 | 861 |  | RGA -FINISHING | 7823442 |
| 625 | 40200.40300.40500.56200.57900.74000.910500 | FINAL COAT PAINT | 8d | 2027-12-29 | 2028-01-05 | 624 |  | RGA -FINISHING | 7823452 |
| 626 | 40200.40300.40500.56200.57900.74100 | **20TH FLOOR** | 219d | 2027-06-01 | 2028-01-05 |  | start no earlier than 2027-06-01 | RGA -FINISHING | 7804312 |
| 627 | 40200.40300.40500.56200.57900.74100.910600 | TOILET DADO TILE FIXING | 10d | 2027-07-11 | 2027-07-20 | 316 |  | RGA -FINISHING | 7823462 |
| 628 | 40200.40300.40500.56200.57900.74100.910700 | TOILET FLOORING WORK | 7d | 2027-07-21 | 2027-07-27 | 627 |  | RGA -FINISHING | 7823472 |
| 629 | 40200.40300.40500.56200.57900.74100.910800 | FIRE FIGHTING | 6d | 2027-06-01 | 2027-06-06 | 315FS+30d |  | RGA -FINISHING | 7823482 |
| 630 | 40200.40300.40500.56200.57900.74100.910900 | INTERNAL PAINTING - PUTTY / PRIMER APPLICATION | 8d | 2027-08-17 | 2027-08-24 | 632 |  | RGA -FINISHING | 7823492 |
| 631 | 40200.40300.40500.56200.57900.74100.911000 | FLAT FLOORING | 10d | 2027-07-28 | 2027-08-06 | 628 |  | RGA -FINISHING | 7823502 |
| 632 | 40200.40300.40500.56200.57900.74100.911100 | WINDOW FIXING | 5d | 2027-08-12 | 2027-08-16 | 631FS+5d |  | RGA -FINISHING | 7823512 |
| 633 | 40200.40300.40500.56200.57900.74100.911200 | INTERNAL PAINTING - 1ST COAT | 4d | 2027-08-25 | 2027-08-28 | 630 |  | RGA -FINISHING | 7823522 |
| 634 | 40200.40300.40500.56200.57900.74100.911300 | INTERNAL DOOR FIXING | 15d | 2027-08-27 | 2027-09-10 | 633FS-2d |  | RGA -FINISHING | 7823532 |
| 635 | 40200.40300.40500.56200.57900.74100.911400 | WIRING & SWITCH PLATE FIXING | 8d | 2027-09-07 | 2027-09-14 | 634FS-4d |  | RGA -FINISHING | 7823542 |
| 636 | 40200.40300.40500.56200.57900.74100.911500 | TOILET FALSE CEILING | 7d | 2027-09-15 | 2027-09-21 | 635 |  | RGA -FINISHING | 7823552 |
| 637 | 40200.40300.40500.56200.57900.74100.911600 | MAIN DOOR FRAME SHUTTER FIXING | 6d | 2027-12-23 | 2027-12-28 | 869 |  | RGA -FINISHING | 7823562 |
| 638 | 40200.40300.40500.56200.57900.74100.911700 | FINAL COAT PAINT | 8d | 2027-12-29 | 2028-01-05 | 637 |  | RGA -FINISHING | 7823572 |

| ID | WBS | Task | Duration | Start | Finish | Predecessors | Constraint | Calendar | Unique_Task_ID |
| --- | --- | --- | --- | --- | --- | --- | --- | --- | --- |
| 639 | 40200.40300.40500.56200.57900.74200 | **21TH FLOOR** | 202d | 2027-06-18 | 2028-01-05 |  | start no earlier than 2027-06-18 | RGA -FINISHING | 7804302 |
| 640 | 40200.40300.40500.56200.57900.74200.911800 | TOILET DADO TILE FIXING | 10d | 2027-07-28 | 2027-08-06 | 323 |  | RGA -FINISHING | 7823582 |
| 641 | 40200.40300.40500.56200.57900.74200.911900 | TOILET FLOORING WORK | 7d | 2027-08-07 | 2027-08-13 | 640 |  | RGA -FINISHING | 7823592 |
| 642 | 40200.40300.40500.56200.57900.74200.912000 | FIRE FIGHTING | 6d | 2027-06-18 | 2027-06-23 | 322FS+30d |  | RGA -FINISHING | 7823602 |
| 643 | 40200.40300.40500.56200.57900.74200.912100 | INTERNAL PAINTING - PUTTY / PRIMER APPLICATION | 8d | 2027-09-03 | 2027-09-10 | 645 |  | RGA -FINISHING | 7823612 |
| 644 | 40200.40300.40500.56200.57900.74200.912200 | FLAT FLOORING | 10d | 2027-08-14 | 2027-08-23 | 641 |  | RGA -FINISHING | 7823622 |
| 645 | 40200.40300.40500.56200.57900.74200.912300 | WINDOW FIXING | 5d | 2027-08-29 | 2027-09-02 | 644FS+5d |  | RGA -FINISHING | 7823632 |
| 646 | 40200.40300.40500.56200.57900.74200.912400 | INTERNAL PAINTING - 1ST COAT | 4d | 2027-09-11 | 2027-09-14 | 643 |  | RGA -FINISHING | 7823642 |
| 647 | 40200.40300.40500.56200.57900.74200.912500 | INTERNAL DOOR FIXING | 15d | 2027-09-13 | 2027-09-27 | 646FS-2d |  | RGA -FINISHING | 7823652 |
| 648 | 40200.40300.40500.56200.57900.74200.912600 | WIRING & SWITCH PLATE FIXING | 8d | 2027-09-24 | 2027-10-01 | 647FS-4d |  | RGA -FINISHING | 7823662 |
| 649 | 40200.40300.40500.56200.57900.74200.912700 | TOILET FALSE CEILING | 7d | 2027-10-02 | 2027-10-08 | 648 |  | RGA -FINISHING | 7823672 |
| 650 | 40200.40300.40500.56200.57900.74200.912800 | MAIN DOOR FRAME SHUTTER FIXING | 6d | 2027-12-23 | 2027-12-28 | 877 |  | RGA -FINISHING | 7823682 |
| 651 | 40200.40300.40500.56200.57900.74200.912900 | FINAL COAT PAINT | 8d | 2027-12-29 | 2028-01-05 | 650 |  | RGA -FINISHING | 7823692 |
| 652 | 40200.40300.40500.56200.57900.74300 | **22TH FLOOR** | 188d | 2027-07-05 | 2028-01-08 |  | start no earlier than 2027-07-05 | RGA -FINISHING | 7804292 |
| 653 | 40200.40300.40500.56200.57900.74300.913000 | TOILET DADO TILE FIXING | 10d | 2027-08-14 | 2027-08-23 | 330 |  | RGA -FINISHING | 7823702 |
| 654 | 40200.40300.40500.56200.57900.74300.913100 | TOILET FLOORING WORK | 7d | 2027-08-24 | 2027-08-30 | 653 |  | RGA -FINISHING | 7823712 |
| 655 | 40200.40300.40500.56200.57900.74300.913200 | FIRE FIGHTING | 6d | 2027-07-05 | 2027-07-10 | 329FS+30d |  | RGA -FINISHING | 7823722 |
| 656 | 40200.40300.40500.56200.57900.74300.913300 | INTERNAL PAINTING - PUTTY / PRIMER APPLICATION | 8d | 2027-09-25 | 2027-10-02 | 658 |  | RGA -FINISHING | 7823732 |
| 657 | 40200.40300.40500.56200.57900.74300.913400 | FLAT FLOORING | 15d | 2027-08-31 | 2027-09-14 | 654 |  | RGA -FINISHING | 7823742 |
| 658 | 40200.40300.40500.56200.57900.74300.913500 | WINDOW FIXING | 5d | 2027-09-20 | 2027-09-24 | 657FS+5d |  | RGA -FINISHING | 7823752 |
| 659 | 40200.40300.40500.56200.57900.74300.913600 | INTERNAL PAINTING - 1ST COAT | 4d | 2027-10-03 | 2027-10-06 | 656 |  | RGA -FINISHING | 7823762 |
| 660 | 40200.40300.40500.56200.57900.74300.913700 | INTERNAL DOOR FIXING | 15d | 2027-10-05 | 2027-10-19 | 659FS-2d |  | RGA -FINISHING | 7823772 |
| 661 | 40200.40300.40500.56200.57900.74300.913800 | WIRING & SWITCH PLATE FIXING | 8d | 2027-10-16 | 2027-10-23 | 660FS-4d |  | RGA -FINISHING | 7823782 |
| 662 | 40200.40300.40500.56200.57900.74300.913900 | TOILET FALSE CEILING | 7d | 2027-10-24 | 2027-10-30 | 661 |  | RGA -FINISHING | 7823792 |
| 663 | 40200.40300.40500.56200.57900.74300.914000 | MAIN DOOR FRAME SHUTTER FIXING | 6d | 2027-12-26 | 2027-12-31 | 885 |  | RGA -FINISHING | 7823802 |
| 664 | 40200.40300.40500.56200.57900.74300.914100 | FINAL COAT PAINT | 8d | 2028-01-01 | 2028-01-08 | 663 |  | RGA -FINISHING | 7823812 |

| ID | WBS | Task | Duration | Start | Finish | Predecessors | Constraint | Calendar | Unique_Task_ID |
| --- | --- | --- | --- | --- | --- | --- | --- | --- | --- |
| 665 | 40200.40300.40500.56200.57900.74400 | **23TH FLOOR** | 181d | 2027-07-12 | 2028-01-08 |  | start no earlier than 2027-07-12 | RGA -FINISHING | 7804282 |
| 666 | 40200.40300.40500.56200.57900.74400.914200 | TOILET DADO TILE FIXING | 10d | 2027-08-21 | 2027-08-30 | 337 |  | RGA -FINISHING | 7823822 |
| 667 | 40200.40300.40500.56200.57900.74400.914300 | TOILET FLOORING WORK | 7d | 2027-08-31 | 2027-09-06 | 666 |  | RGA -FINISHING | 7823832 |
| 668 | 40200.40300.40500.56200.57900.74400.914400 | FIRE FIGHTING | 6d | 2027-07-12 | 2027-07-17 | 336FS+20d |  | RGA -FINISHING | 7823842 |
| 669 | 40200.40300.40500.56200.57900.74400.914500 | INTERNAL PAINTING - PUTTY / PRIMER APPLICATION | 8d | 2027-10-02 | 2027-10-09 | 671 |  | RGA -FINISHING | 7823852 |
| 670 | 40200.40300.40500.56200.57900.74400.914600 | FLAT FLOORING | 15d | 2027-09-07 | 2027-09-21 | 667 |  | RGA -FINISHING | 7823862 |
| 671 | 40200.40300.40500.56200.57900.74400.914700 | WINDOW FIXING | 5d | 2027-09-27 | 2027-10-01 | 670FS+5d |  | RGA -FINISHING | 7823872 |
| 672 | 40200.40300.40500.56200.57900.74400.914800 | INTERNAL PAINTING - 1ST COAT | 4d | 2027-10-10 | 2027-10-13 | 669 |  | RGA -FINISHING | 7823882 |
| 673 | 40200.40300.40500.56200.57900.74400.914900 | INTERNAL DOOR FIXING | 15d | 2027-10-12 | 2027-10-26 | 672FS-2d |  | RGA -FINISHING | 7823892 |
| 674 | 40200.40300.40500.56200.57900.74400.915000 | WIRING & SWITCH PLATE FIXING | 8d | 2027-10-23 | 2027-10-30 | 673FS-4d |  | RGA -FINISHING | 7823902 |
| 675 | 40200.40300.40500.56200.57900.74400.915100 | TOILET FALSE CEILING | 7d | 2027-10-31 | 2027-11-06 | 674 |  | RGA -FINISHING | 7823912 |
| 676 | 40200.40300.40500.56200.57900.74400.915200 | MAIN DOOR FRAME SHUTTER FIXING | 6d | 2027-12-26 | 2027-12-31 | 893 |  | RGA -FINISHING | 7823922 |
| 677 | 40200.40300.40500.56200.57900.74400.915300 | FINAL COAT PAINT | 8d | 2028-01-01 | 2028-01-08 | 676 |  | RGA -FINISHING | 7823932 |
| 678 | 40200.40300.40500.56200.57900.74500 | **24TH FLOOR** | 164d | 2027-07-29 | 2028-01-08 |  | start no earlier than 2027-07-29 | RGA -FINISHING | 7804272 |
| 679 | 40200.40300.40500.56200.57900.74500.915400 | TOILET DADO TILE FIXING | 10d | 2027-09-07 | 2027-09-16 | 344 |  | RGA -FINISHING | 7823942 |
| 680 | 40200.40300.40500.56200.57900.74500.915500 | TOILET FLOORING WORK | 7d | 2027-09-17 | 2027-09-23 | 679 |  | RGA -FINISHING | 7823952 |
| 681 | 40200.40300.40500.56200.57900.74500.915600 | FIRE FIGHTING | 6d | 2027-07-29 | 2027-08-03 | 343FS+20d |  | RGA -FINISHING | 7823962 |
| 682 | 40200.40300.40500.56200.57900.74500.915700 | INTERNAL PAINTING - PUTTY / PRIMER APPLICATION | 8d | 2027-10-23 | 2027-10-30 | 684 |  | RGA -FINISHING | 7823972 |
| 683 | 40200.40300.40500.56200.57900.74500.915800 | FLAT FLOORING | 19d | 2027-09-24 | 2027-10-12 | 680 |  | RGA -FINISHING | 7823982 |
| 684 | 40200.40300.40500.56200.57900.74500.915900 | WINDOW FIXING | 5d | 2027-10-18 | 2027-10-22 | 683FS+5d |  | RGA -FINISHING | 7823992 |
| 685 | 40200.40300.40500.56200.57900.74500.916000 | INTERNAL PAINTING - 1ST COAT | 4d | 2027-10-31 | 2027-11-03 | 682 |  | RGA -FINISHING | 7824002 |
| 686 | 40200.40300.40500.56200.57900.74500.916100 | INTERNAL DOOR FIXING | 15d | 2027-11-02 | 2027-11-16 | 685FS-2d |  | RGA -FINISHING | 7824012 |
| 687 | 40200.40300.40500.56200.57900.74500.916200 | WIRING & SWITCH PLATE FIXING | 8d | 2027-11-15 | 2027-11-22 | 686FS-2d |  | RGA -FINISHING | 7824022 |
| 688 | 40200.40300.40500.56200.57900.74500.916300 | TOILET FALSE CEILING | 7d | 2027-11-23 | 2027-11-29 | 687 |  | RGA -FINISHING | 7824032 |
| 689 | 40200.40300.40500.56200.57900.74500.916400 | MAIN DOOR FRAME SHUTTER FIXING | 6d | 2027-12-26 | 2027-12-31 | 901 |  | RGA -FINISHING | 7824042 |
| 690 | 40200.40300.40500.56200.57900.74500.916500 | FINAL COAT PAINT | 8d | 2028-01-01 | 2028-01-08 | 689 |  | RGA -FINISHING | 7824052 |

| ID | WBS | Task | Duration | Start | Finish | Predecessors | Constraint | Calendar | Unique_Task_ID |
| --- | --- | --- | --- | --- | --- | --- | --- | --- | --- |
| 691 | 40200.40300.40500.56200.57900.74600 | **25TH FLOOR** | 145d | 2027-08-17 | 2028-01-08 |  | start no earlier than 2027-08-17 | RGA -FINISHING | 7804262 |
| 692 | 40200.40300.40500.56200.57900.74600.916600 | TOILET DADO TILE FIXING | 10d | 2027-09-26 | 2027-10-05 | 351 |  | RGA -FINISHING | 7824062 |
| 693 | 40200.40300.40500.56200.57900.74600.916700 | TOILET FLOORING WORK | 7d | 2027-10-06 | 2027-10-12 | 692 |  | RGA -FINISHING | 7824072 |
| 694 | 40200.40300.40500.56200.57900.74600.916800 | FIRE FIGHTING | 6d | 2027-08-17 | 2027-08-22 | 350FS+10d |  | RGA -FINISHING | 7824082 |
| 695 | 40200.40300.40500.56200.57900.74600.916900 | INTERNAL PAINTING - PUTTY / PRIMER APPLICATION | 8d | 2027-11-13 | 2027-11-20 | 697 |  | RGA -FINISHING | 7824092 |
| 696 | 40200.40300.40500.56200.57900.74600.917000 | FLAT FLOORING | 21d | 2027-10-13 | 2027-11-02 | 693 |  | RGA -FINISHING | 7824102 |
| 697 | 40200.40300.40500.56200.57900.74600.917100 | WINDOW FIXING | 5d | 2027-11-08 | 2027-11-12 | 696FS+5d |  | RGA -FINISHING | 7824112 |
| 698 | 40200.40300.40500.56200.57900.74600.917200 | INTERNAL PAINTING - 1ST COAT | 4d | 2027-11-21 | 2027-11-24 | 695 |  | RGA -FINISHING | 7824122 |
| 699 | 40200.40300.40500.56200.57900.74600.917300 | INTERNAL DOOR FIXING | 15d | 2027-11-23 | 2027-12-07 | 698FS-2d |  | RGA -FINISHING | 7824132 |
| 700 | 40200.40300.40500.56200.57900.74600.917400 | WIRING & SWITCH PLATE FIXING | 8d | 2027-12-04 | 2027-12-11 | 699FS-4d |  | RGA -FINISHING | 7824142 |
| 701 | 40200.40300.40500.56200.57900.74600.917500 | TOILET FALSE CEILING | 7d | 2027-12-12 | 2027-12-18 | 700 |  | RGA -FINISHING | 7824152 |
| 702 | 40200.40300.40500.56200.57900.74600.917600 | MAIN DOOR FRAME SHUTTER FIXING | 6d | 2027-12-26 | 2027-12-31 | 909 |  | RGA -FINISHING | 7824162 |
| 703 | 40200.40300.40500.56200.57900.74600.917700 | FINAL COAT PAINT | 8d | 2028-01-01 | 2028-01-08 | 702 |  | RGA -FINISHING | 7824172 |
| 704 | 40200.40300.40500.56200.60500 | **LIFT LOBBY & STAIRCASE FINISHING WORK** | 643d | 2026-04-16 | 2028-01-18 |  | start no earlier than 2026-04-16 | RGA -FINISHING | 7803522 |
| 705 | 40200.40300.40500.56200.60500.169400 | **GROUND FLOOR** | 620d | 2026-04-16 | 2027-12-26 |  | start no earlier than 2026-04-16 | RGA -FINISHING | 7805972 |
| 706 | 40200.40300.40500.56200.60500.169400.917800 | FIRE FIGHTING | 5d | 2026-04-16 | 2026-04-20 | 369FS-5d |  | RGA -FINISHING | 7824442 |
| 707 | 40200.40300.40500.56200.60500.169400.917900 | LIFT BLOCK WORK | 3d | 2027-06-20 | 2027-06-22 | 171SS |  | RGA -FINISHING | 7824452 |
| 708 | 40200.40300.40500.56200.60500.169400.918000 | LIFT DADO WORK | 3d | 2027-12-01 | 2027-12-03 | 916 |  | RGA -FINISHING | 7824462 |
| 709 | 40200.40300.40500.56200.60500.169400.918100 | LOBBY FLOORING WORK | 4d | 2027-12-04 | 2027-12-07 | 708 |  | RGA -FINISHING | 7824472 |
| 710 | 40200.40300.40500.56200.60500.169400.918200 | ELECTRICAL WIRING & SWITCH PLATE FIXING WORK | 6d | 2027-12-08 | 2027-12-13 | 709 |  | RGA -FINISHING | 7824482 |
| 711 | 40200.40300.40500.56200.60500.169400.918300 | False ceiling & 1ST COAT PAINTING | 10d | 2027-12-14 | 2027-12-23 | 710 |  | RGA -FINISHING | 7824492 |
| 712 | 40200.40300.40500.56200.60500.169400.918400 | CLEANING | 3d | 2027-12-24 | 2027-12-26 | 711 |  | RGA -FINISHING | 7824502 |
| 713 | 40200.40300.40500.56200.60500.169500 | **1ST FLOOR** | 615d | 2026-04-26 | 2027-12-31 |  | start no earlier than 2026-04-26 | RGA -FINISHING | 7805962 |
| 714 | 40200.40300.40500.56200.60500.169500.918500 | FIRE FIGHTING | 10d | 2026-04-26 | 2026-05-05 | 182FS-5d |  | RGA -FINISHING | 7824512 |
| 715 | 40200.40300.40500.56200.60500.169500.918600 | LIFT BLOCK WORK | 3d | 2027-06-20 | 2027-06-22 | 707SS |  | RGA -FINISHING | 7824522 |
| 716 | 40200.40300.40500.56200.60500.169500.918700 | LIFT DADO WORK | 3d | 2027-12-01 | 2027-12-03 | 708SS |  | RGA -FINISHING | 7824532 |
| 717 | 40200.40300.40500.56200.60500.169500.918800 | LOBBY FLOORING WORK | 4d | 2027-12-04 | 2027-12-07 | 716 |  | RGA -FINISHING | 7824542 |
| 718 | 40200.40300.40500.56200.60500.169500.918900 | ELECTRICAL WIRING & SWITCH PLATE FIXING WORK | 6d | 2027-12-08 | 2027-12-13 | 717 |  | RGA -FINISHING | 7824552 |
| 719 | 40200.40300.40500.56200.60500.169500.919000 | False ceiling & 1ST COAT PAINTING | 15d | 2027-12-14 | 2027-12-28 | 718 |  | RGA -FINISHING | 7824562 |
| 720 | 40200.40300.40500.56200.60500.169500.919100 | CLEANING | 3d | 2027-12-29 | 2027-12-31 | 719 |  | RGA -FINISHING | 7824572 |

Notes:
- 704: Completion in 12 months post last RCC
- 706: Assumed
- 714: Assumed

| ID | WBS | Task | Duration | Start | Finish | Predecessors | Constraint | Calendar | Unique_Task_ID |
| --- | --- | --- | --- | --- | --- | --- | --- | --- | --- |
| 721 | 40200.40300.40500.56200.60500.169600 | **2nd FLOOR** | 550d | 2026-06-30 | 2027-12-31 |  | start no earlier than 2026-06-30 | RGA -FINISHING | 7805952 |
| 722 | 40200.40300.40500.56200.60500.169600.919200 | FIRE FIGHTING | 10d | 2026-06-30 | 2026-07-09 | 395FS-5d |  | RGA -FINISHING | 7824582 |
| 723 | 40200.40300.40500.56200.60500.169600.919300 | LIFT BLOCK WORK | 3d | 2027-06-20 | 2027-06-22 | 715SS |  | RGA -FINISHING | 7824592 |
| 724 | 40200.40300.40500.56200.60500.169600.919400 | LIFT DADO WORK | 3d | 2027-12-01 | 2027-12-03 | 716SS |  | RGA -FINISHING | 7824602 |
| 725 | 40200.40300.40500.56200.60500.169600.919500 | LOBBY FLOORING WORK | 4d | 2027-12-04 | 2027-12-07 | 724 |  | RGA -FINISHING | 7824612 |
| 726 | 40200.40300.40500.56200.60500.169600.919600 | ELECTRICAL WIRING & SWITCH PLATE FIXING WORK | 6d | 2027-12-08 | 2027-12-13 | 725 |  | RGA -FINISHING | 7824622 |
| 727 | 40200.40300.40500.56200.60500.169600.919700 | False ceiling & 1ST COAT PAINTING | 15d | 2027-12-14 | 2027-12-28 | 726 |  | RGA -FINISHING | 7824632 |
| 728 | 40200.40300.40500.56200.60500.169600.919800 | CLEANING | 3d | 2027-12-29 | 2027-12-31 | 727 |  | RGA -FINISHING | 7824642 |
| 729 | 40200.40300.40500.56200.60500.169700 | **3rd FLOOR** | 536d | 2026-07-17 | 2028-01-03 |  | start no earlier than 2026-07-17 | RGA -FINISHING | 7805942 |
| 730 | 40200.40300.40500.56200.60500.169700.919900 | FIRE FIGHTING | 10d | 2026-07-17 | 2026-07-26 | 408FS-5d |  | RGA -FINISHING | 7824652 |
| 731 | 40200.40300.40500.56200.60500.169700.920000 | LIFT BLOCK WORK | 3d | 2027-06-23 | 2027-06-25 | 723 |  | RGA -FINISHING | 7824662 |
| 732 | 40200.40300.40500.56200.60500.169700.920100 | LIFT DADO WORK | 3d | 2027-12-04 | 2027-12-06 | 724 |  | RGA -FINISHING | 7824672 |
| 733 | 40200.40300.40500.56200.60500.169700.920200 | LOBBY FLOORING WORK | 4d | 2027-12-07 | 2027-12-10 | 732 |  | RGA -FINISHING | 7824682 |
| 734 | 40200.40300.40500.56200.60500.169700.920300 | ELECTRICAL WIRING & SWITCH PLATE FIXING WORK | 6d | 2027-12-11 | 2027-12-16 | 733 |  | RGA -FINISHING | 7824692 |
| 735 | 40200.40300.40500.56200.60500.169700.920400 | False ceiling & 1ST COAT PAINTING | 15d | 2027-12-17 | 2027-12-31 | 734 |  | RGA -FINISHING | 7824702 |
| 736 | 40200.40300.40500.56200.60500.169700.920500 | CLEANING | 3d | 2028-01-01 | 2028-01-03 | 735 |  | RGA -FINISHING | 7824712 |
| 737 | 40200.40300.40500.56200.60500.169800 | **4th FLOOR** | 513.5d | 2026-08-08 | 2028-01-03 |  | start no earlier than 2026-08-08 | RGA -FINISHING | 7805932 |
| 738 | 40200.40300.40500.56200.60500.169800.920600 | FIRE FIGHTING | 10d | 2026-08-08 | 2026-08-18 | 421FS-5d |  | RGA -FINISHING | 7824722 |
| 739 | 40200.40300.40500.56200.60500.169800.920700 | LIFT BLOCK WORK | 3d | 2027-06-23 | 2027-06-25 | 731SS |  | RGA -FINISHING | 7824732 |
| 740 | 40200.40300.40500.56200.60500.169800.920800 | LIFT DADO WORK | 3d | 2027-12-04 | 2027-12-06 | 732SS |  | RGA -FINISHING | 7824742 |
| 741 | 40200.40300.40500.56200.60500.169800.920900 | LOBBY FLOORING WORK | 4d | 2027-12-07 | 2027-12-10 | 740 |  | RGA -FINISHING | 7824752 |
| 742 | 40200.40300.40500.56200.60500.169800.921000 | ELECTRICAL WIRING & SWITCH PLATE FIXING WORK | 6d | 2027-12-11 | 2027-12-16 | 741 |  | RGA -FINISHING | 7824762 |
| 743 | 40200.40300.40500.56200.60500.169800.921100 | False ceiling & 1ST COAT PAINTING | 15d | 2027-12-17 | 2027-12-31 | 742 |  | RGA -FINISHING | 7824772 |
| 744 | 40200.40300.40500.56200.60500.169800.921200 | CLEANING | 3d | 2028-01-01 | 2028-01-03 | 743 |  | RGA -FINISHING | 7824782 |

Notes:
- 722: Assumed
- 730: Assumed
- 738: Assumed

| ID | WBS | Task | Duration | Start | Finish | Predecessors | Constraint | Calendar | Unique_Task_ID |
| --- | --- | --- | --- | --- | --- | --- | --- | --- | --- |
| 745 | 40200.40300.40500.56200.60500.169900 | **5th FLOOR** | 493d | 2026-08-29 | 2028-01-03 |  | start no earlier than 2026-08-29 | RGA -FINISHING | 7805922 |
| 746 | 40200.40300.40500.56200.60500.169900.921300 | FIRE FIGHTING | 10d | 2026-08-29 | 2026-09-07 | 434FS-5d |  | RGA -FINISHING | 7824792 |
| 747 | 40200.40300.40500.56200.60500.169900.921400 | LIFT BLOCK WORK | 3d | 2027-06-23 | 2027-06-25 | 739SS |  | RGA -FINISHING | 7824802 |
| 748 | 40200.40300.40500.56200.60500.169900.921500 | LIFT DADO WORK | 3d | 2027-12-04 | 2027-12-06 | 740SS |  | RGA -FINISHING | 7824812 |
| 749 | 40200.40300.40500.56200.60500.169900.921600 | LOBBY FLOORING WORK | 4d | 2027-12-07 | 2027-12-10 | 748 |  | RGA -FINISHING | 7824822 |
| 750 | 40200.40300.40500.56200.60500.169900.921700 | ELECTRICAL WIRING & SWITCH PLATE FIXING WORK | 6d | 2027-12-11 | 2027-12-16 | 749 |  | RGA -FINISHING | 7824832 |
| 751 | 40200.40300.40500.56200.60500.169900.921800 | False ceiling & 1ST COAT PAINTING | 15d | 2027-12-17 | 2027-12-31 | 750 |  | RGA -FINISHING | 7824842 |
| 752 | 40200.40300.40500.56200.60500.169900.921900 | CLEANING | 3d | 2028-01-01 | 2028-01-03 | 751 |  | RGA -FINISHING | 7824852 |
| 753 | 40200.40300.40500.56200.60500.170000 | **6th FLOOR** | 474d | 2026-09-20 | 2028-01-06 |  | start no earlier than 2026-09-20 | RGA -FINISHING | 7805912 |
| 754 | 40200.40300.40500.56200.60500.170000.922000 | FIRE FIGHTING | 10d | 2026-09-20 | 2026-09-29 | 447FS-5d |  | RGA -FINISHING | 7824862 |
| 755 | 40200.40300.40500.56200.60500.170000.922100 | LIFT BLOCK WORK | 3d | 2027-06-26 | 2027-06-28 | 747 |  | RGA -FINISHING | 7824872 |
| 756 | 40200.40300.40500.56200.60500.170000.922200 | LIFT DADO WORK | 3d | 2027-12-07 | 2027-12-09 | 748 |  | RGA -FINISHING | 7824882 |
| 757 | 40200.40300.40500.56200.60500.170000.922300 | LOBBY FLOORING WORK | 4d | 2027-12-10 | 2027-12-13 | 756 |  | RGA -FINISHING | 7824892 |
| 758 | 40200.40300.40500.56200.60500.170000.922400 | ELECTRICAL WIRING & SWITCH PLATE FIXING WORK | 6d | 2027-12-14 | 2027-12-19 | 757 |  | RGA -FINISHING | 7824902 |
| 759 | 40200.40300.40500.56200.60500.170000.922500 | False ceiling & 1ST COAT PAINTING | 15d | 2027-12-20 | 2028-01-03 | 758 |  | RGA -FINISHING | 7824912 |
| 760 | 40200.40300.40500.56200.60500.170000.922600 | CLEANING | 3d | 2028-01-04 | 2028-01-06 | 759 |  | RGA -FINISHING | 7824922 |
| 761 | 40200.40300.40500.56200.60500.170100 | **7th FLOOR** | 455d | 2026-10-09 | 2028-01-06 |  | start no earlier than 2026-10-09 | RGA -FINISHING | 7805902 |
| 762 | 40200.40300.40500.56200.60500.170100.922700 | FIRE FIGHTING | 10d | 2026-10-09 | 2026-10-18 | 460FS-5d |  | RGA -FINISHING | 7824932 |
| 763 | 40200.40300.40500.56200.60500.170100.922800 | LIFT BLOCK WORK | 3d | 2027-06-26 | 2027-06-28 | 755SS |  | RGA -FINISHING | 7824942 |
| 764 | 40200.40300.40500.56200.60500.170100.922900 | LIFT DADO WORK | 3d | 2027-12-07 | 2027-12-09 | 756SS |  | RGA -FINISHING | 7824952 |
| 765 | 40200.40300.40500.56200.60500.170100.923000 | LOBBY FLOORING WORK | 4d | 2027-12-10 | 2027-12-13 | 764 |  | RGA -FINISHING | 7824962 |
| 766 | 40200.40300.40500.56200.60500.170100.923100 | ELECTRICAL WIRING & SWITCH PLATE FIXING WORK | 6d | 2027-12-14 | 2027-12-19 | 765 |  | RGA -FINISHING | 7824972 |
| 767 | 40200.40300.40500.56200.60500.170100.923200 | False ceiling & 1ST COAT PAINTING | 15d | 2027-12-20 | 2028-01-03 | 766 |  | RGA -FINISHING | 7824982 |
| 768 | 40200.40300.40500.56200.60500.170100.923300 | CLEANING | 3d | 2028-01-04 | 2028-01-06 | 767 |  | RGA -FINISHING | 7824992 |

Notes:
- 746: Assumed
- 754: Assumed
- 762: Assumed

| ID | WBS | Task | Duration | Start | Finish | Predecessors | Constraint | Calendar | Unique_Task_ID |
| --- | --- | --- | --- | --- | --- | --- | --- | --- | --- |
| 769 | 40200.40300.40500.56200.60500.170200 | **8th FLOOR** | 439d | 2026-10-25 | 2028-01-06 |  | start no earlier than 2026-10-25 | RGA -FINISHING | 7805892 |
| 770 | 40200.40300.40500.56200.60500.170200.923400 | FIRE FIGHTING | 10d | 2026-10-25 | 2026-11-03 | 473FS-5d |  | RGA -FINISHING | 7825002 |
| 771 | 40200.40300.40500.56200.60500.170200.923500 | LIFT BLOCK WORK | 3d | 2027-06-26 | 2027-06-28 | 763SS |  | RGA -FINISHING | 7825012 |
| 772 | 40200.40300.40500.56200.60500.170200.923600 | LIFT DADO WORK | 3d | 2027-12-07 | 2027-12-09 | 764SS |  | RGA -FINISHING | 7825022 |
| 773 | 40200.40300.40500.56200.60500.170200.923700 | LOBBY FLOORING WORK | 4d | 2027-12-10 | 2027-12-13 | 772 |  | RGA -FINISHING | 7825032 |
| 774 | 40200.40300.40500.56200.60500.170200.923800 | ELECTRICAL WIRING & SWITCH PLATE FIXING WORK | 6d | 2027-12-14 | 2027-12-19 | 773 |  | RGA -FINISHING | 7825042 |
| 775 | 40200.40300.40500.56200.60500.170200.923900 | False ceiling & 1ST COAT PAINTING | 15d | 2027-12-20 | 2028-01-03 | 774 |  | RGA -FINISHING | 7825052 |
| 776 | 40200.40300.40500.56200.60500.170200.924000 | CLEANING | 3d | 2028-01-04 | 2028-01-06 | 775 |  | RGA -FINISHING | 7825062 |
| 777 | 40200.40300.40500.56200.60500.170300 | **9th FLOOR** | 415d | 2026-11-18 | 2028-01-06 |  | start no earlier than 2026-11-18 | RGA -FINISHING | 7805882 |
| 778 | 40200.40300.40500.56200.60500.170300.924100 | FIRE FIGHTING | 10d | 2026-11-18 | 2026-11-27 | 486 |  | RGA -FINISHING | 7825072 |
| 779 | 40200.40300.40500.56200.60500.170300.924200 | LIFT BLOCK WORK | 3d | 2027-06-26 | 2027-06-28 | 771SS |  | RGA -FINISHING | 7825082 |
| 780 | 40200.40300.40500.56200.60500.170300.924300 | LIFT DADO WORK | 3d | 2027-12-07 | 2027-12-09 | 772SS |  | RGA -FINISHING | 7825092 |
| 781 | 40200.40300.40500.56200.60500.170300.924400 | LOBBY FLOORING WORK | 4d | 2027-12-10 | 2027-12-13 | 780 |  | RGA -FINISHING | 7825102 |
| 782 | 40200.40300.40500.56200.60500.170300.924500 | ELECTRICAL WIRING & SWITCH PLATE FIXING WORK | 6d | 2027-12-14 | 2027-12-19 | 781 |  | RGA -FINISHING | 7825112 |
| 783 | 40200.40300.40500.56200.60500.170300.924600 | False ceiling & 1ST COAT PAINTING | 15d | 2027-12-20 | 2028-01-03 | 782 |  | RGA -FINISHING | 7825122 |
| 784 | 40200.40300.40500.56200.60500.170300.924700 | CLEANING | 3d | 2028-01-04 | 2028-01-06 | 783 |  | RGA -FINISHING | 7825132 |
| 785 | 40200.40300.40500.56200.60500.170400 | **10th FLOOR** | 406d | 2026-11-30 | 2028-01-09 |  | start no earlier than 2026-11-30 | RGA -FINISHING | 7805872 |
| 786 | 40200.40300.40500.56200.60500.170400.924800 | FIRE FIGHTING | 10d | 2026-11-30 | 2026-12-09 | 499FS-5d |  | RGA -FINISHING | 7825142 |
| 787 | 40200.40300.40500.56200.60500.170400.924900 | LIFT BLOCK WORK | 3d | 2027-06-29 | 2027-07-01 | 779 |  | RGA -FINISHING | 7825152 |
| 788 | 40200.40300.40500.56200.60500.170400.925000 | LIFT DADO WORK | 3d | 2027-12-10 | 2027-12-12 | 780 |  | RGA -FINISHING | 7825162 |
| 789 | 40200.40300.40500.56200.60500.170400.925100 | LOBBY FLOORING WORK | 4d | 2027-12-13 | 2027-12-16 | 788 |  | RGA -FINISHING | 7825172 |
| 790 | 40200.40300.40500.56200.60500.170400.925200 | ELECTRICAL WIRING & SWITCH PLATE FIXING WORK | 6d | 2027-12-17 | 2027-12-22 | 789 |  | RGA -FINISHING | 7825182 |
| 791 | 40200.40300.40500.56200.60500.170400.925300 | False ceiling & 1ST COAT PAINTING | 15d | 2027-12-23 | 2028-01-06 | 790 |  | RGA -FINISHING | 7825192 |
| 792 | 40200.40300.40500.56200.60500.170400.925400 | CLEANING | 3d | 2028-01-07 | 2028-01-09 | 791 |  | RGA -FINISHING | 7825202 |

Notes:
- 770: Assumed
- 778: Assumed
- 786: Assumed

| ID | WBS | Task | Duration | Start | Finish | Predecessors | Constraint | Calendar | Unique_Task_ID |
| --- | --- | --- | --- | --- | --- | --- | --- | --- | --- |
| 793 | 40200.40300.40500.56200.60500.170500 | **11th FLOOR** | 390d | 2026-12-16 | 2028-01-09 |  | start no earlier than 2026-12-16 | RGA -FINISHING | 7805862 |
| 794 | 40200.40300.40500.56200.60500.170500.925500 | FIRE FIGHTING | 10d | 2026-12-16 | 2026-12-25 | 512FS-5d |  | RGA -FINISHING | 7825212 |
| 795 | 40200.40300.40500.56200.60500.170500.925600 | LIFT BLOCK WORK | 3d | 2027-06-29 | 2027-07-01 | 787SS |  | RGA -FINISHING | 7825222 |
| 796 | 40200.40300.40500.56200.60500.170500.925700 | LIFT DADO WORK | 3d | 2027-12-10 | 2027-12-12 | 788SS |  | RGA -FINISHING | 7825232 |
| 797 | 40200.40300.40500.56200.60500.170500.925800 | LOBBY FLOORING WORK | 4d | 2027-12-13 | 2027-12-16 | 796 |  | RGA -FINISHING | 7825242 |
| 798 | 40200.40300.40500.56200.60500.170500.925900 | ELECTRICAL WIRING & SWITCH PLATE FIXING WORK | 6d | 2027-12-17 | 2027-12-22 | 797 |  | RGA -FINISHING | 7825252 |
| 799 | 40200.40300.40500.56200.60500.170500.926000 | False ceiling & 1ST COAT PAINTING | 15d | 2027-12-23 | 2028-01-06 | 798 |  | RGA -FINISHING | 7825262 |
| 800 | 40200.40300.40500.56200.60500.170500.926100 | CLEANING | 3d | 2028-01-07 | 2028-01-09 | 799 |  | RGA -FINISHING | 7825272 |
| 801 | 40200.40300.40500.56200.60500.170600 | **12th FLOOR** | 361.5d | 2027-01-13 | 2028-01-09 |  | start no earlier than 2027-01-13 | RGA -FINISHING | 7805852 |
| 802 | 40200.40300.40500.56200.60500.170600.926200 | FIRE FIGHTING | 10d | 2027-01-13 | 2027-01-23 | 525 |  | RGA -FINISHING | 7825282 |
| 803 | 40200.40300.40500.56200.60500.170600.926300 | LIFT BLOCK WORK | 3d | 2027-06-29 | 2027-07-01 | 795SS |  | RGA -FINISHING | 7825292 |
| 804 | 40200.40300.40500.56200.60500.170600.926400 | LIFT DADO WORK | 3d | 2027-12-10 | 2027-12-12 | 796SS |  | RGA -FINISHING | 7825302 |
| 805 | 40200.40300.40500.56200.60500.170600.926500 | LOBBY FLOORING WORK | 4d | 2027-12-13 | 2027-12-16 | 804 |  | RGA -FINISHING | 7825312 |
| 806 | 40200.40300.40500.56200.60500.170600.926600 | ELECTRICAL WIRING & SWITCH PLATE FIXING WORK | 6d | 2027-12-17 | 2027-12-22 | 805 |  | RGA -FINISHING | 7825322 |
| 807 | 40200.40300.40500.56200.60500.170600.926700 | False ceiling & 1ST COAT PAINTING | 15d | 2027-12-23 | 2028-01-06 | 806 |  | RGA -FINISHING | 7825332 |
| 808 | 40200.40300.40500.56200.60500.170600.926800 | CLEANING | 3d | 2028-01-07 | 2028-01-09 | 807 |  | RGA -FINISHING | 7825342 |
| 809 | 40200.40300.40500.56200.60500.170700 | **13th FLOOR** | 334d | 2027-02-13 | 2028-01-12 |  | start no earlier than 2027-02-13 | RGA -FINISHING | 7805842 |
| 810 | 40200.40300.40500.56200.60500.170700.926900 | FIRE FIGHTING | 10d | 2027-02-13 | 2027-02-22 | 538FS+5d |  | RGA -FINISHING | 7825352 |
| 811 | 40200.40300.40500.56200.60500.170700.927000 | LIFT BLOCK WORK | 3d | 2027-07-02 | 2027-07-04 | 803 |  | RGA -FINISHING | 7825362 |
| 812 | 40200.40300.40500.56200.60500.170700.927100 | LIFT DADO WORK | 3d | 2027-12-13 | 2027-12-15 | 804 |  | RGA -FINISHING | 7825372 |
| 813 | 40200.40300.40500.56200.60500.170700.927200 | LOBBY FLOORING WORK | 4d | 2027-12-16 | 2027-12-19 | 812 |  | RGA -FINISHING | 7825382 |
| 814 | 40200.40300.40500.56200.60500.170700.927300 | ELECTRICAL WIRING & SWITCH PLATE FIXING WORK | 6d | 2027-12-20 | 2027-12-25 | 813 |  | RGA -FINISHING | 7825392 |
| 815 | 40200.40300.40500.56200.60500.170700.927400 | False ceiling & 1ST COAT PAINTING | 15d | 2027-12-26 | 2028-01-09 | 814 |  | RGA -FINISHING | 7825402 |
| 816 | 40200.40300.40500.56200.60500.170700.927500 | CLEANING | 3d | 2028-01-10 | 2028-01-12 | 815 |  | RGA -FINISHING | 7825412 |

Notes:
- 794: Assumed
- 802: Assumed
- 810: Assumed

| ID | WBS | Task | Duration | Start | Finish | Predecessors | Constraint | Calendar | Unique_Task_ID |
| --- | --- | --- | --- | --- | --- | --- | --- | --- | --- |
| 817 | 40200.40300.40500.56200.60500.170800 | **14th FLOOR** | 327d | 2027-02-20 | 2028-01-12 |  | start no earlier than 2027-02-20 | RGA -FINISHING | 7805832 |
| 818 | 40200.40300.40500.56200.60500.170800.927600 | FIRE FIGHTING | 10d | 2027-02-20 | 2027-03-01 | 551FS-5d |  | RGA -FINISHING | 7825422 |
| 819 | 40200.40300.40500.56200.60500.170800.927700 | LIFT BLOCK WORK | 3d | 2027-07-02 | 2027-07-04 | 811SS |  | RGA -FINISHING | 7825432 |
| 820 | 40200.40300.40500.56200.60500.170800.927800 | LIFT DADO WORK | 3d | 2027-12-13 | 2027-12-15 | 812SS |  | RGA -FINISHING | 7825442 |
| 821 | 40200.40300.40500.56200.60500.170800.927900 | LOBBY FLOORING WORK | 4d | 2027-12-16 | 2027-12-19 | 820 |  | RGA -FINISHING | 7825452 |
| 822 | 40200.40300.40500.56200.60500.170800.928000 | ELECTRICAL WIRING & SWITCH PLATE FIXING WORK | 6d | 2027-12-20 | 2027-12-25 | 821 |  | RGA -FINISHING | 7825462 |
| 823 | 40200.40300.40500.56200.60500.170800.928100 | False ceiling & 1ST COAT PAINTING | 15d | 2027-12-26 | 2028-01-09 | 822 |  | RGA -FINISHING | 7825472 |
| 824 | 40200.40300.40500.56200.60500.170800.928200 | CLEANING | 3d | 2028-01-10 | 2028-01-12 | 823 |  | RGA -FINISHING | 7825482 |
| 825 | 40200.40300.40500.56200.60500.170900 | **15th FLOOR** | 310d | 2027-03-09 | 2028-01-12 |  | start no earlier than 2027-03-09 | RGA -FINISHING | 7805822 |
| 826 | 40200.40300.40500.56200.60500.170900.928300 | FIRE FIGHTING | 10d | 2027-03-09 | 2027-03-18 | 564FS-5d |  | RGA -FINISHING | 7825492 |
| 827 | 40200.40300.40500.56200.60500.170900.928400 | LIFT BLOCK WORK | 3d | 2027-07-02 | 2027-07-04 | 819SS |  | RGA -FINISHING | 7825502 |
| 828 | 40200.40300.40500.56200.60500.170900.928500 | LIFT DADO WORK | 3d | 2027-12-13 | 2027-12-15 | 820SS |  | RGA -FINISHING | 7825512 |
| 829 | 40200.40300.40500.56200.60500.170900.928600 | LOBBY FLOORING WORK | 4d | 2027-12-16 | 2027-12-19 | 828 |  | RGA -FINISHING | 7825522 |
| 830 | 40200.40300.40500.56200.60500.170900.928700 | ELECTRICAL WIRING & SWITCH PLATE FIXING WORK | 6d | 2027-12-20 | 2027-12-25 | 829 |  | RGA -FINISHING | 7825532 |
| 831 | 40200.40300.40500.56200.60500.170900.928800 | False ceiling & 1ST COAT PAINTING | 15d | 2027-12-26 | 2028-01-09 | 830 |  | RGA -FINISHING | 7825542 |
| 832 | 40200.40300.40500.56200.60500.170900.928900 | CLEANING | 3d | 2028-01-10 | 2028-01-12 | 831 |  | RGA -FINISHING | 7825552 |
| 833 | 40200.40300.40500.56200.60500.171000 | **16th FLOOR** | 303d | 2027-03-16 | 2028-01-12 |  | start no earlier than 2027-03-16 | RGA -FINISHING | 7805812 |
| 834 | 40200.40300.40500.56200.60500.171000.929000 | FIRE FIGHTING | 10d | 2027-03-16 | 2027-03-25 | 577FS-5d |  | RGA -FINISHING | 7825562 |
| 835 | 40200.40300.40500.56200.60500.171000.929100 | LIFT BLOCK WORK | 3d | 2027-07-02 | 2027-07-04 | 827SS |  | RGA -FINISHING | 7825572 |
| 836 | 40200.40300.40500.56200.60500.171000.929200 | LIFT DADO WORK | 3d | 2027-12-13 | 2027-12-15 | 828SS |  | RGA -FINISHING | 7825582 |
| 837 | 40200.40300.40500.56200.60500.171000.929300 | LOBBY FLOORING WORK | 4d | 2027-12-16 | 2027-12-19 | 836 |  | RGA -FINISHING | 7825592 |
| 838 | 40200.40300.40500.56200.60500.171000.929400 | ELECTRICAL WIRING & SWITCH PLATE FIXING WORK | 6d | 2027-12-20 | 2027-12-25 | 837 |  | RGA -FINISHING | 7825602 |
| 839 | 40200.40300.40500.56200.60500.171000.929500 | False ceiling & 1ST COAT PAINTING | 15d | 2027-12-26 | 2028-01-09 | 838 |  | RGA -FINISHING | 7825612 |
| 840 | 40200.40300.40500.56200.60500.171000.929600 | CLEANING | 3d | 2028-01-10 | 2028-01-12 | 839 |  | RGA -FINISHING | 7825622 |

Notes:
- 818: Assumed
- 826: Assumed
- 834: Assumed

| ID | WBS | Task | Duration | Start | Finish | Predecessors | Constraint | Calendar | Unique_Task_ID |
| --- | --- | --- | --- | --- | --- | --- | --- | --- | --- |
| 841 | 40200.40300.40500.56200.60500.171100 | **17th FLOOR** | 281d | 2027-04-07 | 2028-01-12 |  | start no earlier than 2027-04-07 | RGA -FINISHING | 7805802 |
| 842 | 40200.40300.40500.56200.60500.171100.929700 | FIRE FIGHTING | 10d | 2027-04-07 | 2027-04-16 | 590FS-5d |  | RGA -FINISHING | 7825632 |
| 843 | 40200.40300.40500.56200.60500.171100.929800 | LIFT BLOCK WORK | 3d | 2027-07-02 | 2027-07-04 | 835SS |  | RGA -FINISHING | 7825642 |
| 844 | 40200.40300.40500.56200.60500.171100.929900 | LIFT DADO WORK | 3d | 2027-12-13 | 2027-12-15 | 836SS |  | RGA -FINISHING | 7825652 |
| 845 | 40200.40300.40500.56200.60500.171100.930000 | LOBBY FLOORING WORK | 4d | 2027-12-16 | 2027-12-19 | 844 |  | RGA -FINISHING | 7825662 |
| 846 | 40200.40300.40500.56200.60500.171100.930100 | ELECTRICAL WIRING & SWITCH PLATE FIXING WORK | 6d | 2027-12-20 | 2027-12-25 | 845 |  | RGA -FINISHING | 7825672 |
| 847 | 40200.40300.40500.56200.60500.171100.930200 | False ceiling & 1ST COAT PAINTING | 15d | 2027-12-26 | 2028-01-09 | 846 |  | RGA -FINISHING | 7825682 |
| 848 | 40200.40300.40500.56200.60500.171100.930300 | CLEANING | 3d | 2028-01-10 | 2028-01-12 | 847 |  | RGA -FINISHING | 7825692 |
| 849 | 40200.40300.40500.56200.60500.171200 | **18th FLOOR** | 262d | 2027-04-29 | 2028-01-15 |  | start no earlier than 2027-04-29 | RGA -FINISHING | 7805792 |
| 850 | 40200.40300.40500.56200.60500.171200.930400 | FIRE FIGHTING | 10d | 2027-04-29 | 2027-05-08 | 603FS-5d |  | RGA -FINISHING | 7825702 |
| 851 | 40200.40300.40500.56200.60500.171200.930500 | LIFT BLOCK WORK | 3d | 2027-07-05 | 2027-07-07 | 843 |  | RGA -FINISHING | 7825712 |
| 852 | 40200.40300.40500.56200.60500.171200.930600 | LIFT DADO WORK | 3d | 2027-12-16 | 2027-12-18 | 844 |  | RGA -FINISHING | 7825722 |
| 853 | 40200.40300.40500.56200.60500.171200.930700 | LOBBY FLOORING WORK | 4d | 2027-12-19 | 2027-12-22 | 852 |  | RGA -FINISHING | 7825732 |
| 854 | 40200.40300.40500.56200.60500.171200.930800 | ELECTRICAL WIRING & SWITCH PLATE FIXING WORK | 6d | 2027-12-23 | 2027-12-28 | 853 |  | RGA -FINISHING | 7825742 |
| 855 | 40200.40300.40500.56200.60500.171200.930900 | False ceiling & 1ST COAT PAINTING | 15d | 2027-12-29 | 2028-01-12 | 854 |  | RGA -FINISHING | 7825752 |
| 856 | 40200.40300.40500.56200.60500.171200.931000 | CLEANING | 3d | 2028-01-13 | 2028-01-15 | 855 |  | RGA -FINISHING | 7825762 |
| 857 | 40200.40300.40500.56200.60500.171300 | **19th FLOOR** | 245d | 2027-05-16 | 2028-01-15 |  | start no earlier than 2027-05-16 | RGA -FINISHING | 7805782 |
| 858 | 40200.40300.40500.56200.60500.171300.931100 | FIRE FIGHTING | 10d | 2027-05-16 | 2027-05-25 | 616FS-5d |  | RGA -FINISHING | 7825772 |
| 859 | 40200.40300.40500.56200.60500.171300.931200 | LIFT BLOCK WORK | 3d | 2027-07-05 | 2027-07-07 | 851SS |  | RGA -FINISHING | 7825782 |
| 860 | 40200.40300.40500.56200.60500.171300.931300 | LIFT DADO WORK | 3d | 2027-12-16 | 2027-12-18 | 852SS |  | RGA -FINISHING | 7825792 |
| 861 | 40200.40300.40500.56200.60500.171300.931400 | LOBBY FLOORING WORK | 4d | 2027-12-19 | 2027-12-22 | 860 |  | RGA -FINISHING | 7825802 |
| 862 | 40200.40300.40500.56200.60500.171300.931500 | ELECTRICAL WIRING & SWITCH PLATE FIXING WORK | 6d | 2027-12-23 | 2027-12-28 | 861 |  | RGA -FINISHING | 7825812 |
| 863 | 40200.40300.40500.56200.60500.171300.931600 | False ceiling & 1ST COAT PAINTING | 15d | 2027-12-29 | 2028-01-12 | 862 |  | RGA -FINISHING | 7825822 |
| 864 | 40200.40300.40500.56200.60500.171300.931700 | CLEANING | 3d | 2028-01-13 | 2028-01-15 | 863 |  | RGA -FINISHING | 7825832 |

Notes:
- 842: Assumed
- 850: Assumed
- 858: Assumed

| ID | WBS | Task | Duration | Start | Finish | Predecessors | Constraint | Calendar | Unique_Task_ID |
| --- | --- | --- | --- | --- | --- | --- | --- | --- | --- |
| 865 | 40200.40300.40500.56200.60500.171400 | **20th FLOOR** | 228d | 2027-06-02 | 2028-01-15 |  | start no earlier than 2027-06-02 | RGA -FINISHING | 7805772 |
| 866 | 40200.40300.40500.56200.60500.171400.931800 | FIRE FIGHTING | 10d | 2027-06-02 | 2027-06-11 | 629FS-5d |  | RGA -FINISHING | 7825842 |
| 867 | 40200.40300.40500.56200.60500.171400.931900 | LIFT BLOCK WORK | 3d | 2027-07-05 | 2027-07-07 | 859SS |  | RGA -FINISHING | 7825852 |
| 868 | 40200.40300.40500.56200.60500.171400.932000 | LIFT DADO WORK | 3d | 2027-12-16 | 2027-12-18 | 860SS |  | RGA -FINISHING | 7825862 |
| 869 | 40200.40300.40500.56200.60500.171400.932100 | LOBBY FLOORING WORK | 4d | 2027-12-19 | 2027-12-22 | 868 |  | RGA -FINISHING | 7825872 |
| 870 | 40200.40300.40500.56200.60500.171400.932200 | ELECTRICAL WIRING & SWITCH PLATE FIXING WORK | 6d | 2027-12-23 | 2027-12-28 | 869 |  | RGA -FINISHING | 7825882 |
| 871 | 40200.40300.40500.56200.60500.171400.932300 | False ceiling & 1ST COAT PAINTING | 15d | 2027-12-29 | 2028-01-12 | 870 |  | RGA -FINISHING | 7825892 |
| 872 | 40200.40300.40500.56200.60500.171400.932400 | CLEANING | 3d | 2028-01-13 | 2028-01-15 | 871 |  | RGA -FINISHING | 7825902 |
| 873 | 40200.40300.40500.56200.60500.171500 | **21ST FLOOR** | 211d | 2027-06-19 | 2028-01-15 |  | start no earlier than 2027-06-19 | RGA -FINISHING | 7805762 |
| 874 | 40200.40300.40500.56200.60500.171500.932500 | FIRE FIGHTING | 10d | 2027-06-19 | 2027-06-28 | 642FS-5d |  | RGA -FINISHING | 7825912 |
| 875 | 40200.40300.40500.56200.60500.171500.932600 | LIFT BLOCK WORK | 3d | 2027-07-05 | 2027-07-07 | 867SS |  | RGA -FINISHING | 7825922 |
| 876 | 40200.40300.40500.56200.60500.171500.932700 | LIFT DADO WORK | 3d | 2027-12-16 | 2027-12-18 | 868SS |  | RGA -FINISHING | 7825932 |
| 877 | 40200.40300.40500.56200.60500.171500.932800 | LOBBY FLOORING WORK | 4d | 2027-12-19 | 2027-12-22 | 876 |  | RGA -FINISHING | 7825942 |
| 878 | 40200.40300.40500.56200.60500.171500.932900 | ELECTRICAL WIRING & SWITCH PLATE FIXING WORK | 6d | 2027-12-23 | 2027-12-28 | 877 |  | RGA -FINISHING | 7825952 |
| 879 | 40200.40300.40500.56200.60500.171500.933000 | False ceiling & 1ST COAT PAINTING | 15d | 2027-12-29 | 2028-01-12 | 878 |  | RGA -FINISHING | 7825962 |
| 880 | 40200.40300.40500.56200.60500.171500.933100 | CLEANING | 3d | 2028-01-13 | 2028-01-15 | 879 |  | RGA -FINISHING | 7825972 |
| 881 | 40200.40300.40500.56200.60500.171600 | **22th FLOOR** | 197d | 2027-07-06 | 2028-01-18 |  | start no earlier than 2027-07-06 | RGA -FINISHING | 7805752 |
| 882 | 40200.40300.40500.56200.60500.171600.933200 | FIRE FIGHTING | 10d | 2027-07-06 | 2027-07-15 | 655FS-5d |  | RGA -FINISHING | 7825982 |
| 883 | 40200.40300.40500.56200.60500.171600.933300 | LIFT BLOCK WORK | 3d | 2027-07-08 | 2027-07-10 | 875 |  | RGA -FINISHING | 7825992 |
| 884 | 40200.40300.40500.56200.60500.171600.933400 | LIFT DADO WORK | 3d | 2027-12-19 | 2027-12-21 | 876 |  | RGA -FINISHING | 7826002 |
| 885 | 40200.40300.40500.56200.60500.171600.933500 | LOBBY FLOORING WORK | 4d | 2027-12-22 | 2027-12-25 | 884 |  | RGA -FINISHING | 7826012 |
| 886 | 40200.40300.40500.56200.60500.171600.933600 | ELECTRICAL WIRING & SWITCH PLATE FIXING WORK | 6d | 2027-12-26 | 2027-12-31 | 885 |  | RGA -FINISHING | 7826022 |
| 887 | 40200.40300.40500.56200.60500.171600.933700 | False ceiling & 1ST COAT PAINTING | 15d | 2028-01-01 | 2028-01-15 | 886 |  | RGA -FINISHING | 7826032 |
| 888 | 40200.40300.40500.56200.60500.171600.933800 | CLEANING | 3d | 2028-01-16 | 2028-01-18 | 887 |  | RGA -FINISHING | 7826042 |

Notes:
- 866: Assumed
- 874: Assumed
- 882: Assumed

| ID | WBS | Task | Duration | Start | Finish | Predecessors | Constraint | Calendar | Unique_Task_ID |
| --- | --- | --- | --- | --- | --- | --- | --- | --- | --- |
| 889 | 40200.40300.40500.56200.60500.171700 | **23th FLOOR** | 195d | 2027-07-08 | 2028-01-18 |  | start no earlier than 2027-07-08 | RGA -FINISHING | 7805742 |
| 890 | 40200.40300.40500.56200.60500.171700.933900 | FIRE FIGHTING | 10d | 2027-07-13 | 2027-07-22 | 668FS-5d |  | RGA -FINISHING | 7826052 |
| 891 | 40200.40300.40500.56200.60500.171700.934000 | LIFT BLOCK WORK | 3d | 2027-07-08 | 2027-07-10 | 883SS |  | RGA -FINISHING | 7826062 |
| 892 | 40200.40300.40500.56200.60500.171700.934100 | LIFT DADO WORK | 3d | 2027-12-19 | 2027-12-21 | 884SS |  | RGA -FINISHING | 7826072 |
| 893 | 40200.40300.40500.56200.60500.171700.934200 | LOBBY FLOORING WORK | 4d | 2027-12-22 | 2027-12-25 | 892 |  | RGA -FINISHING | 7826082 |
| 894 | 40200.40300.40500.56200.60500.171700.934300 | ELECTRICAL WIRING & SWITCH PLATE FIXING WORK | 6d | 2027-12-26 | 2027-12-31 | 893 |  | RGA -FINISHING | 7826092 |
| 895 | 40200.40300.40500.56200.60500.171700.934400 | False ceiling & 1ST COAT PAINTING | 15d | 2028-01-01 | 2028-01-15 | 894 |  | RGA -FINISHING | 7826102 |
| 896 | 40200.40300.40500.56200.60500.171700.934500 | CLEANING | 3d | 2028-01-16 | 2028-01-18 | 895 |  | RGA -FINISHING | 7826112 |
| 897 | 40200.40300.40500.56200.60500.171800 | **24th FLOOR** | 195d | 2027-07-08 | 2028-01-18 |  | start no earlier than 2027-07-08 | RGA -FINISHING | 7805732 |
| 898 | 40200.40300.40500.56200.60500.171800.934600 | FIRE FIGHTING | 10d | 2027-07-30 | 2027-08-08 | 681FS-5d |  | RGA -FINISHING | 7826122 |
| 899 | 40200.40300.40500.56200.60500.171800.934700 | LIFT BLOCK WORK | 3d | 2027-07-08 | 2027-07-10 | 891SS |  | RGA -FINISHING | 7826132 |
| 900 | 40200.40300.40500.56200.60500.171800.934800 | LIFT DADO WORK | 3d | 2027-12-19 | 2027-12-21 | 892SS |  | RGA -FINISHING | 7826142 |
| 901 | 40200.40300.40500.56200.60500.171800.934900 | LOBBY FLOORING WORK | 4d | 2027-12-22 | 2027-12-25 | 900 |  | RGA -FINISHING | 7826152 |
| 902 | 40200.40300.40500.56200.60500.171800.935000 | ELECTRICAL WIRING & SWITCH PLATE FIXING WORK | 6d | 2027-12-26 | 2027-12-31 | 901 |  | RGA -FINISHING | 7826162 |
| 903 | 40200.40300.40500.56200.60500.171800.935100 | False ceiling & 1ST COAT PAINTING | 15d | 2028-01-01 | 2028-01-15 | 902 |  | RGA -FINISHING | 7826172 |
| 904 | 40200.40300.40500.56200.60500.171800.935200 | CLEANING | 3d | 2028-01-16 | 2028-01-18 | 903 |  | RGA -FINISHING | 7826182 |
| 905 | 40200.40300.40500.56200.60500.171900 | **25th FLOOR** | 195d | 2027-07-08 | 2028-01-18 |  | start no earlier than 2027-07-08 | RGA -FINISHING | 7805722 |
| 906 | 40200.40300.40500.56200.60500.171900.935300 | FIRE FIGHTING | 10d | 2027-08-18 | 2027-08-27 | 694FS-5d |  | RGA -FINISHING | 7826192 |
| 907 | 40200.40300.40500.56200.60500.171900.935400 | LIFT BLOCK WORK | 3d | 2027-07-08 | 2027-07-10 | 899SS |  | RGA -FINISHING | 7826202 |
| 908 | 40200.40300.40500.56200.60500.171900.935500 | LIFT DADO WORK | 3d | 2027-12-19 | 2027-12-21 | 900SS |  | RGA -FINISHING | 7826212 |
| 909 | 40200.40300.40500.56200.60500.171900.935600 | LOBBY FLOORING WORK | 4d | 2027-12-22 | 2027-12-25 | 908 |  | RGA -FINISHING | 7826222 |
| 910 | 40200.40300.40500.56200.60500.171900.935700 | ELECTRICAL WIRING & SWITCH PLATE FIXING WORK | 6d | 2027-12-26 | 2027-12-31 | 909 |  | RGA -FINISHING | 7826232 |
| 911 | 40200.40300.40500.56200.60500.171900.935800 | False ceiling & 1ST COAT PAINTING | 15d | 2028-01-01 | 2028-01-15 | 910 |  | RGA -FINISHING | 7826242 |
| 912 | 40200.40300.40500.56200.60500.171900.935900 | CLEANING | 3d | 2028-01-16 | 2028-01-18 | 911 |  | RGA -FINISHING | 7826252 |

Notes:
- 890: Assumed
- 898: Assumed
- 906: Assumed

| ID | WBS | Task | Duration | Start | Finish | Predecessors | Constraint | Calendar | Unique_Task_ID |
| --- | --- | --- | --- | --- | --- | --- | --- | --- | --- |
| 913 | 40200.40300.40500.56200.160400 | **Common MEP Works** | 334d | 2027-06-28 | 2028-05-26 |  | start no earlier than 2027-06-28 | RGA -FINISHING | 7805302 |
| 914 | 40200.40300.40500.56200.160400.498100 | **Lift Works** | 156d | 2027-06-28 | 2027-11-30 |  | start no earlier than 2027-06-28 | RGA -FINISHING | 7811502 |
| 915 | 40200.40300.40500.56200.160400.498100.936000 | Lift Shaft Handover | 15d | 2027-06-28 | 2027-07-12 | 171 |  | RGA -FINISHING | 7826402 |
| 916 | 40200.40300.40500.56200.160400.498100.936100 | Lift installation work | 140d | 2027-07-14 | 2027-11-30 | 930FS-111d, 915FS+1d |  | RGA -FINISHING | 7826412 |
| 917 | 40200.40300.40500.56200.160400.498000 | **Plumbing works** | 127d | 2028-01-21 | 2028-05-26 |  | start no earlier than 2028-01-21 | RGA -FINISHING | 7811512 |
| 918 | 40200.40300.40500.56200.160400.498000.936200 | Shaft Plumbing | 90d | 2028-01-21 | 2028-04-19 | 364 |  | RGA -FINISHING | 7826422 |
| 919 | 40200.40300.40500.56200.160400.498000.936300 | Terrace Looping | 90d | 2028-02-27 | 2028-05-26 | 362 |  | RGA -FINISHING | 7826432 |
| 920 | 40200.40300.40500.56200.160400.497900 | **Fire Fighting works** | 75d | 2027-07-11 | 2027-09-23 |  | start no earlier than 2027-07-11 | RGA -FINISHING | 7811522 |
| 921 | 40200.40300.40500.56200.160400.497900.936400 | Shaft Downtake works | 60d | 2027-07-11 | 2027-09-08 | 166FS+21d |  | RGA -FINISHING | 7826442 |
| 922 | 40200.40300.40500.56200.160400.497900.936500 | Connection to pump room | 15d | 2027-09-09 | 2027-09-23 | 921 |  | RGA -FINISHING | 7826452 |
| 923 | 40200.40300.40500.56200.160400.344500 | **Electrical works** | 120d | 2028-01-15 | 2028-05-13 |  | start no earlier than 2028-01-15 | RGA -FINISHING | 7808192 |
| 924 | 40200.40300.40500.56200.160400.344500.936600 | Shaft cabling | 45d | 2028-03-16 | 2028-04-29 | 166FS+270d |  | RGA -FINISHING | 7826462 |
| 925 | 40200.40300.40500.56200.160400.344500.936700 | Meter room erection | 15d | 2028-04-14 | 2028-04-28 | 24FS+330d |  | RGA -FINISHING | 7826472 |
| 926 | 40200.40300.40500.56200.160400.344500.936800 | Panel erection | 15d | 2028-04-29 | 2028-05-13 | 925 |  | RGA -FINISHING | 7826482 |
| 927 | 40200.40300.40500.56200.160400.344500.936900 | DG Installtion | 10d | 2028-01-15 | 2028-01-24 | 925SS-90d |  | RGA -FINISHING | 7826492 |
| 928 | 40200.40300.40500.56200.160400.344500.937000 | Transformer erection | 15d | 2028-01-15 | 2028-01-29 | 927SS |  | RGA -FINISHING | 7826502 |
| 929 | 40200.40300.40500.352100 | **Capex Item Procurment** | 246d | 2027-06-28 | 2028-02-28 |  | start no earlier than 2027-06-28 | RGA -FINISHING | 7808792 |
| 930 | 40200.40300.40500.352100.553200 | Lift Procurement & delivery | 30d | 2027-06-28 | 2027-07-27 | 915SS |  | RGA -FINISHING | 7812662 |
| 931 | 40200.40300.40500.352100.553300 | Panels | 30d | 2028-01-30 | 2028-02-28 | 926SS-90d |  | RGA -FINISHING | 7812672 |
| 932 | 40200.40300.40500.352100.553400 | DG procurement | 30d | 2027-10-17 | 2027-11-15 | 927SS-90d |  | RGA -FINISHING | 7812682 |
| 933 | 40200.40300.40500.352100.553500 | Transformer | 30d | 2027-10-17 | 2027-11-15 | 928SS-90d |  | RGA -FINISHING | 7812692 |
| 934 | 40200.40300.40500.44600 | **Handing Over Activities** | 56d | 2028-05-18 | 2028-07-12 |  | start no earlier than 2028-05-18 | RGA -FINISHING | 7803212 |
| 935 | 40200.40300.40500.44600.553600 | SOAP WASHING GROUND FLOOR | 1d | 2028-05-18 | 2028-05-18 | 912FS+120d |  | RGA -FINISHING | 7812702 |
| 936 | 40200.40300.40500.44600.553700 | SOAP WASHING L1 | 1d | 2028-05-19 | 2028-05-19 | 935 |  | RGA -FINISHING | 7812712 |
| 937 | 40200.40300.40500.44600.553800 | SOAP WASHING L2 | 1d | 2028-05-20 | 2028-05-20 | 936 |  | RGA -FINISHING | 7812722 |
| 938 | 40200.40300.40500.44600.553900 | SOAP WASHING L3 | 1d | 2028-05-21 | 2028-05-21 | 937 |  | RGA -FINISHING | 7812732 |
| 939 | 40200.40300.40500.44600.554000 | SOAP WASHING L4 | 1d | 2028-05-22 | 2028-05-22 | 938 |  | RGA -FINISHING | 7812742 |
| 940 | 40200.40300.40500.44600.554100 | SOAP WASHING L5 | 1d | 2028-05-23 | 2028-05-23 | 939 |  | RGA -FINISHING | 7812752 |
| 941 | 40200.40300.40500.44600.554200 | SOAP WASHING L6 | 1d | 2028-05-24 | 2028-05-24 | 940 |  | RGA -FINISHING | 7812762 |
| 942 | 40200.40300.40500.44600.554300 | SOAP WASHING L7 | 1d | 2028-05-25 | 2028-05-25 | 941 |  | RGA -FINISHING | 7812772 |
| 943 | 40200.40300.40500.44600.554400 | SOAP WASHING L8 | 1d | 2028-05-26 | 2028-05-26 | 942 |  | RGA -FINISHING | 7812782 |
| 944 | 40200.40300.40500.44600.554500 | SOAP WASHING L9 | 1d | 2028-05-27 | 2028-05-27 | 943 |  | RGA -FINISHING | 7812792 |
| 945 | 40200.40300.40500.44600.554600 | SOAP WASHING L10 | 1d | 2028-05-28 | 2028-05-28 | 944 |  | RGA -FINISHING | 7812802 |
| 946 | 40200.40300.40500.44600.554700 | SOAP WASHING L11 | 1d | 2028-05-29 | 2028-05-29 | 945 |  | RGA -FINISHING | 7812812 |
| 947 | 40200.40300.40500.44600.554800 | SOAP WASHING L12 | 1d | 2028-05-30 | 2028-05-30 | 946 |  | RGA -FINISHING | 7812822 |
| 948 | 40200.40300.40500.44600.554900 | SOAP WASHING L13 | 1d | 2028-05-31 | 2028-05-31 | 947 |  | RGA -FINISHING | 7812832 |
| 949 | 40200.40300.40500.44600.555000 | SOAP WASHING L14 | 1d | 2028-06-01 | 2028-06-01 | 948 |  | RGA -FINISHING | 7812842 |
| 950 | 40200.40300.40500.44600.555100 | SOAP WASHING L15 | 1d | 2028-06-02 | 2028-06-02 | 949 |  | RGA -FINISHING | 7812852 |
| 951 | 40200.40300.40500.44600.555200 | SOAP WASHING L16 | 1d | 2028-06-03 | 2028-06-03 | 950 |  | RGA -FINISHING | 7812862 |
| 952 | 40200.40300.40500.44600.555300 | SOAP WASHING L17 | 1d | 2028-06-04 | 2028-06-04 | 951 |  | RGA -FINISHING | 7812872 |
| 953 | 40200.40300.40500.44600.555400 | SOAP WASHING L18 | 1d | 2028-06-05 | 2028-06-05 | 952 |  | RGA -FINISHING | 7812882 |
| 954 | 40200.40300.40500.44600.555500 | SOAP WASHING L19 | 1d | 2028-06-06 | 2028-06-06 | 953 |  | RGA -FINISHING | 7812892 |
| 955 | 40200.40300.40500.44600.555600 | SOAP WASHING L20 | 1d | 2028-06-07 | 2028-06-07 | 954 |  | RGA -FINISHING | 7812902 |
| 956 | 40200.40300.40500.44600.555700 | SOAP WASHING L21 | 1d | 2028-06-08 | 2028-06-08 | 955 |  | RGA -FINISHING | 7812912 |
| 957 | 40200.40300.40500.44600.555800 | SOAP WASHING L22 | 1d | 2028-06-09 | 2028-06-09 | 956 |  | RGA -FINISHING | 7812922 |
| 958 | 40200.40300.40500.44600.555900 | SOAP WASHING L23 | 1d | 2028-06-10 | 2028-06-10 | 957 |  | RGA -FINISHING | 7812932 |
| 959 | 40200.40300.40500.44600.556000 | SOAP WASHING L24 | 1d | 2028-06-11 | 2028-06-11 | 958 |  | RGA -FINISHING | 7812942 |
| 960 | 40200.40300.40500.44600.556100 | SOAP WASHING L25 | 1d | 2028-06-12 | 2028-06-12 | 959 |  | RGA -FINISHING | 7812952 |
| 961 | 40200.40300.40500.44600.556200 | CP & SANITARYWARE FIXING Ground | 2d | 2028-05-20 | 2028-05-21 | 936 |  | RGA -FINISHING | 7812992 |
| 962 | 40200.40300.40500.44600.556300 | CP & SANITARYWARE FIXING L1 | 2d | 2028-05-22 | 2028-05-23 | 961 |  | RGA -FINISHING | 7813002 |
| 963 | 40200.40300.40500.44600.556400 | CP & SANITARYWARE FIXING L2 | 2d | 2028-05-24 | 2028-05-25 | 962 |  | RGA -FINISHING | 7813012 |
| 964 | 40200.40300.40500.44600.556500 | CP & SANITARYWARE FIXING L3 | 2d | 2028-05-26 | 2028-05-27 | 963 |  | RGA -FINISHING | 7813022 |
| 965 | 40200.40300.40500.44600.556600 | CP & SANITARYWARE FIXING L4 | 2d | 2028-05-28 | 2028-05-29 | 964 |  | RGA -FINISHING | 7813032 |
| 966 | 40200.40300.40500.44600.556700 | CP & SANITARYWARE FIXING L5 | 2d | 2028-05-30 | 2028-05-31 | 965 |  | RGA -FINISHING | 7813042 |
| 967 | 40200.40300.40500.44600.556800 | CP & SANITARYWARE FIXING L6 | 2d | 2028-06-01 | 2028-06-02 | 966 |  | RGA -FINISHING | 7813052 |
| 968 | 40200.40300.40500.44600.556900 | CP & SANITARYWARE FIXING L7 | 2d | 2028-06-03 | 2028-06-04 | 967 |  | RGA -FINISHING | 7813062 |
| 969 | 40200.40300.40500.44600.557000 | CP & SANITARYWARE FIXING L8 | 2d | 2028-06-05 | 2028-06-06 | 968 |  | RGA -FINISHING | 7813072 |
| 970 | 40200.40300.40500.44600.557100 | CP & SANITARYWARE FIXING L9 | 2d | 2028-06-07 | 2028-06-08 | 969 |  | RGA -FINISHING | 7813082 |
| 971 | 40200.40300.40500.44600.557200 | CP & SANITARYWARE FIXING L10 | 2d | 2028-06-09 | 2028-06-10 | 970 |  | RGA -FINISHING | 7813092 |
| 972 | 40200.40300.40500.44600.557300 | CP & SANITARYWARE FIXING L11 | 2d | 2028-06-11 | 2028-06-12 | 971 |  | RGA -FINISHING | 7813102 |
| 973 | 40200.40300.40500.44600.557400 | CP & SANITARYWARE FIXING L12 | 2d | 2028-06-13 | 2028-06-14 | 972 |  | RGA -FINISHING | 7813112 |
| 974 | 40200.40300.40500.44600.557500 | CP & SANITARYWARE FIXING L13 | 2d | 2028-06-15 | 2028-06-16 | 973 |  | RGA -FINISHING | 7813122 |
| 975 | 40200.40300.40500.44600.557600 | CP & SANITARYWARE FIXING L14 | 2d | 2028-06-17 | 2028-06-18 | 974 |  | RGA -FINISHING | 7813132 |
| 976 | 40200.40300.40500.44600.557700 | CP & SANITARYWARE FIXING L15 | 2d | 2028-06-19 | 2028-06-20 | 975 |  | RGA -FINISHING | 7813142 |
| 977 | 40200.40300.40500.44600.557800 | CP & SANITARYWARE FIXING L16 | 2d | 2028-06-21 | 2028-06-22 | 976 |  | RGA -FINISHING | 7813152 |
| 978 | 40200.40300.40500.44600.557900 | CP & SANITARYWARE FIXING L17 | 2d | 2028-06-23 | 2028-06-24 | 977 |  | RGA -FINISHING | 7813162 |
| 979 | 40200.40300.40500.44600.558000 | CP & SANITARYWARE FIXING L18 | 2d | 2028-06-25 | 2028-06-26 | 978 |  | RGA -FINISHING | 7813172 |
| 980 | 40200.40300.40500.44600.558100 | CP & SANITARYWARE FIXING L18 | 2d | 2028-06-27 | 2028-06-28 | 979 |  | RGA -FINISHING | 7813182 |
| 981 | 40200.40300.40500.44600.558200 | CP & SANITARYWARE FIXING L19 | 2d | 2028-06-29 | 2028-06-30 | 980 |  | RGA -FINISHING | 7813192 |
| 982 | 40200.40300.40500.44600.558300 | CP & SANITARYWARE FIXING L20 | 2d | 2028-07-01 | 2028-07-02 | 981 |  | RGA -FINISHING | 7813202 |

Notes:
- 913: Completion in 12 months post last RCC

| ID | WBS | Task | Type | Duration | Start | Finish | Predecessors | Complete | Constraint | Calendar | Unique_Task_ID |
| --- | --- | --- | --- | --- | --- | --- | --- | --- | --- | --- | --- |
| 983 | 40200.40300.40500.44600.558400 | CP & SANITARYWARE FIXING L21 |  | 2d | 2028-07-03 | 2028-07-04 | 982 |  |  | RGA -FINISHING | 7813212 |
| 984 | 40200.40300.40500.44600.558500 | CP & SANITARYWARE FIXING L22 |  | 2d | 2028-07-05 | 2028-07-06 | 983 |  |  | RGA -FINISHING | 7813222 |
| 985 | 40200.40300.40500.44600.558600 | CP & SANITARYWARE FIXING L23 |  | 2d | 2028-07-07 | 2028-07-08 | 984 |  |  | RGA -FINISHING | 7813232 |
| 986 | 40200.40300.40500.44600.558700 | CP & SANITARYWARE FIXING L24 |  | 2d | 2028-07-09 | 2028-07-10 | 985 |  |  | RGA -FINISHING | 7813242 |
| 987 | 40200.40300.40500.44600.558800 | CP & SANITARYWARE FIXING L25 |  | 2d | 2028-07-11 | 2028-07-12 | 986 |  |  | RGA -FINISHING | 7813252 |
| 988 | 40200.40300.40500.537600 | Miscellaneous (Aluform Supply) |  | 90d | 2025-08-11 | 2025-11-20 | 61FS-160d | 100% | start no earlier than 2025-08-11 | RGA -FINISHING | 7812512 |
| 989 | 40200.40300.40500.537200 | Miscellaneous |  | 746d | 2024-05-02 | 2027-12-24 | 988FS-470d | 52% |  | Indian Calendar | 7812522 |
| 990 | 40200.40300.40500.545500 | Miscellaneous |  | 570d | 2027-04-05 | 2029-01-27 | 988FS+428d |  |  | Indian Calendar | 10722948 |
| 991 | 40200.40300.41000 | **TOWER 6 - (B+G+25 Floors+Terrace)** |  | 1411d | 2025-02-15 | 2029-02-03 |  | 2% | start no earlier than 2025-02-15 | RGA - STRUCTURE | 7803162 |
| 992 | 40200.40300.41000.1170100 | Start date for Tower 6 | milestone | 0d | 2026-01-11 | 2026-01-11 | 1978FS+7d |  |  | RGA - STRUCTURE | 7847672 |
| 993 | 40200.40300.41000.459500 | **Earth work** |  | 171d | 2025-02-15 | 2025-08-06 |  | 100% | start no earlier than 2025-02-15 | RGA - STRUCTURE | 7811742 |
| 994 | 40200.40300.41000.459500.541300 | EXCAVATION - Tower Area |  | 48d | 2025-02-15 | 2025-08-05 | 992SS-158d | 100% | start no earlier than 2025-02-15 | RGA - STRUCTURE | 7813292 |
| 995 | 40200.40300.41000.459500.541200 | Excavation - Non Tower Area |  | 60d | 2025-03-18 | 2025-08-06 | 994FS-93d | 100% | start no earlier than 2025-03-18 | 5 day week, Bank Hols Xmas | 7433465 |
| 996 | 40200.40300.41000.69900 | **Substructure works (Works up to plinth)** |  | 1129d | 2025-07-24 | 2028-10-01 |  | 2% | start no earlier than 2025-07-24 | RGA - STRUCTURE | 7803912 |
| 997 | 40200.40300.41000.69900.71700 | **Civil works (Shell & Core basement)** |  | 157d | 2025-07-24 | 2025-12-30 |  | 55% | start no earlier than 2025-07-24 | RGA - STRUCTURE | 7806842 |
| 998 | 40200.40300.41000.69900.71700.161100 | **RCC Works - Tower area 1st Basement** |  | 157d | 2025-07-24 | 2025-12-30 |  | 55% | start no earlier than 2025-07-24 | RGA - STRUCTURE | 7808182 |
| 999 | 40200.40300.41000.69900.71700.161100.368800 | **Foundation** |  | 36d | 2025-07-24 | 2025-08-29 |  | 100% | start no earlier than 2025-07-24 | RGA - STRUCTURE | 7809302 |
| 1000 | 40200.40300.41000.69900.71700.161100.368800.525300 | Pocket Excavation |  | 3d | 2025-07-24 | 2025-07-26 | 995 | 100% | start no earlier than 2025-07-24 | RGA - STRUCTURE | 7832802 |
| 1001 | 40200.40300.41000.69900.71700.161100.368800.525400 | Footing PCC |  | 3d | 2025-07-26 | 2025-08-12 | 1000 | 100% | start no earlier than 2025-07-26 | RGA - STRUCTURE | 7832812 |
| 1002 | 40200.40300.41000.69900.71700.161100.368800.525500 | Footing / Raft works |  | 8d | 2025-08-13 | 2025-08-29 | 1001 | 100% | start no earlier than 2025-08-13 | RGA - STRUCTURE | 7832822 |
| 1003 | 40200.40300.41000.69900.71700.161100.234600 | **UB Floor Slab** |  | 111d | 2025-09-09 | 2025-12-30 |  | 43% | start no earlier than 2025-09-09 | RGA - STRUCTURE | 7811812 |
| 1004 | 40200.40300.41000.69900.71700.161100.234600.1171900 | Columns in Upper basement | milestone | 0d | 2025-11-30 | 2025-11-30 | 1002 |  |  | RGA - STRUCTURE | 7832832 |
| 1005 | 40200.40300.41000.69900.71700.161100.234600.1172000 | Upper Basement slab | milestone | 0d | 2025-11-30 | 2025-11-30 | 1004 |  |  | RGA - STRUCTURE | 7832842 |
| 1006 | 40200.40300.41000.69900.71700.161100.234600.395100 | **Ground Floor Slab** |  | 111d | 2025-09-09 | 2025-12-30 |  | 43% | start no earlier than 2025-09-09 | RGA - STRUCTURE | 8865294 |
| 1007 | 40200.40300.41000.69900.71700.161100.234600.395100.528000 | Columns in Upper basement |  | 25d | 2025-09-09 | 2025-12-08 | 1005FS-80d | 64% |  | RGA - STRUCTURE | 8865304 |
| 1008 | 40200.40300.41000.69900.71700.161100.234600.395100.528100 | Upper Basement slab |  | 30d | 2025-11-04 | 2025-12-30 | 1007FS-35d | 26% |  | RGA - STRUCTURE | 8865314 |

Notes:
- 993: 2 Months for Excavation

| ID | WBS | Task | Duration | Start | Finish | Predecessors | Constraint | Calendar | Unique_Task_ID |
| --- | --- | --- | --- | --- | --- | --- | --- | --- | --- |
| 1009 | 40200.40300.41000.69900.502100 | **Basement Block work and Plaster finishing** | 90d | 2027-03-12 | 2027-06-09 |  | start no earlier than 2027-03-12 | RGA - STRUCTURE | 7812142 |
| 1010 | 40200.40300.41000.69900.502100.852200 | Upper basement | 45d | 2027-03-12 | 2027-04-25 | 1121 |  | RGA - STRUCTURE | 7820092 |
| 1011 | 40200.40300.41000.69900.502100.852300 | 2nd Basement | 45d | 2027-04-26 | 2027-06-09 | 1010 |  | RGA - STRUCTURE | 8865324 |
| 1012 | 40200.40300.41000.69900.160300 | **Services** | 450d | 2027-07-10 | 2028-10-01 |  | start no earlier than 2027-07-10 | RGA -FINISHING | 7805382 |
| 1013 | 40200.40300.41000.69900.160300.365000 | **Plumbing** | 180d | 2027-10-08 | 2028-04-04 |  | start no earlier than 2027-10-08 | RGA -FINISHING | 7808992 |
| 1014 | 40200.40300.41000.69900.160300.365000.484500 | **Upper Basement Plumbing** | 180d | 2027-10-08 | 2028-04-04 |  | start no earlier than 2027-10-08 | RGA -FINISHING | 7812332 |
| 1015 | 40200.40300.41000.69900.160300.365000.484500.2215800 | Upper Basement Plumbing | 90d | 2027-10-08 | 2028-01-05 | 1019 |  | RGA -FINISHING | 7832852 |
| 1016 | 40200.40300.41000.69900.160300.365000.484500.2215900 | Upper Basement Plumbing | 90d | 2028-01-06 | 2028-04-04 | 1015 |  | RGA -FINISHING | 8865334 |
| 1017 | 40200.40300.41000.69900.160300.365100 | **Fire fighting** | 180d | 2027-07-10 | 2028-01-05 |  | start no earlier than 2027-07-10 | RGA -FINISHING | 7809002 |
| 1018 | 40200.40300.41000.69900.160300.365100.484400 | **Upper Basement Fire fighting** | 180d | 2027-07-10 | 2028-01-05 |  | start no earlier than 2027-07-10 | RGA -FINISHING | 7812322 |
| 1019 | 40200.40300.41000.69900.160300.365100.484400.2216000 | Upper Basement Fire fighting | 90d | 2027-07-10 | 2027-10-07 | 1121FS+120d |  | RGA -FINISHING | 7832862 |
| 1020 | 40200.40300.41000.69900.160300.365100.484400.2216100 | Upper Basement Fire fighting | 90d | 2027-10-08 | 2028-01-05 | 1019 |  | RGA -FINISHING | 8865354 |
| 1021 | 40200.40300.41000.69900.160300.365200 | **Ventilation** | 180d | 2027-10-08 | 2028-04-04 |  | start no earlier than 2027-10-08 | RGA -FINISHING | 7809012 |
| 1022 | 40200.40300.41000.69900.160300.365200.484300 | **Upper Basement ventilation** | 180d | 2027-10-08 | 2028-04-04 |  | start no earlier than 2027-10-08 | RGA -FINISHING | 7812312 |
| 1023 | 40200.40300.41000.69900.160300.365200.484300.2216200 | Upper Basement ventilation | 90d | 2027-10-08 | 2028-01-05 | 1019 |  | RGA -FINISHING | 7832872 |
| 1024 | 40200.40300.41000.69900.160300.365200.484300.2216300 | Upper Basement ventilation | 90d | 2028-01-06 | 2028-04-04 | 1023 |  | RGA -FINISHING | 8865364 |
| 1025 | 40200.40300.41000.69900.160300.365300 | **Electrification** | 180d | 2028-01-06 | 2028-07-03 |  | start no earlier than 2028-01-06 | RGA -FINISHING | 7809022 |
| 1026 | 40200.40300.41000.69900.160300.365300.484200 | **Upper Basement Electrification** | 180d | 2028-01-06 | 2028-07-03 |  | start no earlier than 2028-01-06 | RGA -FINISHING | 7812302 |
| 1027 | 40200.40300.41000.69900.160300.365300.484200.2216400 | Upper Basement Electrification | 90d | 2028-01-06 | 2028-04-04 | 1023 |  | RGA -FINISHING | 7832882 |
| 1028 | 40200.40300.41000.69900.160300.365300.484200.2216500 | Upper Basement Electrification | 90d | 2028-04-05 | 2028-07-03 | 1027 |  | RGA -FINISHING | 8865374 |
| 1029 | 40200.40300.41000.69900.160300.365400 | **Security installations** | 180d | 2028-04-05 | 2028-10-01 |  | start no earlier than 2028-04-05 | RGA -FINISHING | 7809032 |
| 1030 | 40200.40300.41000.69900.160300.365400.484000 | **Upper Basement Security installations** | 180d | 2028-04-05 | 2028-10-01 |  | start no earlier than 2028-04-05 | RGA -FINISHING | 7812292 |
| 1031 | 40200.40300.41000.69900.160300.365400.484000.2216600 | Upper Basement Security installations | 90d | 2028-04-05 | 2028-07-03 | 1027 |  | RGA -FINISHING | 7832892 |
| 1032 | 40200.40300.41000.69900.160300.365400.484000.2216700 | Upper Basement Security installations | 90d | 2028-07-04 | 2028-10-01 | 1031 |  | RGA -FINISHING | 8865384 |

| ID | WBS | Task | Duration | Start | Finish | Predecessors | Constraint | Calendar | Unique_Task_ID |
| --- | --- | --- | --- | --- | --- | --- | --- | --- | --- |
| 1033 | 40200.40300.41000.69900.349900 | **Finishing work** | 270d | 2027-04-26 | 2028-01-20 |  | start no earlier than 2027-04-26 | RGA -FINISHING | 7808512 |
| 1034 | 40200.40300.41000.69900.349900.497600 | **Basement Flooring** | 180d | 2027-04-26 | 2027-10-22 |  | start no earlier than 2027-04-26 | RGA -FINISHING | 7812362 |
| 1035 | 40200.40300.41000.69900.349900.497600.937100 | 1st Basement ventilation | 90d | 2027-04-26 | 2027-07-24 | 1010 |  | RGA -FINISHING | 7826512 |
| 1036 | 40200.40300.41000.69900.349900.497600.937200 | 1st Basement ventilation | 90d | 2027-07-25 | 2027-10-22 | 1035 |  | RGA -FINISHING | 8865394 |
| 1037 | 40200.40300.41000.69900.349900.497500 | **Basement Painting (1st Coat)** | 180d | 2027-07-25 | 2028-01-20 |  | start no earlier than 2027-07-25 | RGA -FINISHING | 7812372 |
| 1038 | 40200.40300.41000.69900.349900.497500.937300 | 2nd Basement ventilation | 90d | 2027-07-25 | 2027-10-22 | 1035 |  | RGA -FINISHING | 7826522 |
| 1039 | 40200.40300.41000.69900.349900.497500.937400 | 2nd Basement ventilation | 90d | 2027-10-23 | 2028-01-20 | 1038 |  | RGA -FINISHING | 8865404 |
| 1040 | 40200.40300.41000.69900.502000 | **Water Proofing work** | 90d | 2027-04-26 | 2027-07-24 |  | start no earlier than 2027-04-26 | RGA -FINISHING | 7812062 |
| 1041 | 40200.40300.41000.69900.502000.852400 | 1st Basement | 45d | 2027-04-26 | 2027-06-09 | 1010 |  | RGA -FINISHING | 7820102 |
| 1042 | 40200.40300.41000.69900.502000.852500 | 2nd Basement | 45d | 2027-06-10 | 2027-07-24 | 1041 |  | RGA -FINISHING | 8865414 |
| 1043 | 40200.40300.41000.56100 | **Superstructure works** | 913d | 2025-11-30 | 2028-07-03 |  | start no earlier than 2025-11-30 | RGA - STRUCTURE | 7803352 |
| 1044 | 40200.40300.41000.56100.58700 | **Civil works** | 803d | 2025-11-30 | 2028-03-15 |  | start no earlier than 2025-11-30 | RGA - STRUCTURE | 7803442 |
| 1045 | 40200.40300.41000.56100.58700.61900 | **Superstructure RCC Work** | 546d | 2026-01-07 | 2027-08-09 |  | start no earlier than 2026-01-07 | RGA - STRUCTURE | 7803622 |
| 1046 | 40200.40300.41000.56100.58700.61900.62900 | **Slab RCC works** | 497d | 2026-01-07 | 2027-06-21 |  | start no earlier than 2026-01-07 | RGA - STRUCTURE | 7803672 |
| 1047 | 40200.40300.41000.56100.58700.61900.62900.500400 | **1st Floor slab (Height More)** | 35d | 2026-01-07 | 2026-02-11 |  | start no earlier than 2026-01-07 | RGA - STRUCTURE | 7811672 |
| 1048 | 40200.40300.41000.56100.58700.61900.62900.500400.2612700 | Columns | 20d | 2026-01-07 | 2026-01-27 | 1008FS+7d |  | RGA - STRUCTURE | 7850842 |
| 1049 | 40200.40300.41000.56100.58700.61900.62900.500400.2612800 | Slabs | 15d | 2026-01-28 | 2026-02-11 | 1048 |  | RGA - STRUCTURE | 7850852 |
| 1050 | 40200.40300.41000.56100.58700.61900.62900.500500 | **2nd Floor slab (Combo)** | 30d | 2026-02-12 | 2026-03-13 |  | start no earlier than 2026-02-12 | RGA - STRUCTURE | 7811682 |
| 1051 | 40200.40300.41000.56100.58700.61900.62900.500500.2612900 | Columns | 15d | 2026-02-12 | 2026-02-26 | 1049 |  | RGA - STRUCTURE | 7850862 |
| 1052 | 40200.40300.41000.56100.58700.61900.62900.500500.2613000 | Slabs | 15d | 2026-02-27 | 2026-03-13 | 1051 |  | RGA - STRUCTURE | 7850872 |
| 1053 | 40200.40300.41000.56100.58700.61900.62900.395000 | **3rd Floor slab (1st Set Up)** | 30d | 2026-03-14 | 2026-04-12 |  | start no earlier than 2026-03-14 | RGA - STRUCTURE | 7809632 |
| 1054 | 40200.40300.41000.56100.58700.61900.62900.395000.2613100 | Walls rebar & Form work | 15d | 2026-03-14 | 2026-03-28 | 1052 |  | RGA - STRUCTURE | 7850882 |
| 1055 | 40200.40300.41000.56100.58700.61900.62900.395000.2613200 | Slab formwork & rebar | 14d | 2026-03-29 | 2026-04-11 | 1054 |  | RGA - STRUCTURE | 7850892 |
| 1056 | 40200.40300.41000.56100.58700.61900.62900.395000.2613300 | Concreting | 1d | 2026-04-12 | 2026-04-12 | 1055 |  | RGA - STRUCTURE | 7850902 |

Notes:
- 1050: AVg Slab Cycle of 21 days
- 1053: AVg Slab Cycle of 21 days

| ID | WBS | Task | Duration | Start | Finish | Predecessors | Constraint | Calendar | Unique_Task_ID |
| --- | --- | --- | --- | --- | --- | --- | --- | --- | --- |
| 1057 | 40200.40300.41000.56100.58700.61900.62900.394900 | **4th Floor slab(2nd Set Up)** | 28d | 2026-04-13 | 2026-05-11 |  | start no earlier than 2026-04-13 | RGA - STRUCTURE | 7809642 |
| 1058 | 40200.40300.41000.56100.58700.61900.62900.394900.2613400 | Wall & Slab Form work | 14d | 2026-04-13 | 2026-04-26 | 1056 |  | RGA - STRUCTURE | 7850912 |
| 1059 | 40200.40300.41000.56100.58700.61900.62900.394900.2613500 | Slab & Beam Reinf. | 13d | 2026-04-27 | 2026-05-10 | 1058 |  | RGA - STRUCTURE | 7850922 |
| 1060 | 40200.40300.41000.56100.58700.61900.62900.394900.2613600 | Concreting | 1d | 2026-05-11 | 2026-05-11 | 1059 |  | RGA - STRUCTURE | 7850932 |
| 1061 | 40200.40300.41000.56100.58700.61900.62900.394800 | **5th Floor slab** | 17d | 2026-05-12 | 2026-05-28 |  | start no earlier than 2026-05-12 | RGA - STRUCTURE | 7809652 |
| 1062 | 40200.40300.41000.56100.58700.61900.62900.394800.2613700 | Wall & Slab Form work | 8d | 2026-05-12 | 2026-05-19 | 1060 |  | RGA - STRUCTURE | 7850942 |
| 1063 | 40200.40300.41000.56100.58700.61900.62900.394800.2613800 | Slab & Beam Reinf. | 8d | 2026-05-20 | 2026-05-27 | 1062 |  | RGA - STRUCTURE | 7850952 |
| 1064 | 40200.40300.41000.56100.58700.61900.62900.394800.2613900 | Concreting | 1d | 2026-05-28 | 2026-05-28 | 1063 |  | RGA - STRUCTURE | 7850962 |
| 1065 | 40200.40300.41000.56100.58700.61900.62900.394700 | **6th Floor slab** | 17d | 2026-05-29 | 2026-06-14 |  | start no earlier than 2026-05-29 | RGA - STRUCTURE | 7809662 |
| 1066 | 40200.40300.41000.56100.58700.61900.62900.394700.2614000 | Wall & Slab Form work | 8d | 2026-05-29 | 2026-06-05 | 1064 |  | RGA - STRUCTURE | 7850972 |
| 1067 | 40200.40300.41000.56100.58700.61900.62900.394700.2614100 | Slab & Beam Reinf. | 8d | 2026-06-06 | 2026-06-13 | 1066 |  | RGA - STRUCTURE | 7850982 |
| 1068 | 40200.40300.41000.56100.58700.61900.62900.394700.2614200 | Concreting | 1d | 2026-06-14 | 2026-06-14 | 1067 |  | RGA - STRUCTURE | 7850992 |
| 1069 | 40200.40300.41000.56100.58700.61900.62900.394600 | **7th Floor slab** | 17d | 2026-06-15 | 2026-07-16 |  | start no earlier than 2026-06-15 | RGA - STRUCTURE | 7809672 |
| 1070 | 40200.40300.41000.56100.58700.61900.62900.394600.2614300 | Wall & Slab Form work | 8d | 2026-06-15 | 2026-06-29 | 1068 |  | RGA - STRUCTURE | 7851002 |
| 1071 | 40200.40300.41000.56100.58700.61900.62900.394600.2614400 | Slab & Beam Reinf. | 8d | 2026-06-30 | 2026-07-15 | 1070 |  | RGA - STRUCTURE | 7851012 |
| 1072 | 40200.40300.41000.56100.58700.61900.62900.394600.2614500 | Concreting | 1d | 2026-07-16 | 2026-07-16 | 1071 |  | RGA - STRUCTURE | 7851022 |
| 1073 | 40200.40300.41000.56100.58700.61900.62900.394500 | **8th Floor slab** | 17d | 2026-07-17 | 2026-08-02 |  | start no earlier than 2026-07-17 | RGA - STRUCTURE | 7809682 |
| 1074 | 40200.40300.41000.56100.58700.61900.62900.394500.2614600 | Wall & Slab Form work | 8d | 2026-07-17 | 2026-07-24 | 1072 |  | RGA - STRUCTURE | 7851032 |
| 1075 | 40200.40300.41000.56100.58700.61900.62900.394500.2614700 | Slab & Beam Reinf. | 8d | 2026-07-25 | 2026-08-01 | 1074 |  | RGA - STRUCTURE | 7851042 |
| 1076 | 40200.40300.41000.56100.58700.61900.62900.394500.2614800 | Concreting | 1d | 2026-08-02 | 2026-08-02 | 1075 |  | RGA - STRUCTURE | 7851052 |
| 1077 | 40200.40300.41000.56100.58700.61900.62900.394400 | **9th Floor slab** | 17d | 2026-08-03 | 2026-08-20 |  | start no earlier than 2026-08-03 | RGA - STRUCTURE | 7809692 |
| 1078 | 40200.40300.41000.56100.58700.61900.62900.394400.2614900 | Wall & Slab Form work | 8d | 2026-08-03 | 2026-08-10 | 1076 |  | RGA - STRUCTURE | 7851062 |
| 1079 | 40200.40300.41000.56100.58700.61900.62900.394400.2615000 | Slab & Beam Reinf. | 8d | 2026-08-11 | 2026-08-19 | 1078 |  | RGA - STRUCTURE | 7851072 |
| 1080 | 40200.40300.41000.56100.58700.61900.62900.394400.2615100 | Concreting | 1d | 2026-08-20 | 2026-08-20 | 1079 |  | RGA - STRUCTURE | 7851082 |

Notes:
- 1057: AVg Slab Cycle of 21 days

| ID | WBS | Task | Duration | Start | Finish | Predecessors | Constraint | Calendar | Unique_Task_ID |
| --- | --- | --- | --- | --- | --- | --- | --- | --- | --- |
| 1081 | 40200.40300.41000.56100.58700.61900.62900.394300 | **10th Floor slab** | 17d | 2026-08-21 | 2026-09-06 |  | start no earlier than 2026-08-21 | RGA - STRUCTURE | 7809702 |
| 1082 | 40200.40300.41000.56100.58700.61900.62900.394300.2615200 | Wall & Slab Form work | 8d | 2026-08-21 | 2026-08-28 | 1080 |  | RGA - STRUCTURE | 7851092 |
| 1083 | 40200.40300.41000.56100.58700.61900.62900.394300.2615300 | Slab & Beam Reinf. | 8d | 2026-08-29 | 2026-09-05 | 1082 |  | RGA - STRUCTURE | 7851102 |
| 1084 | 40200.40300.41000.56100.58700.61900.62900.394300.2615400 | Concreting | 1d | 2026-09-06 | 2026-09-06 | 1083 |  | RGA - STRUCTURE | 7851112 |
| 1085 | 40200.40300.41000.56100.58700.61900.62900.394200 | **11th Floor slab** | 17d | 2026-09-07 | 2026-09-23 |  | start no earlier than 2026-09-07 | RGA - STRUCTURE | 7809712 |
| 1086 | 40200.40300.41000.56100.58700.61900.62900.394200.2615500 | Wall & Slab Form work | 8d | 2026-09-07 | 2026-09-14 | 1084 |  | RGA - STRUCTURE | 7851122 |
| 1087 | 40200.40300.41000.56100.58700.61900.62900.394200.2615600 | Slab & Beam Reinf. | 8d | 2026-09-15 | 2026-09-22 | 1086 |  | RGA - STRUCTURE | 7851132 |
| 1088 | 40200.40300.41000.56100.58700.61900.62900.394200.2615700 | Concreting | 1d | 2026-09-23 | 2026-09-23 | 1087 |  | RGA - STRUCTURE | 7851142 |
| 1089 | 40200.40300.41000.56100.58700.61900.62900.394100 | **12th Floor slab** | 17d | 2026-09-24 | 2026-10-11 |  | start no earlier than 2026-09-24 | RGA - STRUCTURE | 7809722 |
| 1090 | 40200.40300.41000.56100.58700.61900.62900.394100.2615800 | Wall & Slab Form work | 8d | 2026-09-24 | 2026-10-01 | 1088 |  | RGA - STRUCTURE | 7851152 |
| 1091 | 40200.40300.41000.56100.58700.61900.62900.394100.2615900 | Slab & Beam Reinf. | 8d | 2026-10-03 | 2026-10-10 | 1090 |  | RGA - STRUCTURE | 7851162 |
| 1092 | 40200.40300.41000.56100.58700.61900.62900.394100.2616000 | Concreting | 1d | 2026-10-11 | 2026-10-11 | 1091 |  | RGA - STRUCTURE | 7851172 |
| 1093 | 40200.40300.41000.56100.58700.61900.62900.394000 | **13th Floor slab** | 17d | 2026-10-12 | 2026-10-28 |  | start no earlier than 2026-10-12 | RGA - STRUCTURE | 7809732 |
| 1094 | 40200.40300.41000.56100.58700.61900.62900.394000.2616100 | Wall & Slab Form work | 8d | 2026-10-12 | 2026-10-19 | 1092 |  | RGA - STRUCTURE | 7851182 |
| 1095 | 40200.40300.41000.56100.58700.61900.62900.394000.2616200 | Slab & Beam Reinf. | 8d | 2026-10-20 | 2026-10-27 | 1094 |  | RGA - STRUCTURE | 7851192 |
| 1096 | 40200.40300.41000.56100.58700.61900.62900.394000.2616300 | Concreting | 1d | 2026-10-28 | 2026-10-28 | 1095 |  | RGA - STRUCTURE | 7851202 |
| 1097 | 40200.40300.41000.56100.58700.61900.62900.393900 | **14th Floor slab** | 17d | 2026-10-29 | 2026-11-14 |  | start no earlier than 2026-10-29 | RGA - STRUCTURE | 7809742 |
| 1098 | 40200.40300.41000.56100.58700.61900.62900.393900.2616400 | Wall & Slab Form work | 8d | 2026-10-29 | 2026-11-05 | 1096 |  | RGA - STRUCTURE | 7851212 |
| 1099 | 40200.40300.41000.56100.58700.61900.62900.393900.2616500 | Slab & Beam Reinf. | 8d | 2026-11-06 | 2026-11-13 | 1098 |  | RGA - STRUCTURE | 7851222 |
| 1100 | 40200.40300.41000.56100.58700.61900.62900.393900.2616600 | Concreting | 1d | 2026-11-14 | 2026-11-14 | 1099 |  | RGA - STRUCTURE | 7851232 |
| 1101 | 40200.40300.41000.56100.58700.61900.62900.393800 | **15th Floor slab** | 17d | 2026-11-15 | 2026-12-16 |  | start no earlier than 2026-11-15 | RGA - STRUCTURE | 7809752 |
| 1102 | 40200.40300.41000.56100.58700.61900.62900.393800.2616700 | Wall & Slab Form work | 8d | 2026-11-15 | 2026-11-29 | 1100 |  | RGA - STRUCTURE | 7851242 |
| 1103 | 40200.40300.41000.56100.58700.61900.62900.393800.2616800 | Slab & Beam Reinf. | 8d | 2026-11-30 | 2026-12-15 | 1102 |  | RGA - STRUCTURE | 7851252 |
| 1104 | 40200.40300.41000.56100.58700.61900.62900.393800.2616900 | Concreting | 1d | 2026-12-16 | 2026-12-16 | 1103 |  | RGA - STRUCTURE | 7851262 |

Notes:
- 1089: AVg Slab Cycle of 21 days
- 1093: AVg Slab Cycle of 21 days
- 1097: AVg Slab Cycle of 21 days

| ID | WBS | Task | Duration | Start | Finish | Predecessors | Constraint | Calendar | Unique_Task_ID |
| --- | --- | --- | --- | --- | --- | --- | --- | --- | --- |
| 1105 | 40200.40300.41000.56100.58700.61900.62900.393700 | **16th Floor slab** | 17d | 2026-12-17 | 2027-01-02 |  | start no earlier than 2026-12-17 | RGA - STRUCTURE | 7809762 |
| 1106 | 40200.40300.41000.56100.58700.61900.62900.393700.2617000 | Wall & Slab Form work | 8d | 2026-12-17 | 2026-12-24 | 1104 |  | RGA - STRUCTURE | 7851272 |
| 1107 | 40200.40300.41000.56100.58700.61900.62900.393700.2617100 | Slab & Beam Reinf. | 8d | 2026-12-25 | 2027-01-01 | 1106 |  | RGA - STRUCTURE | 7851282 |
| 1108 | 40200.40300.41000.56100.58700.61900.62900.393700.2617200 | Concreting | 1d | 2027-01-02 | 2027-01-02 | 1107 |  | RGA - STRUCTURE | 7851292 |
| 1109 | 40200.40300.41000.56100.58700.61900.62900.393600 | **17th Floor slab** | 17d | 2027-01-03 | 2027-01-19 |  | start no earlier than 2027-01-03 | RGA - STRUCTURE | 7809772 |
| 1110 | 40200.40300.41000.56100.58700.61900.62900.393600.2617300 | Wall & Slab Form work | 8d | 2027-01-03 | 2027-01-10 | 1108 |  | RGA - STRUCTURE | 7851302 |
| 1111 | 40200.40300.41000.56100.58700.61900.62900.393600.2617400 | Slab & Beam Reinf. | 8d | 2027-01-11 | 2027-01-18 | 1110 |  | RGA - STRUCTURE | 7851312 |
| 1112 | 40200.40300.41000.56100.58700.61900.62900.393600.2617500 | Concreting | 1d | 2027-01-19 | 2027-01-19 | 1111 |  | RGA - STRUCTURE | 7851322 |
| 1113 | 40200.40300.41000.56100.58700.61900.62900.393500 | **18th Floor slab** | 17d | 2027-01-20 | 2027-02-05 |  | start no earlier than 2027-01-20 | RGA - STRUCTURE | 7809782 |
| 1114 | 40200.40300.41000.56100.58700.61900.62900.393500.2617600 | Wall & Slab Form work | 8d | 2027-01-20 | 2027-01-27 | 1112 |  | RGA - STRUCTURE | 7851332 |
| 1115 | 40200.40300.41000.56100.58700.61900.62900.393500.2617700 | Slab & Beam Reinf. | 8d | 2027-01-28 | 2027-02-04 | 1114 |  | RGA - STRUCTURE | 7851342 |
| 1116 | 40200.40300.41000.56100.58700.61900.62900.393500.2617800 | Concreting | 1d | 2027-02-05 | 2027-02-05 | 1115 |  | RGA - STRUCTURE | 7851352 |
| 1117 | 40200.40300.41000.56100.58700.61900.62900.393400 | **19th Floor slab** | 17d | 2027-02-06 | 2027-02-22 |  | start no earlier than 2027-02-06 | RGA - STRUCTURE | 7809792 |
| 1118 | 40200.40300.41000.56100.58700.61900.62900.393400.2617900 | Wall & Slab Form work | 8d | 2027-02-06 | 2027-02-13 | 1116 |  | RGA - STRUCTURE | 7851362 |
| 1119 | 40200.40300.41000.56100.58700.61900.62900.393400.2618000 | Slab & Beam Reinf. | 8d | 2027-02-14 | 2027-02-21 | 1118 |  | RGA - STRUCTURE | 7851372 |
| 1120 | 40200.40300.41000.56100.58700.61900.62900.393400.2618100 | Concreting | 1d | 2027-02-22 | 2027-02-22 | 1119 |  | RGA - STRUCTURE | 7851382 |
| 1121 | 40200.40300.41000.56100.58700.61900.62900.393300 | **20th Floor slab (Refuge floor )** | 17d | 2027-02-23 | 2027-03-11 |  | start no earlier than 2027-02-23 | RGA - STRUCTURE | 7809802 |
| 1122 | 40200.40300.41000.56100.58700.61900.62900.393300.2618200 | Wall & Slab Form work | 8d | 2027-02-23 | 2027-03-02 | 1120 |  | RGA - STRUCTURE | 7851392 |
| 1123 | 40200.40300.41000.56100.58700.61900.62900.393300.2618300 | Slab & Beam Reinf. | 8d | 2027-03-03 | 2027-03-10 | 1122 |  | RGA - STRUCTURE | 7851402 |
| 1124 | 40200.40300.41000.56100.58700.61900.62900.393300.2618400 | Concreting | 1d | 2027-03-11 | 2027-03-11 | 1123 |  | RGA - STRUCTURE | 7851412 |
| 1125 | 40200.40300.41000.56100.58700.61900.62900.393200 | **21th Floor slab** | 17d | 2027-03-12 | 2027-03-28 |  | start no earlier than 2027-03-12 | RGA - STRUCTURE | 7809812 |
| 1126 | 40200.40300.41000.56100.58700.61900.62900.393200.2618500 | Wall & Slab Form work | 8d | 2027-03-12 | 2027-03-19 | 1124 |  | RGA - STRUCTURE | 7851422 |
| 1127 | 40200.40300.41000.56100.58700.61900.62900.393200.2618600 | Slab & Beam Reinf. | 8d | 2027-03-20 | 2027-03-27 | 1126 |  | RGA - STRUCTURE | 7851432 |
| 1128 | 40200.40300.41000.56100.58700.61900.62900.393200.2618700 | Concreting | 1d | 2027-03-28 | 2027-03-28 | 1127 |  | RGA - STRUCTURE | 7851442 |

| ID | WBS | Task | Duration | Start | Finish | Predecessors | Constraint | Calendar | Unique_Task_ID |
| --- | --- | --- | --- | --- | --- | --- | --- | --- | --- |
| 1129 | 40200.40300.41000.56100.58700.61900.62900.393100 | **22th Floor slab** | 17d | 2027-03-29 | 2027-04-14 |  | start no earlier than 2027-03-29 | RGA - STRUCTURE | 7809822 |
| 1130 | 40200.40300.41000.56100.58700.61900.62900.393100.2618800 | Wall & Slab Form work | 8d | 2027-03-29 | 2027-04-05 | 1128 |  | RGA - STRUCTURE | 7851452 |
| 1131 | 40200.40300.41000.56100.58700.61900.62900.393100.2618900 | Slab & Beam Reinf. | 8d | 2027-04-06 | 2027-04-13 | 1130 |  | RGA - STRUCTURE | 7851462 |
| 1132 | 40200.40300.41000.56100.58700.61900.62900.393100.2619000 | Concreting | 1d | 2027-04-14 | 2027-04-14 | 1131 |  | RGA - STRUCTURE | 7851472 |
| 1133 | 40200.40300.41000.56100.58700.61900.62900.393000 | **23th Floor slab** | 17d | 2027-04-15 | 2027-05-01 |  | start no earlier than 2027-04-15 | RGA - STRUCTURE | 7809832 |
| 1134 | 40200.40300.41000.56100.58700.61900.62900.393000.2619100 | Wall & Slab Form work | 8d | 2027-04-15 | 2027-04-22 | 1132 |  | RGA - STRUCTURE | 7851482 |
| 1135 | 40200.40300.41000.56100.58700.61900.62900.393000.2619200 | Slab & Beam Reinf. | 8d | 2027-04-23 | 2027-04-30 | 1134 |  | RGA - STRUCTURE | 7851492 |
| 1136 | 40200.40300.41000.56100.58700.61900.62900.393000.2619300 | Concreting | 1d | 2027-05-01 | 2027-05-01 | 1135 |  | RGA - STRUCTURE | 7851502 |
| 1137 | 40200.40300.41000.56100.58700.61900.62900.392900 | **24th Floor slab** | 17d | 2027-05-02 | 2027-05-18 |  | start no earlier than 2027-05-02 | RGA - STRUCTURE | 7809842 |
| 1138 | 40200.40300.41000.56100.58700.61900.62900.392900.2619400 | Wall & Slab Form work | 8d | 2027-05-02 | 2027-05-09 | 1136 |  | RGA - STRUCTURE | 7851512 |
| 1139 | 40200.40300.41000.56100.58700.61900.62900.392900.2619500 | Slab & Beam Reinf. | 8d | 2027-05-10 | 2027-05-17 | 1138 |  | RGA - STRUCTURE | 7851522 |
| 1140 | 40200.40300.41000.56100.58700.61900.62900.392900.2619600 | Concreting | 1d | 2027-05-18 | 2027-05-18 | 1139 |  | RGA - STRUCTURE | 7851532 |
| 1141 | 40200.40300.41000.56100.58700.61900.62900.392800 | **25th Floor slab** | 17d | 2027-05-19 | 2027-06-04 |  | start no earlier than 2027-05-19 | RGA - STRUCTURE | 7809852 |
| 1142 | 40200.40300.41000.56100.58700.61900.62900.392800.2619700 | Wall & Slab Form work | 8d | 2027-05-19 | 2027-05-26 | 1140 |  | RGA - STRUCTURE | 7851542 |
| 1143 | 40200.40300.41000.56100.58700.61900.62900.392800.2619800 | Slab & Beam Reinf. | 8d | 2027-05-27 | 2027-06-03 | 1142 |  | RGA - STRUCTURE | 7851552 |
| 1144 | 40200.40300.41000.56100.58700.61900.62900.392800.2619900 | Concreting | 1d | 2027-06-04 | 2027-06-04 | 1143 |  | RGA - STRUCTURE | 7851562 |
| 1145 | 40200.40300.41000.56100.58700.61900.62900.392700 | **Terrace Floor slab work** | 17d | 2027-06-05 | 2027-06-21 |  | start no earlier than 2027-06-05 | RGA - STRUCTURE | 7809892 |
| 1146 | 40200.40300.41000.56100.58700.61900.62900.392700.2620000 | Wall & Slab Form work | 8d | 2027-06-05 | 2027-06-12 | 1144 |  | RGA - STRUCTURE | 7851632 |
| 1147 | 40200.40300.41000.56100.58700.61900.62900.392700.2620100 | Slab & Beam Reinf. | 8d | 2027-06-13 | 2027-06-20 | 1146 |  | RGA - STRUCTURE | 7851642 |
| 1148 | 40200.40300.41000.56100.58700.61900.62900.392700.2620200 | Concreting | 1d | 2027-06-21 | 2027-06-21 | 1147 |  | RGA - STRUCTURE | 7851652 |
| 1149 | 40200.40300.41000.56100.58700.61900.253400 | **RCC work above Terrace** | 49d | 2027-06-22 | 2027-08-09 |  | start no earlier than 2027-06-22 | RGA - STRUCTURE | 7806952 |
| 1150 | 40200.40300.41000.56100.58700.61900.253400.372000 | **STAIRCASE & OHT CORE** | 49d | 2027-06-22 | 2027-08-09 |  | start no earlier than 2027-06-22 | RGA - STRUCTURE | 7808842 |
| 1151 | 40200.40300.41000.56100.58700.61900.253400.372000.2620300 | STAIRCASE HEAD ROOM | 10d | 2027-06-22 | 2027-07-01 | 1148 |  | RGA - STRUCTURE | 7851662 |
| 1152 | 40200.40300.41000.56100.58700.61900.253400.372000.2620400 | OHT | 25d | 2027-07-02 | 2027-07-26 | 1151 |  | RGA - STRUCTURE | 7851672 |
| 1153 | 40200.40300.41000.56100.58700.61900.253400.372000.2620500 | SHAFT COVERING SLAB | 10d | 2027-06-22 | 2027-07-01 | 1148 |  | RGA - STRUCTURE | 7851682 |
| 1154 | 40200.40300.41000.56100.58700.61900.253400.372000.2620600 | DESHUTTERING OF OHT TOP SLAB | 7d | 2027-08-03 | 2027-08-09 | 1152FS+7d |  | RGA - STRUCTURE | 7851692 |

Notes:
- 1145: AVg Slab Cycle of 21 days

| ID | WBS | Task | Duration | Start | Finish | Predecessors | Constraint | Calendar | Unique_Task_ID |
| --- | --- | --- | --- | --- | --- | --- | --- | --- | --- |
| 1155 | 40200.40300.41000.56100.58700.61900.253400.392600 | **LMR BOTTOM & TOP SLAB** | 43d | 2027-06-22 | 2027-08-03 |  | start no earlier than 2027-06-22 | RGA - STRUCTURE | 7809902 |
| 1156 | 40200.40300.41000.56100.58700.61900.253400.392600.2620700 | LMR COLUMNS / WALLS | 15d | 2027-06-22 | 2027-07-06 | 1148 |  | RGA - STRUCTURE | 7851702 |
| 1157 | 40200.40300.41000.56100.58700.61900.253400.392600.2620800 | LMR TOP SLAB | 20d | 2027-07-07 | 2027-07-26 | 1156 |  | RGA - STRUCTURE | 7851712 |
| 1158 | 40200.40300.41000.56100.58700.61900.253400.392600.2620900 | DESHUTTERING | 8d | 2027-07-27 | 2027-08-03 | 1157 |  | RGA - STRUCTURE | 7851722 |
| 1159 | 40200.40300.41000.56100.58700.59100 | **Civil Finishing works (Brick work, Plaster,conduiting, concled plumbing, waterproofing)** | 837d | 2025-11-30 | 2028-03-15 |  | start no earlier than 2025-11-30 | RGA -FINISHING | 7803492 |
| 1160 | 40200.40300.41000.56100.58700.59100.60800 | **Flat finishing works** | 685d | 2025-11-30 | 2027-10-15 |  | start no earlier than 2025-11-30 | RGA -FINISHING | 7803582 |
| 1161 | 40200.40300.41000.56100.58700.59100.60800.263000 | **Ground FLOOR** | 68d | 2026-04-28 | 2026-07-04 |  | start no earlier than 2026-04-28 | RGA -FINISHING | 7807302 |
| 1162 | 40200.40300.41000.56100.58700.59100.60800.263000.2621000 | BALCONY RAILING FIXING | 9d | 2026-04-28 | 2026-05-06 | 1056FS+15d |  | RGA -FINISHING | 7851732 |
| 1163 | 40200.40300.41000.56100.58700.59100.60800.263000.2621100 | Block work | 2d | 2026-06-28 | 2026-06-29 | 1167 |  | RGA -FINISHING | 7851742 |
| 1164 | 40200.40300.41000.56100.58700.59100.60800.263000.2621200 | CONCEALED ELEC CONDUITING & ITS FINISHING | 5d | 2026-06-30 | 2026-07-04 | 1163 |  | RGA -FINISHING | 7851752 |
| 1165 | 40200.40300.41000.56100.58700.59100.60800.263000.2621300 | PLASTER APPLICATION | 6d | 2026-06-06 | 2026-06-11 | 1356FS+15d |  | RGA -FINISHING | 7851762 |
| 1166 | 40200.40300.41000.56100.58700.59100.60800.263000.2621400 | CONCEALED PLUMBING | 8d | 2026-06-12 | 2026-06-19 | 1165 |  | RGA -FINISHING | 7851772 |
| 1167 | 40200.40300.41000.56100.58700.59100.60800.263000.2621500 | WATERPROOFING WORK FOR TOILETS, KITCHEN SUNK & PLANTERS | 8d | 2026-06-20 | 2026-06-27 | 1166 |  | RGA -FINISHING | 7851782 |
| 1168 | 40200.40300.41000.56100.58700.59100.60800.263100 | **1ST FLOOR** | 168d | 2026-02-07 | 2026-07-24 |  | start no earlier than 2026-02-07 | RGA -FINISHING | 7807312 |
| 1169 | 40200.40300.41000.56100.58700.59100.60800.263100.2621600 | BALCONY RAILING FIXING | 9d | 2026-05-27 | 2026-06-04 | 1060FS+15d |  | RGA -FINISHING | 7851792 |
| 1170 | 40200.40300.41000.56100.58700.59100.60800.263100.2621700 | Block work | 2d | 2026-07-23 | 2026-07-24 | 1174 |  | RGA -FINISHING | 7851802 |
| 1171 | 40200.40300.41000.56100.58700.59100.60800.263100.2621800 | CONCEALED ELEC CONDUITING & ITS FINISHING | 5d | 2026-02-07 | 2026-02-11 | 1049FS-5d |  | RGA -FINISHING | 7851812 |
| 1172 | 40200.40300.41000.56100.58700.59100.60800.263100.2621900 | PLASTER APPLICATION | 6d | 2026-07-01 | 2026-07-06 | 1369FS+20d |  | RGA -FINISHING | 7851822 |
| 1173 | 40200.40300.41000.56100.58700.59100.60800.263100.2622000 | CONCEALED PLUMBING | 8d | 2026-07-07 | 2026-07-14 | 1172 |  | RGA -FINISHING | 7851832 |
| 1174 | 40200.40300.41000.56100.58700.59100.60800.263100.2622100 | WATERPROOFING WORK FOR TOILETS, KITCHEN SUNK & PLANTERS | 8d | 2026-07-15 | 2026-07-22 | 1173 |  | RGA -FINISHING | 7851842 |
| 1175 | 40200.40300.41000.56100.58700.59100.60800.263200 | **2nd FLOOR** | 155d | 2026-03-09 | 2026-08-10 |  | start no earlier than 2026-03-09 | RGA -FINISHING | 7807322 |
| 1176 | 40200.40300.41000.56100.58700.59100.60800.263200.2622200 | BALCONY RAILING FIXING | 9d | 2026-06-13 | 2026-06-21 | 1064FS+15d |  | RGA -FINISHING | 7851852 |
| 1177 | 40200.40300.41000.56100.58700.59100.60800.263200.2622300 | Block work | 2d | 2026-08-09 | 2026-08-10 | 1181 |  | RGA -FINISHING | 7851862 |
| 1178 | 40200.40300.41000.56100.58700.59100.60800.263200.2622400 | CONCEALED ELEC CONDUITING & ITS FINISHING | 5d | 2026-03-09 | 2026-03-13 | 1052FS-5d |  | RGA -FINISHING | 7851872 |
| 1179 | 40200.40300.41000.56100.58700.59100.60800.263200.2622500 | PLASTER APPLICATION | 6d | 2026-07-18 | 2026-07-23 | 1382FS+20d |  | RGA -FINISHING | 7851882 |
| 1180 | 40200.40300.41000.56100.58700.59100.60800.263200.2622600 | CONCEALED PLUMBING | 8d | 2026-07-24 | 2026-07-31 | 1179 |  | RGA -FINISHING | 7851892 |
| 1181 | 40200.40300.41000.56100.58700.59100.60800.263200.2622700 | WATERPROOFING WORK FOR TOILETS, KITCHEN SUNK & PLANTERS | 8d | 2026-08-01 | 2026-08-08 | 1180 |  | RGA -FINISHING | 7851902 |

| ID | WBS | Task | Duration | Start | Finish | Predecessors | Constraint | Calendar | Unique_Task_ID |
| --- | --- | --- | --- | --- | --- | --- | --- | --- | --- |
| 1182 | 40200.40300.41000.56100.58700.59100.60800.263300 | **3rd FLOOR** | 140.5d | 2026-04-08 | 2026-08-26 |  | start no earlier than 2026-04-08 | RGA -FINISHING | 7807332 |
| 1183 | 40200.40300.41000.56100.58700.59100.60800.263300.2622800 | BALCONY RAILING FIXING | 9d | 2026-07-13 | 2026-07-22 | 1068FS+28.5d |  | RGA -FINISHING | 7851912 |
| 1184 | 40200.40300.41000.56100.58700.59100.60800.263300.2622900 | Block work | 2d | 2026-08-24 | 2026-08-26 | 1188 |  | RGA -FINISHING | 7851922 |
| 1185 | 40200.40300.41000.56100.58700.59100.60800.263300.2623000 | CONCEALED ELEC CONDUITING & ITS FINISHING | 5d | 2026-04-08 | 2026-04-12 | 1056FS-5d |  | RGA -FINISHING | 7851932 |
| 1186 | 40200.40300.41000.56100.58700.59100.60800.263300.2623100 | PLASTER APPLICATION | 6d | 2026-08-02 | 2026-08-08 | 1395FS+5d |  | RGA -FINISHING | 7851942 |
| 1187 | 40200.40300.41000.56100.58700.59100.60800.263300.2623200 | CONCEALED PLUMBING | 8d | 2026-08-08 | 2026-08-16 | 1186 |  | RGA -FINISHING | 7851952 |
| 1188 | 40200.40300.41000.56100.58700.59100.60800.263300.2623300 | WATERPROOFING WORK FOR TOILETS, KITCHEN SUNK & PLANTERS | 8d | 2026-08-16 | 2026-08-24 | 1187 |  | RGA -FINISHING | 7851962 |
| 1189 | 40200.40300.41000.56100.58700.59100.60800.263400 | **4th FLOOR** | 124d | 2026-05-07 | 2026-09-07 |  | start no earlier than 2026-05-07 | RGA -FINISHING | 7807342 |
| 1190 | 40200.40300.41000.56100.58700.59100.60800.263400.2623400 | BALCONY RAILING FIXING | 9d | 2026-07-27 | 2026-08-04 | 1072FS+10d |  | RGA -FINISHING | 7851972 |
| 1191 | 40200.40300.41000.56100.58700.59100.60800.263400.2623500 | Block work | 2d | 2026-09-06 | 2026-09-07 | 1195 |  | RGA -FINISHING | 7851982 |
| 1192 | 40200.40300.41000.56100.58700.59100.60800.263400.2623600 | CONCEALED ELEC CONDUITING & ITS FINISHING | 5d | 2026-05-07 | 2026-05-11 | 1060FS-5d |  | RGA -FINISHING | 7851992 |
| 1193 | 40200.40300.41000.56100.58700.59100.60800.263400.2623700 | PLASTER APPLICATION | 6d | 2026-08-15 | 2026-08-20 | 1408FS+4d |  | RGA -FINISHING | 7852002 |
| 1194 | 40200.40300.41000.56100.58700.59100.60800.263400.2623800 | CONCEALED PLUMBING | 8d | 2026-08-21 | 2026-08-28 | 1193 |  | RGA -FINISHING | 7852012 |
| 1195 | 40200.40300.41000.56100.58700.59100.60800.263400.2623900 | WATERPROOFING WORK FOR TOILETS, KITCHEN SUNK & PLANTERS | 8d | 2026-08-29 | 2026-09-05 | 1194 |  | RGA -FINISHING | 7852022 |
| 1196 | 40200.40300.41000.56100.58700.59100.60800.263500 | **5th FLOOR** | 118d | 2026-05-24 | 2026-09-18 |  | start no earlier than 2026-05-24 | RGA -FINISHING | 7807352 |
| 1197 | 40200.40300.41000.56100.58700.59100.60800.263500.2624000 | BALCONY RAILING FIXING | 9d | 2026-08-11 | 2026-08-19 | 1076FS+8d |  | RGA -FINISHING | 7852032 |
| 1198 | 40200.40300.41000.56100.58700.59100.60800.263500.2624100 | Block work | 2d | 2026-09-17 | 2026-09-18 | 1202 |  | RGA -FINISHING | 7852042 |
| 1199 | 40200.40300.41000.56100.58700.59100.60800.263500.2624200 | CONCEALED ELEC CONDUITING & ITS FINISHING | 5d | 2026-05-24 | 2026-05-28 | 1064FS-5d |  | RGA -FINISHING | 7852052 |
| 1200 | 40200.40300.41000.56100.58700.59100.60800.263500.2624300 | PLASTER APPLICATION | 6d | 2026-08-26 | 2026-08-31 | 1421 |  | RGA -FINISHING | 7852062 |
| 1201 | 40200.40300.41000.56100.58700.59100.60800.263500.2624400 | CONCEALED PLUMBING | 8d | 2026-09-01 | 2026-09-08 | 1200 |  | RGA -FINISHING | 7852072 |
| 1202 | 40200.40300.41000.56100.58700.59100.60800.263500.2624500 | WATERPROOFING WORK FOR TOILETS, KITCHEN SUNK & PLANTERS | 8d | 2026-09-09 | 2026-09-16 | 1201 |  | RGA -FINISHING | 7852082 |
| 1203 | 40200.40300.41000.56100.58700.59100.60800.263600 | **6th FLOOR** | 126d | 2026-06-10 | 2026-10-13 |  | start no earlier than 2026-06-10 | RGA -FINISHING | 7807362 |
| 1204 | 40200.40300.41000.56100.58700.59100.60800.263600.2624600 | BALCONY RAILING FIXING | 9d | 2026-09-05 | 2026-09-13 | 1080FS+15d |  | RGA -FINISHING | 7852092 |
| 1205 | 40200.40300.41000.56100.58700.59100.60800.263600.2624700 | Block work | 2d | 2026-10-12 | 2026-10-13 | 1209 |  | RGA -FINISHING | 7852102 |
| 1206 | 40200.40300.41000.56100.58700.59100.60800.263600.2624800 | CONCEALED ELEC CONDUITING & ITS FINISHING | 5d | 2026-06-10 | 2026-06-14 | 1068FS-5d |  | RGA -FINISHING | 7852112 |
| 1207 | 40200.40300.41000.56100.58700.59100.60800.263600.2624900 | PLASTER APPLICATION | 6d | 2026-09-20 | 2026-09-25 | 1434 |  | RGA -FINISHING | 7852122 |
| 1208 | 40200.40300.41000.56100.58700.59100.60800.263600.2625000 | CONCEALED PLUMBING | 8d | 2026-09-26 | 2026-10-03 | 1207 |  | RGA -FINISHING | 7852132 |
| 1209 | 40200.40300.41000.56100.58700.59100.60800.263600.2625100 | WATERPROOFING WORK FOR TOILETS, KITCHEN SUNK & PLANTERS | 8d | 2026-10-04 | 2026-10-11 | 1208 |  | RGA -FINISHING | 7852142 |

| ID | WBS | Task | Duration | Start | Finish | Predecessors | Constraint | Calendar | Unique_Task_ID |
| --- | --- | --- | --- | --- | --- | --- | --- | --- | --- |
| 1210 | 40200.40300.41000.56100.58700.59100.60800.263700 | **7th FLOOR** | 115d | 2026-07-08 | 2026-10-30 |  | start no earlier than 2026-07-08 | RGA -FINISHING | 7807372 |
| 1211 | 40200.40300.41000.56100.58700.59100.60800.263700.2625200 | BALCONY RAILING FIXING | 9d | 2026-09-22 | 2026-09-30 | 1084FS+15d |  | RGA -FINISHING | 7852152 |
| 1212 | 40200.40300.41000.56100.58700.59100.60800.263700.2625300 | Block work | 2d | 2026-10-29 | 2026-10-30 | 1216 |  | RGA -FINISHING | 7852162 |
| 1213 | 40200.40300.41000.56100.58700.59100.60800.263700.2625400 | CONCEALED ELEC CONDUITING & ITS FINISHING | 5d | 2026-07-08 | 2026-07-12 | 1072FS-9d |  | RGA -FINISHING | 7852172 |
| 1214 | 40200.40300.41000.56100.58700.59100.60800.263700.2625500 | PLASTER APPLICATION | 6d | 2026-10-07 | 2026-10-12 | 1447 |  | RGA -FINISHING | 7852182 |
| 1215 | 40200.40300.41000.56100.58700.59100.60800.263700.2625600 | CONCEALED PLUMBING | 8d | 2026-10-13 | 2026-10-20 | 1214 |  | RGA -FINISHING | 7852192 |
| 1216 | 40200.40300.41000.56100.58700.59100.60800.263700.2625700 | WATERPROOFING WORK FOR TOILETS, KITCHEN SUNK & PLANTERS | 8d | 2026-10-21 | 2026-10-28 | 1215 |  | RGA -FINISHING | 7852202 |
| 1217 | 40200.40300.41000.56100.58700.59100.60800.263800 | **8th FLOOR** | 112d | 2026-07-29 | 2026-11-17 |  | start no earlier than 2026-07-29 | RGA -FINISHING | 7807382 |
| 1218 | 40200.40300.41000.56100.58700.59100.60800.263800.2625800 | BALCONY RAILING FIXING | 9d | 2026-10-10 | 2026-10-18 | 1088FS+16d |  | RGA -FINISHING | 7852212 |
| 1219 | 40200.40300.41000.56100.58700.59100.60800.263800.2625900 | Block work | 2d | 2026-11-16 | 2026-11-17 | 1223 |  | RGA -FINISHING | 7852222 |
| 1220 | 40200.40300.41000.56100.58700.59100.60800.263800.2626000 | CONCEALED ELEC CONDUITING & ITS FINISHING | 6d | 2026-07-29 | 2026-08-03 | 1076FS-5d |  | RGA -FINISHING | 7852232 |
| 1221 | 40200.40300.41000.56100.58700.59100.60800.263800.2626100 | PLASTER APPLICATION | 6d | 2026-10-25 | 2026-10-30 | 1460 |  | RGA -FINISHING | 7852242 |
| 1222 | 40200.40300.41000.56100.58700.59100.60800.263800.2626200 | CONCEALED PLUMBING | 8d | 2026-10-31 | 2026-11-07 | 1221 |  | RGA -FINISHING | 7852252 |
| 1223 | 40200.40300.41000.56100.58700.59100.60800.263800.2626300 | WATERPROOFING WORK FOR TOILETS, KITCHEN SUNK & PLANTERS | 8d | 2026-11-08 | 2026-11-15 | 1222 |  | RGA -FINISHING | 7852262 |
| 1224 | 40200.40300.41000.56100.58700.59100.60800.263900 | **9th FLOOR** | 111d | 2026-08-16 | 2026-12-04 |  | start no earlier than 2026-08-16 | RGA -FINISHING | 7807392 |
| 1225 | 40200.40300.41000.56100.58700.59100.60800.263900.2626400 | BALCONY RAILING FIXING | 9d | 2026-10-27 | 2026-11-04 | 1092FS+15d |  | RGA -FINISHING | 7852272 |
| 1226 | 40200.40300.41000.56100.58700.59100.60800.263900.2626500 | Block work | 2d | 2026-12-03 | 2026-12-04 | 1230 |  | RGA -FINISHING | 7852282 |
| 1227 | 40200.40300.41000.56100.58700.59100.60800.263900.2626600 | CONCEALED ELEC CONDUITING & ITS FINISHING | 5d | 2026-08-16 | 2026-08-20 | 1080FS-5d |  | RGA -FINISHING | 7852292 |
| 1228 | 40200.40300.41000.56100.58700.59100.60800.263900.2626700 | PLASTER APPLICATION | 6d | 2026-11-11 | 2026-11-16 | 1473 |  | RGA -FINISHING | 7852302 |
| 1229 | 40200.40300.41000.56100.58700.59100.60800.263900.2626800 | CONCEALED PLUMBING | 8d | 2026-11-17 | 2026-11-24 | 1228 |  | RGA -FINISHING | 7852312 |
| 1230 | 40200.40300.41000.56100.58700.59100.60800.263900.2626900 | WATERPROOFING WORK FOR TOILETS, KITCHEN SUNK & PLANTERS | 8d | 2026-11-25 | 2026-12-02 | 1229 |  | RGA -FINISHING | 7852322 |
| 1231 | 40200.40300.41000.56100.58700.59100.60800.264000 | **10th FLOOR** | 111d | 2026-09-02 | 2026-12-21 |  | start no earlier than 2026-09-02 | RGA -FINISHING | 7807402 |
| 1232 | 40200.40300.41000.56100.58700.59100.60800.264000.2627000 | BALCONY RAILING FIXING | 9d | 2026-11-13 | 2026-11-21 | 1096FS+15d |  | RGA -FINISHING | 7852332 |
| 1233 | 40200.40300.41000.56100.58700.59100.60800.264000.2627100 | Block work | 2d | 2026-12-20 | 2026-12-21 | 1237 |  | RGA -FINISHING | 7852342 |
| 1234 | 40200.40300.41000.56100.58700.59100.60800.264000.2627200 | CONCEALED ELEC CONDUITING & ITS FINISHING | 5d | 2026-09-02 | 2026-09-06 | 1084FS-5d |  | RGA -FINISHING | 7852352 |
| 1235 | 40200.40300.41000.56100.58700.59100.60800.264000.2627300 | PLASTER APPLICATION | 6d | 2026-11-28 | 2026-12-03 | 1486 |  | RGA -FINISHING | 7852362 |
| 1236 | 40200.40300.41000.56100.58700.59100.60800.264000.2627400 | CONCEALED PLUMBING | 8d | 2026-12-04 | 2026-12-11 | 1235 |  | RGA -FINISHING | 7852372 |
| 1237 | 40200.40300.41000.56100.58700.59100.60800.264000.2627500 | WATERPROOFING WORK FOR TOILETS, KITCHEN SUNK & PLANTERS | 8d | 2026-12-12 | 2026-12-19 | 1236 |  | RGA -FINISHING | 7852382 |

| ID | WBS | Task | Duration | Start | Finish | Predecessors | Constraint | Calendar | Unique_Task_ID |
| --- | --- | --- | --- | --- | --- | --- | --- | --- | --- |
| 1238 | 40200.40300.41000.56100.58700.59100.60800.264100 | **11th FLOOR** | 128.5d | 2026-09-19 | 2027-01-25 |  | start no earlier than 2026-09-19 | RGA -FINISHING | 7807412 |
| 1239 | 40200.40300.41000.56100.58700.59100.60800.264100.2627600 | BALCONY RAILING FIXING | 9d | 2026-12-13 | 2026-12-22 | 1100FS+28.5d |  | RGA -FINISHING | 7852392 |
| 1240 | 40200.40300.41000.56100.58700.59100.60800.264100.2627700 | Block work | 2d | 2027-01-23 | 2027-01-25 | 1244 |  | RGA -FINISHING | 7852402 |
| 1241 | 40200.40300.41000.56100.58700.59100.60800.264100.2627800 | CONCEALED ELEC CONDUITING & ITS FINISHING | 5d | 2026-09-19 | 2026-09-23 | 1088FS-5d |  | RGA -FINISHING | 7852412 |
| 1242 | 40200.40300.41000.56100.58700.59100.60800.264100.2627900 | PLASTER APPLICATION | 6d | 2027-01-01 | 2027-01-07 | 1499FS+4d |  | RGA -FINISHING | 7852422 |
| 1243 | 40200.40300.41000.56100.58700.59100.60800.264100.2628000 | CONCEALED PLUMBING | 8d | 2027-01-07 | 2027-01-15 | 1242 |  | RGA -FINISHING | 7852432 |
| 1244 | 40200.40300.41000.56100.58700.59100.60800.264100.2628100 | WATERPROOFING WORK FOR TOILETS, KITCHEN SUNK & PLANTERS | 8d | 2027-01-15 | 2027-01-23 | 1243 |  | RGA -FINISHING | 7852442 |
| 1245 | 40200.40300.41000.56100.58700.59100.60800.264200 | **12th FLOOR** | 127d | 2026-10-07 | 2027-02-10 |  | start no earlier than 2026-10-07 | RGA -FINISHING | 7807422 |
| 1246 | 40200.40300.41000.56100.58700.59100.60800.264200.2628200 | BALCONY RAILING FIXING | 9d | 2027-01-01 | 2027-01-09 | 1104FS+15d |  | RGA -FINISHING | 7852452 |
| 1247 | 40200.40300.41000.56100.58700.59100.60800.264200.2628300 | Block work | 2d | 2027-02-03 | 2027-02-04 | 1250 |  | RGA -FINISHING | 7852462 |
| 1248 | 40200.40300.41000.56100.58700.59100.60800.264200.2628400 | CONCEALED ELEC CONDUITING & ITS FINISHING | 5d | 2026-10-07 | 2026-10-11 | 1092FS-5d |  | RGA -FINISHING | 7852472 |
| 1249 | 40200.40300.41000.56100.58700.59100.60800.264200.2628500 | PLASTER APPLICATION | 6d | 2027-01-20 | 2027-01-25 | 1512FS+4d |  | RGA -FINISHING | 7852482 |
| 1250 | 40200.40300.41000.56100.58700.59100.60800.264200.2628600 | CONCEALED PLUMBING | 8d | 2027-01-26 | 2027-02-02 | 1249 |  | RGA -FINISHING | 7852492 |
| 1251 | 40200.40300.41000.56100.58700.59100.60800.264200.2628700 | WATERPROOFING WORK FOR TOILETS, KITCHEN SUNK & PLANTERS | 8d | 2027-02-03 | 2027-02-10 | 1250 |  | RGA -FINISHING | 7852502 |
| 1252 | 40200.40300.41000.56100.58700.59100.60800.264300 | **13th FLOOR** | 145d | 2026-10-24 | 2027-03-17 |  | start no earlier than 2026-10-24 | RGA -FINISHING | 7807432 |
| 1253 | 40200.40300.41000.56100.58700.59100.60800.264300.2628800 | BALCONY RAILING FIXING | 9d | 2027-01-18 | 2027-01-26 | 1108FS+15d |  | RGA -FINISHING | 7852512 |
| 1254 | 40200.40300.41000.56100.58700.59100.60800.264300.2628900 | Block work | 2d | 2027-03-16 | 2027-03-17 | 1258 |  | RGA -FINISHING | 7852522 |
| 1255 | 40200.40300.41000.56100.58700.59100.60800.264300.2629000 | CONCEALED ELEC CONDUITING & ITS FINISHING | 5d | 2026-10-24 | 2026-10-28 | 1096FS-5d |  | RGA -FINISHING | 7852532 |
| 1256 | 40200.40300.41000.56100.58700.59100.60800.264300.2629100 | PLASTER APPLICATION | 15d | 2027-02-08 | 2027-02-22 | 1525FS+4d |  | RGA -FINISHING | 7852542 |
| 1257 | 40200.40300.41000.56100.58700.59100.60800.264300.2629200 | CONCEALED PLUMBING | 9d | 2027-02-23 | 2027-03-03 | 1256 |  | RGA -FINISHING | 7852552 |
| 1258 | 40200.40300.41000.56100.58700.59100.60800.264300.2629300 | WATERPROOFING WORK FOR TOILETS, KITCHEN SUNK & PLANTERS | 12d | 2027-03-04 | 2027-03-15 | 1257 |  | RGA -FINISHING | 7852562 |
| 1259 | 40200.40300.41000.56100.58700.59100.60800.264400 | **14th FLOOR** | 145d | 2026-11-10 | 2027-04-03 |  | start no earlier than 2026-11-10 | RGA -FINISHING | 7807442 |
| 1260 | 40200.40300.41000.56100.58700.59100.60800.264400.2629400 | BALCONY RAILING FIXING | 9d | 2027-02-04 | 2027-02-12 | 1112FS+15d |  | RGA -FINISHING | 7852572 |
| 1261 | 40200.40300.41000.56100.58700.59100.60800.264400.2629500 | Block work | 2d | 2027-04-02 | 2027-04-03 | 1265 |  | RGA -FINISHING | 7852582 |
| 1262 | 40200.40300.41000.56100.58700.59100.60800.264400.2629600 | CONCEALED ELEC CONDUITING & ITS FINISHING | 5d | 2026-11-10 | 2026-11-14 | 1100FS-5d |  | RGA -FINISHING | 7852592 |
| 1263 | 40200.40300.41000.56100.58700.59100.60800.264400.2629700 | PLASTER APPLICATION | 15d | 2027-02-25 | 2027-03-11 | 1538FS+4d |  | RGA -FINISHING | 7852602 |
| 1264 | 40200.40300.41000.56100.58700.59100.60800.264400.2629800 | CONCEALED PLUMBING | 9d | 2027-03-12 | 2027-03-20 | 1263 |  | RGA -FINISHING | 7852612 |
| 1265 | 40200.40300.41000.56100.58700.59100.60800.264400.2629900 | WATERPROOFING WORK FOR TOILETS, KITCHEN SUNK & PLANTERS | 12d | 2027-03-21 | 2027-04-01 | 1264 |  | RGA -FINISHING | 7852622 |

| ID | WBS | Task | Duration | Start | Finish | Predecessors | Constraint | Calendar | Unique_Task_ID |
| --- | --- | --- | --- | --- | --- | --- | --- | --- | --- |
| 1266 | 40200.40300.41000.56100.58700.59100.60800.264500 | **15th FLOOR** | 129d | 2026-12-06 | 2027-04-13 |  | start no earlier than 2026-12-06 | RGA -FINISHING | 7807452 |
| 1267 | 40200.40300.41000.56100.58700.59100.60800.264500.2630000 | BALCONY RAILING FIXING | 9d | 2027-02-14 | 2027-02-22 | 1116FS+8d |  | RGA -FINISHING | 7852632 |
| 1268 | 40200.40300.41000.56100.58700.59100.60800.264500.2630100 | Block work | 2d | 2027-04-12 | 2027-04-13 | 1272 |  | RGA -FINISHING | 7852642 |
| 1269 | 40200.40300.41000.56100.58700.59100.60800.264500.2630200 | CONCEALED ELEC CONDUITING & ITS FINISHING | 5d | 2026-12-06 | 2026-12-10 | 1104FS-11d |  | RGA -FINISHING | 7852652 |
| 1270 | 40200.40300.41000.56100.58700.59100.60800.264500.2630300 | PLASTER APPLICATION | 15d | 2027-03-07 | 2027-03-21 | 1551FS+4d |  | RGA -FINISHING | 7852662 |
| 1271 | 40200.40300.41000.56100.58700.59100.60800.264500.2630400 | CONCEALED PLUMBING | 9d | 2027-03-22 | 2027-03-30 | 1270 |  | RGA -FINISHING | 7852672 |
| 1272 | 40200.40300.41000.56100.58700.59100.60800.264500.2630500 | WATERPROOFING WORK FOR TOILETS, KITCHEN SUNK & PLANTERS | 12d | 2027-03-31 | 2027-04-11 | 1271 |  | RGA -FINISHING | 7852682 |
| 1273 | 40200.40300.41000.56100.58700.59100.60800.264600 | **16th FLOOR** | 131d | 2026-12-28 | 2027-05-07 |  | start no earlier than 2026-12-28 | RGA -FINISHING | 7807462 |
| 1274 | 40200.40300.41000.56100.58700.59100.60800.264600.2630600 | BALCONY RAILING FIXING | 9d | 2027-03-10 | 2027-03-18 | 1120FS+15d |  | RGA -FINISHING | 7852692 |
| 1275 | 40200.40300.41000.56100.58700.59100.60800.264600.2630700 | Block work | 2d | 2027-05-06 | 2027-05-07 | 1279 |  | RGA -FINISHING | 7852702 |
| 1276 | 40200.40300.41000.56100.58700.59100.60800.264600.2630800 | CONCEALED ELEC CONDUITING & ITS FINISHING | 5d | 2026-12-28 | 2027-01-01 | 1108FS-6d |  | RGA -FINISHING | 7852712 |
| 1277 | 40200.40300.41000.56100.58700.59100.60800.264600.2630900 | PLASTER APPLICATION | 15d | 2027-03-31 | 2027-04-14 | 1564FS+4d |  | RGA -FINISHING | 7852722 |
| 1278 | 40200.40300.41000.56100.58700.59100.60800.264600.2631000 | CONCEALED PLUMBING | 9d | 2027-04-15 | 2027-04-23 | 1277 |  | RGA -FINISHING | 7852732 |
| 1279 | 40200.40300.41000.56100.58700.59100.60800.264600.2631100 | WATERPROOFING WORK FOR TOILETS, KITCHEN SUNK & PLANTERS | 12d | 2027-04-24 | 2027-05-05 | 1278 |  | RGA -FINISHING | 7852742 |
| 1280 | 40200.40300.41000.56100.58700.59100.60800.264700 | **17th FLOOR** | 131d | 2027-01-14 | 2027-05-24 |  | start no earlier than 2027-01-14 | RGA -FINISHING | 7807472 |
| 1281 | 40200.40300.41000.56100.58700.59100.60800.264700.2631200 | BALCONY RAILING FIXING | 9d | 2027-03-27 | 2027-04-04 | 1124FS+15d |  | RGA -FINISHING | 7852752 |
| 1282 | 40200.40300.41000.56100.58700.59100.60800.264700.2631300 | Block work | 2d | 2027-05-23 | 2027-05-24 | 1286 |  | RGA -FINISHING | 7852762 |
| 1283 | 40200.40300.41000.56100.58700.59100.60800.264700.2631400 | CONCEALED ELEC CONDUITING & ITS FINISHING | 5d | 2027-01-14 | 2027-01-18 | 1112FS-6d |  | RGA -FINISHING | 7852772 |
| 1284 | 40200.40300.41000.56100.58700.59100.60800.264700.2631500 | PLASTER APPLICATION | 15d | 2027-04-17 | 2027-05-01 | 1577FS+4d |  | RGA -FINISHING | 7852782 |
| 1285 | 40200.40300.41000.56100.58700.59100.60800.264700.2631600 | CONCEALED PLUMBING | 9d | 2027-05-02 | 2027-05-10 | 1284 |  | RGA -FINISHING | 7852792 |
| 1286 | 40200.40300.41000.56100.58700.59100.60800.264700.2631700 | WATERPROOFING WORK FOR TOILETS, KITCHEN SUNK & PLANTERS | 12d | 2027-05-11 | 2027-05-22 | 1285 |  | RGA -FINISHING | 7852802 |
| 1287 | 40200.40300.41000.56100.58700.59100.60800.264800 | **18th FLOOR** | 131d | 2027-01-31 | 2027-06-10 |  | start no earlier than 2027-01-31 | RGA -FINISHING | 7807482 |
| 1288 | 40200.40300.41000.56100.58700.59100.60800.264800.2631800 | BALCONY RAILING FIXING | 9d | 2027-04-13 | 2027-04-21 | 1128FS+15d |  | RGA -FINISHING | 7852812 |
| 1289 | 40200.40300.41000.56100.58700.59100.60800.264800.2631900 | Block work | 2d | 2027-06-09 | 2027-06-10 | 1293 |  | RGA -FINISHING | 7852822 |
| 1290 | 40200.40300.41000.56100.58700.59100.60800.264800.2632000 | CONCEALED ELEC CONDUITING & ITS FINISHING | 5d | 2027-01-31 | 2027-02-04 | 1116FS-6d |  | RGA -FINISHING | 7852832 |
| 1291 | 40200.40300.41000.56100.58700.59100.60800.264800.2632100 | PLASTER APPLICATION | 15d | 2027-05-04 | 2027-05-18 | 1590FS+4d |  | RGA -FINISHING | 7852842 |
| 1292 | 40200.40300.41000.56100.58700.59100.60800.264800.2632200 | CONCEALED PLUMBING | 9d | 2027-05-19 | 2027-05-27 | 1291 |  | RGA -FINISHING | 7852852 |
| 1293 | 40200.40300.41000.56100.58700.59100.60800.264800.2632300 | WATERPROOFING WORK FOR TOILETS, KITCHEN SUNK & PLANTERS | 12d | 2027-05-28 | 2027-06-08 | 1292 |  | RGA -FINISHING | 7852862 |

Notes:
- 1289: Last floor BW completion 2 months post Last RCC

| ID | WBS | Task | Duration | Start | Finish | Predecessors | Constraint | Calendar | Unique_Task_ID |
| --- | --- | --- | --- | --- | --- | --- | --- | --- | --- |
| 1294 | 40200.40300.41000.56100.58700.59100.60800.264900 | **19th FLOOR** | 131d | 2027-02-17 | 2027-06-27 |  | start no earlier than 2027-02-17 | RGA -FINISHING | 7807492 |
| 1295 | 40200.40300.41000.56100.58700.59100.60800.264900.2632400 | BALCONY RAILING FIXING | 9d | 2027-04-30 | 2027-05-08 | 1132FS+15d |  | RGA -FINISHING | 7852872 |
| 1296 | 40200.40300.41000.56100.58700.59100.60800.264900.2632500 | Block work | 2d | 2027-06-26 | 2027-06-27 | 1300 |  | RGA -FINISHING | 7852882 |
| 1297 | 40200.40300.41000.56100.58700.59100.60800.264900.2632600 | CONCEALED ELEC CONDUITING & ITS FINISHING | 5d | 2027-02-17 | 2027-02-21 | 1120FS-6d |  | RGA -FINISHING | 7852892 |
| 1298 | 40200.40300.41000.56100.58700.59100.60800.264900.2632700 | PLASTER APPLICATION | 15d | 2027-05-21 | 2027-06-04 | 1603FS+4d |  | RGA -FINISHING | 7852902 |
| 1299 | 40200.40300.41000.56100.58700.59100.60800.264900.2632800 | CONCEALED PLUMBING | 9d | 2027-06-05 | 2027-06-13 | 1298 |  | RGA -FINISHING | 7852912 |
| 1300 | 40200.40300.41000.56100.58700.59100.60800.264900.2632900 | WATERPROOFING WORK FOR TOILETS, KITCHEN SUNK & PLANTERS | 12d | 2027-06-14 | 2027-06-25 | 1299 |  | RGA -FINISHING | 7852922 |
| 1301 | 40200.40300.41000.56100.58700.59100.60800.265000 | **20th FLOOR** | 131d | 2027-03-06 | 2027-07-14 |  | start no earlier than 2027-03-06 | RGA -FINISHING | 7807502 |
| 1302 | 40200.40300.41000.56100.58700.59100.60800.265000.2633000 | BALCONY RAILING FIXING | 9d | 2027-05-17 | 2027-05-25 | 1136FS+15d |  | RGA -FINISHING | 7852932 |
| 1303 | 40200.40300.41000.56100.58700.59100.60800.265000.2633100 | Block work | 2d | 2027-07-13 | 2027-07-14 | 1307 |  | RGA -FINISHING | 7852942 |
| 1304 | 40200.40300.41000.56100.58700.59100.60800.265000.2633200 | CONCEALED ELEC CONDUITING & ITS FINISHING | 5d | 2027-03-06 | 2027-03-10 | 1124FS-6d |  | RGA -FINISHING | 7852952 |
| 1305 | 40200.40300.41000.56100.58700.59100.60800.265000.2633300 | PLASTER APPLICATION | 15d | 2027-06-07 | 2027-06-21 | 1616FS+4d |  | RGA -FINISHING | 7852962 |
| 1306 | 40200.40300.41000.56100.58700.59100.60800.265000.2633400 | CONCEALED PLUMBING | 9d | 2027-06-22 | 2027-06-30 | 1305 |  | RGA -FINISHING | 7852972 |
| 1307 | 40200.40300.41000.56100.58700.59100.60800.265000.2633500 | WATERPROOFING WORK FOR TOILETS, KITCHEN SUNK & PLANTERS | 12d | 2027-07-01 | 2027-07-12 | 1306 |  | RGA -FINISHING | 7852982 |
| 1308 | 40200.40300.41000.56100.58700.59100.60800.265100 | **21th FLOOR** | 131d | 2027-03-23 | 2027-07-31 |  | start no earlier than 2027-03-23 | RGA -FINISHING | 7807512 |
| 1309 | 40200.40300.41000.56100.58700.59100.60800.265100.2633600 | BALCONY RAILING FIXING | 9d | 2027-06-03 | 2027-06-11 | 1140FS+15d |  | RGA -FINISHING | 7852992 |
| 1310 | 40200.40300.41000.56100.58700.59100.60800.265100.2633700 | Block work | 2d | 2027-07-30 | 2027-07-31 | 1314 |  | RGA -FINISHING | 7853002 |
| 1311 | 40200.40300.41000.56100.58700.59100.60800.265100.2633800 | CONCEALED ELEC CONDUITING & ITS FINISHING | 5d | 2027-03-23 | 2027-03-27 | 1128FS-6d |  | RGA -FINISHING | 7853012 |
| 1312 | 40200.40300.41000.56100.58700.59100.60800.265100.2633900 | PLASTER APPLICATION | 15d | 2027-06-24 | 2027-07-08 | 1629FS+4d |  | RGA -FINISHING | 7853022 |
| 1313 | 40200.40300.41000.56100.58700.59100.60800.265100.2634000 | CONCEALED PLUMBING | 9d | 2027-07-09 | 2027-07-17 | 1312 |  | RGA -FINISHING | 7853032 |
| 1314 | 40200.40300.41000.56100.58700.59100.60800.265100.2634100 | WATERPROOFING WORK FOR TOILETS, KITCHEN SUNK & PLANTERS | 12d | 2027-07-18 | 2027-07-29 | 1313 |  | RGA -FINISHING | 7853042 |
| 1315 | 40200.40300.41000.56100.58700.59100.60800.265200 | **22th FLOOR** | 131d | 2027-04-09 | 2027-08-17 |  | start no earlier than 2027-04-09 | RGA -FINISHING | 7807522 |
| 1316 | 40200.40300.41000.56100.58700.59100.60800.265200.2634200 | BALCONY RAILING FIXING | 9d | 2027-06-20 | 2027-06-28 | 1144FS+15d |  | RGA -FINISHING | 7853052 |
| 1317 | 40200.40300.41000.56100.58700.59100.60800.265200.2634300 | Block work | 2d | 2027-08-16 | 2027-08-17 | 1321 |  | RGA -FINISHING | 7853062 |
| 1318 | 40200.40300.41000.56100.58700.59100.60800.265200.2634400 | CONCEALED ELEC CONDUITING & ITS FINISHING | 5d | 2027-04-09 | 2027-04-13 | 1132FS-6d |  | RGA -FINISHING | 7853072 |
| 1319 | 40200.40300.41000.56100.58700.59100.60800.265200.2634500 | PLASTER APPLICATION | 15d | 2027-07-11 | 2027-07-25 | 1642FS+4d |  | RGA -FINISHING | 7853082 |
| 1320 | 40200.40300.41000.56100.58700.59100.60800.265200.2634600 | CONCEALED PLUMBING | 9d | 2027-07-26 | 2027-08-03 | 1319 |  | RGA -FINISHING | 7853092 |
| 1321 | 40200.40300.41000.56100.58700.59100.60800.265200.2634700 | WATERPROOFING WORK FOR TOILETS, KITCHEN SUNK & PLANTERS | 12d | 2027-08-04 | 2027-08-15 | 1320 |  | RGA -FINISHING | 7853102 |

Notes:
- 1296: Last floor BW completion 2 months post Last RCC
- 1303: Last floor BW completion 2 months post Last RCC
- 1310: Last floor BW completion 2 months post Last RCC
- 1317: Last floor BW completion 2 months post Last RCC

| ID | WBS | Task | Duration | Start | Finish | Predecessors | Constraint | Calendar | Unique_Task_ID |
| --- | --- | --- | --- | --- | --- | --- | --- | --- | --- |
| 1322 | 40200.40300.41000.56100.58700.59100.60800.265300 | **23th FLOOR** | 144d | 2027-04-26 | 2027-09-16 |  | start no earlier than 2027-04-26 | RGA -FINISHING | 7807532 |
| 1323 | 40200.40300.41000.56100.58700.59100.60800.265300.2634800 | BALCONY RAILING FIXING | 9d | 2027-07-14 | 2027-07-22 | 1316FS+15d |  | RGA -FINISHING | 7853112 |
| 1324 | 40200.40300.41000.56100.58700.59100.60800.265300.2634900 | Block work | 2d | 2027-09-15 | 2027-09-16 | 1328 |  | RGA -FINISHING | 7853122 |
| 1325 | 40200.40300.41000.56100.58700.59100.60800.265300.2635000 | CONCEALED ELEC CONDUITING & ITS FINISHING | 5d | 2027-04-26 | 2027-04-30 | 1136FS-6d |  | RGA -FINISHING | 7853132 |
| 1326 | 40200.40300.41000.56100.58700.59100.60800.265300.2635100 | PLASTER APPLICATION | 15d | 2027-08-10 | 2027-08-24 | 1655FS+10d |  | RGA -FINISHING | 7853142 |
| 1327 | 40200.40300.41000.56100.58700.59100.60800.265300.2635200 | CONCEALED PLUMBING | 9d | 2027-08-25 | 2027-09-02 | 1326 |  | RGA -FINISHING | 7853152 |
| 1328 | 40200.40300.41000.56100.58700.59100.60800.265300.2635300 | WATERPROOFING WORK FOR TOILETS, KITCHEN SUNK & PLANTERS | 12d | 2027-09-03 | 2027-09-14 | 1327 |  | RGA -FINISHING | 7853162 |
| 1329 | 40200.40300.41000.56100.58700.59100.60800.265400 | **24th FLOOR** | 141d | 2027-05-13 | 2027-09-30 |  | start no earlier than 2027-05-13 | RGA -FINISHING | 7807542 |
| 1330 | 40200.40300.41000.56100.58700.59100.60800.265400.2635400 | BALCONY RAILING FIXING | 9d | 2027-08-07 | 2027-08-15 | 1323FS+15d |  | RGA -FINISHING | 7853172 |
| 1331 | 40200.40300.41000.56100.58700.59100.60800.265400.2635500 | Block work | 2d | 2027-09-29 | 2027-09-30 | 1335 |  | RGA -FINISHING | 7853182 |
| 1332 | 40200.40300.41000.56100.58700.59100.60800.265400.2635600 | CONCEALED ELEC CONDUITING & ITS FINISHING | 5d | 2027-05-13 | 2027-05-17 | 1140FS-6d |  | RGA -FINISHING | 7853192 |
| 1333 | 40200.40300.41000.56100.58700.59100.60800.265400.2635700 | PLASTER APPLICATION | 15d | 2027-08-24 | 2027-09-07 | 1668 |  | RGA -FINISHING | 7853202 |
| 1334 | 40200.40300.41000.56100.58700.59100.60800.265400.2635800 | CONCEALED PLUMBING | 9d | 2027-09-08 | 2027-09-16 | 1333 |  | RGA -FINISHING | 7853212 |
| 1335 | 40200.40300.41000.56100.58700.59100.60800.265400.2635900 | WATERPROOFING WORK FOR TOILETS, KITCHEN SUNK & PLANTERS | 12d | 2027-09-17 | 2027-09-28 | 1334 |  | RGA -FINISHING | 7853222 |
| 1336 | 40200.40300.41000.56100.58700.59100.60800.265500 | **25thFLOOR** | 139d | 2027-05-30 | 2027-10-15 |  | start no earlier than 2027-05-30 | RGA -FINISHING | 7807552 |
| 1337 | 40200.40300.41000.56100.58700.59100.60800.265500.2636000 | BALCONY RAILING FIXING | 9d | 2027-08-16 | 2027-08-24 | 1330 |  | RGA -FINISHING | 7853232 |
| 1338 | 40200.40300.41000.56100.58700.59100.60800.265500.2636100 | Block work | 8d | 2027-10-08 | 2027-10-15 | 1342 |  | RGA -FINISHING | 7853242 |
| 1339 | 40200.40300.41000.56100.58700.59100.60800.265500.2636200 | CONCEALED ELEC CONDUITING & ITS FINISHING | 5d | 2027-05-30 | 2027-06-03 | 1144FS-6d |  | RGA -FINISHING | 7853252 |
| 1340 | 40200.40300.41000.56100.58700.59100.60800.265500.2636300 | PLASTER APPLICATION | 15d | 2027-09-02 | 2027-09-16 | 1681 |  | RGA -FINISHING | 7853262 |
| 1341 | 40200.40300.41000.56100.58700.59100.60800.265500.2636400 | CONCEALED PLUMBING | 9d | 2027-09-17 | 2027-09-25 | 1340 |  | RGA -FINISHING | 7853272 |
| 1342 | 40200.40300.41000.56100.58700.59100.60800.265500.2636500 | WATERPROOFING WORK FOR TOILETS, KITCHEN SUNK & PLANTERS | 12d | 2027-09-26 | 2027-10-07 | 1341 |  | RGA -FINISHING | 7853282 |
| 1343 | 40200.40300.41000.56100.58700.59100.60800.372100 | **LMR (To be Deleted)** | 15d | 2025-11-30 | 2025-12-14 |  | start no earlier than 2025-11-30 | RGA -FINISHING | 7808832 |
| 1344 | 40200.40300.41000.56100.58700.59100.60800.372100.2636600 | Block work | 8d | 2025-11-30 | 2025-12-07 |  | start no earlier than 2025-11-30 | RGA -FINISHING | 7853412 |
| 1345 | 40200.40300.41000.56100.58700.59100.60800.372100.2636700 | CONCEALED ELEC CONDUITING & ITS FINISHING | 7d | 2025-11-30 | 2025-12-06 |  | start no earlier than 2025-11-30 | RGA -FINISHING | 7853422 |
| 1346 | 40200.40300.41000.56100.58700.59100.60800.372100.2636800 | PLASTER APPLICATION | 15d | 2025-11-30 | 2025-12-14 |  | start no earlier than 2025-11-30 | RGA -FINISHING | 7853432 |
| 1347 | 40200.40300.41000.56100.58700.59100.60800.372100.2636900 | DOOR FRAME FIXING | 3d | 2025-11-30 | 2025-12-02 |  | start no earlier than 2025-11-30 | RGA -FINISHING | 7853442 |

Notes:
- 1324: Last floor BW completion 2 months post Last RCC
- 1331: Last floor BW completion 2 months post Last RCC

| ID | WBS | Task | Duration | Start | Finish | Predecessors | Constraint | Calendar | Unique_Task_ID |
| --- | --- | --- | --- | --- | --- | --- | --- | --- | --- |
| 1348 | 40200.40300.41000.56100.58700.59100.506100 | **Terrace Finishing works** | 30d | 2028-02-15 | 2028-03-15 |  | start no earlier than 2028-02-15 | RGA -FINISHING | 7812282 |
| 1349 | 40200.40300.41000.56100.58700.59100.506100.2216800 | Terrace Waterproofing work | 30d | 2028-02-15 | 2028-03-15 | 1351FS+7d |  | RGA -FINISHING | 7832902 |
| 1350 | 40200.40300.41000.56100.58700.59100.506200 | **EXTERNAL Painting** | 170d | 2027-08-22 | 2028-02-07 |  | start no earlier than 2027-08-22 | RGA -FINISHING | 7812272 |
| 1351 | 40200.40300.41000.56100.58700.59100.506200.2216900 | 2nd coat | 170d | 2027-08-22 | 2028-02-07 | 1148FS+61d |  | RGA -FINISHING | 7832912 |
| 1352 | 40200.40300.41000.56100.58100 | **Flat internal finishing & services works** | 599d | 2026-05-07 | 2027-12-26 |  | start no earlier than 2026-05-07 | RGA -FINISHING | 7803422 |
| 1353 | 40200.40300.41000.56100.58100.74700 | **GROUND FLOOR** | 571d | 2026-05-07 | 2027-11-28 |  | start no earlier than 2026-05-07 | RGA -FINISHING | 7803952 |
| 1354 | 40200.40300.41000.56100.58100.74700.937500 | TOILET DADO TILE FIXING | 10d | 2026-06-30 | 2026-07-09 | 1163 |  | RGA -FINISHING | 7826532 |
| 1355 | 40200.40300.41000.56100.58100.74700.937600 | TOILET FLOORING WORK | 7d | 2026-07-10 | 2026-07-16 | 1354 |  | RGA -FINISHING | 7826542 |
| 1356 | 40200.40300.41000.56100.58100.74700.937700 | FIRE FIGHTING | 15d | 2026-05-07 | 2026-05-21 | 1162 |  | RGA -FINISHING | 7826552 |
| 1357 | 40200.40300.41000.56100.58100.74700.937800 | INTERNAL PAINTING - PUTTY / PRIMER APPLICATION | 15d | 2026-08-14 | 2026-08-28 | 1359 |  | RGA -FINISHING | 7826562 |
| 1358 | 40200.40300.41000.56100.58100.74700.937900 | FLAT FLOORING | 11d | 2026-07-17 | 2026-07-27 | 1355 |  | RGA -FINISHING | 7826572 |
| 1359 | 40200.40300.41000.56100.58100.74700.938000 | WINDOW FIXING | 12d | 2026-08-02 | 2026-08-13 | 1358FS+5d |  | RGA -FINISHING | 7826582 |
| 1360 | 40200.40300.41000.56100.58100.74700.938100 | INTERNAL PAINTING - 1ST COAT | 12d | 2026-08-29 | 2026-09-09 | 1357 |  | RGA -FINISHING | 7826592 |
| 1361 | 40200.40300.41000.56100.58100.74700.938200 | INTERNAL DOOR FIXING | 15d | 2026-09-10 | 2026-09-24 | 1360 |  | RGA -FINISHING | 7826602 |
| 1362 | 40200.40300.41000.56100.58100.74700.938300 | WIRING & SWITCH PLATE FIXING | 8d | 2026-09-25 | 2026-10-02 | 1361 |  | RGA -FINISHING | 7826612 |
| 1363 | 40200.40300.41000.56100.58100.74700.938400 | TOILET FALSE CEILING | 7d | 2026-10-03 | 2026-10-09 | 1362 |  | RGA -FINISHING | 7826622 |
| 1364 | 40200.40300.41000.56100.58100.74700.938500 | MAIN DOOR FRAME SHUTTER FIXING | 6d | 2027-11-15 | 2027-11-20 | 1696 |  | RGA -FINISHING | 7826632 |
| 1365 | 40200.40300.41000.56100.58100.74700.938600 | FINAL COAT PAINT | 8d | 2027-11-21 | 2027-11-28 | 1364 |  | RGA -FINISHING | 7826642 |
| 1366 | 40200.40300.41000.56100.58100.74800 | **1ST FLOOR** | 545d | 2026-06-05 | 2027-12-01 |  | start no earlier than 2026-06-05 | RGA -FINISHING | 7803962 |
| 1367 | 40200.40300.41000.56100.58100.74800.938700 | TOILET DADO TILE FIXING | 7d | 2026-07-25 | 2026-07-31 | 1170 |  | RGA -FINISHING | 7826652 |
| 1368 | 40200.40300.41000.56100.58100.74800.938800 | TOILET FLOORING WORK | 7d | 2026-07-25 | 2026-07-31 | 1367FF |  | RGA -FINISHING | 7826662 |
| 1369 | 40200.40300.41000.56100.58100.74800.938900 | FIRE FIGHTING | 6d | 2026-06-05 | 2026-06-10 | 1169 |  | RGA -FINISHING | 7826672 |
| 1370 | 40200.40300.41000.56100.58100.74800.939000 | INTERNAL PAINTING - PUTTY / PRIMER APPLICATION | 6d | 2026-08-23 | 2026-08-28 | 1372 |  | RGA -FINISHING | 7826682 |
| 1371 | 40200.40300.41000.56100.58100.74800.939100 | FLAT FLOORING | 5d | 2026-08-01 | 2026-08-05 | 1368 |  | RGA -FINISHING | 7826692 |
| 1372 | 40200.40300.41000.56100.58100.74800.939200 | WINDOW FIXING | 12d | 2026-08-11 | 2026-08-22 | 1371FS+5d |  | RGA -FINISHING | 7826702 |
| 1373 | 40200.40300.41000.56100.58100.74800.939300 | INTERNAL PAINTING - 1ST COAT | 12d | 2026-08-29 | 2026-09-09 | 1370 |  | RGA -FINISHING | 7826712 |
| 1374 | 40200.40300.41000.56100.58100.74800.939400 | INTERNAL DOOR FIXING | 15d | 2026-09-08 | 2026-09-22 | 1373FS-2d |  | RGA -FINISHING | 7826722 |
| 1375 | 40200.40300.41000.56100.58100.74800.939500 | WIRING & SWITCH PLATE FIXING | 8d | 2026-09-19 | 2026-09-26 | 1374FS-4d |  | RGA -FINISHING | 7826732 |
| 1376 | 40200.40300.41000.56100.58100.74800.939600 | TOILET FALSE CEILING | 7d | 2026-09-27 | 2026-10-03 | 1375 |  | RGA -FINISHING | 7826742 |
| 1377 | 40200.40300.41000.56100.58100.74800.939700 | MAIN DOOR FRAME SHUTTER FIXING | 6d | 2027-11-18 | 2027-11-23 | 1704 |  | RGA -FINISHING | 7826752 |
| 1378 | 40200.40300.41000.56100.58100.74800.939800 | FINAL COAT PAINT | 8d | 2027-11-24 | 2027-12-01 | 1377 |  | RGA -FINISHING | 7826762 |

Notes:
- 1350: Ext Plaster (in 2 phases) completion 3.5 months post last BW
- 1352: Completion in 12 months post last RCC

| ID | WBS | Task | Duration | Start | Finish | Predecessors | Constraint | Calendar | Unique_Task_ID |
| --- | --- | --- | --- | --- | --- | --- | --- | --- | --- |
| 1379 | 40200.40300.41000.56100.58100.74900 | **2ND FLOOR** | 541d | 2026-06-22 | 2027-12-14 |  | start no earlier than 2026-06-22 | RGA -FINISHING | 7803972 |
| 1380 | 40200.40300.41000.56100.58100.74900.939900 | TOILET DADO TILE FIXING | 7d | 2026-08-11 | 2026-08-17 | 1177 |  | RGA -FINISHING | 7826772 |
| 1381 | 40200.40300.41000.56100.58100.74900.940000 | TOILET FLOORING WORK | 7d | 2026-08-18 | 2026-08-24 | 1380 |  | RGA -FINISHING | 7826782 |
| 1382 | 40200.40300.41000.56100.58100.74900.940100 | FIRE FIGHTING | 6d | 2026-06-22 | 2026-06-27 | 1176 |  | RGA -FINISHING | 7826792 |
| 1383 | 40200.40300.41000.56100.58100.74900.940200 | INTERNAL PAINTING - PUTTY / PRIMER APPLICATION | 6d | 2026-09-16 | 2026-09-21 | 1385 |  | RGA -FINISHING | 7826802 |
| 1384 | 40200.40300.41000.56100.58100.74900.940300 | FLAT FLOORING | 5d | 2026-08-25 | 2026-08-29 | 1381 |  | RGA -FINISHING | 7826812 |
| 1385 | 40200.40300.41000.56100.58100.74900.940400 | WINDOW FIXING | 12d | 2026-09-04 | 2026-09-15 | 1384FS+5d |  | RGA -FINISHING | 7826822 |
| 1386 | 40200.40300.41000.56100.58100.74900.940500 | INTERNAL PAINTING - 1ST COAT | 12d | 2026-09-22 | 2026-10-03 | 1383 |  | RGA -FINISHING | 7826832 |
| 1387 | 40200.40300.41000.56100.58100.74900.940600 | INTERNAL DOOR FIXING | 15d | 2026-10-02 | 2026-10-16 | 1386FS-2d |  | RGA -FINISHING | 7826842 |
| 1388 | 40200.40300.41000.56100.58100.74900.940700 | WIRING & SWITCH PLATE FIXING | 8d | 2026-10-13 | 2026-10-20 | 1387FS-4d |  | RGA -FINISHING | 7826852 |
| 1389 | 40200.40300.41000.56100.58100.74900.940800 | TOILET FALSE CEILING | 7d | 2026-10-21 | 2026-10-27 | 1388 |  | RGA -FINISHING | 7826862 |
| 1390 | 40200.40300.41000.56100.58100.74900.940900 | MAIN DOOR FRAME SHUTTER FIXING | 6d | 2027-12-01 | 2027-12-06 | 1712 |  | RGA -FINISHING | 7826872 |
| 1391 | 40200.40300.41000.56100.58100.74900.941000 | FINAL COAT PAINT | 8d | 2027-12-07 | 2027-12-14 | 1390 |  | RGA -FINISHING | 7826882 |
| 1392 | 40200.40300.41000.56100.58100.75000 | **3RD FLOOR** | 507.5d | 2026-07-22 | 2027-12-11 |  | start no earlier than 2026-07-22 | RGA -FINISHING | 7803982 |
| 1393 | 40200.40300.41000.56100.58100.75000.941100 | TOILET DADO TILE FIXING | 7d | 2026-08-26 | 2026-09-02 | 1184 |  | RGA -FINISHING | 7826892 |
| 1394 | 40200.40300.41000.56100.58100.75000.941200 | TOILET FLOORING WORK | 7d | 2026-09-02 | 2026-09-09 | 1393 |  | RGA -FINISHING | 7826902 |
| 1395 | 40200.40300.41000.56100.58100.75000.941300 | FIRE FIGHTING | 6d | 2026-07-22 | 2026-07-28 | 1183 |  | RGA -FINISHING | 7826912 |
| 1396 | 40200.40300.41000.56100.58100.75000.941400 | INTERNAL PAINTING - PUTTY / PRIMER APPLICATION | 6d | 2026-09-26 | 2026-10-02 | 1398 |  | RGA -FINISHING | 7826922 |
| 1397 | 40200.40300.41000.56100.58100.75000.941500 | FLAT FLOORING | 5d | 2026-09-09 | 2026-09-14 | 1394 |  | RGA -FINISHING | 7826932 |
| 1398 | 40200.40300.41000.56100.58100.75000.941600 | WINDOW FIXING | 7d | 2026-09-19 | 2026-09-26 | 1397FS+5d |  | RGA -FINISHING | 7826942 |
| 1399 | 40200.40300.41000.56100.58100.75000.941700 | INTERNAL PAINTING - 1ST COAT | 7d | 2026-10-02 | 2026-10-09 | 1396 |  | RGA -FINISHING | 7826952 |
| 1400 | 40200.40300.41000.56100.58100.75000.941800 | INTERNAL DOOR FIXING | 15d | 2026-10-07 | 2026-10-22 | 1399FS-2d |  | RGA -FINISHING | 7826962 |
| 1401 | 40200.40300.41000.56100.58100.75000.941900 | WIRING & SWITCH PLATE FIXING | 8d | 2026-10-18 | 2026-10-26 | 1400FS-4d |  | RGA -FINISHING | 7826972 |
| 1402 | 40200.40300.41000.56100.58100.75000.942000 | TOILET FALSE CEILING | 7d | 2026-10-26 | 2026-11-02 | 1401 |  | RGA -FINISHING | 7826982 |
| 1403 | 40200.40300.41000.56100.58100.75000.942100 | MAIN DOOR FRAME SHUTTER FIXING | 6d | 2027-11-28 | 2027-12-03 | 1720 |  | RGA -FINISHING | 7826992 |
| 1404 | 40200.40300.41000.56100.58100.75000.942200 | FINAL COAT PAINT | 8d | 2027-12-04 | 2027-12-11 | 1403 |  | RGA -FINISHING | 7827002 |

| ID | WBS | Task | Duration | Start | Finish | Predecessors | Constraint | Calendar | Unique_Task_ID |
| --- | --- | --- | --- | --- | --- | --- | --- | --- | --- |
| 1405 | 40200.40300.41000.56100.58100.75100 | **4TH FLOOR** | 507d | 2026-08-05 | 2027-12-24 |  | start no earlier than 2026-08-05 | RGA -FINISHING | 7803992 |
| 1406 | 40200.40300.41000.56100.58100.75100.942300 | TOILET DADO TILE FIXING | 7d | 2026-09-08 | 2026-09-14 | 1191 |  | RGA -FINISHING | 7827012 |
| 1407 | 40200.40300.41000.56100.58100.75100.942400 | TOILET FLOORING WORK | 7d | 2026-09-15 | 2026-09-21 | 1406 |  | RGA -FINISHING | 7827022 |
| 1408 | 40200.40300.41000.56100.58100.75100.942500 | FIRE FIGHTING | 6d | 2026-08-05 | 2026-08-10 | 1190 |  | RGA -FINISHING | 7827032 |
| 1409 | 40200.40300.41000.56100.58100.75100.942600 | INTERNAL PAINTING - PUTTY / PRIMER APPLICATION | 6d | 2026-10-09 | 2026-10-14 | 1411 |  | RGA -FINISHING | 7827042 |
| 1410 | 40200.40300.41000.56100.58100.75100.942700 | FLAT FLOORING | 5d | 2026-09-22 | 2026-09-26 | 1407 |  | RGA -FINISHING | 7827052 |
| 1411 | 40200.40300.41000.56100.58100.75100.942800 | WINDOW FIXING | 7d | 2026-10-02 | 2026-10-08 | 1410FS+5d |  | RGA -FINISHING | 7827062 |
| 1412 | 40200.40300.41000.56100.58100.75100.942900 | INTERNAL PAINTING - 1ST COAT | 7d | 2026-10-15 | 2026-10-21 | 1409 |  | RGA -FINISHING | 7827072 |
| 1413 | 40200.40300.41000.56100.58100.75100.943000 | INTERNAL DOOR FIXING | 15d | 2026-10-20 | 2026-11-03 | 1412FS-2d |  | RGA -FINISHING | 7827082 |
| 1414 | 40200.40300.41000.56100.58100.75100.943100 | WIRING & SWITCH PLATE FIXING | 8d | 2026-10-31 | 2026-11-07 | 1413FS-4d |  | RGA -FINISHING | 7827092 |
| 1415 | 40200.40300.41000.56100.58100.75100.943200 | TOILET FALSE CEILING | 7d | 2026-11-08 | 2026-11-14 | 1414 |  | RGA -FINISHING | 7827102 |
| 1416 | 40200.40300.41000.56100.58100.75100.943300 | MAIN DOOR FRAME SHUTTER FIXING | 6d | 2027-12-11 | 2027-12-16 | 1728 |  | RGA -FINISHING | 7827112 |
| 1417 | 40200.40300.41000.56100.58100.75100.943400 | FINAL COAT PAINT | 8d | 2027-12-17 | 2027-12-24 | 1416 |  | RGA -FINISHING | 7827122 |
| 1418 | 40200.40300.41000.56100.58100.75200 | **5TH FLOOR** | 479d | 2026-08-20 | 2027-12-11 |  | start no earlier than 2026-08-20 | RGA -FINISHING | 7804002 |
| 1419 | 40200.40300.41000.56100.58100.75200.943500 | TOILET DADO TILE FIXING | 7d | 2026-09-19 | 2026-09-25 | 1198 |  | RGA -FINISHING | 7827132 |
| 1420 | 40200.40300.41000.56100.58100.75200.943600 | TOILET FLOORING WORK | 7d | 2026-09-26 | 2026-10-02 | 1419 |  | RGA -FINISHING | 7827142 |
| 1421 | 40200.40300.41000.56100.58100.75200.943700 | FIRE FIGHTING | 6d | 2026-08-20 | 2026-08-25 | 1197 |  | RGA -FINISHING | 7827152 |
| 1422 | 40200.40300.41000.56100.58100.75200.943800 | INTERNAL PAINTING - PUTTY / PRIMER APPLICATION | 6d | 2026-10-20 | 2026-10-25 | 1424 |  | RGA -FINISHING | 7827162 |
| 1423 | 40200.40300.41000.56100.58100.75200.943900 | FLAT FLOORING | 5d | 2026-10-03 | 2026-10-07 | 1420 |  | RGA -FINISHING | 7827172 |
| 1424 | 40200.40300.41000.56100.58100.75200.944000 | WINDOW FIXING | 7d | 2026-10-13 | 2026-10-19 | 1423FS+5d |  | RGA -FINISHING | 7827182 |
| 1425 | 40200.40300.41000.56100.58100.75200.944100 | INTERNAL PAINTING - 1ST COAT | 7d | 2026-10-26 | 2026-11-01 | 1422 |  | RGA -FINISHING | 7827192 |
| 1426 | 40200.40300.41000.56100.58100.75200.944200 | INTERNAL DOOR FIXING | 15d | 2026-10-31 | 2026-11-14 | 1425FS-2d |  | RGA -FINISHING | 7827202 |
| 1427 | 40200.40300.41000.56100.58100.75200.944300 | WIRING & SWITCH PLATE FIXING | 8d | 2026-11-11 | 2026-11-18 | 1426FS-4d |  | RGA -FINISHING | 7827212 |
| 1428 | 40200.40300.41000.56100.58100.75200.944400 | TOILET FALSE CEILING | 7d | 2026-11-19 | 2026-11-25 | 1427 |  | RGA -FINISHING | 7827222 |
| 1429 | 40200.40300.41000.56100.58100.75200.944500 | MAIN DOOR FRAME SHUTTER FIXING | 6d | 2027-11-28 | 2027-12-03 | 1736 |  | RGA -FINISHING | 7827232 |
| 1430 | 40200.40300.41000.56100.58100.75200.944600 | FINAL COAT PAINT | 8d | 2027-12-04 | 2027-12-11 | 1429 |  | RGA -FINISHING | 7827242 |

| ID | WBS | Task | Duration | Start | Finish | Predecessors | Constraint | Calendar | Unique_Task_ID |
| --- | --- | --- | --- | --- | --- | --- | --- | --- | --- |
| 1431 | 40200.40300.41000.56100.58100.75300 | **6TH FLOOR** | 454d | 2026-09-14 | 2027-12-11 |  | start no earlier than 2026-09-14 | RGA -FINISHING | 7804012 |
| 1432 | 40200.40300.41000.56100.58100.75300.944700 | TOILET DADO TILE FIXING | 7d | 2026-10-14 | 2026-10-20 | 1205 |  | RGA -FINISHING | 7827252 |
| 1433 | 40200.40300.41000.56100.58100.75300.944800 | TOILET FLOORING WORK | 7d | 2026-10-14 | 2026-10-20 | 1432FF |  | RGA -FINISHING | 7827262 |
| 1434 | 40200.40300.41000.56100.58100.75300.944900 | FIRE FIGHTING | 6d | 2026-09-14 | 2026-09-19 | 1204 |  | RGA -FINISHING | 7827272 |
| 1435 | 40200.40300.41000.56100.58100.75300.945000 | INTERNAL PAINTING - PUTTY / PRIMER APPLICATION | 6d | 2026-11-12 | 2026-11-17 | 1437 |  | RGA -FINISHING | 7827282 |
| 1436 | 40200.40300.41000.56100.58100.75300.945100 | FLAT FLOORING | 5d | 2026-10-21 | 2026-10-25 | 1433 |  | RGA -FINISHING | 7827292 |
| 1437 | 40200.40300.41000.56100.58100.75300.945200 | WINDOW FIXING | 12d | 2026-10-31 | 2026-11-11 | 1436FS+5d |  | RGA -FINISHING | 7827302 |
| 1438 | 40200.40300.41000.56100.58100.75300.945300 | INTERNAL PAINTING - 1ST COAT | 12d | 2026-11-18 | 2026-11-29 | 1435 |  | RGA -FINISHING | 7827312 |
| 1439 | 40200.40300.41000.56100.58100.75300.945400 | INTERNAL DOOR FIXING | 15d | 2026-11-28 | 2026-12-12 | 1438FS-2d |  | RGA -FINISHING | 7827322 |
| 1440 | 40200.40300.41000.56100.58100.75300.945500 | WIRING & SWITCH PLATE FIXING | 8d | 2026-12-09 | 2026-12-16 | 1439FS-4d |  | RGA -FINISHING | 7827332 |
| 1441 | 40200.40300.41000.56100.58100.75300.945600 | TOILET FALSE CEILING | 7d | 2026-12-17 | 2026-12-23 | 1440 |  | RGA -FINISHING | 7827342 |
| 1442 | 40200.40300.41000.56100.58100.75300.945700 | MAIN DOOR FRAME SHUTTER FIXING | 6d | 2027-11-28 | 2027-12-03 | 1744 |  | RGA -FINISHING | 7827352 |
| 1443 | 40200.40300.41000.56100.58100.75300.945800 | FINAL COAT PAINT | 8d | 2027-12-04 | 2027-12-11 | 1442 |  | RGA -FINISHING | 7827362 |
| 1444 | 40200.40300.41000.56100.58100.75400 | **7TH FLOOR** | 440d | 2026-10-01 | 2027-12-14 |  | start no earlier than 2026-10-01 | RGA -FINISHING | 7804022 |
| 1445 | 40200.40300.41000.56100.58100.75400.945900 | TOILET DADO TILE FIXING | 7d | 2026-10-31 | 2026-11-06 | 1212 |  | RGA -FINISHING | 7827372 |
| 1446 | 40200.40300.41000.56100.58100.75400.946000 | TOILET FLOORING WORK | 7d | 2026-11-07 | 2026-11-13 | 1445 |  | RGA -FINISHING | 7827382 |
| 1447 | 40200.40300.41000.56100.58100.75400.946100 | FIRE FIGHTING | 6d | 2026-10-01 | 2026-10-06 | 1211 |  | RGA -FINISHING | 7827392 |
| 1448 | 40200.40300.41000.56100.58100.75400.946200 | INTERNAL PAINTING - PUTTY / PRIMER APPLICATION | 6d | 2026-12-06 | 2026-12-11 | 1450 |  | RGA -FINISHING | 7827402 |
| 1449 | 40200.40300.41000.56100.58100.75400.946300 | FLAT FLOORING | 5d | 2026-11-14 | 2026-11-18 | 1446 |  | RGA -FINISHING | 7827412 |
| 1450 | 40200.40300.41000.56100.58100.75400.946400 | WINDOW FIXING | 12d | 2026-11-24 | 2026-12-05 | 1449FS+5d |  | RGA -FINISHING | 7827422 |
| 1451 | 40200.40300.41000.56100.58100.75400.946500 | INTERNAL PAINTING - 1ST COAT | 5d | 2026-12-12 | 2026-12-16 | 1448 |  | RGA -FINISHING | 7827432 |
| 1452 | 40200.40300.41000.56100.58100.75400.946600 | INTERNAL DOOR FIXING | 15d | 2026-12-15 | 2026-12-29 | 1451FS-2d |  | RGA -FINISHING | 7827442 |
| 1453 | 40200.40300.41000.56100.58100.75400.946700 | WIRING & SWITCH PLATE FIXING | 8d | 2026-12-26 | 2027-01-02 | 1452FS-4d |  | RGA -FINISHING | 7827452 |
| 1454 | 40200.40300.41000.56100.58100.75400.946800 | TOILET FALSE CEILING | 7d | 2027-01-03 | 2027-01-09 | 1453 |  | RGA -FINISHING | 7827462 |
| 1455 | 40200.40300.41000.56100.58100.75400.946900 | MAIN DOOR FRAME SHUTTER FIXING | 6d | 2027-12-01 | 2027-12-06 | 1752 |  | RGA -FINISHING | 7827472 |
| 1456 | 40200.40300.41000.56100.58100.75400.947000 | FINAL COAT PAINT | 8d | 2027-12-07 | 2027-12-14 | 1455 |  | RGA -FINISHING | 7827482 |

| ID | WBS | Task | Duration | Start | Finish | Predecessors | Constraint | Calendar | Unique_Task_ID |
| --- | --- | --- | --- | --- | --- | --- | --- | --- | --- |
| 1457 | 40200.40300.41000.56100.58100.75500 | **8TH FLOOR** | 422d | 2026-10-19 | 2027-12-14 |  | start no earlier than 2026-10-19 | RGA -FINISHING | 7804032 |
| 1458 | 40200.40300.41000.56100.58100.75500.947100 | TOILET DADO TILE FIXING | 7d | 2026-11-18 | 2026-11-24 | 1219 |  | RGA -FINISHING | 7827492 |
| 1459 | 40200.40300.41000.56100.58100.75500.947200 | TOILET FLOORING WORK | 7d | 2026-11-25 | 2026-12-01 | 1458 |  | RGA -FINISHING | 7827502 |
| 1460 | 40200.40300.41000.56100.58100.75500.947300 | FIRE FIGHTING | 6d | 2026-10-19 | 2026-10-24 | 1218 |  | RGA -FINISHING | 7827512 |
| 1461 | 40200.40300.41000.56100.58100.75500.947400 | INTERNAL PAINTING - PUTTY / PRIMER APPLICATION | 6d | 2026-12-24 | 2026-12-29 | 1463 |  | RGA -FINISHING | 7827522 |
| 1462 | 40200.40300.41000.56100.58100.75500.947500 | FLAT FLOORING | 5d | 2026-12-02 | 2026-12-06 | 1459 |  | RGA -FINISHING | 7827532 |
| 1463 | 40200.40300.41000.56100.58100.75500.947600 | WINDOW FIXING | 12d | 2026-12-12 | 2026-12-23 | 1462FS+5d |  | RGA -FINISHING | 7827542 |
| 1464 | 40200.40300.41000.56100.58100.75500.947700 | INTERNAL PAINTING - 1ST COAT | 10d | 2026-12-30 | 2027-01-08 | 1461 |  | RGA -FINISHING | 7827552 |
| 1465 | 40200.40300.41000.56100.58100.75500.947800 | INTERNAL DOOR FIXING | 15d | 2027-01-07 | 2027-01-21 | 1464FS-2d |  | RGA -FINISHING | 7827562 |
| 1466 | 40200.40300.41000.56100.58100.75500.947900 | WIRING & SWITCH PLATE FIXING | 8d | 2027-01-18 | 2027-01-25 | 1465FS-4d |  | RGA -FINISHING | 7827572 |
| 1467 | 40200.40300.41000.56100.58100.75500.948000 | TOILET FALSE CEILING | 7d | 2027-01-26 | 2027-02-01 | 1466 |  | RGA -FINISHING | 7827582 |
| 1468 | 40200.40300.41000.56100.58100.75500.948100 | MAIN DOOR FRAME SHUTTER FIXING | 6d | 2027-12-01 | 2027-12-06 | 1760 |  | RGA -FINISHING | 7827592 |
| 1469 | 40200.40300.41000.56100.58100.75500.948200 | FINAL COAT PAINT | 8d | 2027-12-07 | 2027-12-14 | 1468 |  | RGA -FINISHING | 7827602 |
| 1470 | 40200.40300.41000.56100.58100.75600 | **9TH FLOOR** | 409d | 2026-11-05 | 2027-12-18 |  | start no earlier than 2026-11-05 | RGA -FINISHING | 7804042 |
| 1471 | 40200.40300.41000.56100.58100.75600.948300 | TOILET DADO TILE FIXING | 7d | 2026-12-05 | 2026-12-11 | 1226 |  | RGA -FINISHING | 7827612 |
| 1472 | 40200.40300.41000.56100.58100.75600.948400 | TOILET FLOORING WORK | 7d | 2026-12-12 | 2026-12-18 | 1471 |  | RGA -FINISHING | 7827622 |
| 1473 | 40200.40300.41000.56100.58100.75600.948500 | FIRE FIGHTING | 6d | 2026-11-05 | 2026-11-10 | 1225 |  | RGA -FINISHING | 7827632 |
| 1474 | 40200.40300.41000.56100.58100.75600.948600 | INTERNAL PAINTING - PUTTY / PRIMER APPLICATION | 6d | 2027-01-10 | 2027-01-15 | 1476 |  | RGA -FINISHING | 7827642 |
| 1475 | 40200.40300.41000.56100.58100.75600.948700 | FLAT FLOORING | 5d | 2026-12-19 | 2026-12-23 | 1472 |  | RGA -FINISHING | 7827652 |
| 1476 | 40200.40300.41000.56100.58100.75600.948800 | WINDOW FIXING | 12d | 2026-12-29 | 2027-01-09 | 1475FS+5d |  | RGA -FINISHING | 7827662 |
| 1477 | 40200.40300.41000.56100.58100.75600.948900 | INTERNAL PAINTING - 1ST COAT | 2d | 2027-01-16 | 2027-01-17 | 1474 |  | RGA -FINISHING | 7827672 |
| 1478 | 40200.40300.41000.56100.58100.75600.949000 | INTERNAL DOOR FIXING | 15d | 2027-01-16 | 2027-01-30 | 1477FS-2d |  | RGA -FINISHING | 7827682 |
| 1479 | 40200.40300.41000.56100.58100.75600.949100 | WIRING & SWITCH PLATE FIXING | 8d | 2027-01-27 | 2027-02-03 | 1478FS-4d |  | RGA -FINISHING | 7827692 |
| 1480 | 40200.40300.41000.56100.58100.75600.949200 | TOILET FALSE CEILING | 7d | 2027-02-04 | 2027-02-10 | 1479 |  | RGA -FINISHING | 7827702 |
| 1481 | 40200.40300.41000.56100.58100.75600.949300 | MAIN DOOR FRAME SHUTTER FIXING | 6d | 2027-12-01 | 2027-12-06 | 1768 |  | RGA -FINISHING | 7827712 |
| 1482 | 40200.40300.41000.56100.58100.75600.949400 | FINAL COAT PAINT | 8d | 2027-12-11 | 2027-12-18 | 1481FS+4d |  | RGA -FINISHING | 7827722 |

| ID | WBS | Task | Duration | Start | Finish | Predecessors | Constraint | Calendar | Unique_Task_ID |
| --- | --- | --- | --- | --- | --- | --- | --- | --- | --- |
| 1483 | 40200.40300.41000.56100.58100.75700 | **10TH FLOOR** | 388d | 2026-11-22 | 2027-12-14 |  | start no earlier than 2026-11-22 | RGA -FINISHING | 7804052 |
| 1484 | 40200.40300.41000.56100.58100.75700.949500 | TOILET DADO TILE FIXING | 7d | 2026-12-22 | 2026-12-28 | 1233 |  | RGA -FINISHING | 7827732 |
| 1485 | 40200.40300.41000.56100.58100.75700.949600 | TOILET FLOORING WORK | 7d | 2026-12-29 | 2027-01-04 | 1484 |  | RGA -FINISHING | 7827742 |
| 1486 | 40200.40300.41000.56100.58100.75700.949700 | FIRE FIGHTING | 6d | 2026-11-22 | 2026-11-27 | 1232 |  | RGA -FINISHING | 7827752 |
| 1487 | 40200.40300.41000.56100.58100.75700.949800 | INTERNAL PAINTING - PUTTY / PRIMER APPLICATION | 6d | 2027-01-27 | 2027-02-01 | 1489 |  | RGA -FINISHING | 7827762 |
| 1488 | 40200.40300.41000.56100.58100.75700.949900 | FLAT FLOORING | 5d | 2027-01-05 | 2027-01-09 | 1485 |  | RGA -FINISHING | 7827772 |
| 1489 | 40200.40300.41000.56100.58100.75700.950000 | WINDOW FIXING | 12d | 2027-01-15 | 2027-01-26 | 1488FS+5d |  | RGA -FINISHING | 7827782 |
| 1490 | 40200.40300.41000.56100.58100.75700.950100 | INTERNAL PAINTING - 1ST COAT | 12d | 2027-02-02 | 2027-02-13 | 1487 |  | RGA -FINISHING | 7827792 |
| 1491 | 40200.40300.41000.56100.58100.75700.950200 | INTERNAL DOOR FIXING | 15d | 2027-02-12 | 2027-02-26 | 1490FS-2d |  | RGA -FINISHING | 7827802 |
| 1492 | 40200.40300.41000.56100.58100.75700.950300 | WIRING & SWITCH PLATE FIXING | 8d | 2027-02-23 | 2027-03-02 | 1491FS-4d |  | RGA -FINISHING | 7827812 |
| 1493 | 40200.40300.41000.56100.58100.75700.950400 | TOILET FALSE CEILING | 7d | 2027-03-03 | 2027-03-09 | 1492 |  | RGA -FINISHING | 7827822 |
| 1494 | 40200.40300.41000.56100.58100.75700.950500 | MAIN DOOR FRAME SHUTTER FIXING | 6d | 2027-12-01 | 2027-12-06 | 1776 |  | RGA -FINISHING | 7827832 |
| 1495 | 40200.40300.41000.56100.58100.75700.950600 | FINAL COAT PAINT | 8d | 2027-12-07 | 2027-12-14 | 1494 |  | RGA -FINISHING | 7827842 |
| 1496 | 40200.40300.41000.56100.58100.75800 | **11TH FLOOR** | 357.5d | 2026-12-22 | 2027-12-14 |  | start no earlier than 2026-12-22 | RGA -FINISHING | 7804062 |
| 1497 | 40200.40300.41000.56100.58100.75800.950700 | TOILET DADO TILE FIXING | 7d | 2027-01-25 | 2027-02-01 | 1240 |  | RGA -FINISHING | 7827852 |
| 1498 | 40200.40300.41000.56100.58100.75800.950800 | TOILET FLOORING WORK | 7d | 2027-02-01 | 2027-02-08 | 1497 |  | RGA -FINISHING | 7827862 |
| 1499 | 40200.40300.41000.56100.58100.75800.950900 | FIRE FIGHTING | 6d | 2026-12-22 | 2026-12-28 | 1239 |  | RGA -FINISHING | 7827872 |
| 1500 | 40200.40300.41000.56100.58100.75800.951000 | INTERNAL PAINTING - PUTTY / PRIMER APPLICATION | 6d | 2027-03-02 | 2027-03-08 | 1502 |  | RGA -FINISHING | 7827882 |
| 1501 | 40200.40300.41000.56100.58100.75800.951100 | FLAT FLOORING | 5d | 2027-02-08 | 2027-02-13 | 1498 |  | RGA -FINISHING | 7827892 |
| 1502 | 40200.40300.41000.56100.58100.75800.951200 | WINDOW FIXING | 12d | 2027-02-18 | 2027-03-02 | 1501FS+5d |  | RGA -FINISHING | 7827902 |
| 1503 | 40200.40300.41000.56100.58100.75800.951300 | INTERNAL PAINTING - 1ST COAT | 12d | 2027-03-08 | 2027-03-20 | 1500 |  | RGA -FINISHING | 7827912 |
| 1504 | 40200.40300.41000.56100.58100.75800.951400 | INTERNAL DOOR FIXING | 15d | 2027-03-18 | 2027-04-02 | 1503FS-2d |  | RGA -FINISHING | 7827922 |
| 1505 | 40200.40300.41000.56100.58100.75800.951500 | WIRING & SWITCH PLATE FIXING | 8d | 2027-03-29 | 2027-04-06 | 1504FS-4d |  | RGA -FINISHING | 7827932 |
| 1506 | 40200.40300.41000.56100.58100.75800.951600 | TOILET FALSE CEILING | 7d | 2027-04-06 | 2027-04-13 | 1505 |  | RGA -FINISHING | 7827942 |
| 1507 | 40200.40300.41000.56100.58100.75800.951700 | MAIN DOOR FRAME SHUTTER FIXING | 6d | 2027-12-01 | 2027-12-06 | 1784 |  | RGA -FINISHING | 7827952 |
| 1508 | 40200.40300.41000.56100.58100.75800.951800 | FINAL COAT PAINT | 8d | 2027-12-07 | 2027-12-14 | 1507 |  | RGA -FINISHING | 7827962 |

| ID | WBS | Task | Duration | Start | Finish | Predecessors | Constraint | Calendar | Unique_Task_ID |
| --- | --- | --- | --- | --- | --- | --- | --- | --- | --- |
| 1509 | 40200.40300.41000.56100.58100.75900 | **12TH FLOOR** | 342d | 2027-01-10 | 2027-12-17 |  | start no earlier than 2027-01-10 | RGA -FINISHING | 7804072 |
| 1510 | 40200.40300.41000.56100.58100.75900.951900 | TOILET DADO TILE FIXING | 7d | 2027-02-05 | 2027-02-11 | 1247 |  | RGA -FINISHING | 7827972 |
| 1511 | 40200.40300.41000.56100.58100.75900.952000 | TOILET FLOORING WORK | 7d | 2027-02-05 | 2027-02-11 | 1510FF |  | RGA -FINISHING | 7827982 |
| 1512 | 40200.40300.41000.56100.58100.75900.952100 | FIRE FIGHTING | 6d | 2027-01-10 | 2027-01-15 | 1246 |  | RGA -FINISHING | 7827992 |
| 1513 | 40200.40300.41000.56100.58100.75900.952200 | INTERNAL PAINTING - PUTTY / PRIMER APPLICATION | 6d | 2027-03-06 | 2027-03-11 | 1515 |  | RGA -FINISHING | 7828002 |
| 1514 | 40200.40300.41000.56100.58100.75900.952300 | FLAT FLOORING | 5d | 2027-02-12 | 2027-02-16 | 1511 |  | RGA -FINISHING | 7828012 |
| 1515 | 40200.40300.41000.56100.58100.75900.952400 | WINDOW FIXING | 12d | 2027-02-22 | 2027-03-05 | 1514FS+5d |  | RGA -FINISHING | 7828022 |
| 1516 | 40200.40300.41000.56100.58100.75900.952500 | INTERNAL PAINTING - 1ST COAT | 12d | 2027-03-12 | 2027-03-23 | 1513 |  | RGA -FINISHING | 7828032 |
| 1517 | 40200.40300.41000.56100.58100.75900.952600 | INTERNAL DOOR FIXING | 15d | 2027-03-22 | 2027-04-05 | 1516FS-2d |  | RGA -FINISHING | 7828042 |
| 1518 | 40200.40300.41000.56100.58100.75900.952700 | WIRING & SWITCH PLATE FIXING | 8d | 2027-04-02 | 2027-04-09 | 1517FS-4d |  | RGA -FINISHING | 7828052 |
| 1519 | 40200.40300.41000.56100.58100.75900.952800 | TOILET FALSE CEILING | 7d | 2027-04-10 | 2027-04-16 | 1518 |  | RGA -FINISHING | 7828062 |
| 1520 | 40200.40300.41000.56100.58100.75900.952900 | MAIN DOOR FRAME SHUTTER FIXING | 6d | 2027-12-04 | 2027-12-09 | 1792 |  | RGA -FINISHING | 7828072 |
| 1521 | 40200.40300.41000.56100.58100.75900.953000 | FINAL COAT PAINT | 8d | 2027-12-10 | 2027-12-17 | 1520 |  | RGA -FINISHING | 7828082 |
| 1522 | 40200.40300.41000.56100.58100.76000 | **13TH FLOOR** | 325d | 2027-01-27 | 2027-12-17 |  | start no earlier than 2027-01-27 | RGA -FINISHING | 7804082 |
| 1523 | 40200.40300.41000.56100.58100.76000.953100 | TOILET DADO TILE FIXING | 10d | 2027-03-18 | 2027-03-27 | 1254 |  | RGA -FINISHING | 7828092 |
| 1524 | 40200.40300.41000.56100.58100.76000.953200 | TOILET FLOORING WORK | 7d | 2027-03-28 | 2027-04-03 | 1523 |  | RGA -FINISHING | 7828102 |
| 1525 | 40200.40300.41000.56100.58100.76000.953300 | FIRE FIGHTING | 8d | 2027-01-27 | 2027-02-03 | 1253 |  | RGA -FINISHING | 7828112 |
| 1526 | 40200.40300.41000.56100.58100.76000.953400 | INTERNAL PAINTING - PUTTY / PRIMER APPLICATION | 5d | 2027-04-21 | 2027-04-25 | 1528 |  | RGA -FINISHING | 7828122 |
| 1527 | 40200.40300.41000.56100.58100.76000.953500 | FLAT FLOORING | 7d | 2027-04-04 | 2027-04-10 | 1524 |  | RGA -FINISHING | 7828132 |
| 1528 | 40200.40300.41000.56100.58100.76000.953600 | WINDOW FIXING | 5d | 2027-04-16 | 2027-04-20 | 1527FS+5d |  | RGA -FINISHING | 7828142 |
| 1529 | 40200.40300.41000.56100.58100.76000.953700 | INTERNAL PAINTING - 1ST COAT | 4d | 2027-04-26 | 2027-04-29 | 1526 |  | RGA -FINISHING | 7828152 |
| 1530 | 40200.40300.41000.56100.58100.76000.953800 | INTERNAL DOOR FIXING | 15d | 2027-04-28 | 2027-05-12 | 1529FS-2d |  | RGA -FINISHING | 7828162 |
| 1531 | 40200.40300.41000.56100.58100.76000.953900 | WIRING & SWITCH PLATE FIXING | 8d | 2027-05-09 | 2027-05-16 | 1530FS-4d |  | RGA -FINISHING | 7828172 |
| 1532 | 40200.40300.41000.56100.58100.76000.954000 | TOILET FALSE CEILING | 7d | 2027-05-17 | 2027-05-23 | 1531 |  | RGA -FINISHING | 7828182 |
| 1533 | 40200.40300.41000.56100.58100.76000.954100 | MAIN DOOR FRAME SHUTTER FIXING | 6d | 2027-12-04 | 2027-12-09 | 1800 |  | RGA -FINISHING | 7828192 |
| 1534 | 40200.40300.41000.56100.58100.76000.954200 | FINAL COAT PAINT | 8d | 2027-12-10 | 2027-12-17 | 1533 |  | RGA -FINISHING | 7828202 |

| ID | WBS | Task | Duration | Start | Finish | Predecessors | Constraint | Calendar | Unique_Task_ID |
| --- | --- | --- | --- | --- | --- | --- | --- | --- | --- |
| 1535 | 40200.40300.41000.56100.58100.76100 | **14TH FLOOR** | 308d | 2027-02-13 | 2027-12-17 |  | start no earlier than 2027-02-13 | RGA -FINISHING | 7804092 |
| 1536 | 40200.40300.41000.56100.58100.76100.954300 | TOILET DADO TILE FIXING | 10d | 2027-04-04 | 2027-04-13 | 1261 |  | RGA -FINISHING | 7828212 |
| 1537 | 40200.40300.41000.56100.58100.76100.954400 | TOILET FLOORING WORK | 7d | 2027-04-14 | 2027-04-20 | 1536 |  | RGA -FINISHING | 7828222 |
| 1538 | 40200.40300.41000.56100.58100.76100.954500 | FIRE FIGHTING | 8d | 2027-02-13 | 2027-02-20 | 1260 |  | RGA -FINISHING | 7828232 |
| 1539 | 40200.40300.41000.56100.58100.76100.954600 | INTERNAL PAINTING - PUTTY / PRIMER APPLICATION | 5d | 2027-05-08 | 2027-05-12 | 1541 |  | RGA -FINISHING | 7828242 |
| 1540 | 40200.40300.41000.56100.58100.76100.954700 | FLAT FLOORING | 7d | 2027-04-21 | 2027-04-27 | 1537 |  | RGA -FINISHING | 7828252 |
| 1541 | 40200.40300.41000.56100.58100.76100.954800 | WINDOW FIXING | 5d | 2027-05-03 | 2027-05-07 | 1540FS+5d |  | RGA -FINISHING | 7828262 |
| 1542 | 40200.40300.41000.56100.58100.76100.954900 | INTERNAL PAINTING - 1ST COAT | 4d | 2027-05-13 | 2027-05-16 | 1539 |  | RGA -FINISHING | 7828272 |
| 1543 | 40200.40300.41000.56100.58100.76100.955000 | INTERNAL DOOR FIXING | 15d | 2027-05-15 | 2027-05-29 | 1542FS-2d |  | RGA -FINISHING | 7828282 |
| 1544 | 40200.40300.41000.56100.58100.76100.955100 | WIRING & SWITCH PLATE FIXING | 8d | 2027-05-26 | 2027-06-02 | 1543FS-4d |  | RGA -FINISHING | 7828292 |
| 1545 | 40200.40300.41000.56100.58100.76100.955200 | TOILET FALSE CEILING | 7d | 2027-06-03 | 2027-06-09 | 1544 |  | RGA -FINISHING | 7828302 |
| 1546 | 40200.40300.41000.56100.58100.76100.955300 | MAIN DOOR FRAME SHUTTER FIXING | 6d | 2027-12-04 | 2027-12-09 | 1808 |  | RGA -FINISHING | 7828312 |
| 1547 | 40200.40300.41000.56100.58100.76100.955400 | FINAL COAT PAINT | 8d | 2027-12-10 | 2027-12-17 | 1546 |  | RGA -FINISHING | 7828322 |
| 1548 | 40200.40300.41000.56100.58100.76200 | **15TH FLOOR** | 298d | 2027-02-23 | 2027-12-17 |  | start no earlier than 2027-02-23 | RGA -FINISHING | 7804112 |
| 1549 | 40200.40300.41000.56100.58100.76200.955500 | TOILET DADO TILE FIXING | 10d | 2027-04-14 | 2027-04-23 | 1268 |  | RGA -FINISHING | 7828332 |
| 1550 | 40200.40300.41000.56100.58100.76200.955600 | TOILET FLOORING WORK | 7d | 2027-04-24 | 2027-04-30 | 1549 |  | RGA -FINISHING | 7828342 |
| 1551 | 40200.40300.41000.56100.58100.76200.955700 | FIRE FIGHTING | 8d | 2027-02-23 | 2027-03-02 | 1267 |  | RGA -FINISHING | 7828352 |
| 1552 | 40200.40300.41000.56100.58100.76200.955800 | INTERNAL PAINTING - PUTTY / PRIMER APPLICATION | 5d | 2027-05-18 | 2027-05-22 | 1554 |  | RGA -FINISHING | 7828362 |
| 1553 | 40200.40300.41000.56100.58100.76200.955900 | FLAT FLOORING | 7d | 2027-05-01 | 2027-05-07 | 1550 |  | RGA -FINISHING | 7828372 |
| 1554 | 40200.40300.41000.56100.58100.76200.956000 | WINDOW FIXING | 5d | 2027-05-13 | 2027-05-17 | 1553FS+5d |  | RGA -FINISHING | 7828382 |
| 1555 | 40200.40300.41000.56100.58100.76200.956100 | INTERNAL PAINTING - 1ST COAT | 4d | 2027-05-23 | 2027-05-26 | 1552 |  | RGA -FINISHING | 7828392 |
| 1556 | 40200.40300.41000.56100.58100.76200.956200 | INTERNAL DOOR FIXING | 15d | 2027-05-25 | 2027-06-08 | 1555FS-2d |  | RGA -FINISHING | 7828402 |
| 1557 | 40200.40300.41000.56100.58100.76200.956300 | WIRING & SWITCH PLATE FIXING | 8d | 2027-06-05 | 2027-06-12 | 1556FS-4d |  | RGA -FINISHING | 7828412 |
| 1558 | 40200.40300.41000.56100.58100.76200.956400 | TOILET FALSE CEILING | 7d | 2027-06-13 | 2027-06-19 | 1557 |  | RGA -FINISHING | 7828422 |
| 1559 | 40200.40300.41000.56100.58100.76200.956500 | MAIN DOOR FRAME SHUTTER FIXING | 6d | 2027-12-04 | 2027-12-09 | 1816 |  | RGA -FINISHING | 7828432 |
| 1560 | 40200.40300.41000.56100.58100.76200.956600 | FINAL COAT PAINT | 8d | 2027-12-10 | 2027-12-17 | 1559 |  | RGA -FINISHING | 7828442 |

| ID | WBS | Task | Duration | Start | Finish | Predecessors | Constraint | Calendar | Unique_Task_ID |
| --- | --- | --- | --- | --- | --- | --- | --- | --- | --- |
| 1561 | 40200.40300.41000.56100.58100.76300 | **16TH FLOOR** | 277d | 2027-03-19 | 2027-12-20 |  | start no earlier than 2027-03-19 | RGA -FINISHING | 7804122 |
| 1562 | 40200.40300.41000.56100.58100.76300.956700 | TOILET DADO TILE FIXING | 10d | 2027-05-08 | 2027-05-17 | 1275 |  | RGA -FINISHING | 7828452 |
| 1563 | 40200.40300.41000.56100.58100.76300.956800 | TOILET FLOORING WORK | 7d | 2027-05-18 | 2027-05-24 | 1562 |  | RGA -FINISHING | 7828462 |
| 1564 | 40200.40300.41000.56100.58100.76300.956900 | FIRE FIGHTING | 8d | 2027-03-19 | 2027-03-26 | 1274 |  | RGA -FINISHING | 7828472 |
| 1565 | 40200.40300.41000.56100.58100.76300.957000 | INTERNAL PAINTING - PUTTY / PRIMER APPLICATION | 5d | 2027-06-11 | 2027-06-15 | 1567 |  | RGA -FINISHING | 7828482 |
| 1566 | 40200.40300.41000.56100.58100.76300.957100 | FLAT FLOORING | 7d | 2027-05-25 | 2027-05-31 | 1563 |  | RGA -FINISHING | 7828492 |
| 1567 | 40200.40300.41000.56100.58100.76300.957200 | WINDOW FIXING | 5d | 2027-06-06 | 2027-06-10 | 1566FS+5d |  | RGA -FINISHING | 7828502 |
| 1568 | 40200.40300.41000.56100.58100.76300.957300 | INTERNAL PAINTING - 1ST COAT | 4d | 2027-06-16 | 2027-06-19 | 1565 |  | RGA -FINISHING | 7828512 |
| 1569 | 40200.40300.41000.56100.58100.76300.957400 | INTERNAL DOOR FIXING | 15d | 2027-06-18 | 2027-07-02 | 1568FS-2d |  | RGA -FINISHING | 7828522 |
| 1570 | 40200.40300.41000.56100.58100.76300.957500 | WIRING & SWITCH PLATE FIXING | 8d | 2027-06-29 | 2027-07-06 | 1569FS-4d |  | RGA -FINISHING | 7828532 |
| 1571 | 40200.40300.41000.56100.58100.76300.957600 | TOILET FALSE CEILING | 7d | 2027-07-07 | 2027-07-13 | 1570 |  | RGA -FINISHING | 7828542 |
| 1572 | 40200.40300.41000.56100.58100.76300.957700 | MAIN DOOR FRAME SHUTTER FIXING | 6d | 2027-12-07 | 2027-12-12 | 1824 |  | RGA -FINISHING | 7828552 |
| 1573 | 40200.40300.41000.56100.58100.76300.957800 | FINAL COAT PAINT | 8d | 2027-12-13 | 2027-12-20 | 1572 |  | RGA -FINISHING | 7828562 |
| 1574 | 40200.40300.41000.56100.58100.76400 | **17TH FLOOR** | 260d | 2027-04-05 | 2027-12-20 |  | start no earlier than 2027-04-05 | RGA -FINISHING | 7804132 |
| 1575 | 40200.40300.41000.56100.58100.76400.957900 | TOILET DADO TILE FIXING | 10d | 2027-05-25 | 2027-06-03 | 1282 |  | RGA -FINISHING | 7828572 |
| 1576 | 40200.40300.41000.56100.58100.76400.958000 | TOILET FLOORING WORK | 7d | 2027-06-04 | 2027-06-10 | 1575 |  | RGA -FINISHING | 7828582 |
| 1577 | 40200.40300.41000.56100.58100.76400.958100 | FIRE FIGHTING | 8d | 2027-04-05 | 2027-04-12 | 1281 |  | RGA -FINISHING | 7828592 |
| 1578 | 40200.40300.41000.56100.58100.76400.958200 | INTERNAL PAINTING - PUTTY / PRIMER APPLICATION | 5d | 2027-06-28 | 2027-07-02 | 1580 |  | RGA -FINISHING | 7828602 |
| 1579 | 40200.40300.41000.56100.58100.76400.958300 | FLAT FLOORING | 7d | 2027-06-11 | 2027-06-17 | 1576 |  | RGA -FINISHING | 7828612 |
| 1580 | 40200.40300.41000.56100.58100.76400.958400 | WINDOW FIXING | 5d | 2027-06-23 | 2027-06-27 | 1579FS+5d |  | RGA -FINISHING | 7828622 |
| 1581 | 40200.40300.41000.56100.58100.76400.958500 | INTERNAL PAINTING - 1ST COAT | 4d | 2027-07-03 | 2027-07-06 | 1578 |  | RGA -FINISHING | 7828632 |
| 1582 | 40200.40300.41000.56100.58100.76400.958600 | INTERNAL DOOR FIXING | 15d | 2027-07-05 | 2027-07-19 | 1581FS-2d |  | RGA -FINISHING | 7828642 |
| 1583 | 40200.40300.41000.56100.58100.76400.958700 | WIRING & SWITCH PLATE FIXING | 8d | 2027-07-16 | 2027-07-23 | 1582FS-4d |  | RGA -FINISHING | 7828652 |
| 1584 | 40200.40300.41000.56100.58100.76400.958800 | TOILET FALSE CEILING | 7d | 2027-07-24 | 2027-07-30 | 1583 |  | RGA -FINISHING | 7828662 |
| 1585 | 40200.40300.41000.56100.58100.76400.958900 | MAIN DOOR FRAME SHUTTER FIXING | 6d | 2027-12-07 | 2027-12-12 | 1832 |  | RGA -FINISHING | 7828672 |
| 1586 | 40200.40300.41000.56100.58100.76400.959000 | FINAL COAT PAINT | 8d | 2027-12-13 | 2027-12-20 | 1585 |  | RGA -FINISHING | 7828682 |

| ID | WBS | Task | Duration | Start | Finish | Predecessors | Constraint | Calendar | Unique_Task_ID |
| --- | --- | --- | --- | --- | --- | --- | --- | --- | --- |
| 1587 | 40200.40300.41000.56100.58100.76500 | **18TH FLOOR** | 243d | 2027-04-22 | 2027-12-20 |  | start no earlier than 2027-04-22 | RGA -FINISHING | 7804142 |
| 1588 | 40200.40300.41000.56100.58100.76500.959100 | TOILET DADO TILE FIXING | 10d | 2027-06-11 | 2027-06-20 | 1289 |  | RGA -FINISHING | 7828692 |
| 1589 | 40200.40300.41000.56100.58100.76500.959200 | TOILET FLOORING WORK | 7d | 2027-06-21 | 2027-06-27 | 1588 |  | RGA -FINISHING | 7828702 |
| 1590 | 40200.40300.41000.56100.58100.76500.959300 | FIRE FIGHTING | 8d | 2027-04-22 | 2027-04-29 | 1288 |  | RGA -FINISHING | 7828712 |
| 1591 | 40200.40300.41000.56100.58100.76500.959400 | INTERNAL PAINTING - PUTTY / PRIMER APPLICATION | 5d | 2027-07-15 | 2027-07-19 | 1593 |  | RGA -FINISHING | 7828722 |
| 1592 | 40200.40300.41000.56100.58100.76500.959500 | FLAT FLOORING | 7d | 2027-06-28 | 2027-07-04 | 1589 |  | RGA -FINISHING | 7828732 |
| 1593 | 40200.40300.41000.56100.58100.76500.959600 | WINDOW FIXING | 5d | 2027-07-10 | 2027-07-14 | 1592FS+5d |  | RGA -FINISHING | 7828742 |
| 1594 | 40200.40300.41000.56100.58100.76500.959700 | INTERNAL PAINTING - 1ST COAT | 4d | 2027-07-20 | 2027-07-23 | 1591 |  | RGA -FINISHING | 7828752 |
| 1595 | 40200.40300.41000.56100.58100.76500.959800 | INTERNAL DOOR FIXING | 15d | 2027-07-22 | 2027-08-05 | 1594FS-2d |  | RGA -FINISHING | 7828762 |
| 1596 | 40200.40300.41000.56100.58100.76500.959900 | WIRING & SWITCH PLATE FIXING | 8d | 2027-08-02 | 2027-08-09 | 1595FS-4d |  | RGA -FINISHING | 7828772 |
| 1597 | 40200.40300.41000.56100.58100.76500.960000 | TOILET FALSE CEILING | 7d | 2027-08-10 | 2027-08-16 | 1596 |  | RGA -FINISHING | 7828782 |
| 1598 | 40200.40300.41000.56100.58100.76500.960100 | MAIN DOOR FRAME SHUTTER FIXING | 6d | 2027-12-07 | 2027-12-12 | 1840 |  | RGA -FINISHING | 7828792 |
| 1599 | 40200.40300.41000.56100.58100.76500.960200 | FINAL COAT PAINT | 8d | 2027-12-13 | 2027-12-20 | 1598 |  | RGA -FINISHING | 7828802 |
| 1600 | 40200.40300.41000.56100.58100.76600 | **19TH FLOOR** | 226d | 2027-05-09 | 2027-12-20 |  | start no earlier than 2027-05-09 | RGA -FINISHING | 7804152 |
| 1601 | 40200.40300.41000.56100.58100.76600.960300 | TOILET DADO TILE FIXING | 10d | 2027-06-28 | 2027-07-07 | 1296 |  | RGA -FINISHING | 7828812 |
| 1602 | 40200.40300.41000.56100.58100.76600.960400 | TOILET FLOORING WORK | 7d | 2027-07-08 | 2027-07-14 | 1601 |  | RGA -FINISHING | 7828822 |
| 1603 | 40200.40300.41000.56100.58100.76600.960500 | FIRE FIGHTING | 8d | 2027-05-09 | 2027-05-16 | 1295 |  | RGA -FINISHING | 7828832 |
| 1604 | 40200.40300.41000.56100.58100.76600.960600 | INTERNAL PAINTING - PUTTY / PRIMER APPLICATION | 5d | 2027-08-01 | 2027-08-05 | 1606 |  | RGA -FINISHING | 7828842 |
| 1605 | 40200.40300.41000.56100.58100.76600.960700 | FLAT FLOORING | 7d | 2027-07-15 | 2027-07-21 | 1602 |  | RGA -FINISHING | 7828852 |
| 1606 | 40200.40300.41000.56100.58100.76600.960800 | WINDOW FIXING | 5d | 2027-07-27 | 2027-07-31 | 1605FS+5d |  | RGA -FINISHING | 7828862 |
| 1607 | 40200.40300.41000.56100.58100.76600.960900 | INTERNAL PAINTING - 1ST COAT | 4d | 2027-08-06 | 2027-08-09 | 1604 |  | RGA -FINISHING | 7828872 |
| 1608 | 40200.40300.41000.56100.58100.76600.961000 | INTERNAL DOOR FIXING | 15d | 2027-08-08 | 2027-08-22 | 1607FS-2d |  | RGA -FINISHING | 7828882 |
| 1609 | 40200.40300.41000.56100.58100.76600.961100 | WIRING & SWITCH PLATE FIXING | 8d | 2027-08-19 | 2027-08-26 | 1608FS-4d |  | RGA -FINISHING | 7828892 |
| 1610 | 40200.40300.41000.56100.58100.76600.961200 | TOILET FALSE CEILING | 7d | 2027-08-27 | 2027-09-02 | 1609 |  | RGA -FINISHING | 7828902 |
| 1611 | 40200.40300.41000.56100.58100.76600.961300 | MAIN DOOR FRAME SHUTTER FIXING | 6d | 2027-12-07 | 2027-12-12 | 1848 |  | RGA -FINISHING | 7828912 |
| 1612 | 40200.40300.41000.56100.58100.76600.961400 | FINAL COAT PAINT | 8d | 2027-12-13 | 2027-12-20 | 1611 |  | RGA -FINISHING | 7828922 |

| ID | WBS | Task | Duration | Start | Finish | Predecessors | Constraint | Calendar | Unique_Task_ID |
| --- | --- | --- | --- | --- | --- | --- | --- | --- | --- |
| 1613 | 40200.40300.41000.56100.58100.76700 | **20TH FLOOR** | 209d | 2027-05-26 | 2027-12-20 |  | start no earlier than 2027-05-26 | RGA -FINISHING | 7804162 |
| 1614 | 40200.40300.41000.56100.58100.76700.961500 | TOILET DADO TILE FIXING | 10d | 2027-07-15 | 2027-07-24 | 1303 |  | RGA -FINISHING | 7828932 |
| 1615 | 40200.40300.41000.56100.58100.76700.961600 | TOILET FLOORING WORK | 7d | 2027-07-25 | 2027-07-31 | 1614 |  | RGA -FINISHING | 7828942 |
| 1616 | 40200.40300.41000.56100.58100.76700.961700 | FIRE FIGHTING | 8d | 2027-05-26 | 2027-06-02 | 1302 |  | RGA -FINISHING | 7828952 |
| 1617 | 40200.40300.41000.56100.58100.76700.961800 | INTERNAL PAINTING - PUTTY / PRIMER APPLICATION | 5d | 2027-08-18 | 2027-08-22 | 1619 |  | RGA -FINISHING | 7828962 |
| 1618 | 40200.40300.41000.56100.58100.76700.961900 | FLAT FLOORING | 7d | 2027-08-01 | 2027-08-07 | 1615 |  | RGA -FINISHING | 7828972 |
| 1619 | 40200.40300.41000.56100.58100.76700.962000 | WINDOW FIXING | 5d | 2027-08-13 | 2027-08-17 | 1618FS+5d |  | RGA -FINISHING | 7828982 |
| 1620 | 40200.40300.41000.56100.58100.76700.962100 | INTERNAL PAINTING - 1ST COAT | 4d | 2027-08-23 | 2027-08-26 | 1617 |  | RGA -FINISHING | 7828992 |
| 1621 | 40200.40300.41000.56100.58100.76700.962200 | INTERNAL DOOR FIXING | 15d | 2027-08-25 | 2027-09-08 | 1620FS-2d |  | RGA -FINISHING | 7829002 |
| 1622 | 40200.40300.41000.56100.58100.76700.962300 | WIRING & SWITCH PLATE FIXING | 8d | 2027-09-05 | 2027-09-12 | 1621FS-4d |  | RGA -FINISHING | 7829012 |
| 1623 | 40200.40300.41000.56100.58100.76700.962400 | TOILET FALSE CEILING | 7d | 2027-09-13 | 2027-09-19 | 1622 |  | RGA -FINISHING | 7829022 |
| 1624 | 40200.40300.41000.56100.58100.76700.962500 | MAIN DOOR FRAME SHUTTER FIXING | 6d | 2027-12-07 | 2027-12-12 | 1856 |  | RGA -FINISHING | 7829032 |
| 1625 | 40200.40300.41000.56100.58100.76700.962600 | FINAL COAT PAINT | 8d | 2027-12-13 | 2027-12-20 | 1624 |  | RGA -FINISHING | 7829042 |
| 1626 | 40200.40300.41000.56100.58100.76800 | **21st FLOOR** | 192d | 2027-06-12 | 2027-12-20 |  | start no earlier than 2027-06-12 | RGA -FINISHING | 7804172 |
| 1627 | 40200.40300.41000.56100.58100.76800.962700 | TOILET DADO TILE FIXING | 10d | 2027-08-01 | 2027-08-10 | 1310 |  | RGA -FINISHING | 7829052 |
| 1628 | 40200.40300.41000.56100.58100.76800.962800 | TOILET FLOORING WORK | 7d | 2027-08-11 | 2027-08-17 | 1627 |  | RGA -FINISHING | 7829062 |
| 1629 | 40200.40300.41000.56100.58100.76800.962900 | FIRE FIGHTING | 8d | 2027-06-12 | 2027-06-19 | 1309 |  | RGA -FINISHING | 7829072 |
| 1630 | 40200.40300.41000.56100.58100.76800.963000 | INTERNAL PAINTING - PUTTY / PRIMER APPLICATION | 15d | 2027-09-04 | 2027-09-18 | 1632 |  | RGA -FINISHING | 7829082 |
| 1631 | 40200.40300.41000.56100.58100.76800.963100 | FLAT FLOORING | 5d | 2027-08-18 | 2027-08-22 | 1628 |  | RGA -FINISHING | 7829092 |
| 1632 | 40200.40300.41000.56100.58100.76800.963200 | WINDOW FIXING | 7d | 2027-08-28 | 2027-09-03 | 1631FS+5d |  | RGA -FINISHING | 7829102 |
| 1633 | 40200.40300.41000.56100.58100.76800.963300 | INTERNAL PAINTING - 1ST COAT | 5d | 2027-09-19 | 2027-09-23 | 1630 |  | RGA -FINISHING | 7829112 |
| 1634 | 40200.40300.41000.56100.58100.76800.963400 | INTERNAL DOOR FIXING | 4d | 2027-09-22 | 2027-09-25 | 1633FS-2d |  | RGA -FINISHING | 7829122 |
| 1635 | 40200.40300.41000.56100.58100.76800.963500 | WIRING & SWITCH PLATE FIXING | 8d | 2027-09-22 | 2027-09-29 | 1634FS-4d |  | RGA -FINISHING | 7829132 |
| 1636 | 40200.40300.41000.56100.58100.76800.963600 | TOILET FALSE CEILING | 7d | 2027-09-30 | 2027-10-06 | 1635 |  | RGA -FINISHING | 7829142 |
| 1637 | 40200.40300.41000.56100.58100.76800.963700 | MAIN DOOR FRAME SHUTTER FIXING | 6d | 2027-12-07 | 2027-12-12 | 1864 |  | RGA -FINISHING | 7829152 |
| 1638 | 40200.40300.41000.56100.58100.76800.963800 | FINAL COAT PAINT | 8d | 2027-12-13 | 2027-12-20 | 1637 |  | RGA -FINISHING | 7829162 |

| ID | WBS | Task | Duration | Start | Finish | Predecessors | Constraint | Calendar | Unique_Task_ID |
| --- | --- | --- | --- | --- | --- | --- | --- | --- | --- |
| 1639 | 40200.40300.41000.56100.58100.76900 | **22nd FLOOR** | 175d | 2027-06-29 | 2027-12-20 |  | start no earlier than 2027-06-29 | RGA -FINISHING | 7804182 |
| 1640 | 40200.40300.41000.56100.58100.76900.963900 | TOILET DADO TILE FIXING | 10d | 2027-08-18 | 2027-08-27 | 1317 |  | RGA -FINISHING | 7829172 |
| 1641 | 40200.40300.41000.56100.58100.76900.964000 | TOILET FLOORING WORK | 7d | 2027-08-28 | 2027-09-03 | 1640 |  | RGA -FINISHING | 7829182 |
| 1642 | 40200.40300.41000.56100.58100.76900.964100 | FIRE FIGHTING | 8d | 2027-06-29 | 2027-07-06 | 1316 |  | RGA -FINISHING | 7829192 |
| 1643 | 40200.40300.41000.56100.58100.76900.964200 | INTERNAL PAINTING - PUTTY / PRIMER APPLICATION | 5d | 2027-09-14 | 2027-09-18 | 1645 |  | RGA -FINISHING | 7829202 |
| 1644 | 40200.40300.41000.56100.58100.76900.964300 | FLAT FLOORING | 7d | 2027-09-04 | 2027-09-10 | 1641 |  | RGA -FINISHING | 7829212 |
| 1645 | 40200.40300.41000.56100.58100.76900.964400 | WINDOW FIXING | 5d | 2027-09-09 | 2027-09-13 | 1632FS+5d |  | RGA -FINISHING | 7829222 |
| 1646 | 40200.40300.41000.56100.58100.76900.964500 | INTERNAL PAINTING - 1ST COAT | 4d | 2027-09-19 | 2027-09-22 | 1643 |  | RGA -FINISHING | 7829232 |
| 1647 | 40200.40300.41000.56100.58100.76900.964600 | INTERNAL DOOR FIXING | 15d | 2027-09-21 | 2027-10-05 | 1646FS-2d |  | RGA -FINISHING | 7829242 |
| 1648 | 40200.40300.41000.56100.58100.76900.964700 | WIRING & SWITCH PLATE FIXING | 8d | 2027-10-02 | 2027-10-09 | 1647FS-4d |  | RGA -FINISHING | 7829252 |
| 1649 | 40200.40300.41000.56100.58100.76900.964800 | TOILET FALSE CEILING | 7d | 2027-10-10 | 2027-10-16 | 1648 |  | RGA -FINISHING | 7829262 |
| 1650 | 40200.40300.41000.56100.58100.76900.964900 | MAIN DOOR FRAME SHUTTER FIXING | 6d | 2027-12-07 | 2027-12-12 | 1872 |  | RGA -FINISHING | 7829272 |
| 1651 | 40200.40300.41000.56100.58100.76900.965000 | FINAL COAT PAINT | 8d | 2027-12-13 | 2027-12-20 | 1650 |  | RGA -FINISHING | 7829282 |
| 1652 | 40200.40300.41000.56100.58100.77000 | **23TH FLOOR** | 151d | 2027-07-23 | 2027-12-20 |  | start no earlier than 2027-07-23 | RGA -FINISHING | 7804192 |
| 1653 | 40200.40300.41000.56100.58100.77000.965100 | TOILET DADO TILE FIXING | 10d | 2027-09-17 | 2027-09-26 | 1324 |  | RGA -FINISHING | 7829292 |
| 1654 | 40200.40300.41000.56100.58100.77000.965200 | TOILET FLOORING WORK | 7d | 2027-09-27 | 2027-10-03 | 1653 |  | RGA -FINISHING | 7829302 |
| 1655 | 40200.40300.41000.56100.58100.77000.965300 | FIRE FIGHTING | 8d | 2027-07-23 | 2027-07-30 | 1323 |  | RGA -FINISHING | 7829312 |
| 1656 | 40200.40300.41000.56100.58100.77000.965400 | INTERNAL PAINTING - PUTTY / PRIMER APPLICATION | 5d | 2027-10-21 | 2027-10-25 | 1658 |  | RGA -FINISHING | 7829322 |
| 1657 | 40200.40300.41000.56100.58100.77000.965500 | FLAT FLOORING | 7d | 2027-10-04 | 2027-10-10 | 1654 |  | RGA -FINISHING | 7829332 |
| 1658 | 40200.40300.41000.56100.58100.77000.965600 | WINDOW FIXING | 5d | 2027-10-16 | 2027-10-20 | 1657FS+5d |  | RGA -FINISHING | 7829342 |
| 1659 | 40200.40300.41000.56100.58100.77000.965700 | INTERNAL PAINTING - 1ST COAT | 4d | 2027-10-26 | 2027-10-29 | 1656 |  | RGA -FINISHING | 7829352 |
| 1660 | 40200.40300.41000.56100.58100.77000.965800 | INTERNAL DOOR FIXING | 15d | 2027-10-28 | 2027-11-11 | 1659FS-2d |  | RGA -FINISHING | 7829362 |
| 1661 | 40200.40300.41000.56100.58100.77000.965900 | WIRING & SWITCH PLATE FIXING | 8d | 2027-11-08 | 2027-11-15 | 1660FS-4d |  | RGA -FINISHING | 7829372 |
| 1662 | 40200.40300.41000.56100.58100.77000.966000 | TOILET FALSE CEILING | 7d | 2027-11-16 | 2027-11-22 | 1661 |  | RGA -FINISHING | 7829382 |
| 1663 | 40200.40300.41000.56100.58100.77000.966100 | MAIN DOOR FRAME SHUTTER FIXING | 6d | 2027-12-07 | 2027-12-12 | 1880 |  | RGA -FINISHING | 7829392 |
| 1664 | 40200.40300.41000.56100.58100.77000.966200 | FINAL COAT PAINT | 8d | 2027-12-13 | 2027-12-20 | 1663 |  | RGA -FINISHING | 7829402 |

| ID | WBS | Task | Duration | Start | Finish | Predecessors | Constraint | Calendar | Unique_Task_ID |
| --- | --- | --- | --- | --- | --- | --- | --- | --- | --- |
| 1665 | 40200.40300.41000.56100.58100.77100 | **24TH FLOOR** | 127d | 2027-08-16 | 2027-12-20 |  | start no earlier than 2027-08-16 | RGA -FINISHING | 7804202 |
| 1666 | 40200.40300.41000.56100.58100.77100.966300 | TOILET DADO TILE FIXING | 10d | 2027-10-01 | 2027-10-10 | 1331 |  | RGA -FINISHING | 7829412 |
| 1667 | 40200.40300.41000.56100.58100.77100.966400 | TOILET FLOORING WORK | 7d | 2027-10-11 | 2027-10-17 | 1666 |  | RGA -FINISHING | 7829422 |
| 1668 | 40200.40300.41000.56100.58100.77100.966500 | FIRE FIGHTING | 8d | 2027-08-16 | 2027-08-23 | 1330 |  | RGA -FINISHING | 7829432 |
| 1669 | 40200.40300.41000.56100.58100.77100.966600 | INTERNAL PAINTING - PUTTY / PRIMER APPLICATION | 5d | 2027-11-04 | 2027-11-08 | 1671 |  | RGA -FINISHING | 7829442 |
| 1670 | 40200.40300.41000.56100.58100.77100.966700 | FLAT FLOORING | 7d | 2027-10-18 | 2027-10-24 | 1667 |  | RGA -FINISHING | 7829452 |
| 1671 | 40200.40300.41000.56100.58100.77100.966800 | WINDOW FIXING | 5d | 2027-10-30 | 2027-11-03 | 1670FS+5d |  | RGA -FINISHING | 7829462 |
| 1672 | 40200.40300.41000.56100.58100.77100.966900 | INTERNAL PAINTING - 1ST COAT | 4d | 2027-11-09 | 2027-11-12 | 1669 |  | RGA -FINISHING | 7829472 |
| 1673 | 40200.40300.41000.56100.58100.77100.967000 | INTERNAL DOOR FIXING | 15d | 2027-11-11 | 2027-11-25 | 1672FS-2d |  | RGA -FINISHING | 7829482 |
| 1674 | 40200.40300.41000.56100.58100.77100.967100 | WIRING & SWITCH PLATE FIXING | 8d | 2027-11-22 | 2027-11-29 | 1673FS-4d |  | RGA -FINISHING | 7829492 |
| 1675 | 40200.40300.41000.56100.58100.77100.967200 | TOILET FALSE CEILING | 7d | 2027-11-30 | 2027-12-06 | 1674 |  | RGA -FINISHING | 7829502 |
| 1676 | 40200.40300.41000.56100.58100.77100.967300 | MAIN DOOR FRAME SHUTTER FIXING | 6d | 2027-12-07 | 2027-12-12 | 1888 |  | RGA -FINISHING | 7829512 |
| 1677 | 40200.40300.41000.56100.58100.77100.967400 | FINAL COAT PAINT | 8d | 2027-12-13 | 2027-12-20 | 1676 |  | RGA -FINISHING | 7829522 |
| 1678 | 40200.40300.41000.56100.58100.77200 | **25TH FLOOR** | 124d | 2027-08-25 | 2027-12-26 |  | start no earlier than 2027-08-25 | RGA -FINISHING | 7804212 |
| 1679 | 40200.40300.41000.56100.58100.77200.967500 | TOILET DADO TILE FIXING | 10d | 2027-10-16 | 2027-10-25 | 1338 |  | RGA -FINISHING | 7829532 |
| 1680 | 40200.40300.41000.56100.58100.77200.967600 | TOILET FLOORING WORK | 7d | 2027-10-26 | 2027-11-01 | 1679 |  | RGA -FINISHING | 7829542 |
| 1681 | 40200.40300.41000.56100.58100.77200.967700 | FIRE FIGHTING | 8d | 2027-08-25 | 2027-09-01 | 1337 |  | RGA -FINISHING | 7829552 |
| 1682 | 40200.40300.41000.56100.58100.77200.967800 | INTERNAL PAINTING - PUTTY / PRIMER APPLICATION | 5d | 2027-11-24 | 2027-11-28 | 1684 |  | RGA -FINISHING | 7829562 |
| 1683 | 40200.40300.41000.56100.58100.77200.967900 | FLAT FLOORING | 7d | 2027-11-02 | 2027-11-08 | 1680 |  | RGA -FINISHING | 7829572 |
| 1684 | 40200.40300.41000.56100.58100.77200.968000 | WINDOW FIXING | 5d | 2027-11-19 | 2027-11-23 | 1683FS+10d |  | RGA -FINISHING | 7829582 |
| 1685 | 40200.40300.41000.56100.58100.77200.968100 | INTERNAL PAINTING - 1ST COAT | 4d | 2027-11-29 | 2027-12-02 | 1682 |  | RGA -FINISHING | 7829592 |
| 1686 | 40200.40300.41000.56100.58100.77200.968200 | INTERNAL DOOR FIXING | 15d | 2027-12-01 | 2027-12-15 | 1685FS-2d |  | RGA -FINISHING | 7829602 |
| 1687 | 40200.40300.41000.56100.58100.77200.968300 | WIRING & SWITCH PLATE FIXING | 8d | 2027-12-12 | 2027-12-19 | 1686FS-4d |  | RGA -FINISHING | 7829612 |
| 1688 | 40200.40300.41000.56100.58100.77200.968400 | TOILET FALSE CEILING | 7d | 2027-12-20 | 2027-12-26 | 1687 |  | RGA -FINISHING | 7829622 |
| 1689 | 40200.40300.41000.56100.58100.77200.968500 | MAIN DOOR FRAME SHUTTER FIXING | 6d | 2027-12-10 | 2027-12-15 | 1896 |  | RGA -FINISHING | 7829632 |
| 1690 | 40200.40300.41000.56100.58100.77200.968600 | FINAL COAT PAINT | 8d | 2027-12-16 | 2027-12-23 | 1689 |  | RGA -FINISHING | 7829642 |

| ID | WBS | Task | Duration | Start | Finish | Predecessors | Constraint | Calendar | Unique_Task_ID |
| --- | --- | --- | --- | --- | --- | --- | --- | --- | --- |
| 1691 | 40200.40300.41000.56100.59900 | **LIFT LOBBY & STAIRCASE FINISHING WORK** | 598d | 2026-05-16 | 2028-01-03 |  | start no earlier than 2026-05-16 | RGA -FINISHING | 7803542 |
| 1692 | 40200.40300.41000.56100.59900.172000 | **GROUND FLOOR** | 572d | 2026-05-16 | 2027-12-08 |  | start no earlier than 2026-05-16 | RGA -FINISHING | 7805692 |
| 1693 | 40200.40300.41000.56100.59900.172000.968700 | FIRE FIGHTING | 10d | 2026-05-16 | 2026-05-25 | 1356FS-6d |  | RGA -FINISHING | 7829892 |
| 1694 | 40200.40300.41000.56100.59900.172000.968800 | LIFT BLOCK WORK | 3d | 2027-08-04 | 2027-08-06 | 1158 |  | RGA -FINISHING | 7829902 |
| 1695 | 40200.40300.41000.56100.59900.172000.968900 | LIFT DADO WORK | 3d | 2027-11-08 | 2027-11-10 | 1903FS-15d |  | RGA -FINISHING | 7829912 |
| 1696 | 40200.40300.41000.56100.59900.172000.969000 | LOBBY FLOORING WORK | 4d | 2027-11-11 | 2027-11-14 | 1695 |  | RGA -FINISHING | 7829922 |
| 1697 | 40200.40300.41000.56100.59900.172000.969100 | ELECTRICAL WIRING & SWITCH PLATE FIXING WORK | 6d | 2027-11-15 | 2027-11-20 | 1696 |  | RGA -FINISHING | 7829932 |
| 1698 | 40200.40300.41000.56100.59900.172000.969200 | False ceiling & 1ST COAT PAINTING | 15d | 2027-11-21 | 2027-12-05 | 1697 |  | RGA -FINISHING | 7829942 |
| 1699 | 40200.40300.41000.56100.59900.172000.969300 | CLEANING | 3d | 2027-12-06 | 2027-12-08 | 1698 |  | RGA -FINISHING | 7829952 |
| 1700 | 40200.40300.41000.56100.59900.172100 | **1ST FLOOR** | 554d | 2026-06-06 | 2027-12-11 |  | start no earlier than 2026-06-06 | RGA -FINISHING | 7805682 |
| 1701 | 40200.40300.41000.56100.59900.172100.969400 | FIRE FIGHTING | 10d | 2026-06-06 | 2026-06-15 | 1369FS-5d |  | RGA -FINISHING | 7829962 |
| 1702 | 40200.40300.41000.56100.59900.172100.969500 | LIFT BLOCK WORK | 3d | 2027-08-07 | 2027-08-09 | 1694 |  | RGA -FINISHING | 7829972 |
| 1703 | 40200.40300.41000.56100.59900.172100.969600 | LIFT DADO WORK | 3d | 2027-11-11 | 2027-11-13 | 1695 |  | RGA -FINISHING | 7829982 |
| 1704 | 40200.40300.41000.56100.59900.172100.969700 | LOBBY FLOORING WORK | 4d | 2027-11-14 | 2027-11-17 | 1703 |  | RGA -FINISHING | 7829992 |
| 1705 | 40200.40300.41000.56100.59900.172100.969800 | ELECTRICAL WIRING & SWITCH PLATE FIXING WORK | 6d | 2027-11-18 | 2027-11-23 | 1704 |  | RGA -FINISHING | 7830002 |
| 1706 | 40200.40300.41000.56100.59900.172100.969900 | False ceiling & 1ST COAT PAINTING | 15d | 2027-11-24 | 2027-12-08 | 1705 |  | RGA -FINISHING | 7830012 |
| 1707 | 40200.40300.41000.56100.59900.172100.970000 | CLEANING | 3d | 2027-12-09 | 2027-12-11 | 1706 |  | RGA -FINISHING | 7830022 |
| 1708 | 40200.40300.41000.56100.59900.172200 | **2nd FLOOR** | 550d | 2026-06-23 | 2027-12-24 |  | start no earlier than 2026-06-23 | RGA -FINISHING | 7805672 |
| 1709 | 40200.40300.41000.56100.59900.172200.970100 | FIRE FIGHTING | 10d | 2026-06-23 | 2026-07-02 | 1382FS-5d |  | RGA -FINISHING | 7830032 |
| 1710 | 40200.40300.41000.56100.59900.172200.970200 | LIFT BLOCK WORK | 3d | 2027-08-07 | 2027-08-09 | 1702SS |  | RGA -FINISHING | 7830042 |
| 1711 | 40200.40300.41000.56100.59900.172200.970300 | LIFT DADO WORK | 10d | 2027-11-11 | 2027-11-20 | 1703SS |  | RGA -FINISHING | 7830052 |
| 1712 | 40200.40300.41000.56100.59900.172200.970400 | LOBBY FLOORING WORK | 10d | 2027-11-21 | 2027-11-30 | 1711 |  | RGA -FINISHING | 7830062 |
| 1713 | 40200.40300.41000.56100.59900.172200.970500 | ELECTRICAL WIRING & SWITCH PLATE FIXING WORK | 6d | 2027-12-01 | 2027-12-06 | 1712 |  | RGA -FINISHING | 7830072 |
| 1714 | 40200.40300.41000.56100.59900.172200.970600 | False ceiling & 1ST COAT PAINTING | 15d | 2027-12-07 | 2027-12-21 | 1713 |  | RGA -FINISHING | 7830082 |
| 1715 | 40200.40300.41000.56100.59900.172200.970700 | CLEANING | 3d | 2027-12-22 | 2027-12-24 | 1714 |  | RGA -FINISHING | 7830092 |

Notes:
- 1691: Completion in 12 months post last RCC
- 1693: Assumed
- 1701: Assumed
- 1709: Assumed

| ID | WBS | Task | Duration | Start | Finish | Predecessors | Constraint | Calendar | Unique_Task_ID |
| --- | --- | --- | --- | --- | --- | --- | --- | --- | --- |
| 1716 | 40200.40300.41000.56100.59900.172300 | **3rd FLOOR** | 516.5d | 2026-07-23 | 2027-12-21 |  | start no earlier than 2026-07-23 | RGA -FINISHING | 7805662 |
| 1717 | 40200.40300.41000.56100.59900.172300.970800 | FIRE FIGHTING | 10d | 2026-07-23 | 2026-08-02 | 1395FS-5d |  | RGA -FINISHING | 7830102 |
| 1718 | 40200.40300.41000.56100.59900.172300.970900 | LIFT BLOCK WORK | 3d | 2027-08-10 | 2027-08-12 | 1710 |  | RGA -FINISHING | 7830112 |
| 1719 | 40200.40300.41000.56100.59900.172300.971000 | LIFT DADO WORK | 3d | 2027-11-21 | 2027-11-23 | 1711 |  | RGA -FINISHING | 7830122 |
| 1720 | 40200.40300.41000.56100.59900.172300.971100 | LOBBY FLOORING WORK | 4d | 2027-11-24 | 2027-11-27 | 1719 |  | RGA -FINISHING | 7830132 |
| 1721 | 40200.40300.41000.56100.59900.172300.971200 | ELECTRICAL WIRING & SWITCH PLATE FIXING WORK | 6d | 2027-11-28 | 2027-12-03 | 1720 |  | RGA -FINISHING | 7830142 |
| 1722 | 40200.40300.41000.56100.59900.172300.971300 | False ceiling & 1ST COAT PAINTING | 15d | 2027-12-04 | 2027-12-18 | 1721 |  | RGA -FINISHING | 7830152 |
| 1723 | 40200.40300.41000.56100.59900.172300.971400 | CLEANING | 3d | 2027-12-19 | 2027-12-21 | 1722 |  | RGA -FINISHING | 7830162 |
| 1724 | 40200.40300.41000.56100.59900.172400 | **4th FLOOR** | 516d | 2026-08-06 | 2028-01-03 |  | start no earlier than 2026-08-06 | RGA -FINISHING | 7805652 |
| 1725 | 40200.40300.41000.56100.59900.172400.971500 | FIRE FIGHTING | 10d | 2026-08-06 | 2026-08-15 | 1408FS-5d |  | RGA -FINISHING | 7830172 |
| 1726 | 40200.40300.41000.56100.59900.172400.971600 | LIFT BLOCK WORK | 3d | 2027-08-10 | 2027-08-12 | 1718SS |  | RGA -FINISHING | 7830182 |
| 1727 | 40200.40300.41000.56100.59900.172400.971700 | LIFT DADO WORK | 10d | 2027-11-21 | 2027-11-30 | 1719SS |  | RGA -FINISHING | 7830192 |
| 1728 | 40200.40300.41000.56100.59900.172400.971800 | LOBBY FLOORING WORK | 10d | 2027-12-01 | 2027-12-10 | 1727 |  | RGA -FINISHING | 7830202 |
| 1729 | 40200.40300.41000.56100.59900.172400.971900 | ELECTRICAL WIRING & SWITCH PLATE FIXING WORK | 6d | 2027-12-11 | 2027-12-16 | 1728 |  | RGA -FINISHING | 7830212 |
| 1730 | 40200.40300.41000.56100.59900.172400.972000 | False ceiling & 1ST COAT PAINTING | 15d | 2027-12-17 | 2027-12-31 | 1729 |  | RGA -FINISHING | 7830222 |
| 1731 | 40200.40300.41000.56100.59900.172400.972100 | CLEANING | 3d | 2028-01-01 | 2028-01-03 | 1730 |  | RGA -FINISHING | 7830232 |
| 1732 | 40200.40300.41000.56100.59900.172500 | **5th FLOOR** | 488d | 2026-08-21 | 2027-12-21 |  | start no earlier than 2026-08-21 | RGA -FINISHING | 7805642 |
| 1733 | 40200.40300.41000.56100.59900.172500.972200 | FIRE FIGHTING | 10d | 2026-08-21 | 2026-08-30 | 1421FS-5d |  | RGA -FINISHING | 7830242 |
| 1734 | 40200.40300.41000.56100.59900.172500.972300 | LIFT BLOCK WORK | 3d | 2027-08-10 | 2027-08-12 | 1726SS |  | RGA -FINISHING | 7830252 |
| 1735 | 40200.40300.41000.56100.59900.172500.972400 | LIFT DADO WORK | 3d | 2027-11-21 | 2027-11-23 | 1727SS |  | RGA -FINISHING | 7830262 |
| 1736 | 40200.40300.41000.56100.59900.172500.972500 | LOBBY FLOORING WORK | 4d | 2027-11-24 | 2027-11-27 | 1735 |  | RGA -FINISHING | 7830272 |
| 1737 | 40200.40300.41000.56100.59900.172500.972600 | ELECTRICAL WIRING & SWITCH PLATE FIXING WORK | 6d | 2027-11-28 | 2027-12-03 | 1736 |  | RGA -FINISHING | 7830282 |
| 1738 | 40200.40300.41000.56100.59900.172500.972700 | False ceiling & 1ST COAT PAINTING | 15d | 2027-12-04 | 2027-12-18 | 1737 |  | RGA -FINISHING | 7830292 |
| 1739 | 40200.40300.41000.56100.59900.172500.972800 | CLEANING | 3d | 2027-12-19 | 2027-12-21 | 1738 |  | RGA -FINISHING | 7830302 |

Notes:
- 1717: Assumed
- 1725: Assumed
- 1733: Assumed

| ID | WBS | Task | Duration | Start | Finish | Predecessors | Constraint | Calendar | Unique_Task_ID |
| --- | --- | --- | --- | --- | --- | --- | --- | --- | --- |
| 1740 | 40200.40300.41000.56100.59900.172600 | **6th FLOOR** | 463d | 2026-09-15 | 2027-12-21 |  | start no earlier than 2026-09-15 | RGA -FINISHING | 7805632 |
| 1741 | 40200.40300.41000.56100.59900.172600.972900 | FIRE FIGHTING | 10d | 2026-09-15 | 2026-09-24 | 1434FS-5d |  | RGA -FINISHING | 7830312 |
| 1742 | 40200.40300.41000.56100.59900.172600.973000 | LIFT BLOCK WORK | 3d | 2027-08-10 | 2027-08-12 | 1734SS |  | RGA -FINISHING | 7830322 |
| 1743 | 40200.40300.41000.56100.59900.172600.973100 | LIFT DADO WORK | 3d | 2027-11-21 | 2027-11-23 | 1735SS |  | RGA -FINISHING | 7830332 |
| 1744 | 40200.40300.41000.56100.59900.172600.973200 | LOBBY FLOORING WORK | 4d | 2027-11-24 | 2027-11-27 | 1743 |  | RGA -FINISHING | 7830342 |
| 1745 | 40200.40300.41000.56100.59900.172600.973300 | ELECTRICAL WIRING & SWITCH PLATE FIXING WORK | 6d | 2027-11-28 | 2027-12-03 | 1744 |  | RGA -FINISHING | 7830352 |
| 1746 | 40200.40300.41000.56100.59900.172600.973400 | False ceiling & 1ST COAT PAINTING | 15d | 2027-12-04 | 2027-12-18 | 1745 |  | RGA -FINISHING | 7830362 |
| 1747 | 40200.40300.41000.56100.59900.172600.973500 | CLEANING | 3d | 2027-12-19 | 2027-12-21 | 1746 |  | RGA -FINISHING | 7830372 |
| 1748 | 40200.40300.41000.56100.59900.172700 | **7th FLOOR** | 449d | 2026-10-02 | 2027-12-24 |  | start no earlier than 2026-10-02 | RGA -FINISHING | 7805622 |
| 1749 | 40200.40300.41000.56100.59900.172700.973600 | FIRE FIGHTING | 10d | 2026-10-02 | 2026-10-11 | 1447FS-5d |  | RGA -FINISHING | 7830382 |
| 1750 | 40200.40300.41000.56100.59900.172700.973700 | LIFT BLOCK WORK | 3d | 2027-08-13 | 2027-08-15 | 1742 |  | RGA -FINISHING | 7830392 |
| 1751 | 40200.40300.41000.56100.59900.172700.973800 | LIFT DADO WORK | 3d | 2027-11-24 | 2027-11-26 | 1743 |  | RGA -FINISHING | 7830402 |
| 1752 | 40200.40300.41000.56100.59900.172700.973900 | LOBBY FLOORING WORK | 4d | 2027-11-27 | 2027-11-30 | 1751 |  | RGA -FINISHING | 7830412 |
| 1753 | 40200.40300.41000.56100.59900.172700.974000 | ELECTRICAL WIRING & SWITCH PLATE FIXING WORK | 6d | 2027-12-01 | 2027-12-06 | 1752 |  | RGA -FINISHING | 7830422 |
| 1754 | 40200.40300.41000.56100.59900.172700.974100 | False ceiling & 1ST COAT PAINTING | 15d | 2027-12-07 | 2027-12-21 | 1753 |  | RGA -FINISHING | 7830432 |
| 1755 | 40200.40300.41000.56100.59900.172700.974200 | CLEANING | 3d | 2027-12-22 | 2027-12-24 | 1754 |  | RGA -FINISHING | 7830442 |
| 1756 | 40200.40300.41000.56100.59900.172800 | **8th FLOOR** | 431d | 2026-10-20 | 2027-12-24 |  | start no earlier than 2026-10-20 | RGA -FINISHING | 7805612 |
| 1757 | 40200.40300.41000.56100.59900.172800.974300 | FIRE FIGHTING | 10d | 2026-10-20 | 2026-10-29 | 1460FS-5d |  | RGA -FINISHING | 7830452 |
| 1758 | 40200.40300.41000.56100.59900.172800.974400 | LIFT BLOCK WORK | 3d | 2027-08-13 | 2027-08-15 | 1750SS |  | RGA -FINISHING | 7830462 |
| 1759 | 40200.40300.41000.56100.59900.172800.974500 | LIFT DADO WORK | 3d | 2027-11-24 | 2027-11-26 | 1751SS |  | RGA -FINISHING | 7830472 |
| 1760 | 40200.40300.41000.56100.59900.172800.974600 | LOBBY FLOORING WORK | 4d | 2027-11-27 | 2027-11-30 | 1759 |  | RGA -FINISHING | 7830482 |
| 1761 | 40200.40300.41000.56100.59900.172800.974700 | ELECTRICAL WIRING & SWITCH PLATE FIXING WORK | 6d | 2027-12-01 | 2027-12-06 | 1760 |  | RGA -FINISHING | 7830492 |
| 1762 | 40200.40300.41000.56100.59900.172800.974800 | False ceiling & 1ST COAT PAINTING | 15d | 2027-12-07 | 2027-12-21 | 1761 |  | RGA -FINISHING | 7830502 |
| 1763 | 40200.40300.41000.56100.59900.172800.974900 | CLEANING | 3d | 2027-12-22 | 2027-12-24 | 1762 |  | RGA -FINISHING | 7830512 |

Notes:
- 1741: Assumed
- 1749: Assumed
- 1757: Assumed

| ID | WBS | Task | Duration | Start | Finish | Predecessors | Constraint | Calendar | Unique_Task_ID |
| --- | --- | --- | --- | --- | --- | --- | --- | --- | --- |
| 1764 | 40200.40300.41000.56100.59900.172900 | **9th FLOOR** | 414d | 2026-11-06 | 2027-12-24 |  | start no earlier than 2026-11-06 | RGA -FINISHING | 7805602 |
| 1765 | 40200.40300.41000.56100.59900.172900.975000 | FIRE FIGHTING | 10d | 2026-11-06 | 2026-11-15 | 1473FS-5d |  | RGA -FINISHING | 7830522 |
| 1766 | 40200.40300.41000.56100.59900.172900.975100 | LIFT BLOCK WORK | 3d | 2027-08-13 | 2027-08-15 | 1758SS |  | RGA -FINISHING | 7830532 |
| 1767 | 40200.40300.41000.56100.59900.172900.975200 | LIFT DADO WORK | 3d | 2027-11-24 | 2027-11-26 | 1759SS |  | RGA -FINISHING | 7830542 |
| 1768 | 40200.40300.41000.56100.59900.172900.975300 | LOBBY FLOORING WORK | 4d | 2027-11-27 | 2027-11-30 | 1767 |  | RGA -FINISHING | 7830552 |
| 1769 | 40200.40300.41000.56100.59900.172900.975400 | ELECTRICAL WIRING & SWITCH PLATE FIXING WORK | 6d | 2027-12-01 | 2027-12-06 | 1768 |  | RGA -FINISHING | 7830562 |
| 1770 | 40200.40300.41000.56100.59900.172900.975500 | False ceiling & 1ST COAT PAINTING | 15d | 2027-12-07 | 2027-12-21 | 1769 |  | RGA -FINISHING | 7830572 |
| 1771 | 40200.40300.41000.56100.59900.172900.975600 | CLEANING | 3d | 2027-12-22 | 2027-12-24 | 1770 |  | RGA -FINISHING | 7830582 |
| 1772 | 40200.40300.41000.56100.59900.173000 | **10th FLOOR** | 397d | 2026-11-23 | 2027-12-24 |  | start no earlier than 2026-11-23 | RGA -FINISHING | 7805592 |
| 1773 | 40200.40300.41000.56100.59900.173000.975700 | FIRE FIGHTING | 10d | 2026-11-23 | 2026-12-02 | 1486FS-5d |  | RGA -FINISHING | 7830592 |
| 1774 | 40200.40300.41000.56100.59900.173000.975800 | LIFT BLOCK WORK | 3d | 2027-08-13 | 2027-08-15 | 1766SS |  | RGA -FINISHING | 7830602 |
| 1775 | 40200.40300.41000.56100.59900.173000.975900 | LIFT DADO WORK | 3d | 2027-11-24 | 2027-11-26 | 1767SS |  | RGA -FINISHING | 7830612 |
| 1776 | 40200.40300.41000.56100.59900.173000.976000 | LOBBY FLOORING WORK | 4d | 2027-11-27 | 2027-11-30 | 1775 |  | RGA -FINISHING | 7830622 |
| 1777 | 40200.40300.41000.56100.59900.173000.976100 | ELECTRICAL WIRING & SWITCH PLATE FIXING WORK | 6d | 2027-12-01 | 2027-12-06 | 1776 |  | RGA -FINISHING | 7830632 |
| 1778 | 40200.40300.41000.56100.59900.173000.976200 | False ceiling & 1ST COAT PAINTING | 15d | 2027-12-07 | 2027-12-21 | 1777 |  | RGA -FINISHING | 7830642 |
| 1779 | 40200.40300.41000.56100.59900.173000.976300 | CLEANING | 3d | 2027-12-22 | 2027-12-24 | 1778 |  | RGA -FINISHING | 7830652 |
| 1780 | 40200.40300.41000.56100.59900.173100 | **11th FLOOR** | 366.5d | 2026-12-23 | 2027-12-24 |  | start no earlier than 2026-12-23 | RGA -FINISHING | 7805582 |
| 1781 | 40200.40300.41000.56100.59900.173100.976400 | FIRE FIGHTING | 10d | 2026-12-23 | 2027-01-02 | 1499FS-5d |  | RGA -FINISHING | 7830662 |
| 1782 | 40200.40300.41000.56100.59900.173100.976500 | LIFT BLOCK WORK | 3d | 2027-08-13 | 2027-08-15 | 1774SS |  | RGA -FINISHING | 7830672 |
| 1783 | 40200.40300.41000.56100.59900.173100.976600 | LIFT DADO WORK | 3d | 2027-11-24 | 2027-11-26 | 1775SS |  | RGA -FINISHING | 7830682 |
| 1784 | 40200.40300.41000.56100.59900.173100.976700 | LOBBY FLOORING WORK | 4d | 2027-11-27 | 2027-11-30 | 1783 |  | RGA -FINISHING | 7830692 |
| 1785 | 40200.40300.41000.56100.59900.173100.976800 | ELECTRICAL WIRING & SWITCH PLATE FIXING WORK | 6d | 2027-12-01 | 2027-12-06 | 1784 |  | RGA -FINISHING | 7830702 |
| 1786 | 40200.40300.41000.56100.59900.173100.976900 | False ceiling & 1ST COAT PAINTING | 15d | 2027-12-07 | 2027-12-21 | 1785 |  | RGA -FINISHING | 7830712 |
| 1787 | 40200.40300.41000.56100.59900.173100.977000 | CLEANING | 3d | 2027-12-22 | 2027-12-24 | 1786 |  | RGA -FINISHING | 7830722 |

Notes:
- 1765: Assumed
- 1773: Assumed
- 1781: Assumed

| ID | WBS | Task | Duration | Start | Finish | Predecessors | Constraint | Calendar | Unique_Task_ID |
| --- | --- | --- | --- | --- | --- | --- | --- | --- | --- |
| 1788 | 40200.40300.41000.56100.59900.173200 | **12th FLOOR** | 351d | 2027-01-11 | 2027-12-27 |  | start no earlier than 2027-01-11 | RGA -FINISHING | 7805572 |
| 1789 | 40200.40300.41000.56100.59900.173200.977100 | FIRE FIGHTING | 10d | 2027-01-11 | 2027-01-20 | 1512FS-5d |  | RGA -FINISHING | 7830732 |
| 1790 | 40200.40300.41000.56100.59900.173200.977200 | LIFT BLOCK WORK | 3d | 2027-08-16 | 2027-08-18 | 1782 |  | RGA -FINISHING | 7830742 |
| 1791 | 40200.40300.41000.56100.59900.173200.977300 | LIFT DADO WORK | 3d | 2027-11-27 | 2027-11-29 | 1783 |  | RGA -FINISHING | 7830752 |
| 1792 | 40200.40300.41000.56100.59900.173200.977400 | LOBBY FLOORING WORK | 4d | 2027-11-30 | 2027-12-03 | 1791 |  | RGA -FINISHING | 7830762 |
| 1793 | 40200.40300.41000.56100.59900.173200.977500 | ELECTRICAL WIRING & SWITCH PLATE FIXING WORK | 6d | 2027-12-04 | 2027-12-09 | 1792 |  | RGA -FINISHING | 7830772 |
| 1794 | 40200.40300.41000.56100.59900.173200.977600 | False ceiling & 1ST COAT PAINTING | 15d | 2027-12-10 | 2027-12-24 | 1793 |  | RGA -FINISHING | 7830782 |
| 1795 | 40200.40300.41000.56100.59900.173200.977700 | CLEANING | 3d | 2027-12-25 | 2027-12-27 | 1794 |  | RGA -FINISHING | 7830792 |
| 1796 | 40200.40300.41000.56100.59900.173300 | **13th FLOOR** | 332d | 2027-01-30 | 2027-12-27 |  | start no earlier than 2027-01-30 | RGA -FINISHING | 7805562 |
| 1797 | 40200.40300.41000.56100.59900.173300.977800 | FIRE FIGHTING | 10d | 2027-01-30 | 2027-02-08 | 1525FS-5d |  | RGA -FINISHING | 7830802 |
| 1798 | 40200.40300.41000.56100.59900.173300.977900 | LIFT BLOCK WORK | 3d | 2027-08-16 | 2027-08-18 | 1790SS |  | RGA -FINISHING | 7830812 |
| 1799 | 40200.40300.41000.56100.59900.173300.978000 | LIFT DADO WORK | 3d | 2027-11-27 | 2027-11-29 | 1791SS |  | RGA -FINISHING | 7830822 |
| 1800 | 40200.40300.41000.56100.59900.173300.978100 | LOBBY FLOORING WORK | 4d | 2027-11-30 | 2027-12-03 | 1799 |  | RGA -FINISHING | 7830832 |
| 1801 | 40200.40300.41000.56100.59900.173300.978200 | ELECTRICAL WIRING & SWITCH PLATE FIXING WORK | 6d | 2027-12-04 | 2027-12-09 | 1800 |  | RGA -FINISHING | 7830842 |
| 1802 | 40200.40300.41000.56100.59900.173300.978300 | False ceiling & 1ST COAT PAINTING | 15d | 2027-12-10 | 2027-12-24 | 1801 |  | RGA -FINISHING | 7830852 |
| 1803 | 40200.40300.41000.56100.59900.173300.978400 | CLEANING | 3d | 2027-12-25 | 2027-12-27 | 1802 |  | RGA -FINISHING | 7830862 |
| 1804 | 40200.40300.41000.56100.59900.173400 | **14th FLOOR** | 315d | 2027-02-16 | 2027-12-27 |  | start no earlier than 2027-02-16 | RGA -FINISHING | 7805552 |
| 1805 | 40200.40300.41000.56100.59900.173400.978500 | FIRE FIGHTING | 10d | 2027-02-16 | 2027-02-25 | 1538FS-5d |  | RGA -FINISHING | 7830872 |
| 1806 | 40200.40300.41000.56100.59900.173400.978600 | LIFT BLOCK WORK | 3d | 2027-08-16 | 2027-08-18 | 1798SS |  | RGA -FINISHING | 7830882 |
| 1807 | 40200.40300.41000.56100.59900.173400.978700 | LIFT DADO WORK | 3d | 2027-11-27 | 2027-11-29 | 1799SS |  | RGA -FINISHING | 7830892 |
| 1808 | 40200.40300.41000.56100.59900.173400.978800 | LOBBY FLOORING WORK | 4d | 2027-11-30 | 2027-12-03 | 1807 |  | RGA -FINISHING | 7830902 |
| 1809 | 40200.40300.41000.56100.59900.173400.978900 | ELECTRICAL WIRING & SWITCH PLATE FIXING WORK | 6d | 2027-12-04 | 2027-12-09 | 1808 |  | RGA -FINISHING | 7830912 |
| 1810 | 40200.40300.41000.56100.59900.173400.979000 | False ceiling & 1ST COAT PAINTING | 15d | 2027-12-10 | 2027-12-24 | 1809 |  | RGA -FINISHING | 7830922 |
| 1811 | 40200.40300.41000.56100.59900.173400.979100 | CLEANING | 3d | 2027-12-25 | 2027-12-27 | 1810 |  | RGA -FINISHING | 7830932 |

Notes:
- 1789: Assumed
- 1797: Assumed
- 1805: Assumed

| ID | WBS | Task | Duration | Start | Finish | Predecessors | Constraint | Calendar | Unique_Task_ID |
| --- | --- | --- | --- | --- | --- | --- | --- | --- | --- |
| 1812 | 40200.40300.41000.56100.59900.173500 | **15th FLOOR** | 305d | 2027-02-26 | 2027-12-27 |  | start no earlier than 2027-02-26 | RGA -FINISHING | 7805542 |
| 1813 | 40200.40300.41000.56100.59900.173500.979200 | FIRE FIGHTING | 10d | 2027-02-26 | 2027-03-07 | 1551FS-5d |  | RGA -FINISHING | 7830942 |
| 1814 | 40200.40300.41000.56100.59900.173500.979300 | LIFT BLOCK WORK | 3d | 2027-08-16 | 2027-08-18 | 1806SS |  | RGA -FINISHING | 7830952 |
| 1815 | 40200.40300.41000.56100.59900.173500.979400 | LIFT DADO WORK | 3d | 2027-11-27 | 2027-11-29 | 1807SS |  | RGA -FINISHING | 7830962 |
| 1816 | 40200.40300.41000.56100.59900.173500.979500 | LOBBY FLOORING WORK | 4d | 2027-11-30 | 2027-12-03 | 1815 |  | RGA -FINISHING | 7830972 |
| 1817 | 40200.40300.41000.56100.59900.173500.979600 | ELECTRICAL WIRING & SWITCH PLATE FIXING WORK | 6d | 2027-12-04 | 2027-12-09 | 1816 |  | RGA -FINISHING | 7830982 |
| 1818 | 40200.40300.41000.56100.59900.173500.979700 | False ceiling & 1ST COAT PAINTING | 15d | 2027-12-10 | 2027-12-24 | 1817 |  | RGA -FINISHING | 7830992 |
| 1819 | 40200.40300.41000.56100.59900.173500.979800 | CLEANING | 3d | 2027-12-25 | 2027-12-27 | 1818 |  | RGA -FINISHING | 7831002 |
| 1820 | 40200.40300.41000.56100.59900.173600 | **16th FLOOR** | 284d | 2027-03-22 | 2027-12-30 |  | start no earlier than 2027-03-22 | RGA -FINISHING | 7805532 |
| 1821 | 40200.40300.41000.56100.59900.173600.979900 | FIRE FIGHTING | 10d | 2027-03-22 | 2027-03-31 | 1564FS-5d |  | RGA -FINISHING | 7831012 |
| 1822 | 40200.40300.41000.56100.59900.173600.980000 | LIFT BLOCK WORK | 3d | 2027-08-19 | 2027-08-21 | 1814 |  | RGA -FINISHING | 7831022 |
| 1823 | 40200.40300.41000.56100.59900.173600.980100 | LIFT DADO WORK | 3d | 2027-11-30 | 2027-12-02 | 1815 |  | RGA -FINISHING | 7831032 |
| 1824 | 40200.40300.41000.56100.59900.173600.980200 | LOBBY FLOORING WORK | 4d | 2027-12-03 | 2027-12-06 | 1823 |  | RGA -FINISHING | 7831042 |
| 1825 | 40200.40300.41000.56100.59900.173600.980300 | ELECTRICAL WIRING & SWITCH PLATE FIXING WORK | 6d | 2027-12-07 | 2027-12-12 | 1824 |  | RGA -FINISHING | 7831052 |
| 1826 | 40200.40300.41000.56100.59900.173600.980400 | False ceiling & 1ST COAT PAINTING | 15d | 2027-12-13 | 2027-12-27 | 1825 |  | RGA -FINISHING | 7831062 |
| 1827 | 40200.40300.41000.56100.59900.173600.980500 | CLEANING | 3d | 2027-12-28 | 2027-12-30 | 1826 |  | RGA -FINISHING | 7831072 |
| 1828 | 40200.40300.41000.56100.59900.173700 | **17th FLOOR** | 267d | 2027-04-08 | 2027-12-30 |  | start no earlier than 2027-04-08 | RGA -FINISHING | 7805522 |
| 1829 | 40200.40300.41000.56100.59900.173700.980600 | FIRE FIGHTING | 10d | 2027-04-08 | 2027-04-17 | 1577FS-5d |  | RGA -FINISHING | 7831082 |
| 1830 | 40200.40300.41000.56100.59900.173700.980700 | LIFT BLOCK WORK | 3d | 2027-08-19 | 2027-08-21 | 1822SS |  | RGA -FINISHING | 7831092 |
| 1831 | 40200.40300.41000.56100.59900.173700.980800 | LIFT DADO WORK | 3d | 2027-11-30 | 2027-12-02 | 1823SS |  | RGA -FINISHING | 7831102 |
| 1832 | 40200.40300.41000.56100.59900.173700.980900 | LOBBY FLOORING WORK | 4d | 2027-12-03 | 2027-12-06 | 1831 |  | RGA -FINISHING | 7831112 |
| 1833 | 40200.40300.41000.56100.59900.173700.981000 | ELECTRICAL WIRING & SWITCH PLATE FIXING WORK | 6d | 2027-12-07 | 2027-12-12 | 1832 |  | RGA -FINISHING | 7831122 |
| 1834 | 40200.40300.41000.56100.59900.173700.981100 | False ceiling & 1ST COAT PAINTING | 15d | 2027-12-13 | 2027-12-27 | 1833 |  | RGA -FINISHING | 7831132 |
| 1835 | 40200.40300.41000.56100.59900.173700.981200 | CLEANING | 3d | 2027-12-28 | 2027-12-30 | 1834 |  | RGA -FINISHING | 7831142 |

Notes:
- 1813: Assumed
- 1821: Assumed
- 1829: Assumed

| ID | WBS | Task | Duration | Start | Finish | Predecessors | Constraint | Calendar | Unique_Task_ID |
| --- | --- | --- | --- | --- | --- | --- | --- | --- | --- |
| 1836 | 40200.40300.41000.56100.59900.173800 | **18th FLOOR** | 250d | 2027-04-25 | 2027-12-30 |  | start no earlier than 2027-04-25 | RGA -FINISHING | 7805512 |
| 1837 | 40200.40300.41000.56100.59900.173800.981300 | FIRE FIGHTING | 10d | 2027-04-25 | 2027-05-04 | 1590FS-5d |  | RGA -FINISHING | 7831152 |
| 1838 | 40200.40300.41000.56100.59900.173800.981400 | LIFT BLOCK WORK | 3d | 2027-08-19 | 2027-08-21 | 1830SS |  | RGA -FINISHING | 7831162 |
| 1839 | 40200.40300.41000.56100.59900.173800.981500 | LIFT DADO WORK | 3d | 2027-11-30 | 2027-12-02 | 1831SS |  | RGA -FINISHING | 7831172 |
| 1840 | 40200.40300.41000.56100.59900.173800.981600 | LOBBY FLOORING WORK | 4d | 2027-12-03 | 2027-12-06 | 1839 |  | RGA -FINISHING | 7831182 |
| 1841 | 40200.40300.41000.56100.59900.173800.981700 | ELECTRICAL WIRING & SWITCH PLATE FIXING WORK | 6d | 2027-12-07 | 2027-12-12 | 1840 |  | RGA -FINISHING | 7831192 |
| 1842 | 40200.40300.41000.56100.59900.173800.981800 | False ceiling & 1ST COAT PAINTING | 15d | 2027-12-13 | 2027-12-27 | 1841 |  | RGA -FINISHING | 7831202 |
| 1843 | 40200.40300.41000.56100.59900.173800.981900 | CLEANING | 3d | 2027-12-28 | 2027-12-30 | 1842 |  | RGA -FINISHING | 7831212 |
| 1844 | 40200.40300.41000.56100.59900.173900 | **19th FLOOR** | 233d | 2027-05-12 | 2027-12-30 |  | start no earlier than 2027-05-12 | RGA -FINISHING | 7805502 |
| 1845 | 40200.40300.41000.56100.59900.173900.982000 | FIRE FIGHTING | 10d | 2027-05-12 | 2027-05-21 | 1603FS-5d |  | RGA -FINISHING | 7831222 |
| 1846 | 40200.40300.41000.56100.59900.173900.982100 | LIFT BLOCK WORK | 3d | 2027-08-19 | 2027-08-21 | 1838SS |  | RGA -FINISHING | 7831232 |
| 1847 | 40200.40300.41000.56100.59900.173900.982200 | LIFT DADO WORK | 3d | 2027-11-30 | 2027-12-02 | 1839SS |  | RGA -FINISHING | 7831242 |
| 1848 | 40200.40300.41000.56100.59900.173900.982300 | LOBBY FLOORING WORK | 4d | 2027-12-03 | 2027-12-06 | 1847 |  | RGA -FINISHING | 7831252 |
| 1849 | 40200.40300.41000.56100.59900.173900.982400 | ELECTRICAL WIRING & SWITCH PLATE FIXING WORK | 6d | 2027-12-07 | 2027-12-12 | 1848 |  | RGA -FINISHING | 7831262 |
| 1850 | 40200.40300.41000.56100.59900.173900.982500 | False ceiling & 1ST COAT PAINTING | 15d | 2027-12-13 | 2027-12-27 | 1849 |  | RGA -FINISHING | 7831272 |
| 1851 | 40200.40300.41000.56100.59900.173900.982600 | CLEANING | 3d | 2027-12-28 | 2027-12-30 | 1850 |  | RGA -FINISHING | 7831282 |
| 1852 | 40200.40300.41000.56100.59900.174000 | **20th FLOOR** | 216d | 2027-05-29 | 2027-12-30 |  | start no earlier than 2027-05-29 | RGA -FINISHING | 7805492 |
| 1853 | 40200.40300.41000.56100.59900.174000.982700 | FIRE FIGHTING | 10d | 2027-05-29 | 2027-06-07 | 1616FS-5d |  | RGA -FINISHING | 7831292 |
| 1854 | 40200.40300.41000.56100.59900.174000.982800 | LIFT BLOCK WORK | 3d | 2027-08-22 | 2027-08-24 | 1846 |  | RGA -FINISHING | 7831302 |
| 1855 | 40200.40300.41000.56100.59900.174000.982900 | LIFT DADO WORK | 3d | 2027-11-30 | 2027-12-02 | 1847SS |  | RGA -FINISHING | 7831312 |
| 1856 | 40200.40300.41000.56100.59900.174000.983000 | LOBBY FLOORING WORK | 4d | 2027-12-03 | 2027-12-06 | 1855 |  | RGA -FINISHING | 7831322 |
| 1857 | 40200.40300.41000.56100.59900.174000.983100 | ELECTRICAL WIRING & SWITCH PLATE FIXING WORK | 6d | 2027-12-07 | 2027-12-12 | 1856 |  | RGA -FINISHING | 7831332 |
| 1858 | 40200.40300.41000.56100.59900.174000.983200 | False ceiling & 1ST COAT PAINTING | 15d | 2027-12-13 | 2027-12-27 | 1857 |  | RGA -FINISHING | 7831342 |
| 1859 | 40200.40300.41000.56100.59900.174000.983300 | CLEANING | 3d | 2027-12-28 | 2027-12-30 | 1858 |  | RGA -FINISHING | 7831352 |

Notes:
- 1837: Assumed
- 1845: Assumed
- 1853: Assumed

| ID | WBS | Task | Duration | Start | Finish | Predecessors | Constraint | Calendar | Unique_Task_ID |
| --- | --- | --- | --- | --- | --- | --- | --- | --- | --- |
| 1860 | 40200.40300.41000.56100.59900.174100 | **21th FLOOR** | 199d | 2027-06-15 | 2027-12-30 |  | start no earlier than 2027-06-15 | RGA -FINISHING | 7805482 |
| 1861 | 40200.40300.41000.56100.59900.174100.983400 | FIRE FIGHTING | 10d | 2027-06-15 | 2027-06-24 | 1629FS-5d |  | RGA -FINISHING | 7831362 |
| 1862 | 40200.40300.41000.56100.59900.174100.983500 | LIFT BLOCK WORK | 3d | 2027-08-22 | 2027-08-24 | 1854SS |  | RGA -FINISHING | 7831372 |
| 1863 | 40200.40300.41000.56100.59900.174100.983600 | LIFT DADO WORK | 3d | 2027-11-30 | 2027-12-02 | 1855SS |  | RGA -FINISHING | 7831382 |
| 1864 | 40200.40300.41000.56100.59900.174100.983700 | LOBBY FLOORING WORK | 4d | 2027-12-03 | 2027-12-06 | 1863 |  | RGA -FINISHING | 7831392 |
| 1865 | 40200.40300.41000.56100.59900.174100.983800 | ELECTRICAL WIRING & SWITCH PLATE FIXING WORK | 6d | 2027-12-07 | 2027-12-12 | 1864 |  | RGA -FINISHING | 7831402 |
| 1866 | 40200.40300.41000.56100.59900.174100.983900 | False ceiling & 1ST COAT PAINTING | 15d | 2027-12-13 | 2027-12-27 | 1865 |  | RGA -FINISHING | 7831412 |
| 1867 | 40200.40300.41000.56100.59900.174100.984000 | CLEANING | 3d | 2027-12-28 | 2027-12-30 | 1866 |  | RGA -FINISHING | 7831422 |
| 1868 | 40200.40300.41000.56100.59900.174200 | **22th FLOOR** | 182d | 2027-07-02 | 2027-12-30 |  | start no earlier than 2027-07-02 | RGA -FINISHING | 7805472 |
| 1869 | 40200.40300.41000.56100.59900.174200.984100 | FIRE FIGHTING | 10d | 2027-07-02 | 2027-07-11 | 1642FS-5d |  | RGA -FINISHING | 7831432 |
| 1870 | 40200.40300.41000.56100.59900.174200.984200 | LIFT BLOCK WORK | 3d | 2027-08-22 | 2027-08-24 | 1862SS |  | RGA -FINISHING | 7831442 |
| 1871 | 40200.40300.41000.56100.59900.174200.984300 | LIFT DADO WORK | 3d | 2027-11-30 | 2027-12-02 | 1863SS |  | RGA -FINISHING | 7831452 |
| 1872 | 40200.40300.41000.56100.59900.174200.984400 | LOBBY FLOORING WORK | 4d | 2027-12-03 | 2027-12-06 | 1871 |  | RGA -FINISHING | 7831462 |
| 1873 | 40200.40300.41000.56100.59900.174200.984500 | ELECTRICAL WIRING & SWITCH PLATE FIXING WORK | 6d | 2027-12-07 | 2027-12-12 | 1872 |  | RGA -FINISHING | 7831472 |
| 1874 | 40200.40300.41000.56100.59900.174200.984600 | False ceiling & 1ST COAT PAINTING | 15d | 2027-12-13 | 2027-12-27 | 1873 |  | RGA -FINISHING | 7831482 |
| 1875 | 40200.40300.41000.56100.59900.174200.984700 | CLEANING | 3d | 2027-12-28 | 2027-12-30 | 1874 |  | RGA -FINISHING | 7831492 |
| 1876 | 40200.40300.41000.56100.59900.174300 | **23th FLOOR** | 158d | 2027-07-26 | 2027-12-30 |  | start no earlier than 2027-07-26 | RGA -FINISHING | 7805462 |
| 1877 | 40200.40300.41000.56100.59900.174300.984800 | FIRE FIGHTING | 10d | 2027-07-26 | 2027-08-04 | 1655FS-5d |  | RGA -FINISHING | 7831502 |
| 1878 | 40200.40300.41000.56100.59900.174300.984900 | LIFT BLOCK WORK | 3d | 2027-08-22 | 2027-08-24 | 1870SS |  | RGA -FINISHING | 7831512 |
| 1879 | 40200.40300.41000.56100.59900.174300.985000 | LIFT DADO WORK | 3d | 2027-11-30 | 2027-12-02 | 1871SS |  | RGA -FINISHING | 7831522 |
| 1880 | 40200.40300.41000.56100.59900.174300.985100 | LOBBY FLOORING WORK | 4d | 2027-12-03 | 2027-12-06 | 1879 |  | RGA -FINISHING | 7831532 |
| 1881 | 40200.40300.41000.56100.59900.174300.985200 | ELECTRICAL WIRING & SWITCH PLATE FIXING WORK | 6d | 2027-12-07 | 2027-12-12 | 1880 |  | RGA -FINISHING | 7831542 |
| 1882 | 40200.40300.41000.56100.59900.174300.985300 | False ceiling & 1ST COAT PAINTING | 15d | 2027-12-13 | 2027-12-27 | 1881 |  | RGA -FINISHING | 7831552 |
| 1883 | 40200.40300.41000.56100.59900.174300.985400 | CLEANING | 3d | 2027-12-28 | 2027-12-30 | 1882 |  | RGA -FINISHING | 7831562 |

Notes:
- 1861: Assumed
- 1869: Assumed
- 1877: Assumed

| ID | WBS | Task | Duration | Start | Finish | Predecessors | Constraint | Calendar | Unique_Task_ID |
| --- | --- | --- | --- | --- | --- | --- | --- | --- | --- |
| 1884 | 40200.40300.41000.56100.59900.174400 | **24th FLOOR** | 134d | 2027-08-19 | 2027-12-30 |  | start no earlier than 2027-08-19 | RGA -FINISHING | 7805452 |
| 1885 | 40200.40300.41000.56100.59900.174400.985500 | FIRE FIGHTING | 10d | 2027-08-19 | 2027-08-28 | 1668FS-5d |  | RGA -FINISHING | 7831572 |
| 1886 | 40200.40300.41000.56100.59900.174400.985600 | LIFT BLOCK WORK | 3d | 2027-08-22 | 2027-08-24 | 1878SS |  | RGA -FINISHING | 7831582 |
| 1887 | 40200.40300.41000.56100.59900.174400.985700 | LIFT DADO WORK | 3d | 2027-11-30 | 2027-12-02 | 1879SS |  | RGA -FINISHING | 7831592 |
| 1888 | 40200.40300.41000.56100.59900.174400.985800 | LOBBY FLOORING WORK | 4d | 2027-12-03 | 2027-12-06 | 1887 |  | RGA -FINISHING | 7831602 |
| 1889 | 40200.40300.41000.56100.59900.174400.985900 | ELECTRICAL WIRING & SWITCH PLATE FIXING WORK | 6d | 2027-12-07 | 2027-12-12 | 1888 |  | RGA -FINISHING | 7831612 |
| 1890 | 40200.40300.41000.56100.59900.174400.986000 | False ceiling & 1ST COAT PAINTING | 15d | 2027-12-13 | 2027-12-27 | 1889 |  | RGA -FINISHING | 7831622 |
| 1891 | 40200.40300.41000.56100.59900.174400.986100 | CLEANING | 3d | 2027-12-28 | 2027-12-30 | 1890 |  | RGA -FINISHING | 7831632 |
| 1892 | 40200.40300.41000.56100.59900.174500 | **25th FLOOR** | 131d | 2027-08-25 | 2028-01-02 |  | start no earlier than 2027-08-25 | RGA -FINISHING | 7805442 |
| 1893 | 40200.40300.41000.56100.59900.174500.986200 | FIRE FIGHTING | 10d | 2027-08-28 | 2027-09-06 | 1681FS-5d |  | RGA -FINISHING | 7831642 |
| 1894 | 40200.40300.41000.56100.59900.174500.986300 | LIFT BLOCK WORK | 3d | 2027-08-25 | 2027-08-27 | 1886 |  | RGA -FINISHING | 7831652 |
| 1895 | 40200.40300.41000.56100.59900.174500.986400 | LIFT DADO WORK | 3d | 2027-12-03 | 2027-12-05 | 1887 |  | RGA -FINISHING | 7831662 |
| 1896 | 40200.40300.41000.56100.59900.174500.986500 | LOBBY FLOORING WORK | 4d | 2027-12-06 | 2027-12-09 | 1895 |  | RGA -FINISHING | 7831672 |
| 1897 | 40200.40300.41000.56100.59900.174500.986600 | ELECTRICAL WIRING & SWITCH PLATE FIXING WORK | 6d | 2027-12-10 | 2027-12-15 | 1896 |  | RGA -FINISHING | 7831682 |
| 1898 | 40200.40300.41000.56100.59900.174500.986700 | False ceiling & 1ST COAT PAINTING | 15d | 2027-12-16 | 2027-12-30 | 1897 |  | RGA -FINISHING | 7831692 |
| 1899 | 40200.40300.41000.56100.59900.174500.986800 | CLEANING | 3d | 2027-12-31 | 2028-01-02 | 1898 |  | RGA -FINISHING | 7831702 |
| 1900 | 40200.40300.41000.56100.160200 | **Common MEP Works** | 347d | 2027-07-23 | 2028-07-03 |  | start no earlier than 2027-07-23 | RGA -FINISHING | 7805312 |
| 1901 | 40200.40300.41000.56100.160200.497400 | **Lift Works** | 111d | 2027-08-04 | 2027-11-22 |  | start no earlier than 2027-08-04 | RGA -FINISHING | 7811572 |
| 1902 | 40200.40300.41000.56100.160200.497400.986900 | Lift Shaft Handover | 30d | 2027-08-04 | 2027-09-02 | 1158 |  | RGA -FINISHING | 7831852 |
| 1903 | 40200.40300.41000.56100.160200.497400.987000 | Lift installation work | 80d | 2027-09-04 | 2027-11-22 | 1902FS+1d |  | RGA -FINISHING | 7831862 |
| 1904 | 40200.40300.41000.56100.160200.497300 | **Plumbing works** | 147d | 2028-02-08 | 2028-07-03 |  | start no earlier than 2028-02-08 | RGA -FINISHING | 7811582 |
| 1905 | 40200.40300.41000.56100.160200.497300.987100 | Shaft Plumbing | 90d | 2028-02-08 | 2028-05-07 | 1351FF+90d |  | RGA -FINISHING | 7831872 |
| 1906 | 40200.40300.41000.56100.160200.497300.987200 | Terrace Looping | 90d | 2028-04-05 | 2028-07-03 | 1349FF+110d |  | RGA -FINISHING | 7831882 |
| 1907 | 40200.40300.41000.56100.160200.497200 | **Fire Fighting works** | 75d | 2027-07-23 | 2027-10-05 |  | start no earlier than 2027-07-23 | RGA -FINISHING | 7811722 |
| 1908 | 40200.40300.41000.56100.160200.497200.987300 | Shaft Downtake works | 60d | 2027-07-23 | 2027-09-20 | 1153FS+21d |  | RGA -FINISHING | 7831892 |
| 1909 | 40200.40300.41000.56100.160200.497200.987400 | Connection to pump room | 15d | 2027-09-21 | 2027-10-05 | 1908 |  | RGA -FINISHING | 7831902 |

Notes:
- 1885: Assumed
- 1893: Assumed
- 1900: Completion in 12 months post last RCC

| ID | WBS | Task | Duration | Start | Finish | Predecessors | Complete | Constraint | Calendar | Unique_Task_ID |
| --- | --- | --- | --- | --- | --- | --- | --- | --- | --- | --- |
| 1910 | 40200.40300.41000.56100.160200.342800 | **Electrical works** | 120d | 2028-01-26 | 2028-05-24 |  |  | start no earlier than 2028-01-26 | RGA -FINISHING | 7808172 |
| 1911 | 40200.40300.41000.56100.160200.342800.987500 | Shaft cabling | 45d | 2028-03-28 | 2028-05-11 | 1153FS+270d |  |  | RGA -FINISHING | 7831912 |
| 1912 | 40200.40300.41000.56100.160200.342800.987600 | Meter room erection | 15d | 2028-04-25 | 2028-05-09 | 1011FS+320d |  |  | RGA -FINISHING | 7831922 |
| 1913 | 40200.40300.41000.56100.160200.342800.987700 | Panel erection | 15d | 2028-05-10 | 2028-05-24 | 1912 |  |  | RGA -FINISHING | 7831932 |
| 1914 | 40200.40300.41000.56100.160200.342800.987800 | DG Installtion | 10d | 2028-01-26 | 2028-02-04 | 1912SS-90d |  |  | RGA -FINISHING | 7831942 |
| 1915 | 40200.40300.41000.56100.160200.342800.987900 | Transformer erection | 15d | 2028-01-26 | 2028-02-09 | 1914SS |  |  | RGA -FINISHING | 7831952 |
| 1916 | 40200.40300.41000.352200 | **Capex Item Procurment** | 205d | 2027-08-04 | 2028-02-24 |  |  | start no earlier than 2027-08-04 | RGA -FINISHING | 7808752 |
| 1917 | 40200.40300.41000.352200.558900 | Lift Procurement & delivery | 30d | 2027-08-04 | 2027-09-02 | 1902SS |  |  | RGA -FINISHING | 7813302 |
| 1918 | 40200.40300.41000.352200.559000 | Panels | 30d | 2028-01-26 | 2028-02-24 | 1912SS-90d |  |  | RGA -FINISHING | 7813312 |
| 1919 | 40200.40300.41000.352200.559100 | DG procurement | 30d | 2027-10-28 | 2027-11-26 | 1914SS-90d |  |  | RGA -FINISHING | 7813322 |
| 1920 | 40200.40300.41000.352200.559200 | Transformer | 30d | 2027-10-28 | 2027-11-26 | 1915SS-90d |  |  | RGA -FINISHING | 7813332 |
| 1921 | 40200.40300.41000.44500 | **Handing Over Activities** | 56d | 2028-06-01 | 2028-07-26 |  |  | start no earlier than 2028-06-01 | RGA -FINISHING | 7803222 |
| 1922 | 40200.40300.41000.44500.559300 | SOAP WASHING GROUND FLOOR | 1d | 2028-06-01 | 2028-06-01 | 1899FS+150d |  |  | RGA -FINISHING | 7813342 |
| 1923 | 40200.40300.41000.44500.559400 | SOAP WASHING L1 | 1d | 2028-06-02 | 2028-06-02 | 1922 |  |  | RGA -FINISHING | 7813352 |
| 1924 | 40200.40300.41000.44500.559500 | SOAP WASHING L2 | 1d | 2028-06-03 | 2028-06-03 | 1923 |  |  | RGA -FINISHING | 7813362 |
| 1925 | 40200.40300.41000.44500.559600 | SOAP WASHING L3 | 1d | 2028-06-04 | 2028-06-04 | 1924 |  |  | RGA -FINISHING | 7813372 |
| 1926 | 40200.40300.41000.44500.559700 | SOAP WASHING L4 | 1d | 2028-06-05 | 2028-06-05 | 1925 |  |  | RGA -FINISHING | 7813382 |
| 1927 | 40200.40300.41000.44500.559800 | SOAP WASHING L5 | 1d | 2028-06-06 | 2028-06-06 | 1926 |  |  | RGA -FINISHING | 7813392 |
| 1928 | 40200.40300.41000.44500.559900 | SOAP WASHING L6 | 1d | 2028-06-07 | 2028-06-07 | 1927 |  |  | RGA -FINISHING | 7813402 |
| 1929 | 40200.40300.41000.44500.560000 | SOAP WASHING L7 | 1d | 2028-06-08 | 2028-06-08 | 1928 |  |  | RGA -FINISHING | 7813412 |
| 1930 | 40200.40300.41000.44500.560100 | SOAP WASHING L8 | 1d | 2028-06-09 | 2028-06-09 | 1929 |  |  | RGA -FINISHING | 7813422 |
| 1931 | 40200.40300.41000.44500.560200 | SOAP WASHING L9 | 1d | 2028-06-10 | 2028-06-10 | 1930 |  |  | RGA -FINISHING | 7813432 |
| 1932 | 40200.40300.41000.44500.560300 | SOAP WASHING L10 | 1d | 2028-06-11 | 2028-06-11 | 1931 |  |  | RGA -FINISHING | 7813442 |
| 1933 | 40200.40300.41000.44500.560400 | SOAP WASHING L11 | 1d | 2028-06-12 | 2028-06-12 | 1932 |  |  | RGA -FINISHING | 7813452 |
| 1934 | 40200.40300.41000.44500.560500 | SOAP WASHING L12 | 1d | 2028-06-13 | 2028-06-13 | 1933 |  |  | RGA -FINISHING | 7813462 |
| 1935 | 40200.40300.41000.44500.560600 | SOAP WASHING L13 | 1d | 2028-06-14 | 2028-06-14 | 1934 |  |  | RGA -FINISHING | 7813472 |
| 1936 | 40200.40300.41000.44500.560700 | SOAP WASHING L14 | 1d | 2028-06-15 | 2028-06-15 | 1935 |  |  | RGA -FINISHING | 7813482 |
| 1937 | 40200.40300.41000.44500.560800 | SOAP WASHING L15 | 1d | 2028-06-16 | 2028-06-16 | 1936 |  |  | RGA -FINISHING | 7813492 |
| 1938 | 40200.40300.41000.44500.560900 | SOAP WASHING L16 | 1d | 2028-06-17 | 2028-06-17 | 1937 |  |  | RGA -FINISHING | 7813502 |
| 1939 | 40200.40300.41000.44500.561000 | SOAP WASHING L17 | 1d | 2028-06-18 | 2028-06-18 | 1938 |  |  | RGA -FINISHING | 7813512 |
| 1940 | 40200.40300.41000.44500.561100 | SOAP WASHING L18 | 1d | 2028-06-19 | 2028-06-19 | 1939 |  |  | RGA -FINISHING | 7813522 |
| 1941 | 40200.40300.41000.44500.561200 | SOAP WASHING L19 | 1d | 2028-06-20 | 2028-06-20 | 1940 |  |  | RGA -FINISHING | 7813532 |
| 1942 | 40200.40300.41000.44500.561300 | SOAP WASHING L20 | 1d | 2028-06-21 | 2028-06-21 | 1941 |  |  | RGA -FINISHING | 7813542 |
| 1943 | 40200.40300.41000.44500.561400 | SOAP WASHING L21 | 1d | 2028-06-22 | 2028-06-22 | 1942 |  |  | RGA -FINISHING | 7813552 |
| 1944 | 40200.40300.41000.44500.561500 | SOAP WASHING L22 | 1d | 2028-06-23 | 2028-06-23 | 1943 |  |  | RGA -FINISHING | 7813562 |
| 1945 | 40200.40300.41000.44500.561600 | SOAP WASHING L23 | 1d | 2028-06-24 | 2028-06-24 | 1944 |  |  | RGA -FINISHING | 7813572 |
| 1946 | 40200.40300.41000.44500.561700 | SOAP WASHING L24 | 1d | 2028-06-25 | 2028-06-25 | 1945 |  |  | RGA -FINISHING | 7813582 |
| 1947 | 40200.40300.41000.44500.561800 | SOAP WASHING L25 | 1d | 2028-06-26 | 2028-06-26 | 1946 |  |  | RGA -FINISHING | 7813592 |
| 1948 | 40200.40300.41000.44500.561900 | CP & SANITARYWARE FIXING Ground | 2d | 2028-06-03 | 2028-06-04 | 1923 |  |  | RGA -FINISHING | 7813622 |
| 1949 | 40200.40300.41000.44500.562000 | CP & SANITARYWARE FIXING L1 | 2d | 2028-06-05 | 2028-06-06 | 1948 |  |  | RGA -FINISHING | 7813632 |
| 1950 | 40200.40300.41000.44500.562100 | CP & SANITARYWARE FIXING L2 | 2d | 2028-06-07 | 2028-06-08 | 1949 |  |  | RGA -FINISHING | 7813642 |
| 1951 | 40200.40300.41000.44500.562200 | CP & SANITARYWARE FIXING L3 | 2d | 2028-06-09 | 2028-06-10 | 1950 |  |  | RGA -FINISHING | 7813652 |
| 1952 | 40200.40300.41000.44500.562300 | CP & SANITARYWARE FIXING L4 | 2d | 2028-06-11 | 2028-06-12 | 1951 |  |  | RGA -FINISHING | 7813662 |
| 1953 | 40200.40300.41000.44500.562400 | CP & SANITARYWARE FIXING L5 | 2d | 2028-06-13 | 2028-06-14 | 1952 |  |  | RGA -FINISHING | 7813672 |
| 1954 | 40200.40300.41000.44500.562500 | CP & SANITARYWARE FIXING L6 | 2d | 2028-06-15 | 2028-06-16 | 1953 |  |  | RGA -FINISHING | 7813682 |
| 1955 | 40200.40300.41000.44500.562600 | CP & SANITARYWARE FIXING L7 | 2d | 2028-06-17 | 2028-06-18 | 1954 |  |  | RGA -FINISHING | 7813692 |
| 1956 | 40200.40300.41000.44500.562700 | CP & SANITARYWARE FIXING L8 | 2d | 2028-06-19 | 2028-06-20 | 1955 |  |  | RGA -FINISHING | 7813702 |
| 1957 | 40200.40300.41000.44500.562800 | CP & SANITARYWARE FIXING L9 | 2d | 2028-06-21 | 2028-06-22 | 1956 |  |  | RGA -FINISHING | 7813712 |
| 1958 | 40200.40300.41000.44500.562900 | CP & SANITARYWARE FIXING L10 | 2d | 2028-06-23 | 2028-06-24 | 1957 |  |  | RGA -FINISHING | 7813722 |
| 1959 | 40200.40300.41000.44500.563000 | CP & SANITARYWARE FIXING L11 | 2d | 2028-06-25 | 2028-06-26 | 1958 |  |  | RGA -FINISHING | 7813732 |
| 1960 | 40200.40300.41000.44500.563100 | CP & SANITARYWARE FIXING L12 | 2d | 2028-06-27 | 2028-06-28 | 1959 |  |  | RGA -FINISHING | 7813742 |
| 1961 | 40200.40300.41000.44500.563200 | CP & SANITARYWARE FIXING L13 | 2d | 2028-06-29 | 2028-06-30 | 1960 |  |  | RGA -FINISHING | 7813752 |
| 1962 | 40200.40300.41000.44500.563300 | CP & SANITARYWARE FIXING L14 | 2d | 2028-07-01 | 2028-07-02 | 1961 |  |  | RGA -FINISHING | 7813762 |
| 1963 | 40200.40300.41000.44500.563400 | CP & SANITARYWARE FIXING L15 | 2d | 2028-07-03 | 2028-07-04 | 1962 |  |  | RGA -FINISHING | 7813772 |
| 1964 | 40200.40300.41000.44500.563500 | CP & SANITARYWARE FIXING L16 | 2d | 2028-07-05 | 2028-07-06 | 1963 |  |  | RGA -FINISHING | 7813782 |
| 1965 | 40200.40300.41000.44500.563600 | CP & SANITARYWARE FIXING L17 | 2d | 2028-07-07 | 2028-07-08 | 1964 |  |  | RGA -FINISHING | 7813792 |
| 1966 | 40200.40300.41000.44500.563700 | CP & SANITARYWARE FIXING L18 | 2d | 2028-07-09 | 2028-07-10 | 1965 |  |  | RGA -FINISHING | 7813802 |
| 1967 | 40200.40300.41000.44500.563800 | CP & SANITARYWARE FIXING L18 | 2d | 2028-07-11 | 2028-07-12 | 1966 |  |  | RGA -FINISHING | 7813812 |
| 1968 | 40200.40300.41000.44500.563900 | CP & SANITARYWARE FIXING L19 | 2d | 2028-07-13 | 2028-07-14 | 1967 |  |  | RGA -FINISHING | 7813822 |
| 1969 | 40200.40300.41000.44500.564000 | CP & SANITARYWARE FIXING L20 | 2d | 2028-07-15 | 2028-07-16 | 1968 |  |  | RGA -FINISHING | 7813832 |
| 1970 | 40200.40300.41000.44500.564100 | CP & SANITARYWARE FIXING L21 | 2d | 2028-07-17 | 2028-07-18 | 1969 |  |  | RGA -FINISHING | 7813842 |
| 1971 | 40200.40300.41000.44500.564200 | CP & SANITARYWARE FIXING L22 | 2d | 2028-07-19 | 2028-07-20 | 1970 |  |  | RGA -FINISHING | 7813852 |
| 1972 | 40200.40300.41000.44500.564300 | CP & SANITARYWARE FIXING L23 | 2d | 2028-07-21 | 2028-07-22 | 1971 |  |  | RGA -FINISHING | 7813862 |
| 1973 | 40200.40300.41000.44500.564400 | CP & SANITARYWARE FIXING L24 | 2d | 2028-07-23 | 2028-07-24 | 1972 |  |  | RGA -FINISHING | 7813872 |
| 1974 | 40200.40300.41000.44500.564500 | CP & SANITARYWARE FIXING L25 | 2d | 2028-07-25 | 2028-07-26 | 1973 |  |  | RGA -FINISHING | 7813882 |
| 1975 | 40200.40300.41000.536800 | MIscellaneous (Aluform Supply) | 70d | 2025-07-24 | 2025-10-08 | 1048FS-130d | 100% | start no earlier than 2025-07-24 | RGA -FINISHING | 7812532 |
| 1976 | 40200.40300.41000.545600 | MIscellaneous | 270d | 2028-03-27 | 2029-02-03 | 1975FS+771d |  |  | Indian Calendar | 7812542 |

| ID | WBS | Task | Type | Duration | Start | Finish | Predecessors | Complete | Constraint | Calendar | Unique_Task_ID |
| --- | --- | --- | --- | --- | --- | --- | --- | --- | --- | --- | --- |
| 1977 | 40200.40300.41100 | **TOWER 5 - (2B+G+25 Floors+Terrace)** |  | 1840.62d | 2023-11-02 | 2028-12-31 |  | 9% | start no earlier than 2023-11-02 | RGA - STRUCTURE | 7803252 |
| 1978 | 40200.40300.41100.1170200 | Start date for Tower 5 | milestone | 0d | 2026-01-04 | 2026-01-04 | 2965FS+7d |  |  | RGA - STRUCTURE | 7847662 |
| 1979 | 40200.40300.41100.459600 | **Earth work** |  | 218d | 2025-02-14 | 2025-09-22 |  | 100% | start no earlier than 2025-02-14 | RGA - STRUCTURE | 7811752 |
| 1980 | 40200.40300.41100.459600.526500 | EXCAVATION - Tower Area |  | 118d | 2025-02-14 | 2025-09-22 | 1978SS-209d | 100% | start no earlier than 2025-02-14 | RGA - STRUCTURE | 7813912 |
| 1981 | 40200.40300.41100.459600.526400 | Excavation - Non Tower Area |  | 50d | 2025-03-19 | 2025-09-22 | 1980FS-126d | 100% | start no earlier than 2025-03-19 | 5 day week, Bank Hols Xmas | 7433475 |
| 1982 | 40200.40300.41100.70100 | **Substructure works (Works up to plinth)** |  | 1204d | 2025-08-09 | 2028-12-31 |  | 8% | start no earlier than 2025-08-09 | RGA - STRUCTURE | 7803872 |
| 1983 | 40200.40300.41100.70100.166800 | **Civil works (Shell & Core basement)** |  | 653d | 2025-08-09 | 2027-06-29 |  | 64% | start no earlier than 2025-08-09 | RGA - STRUCTURE | 7806852 |
| 1984 | 40200.40300.41100.70100.166800.252200 | **RCC Works - Tower area- 1st Basement** |  | 134d | 2025-08-09 | 2025-12-23 |  | 84% | start no earlier than 2025-08-09 | RGA - STRUCTURE | 7808162 |
| 1985 | 40200.40300.41100.70100.166800.252200.368900 | **Foundation** |  | 80d | 2025-08-09 | 2025-10-30 |  | 100% | start no earlier than 2025-08-09 | RGA - STRUCTURE | 7809312 |
| 1986 | 40200.40300.41100.70100.166800.252200.368900.525700 | Pocket Excavation |  | 1d | 2025-09-23 | 2025-09-23 | 1980 | 100% | start no earlier than 2025-09-23 | RGA - STRUCTURE | 7832922 |
| 1987 | 40200.40300.41100.70100.166800.252200.368900.525800 | Footing PCC |  | 51d | 2025-08-16 | 2025-10-17 | 1986 | 100% | start no earlier than 2025-08-16 | RGA - STRUCTURE | 7832932 |
| 1988 | 40200.40300.41100.70100.166800.252200.368900.525900 | Footing / Raft works |  | 55d | 2025-08-09 | 2025-10-30 | 1987FS-76d | 100% | start no earlier than 2025-08-09 | RGA - STRUCTURE | 7832942 |
| 1989 | 40200.40300.41100.70100.166800.252200.483800 | **UB Slab** |  | 70d | 2025-10-14 | 2025-12-23 |  | 44% | start no earlier than 2025-10-14 | RGA - STRUCTURE | 7811392 |
| 1990 | 40200.40300.41100.70100.166800.252200.483800.526000 | Columns in Upper basement |  | 25d | 2025-10-14 | 2025-12-05 | 1988 | 76% | start no earlier than 2025-10-14 | RGA - STRUCTURE | 7832952 |
| 1991 | 40200.40300.41100.70100.166800.252200.483800.2217000 | Upper Basement slab |  | 18d | 2025-12-06 | 2025-12-23 | 1990 |  |  | RGA - STRUCTURE | 7832962 |
| 1992 | 40200.40300.41100.70100.166800.497100 | **Ground Floor Slab** |  | 35d | 2025-12-24 | 2026-01-28 |  |  | start no earlier than 2025-12-24 | RGA - STRUCTURE | 8865424 |
| 1993 | 40200.40300.41100.70100.166800.497100.988000 | Columns in Upper basement |  | 20d | 2025-12-24 | 2026-01-12 | 1991 |  |  | RGA - STRUCTURE | 8865434 |
| 1994 | 40200.40300.41100.70100.166800.497100.988100 | Upper Basement slab |  | 15d | 2026-01-13 | 2026-01-28 | 1993 |  |  | RGA - STRUCTURE | 8865444 |
| 1995 | 40200.40300.41100.70100.166800.852600 | Backfilling |  | 10d | 2027-06-20 | 2027-06-29 | 7878FS+198d |  |  | RGA - STRUCTURE | 7820112 |
| 1996 | 40200.40300.41100.70100.501500 | **GF/Stilt Block work and Plaster finishing** |  | 75d | 2027-06-11 | 2027-08-24 |  |  | start no earlier than 2027-06-11 | RGA - STRUCTURE | 7811832 |
| 1997 | 40200.40300.41100.70100.501500.852700 | Upper basement |  | 30d | 2027-06-11 | 2027-07-10 | 2110 |  |  | RGA - STRUCTURE | 7820122 |
| 1998 | 40200.40300.41100.70100.501500.852800 | 2nd Basement |  | 45d | 2027-07-11 | 2027-08-24 | 1997 |  |  | RGA - STRUCTURE | 8865454 |
| 1999 | 40200.40300.41100.70100.160000 | **Services** |  | 540d | 2027-07-11 | 2028-12-31 |  |  | start no earlier than 2027-07-11 | RGA -FINISHING | 7805392 |
| 2000 | 40200.40300.41100.70100.160000.365500 | **Plumbing** |  | 180d | 2027-07-11 | 2028-01-06 |  |  | start no earlier than 2027-07-11 | RGA -FINISHING | 7809042 |
| 2001 | 40200.40300.41100.70100.160000.365500.483600 | **Upper Basement Plumbing** |  | 180d | 2027-07-11 | 2028-01-06 |  |  | start no earlier than 2027-07-11 | RGA -FINISHING | 7812192 |
| 2002 | 40200.40300.41100.70100.160000.365500.483600.2217100 | Upper Basement Plumbing |  | 90d | 2027-07-11 | 2027-10-08 | 1997 |  |  | RGA -FINISHING | 7832972 |
| 2003 | 40200.40300.41100.70100.160000.365500.483600.2217200 | Upper Basement Plumbing |  | 90d | 2027-10-09 | 2028-01-06 | 2002 |  |  | RGA -FINISHING | 8865464 |

Notes:
- 1979: 2 Months for Excavation

| ID | WBS | Task | Duration | Start | Finish | Predecessors | Constraint | Calendar | Unique_Task_ID |
| --- | --- | --- | --- | --- | --- | --- | --- | --- | --- |
| 2004 | 40200.40300.41100.70100.160000.365600 | **Fire fighting** | 180d | 2027-10-09 | 2028-04-05 |  | start no earlier than 2027-10-09 | RGA -FINISHING | 7809052 |
| 2005 | 40200.40300.41100.70100.160000.365600.483500 | **Upper Basement Fire fighting** | 180d | 2027-10-09 | 2028-04-05 |  | start no earlier than 2027-10-09 | RGA -FINISHING | 7812182 |
| 2006 | 40200.40300.41100.70100.160000.365600.483500.2217300 | Upper Basement Fire fighting | 90d | 2027-10-09 | 2028-01-06 | 2002 |  | RGA -FINISHING | 7832982 |
| 2007 | 40200.40300.41100.70100.160000.365600.483500.2217400 | Upper Basement Fire fighting | 90d | 2028-01-07 | 2028-04-05 | 2006 |  | RGA -FINISHING | 8865474 |
| 2008 | 40200.40300.41100.70100.160000.365700 | **Ventilation** | 180d | 2028-01-07 | 2028-07-04 |  | start no earlier than 2028-01-07 | RGA -FINISHING | 7809062 |
| 2009 | 40200.40300.41100.70100.160000.365700.483400 | **Upper Basement ventilation** | 180d | 2028-01-07 | 2028-07-04 |  | start no earlier than 2028-01-07 | RGA -FINISHING | 7812172 |
| 2010 | 40200.40300.41100.70100.160000.365700.483400.2217500 | Upper Basement ventilation | 90d | 2028-01-07 | 2028-04-05 | 2006 |  | RGA -FINISHING | 7832992 |
| 2011 | 40200.40300.41100.70100.160000.365700.483400.2217600 | Upper Basement ventilation | 90d | 2028-04-06 | 2028-07-04 | 2010 |  | RGA -FINISHING | 8865484 |
| 2012 | 40200.40300.41100.70100.160000.365800 | **Electrification** | 180d | 2028-04-06 | 2028-10-02 |  | start no earlier than 2028-04-06 | RGA -FINISHING | 7809072 |
| 2013 | 40200.40300.41100.70100.160000.365800.483300 | **Upper Basement Electrification** | 180d | 2028-04-06 | 2028-10-02 |  | start no earlier than 2028-04-06 | RGA -FINISHING | 7812162 |
| 2014 | 40200.40300.41100.70100.160000.365800.483300.2217700 | Upper Basement Electrification | 90d | 2028-04-06 | 2028-07-04 | 2010 |  | RGA -FINISHING | 7833002 |
| 2015 | 40200.40300.41100.70100.160000.365800.483300.2217800 | Upper Basement Electrification | 90d | 2028-07-05 | 2028-10-02 | 2014 |  | RGA -FINISHING | 8865494 |
| 2016 | 40200.40300.41100.70100.160000.365900 | **Security installations** | 180d | 2028-07-05 | 2028-12-31 |  | start no earlier than 2028-07-05 | RGA -FINISHING | 7809082 |
| 2017 | 40200.40300.41100.70100.160000.365900.483200 | **Upper Basement Security installations** | 180d | 2028-07-05 | 2028-12-31 |  | start no earlier than 2028-07-05 | RGA -FINISHING | 7812152 |
| 2018 | 40200.40300.41100.70100.160000.365900.483200.2217900 | Upper Basement Security installations | 90d | 2028-07-05 | 2028-10-02 | 2014 |  | RGA -FINISHING | 7833012 |
| 2019 | 40200.40300.41100.70100.160000.365900.483200.2218000 | Upper Basement Security installations | 90d | 2028-10-03 | 2028-12-31 | 2018 |  | RGA -FINISHING | 8865504 |
| 2020 | 40200.40300.41100.70100.350400 | **Finishing work** | 180d | 2027-07-11 | 2028-01-06 |  | start no earlier than 2027-07-11 | RGA -FINISHING | 7808662 |
| 2021 | 40200.40300.41100.70100.350400.497000 | **Basement Flooring** | 180d | 2027-07-11 | 2028-01-06 |  | start no earlier than 2027-07-11 | RGA -FINISHING | 7812382 |
| 2022 | 40200.40300.41100.70100.350400.497000.988200 | 1st Basement ventilation | 90d | 2027-07-11 | 2027-10-08 | 1997 |  | RGA -FINISHING | 7831962 |
| 2023 | 40200.40300.41100.70100.350400.497000.988300 | 1st Basement ventilation | 90d | 2027-10-09 | 2028-01-06 | 2022 |  | RGA -FINISHING | 8865514 |
| 2024 | 40200.40300.41100.70100.350400.496900 | **Basement Painting (1st Coat)** | 90d | 2027-10-09 | 2028-01-06 |  | start no earlier than 2027-10-09 | RGA -FINISHING | 7812392 |
| 2025 | 40200.40300.41100.70100.350400.496900.988400 | 2nd Basement ventilation | 45d | 2027-10-09 | 2027-11-22 | 2022 |  | RGA -FINISHING | 7831972 |
| 2026 | 40200.40300.41100.70100.350400.496900.988500 | 2nd Basement ventilation | 45d | 2027-11-23 | 2028-01-06 | 2025 |  | RGA -FINISHING | 8865524 |
| 2027 | 40200.40300.41100.70100.501400 | **Water Proofing work** | 90d | 2027-07-11 | 2027-10-08 |  | start no earlier than 2027-07-11 | RGA -FINISHING | 7811842 |
| 2028 | 40200.40300.41100.70100.501400.852900 | GF/Stilt Floor | 45d | 2027-07-11 | 2027-08-24 | 1997 |  | RGA -FINISHING | 7820132 |
| 2029 | 40200.40300.41100.70100.501400.853000 | 2nd Basement | 45d | 2027-08-25 | 2027-10-08 | 2028 |  | RGA -FINISHING | 8865534 |

| ID | WBS | Task | Duration | Start | Finish | Predecessors | Constraint | Calendar | Unique_Task_ID |
| --- | --- | --- | --- | --- | --- | --- | --- | --- | --- |
| 2030 | 40200.40300.41100.52700 | **Superstructure works** | 931d | 2025-11-30 | 2028-07-21 |  | start no earlier than 2025-11-30 | RGA - STRUCTURE | 7803382 |
| 2031 | 40200.40300.41100.52700.55500 | **Civil works** | 931d | 2025-11-30 | 2028-07-21 |  | start no earlier than 2025-11-30 | RGA - STRUCTURE | 7803452 |
| 2032 | 40200.40300.41100.52700.55500.61700 | **Superstructure RCC Work** | 616d | 2026-01-29 | 2027-11-08 |  | start no earlier than 2026-01-29 | RGA - STRUCTURE | 7803702 |
| 2033 | 40200.40300.41100.52700.55500.61700.63000 | **Slab RCC works** | 567d | 2026-01-29 | 2027-09-20 |  | start no earlier than 2026-01-29 | RGA - STRUCTURE | 7803722 |
| 2034 | 40200.40300.41100.52700.55500.61700.63000.500700 | **1st Floor slab (Height More)** | 36d | 2026-01-29 | 2026-03-05 |  | start no earlier than 2026-01-29 | RGA - STRUCTURE | 7811692 |
| 2035 | 40200.40300.41100.52700.55500.61700.63000.500700.2637000 | Columns | 20d | 2026-01-29 | 2026-02-17 | 1994 |  | RGA - STRUCTURE | 7853452 |
| 2036 | 40200.40300.41100.52700.55500.61700.63000.500700.2637100 | Slab works | 16d | 2026-02-18 | 2026-03-05 | 2035 |  | RGA - STRUCTURE | 7853462 |
| 2037 | 40200.40300.41100.52700.55500.61700.63000.500800 | **2nd Floor slab (Combo Height More)** | 30d | 2026-03-06 | 2026-04-04 |  | start no earlier than 2026-03-06 | RGA - STRUCTURE | 7811702 |
| 2038 | 40200.40300.41100.52700.55500.61700.63000.500800.2637200 | Columns | 15d | 2026-03-06 | 2026-03-20 | 2036 |  | RGA - STRUCTURE | 7853472 |
| 2039 | 40200.40300.41100.52700.55500.61700.63000.500800.2637300 | Slab works | 15d | 2026-03-21 | 2026-04-04 | 2038 |  | RGA - STRUCTURE | 7853482 |
| 2040 | 40200.40300.41100.52700.55500.61700.63000.500900 | **3rd Floor slab (Combo)** | 44d | 2026-04-05 | 2026-05-19 |  | start no earlier than 2026-04-05 | RGA - STRUCTURE | 7811712 |
| 2041 | 40200.40300.41100.52700.55500.61700.63000.500900.2637400 | Formwork & Rebar Works | 43d | 2026-04-05 | 2026-05-18 | 2039 |  | RGA - STRUCTURE | 7853492 |
| 2042 | 40200.40300.41100.52700.55500.61700.63000.500900.2637500 | Concreting | 1d | 2026-05-19 | 2026-05-19 | 2041 |  | RGA - STRUCTURE | 7853502 |
| 2043 | 40200.40300.41100.52700.55500.61700.63000.392400 | **4th Floor slab (Combo)** | 40d | 2026-05-20 | 2026-07-11 |  | start no earlier than 2026-05-20 | RGA - STRUCTURE | 7809912 |
| 2044 | 40200.40300.41100.52700.55500.61700.63000.392400.2637600 | Wall rebar &Form work | 20d | 2026-05-20 | 2026-06-08 | 2042 |  | RGA - STRUCTURE | 7853512 |
| 2045 | 40200.40300.41100.52700.55500.61700.63000.392400.2637700 | Slab formwork & rebar | 19d | 2026-06-09 | 2026-07-09 | 2044 |  | RGA - STRUCTURE | 7853522 |
| 2046 | 40200.40300.41100.52700.55500.61700.63000.392400.2637800 | Concreting | 1d | 2026-07-10 | 2026-07-11 | 2045 |  | RGA - STRUCTURE | 7853532 |
| 2047 | 40200.40300.41100.52700.55500.61700.63000.392300 | **5th Floor slab (1st Set Up)** | 40d | 2026-07-12 | 2026-08-23 |  | start no earlier than 2026-07-12 | RGA - STRUCTURE | 7809922 |
| 2048 | 40200.40300.41100.52700.55500.61700.63000.392300.2637900 | Wall rebar &Form work | 20d | 2026-07-12 | 2026-08-02 | 2046 |  | RGA - STRUCTURE | 7853542 |
| 2049 | 40200.40300.41100.52700.55500.61700.63000.392300.2638000 | Slab formwork & rebar | 19d | 2026-08-03 | 2026-08-22 | 2048 |  | RGA - STRUCTURE | 7853552 |
| 2050 | 40200.40300.41100.52700.55500.61700.63000.392300.2638100 | Concreting | 1d | 2026-08-23 | 2026-08-23 | 2049 |  | RGA - STRUCTURE | 7853562 |
| 2051 | 40200.40300.41100.52700.55500.61700.63000.392200 | **6th Floor slab(2nd Set Up)** | 40d | 2026-08-24 | 2026-10-03 |  | start no earlier than 2026-08-24 | RGA - STRUCTURE | 7809932 |
| 2052 | 40200.40300.41100.52700.55500.61700.63000.392200.2638200 | Wall rebar &Form work | 20d | 2026-08-24 | 2026-09-12 | 2050 |  | RGA - STRUCTURE | 7853572 |
| 2053 | 40200.40300.41100.52700.55500.61700.63000.392200.2638300 | Slab formwork & rebar | 19d | 2026-09-13 | 2026-10-01 | 2052 |  | RGA - STRUCTURE | 7853582 |
| 2054 | 40200.40300.41100.52700.55500.61700.63000.392200.2638400 | Concreting | 1d | 2026-10-03 | 2026-10-03 | 2053 |  | RGA - STRUCTURE | 7853592 |

Notes:
- 2037: AVg Slab Cycle of 21 days
- 2040: AVg Slab Cycle of 21 days
- 2043: AVg Slab Cycle of 21 days

| ID | WBS | Task | Duration | Start | Finish | Predecessors | Constraint | Calendar | Unique_Task_ID |
| --- | --- | --- | --- | --- | --- | --- | --- | --- | --- |
| 2055 | 40200.40300.41100.52700.55500.61700.63000.392100 | **7th Floor slab** | 28d | 2026-10-04 | 2026-10-31 |  | start no earlier than 2026-10-04 | RGA - STRUCTURE | 7809942 |
| 2056 | 40200.40300.41100.52700.55500.61700.63000.392100.2638500 | Wall rebar &Form work | 14d | 2026-10-04 | 2026-10-17 | 2054 |  | RGA - STRUCTURE | 7853602 |
| 2057 | 40200.40300.41100.52700.55500.61700.63000.392100.2638600 | Slab formwork & rebar | 13d | 2026-10-18 | 2026-10-30 | 2056 |  | RGA - STRUCTURE | 7853612 |
| 2058 | 40200.40300.41100.52700.55500.61700.63000.392100.2638700 | Concreting | 1d | 2026-10-31 | 2026-10-31 | 2057 |  | RGA - STRUCTURE | 7853622 |
| 2059 | 40200.40300.41100.52700.55500.61700.63000.392000 | **8th Floor slab** | 17d | 2026-11-01 | 2026-11-19 |  | start no earlier than 2026-11-01 | RGA - STRUCTURE | 7809952 |
| 2060 | 40200.40300.41100.52700.55500.61700.63000.392000.2638800 | Wall rebar &Form work | 8d | 2026-11-01 | 2026-11-08 | 2058 |  | RGA - STRUCTURE | 7853632 |
| 2061 | 40200.40300.41100.52700.55500.61700.63000.392000.2638900 | Slab formwork & rebar | 8d | 2026-11-09 | 2026-11-17 | 2060 |  | RGA - STRUCTURE | 7853642 |
| 2062 | 40200.40300.41100.52700.55500.61700.63000.392000.2639000 | Concreting | 1d | 2026-11-18 | 2026-11-19 | 2061 |  | RGA - STRUCTURE | 7853652 |
| 2063 | 40200.40300.41100.52700.55500.61700.63000.391900 | **9th Floor slab** | 15d | 2026-11-20 | 2026-12-17 |  | start no earlier than 2026-11-20 | RGA - STRUCTURE | 7809962 |
| 2064 | 40200.40300.41100.52700.55500.61700.63000.391900.2639100 | Wall rebar &Form work | 7d | 2026-11-20 | 2026-12-03 | 2062 |  | RGA - STRUCTURE | 7853662 |
| 2065 | 40200.40300.41100.52700.55500.61700.63000.391900.2639200 | Slab formwork & rebar | 7d | 2026-12-04 | 2026-12-16 | 2064 |  | RGA - STRUCTURE | 7853672 |
| 2066 | 40200.40300.41100.52700.55500.61700.63000.391900.2639300 | Concreting | 1d | 2026-12-17 | 2026-12-17 | 2065 |  | RGA - STRUCTURE | 7853682 |
| 2067 | 40200.40300.41100.52700.55500.61700.63000.391800 | **10th Floor slab** | 15d | 2026-12-18 | 2027-01-01 |  | start no earlier than 2026-12-18 | RGA - STRUCTURE | 7809972 |
| 2068 | 40200.40300.41100.52700.55500.61700.63000.391800.2639400 | Wall rebar &Form work | 7d | 2026-12-18 | 2026-12-24 | 2066 |  | RGA - STRUCTURE | 7853692 |
| 2069 | 40200.40300.41100.52700.55500.61700.63000.391800.2639500 | Slab formwork & rebar | 7d | 2026-12-25 | 2026-12-31 | 2068 |  | RGA - STRUCTURE | 7853702 |
| 2070 | 40200.40300.41100.52700.55500.61700.63000.391800.2639600 | Concreting | 1d | 2027-01-01 | 2027-01-01 | 2069 |  | RGA - STRUCTURE | 7853712 |
| 2071 | 40200.40300.41100.52700.55500.61700.63000.391700 | **11th Floor slab** | 15d | 2027-01-02 | 2027-01-16 |  | start no earlier than 2027-01-02 | RGA - STRUCTURE | 7809982 |
| 2072 | 40200.40300.41100.52700.55500.61700.63000.391700.2639700 | Wall rebar &Form work | 7d | 2027-01-02 | 2027-01-08 | 2070 |  | RGA - STRUCTURE | 7853722 |
| 2073 | 40200.40300.41100.52700.55500.61700.63000.391700.2639800 | Slab formwork & rebar | 7d | 2027-01-09 | 2027-01-15 | 2072 |  | RGA - STRUCTURE | 7853732 |
| 2074 | 40200.40300.41100.52700.55500.61700.63000.391700.2639900 | Concreting | 1d | 2027-01-16 | 2027-01-16 | 2073 |  | RGA - STRUCTURE | 7853742 |
| 2075 | 40200.40300.41100.52700.55500.61700.63000.391600 | **12th Floor slab** | 15d | 2027-01-17 | 2027-01-31 |  | start no earlier than 2027-01-17 | RGA - STRUCTURE | 7809992 |
| 2076 | 40200.40300.41100.52700.55500.61700.63000.391600.2640000 | Wall rebar &Form work | 7d | 2027-01-17 | 2027-01-23 | 2074 |  | RGA - STRUCTURE | 7853752 |
| 2077 | 40200.40300.41100.52700.55500.61700.63000.391600.2640100 | Slab formwork & rebar | 7d | 2027-01-24 | 2027-01-30 | 2076 |  | RGA - STRUCTURE | 7853762 |
| 2078 | 40200.40300.41100.52700.55500.61700.63000.391600.2640200 | Concreting | 1d | 2027-01-31 | 2027-01-31 | 2077 |  | RGA - STRUCTURE | 7853772 |

Notes:
- 2075: AVg Slab Cycle of 21 days

| ID | WBS | Task | Duration | Start | Finish | Predecessors | Constraint | Calendar | Unique_Task_ID |
| --- | --- | --- | --- | --- | --- | --- | --- | --- | --- |
| 2079 | 40200.40300.41100.52700.55500.61700.63000.391500 | **13th Floor slab** | 15d | 2027-02-01 | 2027-02-15 |  | start no earlier than 2027-02-01 | RGA - STRUCTURE | 7810002 |
| 2080 | 40200.40300.41100.52700.55500.61700.63000.391500.2640300 | Wall rebar &Form work | 7d | 2027-02-01 | 2027-02-07 | 2078 |  | RGA - STRUCTURE | 7853782 |
| 2081 | 40200.40300.41100.52700.55500.61700.63000.391500.2640400 | Slab formwork & rebar | 7d | 2027-02-08 | 2027-02-14 | 2080 |  | RGA - STRUCTURE | 7853792 |
| 2082 | 40200.40300.41100.52700.55500.61700.63000.391500.2640500 | Concreting | 1d | 2027-02-15 | 2027-02-15 | 2081 |  | RGA - STRUCTURE | 7853802 |
| 2083 | 40200.40300.41100.52700.55500.61700.63000.391400 | **14th Floor slab** | 15d | 2027-02-16 | 2027-03-02 |  | start no earlier than 2027-02-16 | RGA - STRUCTURE | 7810012 |
| 2084 | 40200.40300.41100.52700.55500.61700.63000.391400.2640600 | Wall rebar &Form work | 7d | 2027-02-16 | 2027-02-22 | 2082 |  | RGA - STRUCTURE | 7853812 |
| 2085 | 40200.40300.41100.52700.55500.61700.63000.391400.2640700 | Slab formwork & rebar | 7d | 2027-02-23 | 2027-03-01 | 2084 |  | RGA - STRUCTURE | 7853822 |
| 2086 | 40200.40300.41100.52700.55500.61700.63000.391400.2640800 | Concreting | 1d | 2027-03-02 | 2027-03-02 | 2085 |  | RGA - STRUCTURE | 7853832 |
| 2087 | 40200.40300.41100.52700.55500.61700.63000.391300 | **15th Floor slab** | 15d | 2027-03-03 | 2027-03-17 |  | start no earlier than 2027-03-03 | RGA - STRUCTURE | 7810022 |
| 2088 | 40200.40300.41100.52700.55500.61700.63000.391300.2640900 | Wall rebar &Form work | 7d | 2027-03-03 | 2027-03-09 | 2086 |  | RGA - STRUCTURE | 7853842 |
| 2089 | 40200.40300.41100.52700.55500.61700.63000.391300.2641000 | Slab formwork & rebar | 7d | 2027-03-10 | 2027-03-16 | 2088 |  | RGA - STRUCTURE | 7853852 |
| 2090 | 40200.40300.41100.52700.55500.61700.63000.391300.2641100 | Concreting | 1d | 2027-03-17 | 2027-03-17 | 2089 |  | RGA - STRUCTURE | 7853862 |
| 2091 | 40200.40300.41100.52700.55500.61700.63000.391200 | **16th Floor slab** | 17d | 2027-03-18 | 2027-04-03 |  | start no earlier than 2027-03-18 | RGA - STRUCTURE | 7810032 |
| 2092 | 40200.40300.41100.52700.55500.61700.63000.391200.2641200 | Wall rebar &Form work | 8d | 2027-03-18 | 2027-03-25 | 2090 |  | RGA - STRUCTURE | 7853872 |
| 2093 | 40200.40300.41100.52700.55500.61700.63000.391200.2641300 | Slab formwork & rebar | 8d | 2027-03-26 | 2027-04-02 | 2092 |  | RGA - STRUCTURE | 7853882 |
| 2094 | 40200.40300.41100.52700.55500.61700.63000.391200.2641400 | Concreting | 1d | 2027-04-03 | 2027-04-03 | 2093 |  | RGA - STRUCTURE | 7853892 |
| 2095 | 40200.40300.41100.52700.55500.61700.63000.391100 | **17th Floor slab** | 17d | 2027-04-04 | 2027-04-20 |  | start no earlier than 2027-04-04 | RGA - STRUCTURE | 7810042 |
| 2096 | 40200.40300.41100.52700.55500.61700.63000.391100.2641500 | Wall rebar &Form work | 8d | 2027-04-04 | 2027-04-11 | 2094 |  | RGA - STRUCTURE | 7853902 |
| 2097 | 40200.40300.41100.52700.55500.61700.63000.391100.2641600 | Slab formwork & rebar | 8d | 2027-04-12 | 2027-04-19 | 2096 |  | RGA - STRUCTURE | 7853912 |
| 2098 | 40200.40300.41100.52700.55500.61700.63000.391100.2641700 | Concreting | 1d | 2027-04-20 | 2027-04-20 | 2097 |  | RGA - STRUCTURE | 7853922 |
| 2099 | 40200.40300.41100.52700.55500.61700.63000.391000 | **18th Floor slab** | 17d | 2027-04-21 | 2027-05-07 |  | start no earlier than 2027-04-21 | RGA - STRUCTURE | 7810052 |
| 2100 | 40200.40300.41100.52700.55500.61700.63000.391000.2641800 | Wall rebar &Form work | 8d | 2027-04-21 | 2027-04-28 | 2098 |  | RGA - STRUCTURE | 7853932 |
| 2101 | 40200.40300.41100.52700.55500.61700.63000.391000.2641900 | Slab formwork & rebar | 8d | 2027-04-29 | 2027-05-06 | 2100 |  | RGA - STRUCTURE | 7853942 |
| 2102 | 40200.40300.41100.52700.55500.61700.63000.391000.2642000 | Concreting | 1d | 2027-05-07 | 2027-05-07 | 2101 |  | RGA - STRUCTURE | 7853952 |

Notes:
- 2079: AVg Slab Cycle of 21 days
- 2083: AVg Slab Cycle of 21 days

| ID | WBS | Task | Duration | Start | Finish | Predecessors | Constraint | Calendar | Unique_Task_ID |
| --- | --- | --- | --- | --- | --- | --- | --- | --- | --- |
| 2103 | 40200.40300.41100.52700.55500.61700.63000.390900 | **19th Floor slab** | 17d | 2027-05-08 | 2027-05-24 |  | start no earlier than 2027-05-08 | RGA - STRUCTURE | 7810062 |
| 2104 | 40200.40300.41100.52700.55500.61700.63000.390900.2642100 | Wall rebar &Form work | 8d | 2027-05-08 | 2027-05-15 | 2102 |  | RGA - STRUCTURE | 7853962 |
| 2105 | 40200.40300.41100.52700.55500.61700.63000.390900.2642200 | Slab formwork & rebar | 8d | 2027-05-16 | 2027-05-23 | 2104 |  | RGA - STRUCTURE | 7853972 |
| 2106 | 40200.40300.41100.52700.55500.61700.63000.390900.2642300 | Concreting | 1d | 2027-05-24 | 2027-05-24 | 2105 |  | RGA - STRUCTURE | 7853982 |
| 2107 | 40200.40300.41100.52700.55500.61700.63000.390800 | **20th Floor slab (Refuge Floor)** | 17d | 2027-05-25 | 2027-06-10 |  | start no earlier than 2027-05-25 | RGA - STRUCTURE | 7810072 |
| 2108 | 40200.40300.41100.52700.55500.61700.63000.390800.2642400 | Wall rebar &Form work | 8d | 2027-05-25 | 2027-06-01 | 2106 |  | RGA - STRUCTURE | 7853992 |
| 2109 | 40200.40300.41100.52700.55500.61700.63000.390800.2642500 | Slab formwork & rebar | 8d | 2027-06-02 | 2027-06-09 | 2108 |  | RGA - STRUCTURE | 7854002 |
| 2110 | 40200.40300.41100.52700.55500.61700.63000.390800.2642600 | Concreting | 1d | 2027-06-10 | 2027-06-10 | 2109 |  | RGA - STRUCTURE | 7854012 |
| 2111 | 40200.40300.41100.52700.55500.61700.63000.390700 | **21th Floor slab** | 17d | 2027-06-11 | 2027-06-27 |  | start no earlier than 2027-06-11 | RGA - STRUCTURE | 7810082 |
| 2112 | 40200.40300.41100.52700.55500.61700.63000.390700.2642700 | Wall rebar &Form work | 8d | 2027-06-11 | 2027-06-18 | 2110 |  | RGA - STRUCTURE | 7854022 |
| 2113 | 40200.40300.41100.52700.55500.61700.63000.390700.2642800 | Slab formwork & rebar | 8d | 2027-06-19 | 2027-06-26 | 2112 |  | RGA - STRUCTURE | 7854032 |
| 2114 | 40200.40300.41100.52700.55500.61700.63000.390700.2642900 | Concreting | 1d | 2027-06-27 | 2027-06-27 | 2113 |  | RGA - STRUCTURE | 7854042 |
| 2115 | 40200.40300.41100.52700.55500.61700.63000.390600 | **22th Floor slab** | 17d | 2027-06-28 | 2027-07-14 |  | start no earlier than 2027-06-28 | RGA - STRUCTURE | 7810092 |
| 2116 | 40200.40300.41100.52700.55500.61700.63000.390600.2643000 | Wall rebar &Form work | 8d | 2027-06-28 | 2027-07-05 | 2114 |  | RGA - STRUCTURE | 7854052 |
| 2117 | 40200.40300.41100.52700.55500.61700.63000.390600.2643100 | Slab formwork & rebar | 8d | 2027-07-06 | 2027-07-13 | 2116 |  | RGA - STRUCTURE | 7854062 |
| 2118 | 40200.40300.41100.52700.55500.61700.63000.390600.2643200 | Concreting | 1d | 2027-07-14 | 2027-07-14 | 2117 |  | RGA - STRUCTURE | 7854072 |
| 2119 | 40200.40300.41100.52700.55500.61700.63000.390500 | **23th Floor slab** | 17d | 2027-07-15 | 2027-07-31 |  | start no earlier than 2027-07-15 | RGA - STRUCTURE | 7810102 |
| 2120 | 40200.40300.41100.52700.55500.61700.63000.390500.2643300 | Wall rebar &Form work | 8d | 2027-07-15 | 2027-07-22 | 2118 |  | RGA - STRUCTURE | 7854082 |
| 2121 | 40200.40300.41100.52700.55500.61700.63000.390500.2643400 | Slab formwork & rebar | 8d | 2027-07-23 | 2027-07-30 | 2120 |  | RGA - STRUCTURE | 7854092 |
| 2122 | 40200.40300.41100.52700.55500.61700.63000.390500.2643500 | Concreting | 1d | 2027-07-31 | 2027-07-31 | 2121 |  | RGA - STRUCTURE | 7854102 |
| 2123 | 40200.40300.41100.52700.55500.61700.63000.390400 | **24th Floor slab** | 17d | 2027-08-01 | 2027-08-17 |  | start no earlier than 2027-08-01 | RGA - STRUCTURE | 7810112 |
| 2124 | 40200.40300.41100.52700.55500.61700.63000.390400.2643600 | Wall rebar &Form work | 8d | 2027-08-01 | 2027-08-08 | 2122 |  | RGA - STRUCTURE | 7854112 |
| 2125 | 40200.40300.41100.52700.55500.61700.63000.390400.2643700 | Slab formwork & rebar | 8d | 2027-08-09 | 2027-08-16 | 2124 |  | RGA - STRUCTURE | 7854122 |
| 2126 | 40200.40300.41100.52700.55500.61700.63000.390400.2643800 | Concreting | 1d | 2027-08-17 | 2027-08-17 | 2125 |  | RGA - STRUCTURE | 7854132 |

| ID | WBS | Task | Duration | Start | Finish | Predecessors | Constraint | Calendar | Unique_Task_ID |
| --- | --- | --- | --- | --- | --- | --- | --- | --- | --- |
| 2127 | 40200.40300.41100.52700.55500.61700.63000.390300 | **25th Floor slab** | 17d | 2027-08-18 | 2027-09-03 |  | start no earlier than 2027-08-18 | RGA - STRUCTURE | 7810122 |
| 2128 | 40200.40300.41100.52700.55500.61700.63000.390300.2643900 | Wall rebar &Form work | 8d | 2027-08-18 | 2027-08-25 | 2126 |  | RGA - STRUCTURE | 7854142 |
| 2129 | 40200.40300.41100.52700.55500.61700.63000.390300.2644000 | Slab formwork & rebar | 8d | 2027-08-26 | 2027-09-02 | 2128 |  | RGA - STRUCTURE | 7854152 |
| 2130 | 40200.40300.41100.52700.55500.61700.63000.390300.2644100 | Concreting | 1d | 2027-09-03 | 2027-09-03 | 2129 |  | RGA - STRUCTURE | 7854162 |
| 2131 | 40200.40300.41100.52700.55500.61700.63000.390200 | **Terrace Floor slab work** | 17d | 2027-09-04 | 2027-09-20 |  | start no earlier than 2027-09-04 | RGA - STRUCTURE | 7810152 |
| 2132 | 40200.40300.41100.52700.55500.61700.63000.390200.2644200 | Wall rebar &Form work | 8d | 2027-09-04 | 2027-09-11 | 2130 |  | RGA - STRUCTURE | 7854232 |
| 2133 | 40200.40300.41100.52700.55500.61700.63000.390200.2644300 | Slab formwork & rebar | 8d | 2027-09-12 | 2027-09-19 | 2132 |  | RGA - STRUCTURE | 7854242 |
| 2134 | 40200.40300.41100.52700.55500.61700.63000.390200.2644400 | Concreting | 1d | 2027-09-20 | 2027-09-20 | 2133 |  | RGA - STRUCTURE | 7854252 |
| 2135 | 40200.40300.41100.52700.55500.61700.253500 | **RCC work above Terrace** | 49d | 2027-09-21 | 2027-11-08 |  | start no earlier than 2027-09-21 | RGA - STRUCTURE | 7806962 |
| 2136 | 40200.40300.41100.52700.55500.61700.253500.372200 | **STAIRCASE & OHT CORE** | 49d | 2027-09-21 | 2027-11-08 |  | start no earlier than 2027-09-21 | RGA - STRUCTURE | 7808492 |
| 2137 | 40200.40300.41100.52700.55500.61700.253500.372200.2644500 | STAIRCASE HEAD ROOM | 10d | 2027-09-21 | 2027-09-30 | 2134 |  | RGA - STRUCTURE | 7854262 |
| 2138 | 40200.40300.41100.52700.55500.61700.253500.372200.2644600 | OHT | 25d | 2027-10-01 | 2027-10-25 | 2137 |  | RGA - STRUCTURE | 7854272 |
| 2139 | 40200.40300.41100.52700.55500.61700.253500.372200.2644700 | SHAFT COVERING SLAB | 10d | 2027-09-21 | 2027-09-30 | 2134 |  | RGA - STRUCTURE | 7854282 |
| 2140 | 40200.40300.41100.52700.55500.61700.253500.372200.2644800 | DESHUTTERING OF OHT TOP SLAB | 7d | 2027-11-02 | 2027-11-08 | 2138FS+7d |  | RGA - STRUCTURE | 7854292 |
| 2141 | 40200.40300.41100.52700.55500.61700.253500.390100 | **LMR BOTTOM & TOP SLAB** | 43d | 2027-09-21 | 2027-11-02 |  | start no earlier than 2027-09-21 | RGA - STRUCTURE | 7810162 |
| 2142 | 40200.40300.41100.52700.55500.61700.253500.390100.2644900 | LMR COLUMNS / WALLS | 15d | 2027-09-21 | 2027-10-05 | 2134 |  | RGA - STRUCTURE | 7854302 |
| 2143 | 40200.40300.41100.52700.55500.61700.253500.390100.2645000 | LMR TOP SLAB | 20d | 2027-10-06 | 2027-10-25 | 2142 |  | RGA - STRUCTURE | 7854312 |
| 2144 | 40200.40300.41100.52700.55500.61700.253500.390100.2645100 | DESHUTTERING | 8d | 2027-10-26 | 2027-11-02 | 2143 |  | RGA - STRUCTURE | 7854322 |
| 2145 | 40200.40300.41100.52700.55500.59000 | **Civil Finishing works (Brick work, Plaster,conduiting, concled plumbing, waterproofing)** | 827d | 2025-11-30 | 2028-03-05 |  | start no earlier than 2025-11-30 | RGA -FINISHING | 7362185 |
| 2146 | 40200.40300.41100.52700.55500.59000.60900 | **Flat finishing works** | 731d | 2025-11-30 | 2027-11-30 |  | start no earlier than 2025-11-30 | RGA -FINISHING | 7362205 |
| 2147 | 40200.40300.41100.52700.55500.59000.60900.265600 | **Ground FLOOR** | 210d | 2026-01-29 | 2026-08-26 |  | start no earlier than 2026-01-29 | RGA -FINISHING | 7807592 |
| 2148 | 40200.40300.41100.52700.55500.59000.60900.265600.2645200 | BALCONY RAILING FIXING | 9d | 2026-06-04 | 2026-06-12 | 2042FS+15d |  | RGA -FINISHING | 7854332 |
| 2149 | 40200.40300.41100.52700.55500.59000.60900.265600.2645300 | Block work | 8d | 2026-08-19 | 2026-08-26 | 2153 |  | RGA -FINISHING | 7854342 |
| 2150 | 40200.40300.41100.52700.55500.59000.60900.265600.2645400 | CONCEALED ELEC CONDUITING & ITS FINISHING | 5d | 2026-01-29 | 2026-02-02 | 1994 |  | RGA -FINISHING | 7854352 |
| 2151 | 40200.40300.41100.52700.55500.59000.60900.265600.2645500 | PLASTER APPLICATION | 6d | 2026-07-28 | 2026-08-02 | 2342FS+30d |  | RGA -FINISHING | 7854362 |
| 2152 | 40200.40300.41100.52700.55500.59000.60900.265600.2645600 | CONCEALED PLUMBING | 8d | 2026-08-03 | 2026-08-10 | 2151 |  | RGA -FINISHING | 7854372 |
| 2153 | 40200.40300.41100.52700.55500.59000.60900.265600.2645700 | WATERPROOFING WORK FOR TOILETS, KITCHEN SUNK & PLANTERS | 8d | 2026-08-11 | 2026-08-18 | 2152 |  | RGA -FINISHING | 7854382 |

Notes:
- 2131: AVg Slab Cycle of 21 days

| ID | WBS | Task | Duration | Start | Finish | Predecessors | Constraint | Calendar | Unique_Task_ID |
| --- | --- | --- | --- | --- | --- | --- | --- | --- | --- |
| 2154 | 40200.40300.41100.52700.55500.59000.60900.265700 | **1ST FLOOR** | 218d | 2026-03-01 | 2026-10-04 |  | start no earlier than 2026-03-01 | RGA -FINISHING | 7807602 |
| 2155 | 40200.40300.41100.52700.55500.59000.60900.265700.2645800 | BALCONY RAILING FIXING | 9d | 2026-07-29 | 2026-08-06 | 2046FS+17.5d |  | RGA -FINISHING | 7854392 |
| 2156 | 40200.40300.41100.52700.55500.59000.60900.265700.2645900 | Block work | 8d | 2026-09-27 | 2026-10-04 | 2160 |  | RGA -FINISHING | 7854402 |
| 2157 | 40200.40300.41100.52700.55500.59000.60900.265700.2646000 | CONCEALED ELEC CONDUITING & ITS FINISHING | 5d | 2026-03-01 | 2026-03-05 | 2036FS-5d |  | RGA -FINISHING | 7854412 |
| 2158 | 40200.40300.41100.52700.55500.59000.60900.265700.2646100 | PLASTER APPLICATION | 6d | 2026-09-05 | 2026-09-10 | 2355FS+23d |  | RGA -FINISHING | 7854422 |
| 2159 | 40200.40300.41100.52700.55500.59000.60900.265700.2646200 | CONCEALED PLUMBING | 8d | 2026-09-11 | 2026-09-18 | 2158 |  | RGA -FINISHING | 7854432 |
| 2160 | 40200.40300.41100.52700.55500.59000.60900.265700.2646300 | WATERPROOFING WORK FOR TOILETS, KITCHEN SUNK & PLANTERS | 8d | 2026-09-19 | 2026-09-26 | 2159 |  | RGA -FINISHING | 7854442 |
| 2161 | 40200.40300.41100.52700.55500.59000.60900.265800 | **2nd FLOOR** | 221d | 2026-03-31 | 2026-11-06 |  | start no earlier than 2026-03-31 | RGA -FINISHING | 7362915 |
| 2162 | 40200.40300.41100.52700.55500.59000.60900.265800.2646400 | BALCONY RAILING FIXING | 9d | 2026-09-08 | 2026-09-16 | 2050FS+15d |  | RGA -FINISHING | 7854452 |
| 2163 | 40200.40300.41100.52700.55500.59000.60900.265800.2646500 | Block work | 8d | 2026-10-30 | 2026-11-06 | 2167 |  | RGA -FINISHING | 7854462 |
| 2164 | 40200.40300.41100.52700.55500.59000.60900.265800.2646600 | CONCEALED ELEC CONDUITING & ITS FINISHING | 5d | 2026-03-31 | 2026-04-04 | 2039FS-5d |  | RGA -FINISHING | 7854472 |
| 2165 | 40200.40300.41100.52700.55500.59000.60900.265800.2646700 | PLASTER APPLICATION | 6d | 2026-10-08 | 2026-10-13 | 2368FS+15d |  | RGA -FINISHING | 7854482 |
| 2166 | 40200.40300.41100.52700.55500.59000.60900.265800.2646800 | CONCEALED PLUMBING | 8d | 2026-10-14 | 2026-10-21 | 2165 |  | RGA -FINISHING | 7854492 |
| 2167 | 40200.40300.41100.52700.55500.59000.60900.265800.2646900 | WATERPROOFING WORK FOR TOILETS, KITCHEN SUNK & PLANTERS | 8d | 2026-10-22 | 2026-10-29 | 2166 |  | RGA -FINISHING | 7854502 |
| 2168 | 40200.40300.41100.52700.55500.59000.60900.265900 | **3rd FLOOR** | 200d | 2026-05-15 | 2026-11-30 |  | start no earlier than 2026-05-15 | RGA -FINISHING | 7362925 |
| 2169 | 40200.40300.41100.52700.55500.59000.60900.265900.2647000 | BALCONY RAILING FIXING | 9d | 2026-10-12 | 2026-10-20 | 2054FS+8d |  | RGA -FINISHING | 7854512 |
| 2170 | 40200.40300.41100.52700.55500.59000.60900.265900.2647100 | Block work | 8d | 2026-11-23 | 2026-11-30 | 2174 |  | RGA -FINISHING | 7854522 |
| 2171 | 40200.40300.41100.52700.55500.59000.60900.265900.2647200 | CONCEALED ELEC CONDUITING & ITS FINISHING | 5d | 2026-05-15 | 2026-05-19 | 2042FS-5d |  | RGA -FINISHING | 7854532 |
| 2172 | 40200.40300.41100.52700.55500.59000.60900.265900.2647300 | PLASTER APPLICATION | 6d | 2026-11-01 | 2026-11-06 | 2381FS+5d |  | RGA -FINISHING | 7854542 |
| 2173 | 40200.40300.41100.52700.55500.59000.60900.265900.2647400 | CONCEALED PLUMBING | 8d | 2026-11-07 | 2026-11-14 | 2172 |  | RGA -FINISHING | 7854552 |
| 2174 | 40200.40300.41100.52700.55500.59000.60900.265900.2647500 | WATERPROOFING WORK FOR TOILETS, KITCHEN SUNK & PLANTERS | 8d | 2026-11-15 | 2026-11-22 | 2173 |  | RGA -FINISHING | 7854562 |
| 2175 | 40200.40300.41100.52700.55500.59000.60900.266000 | **4th FLOOR** | 186d | 2026-07-02 | 2027-01-03 |  | start no earlier than 2026-07-02 | RGA -FINISHING | 7362935 |
| 2176 | 40200.40300.41100.52700.55500.59000.60900.266000.2647600 | BALCONY RAILING FIXING | 9d | 2026-11-16 | 2026-11-24 | 2058FS+15d |  | RGA -FINISHING | 7854572 |
| 2177 | 40200.40300.41100.52700.55500.59000.60900.266000.2647700 | Block work | 8d | 2026-12-27 | 2027-01-03 | 2181 |  | RGA -FINISHING | 7854582 |
| 2178 | 40200.40300.41100.52700.55500.59000.60900.266000.2647800 | CONCEALED ELEC CONDUITING & ITS FINISHING | 5d | 2026-07-02 | 2026-07-06 | 2046FS-9.5d |  | RGA -FINISHING | 7854592 |
| 2179 | 40200.40300.41100.52700.55500.59000.60900.266000.2647900 | PLASTER APPLICATION | 6d | 2026-12-05 | 2026-12-10 | 2394FS+4d |  | RGA -FINISHING | 7854602 |
| 2180 | 40200.40300.41100.52700.55500.59000.60900.266000.2648000 | CONCEALED PLUMBING | 8d | 2026-12-11 | 2026-12-18 | 2179 |  | RGA -FINISHING | 7854612 |
| 2181 | 40200.40300.41100.52700.55500.59000.60900.266000.2648100 | WATERPROOFING WORK FOR TOILETS, KITCHEN SUNK & PLANTERS | 8d | 2026-12-19 | 2026-12-26 | 2180 |  | RGA -FINISHING | 7854622 |

| ID | WBS | Task | Duration | Start | Finish | Predecessors | Constraint | Calendar | Unique_Task_ID |
| --- | --- | --- | --- | --- | --- | --- | --- | --- | --- |
| 2182 | 40200.40300.41100.52700.55500.59000.60900.266100 | **5th FLOOR** | 170d | 2026-08-19 | 2027-02-04 |  | start no earlier than 2026-08-19 | RGA -FINISHING | 7362945 |
| 2183 | 40200.40300.41100.52700.55500.59000.60900.266100.2648200 | BALCONY RAILING FIXING | 9d | 2026-12-18 | 2026-12-26 | 2062FS+28.5d |  | RGA -FINISHING | 7854632 |
| 2184 | 40200.40300.41100.52700.55500.59000.60900.266100.2648300 | Block work | 8d | 2027-01-28 | 2027-02-04 | 2188 |  | RGA -FINISHING | 7854642 |
| 2185 | 40200.40300.41100.52700.55500.59000.60900.266100.2648400 | CONCEALED ELEC CONDUITING & ITS FINISHING | 5d | 2026-08-19 | 2026-08-23 | 2050FS-5d |  | RGA -FINISHING | 7854652 |
| 2186 | 40200.40300.41100.52700.55500.59000.60900.266100.2648500 | PLASTER APPLICATION | 6d | 2027-01-06 | 2027-01-11 | 2407FS+4d |  | RGA -FINISHING | 7854662 |
| 2187 | 40200.40300.41100.52700.55500.59000.60900.266100.2648600 | CONCEALED PLUMBING | 8d | 2027-01-12 | 2027-01-19 | 2186 |  | RGA -FINISHING | 7854672 |
| 2188 | 40200.40300.41100.52700.55500.59000.60900.266100.2648700 | WATERPROOFING WORK FOR TOILETS, KITCHEN SUNK & PLANTERS | 8d | 2027-01-20 | 2027-01-27 | 2187 |  | RGA -FINISHING | 7854682 |
| 2189 | 40200.40300.41100.52700.55500.59000.60900.266200 | **6th FLOOR** | 145d | 2026-09-28 | 2027-02-19 |  | start no earlier than 2026-09-28 | RGA -FINISHING | 7362955 |
| 2190 | 40200.40300.41100.52700.55500.59000.60900.266200.2648800 | BALCONY RAILING FIXING | 9d | 2027-01-02 | 2027-01-10 | 2066FS+15d |  | RGA -FINISHING | 7854692 |
| 2191 | 40200.40300.41100.52700.55500.59000.60900.266200.2648900 | Block work | 8d | 2027-02-12 | 2027-02-19 | 2195 |  | RGA -FINISHING | 7854702 |
| 2192 | 40200.40300.41100.52700.55500.59000.60900.266200.2649000 | CONCEALED ELEC CONDUITING & ITS FINISHING | 5d | 2026-09-28 | 2026-10-02 | 2054FS-6d |  | RGA -FINISHING | 7854712 |
| 2193 | 40200.40300.41100.52700.55500.59000.60900.266200.2649100 | PLASTER APPLICATION | 6d | 2027-01-21 | 2027-01-26 | 2420FS+4d |  | RGA -FINISHING | 7854722 |
| 2194 | 40200.40300.41100.52700.55500.59000.60900.266200.2649200 | CONCEALED PLUMBING | 8d | 2027-01-27 | 2027-02-03 | 2193 |  | RGA -FINISHING | 7854732 |
| 2195 | 40200.40300.41100.52700.55500.59000.60900.266200.2649300 | WATERPROOFING WORK FOR TOILETS, KITCHEN SUNK & PLANTERS | 8d | 2027-02-04 | 2027-02-11 | 2194 |  | RGA -FINISHING | 7854742 |
| 2196 | 40200.40300.41100.52700.55500.59000.60900.266300 | **7th FLOOR** | 132d | 2026-10-27 | 2027-03-07 |  | start no earlier than 2026-10-27 | RGA -FINISHING | 7362965 |
| 2197 | 40200.40300.41100.52700.55500.59000.60900.266300.2649400 | BALCONY RAILING FIXING | 9d | 2027-01-18 | 2027-01-26 | 2070FS+16d |  | RGA -FINISHING | 7854752 |
| 2198 | 40200.40300.41100.52700.55500.59000.60900.266300.2649500 | Block work | 8d | 2027-02-28 | 2027-03-07 | 2202 |  | RGA -FINISHING | 7854762 |
| 2199 | 40200.40300.41100.52700.55500.59000.60900.266300.2649600 | CONCEALED ELEC CONDUITING & ITS FINISHING | 5d | 2026-10-27 | 2026-10-31 | 2058FS-5d |  | RGA -FINISHING | 7854772 |
| 2200 | 40200.40300.41100.52700.55500.59000.60900.266300.2649700 | PLASTER APPLICATION | 6d | 2027-02-06 | 2027-02-11 | 2433FS+4d |  | RGA -FINISHING | 7854782 |
| 2201 | 40200.40300.41100.52700.55500.59000.60900.266300.2649800 | CONCEALED PLUMBING | 8d | 2027-02-12 | 2027-02-19 | 2200 |  | RGA -FINISHING | 7854792 |
| 2202 | 40200.40300.41100.52700.55500.59000.60900.266300.2649900 | WATERPROOFING WORK FOR TOILETS, KITCHEN SUNK & PLANTERS | 8d | 2027-02-20 | 2027-02-27 | 2201 |  | RGA -FINISHING | 7854802 |
| 2203 | 40200.40300.41100.52700.55500.59000.60900.266400 | **8th FLOOR** | 129d | 2026-11-13 | 2027-03-21 |  | start no earlier than 2026-11-13 | RGA -FINISHING | 7362975 |
| 2204 | 40200.40300.41100.52700.55500.59000.60900.266400.2650000 | BALCONY RAILING FIXING | 9d | 2027-02-01 | 2027-02-09 | 2074FS+15d |  | RGA -FINISHING | 7854812 |
| 2205 | 40200.40300.41100.52700.55500.59000.60900.266400.2650100 | Block work | 8d | 2027-03-14 | 2027-03-21 | 2209 |  | RGA -FINISHING | 7854822 |
| 2206 | 40200.40300.41100.52700.55500.59000.60900.266400.2650200 | CONCEALED ELEC CONDUITING & ITS FINISHING | 5d | 2026-11-13 | 2026-11-17 | 2062FS-6.5d |  | RGA -FINISHING | 7854832 |
| 2207 | 40200.40300.41100.52700.55500.59000.60900.266400.2650300 | PLASTER APPLICATION | 6d | 2027-02-20 | 2027-02-25 | 2446FS+4d |  | RGA -FINISHING | 7854842 |
| 2208 | 40200.40300.41100.52700.55500.59000.60900.266400.2650400 | CONCEALED PLUMBING | 8d | 2027-02-26 | 2027-03-05 | 2207 |  | RGA -FINISHING | 7854852 |
| 2209 | 40200.40300.41100.52700.55500.59000.60900.266400.2650500 | WATERPROOFING WORK FOR TOILETS, KITCHEN SUNK & PLANTERS | 8d | 2027-03-06 | 2027-03-13 | 2208 |  | RGA -FINISHING | 7854862 |

| ID | WBS | Task | Duration | Start | Finish | Predecessors | Constraint | Calendar | Unique_Task_ID |
| --- | --- | --- | --- | --- | --- | --- | --- | --- | --- |
| 2210 | 40200.40300.41100.52700.55500.59000.60900.266500 | **9th FLOOR** | 117d | 2026-12-10 | 2027-04-05 |  | start no earlier than 2026-12-10 | RGA -FINISHING | 7362985 |
| 2211 | 40200.40300.41100.52700.55500.59000.60900.266500.2650600 | BALCONY RAILING FIXING | 9d | 2027-02-16 | 2027-02-24 | 2078FS+15d |  | RGA -FINISHING | 7854872 |
| 2212 | 40200.40300.41100.52700.55500.59000.60900.266500.2650700 | Block work | 8d | 2027-03-29 | 2027-04-05 | 2216 |  | RGA -FINISHING | 7854882 |
| 2213 | 40200.40300.41100.52700.55500.59000.60900.266500.2650800 | CONCEALED ELEC CONDUITING & ITS FINISHING | 5d | 2026-12-10 | 2026-12-14 | 2066FS-8d |  | RGA -FINISHING | 7854892 |
| 2214 | 40200.40300.41100.52700.55500.59000.60900.266500.2650900 | PLASTER APPLICATION | 6d | 2027-03-07 | 2027-03-12 | 2459FS+4d |  | RGA -FINISHING | 7854902 |
| 2215 | 40200.40300.41100.52700.55500.59000.60900.266500.2651000 | CONCEALED PLUMBING | 8d | 2027-03-13 | 2027-03-20 | 2214 |  | RGA -FINISHING | 7854912 |
| 2216 | 40200.40300.41100.52700.55500.59000.60900.266500.2651100 | WATERPROOFING WORK FOR TOILETS, KITCHEN SUNK & PLANTERS | 8d | 2027-03-21 | 2027-03-28 | 2215 |  | RGA -FINISHING | 7854922 |
| 2217 | 40200.40300.41100.52700.55500.59000.60900.266600 | **10th FLOOR** | 115d | 2026-12-28 | 2027-04-21 |  | start no earlier than 2026-12-28 | RGA -FINISHING | 7362995 |
| 2218 | 40200.40300.41100.52700.55500.59000.60900.266600.2651200 | BALCONY RAILING FIXING | 9d | 2027-03-04 | 2027-03-12 | 2082FS+16d |  | RGA -FINISHING | 7854932 |
| 2219 | 40200.40300.41100.52700.55500.59000.60900.266600.2651300 | Block work | 8d | 2027-04-14 | 2027-04-21 | 2223 |  | RGA -FINISHING | 7854942 |
| 2220 | 40200.40300.41100.52700.55500.59000.60900.266600.2651400 | CONCEALED ELEC CONDUITING & ITS FINISHING | 5d | 2026-12-28 | 2027-01-01 | 2070FS-5d |  | RGA -FINISHING | 7854952 |
| 2221 | 40200.40300.41100.52700.55500.59000.60900.266600.2651500 | PLASTER APPLICATION | 6d | 2027-03-23 | 2027-03-28 | 2472FS+4d |  | RGA -FINISHING | 7854962 |
| 2222 | 40200.40300.41100.52700.55500.59000.60900.266600.2651600 | CONCEALED PLUMBING | 8d | 2027-03-29 | 2027-04-05 | 2221 |  | RGA -FINISHING | 7854972 |
| 2223 | 40200.40300.41100.52700.55500.59000.60900.266600.2651700 | WATERPROOFING WORK FOR TOILETS, KITCHEN SUNK & PLANTERS | 8d | 2027-04-06 | 2027-04-13 | 2222 |  | RGA -FINISHING | 7854982 |
| 2224 | 40200.40300.41100.52700.55500.59000.60900.266700 | **11th FLOOR** | 114d | 2027-01-12 | 2027-05-05 |  | start no earlier than 2027-01-12 | RGA -FINISHING | 7363005 |
| 2225 | 40200.40300.41100.52700.55500.59000.60900.266700.2651800 | BALCONY RAILING FIXING | 9d | 2027-03-18 | 2027-03-26 | 2086FS+15d |  | RGA -FINISHING | 7854992 |
| 2226 | 40200.40300.41100.52700.55500.59000.60900.266700.2651900 | Block work | 8d | 2027-04-28 | 2027-05-05 | 2230 |  | RGA -FINISHING | 7855002 |
| 2227 | 40200.40300.41100.52700.55500.59000.60900.266700.2652000 | CONCEALED ELEC CONDUITING & ITS FINISHING | 5d | 2027-01-12 | 2027-01-16 | 2074FS-5d |  | RGA -FINISHING | 7855012 |
| 2228 | 40200.40300.41100.52700.55500.59000.60900.266700.2652100 | PLASTER APPLICATION | 6d | 2027-04-06 | 2027-04-11 | 2485FS+4d |  | RGA -FINISHING | 7855022 |
| 2229 | 40200.40300.41100.52700.55500.59000.60900.266700.2652200 | CONCEALED PLUMBING | 8d | 2027-04-12 | 2027-04-19 | 2228 |  | RGA -FINISHING | 7855032 |
| 2230 | 40200.40300.41100.52700.55500.59000.60900.266700.2652300 | WATERPROOFING WORK FOR TOILETS, KITCHEN SUNK & PLANTERS | 8d | 2027-04-20 | 2027-04-27 | 2229 |  | RGA -FINISHING | 7855042 |
| 2231 | 40200.40300.41100.52700.55500.59000.60900.266800 | **12th FLOOR** | 106d | 2027-01-27 | 2027-05-12 |  | start no earlier than 2027-01-27 | RGA -FINISHING | 7363015 |
| 2232 | 40200.40300.41100.52700.55500.59000.60900.266800.2652400 | BALCONY RAILING FIXING | 9d | 2027-04-02 | 2027-04-10 | 2090FS+15d |  | RGA -FINISHING | 7855052 |
| 2233 | 40200.40300.41100.52700.55500.59000.60900.266800.2652500 | Block work | 8d | 2027-05-05 | 2027-05-12 | 2236 |  | RGA -FINISHING | 7855062 |
| 2234 | 40200.40300.41100.52700.55500.59000.60900.266800.2652600 | CONCEALED ELEC CONDUITING & ITS FINISHING | 5d | 2027-01-27 | 2027-01-31 | 2078FS-5d |  | RGA -FINISHING | 7855072 |
| 2235 | 40200.40300.41100.52700.55500.59000.60900.266800.2652700 | PLASTER APPLICATION | 6d | 2027-04-21 | 2027-04-26 | 2498FS+4d |  | RGA -FINISHING | 7855082 |
| 2236 | 40200.40300.41100.52700.55500.59000.60900.266800.2652800 | CONCEALED PLUMBING | 8d | 2027-04-27 | 2027-05-04 | 2235 |  | RGA -FINISHING | 7855092 |
| 2237 | 40200.40300.41100.52700.55500.59000.60900.266800.2652900 | WATERPROOFING WORK FOR TOILETS, KITCHEN SUNK & PLANTERS | 8d | 2027-05-05 | 2027-05-12 | 2236 |  | RGA -FINISHING | 7855102 |

| ID | WBS | Task | Duration | Start | Finish | Predecessors | Constraint | Calendar | Unique_Task_ID |
| --- | --- | --- | --- | --- | --- | --- | --- | --- | --- |
| 2238 | 40200.40300.41100.52700.55500.59000.60900.266900 | **13th FLOOR** | 127d | 2027-02-11 | 2027-06-17 |  | start no earlier than 2027-02-11 | RGA -FINISHING | 7363025 |
| 2239 | 40200.40300.41100.52700.55500.59000.60900.266900.2653000 | BALCONY RAILING FIXING | 9d | 2027-04-14 | 2027-04-22 | 2094FS+10d |  | RGA -FINISHING | 7855112 |
| 2240 | 40200.40300.41100.52700.55500.59000.60900.266900.2653100 | Block work | 8d | 2027-06-10 | 2027-06-17 | 2244 |  | RGA -FINISHING | 7371245 |
| 2241 | 40200.40300.41100.52700.55500.59000.60900.266900.2653200 | CONCEALED ELEC CONDUITING & ITS FINISHING | 5d | 2027-02-11 | 2027-02-15 | 2082FS-5d |  | RGA -FINISHING | 7371255 |
| 2242 | 40200.40300.41100.52700.55500.59000.60900.266900.2653300 | PLASTER APPLICATION | 15d | 2027-05-05 | 2027-05-19 | 2511FS+4d |  | RGA -FINISHING | 7371265 |
| 2243 | 40200.40300.41100.52700.55500.59000.60900.266900.2653400 | CONCEALED PLUMBING | 9d | 2027-05-20 | 2027-05-28 | 2242 |  | RGA -FINISHING | 7855122 |
| 2244 | 40200.40300.41100.52700.55500.59000.60900.266900.2653500 | WATERPROOFING WORK FOR TOILETS, KITCHEN SUNK & PLANTERS | 12d | 2027-05-29 | 2027-06-09 | 2243 |  | RGA -FINISHING | 7855132 |
| 2245 | 40200.40300.41100.52700.55500.59000.60900.267000 | **14th FLOOR** | 127d | 2027-02-26 | 2027-07-02 |  | start no earlier than 2027-02-26 | RGA -FINISHING | 7807612 |
| 2246 | 40200.40300.41100.52700.55500.59000.60900.267000.2653600 | BALCONY RAILING FIXING | 9d | 2027-05-03 | 2027-05-11 | 2098FS+12d |  | RGA -FINISHING | 7855142 |
| 2247 | 40200.40300.41100.52700.55500.59000.60900.267000.2653700 | Block work | 8d | 2027-06-25 | 2027-07-02 | 2251 |  | RGA -FINISHING | 7855152 |
| 2248 | 40200.40300.41100.52700.55500.59000.60900.267000.2653800 | CONCEALED ELEC CONDUITING & ITS FINISHING | 5d | 2027-02-26 | 2027-03-02 | 2086FS-5d |  | RGA -FINISHING | 7855162 |
| 2249 | 40200.40300.41100.52700.55500.59000.60900.267000.2653900 | PLASTER APPLICATION | 15d | 2027-05-20 | 2027-06-03 | 2524 |  | RGA -FINISHING | 7855172 |
| 2250 | 40200.40300.41100.52700.55500.59000.60900.267000.2654000 | CONCEALED PLUMBING | 9d | 2027-06-04 | 2027-06-12 | 2249 |  | RGA -FINISHING | 7855182 |
| 2251 | 40200.40300.41100.52700.55500.59000.60900.267000.2654100 | WATERPROOFING WORK FOR TOILETS, KITCHEN SUNK & PLANTERS | 12d | 2027-06-13 | 2027-06-24 | 2250 |  | RGA -FINISHING | 7855192 |
| 2252 | 40200.40300.41100.52700.55500.59000.60900.267100 | **15th FLOOR** | 132d | 2027-03-13 | 2027-07-22 |  | start no earlier than 2027-03-13 | RGA -FINISHING | 7807622 |
| 2253 | 40200.40300.41100.52700.55500.59000.60900.267100.2654200 | BALCONY RAILING FIXING | 9d | 2027-05-23 | 2027-05-31 | 2102FS+15d |  | RGA -FINISHING | 7855202 |
| 2254 | 40200.40300.41100.52700.55500.59000.60900.267100.2654300 | Block work | 8d | 2027-07-15 | 2027-07-22 | 2258 |  | RGA -FINISHING | 7855212 |
| 2255 | 40200.40300.41100.52700.55500.59000.60900.267100.2654400 | CONCEALED ELEC CONDUITING & ITS FINISHING | 5d | 2027-03-13 | 2027-03-17 | 2090FS-5d |  | RGA -FINISHING | 7855222 |
| 2256 | 40200.40300.41100.52700.55500.59000.60900.267100.2654500 | PLASTER APPLICATION | 15d | 2027-06-09 | 2027-06-23 | 2537 |  | RGA -FINISHING | 7855232 |
| 2257 | 40200.40300.41100.52700.55500.59000.60900.267100.2654600 | CONCEALED PLUMBING | 9d | 2027-06-24 | 2027-07-02 | 2256 |  | RGA -FINISHING | 7855242 |
| 2258 | 40200.40300.41100.52700.55500.59000.60900.267100.2654700 | WATERPROOFING WORK FOR TOILETS, KITCHEN SUNK & PLANTERS | 12d | 2027-07-03 | 2027-07-14 | 2257 |  | RGA -FINISHING | 7855252 |
| 2259 | 40200.40300.41100.52700.55500.59000.60900.267200 | **16th FLOOR** | 132d | 2027-03-30 | 2027-08-08 |  | start no earlier than 2027-03-30 | RGA -FINISHING | 7807632 |
| 2260 | 40200.40300.41100.52700.55500.59000.60900.267200.2654800 | BALCONY RAILING FIXING | 9d | 2027-06-09 | 2027-06-17 | 2106FS+15d |  | RGA -FINISHING | 7855262 |
| 2261 | 40200.40300.41100.52700.55500.59000.60900.267200.2654900 | Block work | 8d | 2027-08-01 | 2027-08-08 | 2265 |  | RGA -FINISHING | 7855272 |
| 2262 | 40200.40300.41100.52700.55500.59000.60900.267200.2655000 | CONCEALED ELEC CONDUITING & ITS FINISHING | 5d | 2027-03-30 | 2027-04-03 | 2094FS-5d |  | RGA -FINISHING | 7855282 |
| 2263 | 40200.40300.41100.52700.55500.59000.60900.267200.2655100 | PLASTER APPLICATION | 15d | 2027-06-26 | 2027-07-10 | 2550 |  | RGA -FINISHING | 7855292 |
| 2264 | 40200.40300.41100.52700.55500.59000.60900.267200.2655200 | CONCEALED PLUMBING | 9d | 2027-07-11 | 2027-07-19 | 2263 |  | RGA -FINISHING | 7855302 |
| 2265 | 40200.40300.41100.52700.55500.59000.60900.267200.2655300 | WATERPROOFING WORK FOR TOILETS, KITCHEN SUNK & PLANTERS | 12d | 2027-07-20 | 2027-07-31 | 2264 |  | RGA -FINISHING | 7855312 |

| ID | WBS | Task | Duration | Start | Finish | Predecessors | Constraint | Calendar | Unique_Task_ID |
| --- | --- | --- | --- | --- | --- | --- | --- | --- | --- |
| 2266 | 40200.40300.41100.52700.55500.59000.60900.267300 | **17th FLOOR** | 122d | 2027-04-16 | 2027-08-15 |  | start no earlier than 2027-04-16 | RGA -FINISHING | 7807642 |
| 2267 | 40200.40300.41100.52700.55500.59000.60900.267300.2655400 | BALCONY RAILING FIXING | 9d | 2027-06-26 | 2027-07-04 | 2110FS+15d |  | RGA -FINISHING | 7855322 |
| 2268 | 40200.40300.41100.52700.55500.59000.60900.267300.2655500 | Block work | 8d | 2027-08-08 | 2027-08-15 | 2272 |  | RGA -FINISHING | 7855332 |
| 2269 | 40200.40300.41100.52700.55500.59000.60900.267300.2655600 | CONCEALED ELEC CONDUITING & ITS FINISHING | 5d | 2027-04-16 | 2027-04-20 | 2098FS-5d |  | RGA -FINISHING | 7855342 |
| 2270 | 40200.40300.41100.52700.55500.59000.60900.267300.2655700 | PLASTER APPLICATION | 15d | 2027-07-03 | 2027-07-17 | 2563FS-10d |  | RGA -FINISHING | 7855352 |
| 2271 | 40200.40300.41100.52700.55500.59000.60900.267300.2655800 | CONCEALED PLUMBING | 9d | 2027-07-18 | 2027-07-26 | 2270 |  | RGA -FINISHING | 7855362 |
| 2272 | 40200.40300.41100.52700.55500.59000.60900.267300.2655900 | WATERPROOFING WORK FOR TOILETS, KITCHEN SUNK & PLANTERS | 12d | 2027-07-27 | 2027-08-07 | 2271 |  | RGA -FINISHING | 7855372 |
| 2273 | 40200.40300.41100.52700.55500.59000.60900.267400 | **18th FLOOR** | 122d | 2027-05-03 | 2027-09-01 |  | start no earlier than 2027-05-03 | RGA -FINISHING | 7807652 |
| 2274 | 40200.40300.41100.52700.55500.59000.60900.267400.2656000 | BALCONY RAILING FIXING | 9d | 2027-07-13 | 2027-07-21 | 2114FS+15d |  | RGA -FINISHING | 7855382 |
| 2275 | 40200.40300.41100.52700.55500.59000.60900.267400.2656100 | Block work | 8d | 2027-08-25 | 2027-09-01 | 2279 |  | RGA -FINISHING | 7855392 |
| 2276 | 40200.40300.41100.52700.55500.59000.60900.267400.2656200 | CONCEALED ELEC CONDUITING & ITS FINISHING | 5d | 2027-05-03 | 2027-05-07 | 2102FS-5d |  | RGA -FINISHING | 7855402 |
| 2277 | 40200.40300.41100.52700.55500.59000.60900.267400.2656300 | PLASTER APPLICATION | 15d | 2027-07-20 | 2027-08-03 | 2576FS-10d |  | RGA -FINISHING | 7855412 |
| 2278 | 40200.40300.41100.52700.55500.59000.60900.267400.2656400 | CONCEALED PLUMBING | 9d | 2027-08-04 | 2027-08-12 | 2277 |  | RGA -FINISHING | 7855422 |
| 2279 | 40200.40300.41100.52700.55500.59000.60900.267400.2656500 | WATERPROOFING WORK FOR TOILETS, KITCHEN SUNK & PLANTERS | 12d | 2027-08-13 | 2027-08-24 | 2278 |  | RGA -FINISHING | 7855432 |
| 2280 | 40200.40300.41100.52700.55500.59000.60900.267500 | **19th FLOOR** | 122d | 2027-05-20 | 2027-09-18 |  | start no earlier than 2027-05-20 | RGA -FINISHING | 7807662 |
| 2281 | 40200.40300.41100.52700.55500.59000.60900.267500.2656600 | BALCONY RAILING FIXING | 9d | 2027-07-30 | 2027-08-07 | 2118FS+15d |  | RGA -FINISHING | 7855442 |
| 2282 | 40200.40300.41100.52700.55500.59000.60900.267500.2656700 | Block work | 8d | 2027-09-11 | 2027-09-18 | 2286 |  | RGA -FINISHING | 7855452 |
| 2283 | 40200.40300.41100.52700.55500.59000.60900.267500.2656800 | CONCEALED ELEC CONDUITING & ITS FINISHING | 5d | 2027-05-20 | 2027-05-24 | 2106FS-5d |  | RGA -FINISHING | 7855462 |
| 2284 | 40200.40300.41100.52700.55500.59000.60900.267500.2656900 | PLASTER APPLICATION | 15d | 2027-08-06 | 2027-08-20 | 2589FS-10d |  | RGA -FINISHING | 7855472 |
| 2285 | 40200.40300.41100.52700.55500.59000.60900.267500.2657000 | CONCEALED PLUMBING | 9d | 2027-08-21 | 2027-08-29 | 2284 |  | RGA -FINISHING | 7855482 |
| 2286 | 40200.40300.41100.52700.55500.59000.60900.267500.2657100 | WATERPROOFING WORK FOR TOILETS, KITCHEN SUNK & PLANTERS | 12d | 2027-08-30 | 2027-09-10 | 2285 |  | RGA -FINISHING | 7855492 |
| 2287 | 40200.40300.41100.52700.55500.59000.60900.267600 | **20th FLOOR** | 124d | 2027-06-06 | 2027-10-07 |  | start no earlier than 2027-06-06 | RGA -FINISHING | 7807672 |
| 2288 | 40200.40300.41100.52700.55500.59000.60900.267600.2657200 | BALCONY RAILING FIXING | 9d | 2027-08-16 | 2027-08-24 | 2122FS+15d |  | RGA -FINISHING | 7855502 |
| 2289 | 40200.40300.41100.52700.55500.59000.60900.267600.2657300 | Block work | 8d | 2027-09-30 | 2027-10-07 | 2293 |  | RGA -FINISHING | 7855512 |
| 2290 | 40200.40300.41100.52700.55500.59000.60900.267600.2657400 | CONCEALED ELEC CONDUITING & ITS FINISHING | 5d | 2027-06-06 | 2027-06-10 | 2110FS-5d |  | RGA -FINISHING | 7855522 |
| 2291 | 40200.40300.41100.52700.55500.59000.60900.267600.2657500 | PLASTER APPLICATION | 15d | 2027-08-25 | 2027-09-08 | 2602FS-8d |  | RGA -FINISHING | 7855532 |
| 2292 | 40200.40300.41100.52700.55500.59000.60900.267600.2657600 | CONCEALED PLUMBING | 9d | 2027-09-09 | 2027-09-17 | 2291 |  | RGA -FINISHING | 7855542 |
| 2293 | 40200.40300.41100.52700.55500.59000.60900.267600.2657700 | WATERPROOFING WORK FOR TOILETS, KITCHEN SUNK & PLANTERS | 12d | 2027-09-18 | 2027-09-29 | 2292 |  | RGA -FINISHING | 7855552 |

Notes:
- 2275: Last floor BW completion 2 months post Last RCC
- 2282: Last floor BW completion 2 months post Last RCC
- 2289: Last floor BW completion 2 months post Last RCC

| ID | WBS | Task | Duration | Start | Finish | Predecessors | Constraint | Calendar | Unique_Task_ID |
| --- | --- | --- | --- | --- | --- | --- | --- | --- | --- |
| 2294 | 40200.40300.41100.52700.55500.59000.60900.267700 | **21th FLOOR** | 124d | 2027-06-23 | 2027-10-24 |  | start no earlier than 2027-06-23 | RGA -FINISHING | 7807682 |
| 2295 | 40200.40300.41100.52700.55500.59000.60900.267700.2657800 | BALCONY RAILING FIXING | 9d | 2027-09-02 | 2027-09-10 | 2126FS+15d |  | RGA -FINISHING | 7855562 |
| 2296 | 40200.40300.41100.52700.55500.59000.60900.267700.2657900 | Block work | 8d | 2027-10-17 | 2027-10-24 | 2300 |  | RGA -FINISHING | 7855572 |
| 2297 | 40200.40300.41100.52700.55500.59000.60900.267700.2658000 | CONCEALED ELEC CONDUITING & ITS FINISHING | 5d | 2027-06-23 | 2027-06-27 | 2114FS-5d |  | RGA -FINISHING | 7855582 |
| 2298 | 40200.40300.41100.52700.55500.59000.60900.267700.2658100 | PLASTER APPLICATION | 15d | 2027-09-11 | 2027-09-25 | 2615FS-8d |  | RGA -FINISHING | 7855592 |
| 2299 | 40200.40300.41100.52700.55500.59000.60900.267700.2658200 | CONCEALED PLUMBING | 9d | 2027-09-26 | 2027-10-04 | 2298 |  | RGA -FINISHING | 7855602 |
| 2300 | 40200.40300.41100.52700.55500.59000.60900.267700.2658300 | WATERPROOFING WORK FOR TOILETS, KITCHEN SUNK & PLANTERS | 12d | 2027-10-05 | 2027-10-16 | 2299 |  | RGA -FINISHING | 7855612 |
| 2301 | 40200.40300.41100.52700.55500.59000.60900.267800 | **22th FLOOR** | 117d | 2027-07-10 | 2027-11-03 |  | start no earlier than 2027-07-10 | RGA -FINISHING | 7807692 |
| 2302 | 40200.40300.41100.52700.55500.59000.60900.267800.2658400 | BALCONY RAILING FIXING | 9d | 2027-09-04 | 2027-09-12 | 2130 |  | RGA -FINISHING | 7855622 |
| 2303 | 40200.40300.41100.52700.55500.59000.60900.267800.2658500 | Block work | 8d | 2027-10-27 | 2027-11-03 | 2307 |  | RGA -FINISHING | 7855632 |
| 2304 | 40200.40300.41100.52700.55500.59000.60900.267800.2658600 | CONCEALED ELEC CONDUITING & ITS FINISHING | 5d | 2027-07-10 | 2027-07-14 | 2118FS-5d |  | RGA -FINISHING | 7855642 |
| 2305 | 40200.40300.41100.52700.55500.59000.60900.267800.2658700 | PLASTER APPLICATION | 15d | 2027-09-21 | 2027-10-05 | 2628 |  | RGA -FINISHING | 7855652 |
| 2306 | 40200.40300.41100.52700.55500.59000.60900.267800.2658800 | CONCEALED PLUMBING | 9d | 2027-10-06 | 2027-10-14 | 2305 |  | RGA -FINISHING | 7855662 |
| 2307 | 40200.40300.41100.52700.55500.59000.60900.267800.2658900 | WATERPROOFING WORK FOR TOILETS, KITCHEN SUNK & PLANTERS | 12d | 2027-10-15 | 2027-10-26 | 2306 |  | RGA -FINISHING | 7855672 |
| 2308 | 40200.40300.41100.52700.55500.59000.60900.267900 | **23th FLOOR** | 109d | 2027-07-27 | 2027-11-12 |  | start no earlier than 2027-07-27 | RGA -FINISHING | 7807702 |
| 2309 | 40200.40300.41100.52700.55500.59000.60900.267900.2659000 | BALCONY RAILING FIXING | 9d | 2027-09-13 | 2027-09-21 | 2302 |  | RGA -FINISHING | 7855682 |
| 2310 | 40200.40300.41100.52700.55500.59000.60900.267900.2659100 | Block work | 8d | 2027-11-05 | 2027-11-12 | 2314 |  | RGA -FINISHING | 7855692 |
| 2311 | 40200.40300.41100.52700.55500.59000.60900.267900.2659200 | CONCEALED ELEC CONDUITING & ITS FINISHING | 5d | 2027-07-27 | 2027-07-31 | 2122FS-5d |  | RGA -FINISHING | 7855702 |
| 2312 | 40200.40300.41100.52700.55500.59000.60900.267900.2659300 | PLASTER APPLICATION | 15d | 2027-09-30 | 2027-10-14 | 2641 |  | RGA -FINISHING | 7855712 |
| 2313 | 40200.40300.41100.52700.55500.59000.60900.267900.2659400 | CONCEALED PLUMBING | 9d | 2027-10-15 | 2027-10-23 | 2312 |  | RGA -FINISHING | 7855722 |
| 2314 | 40200.40300.41100.52700.55500.59000.60900.267900.2659500 | WATERPROOFING WORK FOR TOILETS, KITCHEN SUNK & PLANTERS | 12d | 2027-10-24 | 2027-11-04 | 2313 |  | RGA -FINISHING | 7855732 |
| 2315 | 40200.40300.41100.52700.55500.59000.60900.268000 | **24th FLOOR** | 101d | 2027-08-13 | 2027-11-21 |  | start no earlier than 2027-08-13 | RGA -FINISHING | 7807712 |
| 2316 | 40200.40300.41100.52700.55500.59000.60900.268000.2659600 | BALCONY RAILING FIXING | 9d | 2027-09-22 | 2027-09-30 | 2309 |  | RGA -FINISHING | 7855742 |
| 2317 | 40200.40300.41100.52700.55500.59000.60900.268000.2659700 | Block work | 8d | 2027-11-14 | 2027-11-21 | 2321 |  | RGA -FINISHING | 7855752 |
| 2318 | 40200.40300.41100.52700.55500.59000.60900.268000.2659800 | CONCEALED ELEC CONDUITING & ITS FINISHING | 5d | 2027-08-13 | 2027-08-17 | 2126FS-5d |  | RGA -FINISHING | 7371915 |
| 2319 | 40200.40300.41100.52700.55500.59000.60900.268000.2659900 | PLASTER APPLICATION | 15d | 2027-10-09 | 2027-10-23 | 2654 |  | RGA -FINISHING | 7371925 |
| 2320 | 40200.40300.41100.52700.55500.59000.60900.268000.2660000 | CONCEALED PLUMBING | 9d | 2027-10-24 | 2027-11-01 | 2319 |  | RGA -FINISHING | 7855762 |
| 2321 | 40200.40300.41100.52700.55500.59000.60900.268000.2660100 | WATERPROOFING WORK FOR TOILETS, KITCHEN SUNK & PLANTERS | 12d | 2027-11-02 | 2027-11-13 | 2320 |  | RGA -FINISHING | 7855772 |

Notes:
- 2296: Last floor BW completion 2 months post Last RCC
- 2303: Last floor BW completion 2 months post Last RCC
- 2310: Last floor BW completion 2 months post Last RCC
- 2317: Last floor BW completion 2 months post Last RCC

| ID | WBS | Task | Duration | Start | Finish | Predecessors | Constraint | Calendar | Unique_Task_ID |
| --- | --- | --- | --- | --- | --- | --- | --- | --- | --- |
| 2322 | 40200.40300.41100.52700.55500.59000.60900.268100 | **25thFLOOR** | 93d | 2027-08-30 | 2027-11-30 |  | start no earlier than 2027-08-30 | RGA -FINISHING | 7807722 |
| 2323 | 40200.40300.41100.52700.55500.59000.60900.268100.2660200 | BALCONY RAILING FIXING | 9d | 2027-10-01 | 2027-10-09 | 2316 |  | RGA -FINISHING | 7855782 |
| 2324 | 40200.40300.41100.52700.55500.59000.60900.268100.2660300 | Block work | 8d | 2027-11-23 | 2027-11-30 | 2328 |  | RGA -FINISHING | 7855792 |
| 2325 | 40200.40300.41100.52700.55500.59000.60900.268100.2660400 | CONCEALED ELEC CONDUITING & ITS FINISHING | 5d | 2027-08-30 | 2027-09-03 | 2130FS-5d |  | RGA -FINISHING | 7855802 |
| 2326 | 40200.40300.41100.52700.55500.59000.60900.268100.2660500 | PLASTER APPLICATION | 15d | 2027-10-18 | 2027-11-01 | 2667 |  | RGA -FINISHING | 7855812 |
| 2327 | 40200.40300.41100.52700.55500.59000.60900.268100.2660600 | CONCEALED PLUMBING | 9d | 2027-11-02 | 2027-11-10 | 2326 |  | RGA -FINISHING | 7855822 |
| 2328 | 40200.40300.41100.52700.55500.59000.60900.268100.2660700 | WATERPROOFING WORK FOR TOILETS, KITCHEN SUNK & PLANTERS | 12d | 2027-11-11 | 2027-11-22 | 2327 |  | RGA -FINISHING | 7855832 |
| 2329 | 40200.40300.41100.52700.55500.59000.60900.372300 | **LMR (To Be Deleted)** | 15d | 2025-11-30 | 2025-12-14 |  | start no earlier than 2025-11-30 | RGA -FINISHING | 7808402 |
| 2330 | 40200.40300.41100.52700.55500.59000.60900.372300.2660800 | Block work | 8d | 2025-11-30 | 2025-12-07 |  | start no earlier than 2025-11-30 | RGA -FINISHING | 7855962 |
| 2331 | 40200.40300.41100.52700.55500.59000.60900.372300.2660900 | CONCEALED ELEC CONDUITING & ITS FINISHING | 7d | 2025-11-30 | 2025-12-06 |  | start no earlier than 2025-11-30 | RGA -FINISHING | 7855972 |
| 2332 | 40200.40300.41100.52700.55500.59000.60900.372300.2661000 | PLASTER APPLICATION | 15d | 2025-11-30 | 2025-12-14 |  | start no earlier than 2025-11-30 | RGA -FINISHING | 7855982 |
| 2333 | 40200.40300.41100.52700.55500.59000.60900.372300.2661100 | DOOR FRAME FIXING | 3d | 2025-11-30 | 2025-12-02 |  | start no earlier than 2025-11-30 | RGA -FINISHING | 7855992 |
| 2334 | 40200.40300.41100.52700.55500.59000.506300 | **Terrace Finishing works** | 30d | 2028-02-05 | 2028-03-05 |  | start no earlier than 2028-02-05 | RGA -FINISHING | 7812132 |
| 2335 | 40200.40300.41100.52700.55500.59000.506300.2218100 | Terrace Waterproofing work | 30d | 2028-02-05 | 2028-03-05 | 2337FS+7d |  | RGA -FINISHING | 7363935 |
| 2336 | 40200.40300.41100.52700.55500.59000.506400 | **EXTERNAL Painting** | 130d | 2027-09-21 | 2028-01-28 |  | start no earlier than 2027-09-21 | RGA -FINISHING | 7812122 |
| 2337 | 40200.40300.41100.52700.55500.59000.506400.2218200 | 2nd coat | 130d | 2027-09-21 | 2028-01-28 | 2134 |  | RGA -FINISHING | 7363945 |
| 2338 | 40200.40300.41100.52700.55500.57600 | **Flat internal finishing & services works** | 629d | 2026-06-13 | 2028-03-02 |  | start no earlier than 2026-06-13 | RGA -FINISHING | 7362175 |
| 2339 | 40200.40300.41100.52700.55500.57600.136600 | **GROUND FLOOR** | 595d | 2026-06-13 | 2028-01-28 |  | start no earlier than 2026-06-13 | RGA -FINISHING | 7362225 |
| 2340 | 40200.40300.41100.52700.55500.57600.136600.2218300 | TOILET DADO TILE FIXING | 10d | 2026-08-27 | 2026-09-05 | 2149 |  | RGA -FINISHING | 7364075 |
| 2341 | 40200.40300.41100.52700.55500.57600.136600.2218400 | TOILET FLOORING WORK | 7d | 2026-09-06 | 2026-09-12 | 2340 |  | RGA -FINISHING | 7364085 |
| 2342 | 40200.40300.41100.52700.55500.57600.136600.2218500 | FIRE FIGHTING | 15d | 2026-06-13 | 2026-06-27 | 2148 |  | RGA -FINISHING | 7364095 |
| 2343 | 40200.40300.41100.52700.55500.57600.136600.2218600 | INTERNAL PAINTING - PUTTY / PRIMER APPLICATION | 15d | 2026-10-11 | 2026-10-25 | 2345 |  | RGA -FINISHING | 7364105 |
| 2344 | 40200.40300.41100.52700.55500.57600.136600.2218700 | FLAT FLOORING | 11d | 2026-09-13 | 2026-09-23 | 2341 |  | RGA -FINISHING | 7364115 |
| 2345 | 40200.40300.41100.52700.55500.57600.136600.2218800 | WINDOW FIXING | 12d | 2026-09-29 | 2026-10-10 | 2344FS+5d |  | RGA -FINISHING | 7364125 |
| 2346 | 40200.40300.41100.52700.55500.57600.136600.2218900 | INTERNAL PAINTING - 1ST COAT | 12d | 2026-10-26 | 2026-11-06 | 2343 |  | RGA -FINISHING | 7364135 |
| 2347 | 40200.40300.41100.52700.55500.57600.136600.2219000 | INTERNAL DOOR FIXING | 15d | 2026-11-07 | 2026-11-21 | 2346 |  | RGA -FINISHING | 7364145 |
| 2348 | 40200.40300.41100.52700.55500.57600.136600.2219100 | WIRING & SWITCH PLATE FIXING | 8d | 2026-11-22 | 2026-11-29 | 2347 |  | RGA -FINISHING | 7364155 |
| 2349 | 40200.40300.41100.52700.55500.57600.136600.2219200 | TOILET FALSE CEILING | 7d | 2026-11-30 | 2026-12-06 | 2348 |  | RGA -FINISHING | 7364165 |
| 2350 | 40200.40300.41100.52700.55500.57600.136600.2219300 | MAIN DOOR FRAME SHUTTER FIXING | 6d | 2028-01-15 | 2028-01-20 | 2682 |  | RGA -FINISHING | 7364175 |
| 2351 | 40200.40300.41100.52700.55500.57600.136600.2219400 | FINAL COAT PAINT | 8d | 2028-01-21 | 2028-01-28 | 2350 |  | RGA -FINISHING | 7364185 |

Notes:
- 2336: Ext Plaster (in 2 phases) completion 3.5 months post last BW
- 2338: Completion in 12 months post last RCC

| ID | WBS | Task | Duration | Start | Finish | Predecessors | Constraint | Calendar | Unique_Task_ID |
| --- | --- | --- | --- | --- | --- | --- | --- | --- | --- |
| 2352 | 40200.40300.41100.52700.55500.57600.136700 | **1ST FLOOR** | 539d | 2026-08-07 | 2028-01-27 |  | start no earlier than 2026-08-07 | RGA -FINISHING | 7362235 |
| 2353 | 40200.40300.41100.52700.55500.57600.136700.2219500 | TOILET DADO TILE FIXING | 7d | 2026-10-05 | 2026-10-11 | 2156 |  | RGA -FINISHING | 7364195 |
| 2354 | 40200.40300.41100.52700.55500.57600.136700.2219600 | TOILET FLOORING WORK | 7d | 2026-10-05 | 2026-10-11 | 2353FF |  | RGA -FINISHING | 7364205 |
| 2355 | 40200.40300.41100.52700.55500.57600.136700.2219700 | FIRE FIGHTING | 6d | 2026-08-07 | 2026-08-12 | 2155 |  | RGA -FINISHING | 7364215 |
| 2356 | 40200.40300.41100.52700.55500.57600.136700.2219800 | INTERNAL PAINTING - PUTTY / PRIMER APPLICATION | 6d | 2026-11-03 | 2026-11-08 | 2358 |  | RGA -FINISHING | 7364225 |
| 2357 | 40200.40300.41100.52700.55500.57600.136700.2219900 | FLAT FLOORING | 5d | 2026-10-12 | 2026-10-16 | 2354 |  | RGA -FINISHING | 7364235 |
| 2358 | 40200.40300.41100.52700.55500.57600.136700.2220000 | WINDOW FIXING | 12d | 2026-10-22 | 2026-11-02 | 2357FS+5d |  | RGA -FINISHING | 7364245 |
| 2359 | 40200.40300.41100.52700.55500.57600.136700.2220100 | INTERNAL PAINTING - 1ST COAT | 12d | 2026-11-09 | 2026-11-20 | 2356 |  | RGA -FINISHING | 7364255 |
| 2360 | 40200.40300.41100.52700.55500.57600.136700.2220200 | INTERNAL DOOR FIXING | 15d | 2026-11-19 | 2026-12-03 | 2359FS-2d |  | RGA -FINISHING | 7364265 |
| 2361 | 40200.40300.41100.52700.55500.57600.136700.2220300 | WIRING & SWITCH PLATE FIXING | 8d | 2026-11-30 | 2026-12-07 | 2360FS-4d |  | RGA -FINISHING | 7364275 |
| 2362 | 40200.40300.41100.52700.55500.57600.136700.2220400 | TOILET FALSE CEILING | 7d | 2026-12-08 | 2026-12-14 | 2361 |  | RGA -FINISHING | 7364285 |
| 2363 | 40200.40300.41100.52700.55500.57600.136700.2220500 | MAIN DOOR FRAME SHUTTER FIXING | 6d | 2028-01-14 | 2028-01-19 | 2690 |  | RGA -FINISHING | 7364295 |
| 2364 | 40200.40300.41100.52700.55500.57600.136700.2220600 | FINAL COAT PAINT | 8d | 2028-01-20 | 2028-01-27 | 2363 |  | RGA -FINISHING | 7364305 |
| 2365 | 40200.40300.41100.52700.55500.57600.136800 | **2ND FLOOR** | 498d | 2026-09-17 | 2028-01-27 |  | start no earlier than 2026-09-17 | RGA -FINISHING | 7362245 |
| 2366 | 40200.40300.41100.52700.55500.57600.136800.2220700 | TOILET DADO TILE FIXING | 7d | 2026-11-07 | 2026-11-13 | 2163 |  | RGA -FINISHING | 7364315 |
| 2367 | 40200.40300.41100.52700.55500.57600.136800.2220800 | TOILET FLOORING WORK | 7d | 2026-11-14 | 2026-11-20 | 2366 |  | RGA -FINISHING | 7364325 |
| 2368 | 40200.40300.41100.52700.55500.57600.136800.2220900 | FIRE FIGHTING | 6d | 2026-09-17 | 2026-09-22 | 2162 |  | RGA -FINISHING | 7364335 |
| 2369 | 40200.40300.41100.52700.55500.57600.136800.2221000 | INTERNAL PAINTING - PUTTY / PRIMER APPLICATION | 6d | 2026-12-13 | 2026-12-18 | 2371 |  | RGA -FINISHING | 7364345 |
| 2370 | 40200.40300.41100.52700.55500.57600.136800.2221100 | FLAT FLOORING | 5d | 2026-11-21 | 2026-11-25 | 2367 |  | RGA -FINISHING | 7364355 |
| 2371 | 40200.40300.41100.52700.55500.57600.136800.2221200 | WINDOW FIXING | 12d | 2026-12-01 | 2026-12-12 | 2370FS+5d |  | RGA -FINISHING | 7364365 |
| 2372 | 40200.40300.41100.52700.55500.57600.136800.2221300 | INTERNAL PAINTING - 1ST COAT | 12d | 2026-12-19 | 2026-12-30 | 2369 |  | RGA -FINISHING | 7364375 |
| 2373 | 40200.40300.41100.52700.55500.57600.136800.2221400 | INTERNAL DOOR FIXING | 15d | 2026-12-29 | 2027-01-12 | 2372FS-2d |  | RGA -FINISHING | 7364385 |
| 2374 | 40200.40300.41100.52700.55500.57600.136800.2221500 | WIRING & SWITCH PLATE FIXING | 8d | 2027-01-09 | 2027-01-16 | 2373FS-4d |  | RGA -FINISHING | 7364395 |
| 2375 | 40200.40300.41100.52700.55500.57600.136800.2221600 | TOILET FALSE CEILING | 7d | 2027-01-17 | 2027-01-23 | 2374 |  | RGA -FINISHING | 7364405 |
| 2376 | 40200.40300.41100.52700.55500.57600.136800.2221700 | MAIN DOOR FRAME SHUTTER FIXING | 6d | 2028-01-14 | 2028-01-19 | 2698 |  | RGA -FINISHING | 7364415 |
| 2377 | 40200.40300.41100.52700.55500.57600.136800.2221800 | FINAL COAT PAINT | 8d | 2028-01-20 | 2028-01-27 | 2376 |  | RGA -FINISHING | 7364425 |

| ID | WBS | Task | Duration | Start | Finish | Predecessors | Constraint | Calendar | Unique_Task_ID |
| --- | --- | --- | --- | --- | --- | --- | --- | --- | --- |
| 2378 | 40200.40300.41100.52700.55500.57600.136900 | **3RD FLOOR** | 467d | 2026-10-21 | 2028-01-30 |  | start no earlier than 2026-10-21 | RGA -FINISHING | 7362255 |
| 2379 | 40200.40300.41100.52700.55500.57600.136900.2221900 | TOILET DADO TILE FIXING | 7d | 2026-12-01 | 2026-12-07 | 2170 |  | RGA -FINISHING | 7364435 |
| 2380 | 40200.40300.41100.52700.55500.57600.136900.2222000 | TOILET FLOORING WORK | 7d | 2026-12-08 | 2026-12-14 | 2379 |  | RGA -FINISHING | 7364445 |
| 2381 | 40200.40300.41100.52700.55500.57600.136900.2222100 | FIRE FIGHTING | 6d | 2026-10-21 | 2026-10-26 | 2169 |  | RGA -FINISHING | 7364455 |
| 2382 | 40200.40300.41100.52700.55500.57600.136900.2222200 | INTERNAL PAINTING - PUTTY / PRIMER APPLICATION | 6d | 2027-01-01 | 2027-01-06 | 2384 |  | RGA -FINISHING | 7364465 |
| 2383 | 40200.40300.41100.52700.55500.57600.136900.2222300 | FLAT FLOORING | 5d | 2026-12-15 | 2026-12-19 | 2380 |  | RGA -FINISHING | 7364475 |
| 2384 | 40200.40300.41100.52700.55500.57600.136900.2222400 | WINDOW FIXING | 7d | 2026-12-25 | 2026-12-31 | 2383FS+5d |  | RGA -FINISHING | 7364485 |
| 2385 | 40200.40300.41100.52700.55500.57600.136900.2222500 | INTERNAL PAINTING - 1ST COAT | 7d | 2027-01-07 | 2027-01-13 | 2382 |  | RGA -FINISHING | 7364495 |
| 2386 | 40200.40300.41100.52700.55500.57600.136900.2222600 | INTERNAL DOOR FIXING | 15d | 2027-01-12 | 2027-01-26 | 2385FS-2d |  | RGA -FINISHING | 7364505 |
| 2387 | 40200.40300.41100.52700.55500.57600.136900.2222700 | WIRING & SWITCH PLATE FIXING | 8d | 2027-01-23 | 2027-01-30 | 2386FS-4d |  | RGA -FINISHING | 7364515 |
| 2388 | 40200.40300.41100.52700.55500.57600.136900.2222800 | TOILET FALSE CEILING | 7d | 2027-01-31 | 2027-02-06 | 2387 |  | RGA -FINISHING | 7364525 |
| 2389 | 40200.40300.41100.52700.55500.57600.136900.2222900 | MAIN DOOR FRAME SHUTTER FIXING | 6d | 2028-01-17 | 2028-01-22 | 2706 |  | RGA -FINISHING | 7364535 |
| 2390 | 40200.40300.41100.52700.55500.57600.136900.2223000 | FINAL COAT PAINT | 8d | 2028-01-23 | 2028-01-30 | 2389 |  | RGA -FINISHING | 7364545 |
| 2391 | 40200.40300.41100.52700.55500.57600.137000 | **4TH FLOOR** | 435d | 2026-11-25 | 2028-02-02 |  | start no earlier than 2026-11-25 | RGA -FINISHING | 7362265 |
| 2392 | 40200.40300.41100.52700.55500.57600.137000.2223100 | TOILET DADO TILE FIXING | 7d | 2027-01-04 | 2027-01-10 | 2177 |  | RGA -FINISHING | 7364555 |
| 2393 | 40200.40300.41100.52700.55500.57600.137000.2223200 | TOILET FLOORING WORK | 7d | 2027-01-11 | 2027-01-17 | 2392 |  | RGA -FINISHING | 7364565 |
| 2394 | 40200.40300.41100.52700.55500.57600.137000.2223300 | FIRE FIGHTING | 6d | 2026-11-25 | 2026-11-30 | 2176 |  | RGA -FINISHING | 7364575 |
| 2395 | 40200.40300.41100.52700.55500.57600.137000.2223400 | INTERNAL PAINTING - PUTTY / PRIMER APPLICATION | 6d | 2027-02-04 | 2027-02-09 | 2397 |  | RGA -FINISHING | 7364585 |
| 2396 | 40200.40300.41100.52700.55500.57600.137000.2223500 | FLAT FLOORING | 5d | 2027-01-18 | 2027-01-22 | 2393 |  | RGA -FINISHING | 7364595 |
| 2397 | 40200.40300.41100.52700.55500.57600.137000.2223600 | WINDOW FIXING | 7d | 2027-01-28 | 2027-02-03 | 2396FS+5d |  | RGA -FINISHING | 7364605 |
| 2398 | 40200.40300.41100.52700.55500.57600.137000.2223700 | INTERNAL PAINTING - 1ST COAT | 7d | 2027-02-10 | 2027-02-16 | 2395 |  | RGA -FINISHING | 7364615 |
| 2399 | 40200.40300.41100.52700.55500.57600.137000.2223800 | INTERNAL DOOR FIXING | 15d | 2027-02-15 | 2027-03-01 | 2398FS-2d |  | RGA -FINISHING | 7364625 |
| 2400 | 40200.40300.41100.52700.55500.57600.137000.2223900 | WIRING & SWITCH PLATE FIXING | 8d | 2027-02-26 | 2027-03-05 | 2399FS-4d |  | RGA -FINISHING | 7364635 |
| 2401 | 40200.40300.41100.52700.55500.57600.137000.2224000 | TOILET FALSE CEILING | 7d | 2027-03-06 | 2027-03-12 | 2400 |  | RGA -FINISHING | 7364645 |
| 2402 | 40200.40300.41100.52700.55500.57600.137000.2224100 | MAIN DOOR FRAME SHUTTER FIXING | 6d | 2028-01-20 | 2028-01-25 | 2714 |  | RGA -FINISHING | 7364655 |
| 2403 | 40200.40300.41100.52700.55500.57600.137000.2224200 | FINAL COAT PAINT | 8d | 2028-01-26 | 2028-02-02 | 2402 |  | RGA -FINISHING | 7364665 |

| ID | WBS | Task | Duration | Start | Finish | Predecessors | Constraint | Calendar | Unique_Task_ID |
| --- | --- | --- | --- | --- | --- | --- | --- | --- | --- |
| 2404 | 40200.40300.41100.52700.55500.57600.137100 | **5TH FLOOR** | 403d | 2026-12-27 | 2028-02-02 |  | start no earlier than 2026-12-27 | RGA -FINISHING | 7362275 |
| 2405 | 40200.40300.41100.52700.55500.57600.137100.2224300 | TOILET DADO TILE FIXING | 7d | 2027-02-05 | 2027-02-11 | 2184 |  | RGA -FINISHING | 7364675 |
| 2406 | 40200.40300.41100.52700.55500.57600.137100.2224400 | TOILET FLOORING WORK | 7d | 2027-02-12 | 2027-02-18 | 2405 |  | RGA -FINISHING | 7364685 |
| 2407 | 40200.40300.41100.52700.55500.57600.137100.2224500 | FIRE FIGHTING | 6d | 2026-12-27 | 2027-01-01 | 2183 |  | RGA -FINISHING | 7364695 |
| 2408 | 40200.40300.41100.52700.55500.57600.137100.2224600 | INTERNAL PAINTING - PUTTY / PRIMER APPLICATION | 6d | 2027-03-08 | 2027-03-13 | 2410 |  | RGA -FINISHING | 7364705 |
| 2409 | 40200.40300.41100.52700.55500.57600.137100.2224700 | FLAT FLOORING | 5d | 2027-02-19 | 2027-02-23 | 2406 |  | RGA -FINISHING | 7364715 |
| 2410 | 40200.40300.41100.52700.55500.57600.137100.2224800 | WINDOW FIXING | 7d | 2027-03-01 | 2027-03-07 | 2409FS+5d |  | RGA -FINISHING | 7364725 |
| 2411 | 40200.40300.41100.52700.55500.57600.137100.2224900 | INTERNAL PAINTING - 1ST COAT | 7d | 2027-03-14 | 2027-03-20 | 2408 |  | RGA -FINISHING | 7364735 |
| 2412 | 40200.40300.41100.52700.55500.57600.137100.2225000 | INTERNAL DOOR FIXING | 15d | 2027-03-19 | 2027-04-02 | 2411FS-2d |  | RGA -FINISHING | 7364745 |
| 2413 | 40200.40300.41100.52700.55500.57600.137100.2225100 | WIRING & SWITCH PLATE FIXING | 8d | 2027-03-30 | 2027-04-06 | 2412FS-4d |  | RGA -FINISHING | 7364755 |
| 2414 | 40200.40300.41100.52700.55500.57600.137100.2225200 | TOILET FALSE CEILING | 7d | 2027-04-07 | 2027-04-13 | 2413 |  | RGA -FINISHING | 7364765 |
| 2415 | 40200.40300.41100.52700.55500.57600.137100.2225300 | MAIN DOOR FRAME SHUTTER FIXING | 6d | 2028-01-20 | 2028-01-25 | 2722 |  | RGA -FINISHING | 7364775 |
| 2416 | 40200.40300.41100.52700.55500.57600.137100.2225400 | FINAL COAT PAINT | 8d | 2028-01-26 | 2028-02-02 | 2415 |  | RGA -FINISHING | 7364785 |
| 2417 | 40200.40300.41100.52700.55500.57600.137200 | **6TH FLOOR** | 388d | 2027-01-11 | 2028-02-02 |  | start no earlier than 2027-01-11 | RGA -FINISHING | 7362285 |
| 2418 | 40200.40300.41100.52700.55500.57600.137200.2225500 | TOILET DADO TILE FIXING | 7d | 2027-02-20 | 2027-02-26 | 2191 |  | RGA -FINISHING | 7364795 |
| 2419 | 40200.40300.41100.52700.55500.57600.137200.2225600 | TOILET FLOORING WORK | 7d | 2027-02-20 | 2027-02-26 | 2418FF |  | RGA -FINISHING | 7364805 |
| 2420 | 40200.40300.41100.52700.55500.57600.137200.2225700 | FIRE FIGHTING | 6d | 2027-01-11 | 2027-01-16 | 2190 |  | RGA -FINISHING | 7364815 |
| 2421 | 40200.40300.41100.52700.55500.57600.137200.2225800 | INTERNAL PAINTING - PUTTY / PRIMER APPLICATION | 6d | 2027-03-21 | 2027-03-26 | 2423 |  | RGA -FINISHING | 7364825 |
| 2422 | 40200.40300.41100.52700.55500.57600.137200.2225900 | FLAT FLOORING | 5d | 2027-02-27 | 2027-03-03 | 2419 |  | RGA -FINISHING | 7364835 |
| 2423 | 40200.40300.41100.52700.55500.57600.137200.2226000 | WINDOW FIXING | 12d | 2027-03-09 | 2027-03-20 | 2422FS+5d |  | RGA -FINISHING | 7364845 |
| 2424 | 40200.40300.41100.52700.55500.57600.137200.2226100 | INTERNAL PAINTING - 1ST COAT | 12d | 2027-03-27 | 2027-04-07 | 2421 |  | RGA -FINISHING | 7364855 |
| 2425 | 40200.40300.41100.52700.55500.57600.137200.2226200 | INTERNAL DOOR FIXING | 15d | 2027-04-06 | 2027-04-20 | 2424FS-2d |  | RGA -FINISHING | 7364865 |
| 2426 | 40200.40300.41100.52700.55500.57600.137200.2226300 | WIRING & SWITCH PLATE FIXING | 8d | 2027-04-17 | 2027-04-24 | 2425FS-4d |  | RGA -FINISHING | 7364875 |
| 2427 | 40200.40300.41100.52700.55500.57600.137200.2226400 | TOILET FALSE CEILING | 7d | 2027-04-25 | 2027-05-01 | 2426 |  | RGA -FINISHING | 7364885 |
| 2428 | 40200.40300.41100.52700.55500.57600.137200.2226500 | MAIN DOOR FRAME SHUTTER FIXING | 6d | 2028-01-20 | 2028-01-25 | 2730 |  | RGA -FINISHING | 7364895 |
| 2429 | 40200.40300.41100.52700.55500.57600.137200.2226600 | FINAL COAT PAINT | 8d | 2028-01-26 | 2028-02-02 | 2428 |  | RGA -FINISHING | 7364905 |

| ID | WBS | Task | Duration | Start | Finish | Predecessors | Constraint | Calendar | Unique_Task_ID |
| --- | --- | --- | --- | --- | --- | --- | --- | --- | --- |
| 2430 | 40200.40300.41100.52700.55500.57600.137300 | **7TH FLOOR** | 372d | 2027-01-27 | 2028-02-02 |  | start no earlier than 2027-01-27 | RGA -FINISHING | 7362295 |
| 2431 | 40200.40300.41100.52700.55500.57600.137300.2226700 | TOILET DADO TILE FIXING | 7d | 2027-03-08 | 2027-03-14 | 2198 |  | RGA -FINISHING | 7364915 |
| 2432 | 40200.40300.41100.52700.55500.57600.137300.2226800 | TOILET FLOORING WORK | 7d | 2027-03-15 | 2027-03-21 | 2431 |  | RGA -FINISHING | 7364925 |
| 2433 | 40200.40300.41100.52700.55500.57600.137300.2226900 | FIRE FIGHTING | 6d | 2027-01-27 | 2027-02-01 | 2197 |  | RGA -FINISHING | 7364935 |
| 2434 | 40200.40300.41100.52700.55500.57600.137300.2227000 | INTERNAL PAINTING - PUTTY / PRIMER APPLICATION | 6d | 2027-04-13 | 2027-04-18 | 2436 |  | RGA -FINISHING | 7364945 |
| 2435 | 40200.40300.41100.52700.55500.57600.137300.2227100 | FLAT FLOORING | 5d | 2027-03-22 | 2027-03-26 | 2432 |  | RGA -FINISHING | 7364955 |
| 2436 | 40200.40300.41100.52700.55500.57600.137300.2227200 | WINDOW FIXING | 12d | 2027-04-01 | 2027-04-12 | 2435FS+5d |  | RGA -FINISHING | 7364965 |
| 2437 | 40200.40300.41100.52700.55500.57600.137300.2227300 | INTERNAL PAINTING - 1ST COAT | 5d | 2027-04-19 | 2027-04-23 | 2434 |  | RGA -FINISHING | 7364975 |
| 2438 | 40200.40300.41100.52700.55500.57600.137300.2227400 | INTERNAL DOOR FIXING | 15d | 2027-04-22 | 2027-05-06 | 2437FS-2d |  | RGA -FINISHING | 7364985 |
| 2439 | 40200.40300.41100.52700.55500.57600.137300.2227500 | WIRING & SWITCH PLATE FIXING | 8d | 2027-05-03 | 2027-05-10 | 2438FS-4d |  | RGA -FINISHING | 7833022 |
| 2440 | 40200.40300.41100.52700.55500.57600.137300.2227600 | TOILET FALSE CEILING | 7d | 2027-05-11 | 2027-05-17 | 2439 |  | RGA -FINISHING | 7833032 |
| 2441 | 40200.40300.41100.52700.55500.57600.137300.2227700 | MAIN DOOR FRAME SHUTTER FIXING | 6d | 2028-01-20 | 2028-01-25 | 2738 |  | RGA -FINISHING | 7833042 |
| 2442 | 40200.40300.41100.52700.55500.57600.137300.2227800 | FINAL COAT PAINT | 8d | 2028-01-26 | 2028-02-02 | 2441 |  | RGA -FINISHING | 7833052 |
| 2443 | 40200.40300.41100.52700.55500.57600.137400 | **8TH FLOOR** | 361d | 2027-02-10 | 2028-02-05 |  | start no earlier than 2027-02-10 | RGA -FINISHING | 7362305 |
| 2444 | 40200.40300.41100.52700.55500.57600.137400.2227900 | TOILET DADO TILE FIXING | 7d | 2027-03-22 | 2027-03-28 | 2205 |  | RGA -FINISHING | 7833062 |
| 2445 | 40200.40300.41100.52700.55500.57600.137400.2228000 | TOILET FLOORING WORK | 7d | 2027-03-29 | 2027-04-04 | 2444 |  | RGA -FINISHING | 7365045 |
| 2446 | 40200.40300.41100.52700.55500.57600.137400.2228100 | FIRE FIGHTING | 6d | 2027-02-10 | 2027-02-15 | 2204 |  | RGA -FINISHING | 7833072 |
| 2447 | 40200.40300.41100.52700.55500.57600.137400.2228200 | INTERNAL PAINTING - PUTTY / PRIMER APPLICATION | 6d | 2027-04-27 | 2027-05-02 | 2449 |  | RGA -FINISHING | 7833082 |
| 2448 | 40200.40300.41100.52700.55500.57600.137400.2228300 | FLAT FLOORING | 5d | 2027-04-05 | 2027-04-09 | 2445 |  | RGA -FINISHING | 7833092 |
| 2449 | 40200.40300.41100.52700.55500.57600.137400.2228400 | WINDOW FIXING | 12d | 2027-04-15 | 2027-04-26 | 2448FS+5d |  | RGA -FINISHING | 7833102 |
| 2450 | 40200.40300.41100.52700.55500.57600.137400.2228500 | INTERNAL PAINTING - 1ST COAT | 10d | 2027-05-03 | 2027-05-12 | 2447 |  | RGA -FINISHING | 7833112 |
| 2451 | 40200.40300.41100.52700.55500.57600.137400.2228600 | INTERNAL DOOR FIXING | 15d | 2027-05-11 | 2027-05-25 | 2450FS-2d |  | RGA -FINISHING | 7365105 |
| 2452 | 40200.40300.41100.52700.55500.57600.137400.2228700 | WIRING & SWITCH PLATE FIXING | 8d | 2027-05-22 | 2027-05-29 | 2451FS-4d |  | RGA -FINISHING | 7833122 |
| 2453 | 40200.40300.41100.52700.55500.57600.137400.2228800 | TOILET FALSE CEILING | 7d | 2027-05-30 | 2027-06-05 | 2452 |  | RGA -FINISHING | 7833132 |
| 2454 | 40200.40300.41100.52700.55500.57600.137400.2228900 | MAIN DOOR FRAME SHUTTER FIXING | 6d | 2028-01-23 | 2028-01-28 | 2746 |  | RGA -FINISHING | 7833142 |
| 2455 | 40200.40300.41100.52700.55500.57600.137400.2229000 | FINAL COAT PAINT | 8d | 2028-01-29 | 2028-02-05 | 2454 |  | RGA -FINISHING | 7833152 |

| ID | WBS | Task | Duration | Start | Finish | Predecessors | Constraint | Calendar | Unique_Task_ID |
| --- | --- | --- | --- | --- | --- | --- | --- | --- | --- |
| 2456 | 40200.40300.41100.52700.55500.57600.137500 | **9TH FLOOR** | 350d | 2027-02-25 | 2028-02-09 |  | start no earlier than 2027-02-25 | RGA -FINISHING | 7362315 |
| 2457 | 40200.40300.41100.52700.55500.57600.137500.2229100 | TOILET DADO TILE FIXING | 7d | 2027-04-06 | 2027-04-12 | 2212 |  | RGA -FINISHING | 7833162 |
| 2458 | 40200.40300.41100.52700.55500.57600.137500.2229200 | TOILET FLOORING WORK | 7d | 2027-04-13 | 2027-04-19 | 2457 |  | RGA -FINISHING | 7365165 |
| 2459 | 40200.40300.41100.52700.55500.57600.137500.2229300 | FIRE FIGHTING | 6d | 2027-02-25 | 2027-03-02 | 2211 |  | RGA -FINISHING | 7833172 |
| 2460 | 40200.40300.41100.52700.55500.57600.137500.2229400 | INTERNAL PAINTING - PUTTY / PRIMER APPLICATION | 6d | 2027-05-12 | 2027-05-17 | 2462 |  | RGA -FINISHING | 7833182 |
| 2461 | 40200.40300.41100.52700.55500.57600.137500.2229500 | FLAT FLOORING | 5d | 2027-04-20 | 2027-04-24 | 2458 |  | RGA -FINISHING | 7833192 |
| 2462 | 40200.40300.41100.52700.55500.57600.137500.2229600 | WINDOW FIXING | 12d | 2027-04-30 | 2027-05-11 | 2461FS+5d |  | RGA -FINISHING | 7833202 |
| 2463 | 40200.40300.41100.52700.55500.57600.137500.2229700 | INTERNAL PAINTING - 1ST COAT | 2d | 2027-05-18 | 2027-05-19 | 2460 |  | RGA -FINISHING | 7833212 |
| 2464 | 40200.40300.41100.52700.55500.57600.137500.2229800 | INTERNAL DOOR FIXING | 15d | 2027-05-18 | 2027-06-01 | 2463FS-2d |  | RGA -FINISHING | 7365225 |
| 2465 | 40200.40300.41100.52700.55500.57600.137500.2229900 | WIRING & SWITCH PLATE FIXING | 8d | 2027-05-29 | 2027-06-05 | 2464FS-4d |  | RGA -FINISHING | 7833222 |
| 2466 | 40200.40300.41100.52700.55500.57600.137500.2230000 | TOILET FALSE CEILING | 7d | 2027-06-06 | 2027-06-12 | 2465 |  | RGA -FINISHING | 7833232 |
| 2467 | 40200.40300.41100.52700.55500.57600.137500.2230100 | MAIN DOOR FRAME SHUTTER FIXING | 6d | 2028-01-23 | 2028-01-28 | 2754 |  | RGA -FINISHING | 7833242 |
| 2468 | 40200.40300.41100.52700.55500.57600.137500.2230200 | FINAL COAT PAINT | 8d | 2028-02-02 | 2028-02-09 | 2467FS+4d |  | RGA -FINISHING | 7833252 |
| 2469 | 40200.40300.41100.52700.55500.57600.137600 | **10TH FLOOR** | 330d | 2027-03-13 | 2028-02-05 |  | start no earlier than 2027-03-13 | RGA -FINISHING | 7362325 |
| 2470 | 40200.40300.41100.52700.55500.57600.137600.2230300 | TOILET DADO TILE FIXING | 7d | 2027-04-22 | 2027-04-28 | 2219 |  | RGA -FINISHING | 7833262 |
| 2471 | 40200.40300.41100.52700.55500.57600.137600.2230400 | TOILET FLOORING WORK | 7d | 2027-04-29 | 2027-05-05 | 2470 |  | RGA -FINISHING | 7365285 |
| 2472 | 40200.40300.41100.52700.55500.57600.137600.2230500 | FIRE FIGHTING | 6d | 2027-03-13 | 2027-03-18 | 2218 |  | RGA -FINISHING | 7833272 |
| 2473 | 40200.40300.41100.52700.55500.57600.137600.2230600 | INTERNAL PAINTING - PUTTY / PRIMER APPLICATION | 6d | 2027-06-02 | 2027-06-07 | 2475 |  | RGA -FINISHING | 7833282 |
| 2474 | 40200.40300.41100.52700.55500.57600.137600.2230700 | FLAT FLOORING | 5d | 2027-05-06 | 2027-05-10 | 2471 |  | RGA -FINISHING | 7833292 |
| 2475 | 40200.40300.41100.52700.55500.57600.137600.2230800 | WINDOW FIXING | 12d | 2027-05-21 | 2027-06-01 | 2474FS+10d |  | RGA -FINISHING | 7833302 |
| 2476 | 40200.40300.41100.52700.55500.57600.137600.2230900 | INTERNAL PAINTING - 1ST COAT | 12d | 2027-06-08 | 2027-06-19 | 2473 |  | RGA -FINISHING | 7833312 |
| 2477 | 40200.40300.41100.52700.55500.57600.137600.2231000 | INTERNAL DOOR FIXING | 15d | 2027-06-18 | 2027-07-02 | 2476FS-2d |  | RGA -FINISHING | 7365345 |
| 2478 | 40200.40300.41100.52700.55500.57600.137600.2231100 | WIRING & SWITCH PLATE FIXING | 8d | 2027-06-29 | 2027-07-06 | 2477FS-4d |  | RGA -FINISHING | 7833322 |
| 2479 | 40200.40300.41100.52700.55500.57600.137600.2231200 | TOILET FALSE CEILING | 7d | 2027-07-07 | 2027-07-13 | 2478 |  | RGA -FINISHING | 7833332 |
| 2480 | 40200.40300.41100.52700.55500.57600.137600.2231300 | MAIN DOOR FRAME SHUTTER FIXING | 6d | 2028-01-23 | 2028-01-28 | 2762 |  | RGA -FINISHING | 7833342 |
| 2481 | 40200.40300.41100.52700.55500.57600.137600.2231400 | FINAL COAT PAINT | 8d | 2028-01-29 | 2028-02-05 | 2480 |  | RGA -FINISHING | 7833352 |

| ID | WBS | Task | Duration | Start | Finish | Predecessors | Constraint | Calendar | Unique_Task_ID |
| --- | --- | --- | --- | --- | --- | --- | --- | --- | --- |
| 2482 | 40200.40300.41100.52700.55500.57600.137700 | **11TH FLOOR** | 315d | 2027-03-27 | 2028-02-04 |  | start no earlier than 2027-03-27 | RGA -FINISHING | 7362335 |
| 2483 | 40200.40300.41100.52700.55500.57600.137700.2231500 | TOILET DADO TILE FIXING | 7d | 2027-05-06 | 2027-05-12 | 2226 |  | RGA -FINISHING | 7833362 |
| 2484 | 40200.40300.41100.52700.55500.57600.137700.2231600 | TOILET FLOORING WORK | 7d | 2027-05-13 | 2027-05-19 | 2483 |  | RGA -FINISHING | 7365405 |
| 2485 | 40200.40300.41100.52700.55500.57600.137700.2231700 | FIRE FIGHTING | 6d | 2027-03-27 | 2027-04-01 | 2225 |  | RGA -FINISHING | 7833372 |
| 2486 | 40200.40300.41100.52700.55500.57600.137700.2231800 | INTERNAL PAINTING - PUTTY / PRIMER APPLICATION | 6d | 2027-06-16 | 2027-06-21 | 2488 |  | RGA -FINISHING | 7833382 |
| 2487 | 40200.40300.41100.52700.55500.57600.137700.2231900 | FLAT FLOORING | 5d | 2027-05-20 | 2027-05-24 | 2484 |  | RGA -FINISHING | 7833392 |
| 2488 | 40200.40300.41100.52700.55500.57600.137700.2232000 | WINDOW FIXING | 12d | 2027-06-04 | 2027-06-15 | 2487FS+10d |  | RGA -FINISHING | 7833402 |
| 2489 | 40200.40300.41100.52700.55500.57600.137700.2232100 | INTERNAL PAINTING - 1ST COAT | 12d | 2027-06-22 | 2027-07-03 | 2486 |  | RGA -FINISHING | 7833412 |
| 2490 | 40200.40300.41100.52700.55500.57600.137700.2232200 | INTERNAL DOOR FIXING | 15d | 2027-07-02 | 2027-07-16 | 2489FS-2d |  | RGA -FINISHING | 7365465 |
| 2491 | 40200.40300.41100.52700.55500.57600.137700.2232300 | WIRING & SWITCH PLATE FIXING | 8d | 2027-07-13 | 2027-07-20 | 2490FS-4d |  | RGA -FINISHING | 7833422 |
| 2492 | 40200.40300.41100.52700.55500.57600.137700.2232400 | TOILET FALSE CEILING | 7d | 2027-07-21 | 2027-07-27 | 2491 |  | RGA -FINISHING | 7833432 |
| 2493 | 40200.40300.41100.52700.55500.57600.137700.2232500 | MAIN DOOR FRAME SHUTTER FIXING | 6d | 2028-01-22 | 2028-01-27 | 2770 |  | RGA -FINISHING | 7833442 |
| 2494 | 40200.40300.41100.52700.55500.57600.137700.2232600 | FINAL COAT PAINT | 8d | 2028-01-28 | 2028-02-04 | 2493 |  | RGA -FINISHING | 7833452 |
| 2495 | 40200.40300.41100.52700.55500.57600.137800 | **12TH FLOOR** | 304d | 2027-04-11 | 2028-02-08 |  | start no earlier than 2027-04-11 | RGA -FINISHING | 7362345 |
| 2496 | 40200.40300.41100.52700.55500.57600.137800.2232700 | TOILET DADO TILE FIXING | 7d | 2027-05-13 | 2027-05-19 | 2233 |  | RGA -FINISHING | 7833462 |
| 2497 | 40200.40300.41100.52700.55500.57600.137800.2232800 | TOILET FLOORING WORK | 7d | 2027-05-13 | 2027-05-19 | 2496FF |  | RGA -FINISHING | 7365525 |
| 2498 | 40200.40300.41100.52700.55500.57600.137800.2232900 | FIRE FIGHTING | 6d | 2027-04-11 | 2027-04-16 | 2232 |  | RGA -FINISHING | 7833472 |
| 2499 | 40200.40300.41100.52700.55500.57600.137800.2233000 | INTERNAL PAINTING - PUTTY / PRIMER APPLICATION | 6d | 2027-06-16 | 2027-06-21 | 2501 |  | RGA -FINISHING | 7833482 |
| 2500 | 40200.40300.41100.52700.55500.57600.137800.2233100 | FLAT FLOORING | 5d | 2027-05-20 | 2027-05-24 | 2497 |  | RGA -FINISHING | 7833492 |
| 2501 | 40200.40300.41100.52700.55500.57600.137800.2233200 | WINDOW FIXING | 12d | 2027-06-04 | 2027-06-15 | 2500FS+10d |  | RGA -FINISHING | 7365565 |
| 2502 | 40200.40300.41100.52700.55500.57600.137800.2233300 | INTERNAL PAINTING - 1ST COAT | 12d | 2027-06-22 | 2027-07-03 | 2499 |  | RGA -FINISHING | 7365575 |
| 2503 | 40200.40300.41100.52700.55500.57600.137800.2233400 | INTERNAL DOOR FIXING | 15d | 2027-07-02 | 2027-07-16 | 2502FS-2d |  | RGA -FINISHING | 7365585 |
| 2504 | 40200.40300.41100.52700.55500.57600.137800.2233500 | WIRING & SWITCH PLATE FIXING | 8d | 2027-07-13 | 2027-07-20 | 2503FS-4d |  | RGA -FINISHING | 7365595 |
| 2505 | 40200.40300.41100.52700.55500.57600.137800.2233600 | TOILET FALSE CEILING | 7d | 2027-07-21 | 2027-07-27 | 2504 |  | RGA -FINISHING | 7365605 |
| 2506 | 40200.40300.41100.52700.55500.57600.137800.2233700 | MAIN DOOR FRAME SHUTTER FIXING | 6d | 2028-01-26 | 2028-01-31 | 2778 |  | RGA -FINISHING | 7365615 |
| 2507 | 40200.40300.41100.52700.55500.57600.137800.2233800 | FINAL COAT PAINT | 8d | 2028-02-01 | 2028-02-08 | 2506 |  | RGA -FINISHING | 7365625 |

| ID | WBS | Task | Duration | Start | Finish | Predecessors | Constraint | Calendar | Unique_Task_ID |
| --- | --- | --- | --- | --- | --- | --- | --- | --- | --- |
| 2508 | 40200.40300.41100.52700.55500.57600.137900 | **13TH FLOOR** | 292d | 2027-04-23 | 2028-02-08 |  | start no earlier than 2027-04-23 | RGA -FINISHING | 7362355 |
| 2509 | 40200.40300.41100.52700.55500.57600.137900.2233900 | TOILET DADO TILE FIXING | 10d | 2027-06-18 | 2027-06-27 | 2240 |  | RGA -FINISHING | 7365635 |
| 2510 | 40200.40300.41100.52700.55500.57600.137900.2234000 | TOILET FLOORING WORK | 7d | 2027-06-28 | 2027-07-04 | 2509 |  | RGA -FINISHING | 7365645 |
| 2511 | 40200.40300.41100.52700.55500.57600.137900.2234100 | FIRE FIGHTING | 8d | 2027-04-23 | 2027-04-30 | 2239 |  | RGA -FINISHING | 7833502 |
| 2512 | 40200.40300.41100.52700.55500.57600.137900.2234200 | INTERNAL PAINTING - PUTTY / PRIMER APPLICATION | 5d | 2027-07-27 | 2027-07-31 | 2514 |  | RGA -FINISHING | 7833512 |
| 2513 | 40200.40300.41100.52700.55500.57600.137900.2234300 | FLAT FLOORING | 7d | 2027-07-05 | 2027-07-11 | 2510 |  | RGA -FINISHING | 7833522 |
| 2514 | 40200.40300.41100.52700.55500.57600.137900.2234400 | WINDOW FIXING | 5d | 2027-07-22 | 2027-07-26 | 2513FS+10d |  | RGA -FINISHING | 7833532 |
| 2515 | 40200.40300.41100.52700.55500.57600.137900.2234500 | INTERNAL PAINTING - 1ST COAT | 4d | 2027-08-01 | 2027-08-04 | 2512 |  | RGA -FINISHING | 7833542 |
| 2516 | 40200.40300.41100.52700.55500.57600.137900.2234600 | INTERNAL DOOR FIXING | 15d | 2027-08-03 | 2027-08-17 | 2515FS-2d |  | RGA -FINISHING | 7833552 |
| 2517 | 40200.40300.41100.52700.55500.57600.137900.2234700 | WIRING & SWITCH PLATE FIXING | 8d | 2027-08-14 | 2027-08-21 | 2516FS-4d |  | RGA -FINISHING | 7833562 |
| 2518 | 40200.40300.41100.52700.55500.57600.137900.2234800 | TOILET FALSE CEILING | 7d | 2027-08-22 | 2027-08-28 | 2517 |  | RGA -FINISHING | 7833572 |
| 2519 | 40200.40300.41100.52700.55500.57600.137900.2234900 | MAIN DOOR FRAME SHUTTER FIXING | 6d | 2028-01-26 | 2028-01-31 | 2786 |  | RGA -FINISHING | 7833582 |
| 2520 | 40200.40300.41100.52700.55500.57600.137900.2235000 | FINAL COAT PAINT | 8d | 2028-02-01 | 2028-02-08 | 2519 |  | RGA -FINISHING | 7833592 |
| 2521 | 40200.40300.41100.52700.55500.57600.138000 | **14TH FLOOR** | 273d | 2027-05-12 | 2028-02-08 |  | start no earlier than 2027-05-12 | RGA -FINISHING | 7362365 |
| 2522 | 40200.40300.41100.52700.55500.57600.138000.2235100 | TOILET DADO TILE FIXING | 10d | 2027-07-03 | 2027-07-12 | 2247 |  | RGA -FINISHING | 7833602 |
| 2523 | 40200.40300.41100.52700.55500.57600.138000.2235200 | TOILET FLOORING WORK | 7d | 2027-07-13 | 2027-07-19 | 2522 |  | RGA -FINISHING | 7833612 |
| 2524 | 40200.40300.41100.52700.55500.57600.138000.2235300 | FIRE FIGHTING | 8d | 2027-05-12 | 2027-05-19 | 2246 |  | RGA -FINISHING | 7833622 |
| 2525 | 40200.40300.41100.52700.55500.57600.138000.2235400 | INTERNAL PAINTING - PUTTY / PRIMER APPLICATION | 5d | 2027-08-11 | 2027-08-15 | 2527 |  | RGA -FINISHING | 7833632 |
| 2526 | 40200.40300.41100.52700.55500.57600.138000.2235500 | FLAT FLOORING | 7d | 2027-07-20 | 2027-07-26 | 2523 |  | RGA -FINISHING | 7833642 |
| 2527 | 40200.40300.41100.52700.55500.57600.138000.2235600 | WINDOW FIXING | 5d | 2027-08-06 | 2027-08-10 | 2526FS+10d |  | RGA -FINISHING | 7833652 |
| 2528 | 40200.40300.41100.52700.55500.57600.138000.2235700 | INTERNAL PAINTING - 1ST COAT | 4d | 2027-08-16 | 2027-08-19 | 2525 |  | RGA -FINISHING | 7833662 |
| 2529 | 40200.40300.41100.52700.55500.57600.138000.2235800 | INTERNAL DOOR FIXING | 15d | 2027-08-18 | 2027-09-01 | 2528FS-2d |  | RGA -FINISHING | 7365825 |
| 2530 | 40200.40300.41100.52700.55500.57600.138000.2235900 | WIRING & SWITCH PLATE FIXING | 8d | 2027-08-29 | 2027-09-05 | 2529FS-4d |  | RGA -FINISHING | 7365835 |
| 2531 | 40200.40300.41100.52700.55500.57600.138000.2236000 | TOILET FALSE CEILING | 7d | 2027-09-06 | 2027-09-12 | 2530 |  | RGA -FINISHING | 7365845 |
| 2532 | 40200.40300.41100.52700.55500.57600.138000.2236100 | MAIN DOOR FRAME SHUTTER FIXING | 6d | 2028-01-26 | 2028-01-31 | 2794 |  | RGA -FINISHING | 7365855 |
| 2533 | 40200.40300.41100.52700.55500.57600.138000.2236200 | FINAL COAT PAINT | 8d | 2028-02-01 | 2028-02-08 | 2532 |  | RGA -FINISHING | 7365865 |

| ID | WBS | Task | Duration | Start | Finish | Predecessors | Constraint | Calendar | Unique_Task_ID |
| --- | --- | --- | --- | --- | --- | --- | --- | --- | --- |
| 2534 | 40200.40300.41100.52700.55500.57600.138100 | **15TH FLOOR** | 253d | 2027-06-01 | 2028-02-08 |  | start no earlier than 2027-06-01 | RGA -FINISHING | 7805232 |
| 2535 | 40200.40300.41100.52700.55500.57600.138100.2236300 | TOILET DADO TILE FIXING | 10d | 2027-07-23 | 2027-08-01 | 2254 |  | RGA -FINISHING | 7365875 |
| 2536 | 40200.40300.41100.52700.55500.57600.138100.2236400 | TOILET FLOORING WORK | 7d | 2027-08-02 | 2027-08-08 | 2535 |  | RGA -FINISHING | 7365885 |
| 2537 | 40200.40300.41100.52700.55500.57600.138100.2236500 | FIRE FIGHTING | 8d | 2027-06-01 | 2027-06-08 | 2253 |  | RGA -FINISHING | 7365895 |
| 2538 | 40200.40300.41100.52700.55500.57600.138100.2236600 | INTERNAL PAINTING - PUTTY / PRIMER APPLICATION | 5d | 2027-08-31 | 2027-09-04 | 2540 |  | RGA -FINISHING | 7365905 |
| 2539 | 40200.40300.41100.52700.55500.57600.138100.2236700 | FLAT FLOORING | 7d | 2027-08-09 | 2027-08-15 | 2536 |  | RGA -FINISHING | 7833672 |
| 2540 | 40200.40300.41100.52700.55500.57600.138100.2236800 | WINDOW FIXING | 5d | 2027-08-26 | 2027-08-30 | 2539FS+10d |  | RGA -FINISHING | 7833682 |
| 2541 | 40200.40300.41100.52700.55500.57600.138100.2236900 | INTERNAL PAINTING - 1ST COAT | 4d | 2027-09-05 | 2027-09-08 | 2538 |  | RGA -FINISHING | 7833692 |
| 2542 | 40200.40300.41100.52700.55500.57600.138100.2237000 | INTERNAL DOOR FIXING | 15d | 2027-09-07 | 2027-09-21 | 2541FS-2d |  | RGA -FINISHING | 7833702 |
| 2543 | 40200.40300.41100.52700.55500.57600.138100.2237100 | WIRING & SWITCH PLATE FIXING | 8d | 2027-09-18 | 2027-09-25 | 2542FS-4d |  | RGA -FINISHING | 7833712 |
| 2544 | 40200.40300.41100.52700.55500.57600.138100.2237200 | TOILET FALSE CEILING | 7d | 2027-09-26 | 2027-10-02 | 2543 |  | RGA -FINISHING | 7833722 |
| 2545 | 40200.40300.41100.52700.55500.57600.138100.2237300 | MAIN DOOR FRAME SHUTTER FIXING | 6d | 2028-01-26 | 2028-01-31 | 2802 |  | RGA -FINISHING | 7833732 |
| 2546 | 40200.40300.41100.52700.55500.57600.138100.2237400 | FINAL COAT PAINT | 8d | 2028-02-01 | 2028-02-08 | 2545 |  | RGA -FINISHING | 7833742 |
| 2547 | 40200.40300.41100.52700.55500.57600.138200 | **16TH FLOOR** | 239d | 2027-06-18 | 2028-02-11 |  | start no earlier than 2027-06-18 | RGA -FINISHING | 7805222 |
| 2548 | 40200.40300.41100.52700.55500.57600.138200.2237500 | TOILET DADO TILE FIXING | 10d | 2027-08-09 | 2027-08-18 | 2261 |  | RGA -FINISHING | 7833752 |
| 2549 | 40200.40300.41100.52700.55500.57600.138200.2237600 | TOILET FLOORING WORK | 7d | 2027-08-19 | 2027-08-25 | 2548 |  | RGA -FINISHING | 7833762 |
| 2550 | 40200.40300.41100.52700.55500.57600.138200.2237700 | FIRE FIGHTING | 8d | 2027-06-18 | 2027-06-25 | 2260 |  | RGA -FINISHING | 7833772 |
| 2551 | 40200.40300.41100.52700.55500.57600.138200.2237800 | INTERNAL PAINTING - PUTTY / PRIMER APPLICATION | 5d | 2027-09-17 | 2027-09-21 | 2553 |  | RGA -FINISHING | 7833782 |
| 2552 | 40200.40300.41100.52700.55500.57600.138200.2237900 | FLAT FLOORING | 7d | 2027-08-26 | 2027-09-01 | 2549 |  | RGA -FINISHING | 7833792 |
| 2553 | 40200.40300.41100.52700.55500.57600.138200.2238000 | WINDOW FIXING | 5d | 2027-09-12 | 2027-09-16 | 2552FS+10d |  | RGA -FINISHING | 7833802 |
| 2554 | 40200.40300.41100.52700.55500.57600.138200.2238100 | INTERNAL PAINTING - 1ST COAT | 4d | 2027-09-22 | 2027-09-25 | 2551 |  | RGA -FINISHING | 7833812 |
| 2555 | 40200.40300.41100.52700.55500.57600.138200.2238200 | INTERNAL DOOR FIXING | 15d | 2027-09-24 | 2027-10-08 | 2554FS-2d |  | RGA -FINISHING | 7833822 |
| 2556 | 40200.40300.41100.52700.55500.57600.138200.2238300 | WIRING & SWITCH PLATE FIXING | 8d | 2027-10-05 | 2027-10-12 | 2555FS-4d |  | RGA -FINISHING | 7833832 |
| 2557 | 40200.40300.41100.52700.55500.57600.138200.2238400 | TOILET FALSE CEILING | 7d | 2027-10-13 | 2027-10-19 | 2556 |  | RGA -FINISHING | 7366085 |
| 2558 | 40200.40300.41100.52700.55500.57600.138200.2238500 | MAIN DOOR FRAME SHUTTER FIXING | 6d | 2028-01-29 | 2028-02-03 | 2810 |  | RGA -FINISHING | 7366095 |
| 2559 | 40200.40300.41100.52700.55500.57600.138200.2238600 | FINAL COAT PAINT | 8d | 2028-02-04 | 2028-02-11 | 2558 |  | RGA -FINISHING | 7366105 |

| ID | WBS | Task | Duration | Start | Finish | Predecessors | Constraint | Calendar | Unique_Task_ID |
| --- | --- | --- | --- | --- | --- | --- | --- | --- | --- |
| 2560 | 40200.40300.41100.52700.55500.57600.138300 | **17TH FLOOR** | 222d | 2027-07-05 | 2028-02-11 |  | start no earlier than 2027-07-05 | RGA -FINISHING | 7362395 |
| 2561 | 40200.40300.41100.52700.55500.57600.138300.2238700 | TOILET DADO TILE FIXING | 10d | 2027-08-16 | 2027-08-25 | 2268 |  | RGA -FINISHING | 7366115 |
| 2562 | 40200.40300.41100.52700.55500.57600.138300.2238800 | TOILET FLOORING WORK | 7d | 2027-08-26 | 2027-09-01 | 2561 |  | RGA -FINISHING | 7366125 |
| 2563 | 40200.40300.41100.52700.55500.57600.138300.2238900 | FIRE FIGHTING | 8d | 2027-07-05 | 2027-07-12 | 2267 |  | RGA -FINISHING | 7366135 |
| 2564 | 40200.40300.41100.52700.55500.57600.138300.2239000 | INTERNAL PAINTING - PUTTY / PRIMER APPLICATION | 5d | 2027-09-24 | 2027-09-28 | 2566 |  | RGA -FINISHING | 7366145 |
| 2565 | 40200.40300.41100.52700.55500.57600.138300.2239100 | FLAT FLOORING | 7d | 2027-09-02 | 2027-09-08 | 2562 |  | RGA -FINISHING | 7366155 |
| 2566 | 40200.40300.41100.52700.55500.57600.138300.2239200 | WINDOW FIXING | 5d | 2027-09-19 | 2027-09-23 | 2565FS+10d |  | RGA -FINISHING | 7366165 |
| 2567 | 40200.40300.41100.52700.55500.57600.138300.2239300 | INTERNAL PAINTING - 1ST COAT | 4d | 2027-09-29 | 2027-10-02 | 2564 |  | RGA -FINISHING | 7833842 |
| 2568 | 40200.40300.41100.52700.55500.57600.138300.2239400 | INTERNAL DOOR FIXING | 15d | 2027-10-01 | 2027-10-15 | 2567FS-2d |  | RGA -FINISHING | 7833852 |
| 2569 | 40200.40300.41100.52700.55500.57600.138300.2239500 | WIRING & SWITCH PLATE FIXING | 8d | 2027-10-12 | 2027-10-19 | 2568FS-4d |  | RGA -FINISHING | 7833862 |
| 2570 | 40200.40300.41100.52700.55500.57600.138300.2239600 | TOILET FALSE CEILING | 7d | 2027-10-20 | 2027-10-26 | 2569 |  | RGA -FINISHING | 7833872 |
| 2571 | 40200.40300.41100.52700.55500.57600.138300.2239700 | MAIN DOOR FRAME SHUTTER FIXING | 6d | 2028-01-29 | 2028-02-03 | 2818 |  | RGA -FINISHING | 7833882 |
| 2572 | 40200.40300.41100.52700.55500.57600.138300.2239800 | FINAL COAT PAINT | 8d | 2028-02-04 | 2028-02-11 | 2571 |  | RGA -FINISHING | 7833892 |
| 2573 | 40200.40300.41100.52700.55500.57600.138400 | **18TH FLOOR** | 205d | 2027-07-22 | 2028-02-11 |  | start no earlier than 2027-07-22 | RGA -FINISHING | 7362405 |
| 2574 | 40200.40300.41100.52700.55500.57600.138400.2239900 | TOILET DADO TILE FIXING | 10d | 2027-09-02 | 2027-09-11 | 2275 |  | RGA -FINISHING | 7833902 |
| 2575 | 40200.40300.41100.52700.55500.57600.138400.2240000 | TOILET FLOORING WORK | 7d | 2027-09-12 | 2027-09-18 | 2574 |  | RGA -FINISHING | 7833912 |
| 2576 | 40200.40300.41100.52700.55500.57600.138400.2240100 | FIRE FIGHTING | 8d | 2027-07-22 | 2027-07-29 | 2274 |  | RGA -FINISHING | 7833922 |
| 2577 | 40200.40300.41100.52700.55500.57600.138400.2240200 | INTERNAL PAINTING - PUTTY / PRIMER APPLICATION | 5d | 2027-10-11 | 2027-10-15 | 2579 |  | RGA -FINISHING | 7833932 |
| 2578 | 40200.40300.41100.52700.55500.57600.138400.2240300 | FLAT FLOORING | 7d | 2027-09-19 | 2027-09-25 | 2575 |  | RGA -FINISHING | 7833942 |
| 2579 | 40200.40300.41100.52700.55500.57600.138400.2240400 | WINDOW FIXING | 5d | 2027-10-06 | 2027-10-10 | 2578FS+10d |  | RGA -FINISHING | 7833952 |
| 2580 | 40200.40300.41100.52700.55500.57600.138400.2240500 | INTERNAL PAINTING - 1ST COAT | 4d | 2027-10-16 | 2027-10-19 | 2577 |  | RGA -FINISHING | 7833962 |
| 2581 | 40200.40300.41100.52700.55500.57600.138400.2240600 | INTERNAL DOOR FIXING | 15d | 2027-10-18 | 2027-11-01 | 2580FS-2d |  | RGA -FINISHING | 7833972 |
| 2582 | 40200.40300.41100.52700.55500.57600.138400.2240700 | WIRING & SWITCH PLATE FIXING | 8d | 2027-10-29 | 2027-11-05 | 2581FS-4d |  | RGA -FINISHING | 7833982 |
| 2583 | 40200.40300.41100.52700.55500.57600.138400.2240800 | TOILET FALSE CEILING | 7d | 2027-11-06 | 2027-11-12 | 2582 |  | RGA -FINISHING | 7833992 |
| 2584 | 40200.40300.41100.52700.55500.57600.138400.2240900 | MAIN DOOR FRAME SHUTTER FIXING | 6d | 2028-01-29 | 2028-02-03 | 2826 |  | RGA -FINISHING | 7834002 |
| 2585 | 40200.40300.41100.52700.55500.57600.138400.2241000 | FINAL COAT PAINT | 8d | 2028-02-04 | 2028-02-11 | 2584 |  | RGA -FINISHING | 7366345 |

| ID | WBS | Task | Duration | Start | Finish | Predecessors | Constraint | Calendar | Unique_Task_ID |
| --- | --- | --- | --- | --- | --- | --- | --- | --- | --- |
| 2586 | 40200.40300.41100.52700.55500.57600.138500 | **19TH FLOOR** | 188d | 2027-08-08 | 2028-02-11 |  | start no earlier than 2027-08-08 | RGA -FINISHING | 7362415 |
| 2587 | 40200.40300.41100.52700.55500.57600.138500.2241100 | TOILET DADO TILE FIXING | 10d | 2027-09-19 | 2027-09-28 | 2282 |  | RGA -FINISHING | 7366355 |
| 2588 | 40200.40300.41100.52700.55500.57600.138500.2241200 | TOILET FLOORING WORK | 7d | 2027-09-29 | 2027-10-05 | 2587 |  | RGA -FINISHING | 7366365 |
| 2589 | 40200.40300.41100.52700.55500.57600.138500.2241300 | FIRE FIGHTING | 8d | 2027-08-08 | 2027-08-15 | 2281 |  | RGA -FINISHING | 7366375 |
| 2590 | 40200.40300.41100.52700.55500.57600.138500.2241400 | INTERNAL PAINTING - PUTTY / PRIMER APPLICATION | 5d | 2027-10-28 | 2027-11-01 | 2592 |  | RGA -FINISHING | 7366385 |
| 2591 | 40200.40300.41100.52700.55500.57600.138500.2241500 | FLAT FLOORING | 7d | 2027-10-06 | 2027-10-12 | 2588 |  | RGA -FINISHING | 7366395 |
| 2592 | 40200.40300.41100.52700.55500.57600.138500.2241600 | WINDOW FIXING | 5d | 2027-10-23 | 2027-10-27 | 2591FS+10d |  | RGA -FINISHING | 7366405 |
| 2593 | 40200.40300.41100.52700.55500.57600.138500.2241700 | INTERNAL PAINTING - 1ST COAT | 4d | 2027-11-02 | 2027-11-05 | 2590 |  | RGA -FINISHING | 7366415 |
| 2594 | 40200.40300.41100.52700.55500.57600.138500.2241800 | INTERNAL DOOR FIXING | 15d | 2027-11-04 | 2027-11-18 | 2593FS-2d |  | RGA -FINISHING | 7366425 |
| 2595 | 40200.40300.41100.52700.55500.57600.138500.2241900 | WIRING & SWITCH PLATE FIXING | 8d | 2027-11-15 | 2027-11-22 | 2594FS-4d |  | RGA -FINISHING | 7834012 |
| 2596 | 40200.40300.41100.52700.55500.57600.138500.2242000 | TOILET FALSE CEILING | 7d | 2027-11-23 | 2027-11-29 | 2595 |  | RGA -FINISHING | 7834022 |
| 2597 | 40200.40300.41100.52700.55500.57600.138500.2242100 | MAIN DOOR FRAME SHUTTER FIXING | 6d | 2028-01-29 | 2028-02-03 | 2834 |  | RGA -FINISHING | 7834032 |
| 2598 | 40200.40300.41100.52700.55500.57600.138500.2242200 | FINAL COAT PAINT | 8d | 2028-02-04 | 2028-02-11 | 2597 |  | RGA -FINISHING | 7834042 |
| 2599 | 40200.40300.41100.52700.55500.57600.138600 | **20TH FLOOR** | 171d | 2027-08-25 | 2028-02-11 |  | start no earlier than 2027-08-25 | RGA -FINISHING | 7362425 |
| 2600 | 40200.40300.41100.52700.55500.57600.138600.2242300 | TOILET DADO TILE FIXING | 10d | 2027-10-08 | 2027-10-17 | 2289 |  | RGA -FINISHING | 7834052 |
| 2601 | 40200.40300.41100.52700.55500.57600.138600.2242400 | TOILET FLOORING WORK | 7d | 2027-10-18 | 2027-10-24 | 2600 |  | RGA -FINISHING | 7834062 |
| 2602 | 40200.40300.41100.52700.55500.57600.138600.2242500 | FIRE FIGHTING | 8d | 2027-08-25 | 2027-09-01 | 2288 |  | RGA -FINISHING | 7834072 |
| 2603 | 40200.40300.41100.52700.55500.57600.138600.2242600 | INTERNAL PAINTING - PUTTY / PRIMER APPLICATION | 5d | 2027-11-16 | 2027-11-20 | 2605 |  | RGA -FINISHING | 7834082 |
| 2604 | 40200.40300.41100.52700.55500.57600.138600.2242700 | FLAT FLOORING | 7d | 2027-10-25 | 2027-10-31 | 2601 |  | RGA -FINISHING | 7834092 |
| 2605 | 40200.40300.41100.52700.55500.57600.138600.2242800 | WINDOW FIXING | 5d | 2027-11-11 | 2027-11-15 | 2604FS+10d |  | RGA -FINISHING | 7834102 |
| 2606 | 40200.40300.41100.52700.55500.57600.138600.2242900 | INTERNAL PAINTING - 1ST COAT | 4d | 2027-11-21 | 2027-11-24 | 2603 |  | RGA -FINISHING | 7834112 |
| 2607 | 40200.40300.41100.52700.55500.57600.138600.2243000 | INTERNAL DOOR FIXING | 15d | 2027-11-23 | 2027-12-07 | 2606FS-2d |  | RGA -FINISHING | 7834122 |
| 2608 | 40200.40300.41100.52700.55500.57600.138600.2243100 | WIRING & SWITCH PLATE FIXING | 8d | 2027-12-04 | 2027-12-11 | 2607FS-4d |  | RGA -FINISHING | 7834132 |
| 2609 | 40200.40300.41100.52700.55500.57600.138600.2243200 | TOILET FALSE CEILING | 7d | 2027-12-12 | 2027-12-18 | 2608 |  | RGA -FINISHING | 7834142 |
| 2610 | 40200.40300.41100.52700.55500.57600.138600.2243300 | MAIN DOOR FRAME SHUTTER FIXING | 6d | 2028-01-29 | 2028-02-03 | 2842 |  | RGA -FINISHING | 7834152 |
| 2611 | 40200.40300.41100.52700.55500.57600.138600.2243400 | FINAL COAT PAINT | 8d | 2028-02-04 | 2028-02-11 | 2610 |  | RGA -FINISHING | 7834162 |

| ID | WBS | Task | Duration | Start | Finish | Predecessors | Constraint | Calendar | Unique_Task_ID |
| --- | --- | --- | --- | --- | --- | --- | --- | --- | --- |
| 2612 | 40200.40300.41100.52700.55500.57600.138700 | **21st FLOOR** | 157d | 2027-09-11 | 2028-02-14 |  | start no earlier than 2027-09-11 | RGA -FINISHING | 7362435 |
| 2613 | 40200.40300.41100.52700.55500.57600.138700.2243500 | TOILET DADO TILE FIXING | 10d | 2027-10-25 | 2027-11-03 | 2296 |  | RGA -FINISHING | 7834172 |
| 2614 | 40200.40300.41100.52700.55500.57600.138700.2243600 | TOILET FLOORING WORK | 7d | 2027-11-04 | 2027-11-10 | 2613 |  | RGA -FINISHING | 7834182 |
| 2615 | 40200.40300.41100.52700.55500.57600.138700.2243700 | FIRE FIGHTING | 8d | 2027-09-11 | 2027-09-18 | 2295 |  | RGA -FINISHING | 7834192 |
| 2616 | 40200.40300.41100.52700.55500.57600.138700.2243800 | INTERNAL PAINTING - PUTTY / PRIMER APPLICATION | 15d | 2027-12-03 | 2027-12-17 | 2618 |  | RGA -FINISHING | 7834202 |
| 2617 | 40200.40300.41100.52700.55500.57600.138700.2243900 | FLAT FLOORING | 5d | 2027-11-11 | 2027-11-15 | 2614 |  | RGA -FINISHING | 7834212 |
| 2618 | 40200.40300.41100.52700.55500.57600.138700.2244000 | WINDOW FIXING | 7d | 2027-11-26 | 2027-12-02 | 2617FS+10d |  | RGA -FINISHING | 7834222 |
| 2619 | 40200.40300.41100.52700.55500.57600.138700.2244100 | INTERNAL PAINTING - 1ST COAT | 5d | 2027-12-18 | 2027-12-22 | 2616 |  | RGA -FINISHING | 7834232 |
| 2620 | 40200.40300.41100.52700.55500.57600.138700.2244200 | INTERNAL DOOR FIXING | 4d | 2027-12-21 | 2027-12-24 | 2619FS-2d |  | RGA -FINISHING | 7834242 |
| 2621 | 40200.40300.41100.52700.55500.57600.138700.2244300 | WIRING & SWITCH PLATE FIXING | 8d | 2027-12-21 | 2027-12-28 | 2620FS-4d |  | RGA -FINISHING | 7834252 |
| 2622 | 40200.40300.41100.52700.55500.57600.138700.2244400 | TOILET FALSE CEILING | 7d | 2027-12-29 | 2028-01-04 | 2621 |  | RGA -FINISHING | 7834262 |
| 2623 | 40200.40300.41100.52700.55500.57600.138700.2244500 | MAIN DOOR FRAME SHUTTER FIXING | 6d | 2028-02-01 | 2028-02-06 | 2850 |  | RGA -FINISHING | 7834272 |
| 2624 | 40200.40300.41100.52700.55500.57600.138700.2244600 | FINAL COAT PAINT | 8d | 2028-02-07 | 2028-02-14 | 2623 |  | RGA -FINISHING | 7834282 |
| 2625 | 40200.40300.41100.52700.55500.57600.138800 | **22nd FLOOR** | 155d | 2027-09-13 | 2028-02-14 |  | start no earlier than 2027-09-13 | RGA -FINISHING | 7362445 |
| 2626 | 40200.40300.41100.52700.55500.57600.138800.2244700 | TOILET DADO TILE FIXING | 10d | 2027-11-04 | 2027-11-13 | 2303 |  | RGA -FINISHING | 7834292 |
| 2627 | 40200.40300.41100.52700.55500.57600.138800.2244800 | TOILET FLOORING WORK | 7d | 2027-11-14 | 2027-11-20 | 2626 |  | RGA -FINISHING | 7834302 |
| 2628 | 40200.40300.41100.52700.55500.57600.138800.2244900 | FIRE FIGHTING | 8d | 2027-09-13 | 2027-09-20 | 2302 |  | RGA -FINISHING | 7834312 |
| 2629 | 40200.40300.41100.52700.55500.57600.138800.2245000 | INTERNAL PAINTING - PUTTY / PRIMER APPLICATION | 5d | 2027-12-18 | 2027-12-22 | 2631 |  | RGA -FINISHING | 7834322 |
| 2630 | 40200.40300.41100.52700.55500.57600.138800.2245100 | FLAT FLOORING | 7d | 2027-11-21 | 2027-11-27 | 2627 |  | RGA -FINISHING | 7834332 |
| 2631 | 40200.40300.41100.52700.55500.57600.138800.2245200 | WINDOW FIXING | 5d | 2027-12-13 | 2027-12-17 | 2618FS+10d |  | RGA -FINISHING | 7834342 |
| 2632 | 40200.40300.41100.52700.55500.57600.138800.2245300 | INTERNAL PAINTING - 1ST COAT | 4d | 2027-12-23 | 2027-12-26 | 2629 |  | RGA -FINISHING | 7834352 |
| 2633 | 40200.40300.41100.52700.55500.57600.138800.2245400 | INTERNAL DOOR FIXING | 15d | 2027-12-25 | 2028-01-08 | 2632FS-2d |  | RGA -FINISHING | 7834362 |
| 2634 | 40200.40300.41100.52700.55500.57600.138800.2245500 | WIRING & SWITCH PLATE FIXING | 8d | 2028-01-05 | 2028-01-12 | 2633FS-4d |  | RGA -FINISHING | 7834372 |
| 2635 | 40200.40300.41100.52700.55500.57600.138800.2245600 | TOILET FALSE CEILING | 7d | 2028-01-13 | 2028-01-19 | 2634 |  | RGA -FINISHING | 7834382 |
| 2636 | 40200.40300.41100.52700.55500.57600.138800.2245700 | MAIN DOOR FRAME SHUTTER FIXING | 6d | 2028-02-01 | 2028-02-06 | 2858 |  | RGA -FINISHING | 7834392 |
| 2637 | 40200.40300.41100.52700.55500.57600.138800.2245800 | FINAL COAT PAINT | 8d | 2028-02-07 | 2028-02-14 | 2636 |  | RGA -FINISHING | 7834402 |

| ID | WBS | Task | Duration | Start | Finish | Predecessors | Constraint | Calendar | Unique_Task_ID |
| --- | --- | --- | --- | --- | --- | --- | --- | --- | --- |
| 2638 | 40200.40300.41100.52700.55500.57600.138900 | **23rd FLOOR** | 146d | 2027-09-22 | 2028-02-14 |  | start no earlier than 2027-09-22 | RGA -FINISHING | 7362455 |
| 2639 | 40200.40300.41100.52700.55500.57600.138900.2245900 | TOILET DADO TILE FIXING | 10d | 2027-11-13 | 2027-11-22 | 2310 |  | RGA -FINISHING | 7834412 |
| 2640 | 40200.40300.41100.52700.55500.57600.138900.2246000 | TOILET FLOORING WORK | 7d | 2027-11-23 | 2027-11-29 | 2639 |  | RGA -FINISHING | 7834422 |
| 2641 | 40200.40300.41100.52700.55500.57600.138900.2246100 | FIRE FIGHTING | 8d | 2027-09-22 | 2027-09-29 | 2309 |  | RGA -FINISHING | 7834432 |
| 2642 | 40200.40300.41100.52700.55500.57600.138900.2246200 | INTERNAL PAINTING - PUTTY / PRIMER APPLICATION | 5d | 2027-12-22 | 2027-12-26 | 2644 |  | RGA -FINISHING | 7834442 |
| 2643 | 40200.40300.41100.52700.55500.57600.138900.2246300 | FLAT FLOORING | 7d | 2027-11-30 | 2027-12-06 | 2640 |  | RGA -FINISHING | 7834452 |
| 2644 | 40200.40300.41100.52700.55500.57600.138900.2246400 | WINDOW FIXING | 5d | 2027-12-17 | 2027-12-21 | 2643FS+10d |  | RGA -FINISHING | 7834462 |
| 2645 | 40200.40300.41100.52700.55500.57600.138900.2246500 | INTERNAL PAINTING - 1ST COAT | 4d | 2027-12-27 | 2027-12-30 | 2642 |  | RGA -FINISHING | 7834472 |
| 2646 | 40200.40300.41100.52700.55500.57600.138900.2246600 | INTERNAL DOOR FIXING | 15d | 2027-12-29 | 2028-01-12 | 2645FS-2d |  | RGA -FINISHING | 7834482 |
| 2647 | 40200.40300.41100.52700.55500.57600.138900.2246700 | WIRING & SWITCH PLATE FIXING | 8d | 2028-01-09 | 2028-01-16 | 2646FS-4d |  | RGA -FINISHING | 7834492 |
| 2648 | 40200.40300.41100.52700.55500.57600.138900.2246800 | TOILET FALSE CEILING | 7d | 2028-01-17 | 2028-01-23 | 2647 |  | RGA -FINISHING | 7834502 |
| 2649 | 40200.40300.41100.52700.55500.57600.138900.2246900 | MAIN DOOR FRAME SHUTTER FIXING | 6d | 2028-02-01 | 2028-02-06 | 2866 |  | RGA -FINISHING | 7834512 |
| 2650 | 40200.40300.41100.52700.55500.57600.138900.2247000 | FINAL COAT PAINT | 8d | 2028-02-07 | 2028-02-14 | 2649 |  | RGA -FINISHING | 7834522 |
| 2651 | 40200.40300.41100.52700.55500.57600.139000 | **24TH FLOOR** | 144d | 2027-10-01 | 2028-02-21 |  | start no earlier than 2027-10-01 | RGA -FINISHING | 7805212 |
| 2652 | 40200.40300.41100.52700.55500.57600.139000.2247100 | TOILET DADO TILE FIXING | 10d | 2027-11-22 | 2027-12-01 | 2317 |  | RGA -FINISHING | 7834532 |
| 2653 | 40200.40300.41100.52700.55500.57600.139000.2247200 | TOILET FLOORING WORK | 7d | 2027-12-02 | 2027-12-08 | 2652 |  | RGA -FINISHING | 7834542 |
| 2654 | 40200.40300.41100.52700.55500.57600.139000.2247300 | FIRE FIGHTING | 8d | 2027-10-01 | 2027-10-08 | 2316 |  | RGA -FINISHING | 7834552 |
| 2655 | 40200.40300.41100.52700.55500.57600.139000.2247400 | INTERNAL PAINTING - PUTTY / PRIMER APPLICATION | 5d | 2027-12-31 | 2028-01-04 | 2657 |  | RGA -FINISHING | 7834562 |
| 2656 | 40200.40300.41100.52700.55500.57600.139000.2247500 | FLAT FLOORING | 7d | 2027-12-09 | 2027-12-15 | 2653 |  | RGA -FINISHING | 7834572 |
| 2657 | 40200.40300.41100.52700.55500.57600.139000.2247600 | WINDOW FIXING | 5d | 2027-12-26 | 2027-12-30 | 2656FS+10d |  | RGA -FINISHING | 7834582 |
| 2658 | 40200.40300.41100.52700.55500.57600.139000.2247700 | INTERNAL PAINTING - 1ST COAT | 4d | 2028-01-05 | 2028-01-08 | 2655 |  | RGA -FINISHING | 7834592 |
| 2659 | 40200.40300.41100.52700.55500.57600.139000.2247800 | INTERNAL DOOR FIXING | 15d | 2028-01-07 | 2028-01-21 | 2658FS-2d |  | RGA -FINISHING | 7834602 |
| 2660 | 40200.40300.41100.52700.55500.57600.139000.2247900 | WIRING & SWITCH PLATE FIXING | 8d | 2028-01-18 | 2028-01-25 | 2659FS-4d |  | RGA -FINISHING | 7834612 |
| 2661 | 40200.40300.41100.52700.55500.57600.139000.2248000 | TOILET FALSE CEILING | 7d | 2028-01-26 | 2028-02-01 | 2660 |  | RGA -FINISHING | 7834622 |
| 2662 | 40200.40300.41100.52700.55500.57600.139000.2248100 | MAIN DOOR FRAME SHUTTER FIXING | 6d | 2028-02-08 | 2028-02-13 | 2874 |  | RGA -FINISHING | 7834632 |
| 2663 | 40200.40300.41100.52700.55500.57600.139000.2248200 | FINAL COAT PAINT | 8d | 2028-02-14 | 2028-02-21 | 2662 |  | RGA -FINISHING | 7834642 |

| ID | WBS | Task | Duration | Start | Finish | Predecessors | Constraint | Calendar | Unique_Task_ID |
| --- | --- | --- | --- | --- | --- | --- | --- | --- | --- |
| 2664 | 40200.40300.41100.52700.55500.57600.139100 | **25TH FLOOR** | 145d | 2027-10-10 | 2028-03-02 |  | start no earlier than 2027-10-10 | RGA -FINISHING | 7805202 |
| 2665 | 40200.40300.41100.52700.55500.57600.139100.2248300 | TOILET DADO TILE FIXING | 10d | 2027-12-01 | 2027-12-10 | 2324 |  | RGA -FINISHING | 7834652 |
| 2666 | 40200.40300.41100.52700.55500.57600.139100.2248400 | TOILET FLOORING WORK | 7d | 2027-12-11 | 2027-12-17 | 2665 |  | RGA -FINISHING | 7834662 |
| 2667 | 40200.40300.41100.52700.55500.57600.139100.2248500 | FIRE FIGHTING | 8d | 2027-10-10 | 2027-10-17 | 2323 |  | RGA -FINISHING | 7834672 |
| 2668 | 40200.40300.41100.52700.55500.57600.139100.2248600 | INTERNAL PAINTING - PUTTY / PRIMER APPLICATION | 5d | 2028-01-19 | 2028-01-23 | 2670 |  | RGA -FINISHING | 7834682 |
| 2669 | 40200.40300.41100.52700.55500.57600.139100.2248700 | FLAT FLOORING | 7d | 2027-12-18 | 2027-12-24 | 2666 |  | RGA -FINISHING | 7834692 |
| 2670 | 40200.40300.41100.52700.55500.57600.139100.2248800 | WINDOW FIXING | 5d | 2028-01-14 | 2028-01-18 | 2669FS+20d |  | RGA -FINISHING | 7834702 |
| 2671 | 40200.40300.41100.52700.55500.57600.139100.2248900 | INTERNAL PAINTING - 1ST COAT | 4d | 2028-01-24 | 2028-01-27 | 2668 |  | RGA -FINISHING | 7834712 |
| 2672 | 40200.40300.41100.52700.55500.57600.139100.2249000 | INTERNAL DOOR FIXING | 15d | 2028-01-26 | 2028-02-09 | 2671FS-2d |  | RGA -FINISHING | 7834722 |
| 2673 | 40200.40300.41100.52700.55500.57600.139100.2249100 | WIRING & SWITCH PLATE FIXING | 8d | 2028-02-06 | 2028-02-13 | 2672FS-4d |  | RGA -FINISHING | 7834732 |
| 2674 | 40200.40300.41100.52700.55500.57600.139100.2249200 | TOILET FALSE CEILING | 7d | 2028-02-14 | 2028-02-20 | 2673 |  | RGA -FINISHING | 7834742 |
| 2675 | 40200.40300.41100.52700.55500.57600.139100.2249300 | MAIN DOOR FRAME SHUTTER FIXING | 6d | 2028-02-18 | 2028-02-23 | 2882 |  | RGA -FINISHING | 7834752 |
| 2676 | 40200.40300.41100.52700.55500.57600.139100.2249400 | FINAL COAT PAINT | 8d | 2028-02-24 | 2028-03-02 | 2675 |  | RGA -FINISHING | 7834762 |
| 2677 | 40200.40300.41100.52700.55500.60200 | **LIFT LOBBY & STAIRCASE FINISHING WORK** | 629d | 2026-06-23 | 2028-03-12 |  | start no earlier than 2026-06-23 | RGA -FINISHING | 7362195 |
| 2678 | 40200.40300.41100.52700.55500.60200.234700 | **GROUND FLOOR** | 590d | 2026-06-23 | 2028-02-02 |  | start no earlier than 2026-06-23 | RGA -FINISHING | 7805982 |
| 2679 | 40200.40300.41100.52700.55500.60200.234700.2249500 | FIRE FIGHTING | 5d | 2026-06-23 | 2026-06-27 | 2342FS-5d |  | RGA -FINISHING | 7835012 |
| 2680 | 40200.40300.41100.52700.55500.60200.234700.2249600 | LIFT BLOCK WORK | 3d | 2027-09-21 | 2027-09-23 | 2134 |  | RGA -FINISHING | 7835022 |
| 2681 | 40200.40300.41100.52700.55500.60200.234700.2249700 | LIFT DADO WORK | 4d | 2028-01-07 | 2028-01-10 | 2889 |  | RGA -FINISHING | 7835032 |
| 2682 | 40200.40300.41100.52700.55500.60200.234700.2249800 | LOBBY FLOORING WORK | 4d | 2028-01-11 | 2028-01-14 | 2681 |  | RGA -FINISHING | 7835042 |
| 2683 | 40200.40300.41100.52700.55500.60200.234700.2249900 | ELECTRICAL WIRING & SWITCH PLATE FIXING WORK | 6d | 2028-01-15 | 2028-01-20 | 2682 |  | RGA -FINISHING | 7835052 |
| 2684 | 40200.40300.41100.52700.55500.60200.234700.2250000 | False ceiling & 1ST COAT PAINTING | 10d | 2028-01-21 | 2028-01-30 | 2683 |  | RGA -FINISHING | 7835062 |
| 2685 | 40200.40300.41100.52700.55500.60200.234700.2250100 | CLEANING | 3d | 2028-01-31 | 2028-02-02 | 2684 |  | RGA -FINISHING | 7835072 |
| 2686 | 40200.40300.41100.52700.55500.60200.234800 | **1ST FLOOR** | 548d | 2026-08-08 | 2028-02-06 |  | start no earlier than 2026-08-08 | RGA -FINISHING | 7805992 |
| 2687 | 40200.40300.41100.52700.55500.60200.234800.2250200 | FIRE FIGHTING | 10d | 2026-08-08 | 2026-08-17 | 2355FS-5d |  | RGA -FINISHING | 7835082 |
| 2688 | 40200.40300.41100.52700.55500.60200.234800.2250300 | LIFT BLOCK WORK | 3d | 2027-09-21 | 2027-09-23 | 2680SS |  | RGA -FINISHING | 7835092 |
| 2689 | 40200.40300.41100.52700.55500.60200.234800.2250400 | LIFT DADO WORK | 3d | 2028-01-07 | 2028-01-09 | 2681SS |  | RGA -FINISHING | 7835102 |
| 2690 | 40200.40300.41100.52700.55500.60200.234800.2250500 | LOBBY FLOORING WORK | 4d | 2028-01-10 | 2028-01-13 | 2689 |  | RGA -FINISHING | 7835112 |
| 2691 | 40200.40300.41100.52700.55500.60200.234800.2250600 | ELECTRICAL WIRING & SWITCH PLATE FIXING WORK | 6d | 2028-01-14 | 2028-01-19 | 2690 |  | RGA -FINISHING | 7835122 |
| 2692 | 40200.40300.41100.52700.55500.60200.234800.2250700 | False ceiling & 1ST COAT PAINTING | 15d | 2028-01-20 | 2028-02-03 | 2691 |  | RGA -FINISHING | 7835132 |
| 2693 | 40200.40300.41100.52700.55500.60200.234800.2250800 | CLEANING | 3d | 2028-02-04 | 2028-02-06 | 2692 |  | RGA -FINISHING | 7835142 |

Notes:
- 2677: Completion in 12 months post last RCC
- 2679: Assumed
- 2687: Assumed

| ID | WBS | Task | Duration | Start | Finish | Predecessors | Constraint | Calendar | Unique_Task_ID |
| --- | --- | --- | --- | --- | --- | --- | --- | --- | --- |
| 2694 | 40200.40300.41100.52700.55500.60200.234900 | **2nd FLOOR** | 507d | 2026-09-18 | 2028-02-06 |  | start no earlier than 2026-09-18 | RGA -FINISHING | 7806002 |
| 2695 | 40200.40300.41100.52700.55500.60200.234900.2250900 | FIRE FIGHTING | 10d | 2026-09-18 | 2026-09-27 | 2368FS-5d |  | RGA -FINISHING | 7835152 |
| 2696 | 40200.40300.41100.52700.55500.60200.234900.2251000 | LIFT BLOCK WORK | 3d | 2027-09-21 | 2027-09-23 | 2688SS |  | RGA -FINISHING | 7835162 |
| 2697 | 40200.40300.41100.52700.55500.60200.234900.2251100 | LIFT DADO WORK | 3d | 2028-01-07 | 2028-01-09 | 2689SS |  | RGA -FINISHING | 7835172 |
| 2698 | 40200.40300.41100.52700.55500.60200.234900.2251200 | LOBBY FLOORING WORK | 4d | 2028-01-10 | 2028-01-13 | 2697 |  | RGA -FINISHING | 7835182 |
| 2699 | 40200.40300.41100.52700.55500.60200.234900.2251300 | ELECTRICAL WIRING & SWITCH PLATE FIXING WORK | 6d | 2028-01-14 | 2028-01-19 | 2698 |  | RGA -FINISHING | 7835192 |
| 2700 | 40200.40300.41100.52700.55500.60200.234900.2251400 | False ceiling & 1ST COAT PAINTING | 15d | 2028-01-20 | 2028-02-03 | 2699 |  | RGA -FINISHING | 7835202 |
| 2701 | 40200.40300.41100.52700.55500.60200.234900.2251500 | CLEANING | 3d | 2028-02-04 | 2028-02-06 | 2700 |  | RGA -FINISHING | 7835212 |
| 2702 | 40200.40300.41100.52700.55500.60200.235000 | **3rd FLOOR** | 476d | 2026-10-22 | 2028-02-09 |  | start no earlier than 2026-10-22 | RGA -FINISHING | 7806012 |
| 2703 | 40200.40300.41100.52700.55500.60200.235000.2251600 | FIRE FIGHTING | 10d | 2026-10-22 | 2026-10-31 | 2381FS-5d |  | RGA -FINISHING | 7835222 |
| 2704 | 40200.40300.41100.52700.55500.60200.235000.2251700 | LIFT BLOCK WORK | 3d | 2027-09-21 | 2027-09-23 | 2696SS |  | RGA -FINISHING | 7835232 |
| 2705 | 40200.40300.41100.52700.55500.60200.235000.2251800 | LIFT DADO WORK | 3d | 2028-01-10 | 2028-01-12 | 2697 |  | RGA -FINISHING | 7835242 |
| 2706 | 40200.40300.41100.52700.55500.60200.235000.2251900 | LOBBY FLOORING WORK | 4d | 2028-01-13 | 2028-01-16 | 2705 |  | RGA -FINISHING | 7835252 |
| 2707 | 40200.40300.41100.52700.55500.60200.235000.2252000 | ELECTRICAL WIRING & SWITCH PLATE FIXING WORK | 6d | 2028-01-17 | 2028-01-22 | 2706 |  | RGA -FINISHING | 7835262 |
| 2708 | 40200.40300.41100.52700.55500.60200.235000.2252100 | False ceiling & 1ST COAT PAINTING | 15d | 2028-01-23 | 2028-02-06 | 2707 |  | RGA -FINISHING | 7835272 |
| 2709 | 40200.40300.41100.52700.55500.60200.235000.2252200 | CLEANING | 3d | 2028-02-07 | 2028-02-09 | 2708 |  | RGA -FINISHING | 7835282 |
| 2710 | 40200.40300.41100.52700.55500.60200.235100 | **4th FLOOR** | 444d | 2026-11-26 | 2028-02-12 |  | start no earlier than 2026-11-26 | RGA -FINISHING | 7806022 |
| 2711 | 40200.40300.41100.52700.55500.60200.235100.2252300 | FIRE FIGHTING | 10d | 2026-11-26 | 2026-12-05 | 2394FS-5d |  | RGA -FINISHING | 7835292 |
| 2712 | 40200.40300.41100.52700.55500.60200.235100.2252400 | LIFT BLOCK WORK | 3d | 2027-09-24 | 2027-09-26 | 2704 |  | RGA -FINISHING | 7835302 |
| 2713 | 40200.40300.41100.52700.55500.60200.235100.2252500 | LIFT DADO WORK | 3d | 2028-01-13 | 2028-01-15 | 2705 |  | RGA -FINISHING | 7835312 |
| 2714 | 40200.40300.41100.52700.55500.60200.235100.2252600 | LOBBY FLOORING WORK | 4d | 2028-01-16 | 2028-01-19 | 2713 |  | RGA -FINISHING | 7835322 |
| 2715 | 40200.40300.41100.52700.55500.60200.235100.2252700 | ELECTRICAL WIRING & SWITCH PLATE FIXING WORK | 6d | 2028-01-20 | 2028-01-25 | 2714 |  | RGA -FINISHING | 7835332 |
| 2716 | 40200.40300.41100.52700.55500.60200.235100.2252800 | False ceiling & 1ST COAT PAINTING | 15d | 2028-01-26 | 2028-02-09 | 2715 |  | RGA -FINISHING | 7835342 |
| 2717 | 40200.40300.41100.52700.55500.60200.235100.2252900 | CLEANING | 3d | 2028-02-10 | 2028-02-12 | 2716 |  | RGA -FINISHING | 7835352 |

Notes:
- 2695: Assumed
- 2703: Assumed
- 2711: Assumed

| ID | WBS | Task | Duration | Start | Finish | Predecessors | Constraint | Calendar | Unique_Task_ID |
| --- | --- | --- | --- | --- | --- | --- | --- | --- | --- |
| 2718 | 40200.40300.41100.52700.55500.60200.235200 | **5th FLOOR** | 412d | 2026-12-28 | 2028-02-12 |  | start no earlier than 2026-12-28 | RGA -FINISHING | 7806032 |
| 2719 | 40200.40300.41100.52700.55500.60200.235200.2253000 | FIRE FIGHTING | 10d | 2026-12-28 | 2027-01-06 | 2407FS-5d |  | RGA -FINISHING | 7835362 |
| 2720 | 40200.40300.41100.52700.55500.60200.235200.2253100 | LIFT BLOCK WORK | 3d | 2027-09-24 | 2027-09-26 | 2712SS |  | RGA -FINISHING | 7835372 |
| 2721 | 40200.40300.41100.52700.55500.60200.235200.2253200 | LIFT DADO WORK | 3d | 2028-01-13 | 2028-01-15 | 2713SS |  | RGA -FINISHING | 7835382 |
| 2722 | 40200.40300.41100.52700.55500.60200.235200.2253300 | LOBBY FLOORING WORK | 4d | 2028-01-16 | 2028-01-19 | 2721 |  | RGA -FINISHING | 7835392 |
| 2723 | 40200.40300.41100.52700.55500.60200.235200.2253400 | ELECTRICAL WIRING & SWITCH PLATE FIXING WORK | 6d | 2028-01-20 | 2028-01-25 | 2722 |  | RGA -FINISHING | 7835402 |
| 2724 | 40200.40300.41100.52700.55500.60200.235200.2253500 | False ceiling & 1ST COAT PAINTING | 15d | 2028-01-26 | 2028-02-09 | 2723 |  | RGA -FINISHING | 7835412 |
| 2725 | 40200.40300.41100.52700.55500.60200.235200.2253600 | CLEANING | 3d | 2028-02-10 | 2028-02-12 | 2724 |  | RGA -FINISHING | 7835422 |
| 2726 | 40200.40300.41100.52700.55500.60200.235300 | **6th FLOOR** | 397d | 2027-01-12 | 2028-02-12 |  | start no earlier than 2027-01-12 | RGA -FINISHING | 7806042 |
| 2727 | 40200.40300.41100.52700.55500.60200.235300.2253700 | FIRE FIGHTING | 10d | 2027-01-12 | 2027-01-21 | 2420FS-5d |  | RGA -FINISHING | 7835432 |
| 2728 | 40200.40300.41100.52700.55500.60200.235300.2253800 | LIFT BLOCK WORK | 3d | 2027-09-24 | 2027-09-26 | 2720SS |  | RGA -FINISHING | 7835442 |
| 2729 | 40200.40300.41100.52700.55500.60200.235300.2253900 | LIFT DADO WORK | 3d | 2028-01-13 | 2028-01-15 | 2721SS |  | RGA -FINISHING | 7835452 |
| 2730 | 40200.40300.41100.52700.55500.60200.235300.2254000 | LOBBY FLOORING WORK | 4d | 2028-01-16 | 2028-01-19 | 2729 |  | RGA -FINISHING | 7835462 |
| 2731 | 40200.40300.41100.52700.55500.60200.235300.2254100 | ELECTRICAL WIRING & SWITCH PLATE FIXING WORK | 6d | 2028-01-20 | 2028-01-25 | 2730 |  | RGA -FINISHING | 7835472 |
| 2732 | 40200.40300.41100.52700.55500.60200.235300.2254200 | False ceiling & 1ST COAT PAINTING | 15d | 2028-01-26 | 2028-02-09 | 2731 |  | RGA -FINISHING | 7835482 |
| 2733 | 40200.40300.41100.52700.55500.60200.235300.2254300 | CLEANING | 3d | 2028-02-10 | 2028-02-12 | 2732 |  | RGA -FINISHING | 7835492 |
| 2734 | 40200.40300.41100.52700.55500.60200.235400 | **7th FLOOR** | 381d | 2027-01-28 | 2028-02-12 |  | start no earlier than 2027-01-28 | RGA -FINISHING | 7806052 |
| 2735 | 40200.40300.41100.52700.55500.60200.235400.2254400 | FIRE FIGHTING | 10d | 2027-01-28 | 2027-02-06 | 2433FS-5d |  | RGA -FINISHING | 7835502 |
| 2736 | 40200.40300.41100.52700.55500.60200.235400.2254500 | LIFT BLOCK WORK | 3d | 2027-09-24 | 2027-09-26 | 2728SS |  | RGA -FINISHING | 7835512 |
| 2737 | 40200.40300.41100.52700.55500.60200.235400.2254600 | LIFT DADO WORK | 3d | 2028-01-13 | 2028-01-15 | 2729SS |  | RGA -FINISHING | 7835522 |
| 2738 | 40200.40300.41100.52700.55500.60200.235400.2254700 | LOBBY FLOORING WORK | 4d | 2028-01-16 | 2028-01-19 | 2737 |  | RGA -FINISHING | 7835532 |
| 2739 | 40200.40300.41100.52700.55500.60200.235400.2254800 | ELECTRICAL WIRING & SWITCH PLATE FIXING WORK | 6d | 2028-01-20 | 2028-01-25 | 2738 |  | RGA -FINISHING | 7835542 |
| 2740 | 40200.40300.41100.52700.55500.60200.235400.2254900 | False ceiling & 1ST COAT PAINTING | 15d | 2028-01-26 | 2028-02-09 | 2739 |  | RGA -FINISHING | 7835552 |
| 2741 | 40200.40300.41100.52700.55500.60200.235400.2255000 | CLEANING | 3d | 2028-02-10 | 2028-02-12 | 2740 |  | RGA -FINISHING | 7835562 |

Notes:
- 2719: Assumed
- 2727: Assumed
- 2735: Assumed

| ID | WBS | Task | Duration | Start | Finish | Predecessors | Constraint | Calendar | Unique_Task_ID |
| --- | --- | --- | --- | --- | --- | --- | --- | --- | --- |
| 2742 | 40200.40300.41100.52700.55500.60200.235500 | **8th FLOOR** | 370d | 2027-02-11 | 2028-02-15 |  | start no earlier than 2027-02-11 | RGA -FINISHING | 7806062 |
| 2743 | 40200.40300.41100.52700.55500.60200.235500.2255100 | FIRE FIGHTING | 10d | 2027-02-11 | 2027-02-20 | 2446FS-5d |  | RGA -FINISHING | 7835572 |
| 2744 | 40200.40300.41100.52700.55500.60200.235500.2255200 | LIFT BLOCK WORK | 3d | 2027-09-27 | 2027-09-29 | 2736 |  | RGA -FINISHING | 7835582 |
| 2745 | 40200.40300.41100.52700.55500.60200.235500.2255300 | LIFT DADO WORK | 3d | 2028-01-16 | 2028-01-18 | 2737 |  | RGA -FINISHING | 7835592 |
| 2746 | 40200.40300.41100.52700.55500.60200.235500.2255400 | LOBBY FLOORING WORK | 4d | 2028-01-19 | 2028-01-22 | 2745 |  | RGA -FINISHING | 7835602 |
| 2747 | 40200.40300.41100.52700.55500.60200.235500.2255500 | ELECTRICAL WIRING & SWITCH PLATE FIXING WORK | 6d | 2028-01-23 | 2028-01-28 | 2746 |  | RGA -FINISHING | 7835612 |
| 2748 | 40200.40300.41100.52700.55500.60200.235500.2255600 | False ceiling & 1ST COAT PAINTING | 15d | 2028-01-29 | 2028-02-12 | 2747 |  | RGA -FINISHING | 7835622 |
| 2749 | 40200.40300.41100.52700.55500.60200.235500.2255700 | CLEANING | 3d | 2028-02-13 | 2028-02-15 | 2748 |  | RGA -FINISHING | 7835632 |
| 2750 | 40200.40300.41100.52700.55500.60200.235600 | **9th FLOOR** | 355d | 2027-02-26 | 2028-02-15 |  | start no earlier than 2027-02-26 | RGA -FINISHING | 7362655 |
| 2751 | 40200.40300.41100.52700.55500.60200.235600.2255800 | FIRE FIGHTING | 10d | 2027-02-26 | 2027-03-07 | 2459FS-5d |  | RGA -FINISHING | 7835642 |
| 2752 | 40200.40300.41100.52700.55500.60200.235600.2255900 | LIFT BLOCK WORK | 3d | 2027-09-27 | 2027-09-29 | 2744SS |  | RGA -FINISHING | 7835652 |
| 2753 | 40200.40300.41100.52700.55500.60200.235600.2256000 | LIFT DADO WORK | 3d | 2028-01-16 | 2028-01-18 | 2745SS |  | RGA -FINISHING | 7835662 |
| 2754 | 40200.40300.41100.52700.55500.60200.235600.2256100 | LOBBY FLOORING WORK | 4d | 2028-01-19 | 2028-01-22 | 2753 |  | RGA -FINISHING | 7835672 |
| 2755 | 40200.40300.41100.52700.55500.60200.235600.2256200 | ELECTRICAL WIRING & SWITCH PLATE FIXING WORK | 6d | 2028-01-23 | 2028-01-28 | 2754 |  | RGA -FINISHING | 7835682 |
| 2756 | 40200.40300.41100.52700.55500.60200.235600.2256300 | False ceiling & 1ST COAT PAINTING | 15d | 2028-01-29 | 2028-02-12 | 2755 |  | RGA -FINISHING | 7835692 |
| 2757 | 40200.40300.41100.52700.55500.60200.235600.2256400 | CLEANING | 3d | 2028-02-13 | 2028-02-15 | 2756 |  | RGA -FINISHING | 7835702 |
| 2758 | 40200.40300.41100.52700.55500.60200.235700 | **10th FLOOR** | 339d | 2027-03-14 | 2028-02-15 |  | start no earlier than 2027-03-14 | RGA -FINISHING | 7806072 |
| 2759 | 40200.40300.41100.52700.55500.60200.235700.2256500 | FIRE FIGHTING | 10d | 2027-03-14 | 2027-03-23 | 2472FS-5d |  | RGA -FINISHING | 7835712 |
| 2760 | 40200.40300.41100.52700.55500.60200.235700.2256600 | LIFT BLOCK WORK | 3d | 2027-09-27 | 2027-09-29 | 2752SS |  | RGA -FINISHING | 7835722 |
| 2761 | 40200.40300.41100.52700.55500.60200.235700.2256700 | LIFT DADO WORK | 3d | 2028-01-16 | 2028-01-18 | 2753SS |  | RGA -FINISHING | 7835732 |
| 2762 | 40200.40300.41100.52700.55500.60200.235700.2256800 | LOBBY FLOORING WORK | 4d | 2028-01-19 | 2028-01-22 | 2761 |  | RGA -FINISHING | 7835742 |
| 2763 | 40200.40300.41100.52700.55500.60200.235700.2256900 | ELECTRICAL WIRING & SWITCH PLATE FIXING WORK | 6d | 2028-01-23 | 2028-01-28 | 2762 |  | RGA -FINISHING | 7835752 |
| 2764 | 40200.40300.41100.52700.55500.60200.235700.2257000 | False ceiling & 1ST COAT PAINTING | 15d | 2028-01-29 | 2028-02-12 | 2763 |  | RGA -FINISHING | 7835762 |
| 2765 | 40200.40300.41100.52700.55500.60200.235700.2257100 | CLEANING | 3d | 2028-02-13 | 2028-02-15 | 2764 |  | RGA -FINISHING | 7835772 |

Notes:
- 2743: Assumed
- 2751: Assumed
- 2759: Assumed

| ID | WBS | Task | Duration | Start | Finish | Predecessors | Constraint | Calendar | Unique_Task_ID |
| --- | --- | --- | --- | --- | --- | --- | --- | --- | --- |
| 2766 | 40200.40300.41100.52700.55500.60200.235800 | **11th FLOOR** | 322d | 2027-03-28 | 2028-02-12 |  | start no earlier than 2027-03-28 | RGA -FINISHING | 7806082 |
| 2767 | 40200.40300.41100.52700.55500.60200.235800.2257200 | FIRE FIGHTING | 10d | 2027-03-28 | 2027-04-06 | 2485FS-5d |  | RGA -FINISHING | 7835782 |
| 2768 | 40200.40300.41100.52700.55500.60200.235800.2257300 | LIFT BLOCK WORK | 3d | 2027-09-27 | 2027-09-29 | 2760SS |  | RGA -FINISHING | 7835792 |
| 2769 | 40200.40300.41100.52700.55500.60200.235800.2257400 | LIFT DADO WORK | 3d | 2028-01-16 | 2028-01-18 | 2761SS |  | RGA -FINISHING | 7835802 |
| 2770 | 40200.40300.41100.52700.55500.60200.235800.2257500 | LOBBY FLOORING WORK | 3d | 2028-01-19 | 2028-01-21 | 2769 |  | RGA -FINISHING | 7835812 |
| 2771 | 40200.40300.41100.52700.55500.60200.235800.2257600 | ELECTRICAL WIRING & SWITCH PLATE FIXING WORK | 4d | 2028-01-22 | 2028-01-25 | 2770 |  | RGA -FINISHING | 7835822 |
| 2772 | 40200.40300.41100.52700.55500.60200.235800.2257700 | False ceiling & 1ST COAT PAINTING | 15d | 2028-01-26 | 2028-02-09 | 2771 |  | RGA -FINISHING | 7835832 |
| 2773 | 40200.40300.41100.52700.55500.60200.235800.2257800 | CLEANING | 3d | 2028-02-10 | 2028-02-12 | 2772 |  | RGA -FINISHING | 7835842 |
| 2774 | 40200.40300.41100.52700.55500.60200.235900 | **12th FLOOR** | 313d | 2027-04-12 | 2028-02-18 |  | start no earlier than 2027-04-12 | RGA -FINISHING | 7806092 |
| 2775 | 40200.40300.41100.52700.55500.60200.235900.2257900 | FIRE FIGHTING | 10d | 2027-04-12 | 2027-04-21 | 2498FS-5d |  | RGA -FINISHING | 7835852 |
| 2776 | 40200.40300.41100.52700.55500.60200.235900.2258000 | LIFT BLOCK WORK | 3d | 2027-09-30 | 2027-10-02 | 2768 |  | RGA -FINISHING | 7835862 |
| 2777 | 40200.40300.41100.52700.55500.60200.235900.2258100 | LIFT DADO WORK | 3d | 2028-01-19 | 2028-01-21 | 2769 |  | RGA -FINISHING | 7835872 |
| 2778 | 40200.40300.41100.52700.55500.60200.235900.2258200 | LOBBY FLOORING WORK | 4d | 2028-01-22 | 2028-01-25 | 2777 |  | RGA -FINISHING | 7835882 |
| 2779 | 40200.40300.41100.52700.55500.60200.235900.2258300 | ELECTRICAL WIRING & SWITCH PLATE FIXING WORK | 6d | 2028-01-26 | 2028-01-31 | 2778 |  | RGA -FINISHING | 7835892 |
| 2780 | 40200.40300.41100.52700.55500.60200.235900.2258400 | False ceiling & 1ST COAT PAINTING | 15d | 2028-02-01 | 2028-02-15 | 2779 |  | RGA -FINISHING | 7835902 |
| 2781 | 40200.40300.41100.52700.55500.60200.235900.2258500 | CLEANING | 3d | 2028-02-16 | 2028-02-18 | 2780 |  | RGA -FINISHING | 7835912 |
| 2782 | 40200.40300.41100.52700.55500.60200.236000 | **13th FLOOR** | 299d | 2027-04-26 | 2028-02-18 |  | start no earlier than 2027-04-26 | RGA -FINISHING | 7806102 |
| 2783 | 40200.40300.41100.52700.55500.60200.236000.2258600 | FIRE FIGHTING | 10d | 2027-04-26 | 2027-05-05 | 2511FS-5d |  | RGA -FINISHING | 7835922 |
| 2784 | 40200.40300.41100.52700.55500.60200.236000.2258700 | LIFT BLOCK WORK | 3d | 2027-09-30 | 2027-10-02 | 2776SS |  | RGA -FINISHING | 7835932 |
| 2785 | 40200.40300.41100.52700.55500.60200.236000.2258800 | LIFT DADO WORK | 3d | 2028-01-19 | 2028-01-21 | 2777SS |  | RGA -FINISHING | 7835942 |
| 2786 | 40200.40300.41100.52700.55500.60200.236000.2258900 | LOBBY FLOORING WORK | 4d | 2028-01-22 | 2028-01-25 | 2785 |  | RGA -FINISHING | 7835952 |
| 2787 | 40200.40300.41100.52700.55500.60200.236000.2259000 | ELECTRICAL WIRING & SWITCH PLATE FIXING WORK | 6d | 2028-01-26 | 2028-01-31 | 2786 |  | RGA -FINISHING | 7835962 |
| 2788 | 40200.40300.41100.52700.55500.60200.236000.2259100 | False ceiling & 1ST COAT PAINTING | 15d | 2028-02-01 | 2028-02-15 | 2787 |  | RGA -FINISHING | 7835972 |
| 2789 | 40200.40300.41100.52700.55500.60200.236000.2259200 | CLEANING | 3d | 2028-02-16 | 2028-02-18 | 2788 |  | RGA -FINISHING | 7835982 |

Notes:
- 2767: Assumed
- 2775: Assumed
- 2783: Assumed

| ID | WBS | Task | Duration | Start | Finish | Predecessors | Constraint | Calendar | Unique_Task_ID |
| --- | --- | --- | --- | --- | --- | --- | --- | --- | --- |
| 2790 | 40200.40300.41100.52700.55500.60200.236100 | **14th FLOOR** | 280d | 2027-05-15 | 2028-02-18 |  | start no earlier than 2027-05-15 | RGA -FINISHING | 7806112 |
| 2791 | 40200.40300.41100.52700.55500.60200.236100.2259300 | FIRE FIGHTING | 10d | 2027-05-15 | 2027-05-24 | 2524FS-5d |  | RGA -FINISHING | 7835992 |
| 2792 | 40200.40300.41100.52700.55500.60200.236100.2259400 | LIFT BLOCK WORK | 3d | 2027-09-30 | 2027-10-02 | 2784SS |  | RGA -FINISHING | 7836002 |
| 2793 | 40200.40300.41100.52700.55500.60200.236100.2259500 | LIFT DADO WORK | 3d | 2028-01-19 | 2028-01-21 | 2785SS |  | RGA -FINISHING | 7836012 |
| 2794 | 40200.40300.41100.52700.55500.60200.236100.2259600 | LOBBY FLOORING WORK | 4d | 2028-01-22 | 2028-01-25 | 2793 |  | RGA -FINISHING | 7836022 |
| 2795 | 40200.40300.41100.52700.55500.60200.236100.2259700 | ELECTRICAL WIRING & SWITCH PLATE FIXING WORK | 6d | 2028-01-26 | 2028-01-31 | 2794 |  | RGA -FINISHING | 7836032 |
| 2796 | 40200.40300.41100.52700.55500.60200.236100.2259800 | False ceiling & 1ST COAT PAINTING | 15d | 2028-02-01 | 2028-02-15 | 2795 |  | RGA -FINISHING | 7836042 |
| 2797 | 40200.40300.41100.52700.55500.60200.236100.2259900 | CLEANING | 3d | 2028-02-16 | 2028-02-18 | 2796 |  | RGA -FINISHING | 7836052 |
| 2798 | 40200.40300.41100.52700.55500.60200.236200 | **15th FLOOR** | 260d | 2027-06-04 | 2028-02-18 |  | start no earlier than 2027-06-04 | RGA -FINISHING | 7806122 |
| 2799 | 40200.40300.41100.52700.55500.60200.236200.2260000 | FIRE FIGHTING | 10d | 2027-06-04 | 2027-06-13 | 2537FS-5d |  | RGA -FINISHING | 7836062 |
| 2800 | 40200.40300.41100.52700.55500.60200.236200.2260100 | LIFT BLOCK WORK | 3d | 2027-09-30 | 2027-10-02 | 2792SS |  | RGA -FINISHING | 7836072 |
| 2801 | 40200.40300.41100.52700.55500.60200.236200.2260200 | LIFT DADO WORK | 3d | 2028-01-19 | 2028-01-21 | 2793SS |  | RGA -FINISHING | 7836082 |
| 2802 | 40200.40300.41100.52700.55500.60200.236200.2260300 | LOBBY FLOORING WORK | 4d | 2028-01-22 | 2028-01-25 | 2801 |  | RGA -FINISHING | 7836092 |
| 2803 | 40200.40300.41100.52700.55500.60200.236200.2260400 | ELECTRICAL WIRING & SWITCH PLATE FIXING WORK | 6d | 2028-01-26 | 2028-01-31 | 2802 |  | RGA -FINISHING | 7836102 |
| 2804 | 40200.40300.41100.52700.55500.60200.236200.2260500 | False ceiling & 1ST COAT PAINTING | 15d | 2028-02-01 | 2028-02-15 | 2803 |  | RGA -FINISHING | 7836112 |
| 2805 | 40200.40300.41100.52700.55500.60200.236200.2260600 | CLEANING | 3d | 2028-02-16 | 2028-02-18 | 2804 |  | RGA -FINISHING | 7836122 |
| 2806 | 40200.40300.41100.52700.55500.60200.236300 | **16th FLOOR** | 246d | 2027-06-21 | 2028-02-21 |  | start no earlier than 2027-06-21 | RGA -FINISHING | 7362725 |
| 2807 | 40200.40300.41100.52700.55500.60200.236300.2260700 | FIRE FIGHTING | 10d | 2027-06-21 | 2027-06-30 | 2550FS-5d |  | RGA -FINISHING | 7836132 |
| 2808 | 40200.40300.41100.52700.55500.60200.236300.2260800 | LIFT BLOCK WORK | 3d | 2027-10-03 | 2027-10-05 | 2800 |  | RGA -FINISHING | 7836142 |
| 2809 | 40200.40300.41100.52700.55500.60200.236300.2260900 | LIFT DADO WORK | 3d | 2028-01-22 | 2028-01-24 | 2801 |  | RGA -FINISHING | 7836152 |
| 2810 | 40200.40300.41100.52700.55500.60200.236300.2261000 | LOBBY FLOORING WORK | 4d | 2028-01-25 | 2028-01-28 | 2809 |  | RGA -FINISHING | 7836162 |
| 2811 | 40200.40300.41100.52700.55500.60200.236300.2261100 | ELECTRICAL WIRING & SWITCH PLATE FIXING WORK | 6d | 2028-01-29 | 2028-02-03 | 2810 |  | RGA -FINISHING | 7836172 |
| 2812 | 40200.40300.41100.52700.55500.60200.236300.2261200 | False ceiling & 1ST COAT PAINTING | 15d | 2028-02-04 | 2028-02-18 | 2811 |  | RGA -FINISHING | 7836182 |
| 2813 | 40200.40300.41100.52700.55500.60200.236300.2261300 | CLEANING | 3d | 2028-02-19 | 2028-02-21 | 2812 |  | RGA -FINISHING | 7836192 |

Notes:
- 2791: Assumed
- 2799: Assumed
- 2807: Assumed

| ID | WBS | Task | Duration | Start | Finish | Predecessors | Constraint | Calendar | Unique_Task_ID |
| --- | --- | --- | --- | --- | --- | --- | --- | --- | --- |
| 2814 | 40200.40300.41100.52700.55500.60200.236400 | **17th FLOOR** | 229d | 2027-07-08 | 2028-02-21 |  | start no earlier than 2027-07-08 | RGA -FINISHING | 7806132 |
| 2815 | 40200.40300.41100.52700.55500.60200.236400.2261400 | FIRE FIGHTING | 10d | 2027-07-08 | 2027-07-17 | 2563FS-5d |  | RGA -FINISHING | 7836202 |
| 2816 | 40200.40300.41100.52700.55500.60200.236400.2261500 | LIFT BLOCK WORK | 3d | 2027-10-03 | 2027-10-05 | 2808SS |  | RGA -FINISHING | 7836212 |
| 2817 | 40200.40300.41100.52700.55500.60200.236400.2261600 | LIFT DADO WORK | 3d | 2028-01-22 | 2028-01-24 | 2809SS |  | RGA -FINISHING | 7836222 |
| 2818 | 40200.40300.41100.52700.55500.60200.236400.2261700 | LOBBY FLOORING WORK | 4d | 2028-01-25 | 2028-01-28 | 2817 |  | RGA -FINISHING | 7836232 |
| 2819 | 40200.40300.41100.52700.55500.60200.236400.2261800 | ELECTRICAL WIRING & SWITCH PLATE FIXING WORK | 6d | 2028-01-29 | 2028-02-03 | 2818 |  | RGA -FINISHING | 7836242 |
| 2820 | 40200.40300.41100.52700.55500.60200.236400.2261900 | False ceiling & 1ST COAT PAINTING | 15d | 2028-02-04 | 2028-02-18 | 2819 |  | RGA -FINISHING | 7836252 |
| 2821 | 40200.40300.41100.52700.55500.60200.236400.2262000 | CLEANING | 3d | 2028-02-19 | 2028-02-21 | 2820 |  | RGA -FINISHING | 7836262 |
| 2822 | 40200.40300.41100.52700.55500.60200.236500 | **18th FLOOR** | 212d | 2027-07-25 | 2028-02-21 |  | start no earlier than 2027-07-25 | RGA -FINISHING | 7806142 |
| 2823 | 40200.40300.41100.52700.55500.60200.236500.2262100 | FIRE FIGHTING | 10d | 2027-07-25 | 2027-08-03 | 2576FS-5d |  | RGA -FINISHING | 7836272 |
| 2824 | 40200.40300.41100.52700.55500.60200.236500.2262200 | LIFT BLOCK WORK | 3d | 2027-10-03 | 2027-10-05 | 2816SS |  | RGA -FINISHING | 7836282 |
| 2825 | 40200.40300.41100.52700.55500.60200.236500.2262300 | LIFT DADO WORK | 3d | 2028-01-22 | 2028-01-24 | 2817SS |  | RGA -FINISHING | 7836292 |
| 2826 | 40200.40300.41100.52700.55500.60200.236500.2262400 | LOBBY FLOORING WORK | 4d | 2028-01-25 | 2028-01-28 | 2825 |  | RGA -FINISHING | 7836302 |
| 2827 | 40200.40300.41100.52700.55500.60200.236500.2262500 | ELECTRICAL WIRING & SWITCH PLATE FIXING WORK | 6d | 2028-01-29 | 2028-02-03 | 2826 |  | RGA -FINISHING | 7836312 |
| 2828 | 40200.40300.41100.52700.55500.60200.236500.2262600 | False ceiling & 1ST COAT PAINTING | 15d | 2028-02-04 | 2028-02-18 | 2827 |  | RGA -FINISHING | 7836322 |
| 2829 | 40200.40300.41100.52700.55500.60200.236500.2262700 | CLEANING | 3d | 2028-02-19 | 2028-02-21 | 2828 |  | RGA -FINISHING | 7836332 |
| 2830 | 40200.40300.41100.52700.55500.60200.236600 | **19th FLOOR** | 195d | 2027-08-11 | 2028-02-21 |  | start no earlier than 2027-08-11 | RGA -FINISHING | 7806152 |
| 2831 | 40200.40300.41100.52700.55500.60200.236600.2262800 | FIRE FIGHTING | 10d | 2027-08-11 | 2027-08-20 | 2589FS-5d |  | RGA -FINISHING | 7836342 |
| 2832 | 40200.40300.41100.52700.55500.60200.236600.2262900 | LIFT BLOCK WORK | 3d | 2027-10-03 | 2027-10-05 | 2824SS |  | RGA -FINISHING | 7836352 |
| 2833 | 40200.40300.41100.52700.55500.60200.236600.2263000 | LIFT DADO WORK | 3d | 2028-01-22 | 2028-01-24 | 2825SS |  | RGA -FINISHING | 7836362 |
| 2834 | 40200.40300.41100.52700.55500.60200.236600.2263100 | LOBBY FLOORING WORK | 4d | 2028-01-25 | 2028-01-28 | 2833 |  | RGA -FINISHING | 7836372 |
| 2835 | 40200.40300.41100.52700.55500.60200.236600.2263200 | ELECTRICAL WIRING & SWITCH PLATE FIXING WORK | 6d | 2028-01-29 | 2028-02-03 | 2834 |  | RGA -FINISHING | 7836382 |
| 2836 | 40200.40300.41100.52700.55500.60200.236600.2263300 | False ceiling & 1ST COAT PAINTING | 15d | 2028-02-04 | 2028-02-18 | 2835 |  | RGA -FINISHING | 7836392 |
| 2837 | 40200.40300.41100.52700.55500.60200.236600.2263400 | CLEANING | 3d | 2028-02-19 | 2028-02-21 | 2836 |  | RGA -FINISHING | 7836402 |

Notes:
- 2815: Assumed
- 2823: Assumed
- 2831: Assumed

| ID | WBS | Task | Duration | Start | Finish | Predecessors | Constraint | Calendar | Unique_Task_ID |
| --- | --- | --- | --- | --- | --- | --- | --- | --- | --- |
| 2838 | 40200.40300.41100.52700.55500.60200.236700 | **20th FLOOR** | 178d | 2027-08-28 | 2028-02-21 |  | start no earlier than 2027-08-28 | RGA -FINISHING | 7806162 |
| 2839 | 40200.40300.41100.52700.55500.60200.236700.2263500 | FIRE FIGHTING | 10d | 2027-08-28 | 2027-09-06 | 2602FS-5d |  | RGA -FINISHING | 7836412 |
| 2840 | 40200.40300.41100.52700.55500.60200.236700.2263600 | LIFT BLOCK WORK | 3d | 2027-10-03 | 2027-10-05 | 2832SS |  | RGA -FINISHING | 7836422 |
| 2841 | 40200.40300.41100.52700.55500.60200.236700.2263700 | LIFT DADO WORK | 3d | 2028-01-22 | 2028-01-24 | 2833SS |  | RGA -FINISHING | 7836432 |
| 2842 | 40200.40300.41100.52700.55500.60200.236700.2263800 | LOBBY FLOORING WORK | 4d | 2028-01-25 | 2028-01-28 | 2841 |  | RGA -FINISHING | 7836442 |
| 2843 | 40200.40300.41100.52700.55500.60200.236700.2263900 | ELECTRICAL WIRING & SWITCH PLATE FIXING WORK | 6d | 2028-01-29 | 2028-02-03 | 2842 |  | RGA -FINISHING | 7836452 |
| 2844 | 40200.40300.41100.52700.55500.60200.236700.2264000 | False ceiling & 1ST COAT PAINTING | 15d | 2028-02-04 | 2028-02-18 | 2843 |  | RGA -FINISHING | 7836462 |
| 2845 | 40200.40300.41100.52700.55500.60200.236700.2264100 | CLEANING | 3d | 2028-02-19 | 2028-02-21 | 2844 |  | RGA -FINISHING | 7836472 |
| 2846 | 40200.40300.41100.52700.55500.60200.236800 | **21th FLOOR** | 164d | 2027-09-14 | 2028-02-24 |  | start no earlier than 2027-09-14 | RGA -FINISHING | 7362775 |
| 2847 | 40200.40300.41100.52700.55500.60200.236800.2264200 | FIRE FIGHTING | 10d | 2027-09-14 | 2027-09-23 | 2615FS-5d |  | RGA -FINISHING | 7836482 |
| 2848 | 40200.40300.41100.52700.55500.60200.236800.2264300 | LIFT BLOCK WORK | 3d | 2027-10-06 | 2027-10-08 | 2840 |  | RGA -FINISHING | 7836492 |
| 2849 | 40200.40300.41100.52700.55500.60200.236800.2264400 | LIFT DADO WORK | 3d | 2028-01-25 | 2028-01-27 | 2841 |  | RGA -FINISHING | 7836502 |
| 2850 | 40200.40300.41100.52700.55500.60200.236800.2264500 | LOBBY FLOORING WORK | 4d | 2028-01-28 | 2028-01-31 | 2849 |  | RGA -FINISHING | 7836512 |
| 2851 | 40200.40300.41100.52700.55500.60200.236800.2264600 | ELECTRICAL WIRING & SWITCH PLATE FIXING WORK | 6d | 2028-02-01 | 2028-02-06 | 2850 |  | RGA -FINISHING | 7836522 |
| 2852 | 40200.40300.41100.52700.55500.60200.236800.2264700 | False ceiling & 1ST COAT PAINTING | 15d | 2028-02-07 | 2028-02-21 | 2851 |  | RGA -FINISHING | 7836532 |
| 2853 | 40200.40300.41100.52700.55500.60200.236800.2264800 | CLEANING | 3d | 2028-02-22 | 2028-02-24 | 2852 |  | RGA -FINISHING | 7836542 |
| 2854 | 40200.40300.41100.52700.55500.60200.236900 | **22th FLOOR** | 162d | 2027-09-16 | 2028-02-24 |  | start no earlier than 2027-09-16 | RGA -FINISHING | 7362785 |
| 2855 | 40200.40300.41100.52700.55500.60200.236900.2264900 | FIRE FIGHTING | 10d | 2027-09-16 | 2027-09-25 | 2628FS-5d |  | RGA -FINISHING | 7836552 |
| 2856 | 40200.40300.41100.52700.55500.60200.236900.2265000 | LIFT BLOCK WORK | 3d | 2027-10-06 | 2027-10-08 | 2848SS |  | RGA -FINISHING | 7836562 |
| 2857 | 40200.40300.41100.52700.55500.60200.236900.2265100 | LIFT DADO WORK | 3d | 2028-01-25 | 2028-01-27 | 2849SS |  | RGA -FINISHING | 7836572 |
| 2858 | 40200.40300.41100.52700.55500.60200.236900.2265200 | LOBBY FLOORING WORK | 4d | 2028-01-28 | 2028-01-31 | 2857 |  | RGA -FINISHING | 7836582 |
| 2859 | 40200.40300.41100.52700.55500.60200.236900.2265300 | ELECTRICAL WIRING & SWITCH PLATE FIXING WORK | 6d | 2028-02-01 | 2028-02-06 | 2858 |  | RGA -FINISHING | 7836592 |
| 2860 | 40200.40300.41100.52700.55500.60200.236900.2265400 | False ceiling & 1ST COAT PAINTING | 15d | 2028-02-07 | 2028-02-21 | 2859 |  | RGA -FINISHING | 7836602 |
| 2861 | 40200.40300.41100.52700.55500.60200.236900.2265500 | CLEANING | 3d | 2028-02-22 | 2028-02-24 | 2860 |  | RGA -FINISHING | 7836612 |

Notes:
- 2839: Assumed
- 2847: Assumed
- 2855: Assumed

| ID | WBS | Task | Duration | Start | Finish | Predecessors | Constraint | Calendar | Unique_Task_ID |
| --- | --- | --- | --- | --- | --- | --- | --- | --- | --- |
| 2862 | 40200.40300.41100.52700.55500.60200.237000 | **23th FLOOR** | 153d | 2027-09-25 | 2028-02-24 |  | start no earlier than 2027-09-25 | RGA -FINISHING | 7362795 |
| 2863 | 40200.40300.41100.52700.55500.60200.237000.2265600 | FIRE FIGHTING | 10d | 2027-09-25 | 2027-10-04 | 2641FS-5d |  | RGA -FINISHING | 7836622 |
| 2864 | 40200.40300.41100.52700.55500.60200.237000.2265700 | LIFT BLOCK WORK | 3d | 2027-10-06 | 2027-10-08 | 2856SS |  | RGA -FINISHING | 7836632 |
| 2865 | 40200.40300.41100.52700.55500.60200.237000.2265800 | LIFT DADO WORK | 3d | 2028-01-25 | 2028-01-27 | 2857SS |  | RGA -FINISHING | 7836642 |
| 2866 | 40200.40300.41100.52700.55500.60200.237000.2265900 | LOBBY FLOORING WORK | 4d | 2028-01-28 | 2028-01-31 | 2865 |  | RGA -FINISHING | 7836652 |
| 2867 | 40200.40300.41100.52700.55500.60200.237000.2266000 | ELECTRICAL WIRING & SWITCH PLATE FIXING WORK | 6d | 2028-02-01 | 2028-02-06 | 2866 |  | RGA -FINISHING | 7836662 |
| 2868 | 40200.40300.41100.52700.55500.60200.237000.2266100 | False ceiling & 1ST COAT PAINTING | 15d | 2028-02-07 | 2028-02-21 | 2867 |  | RGA -FINISHING | 7836672 |
| 2869 | 40200.40300.41100.52700.55500.60200.237000.2266200 | CLEANING | 3d | 2028-02-22 | 2028-02-24 | 2868 |  | RGA -FINISHING | 7836682 |
| 2870 | 40200.40300.41100.52700.55500.60200.237100 | **24th FLOOR** | 151d | 2027-10-04 | 2028-03-02 |  | start no earlier than 2027-10-04 | RGA -FINISHING | 7362805 |
| 2871 | 40200.40300.41100.52700.55500.60200.237100.2266300 | FIRE FIGHTING | 10d | 2027-10-04 | 2027-10-13 | 2654FS-5d |  | RGA -FINISHING | 7836692 |
| 2872 | 40200.40300.41100.52700.55500.60200.237100.2266400 | LIFT BLOCK WORK | 3d | 2027-10-06 | 2027-10-08 | 2864SS |  | RGA -FINISHING | 7836702 |
| 2873 | 40200.40300.41100.52700.55500.60200.237100.2266500 | LIFT DADO WORK | 3d | 2028-02-01 | 2028-02-03 | 2867SS |  | RGA -FINISHING | 7836712 |
| 2874 | 40200.40300.41100.52700.55500.60200.237100.2266600 | LOBBY FLOORING WORK | 4d | 2028-02-04 | 2028-02-07 | 2873 |  | RGA -FINISHING | 7836722 |
| 2875 | 40200.40300.41100.52700.55500.60200.237100.2266700 | ELECTRICAL WIRING & SWITCH PLATE FIXING WORK | 6d | 2028-02-08 | 2028-02-13 | 2874 |  | RGA -FINISHING | 7836732 |
| 2876 | 40200.40300.41100.52700.55500.60200.237100.2266800 | False ceiling & 1ST COAT PAINTING | 15d | 2028-02-14 | 2028-02-28 | 2875 |  | RGA -FINISHING | 7836742 |
| 2877 | 40200.40300.41100.52700.55500.60200.237100.2266900 | CLEANING | 3d | 2028-02-29 | 2028-03-02 | 2876 |  | RGA -FINISHING | 7836752 |
| 2878 | 40200.40300.41100.52700.55500.60200.237200 | **25th FLOOR** | 159d | 2027-10-06 | 2028-03-12 |  | start no earlier than 2027-10-06 | RGA -FINISHING | 7362815 |
| 2879 | 40200.40300.41100.52700.55500.60200.237200.2267000 | FIRE FIGHTING | 10d | 2027-10-13 | 2027-10-22 | 2667FS-5d |  | RGA -FINISHING | 7836762 |
| 2880 | 40200.40300.41100.52700.55500.60200.237200.2267100 | LIFT BLOCK WORK | 3d | 2027-10-06 | 2027-10-08 | 2872SS |  | RGA -FINISHING | 7836772 |
| 2881 | 40200.40300.41100.52700.55500.60200.237200.2267200 | LIFT DADO WORK | 3d | 2028-02-01 | 2028-02-03 | 2873SS |  | RGA -FINISHING | 7836782 |
| 2882 | 40200.40300.41100.52700.55500.60200.237200.2267300 | LOBBY FLOORING WORK | 4d | 2028-02-14 | 2028-02-17 | 2881FS+10d |  | RGA -FINISHING | 7836792 |
| 2883 | 40200.40300.41100.52700.55500.60200.237200.2267400 | ELECTRICAL WIRING & SWITCH PLATE FIXING WORK | 6d | 2028-02-18 | 2028-02-23 | 2882 |  | RGA -FINISHING | 7836802 |
| 2884 | 40200.40300.41100.52700.55500.60200.237200.2267500 | False ceiling & 1ST COAT PAINTING | 15d | 2028-02-24 | 2028-03-09 | 2883 |  | RGA -FINISHING | 7836812 |
| 2885 | 40200.40300.41100.52700.55500.60200.237200.2267600 | CLEANING | 3d | 2028-03-10 | 2028-03-12 | 2884 |  | RGA -FINISHING | 7836822 |

Notes:
- 2863: Assumed
- 2871: Assumed
- 2879: Assumed

| ID | WBS | Task | Duration | Start | Finish | Predecessors | Constraint | Calendar | Unique_Task_ID |
| --- | --- | --- | --- | --- | --- | --- | --- | --- | --- |
| 2886 | 40200.40300.41100.52700.55500.161200 | **Common MEP Works** | 274d | 2027-10-22 | 2028-07-21 |  | start no earlier than 2027-10-22 | RGA -FINISHING | 7805272 |
| 2887 | 40200.40300.41100.52700.55500.161200.482700 | **Lift Works** | 65d | 2027-11-03 | 2028-01-06 |  | start no earlier than 2027-11-03 | RGA -FINISHING | 7811382 |
| 2888 | 40200.40300.41100.52700.55500.161200.482700.2267700 | Lift Shaft Handover | 15d | 2027-11-03 | 2027-11-17 | 2144 |  | RGA -FINISHING | 7836972 |
| 2889 | 40200.40300.41100.52700.55500.161200.482700.2267800 | Lift installation work | 50d | 2027-11-18 | 2028-01-06 | 2888 |  | RGA -FINISHING | 7836982 |
| 2890 | 40200.40300.41100.52700.55500.161200.482600 | **Plumbing works** | 147d | 2028-01-29 | 2028-06-23 |  | start no earlier than 2028-01-29 | RGA -FINISHING | 7811372 |
| 2891 | 40200.40300.41100.52700.55500.161200.482600.2267900 | Shaft Plumbing | 90d | 2028-01-29 | 2028-04-27 | 2337FF+90d |  | RGA -FINISHING | 7836992 |
| 2892 | 40200.40300.41100.52700.55500.161200.482600.2268000 | Terrace Looping | 90d | 2028-03-26 | 2028-06-23 | 2335FF+110d |  | RGA -FINISHING | 7837002 |
| 2893 | 40200.40300.41100.52700.55500.161200.482500 | **Fire Fighting works** | 75d | 2027-10-22 | 2028-01-04 |  | start no earlier than 2027-10-22 | RGA -FINISHING | 7811362 |
| 2894 | 40200.40300.41100.52700.55500.161200.482500.2268100 | Shaft Downtake works | 60d | 2027-10-22 | 2027-12-20 | 2139FS+21d |  | RGA -FINISHING | 7837012 |
| 2895 | 40200.40300.41100.52700.55500.161200.482500.2268200 | Connection to pump room | 15d | 2027-12-21 | 2028-01-04 | 2894 |  | RGA -FINISHING | 7837022 |
| 2896 | 40200.40300.41100.52700.55500.161200.343800 | **Electrical works** | 204d | 2027-12-31 | 2028-07-21 |  | start no earlier than 2027-12-31 | RGA -FINISHING | 7808272 |
| 2897 | 40200.40300.41100.52700.55500.161200.343800.2268300 | Shaft cabling | 45d | 2028-06-07 | 2028-07-21 | 2139FS+250d |  | RGA -FINISHING | 7837032 |
| 2898 | 40200.40300.41100.52700.55500.161200.343800.2268400 | Meter room erection | 15d | 2028-06-30 | 2028-07-14 | 1998FS+310d |  | RGA -FINISHING | 7837042 |
| 2899 | 40200.40300.41100.52700.55500.161200.343800.2268500 | Panel erection | 15d | 2027-12-31 | 2028-01-14 | 1898 |  | RGA -FINISHING | 7837052 |
| 2900 | 40200.40300.41100.52700.55500.161200.343800.2268600 | DG Installtion | 10d | 2028-04-01 | 2028-04-10 | 2898SS-90d |  | RGA -FINISHING | 7837062 |
| 2901 | 40200.40300.41100.52700.55500.161200.343800.2268700 | Transformer erection | 15d | 2028-04-01 | 2028-04-15 | 2900SS |  | RGA -FINISHING | 7837072 |
| 2902 | 40200.40300.41100.352300 | **Capex Item Procurment** | 122d | 2027-10-02 | 2028-01-31 |  | start no earlier than 2027-10-02 | RGA -FINISHING | 7808742 |
| 2903 | 40200.40300.41100.352300.564600 | Lift Procurement & delivery | 30d | 2027-11-03 | 2027-12-02 | 2888SS |  | RGA -FINISHING | 7813922 |
| 2904 | 40200.40300.41100.352300.564700 | Panels | 30d | 2027-10-02 | 2027-10-31 | 2899SS-90d |  | RGA -FINISHING | 7813932 |
| 2905 | 40200.40300.41100.352300.564800 | DG procurement | 30d | 2028-01-02 | 2028-01-31 | 2900SS-90d |  | RGA -FINISHING | 7813942 |
| 2906 | 40200.40300.41100.352300.564900 | Transformer | 30d | 2028-01-02 | 2028-01-31 | 2901SS-90d |  | RGA -FINISHING | 7813952 |
| 2907 | 40200.40300.41100.44800 | **Handing Over Activities** | 56d | 2028-06-21 | 2028-08-15 |  | start no earlier than 2028-06-21 | RGA -FINISHING | 7803262 |
| 2908 | 40200.40300.41100.44800.565000 | SOAP WASHING GROUND FLOOR | 1d | 2028-06-21 | 2028-06-21 | 2885FS+100d |  | RGA -FINISHING | 7813962 |
| 2909 | 40200.40300.41100.44800.565100 | SOAP WASHING L1 | 1d | 2028-06-22 | 2028-06-22 | 2908 |  | RGA -FINISHING | 7813972 |
| 2910 | 40200.40300.41100.44800.565200 | SOAP WASHING L2 | 1d | 2028-06-23 | 2028-06-23 | 2909 |  | RGA -FINISHING | 7813982 |
| 2911 | 40200.40300.41100.44800.565300 | SOAP WASHING L3 | 1d | 2028-06-24 | 2028-06-24 | 2910 |  | RGA -FINISHING | 7813992 |
| 2912 | 40200.40300.41100.44800.565400 | SOAP WASHING L4 | 1d | 2028-06-25 | 2028-06-25 | 2911 |  | RGA -FINISHING | 7814002 |
| 2913 | 40200.40300.41100.44800.565500 | SOAP WASHING L5 | 1d | 2028-06-26 | 2028-06-26 | 2912 |  | RGA -FINISHING | 7814012 |
| 2914 | 40200.40300.41100.44800.565600 | SOAP WASHING L6 | 1d | 2028-06-27 | 2028-06-27 | 2913 |  | RGA -FINISHING | 7814022 |
| 2915 | 40200.40300.41100.44800.565700 | SOAP WASHING L7 | 1d | 2028-06-28 | 2028-06-28 | 2914 |  | RGA -FINISHING | 7814032 |
| 2916 | 40200.40300.41100.44800.565800 | SOAP WASHING L8 | 1d | 2028-06-29 | 2028-06-29 | 2915 |  | RGA -FINISHING | 7814042 |
| 2917 | 40200.40300.41100.44800.565900 | SOAP WASHING L9 | 1d | 2028-06-30 | 2028-06-30 | 2916 |  | RGA -FINISHING | 7814052 |
| 2918 | 40200.40300.41100.44800.566000 | SOAP WASHING L10 | 1d | 2028-07-01 | 2028-07-01 | 2917 |  | RGA -FINISHING | 7814062 |
| 2919 | 40200.40300.41100.44800.566100 | SOAP WASHING L11 | 1d | 2028-07-02 | 2028-07-02 | 2918 |  | RGA -FINISHING | 7814072 |
| 2920 | 40200.40300.41100.44800.566200 | SOAP WASHING L12 | 1d | 2028-07-03 | 2028-07-03 | 2919 |  | RGA -FINISHING | 7814082 |
| 2921 | 40200.40300.41100.44800.566300 | SOAP WASHING L13 | 1d | 2028-07-04 | 2028-07-04 | 2920 |  | RGA -FINISHING | 7814092 |
| 2922 | 40200.40300.41100.44800.566400 | SOAP WASHING L14 | 1d | 2028-07-05 | 2028-07-05 | 2921 |  | RGA -FINISHING | 7814102 |
| 2923 | 40200.40300.41100.44800.566500 | SOAP WASHING L15 | 1d | 2028-07-06 | 2028-07-06 | 2922 |  | RGA -FINISHING | 7814112 |
| 2924 | 40200.40300.41100.44800.566600 | SOAP WASHING L16 | 1d | 2028-07-07 | 2028-07-07 | 2923 |  | RGA -FINISHING | 7814122 |
| 2925 | 40200.40300.41100.44800.566700 | SOAP WASHING L17 | 1d | 2028-07-08 | 2028-07-08 | 2924 |  | RGA -FINISHING | 7814132 |
| 2926 | 40200.40300.41100.44800.566800 | SOAP WASHING L18 | 1d | 2028-07-09 | 2028-07-09 | 2925 |  | RGA -FINISHING | 7814142 |
| 2927 | 40200.40300.41100.44800.566900 | SOAP WASHING L19 | 1d | 2028-07-10 | 2028-07-10 | 2926 |  | RGA -FINISHING | 7814152 |
| 2928 | 40200.40300.41100.44800.567000 | SOAP WASHING L20 | 1d | 2028-07-11 | 2028-07-11 | 2927 |  | RGA -FINISHING | 7814162 |
| 2929 | 40200.40300.41100.44800.567100 | SOAP WASHING L21 | 1d | 2028-07-12 | 2028-07-12 | 2928 |  | RGA -FINISHING | 7814172 |
| 2930 | 40200.40300.41100.44800.567200 | SOAP WASHING L22 | 1d | 2028-07-13 | 2028-07-13 | 2929 |  | RGA -FINISHING | 7814182 |
| 2931 | 40200.40300.41100.44800.567300 | SOAP WASHING L23 | 1d | 2028-07-14 | 2028-07-14 | 2930 |  | RGA -FINISHING | 7814192 |
| 2932 | 40200.40300.41100.44800.567400 | SOAP WASHING L24 | 1d | 2028-07-15 | 2028-07-15 | 2931 |  | RGA -FINISHING | 7814202 |
| 2933 | 40200.40300.41100.44800.567500 | SOAP WASHING L25 | 1d | 2028-07-16 | 2028-07-16 | 2932 |  | RGA -FINISHING | 7814212 |
| 2934 | 40200.40300.41100.44800.567600 | CP & SANITARYWARE FIXING Ground | 2d | 2028-06-23 | 2028-06-24 | 2909 |  | RGA -FINISHING | 7814242 |
| 2935 | 40200.40300.41100.44800.567700 | CP & SANITARYWARE FIXING L1 | 2d | 2028-06-25 | 2028-06-26 | 2934 |  | RGA -FINISHING | 7814252 |
| 2936 | 40200.40300.41100.44800.567800 | CP & SANITARYWARE FIXING L2 | 2d | 2028-06-27 | 2028-06-28 | 2935 |  | RGA -FINISHING | 7814262 |
| 2937 | 40200.40300.41100.44800.567900 | CP & SANITARYWARE FIXING L3 | 2d | 2028-06-29 | 2028-06-30 | 2936 |  | RGA -FINISHING | 7814272 |
| 2938 | 40200.40300.41100.44800.568000 | CP & SANITARYWARE FIXING L4 | 2d | 2028-07-01 | 2028-07-02 | 2937 |  | RGA -FINISHING | 7814282 |
| 2939 | 40200.40300.41100.44800.568100 | CP & SANITARYWARE FIXING L5 | 2d | 2028-07-03 | 2028-07-04 | 2938 |  | RGA -FINISHING | 7814292 |
| 2940 | 40200.40300.41100.44800.568200 | CP & SANITARYWARE FIXING L6 | 2d | 2028-07-05 | 2028-07-06 | 2939 |  | RGA -FINISHING | 7814302 |
| 2941 | 40200.40300.41100.44800.568300 | CP & SANITARYWARE FIXING L7 | 2d | 2028-07-07 | 2028-07-08 | 2940 |  | RGA -FINISHING | 7814312 |
| 2942 | 40200.40300.41100.44800.568400 | CP & SANITARYWARE FIXING L8 | 2d | 2028-07-09 | 2028-07-10 | 2941 |  | RGA -FINISHING | 7814322 |
| 2943 | 40200.40300.41100.44800.568500 | CP & SANITARYWARE FIXING L9 | 2d | 2028-07-11 | 2028-07-12 | 2942 |  | RGA -FINISHING | 7814332 |
| 2944 | 40200.40300.41100.44800.568600 | CP & SANITARYWARE FIXING L10 | 2d | 2028-07-13 | 2028-07-14 | 2943 |  | RGA -FINISHING | 7814342 |
| 2945 | 40200.40300.41100.44800.568700 | CP & SANITARYWARE FIXING L11 | 2d | 2028-07-15 | 2028-07-16 | 2944 |  | RGA -FINISHING | 7814352 |
| 2946 | 40200.40300.41100.44800.568800 | CP & SANITARYWARE FIXING L12 | 2d | 2028-07-17 | 2028-07-18 | 2945 |  | RGA -FINISHING | 7814362 |
| 2947 | 40200.40300.41100.44800.568900 | CP & SANITARYWARE FIXING L13 | 2d | 2028-07-19 | 2028-07-20 | 2946 |  | RGA -FINISHING | 7814372 |
| 2948 | 40200.40300.41100.44800.569000 | CP & SANITARYWARE FIXING L14 | 2d | 2028-07-21 | 2028-07-22 | 2947 |  | RGA -FINISHING | 7814382 |
| 2949 | 40200.40300.41100.44800.569100 | CP & SANITARYWARE FIXING L15 | 2d | 2028-07-23 | 2028-07-24 | 2948 |  | RGA -FINISHING | 7814392 |
| 2950 | 40200.40300.41100.44800.569200 | CP & SANITARYWARE FIXING L16 | 2d | 2028-07-25 | 2028-07-26 | 2949 |  | RGA -FINISHING | 7814402 |
| 2951 | 40200.40300.41100.44800.569300 | CP & SANITARYWARE FIXING L17 | 2d | 2028-07-27 | 2028-07-28 | 2950 |  | RGA -FINISHING | 7814412 |
| 2952 | 40200.40300.41100.44800.569400 | CP & SANITARYWARE FIXING L18 | 2d | 2028-07-29 | 2028-07-30 | 2951 |  | RGA -FINISHING | 7814422 |
| 2953 | 40200.40300.41100.44800.569500 | CP & SANITARYWARE FIXING L18 | 2d | 2028-07-31 | 2028-08-01 | 2952 |  | RGA -FINISHING | 7814432 |
| 2954 | 40200.40300.41100.44800.569600 | CP & SANITARYWARE FIXING L19 | 2d | 2028-08-02 | 2028-08-03 | 2953 |  | RGA -FINISHING | 7814442 |
| 2955 | 40200.40300.41100.44800.569700 | CP & SANITARYWARE FIXING L20 | 2d | 2028-08-04 | 2028-08-05 | 2954 |  | RGA -FINISHING | 7814452 |

Notes:
- 2886: Completion in 12 months post last RCC

| ID | WBS | Task | Type | Duration | Start | Finish | Predecessors | Complete | Constraint | Calendar | Unique_Task_ID |
| --- | --- | --- | --- | --- | --- | --- | --- | --- | --- | --- | --- |
| 2956 | 40200.40300.41100.44800.569800 | CP & SANITARYWARE FIXING L21 |  | 2d | 2028-08-06 | 2028-08-07 | 2955 |  |  | RGA -FINISHING | 7814462 |
| 2957 | 40200.40300.41100.44800.569900 | CP & SANITARYWARE FIXING L22 |  | 2d | 2028-08-08 | 2028-08-09 | 2956 |  |  | RGA -FINISHING | 7814472 |
| 2958 | 40200.40300.41100.44800.570000 | CP & SANITARYWARE FIXING L23 |  | 2d | 2028-08-10 | 2028-08-11 | 2957 |  |  | RGA -FINISHING | 7814482 |
| 2959 | 40200.40300.41100.44800.570100 | CP & SANITARYWARE FIXING L24 |  | 2d | 2028-08-12 | 2028-08-13 | 2958 |  |  | RGA -FINISHING | 7814492 |
| 2960 | 40200.40300.41100.44800.570200 | CP & SANITARYWARE FIXING L25 |  | 2d | 2028-08-14 | 2028-08-15 | 2959 |  |  | RGA -FINISHING | 7814502 |
| 2961 | 40200.40300.41100.536500 | MIscellaneous (Aluform Supply) |  | 27d | 2025-09-26 | 2025-11-20 | 2035FS-115d | 100% | start no earlier than 2025-09-26 | RGA -FINISHING | 7812552 |
| 2962 | 40200.40300.41100.536400 | Miscellaneous |  | 718d | 2023-11-02 | 2027-12-10 | 2961FS-599d | 82% |  | Indian Calendar | 7812562 |
| 2963 | 40200.40300.41100.545700 | Miscellaneous |  | 600d | 2026-12-26 | 2028-11-24 | 2961FS+343d |  |  | Indian Calendar | 10722958 |
| 2964 | 40200.40300.41200 | **TOWER 4 - (2B+G+25 Floors+Terrace)** |  | 1406d | 2025-02-06 | 2029-01-20 |  | 3% | start no earlier than 2025-02-06 | RGA - STRUCTURE | 7803172 |
| 2965 | 40200.40300.41200.1170300 | Start date for Tower D | milestone | 0d | 2025-12-28 | 2025-12-28 | 3952FS+7d |  |  | RGA - STRUCTURE | 7847652 |
| 2966 | 40200.40300.41200.459700 | **Earth work** |  | 223d | 2025-02-06 | 2025-09-19 |  | 100% | start no earlier than 2025-02-06 | RGA - STRUCTURE | 7811762 |
| 2967 | 40200.40300.41200.459700.521400 | EXCAVATION - Tower Area |  | 116d | 2025-02-06 | 2025-09-15 | 2965SS-218d | 100% | start no earlier than 2025-02-06 | RGA - STRUCTURE | 7814532 |
| 2968 | 40200.40300.41200.459700.521300 | Excavation - Non Tower Area |  | 75d | 2025-02-21 | 2025-09-19 | 2967FS-142d | 100% | start no earlier than 2025-02-21 | 5 day week, Bank Hols Xmas | 7433485 |
| 2969 | 40200.40300.41200.70500 | **Substructure works (Works up to plinth)** |  | 915d | 2025-11-02 | 2028-06-07 |  | 2% | start no earlier than 2025-11-02 | RGA - STRUCTURE | 7803882 |
| 2970 | 40200.40300.41200.70500.168100 | **Civil works (Shell & Core basement)** |  | 655d | 2025-11-02 | 2027-09-21 |  | 31% | start no earlier than 2025-11-02 | RGA - STRUCTURE | 7806862 |
| 2971 | 40200.40300.41200.70500.168100.252300 | **RCC Works - Tower area- 1st Basement** |  | 63d | 2025-11-02 | 2026-01-03 |  | 51% | start no earlier than 2025-11-02 | RGA - STRUCTURE | 7808302 |
| 2972 | 40200.40300.41200.70500.168100.252300.369000 | **FOundation** |  | 26d | 2025-11-04 | 2025-11-29 |  | 100% | start no earlier than 2025-11-04 | RGA - STRUCTURE | 7809322 |
| 2973 | 40200.40300.41200.70500.168100.252300.369000.534000 | Pocket Excavation |  | 1d | 2025-11-04 | 2025-11-04 | 2967 | 100% | start no earlier than 2025-11-04 | RGA - STRUCTURE | 7837082 |
| 2974 | 40200.40300.41200.70500.168100.252300.369000.534100 | Footing PCC |  | 6d | 2025-11-05 | 2025-11-12 | 2973 | 100% | start no earlier than 2025-11-05 | RGA - STRUCTURE | 7837092 |
| 2975 | 40200.40300.41200.70500.168100.252300.369000.534200 | Footing / Raft works |  | 15d | 2025-11-06 | 2025-11-29 | 2974FS-4.8d | 100% | start no earlier than 2025-11-06 | RGA - STRUCTURE | 7837102 |
| 2976 | 40200.40300.41200.70500.168100.252300.482400 | **UB Slab** |  | 63d | 2025-11-02 | 2026-01-03 |  | 30% | start no earlier than 2025-11-02 | RGA - STRUCTURE | 7811352 |
| 2977 | 40200.40300.41200.70500.168100.252300.482400.534300 | Columns in Upper basement |  | 16d | 2025-11-02 | 2025-11-30 | 2975FS-28d | 93% |  | RGA - STRUCTURE | 7837112 |
| 2978 | 40200.40300.41200.70500.168100.252300.482400.2268800 | Upper Basement slab |  | 34d | 2025-12-01 | 2026-01-03 | 2977 |  |  | RGA - STRUCTURE | 7837122 |
| 2979 | 40200.40300.41200.70500.168100.496700 | **Ground Floor Slab** |  | 35d | 2026-01-04 | 2026-02-08 |  |  | start no earlier than 2026-01-04 | RGA - STRUCTURE | 8865544 |
| 2980 | 40200.40300.41200.70500.168100.496700.988600 | Columns in Upper basement |  | 20d | 2026-01-04 | 2026-01-23 | 2978 |  |  | RGA - STRUCTURE | 8865554 |
| 2981 | 40200.40300.41200.70500.168100.496700.988700 | Upper Basement slab |  | 15d | 2026-01-24 | 2026-02-08 | 2980 |  |  | RGA - STRUCTURE | 8865564 |
| 2982 | 40200.40300.41200.70500.168100.853100 | Backfilling |  | 10d | 2027-09-12 | 2027-09-21 | 7884 |  |  | RGA - STRUCTURE | 7820142 |

Notes:
- 2966: 2 Months for Excavation

| ID | WBS | Task | Duration | Start | Finish | Predecessors | Constraint | Calendar | Unique_Task_ID |
| --- | --- | --- | --- | --- | --- | --- | --- | --- | --- |
| 2983 | 40200.40300.41200.70500.492900 | **Basement Block work and Plaster finishing** | 90d | 2027-06-14 | 2027-09-11 |  | start no earlier than 2027-06-14 | RGA - STRUCTURE | 7811852 |
| 2984 | 40200.40300.41200.70500.492900.853200 | Upper basement | 45d | 2027-06-14 | 2027-07-28 | 3098 |  | RGA - STRUCTURE | 7820152 |
| 2985 | 40200.40300.41200.70500.492900.853300 | Upper Basement Plumbing | 45d | 2027-07-29 | 2027-09-11 | 2984 |  | RGA -FINISHING | 8865654 |
| 2986 | 40200.40300.41200.70500.161600 | **Services** | 360d | 2027-06-14 | 2028-06-07 |  | start no earlier than 2027-06-14 | RGA -FINISHING | 7805372 |
| 2987 | 40200.40300.41200.70500.161600.366000 | **Plumbing** | 180d | 2027-06-14 | 2027-12-10 |  | start no earlier than 2027-06-14 | RGA -FINISHING | 7809092 |
| 2988 | 40200.40300.41200.70500.161600.366000.482300 | **Upper Basement Plumbing** | 180d | 2027-06-14 | 2027-12-10 |  | start no earlier than 2027-06-14 | RGA -FINISHING | 7812112 |
| 2989 | 40200.40300.41200.70500.161600.366000.482300.2268900 | Upper Basement Plumbing | 90d | 2027-06-14 | 2027-09-11 | 3098 |  | RGA -FINISHING | 7837132 |
| 2990 | 40200.40300.41200.70500.161600.366000.482300.2269000 | Upper Basement Plumbing | 90d | 2027-09-12 | 2027-12-10 | 2989 |  | RGA -FINISHING | 8865574 |
| 2991 | 40200.40300.41200.70500.161600.366100 | **Fire fighting** | 180d | 2027-06-14 | 2027-12-10 |  | start no earlier than 2027-06-14 | RGA -FINISHING | 7809102 |
| 2992 | 40200.40300.41200.70500.161600.366100.482200 | **Upper Basement Fire fighting** | 180d | 2027-06-14 | 2027-12-10 |  | start no earlier than 2027-06-14 | RGA -FINISHING | 7812102 |
| 2993 | 40200.40300.41200.70500.161600.366100.482200.2269100 | Upper Basement Fire fighting | 90d | 2027-06-14 | 2027-09-11 | 3098 |  | RGA -FINISHING | 7837142 |
| 2994 | 40200.40300.41200.70500.161600.366100.482200.2269200 | Upper Basement Plumbing | 90d | 2027-09-12 | 2027-12-10 | 2993 |  | RGA -FINISHING | 8865584 |
| 2995 | 40200.40300.41200.70500.161600.366200 | **Ventilation** | 180d | 2027-09-12 | 2028-03-09 |  | start no earlier than 2027-09-12 | RGA -FINISHING | 7809112 |
| 2996 | 40200.40300.41200.70500.161600.366200.482100 | **Upper Basement ventilation** | 180d | 2027-09-12 | 2028-03-09 |  | start no earlier than 2027-09-12 | RGA -FINISHING | 7812092 |
| 2997 | 40200.40300.41200.70500.161600.366200.482100.2269300 | Upper Basement ventilation | 90d | 2027-09-12 | 2027-12-10 | 2993 |  | RGA -FINISHING | 7837152 |
| 2998 | 40200.40300.41200.70500.161600.366200.482100.2269400 | Upper Basement Plumbing | 90d | 2027-12-11 | 2028-03-09 | 2997 |  | RGA -FINISHING | 8865594 |
| 2999 | 40200.40300.41200.70500.161600.366300 | **Electrification** | 180d | 2027-12-11 | 2028-06-07 |  | start no earlier than 2027-12-11 | RGA -FINISHING | 7809122 |
| 3000 | 40200.40300.41200.70500.161600.366300.482000 | **Upper Basement Electrification** | 180d | 2027-12-11 | 2028-06-07 |  | start no earlier than 2027-12-11 | RGA -FINISHING | 7812082 |
| 3001 | 40200.40300.41200.70500.161600.366300.482000.2269500 | Upper Basement Electrification | 90d | 2027-12-11 | 2028-03-09 | 2997 |  | RGA -FINISHING | 7837162 |
| 3002 | 40200.40300.41200.70500.161600.366300.482000.2269600 | Upper Basement Plumbing | 90d | 2028-03-10 | 2028-06-07 | 3001 |  | RGA -FINISHING | 8865604 |
| 3003 | 40200.40300.41200.70500.161600.366400 | **Security installations** | 90d | 2028-03-10 | 2028-06-07 |  | start no earlier than 2028-03-10 | RGA -FINISHING | 7809132 |
| 3004 | 40200.40300.41200.70500.161600.366400.481900 | **Upper Basement Security installations** | 90d | 2028-03-10 | 2028-06-07 |  | start no earlier than 2028-03-10 | RGA -FINISHING | 7812072 |
| 3005 | 40200.40300.41200.70500.161600.366400.481900.2269700 | Upper Basement Security installations | 45d | 2028-03-10 | 2028-04-23 | 3001 |  | RGA -FINISHING | 7837172 |
| 3006 | 40200.40300.41200.70500.161600.366400.481900.2269800 | Upper Basement Plumbing | 45d | 2028-04-24 | 2028-06-07 | 3005 |  | RGA -FINISHING | 8865614 |

| ID | WBS | Task | Duration | Start | Finish | Predecessors | Constraint | Calendar | Unique_Task_ID |
| --- | --- | --- | --- | --- | --- | --- | --- | --- | --- |
| 3007 | 40200.40300.41200.70500.340500 | **Finishing work** | 189d | 2027-07-29 | 2028-02-02 |  | start no earlier than 2027-07-29 | RGA -FINISHING | 7808852 |
| 3008 | 40200.40300.41200.70500.340500.496400 | **Basement Flooring** | 189d | 2027-07-29 | 2028-02-02 |  | start no earlier than 2027-07-29 | RGA -FINISHING | 7812402 |
| 3009 | 40200.40300.41200.70500.340500.496400.988800 | 1st Basement ventilation | 90d | 2027-07-29 | 2027-10-26 | 2984 |  | RGA -FINISHING | 7831982 |
| 3010 | 40200.40300.41200.70500.340500.496400.988900 | Upper Basement Plumbing | 90d | 2027-11-05 | 2028-02-02 | 3009FS+9d |  | RGA -FINISHING | 8865624 |
| 3011 | 40200.40300.41200.70500.340500.496300 | **Basement Painting (1st Coat)** | 90d | 2027-10-27 | 2028-01-24 |  | start no earlier than 2027-10-27 | RGA -FINISHING | 7812412 |
| 3012 | 40200.40300.41200.70500.340500.496300.989000 | 2nd Basement ventilation | 45d | 2027-10-27 | 2027-12-10 | 3009 |  | RGA -FINISHING | 7831992 |
| 3013 | 40200.40300.41200.70500.340500.496300.989100 | Upper Basement Plumbing | 45d | 2027-12-11 | 2028-01-24 | 3012 |  | RGA -FINISHING | 8865634 |
| 3014 | 40200.40300.41200.70500.492800 | **Water Proofing work** | 90d | 2027-07-29 | 2027-10-26 |  | start no earlier than 2027-07-29 | RGA -FINISHING | 7811862 |
| 3015 | 40200.40300.41200.70500.492800.853400 | 1st Basement | 45d | 2027-07-29 | 2027-09-11 | 2984 |  | RGA -FINISHING | 7820162 |
| 3016 | 40200.40300.41200.70500.492800.853500 | Upper Basement Plumbing | 45d | 2027-09-12 | 2027-10-26 | 3015 |  | RGA -FINISHING | 8865644 |
| 3017 | 40200.40300.41200.53000 | **Superstructure works** | 907d | 2025-11-30 | 2028-06-27 |  | start no earlier than 2025-11-30 | RGA - STRUCTURE | 7803302 |
| 3018 | 40200.40300.41200.53000.55600 | **Civil works** | 907d | 2025-11-30 | 2028-06-27 |  | start no earlier than 2025-11-30 | RGA - STRUCTURE | 7803332 |
| 3019 | 40200.40300.41200.53000.55600.62100 | **Superstructure RCC Work** | 598d | 2026-02-09 | 2027-11-01 |  | start no earlier than 2026-02-09 | RGA - STRUCTURE | 7803602 |
| 3020 | 40200.40300.41200.53000.55600.62100.63100 | **Slab RCC works** | 549d | 2026-02-09 | 2027-09-13 |  | start no earlier than 2026-02-09 | RGA - STRUCTURE | 7803692 |
| 3021 | 40200.40300.41200.53000.55600.62100.63100.501800 | **1st Floor slab (Height More)** | 35d | 2026-02-09 | 2026-03-15 |  | start no earlier than 2026-02-09 | RGA - STRUCTURE | 7811552 |
| 3022 | 40200.40300.41200.53000.55600.62100.63100.501800.2661200 | Columns | 20d | 2026-02-09 | 2026-02-28 | 2981 |  | RGA - STRUCTURE | 7856002 |
| 3023 | 40200.40300.41200.53000.55600.62100.63100.501800.2661300 | Slab Work | 15d | 2026-03-01 | 2026-03-15 | 3022 |  | RGA - STRUCTURE | 7856012 |
| 3024 | 40200.40300.41200.53000.55600.62100.63100.501900 | **2nd Floor slab (Combo)** | 40d | 2026-03-16 | 2026-04-24 |  | start no earlier than 2026-03-16 | RGA - STRUCTURE | 7811562 |
| 3025 | 40200.40300.41200.53000.55600.62100.63100.501900.2661400 | Columns | 20d | 2026-03-16 | 2026-04-04 | 3023 |  | RGA - STRUCTURE | 7856022 |
| 3026 | 40200.40300.41200.53000.55600.62100.63100.501900.2661500 | Slab work | 20d | 2026-04-05 | 2026-04-24 | 3025 |  | RGA - STRUCTURE | 7856032 |
| 3027 | 40200.40300.41200.53000.55600.62100.63100.419600 | **3rd Floor slab (Combo)** | 40d | 2026-04-25 | 2026-06-04 |  | start no earlier than 2026-04-25 | RGA - STRUCTURE | 7810172 |
| 3028 | 40200.40300.41200.53000.55600.62100.63100.419600.2661600 | Wall rebar & Form work | 20d | 2026-04-25 | 2026-05-15 | 3026 |  | RGA - STRUCTURE | 7856042 |
| 3029 | 40200.40300.41200.53000.55600.62100.63100.419600.2661700 | Slab form work & reabar | 19d | 2026-05-16 | 2026-06-03 | 3028 |  | RGA - STRUCTURE | 7856052 |
| 3030 | 40200.40300.41200.53000.55600.62100.63100.419600.2661800 | Concreting | 1d | 2026-06-04 | 2026-06-04 | 3029 |  | RGA - STRUCTURE | 7856062 |

Notes:
- 3024: AVg Slab Cycle of 21 days
- 3027: AVg Slab Cycle of 21 days

| ID | WBS | Task | Duration | Start | Finish | Predecessors | Constraint | Calendar | Unique_Task_ID |
| --- | --- | --- | --- | --- | --- | --- | --- | --- | --- |
| 3031 | 40200.40300.41200.53000.55600.62100.63100.419700 | **4th Floor slab (1st Set Up)** | 40d | 2026-06-05 | 2026-07-29 |  | start no earlier than 2026-06-05 | RGA - STRUCTURE | 7810182 |
| 3032 | 40200.40300.41200.53000.55600.62100.63100.419700.2661900 | Wall rebar & Form work | 20d | 2026-06-05 | 2026-07-03 | 3030 |  | RGA - STRUCTURE | 7856072 |
| 3033 | 40200.40300.41200.53000.55600.62100.63100.419700.2662000 | Slab form work & reabar | 19d | 2026-07-04 | 2026-07-28 | 3032 |  | RGA - STRUCTURE | 7856082 |
| 3034 | 40200.40300.41200.53000.55600.62100.63100.419700.2662100 | Concreting | 1d | 2026-07-29 | 2026-07-29 | 3033 |  | RGA - STRUCTURE | 7856092 |
| 3035 | 40200.40300.41200.53000.55600.62100.63100.419800 | **5th Floor slab(2nd Set Up)** | 40d | 2026-07-30 | 2026-09-08 |  | start no earlier than 2026-07-30 | RGA - STRUCTURE | 7810192 |
| 3036 | 40200.40300.41200.53000.55600.62100.63100.419800.2662200 | Wall rebar & Form work | 20d | 2026-07-30 | 2026-08-19 | 3034 |  | RGA - STRUCTURE | 7856102 |
| 3037 | 40200.40300.41200.53000.55600.62100.63100.419800.2662300 | Slab form work & reabar | 19d | 2026-08-20 | 2026-09-07 | 3036 |  | RGA - STRUCTURE | 7856112 |
| 3038 | 40200.40300.41200.53000.55600.62100.63100.419800.2662400 | Concreting | 1d | 2026-09-08 | 2026-09-08 | 3037 |  | RGA - STRUCTURE | 7856122 |
| 3039 | 40200.40300.41200.53000.55600.62100.63100.419900 | **6th Floor slab** | 28d | 2026-09-09 | 2026-10-07 |  | start no earlier than 2026-09-09 | RGA - STRUCTURE | 7810202 |
| 3040 | 40200.40300.41200.53000.55600.62100.63100.419900.2662500 | Wall rebar & Form work | 14d | 2026-09-09 | 2026-09-22 | 3038 |  | RGA - STRUCTURE | 7856132 |
| 3041 | 40200.40300.41200.53000.55600.62100.63100.419900.2662600 | Slab form work & reabar | 13d | 2026-09-23 | 2026-10-06 | 3040 |  | RGA - STRUCTURE | 7856142 |
| 3042 | 40200.40300.41200.53000.55600.62100.63100.419900.2662700 | Concreting | 1d | 2026-10-07 | 2026-10-07 | 3041 |  | RGA - STRUCTURE | 7856152 |
| 3043 | 40200.40300.41200.53000.55600.62100.63100.420000 | **7th Floor slab** | 13d | 2026-10-08 | 2026-10-20 |  | start no earlier than 2026-10-08 | RGA - STRUCTURE | 7810212 |
| 3044 | 40200.40300.41200.53000.55600.62100.63100.420000.2662800 | Wall rebar & Form work | 6d | 2026-10-08 | 2026-10-13 | 3042 |  | RGA - STRUCTURE | 7856162 |
| 3045 | 40200.40300.41200.53000.55600.62100.63100.420000.2662900 | Slab form work & reabar | 6d | 2026-10-14 | 2026-10-19 | 3044 |  | RGA - STRUCTURE | 7856172 |
| 3046 | 40200.40300.41200.53000.55600.62100.63100.420000.2663000 | Concreting | 1d | 2026-10-20 | 2026-10-20 | 3045 |  | RGA - STRUCTURE | 7856182 |
| 3047 | 40200.40300.41200.53000.55600.62100.63100.420100 | **8th Floor slab** | 17d | 2026-10-21 | 2026-11-06 |  | start no earlier than 2026-10-21 | RGA - STRUCTURE | 7810222 |
| 3048 | 40200.40300.41200.53000.55600.62100.63100.420100.2663100 | Wall rebar & Form work | 8d | 2026-10-21 | 2026-10-28 | 3046 |  | RGA - STRUCTURE | 7856192 |
| 3049 | 40200.40300.41200.53000.55600.62100.63100.420100.2663200 | Slab form work & reabar | 8d | 2026-10-29 | 2026-11-05 | 3048 |  | RGA - STRUCTURE | 7856202 |
| 3050 | 40200.40300.41200.53000.55600.62100.63100.420100.2663300 | Concreting | 1d | 2026-11-06 | 2026-11-06 | 3049 |  | RGA - STRUCTURE | 7856212 |
| 3051 | 40200.40300.41200.53000.55600.62100.63100.420200 | **9th Floor slab** | 17d | 2026-11-07 | 2026-12-01 |  | start no earlier than 2026-11-07 | RGA - STRUCTURE | 7810232 |
| 3052 | 40200.40300.41200.53000.55600.62100.63100.420200.2663400 | Wall rebar & Form work | 8d | 2026-11-07 | 2026-11-14 | 3050 |  | RGA - STRUCTURE | 7856222 |
| 3053 | 40200.40300.41200.53000.55600.62100.63100.420200.2663500 | Slab form work & reabar | 8d | 2026-11-15 | 2026-11-29 | 3052 |  | RGA - STRUCTURE | 7856232 |
| 3054 | 40200.40300.41200.53000.55600.62100.63100.420200.2663600 | Concreting | 1d | 2026-11-30 | 2026-12-01 | 3053 |  | RGA - STRUCTURE | 7856242 |

Notes:
- 3031: AVg Slab Cycle of 21 days

| ID | WBS | Task | Duration | Start | Finish | Predecessors | Constraint | Calendar | Unique_Task_ID |
| --- | --- | --- | --- | --- | --- | --- | --- | --- | --- |
| 3055 | 40200.40300.41200.53000.55600.62100.63100.420300 | **10th Floor slab** | 17d | 2026-12-02 | 2026-12-25 |  | start no earlier than 2026-12-02 | RGA - STRUCTURE | 7810242 |
| 3056 | 40200.40300.41200.53000.55600.62100.63100.420300.2663700 | Wall rebar & Form work | 8d | 2026-12-02 | 2026-12-16 | 3054 |  | RGA - STRUCTURE | 7856252 |
| 3057 | 40200.40300.41200.53000.55600.62100.63100.420300.2663800 | Slab form work & reabar | 8d | 2026-12-17 | 2026-12-24 | 3056 |  | RGA - STRUCTURE | 7856262 |
| 3058 | 40200.40300.41200.53000.55600.62100.63100.420300.2663900 | Concreting | 1d | 2026-12-25 | 2026-12-25 | 3057 |  | RGA - STRUCTURE | 7856272 |
| 3059 | 40200.40300.41200.53000.55600.62100.63100.420400 | **11th Floor slab** | 17d | 2026-12-26 | 2027-01-11 |  | start no earlier than 2026-12-26 | RGA - STRUCTURE | 7810252 |
| 3060 | 40200.40300.41200.53000.55600.62100.63100.420400.2664000 | Wall rebar & Form work | 8d | 2026-12-26 | 2027-01-02 | 3058 |  | RGA - STRUCTURE | 7856282 |
| 3061 | 40200.40300.41200.53000.55600.62100.63100.420400.2664100 | Slab form work & reabar | 8d | 2027-01-03 | 2027-01-10 | 3060 |  | RGA - STRUCTURE | 7856292 |
| 3062 | 40200.40300.41200.53000.55600.62100.63100.420400.2664200 | Concreting | 1d | 2027-01-11 | 2027-01-11 | 3061 |  | RGA - STRUCTURE | 7856302 |
| 3063 | 40200.40300.41200.53000.55600.62100.63100.420500 | **12th Floor slab** | 17d | 2027-01-12 | 2027-01-28 |  | start no earlier than 2027-01-12 | RGA - STRUCTURE | 7810262 |
| 3064 | 40200.40300.41200.53000.55600.62100.63100.420500.2664300 | Wall rebar & Form work | 8d | 2027-01-12 | 2027-01-19 | 3062 |  | RGA - STRUCTURE | 7856312 |
| 3065 | 40200.40300.41200.53000.55600.62100.63100.420500.2664400 | Slab form work & reabar | 8d | 2027-01-20 | 2027-01-27 | 3064 |  | RGA - STRUCTURE | 7856322 |
| 3066 | 40200.40300.41200.53000.55600.62100.63100.420500.2664500 | Concreting | 1d | 2027-01-28 | 2027-01-28 | 3065 |  | RGA - STRUCTURE | 7856332 |
| 3067 | 40200.40300.41200.53000.55600.62100.63100.420600 | **13th Floor slab** | 17d | 2027-01-29 | 2027-02-14 |  | start no earlier than 2027-01-29 | RGA - STRUCTURE | 7810272 |
| 3068 | 40200.40300.41200.53000.55600.62100.63100.420600.2664600 | Wall rebar & Form work | 8d | 2027-01-29 | 2027-02-05 | 3066 |  | RGA - STRUCTURE | 7856342 |
| 3069 | 40200.40300.41200.53000.55600.62100.63100.420600.2664700 | Slab form work & reabar | 8d | 2027-02-06 | 2027-02-13 | 3068 |  | RGA - STRUCTURE | 7856352 |
| 3070 | 40200.40300.41200.53000.55600.62100.63100.420600.2664800 | Concreting | 1d | 2027-02-14 | 2027-02-14 | 3069 |  | RGA - STRUCTURE | 7856362 |
| 3071 | 40200.40300.41200.53000.55600.62100.63100.420700 | **14th Floor slab** | 17d | 2027-02-15 | 2027-03-03 |  | start no earlier than 2027-02-15 | RGA - STRUCTURE | 7810282 |
| 3072 | 40200.40300.41200.53000.55600.62100.63100.420700.2664900 | Wall rebar & Form work | 8d | 2027-02-15 | 2027-02-22 | 3070 |  | RGA - STRUCTURE | 7856372 |
| 3073 | 40200.40300.41200.53000.55600.62100.63100.420700.2665000 | Slab form work & reabar | 8d | 2027-02-23 | 2027-03-02 | 3072 |  | RGA - STRUCTURE | 7856382 |
| 3074 | 40200.40300.41200.53000.55600.62100.63100.420700.2665100 | Concreting | 1d | 2027-03-03 | 2027-03-03 | 3073 |  | RGA - STRUCTURE | 7856392 |
| 3075 | 40200.40300.41200.53000.55600.62100.63100.420800 | **15th Floor slab** | 17d | 2027-03-04 | 2027-03-20 |  | start no earlier than 2027-03-04 | RGA - STRUCTURE | 7810292 |
| 3076 | 40200.40300.41200.53000.55600.62100.63100.420800.2665200 | Wall rebar & Form work | 8d | 2027-03-04 | 2027-03-11 | 3074 |  | RGA - STRUCTURE | 7856402 |
| 3077 | 40200.40300.41200.53000.55600.62100.63100.420800.2665300 | Slab form work & reabar | 8d | 2027-03-12 | 2027-03-19 | 3076 |  | RGA - STRUCTURE | 7856412 |
| 3078 | 40200.40300.41200.53000.55600.62100.63100.420800.2665400 | Concreting | 1d | 2027-03-20 | 2027-03-20 | 3077 |  | RGA - STRUCTURE | 7856422 |

Notes:
- 3063: AVg Slab Cycle of 21 days
- 3067: AVg Slab Cycle of 21 days
- 3071: AVg Slab Cycle of 21 days

| ID | WBS | Task | Duration | Start | Finish | Predecessors | Constraint | Calendar | Unique_Task_ID |
| --- | --- | --- | --- | --- | --- | --- | --- | --- | --- |
| 3079 | 40200.40300.41200.53000.55600.62100.63100.420900 | **16th Floor slab** | 17d | 2027-03-21 | 2027-04-06 |  | start no earlier than 2027-03-21 | RGA - STRUCTURE | 7810302 |
| 3080 | 40200.40300.41200.53000.55600.62100.63100.420900.2665500 | Wall rebar & Form work | 8d | 2027-03-21 | 2027-03-28 | 3078 |  | RGA - STRUCTURE | 7856432 |
| 3081 | 40200.40300.41200.53000.55600.62100.63100.420900.2665600 | Slab form work & reabar | 8d | 2027-03-29 | 2027-04-05 | 3080 |  | RGA - STRUCTURE | 7856442 |
| 3082 | 40200.40300.41200.53000.55600.62100.63100.420900.2665700 | Concreting | 1d | 2027-04-06 | 2027-04-06 | 3081 |  | RGA - STRUCTURE | 7856452 |
| 3083 | 40200.40300.41200.53000.55600.62100.63100.421000 | **17th Floor slab** | 17d | 2027-04-07 | 2027-04-23 |  | start no earlier than 2027-04-07 | RGA - STRUCTURE | 7810312 |
| 3084 | 40200.40300.41200.53000.55600.62100.63100.421000.2665800 | Wall rebar & Form work | 8d | 2027-04-07 | 2027-04-14 | 3082 |  | RGA - STRUCTURE | 7856462 |
| 3085 | 40200.40300.41200.53000.55600.62100.63100.421000.2665900 | Slab form work & reabar | 8d | 2027-04-15 | 2027-04-22 | 3084 |  | RGA - STRUCTURE | 7856472 |
| 3086 | 40200.40300.41200.53000.55600.62100.63100.421000.2666000 | Concreting | 1d | 2027-04-23 | 2027-04-23 | 3085 |  | RGA - STRUCTURE | 7856482 |
| 3087 | 40200.40300.41200.53000.55600.62100.63100.421100 | **18th Floor slab** | 17d | 2027-04-24 | 2027-05-10 |  | start no earlier than 2027-04-24 | RGA - STRUCTURE | 7810322 |
| 3088 | 40200.40300.41200.53000.55600.62100.63100.421100.2666100 | Wall rebar & Form work | 8d | 2027-04-24 | 2027-05-01 | 3086 |  | RGA - STRUCTURE | 7856492 |
| 3089 | 40200.40300.41200.53000.55600.62100.63100.421100.2666200 | Slab form work & reabar | 8d | 2027-05-02 | 2027-05-09 | 3088 |  | RGA - STRUCTURE | 7856502 |
| 3090 | 40200.40300.41200.53000.55600.62100.63100.421100.2666300 | Concreting | 1d | 2027-05-10 | 2027-05-10 | 3089 |  | RGA - STRUCTURE | 7856512 |
| 3091 | 40200.40300.41200.53000.55600.62100.63100.421200 | **19th Floor slab** | 17d | 2027-05-11 | 2027-05-27 |  | start no earlier than 2027-05-11 | RGA - STRUCTURE | 7810332 |
| 3092 | 40200.40300.41200.53000.55600.62100.63100.421200.2666400 | Wall rebar & Form work | 8d | 2027-05-11 | 2027-05-18 | 3090 |  | RGA - STRUCTURE | 7856522 |
| 3093 | 40200.40300.41200.53000.55600.62100.63100.421200.2666500 | Slab form work & reabar | 8d | 2027-05-19 | 2027-05-26 | 3092 |  | RGA - STRUCTURE | 7856532 |
| 3094 | 40200.40300.41200.53000.55600.62100.63100.421200.2666600 | Concreting | 1d | 2027-05-27 | 2027-05-27 | 3093 |  | RGA - STRUCTURE | 7856542 |
| 3095 | 40200.40300.41200.53000.55600.62100.63100.421300 | **20th Floor slab (Refuge Floor)** | 17d | 2027-05-28 | 2027-06-13 |  | start no earlier than 2027-05-28 | RGA - STRUCTURE | 7810342 |
| 3096 | 40200.40300.41200.53000.55600.62100.63100.421300.2666700 | Wall rebar & Form work | 8d | 2027-05-28 | 2027-06-04 | 3094 |  | RGA - STRUCTURE | 7856552 |
| 3097 | 40200.40300.41200.53000.55600.62100.63100.421300.2666800 | Slab form work & reabar | 8d | 2027-06-05 | 2027-06-12 | 3096 |  | RGA - STRUCTURE | 7856562 |
| 3098 | 40200.40300.41200.53000.55600.62100.63100.421300.2666900 | Concreting | 1d | 2027-06-13 | 2027-06-13 | 3097 |  | RGA - STRUCTURE | 7856572 |
| 3099 | 40200.40300.41200.53000.55600.62100.63100.421400 | **21th Floor slab** | 17d | 2027-06-14 | 2027-06-30 |  | start no earlier than 2027-06-14 | RGA - STRUCTURE | 7810352 |
| 3100 | 40200.40300.41200.53000.55600.62100.63100.421400.2667000 | Wall rebar & Form work | 8d | 2027-06-14 | 2027-06-21 | 3098 |  | RGA - STRUCTURE | 7856582 |
| 3101 | 40200.40300.41200.53000.55600.62100.63100.421400.2667100 | Slab form work & reabar | 8d | 2027-06-22 | 2027-06-29 | 3100 |  | RGA - STRUCTURE | 7856592 |
| 3102 | 40200.40300.41200.53000.55600.62100.63100.421400.2667200 | Concreting | 1d | 2027-06-30 | 2027-06-30 | 3101 |  | RGA - STRUCTURE | 7856602 |

| ID | WBS | Task | Duration | Start | Finish | Predecessors | Constraint | Calendar | Unique_Task_ID |
| --- | --- | --- | --- | --- | --- | --- | --- | --- | --- |
| 3103 | 40200.40300.41200.53000.55600.62100.63100.421500 | **22th Floor slab** | 15d | 2027-07-01 | 2027-07-15 |  | start no earlier than 2027-07-01 | RGA - STRUCTURE | 7810362 |
| 3104 | 40200.40300.41200.53000.55600.62100.63100.421500.2667300 | Wall rebar & Form work | 7d | 2027-07-01 | 2027-07-07 | 3102 |  | RGA - STRUCTURE | 7856612 |
| 3105 | 40200.40300.41200.53000.55600.62100.63100.421500.2667400 | Slab form work & reabar | 7d | 2027-07-08 | 2027-07-14 | 3104 |  | RGA - STRUCTURE | 7856622 |
| 3106 | 40200.40300.41200.53000.55600.62100.63100.421500.2667500 | Concreting | 1d | 2027-07-15 | 2027-07-15 | 3105 |  | RGA - STRUCTURE | 7856632 |
| 3107 | 40200.40300.41200.53000.55600.62100.63100.421600 | **23th Floor slab** | 15d | 2027-07-16 | 2027-07-30 |  | start no earlier than 2027-07-16 | RGA - STRUCTURE | 7810372 |
| 3108 | 40200.40300.41200.53000.55600.62100.63100.421600.2667600 | Wall rebar & Form work | 7d | 2027-07-16 | 2027-07-22 | 3106 |  | RGA - STRUCTURE | 7856642 |
| 3109 | 40200.40300.41200.53000.55600.62100.63100.421600.2667700 | Slab form work & reabar | 7d | 2027-07-23 | 2027-07-29 | 3108 |  | RGA - STRUCTURE | 7856652 |
| 3110 | 40200.40300.41200.53000.55600.62100.63100.421600.2667800 | Concreting | 1d | 2027-07-30 | 2027-07-30 | 3109 |  | RGA - STRUCTURE | 7856662 |
| 3111 | 40200.40300.41200.53000.55600.62100.63100.421700 | **24th Floor slab** | 15d | 2027-07-31 | 2027-08-14 |  | start no earlier than 2027-07-31 | RGA - STRUCTURE | 7810382 |
| 3112 | 40200.40300.41200.53000.55600.62100.63100.421700.2667900 | Wall rebar & Form work | 7d | 2027-07-31 | 2027-08-06 | 3110 |  | RGA - STRUCTURE | 7856672 |
| 3113 | 40200.40300.41200.53000.55600.62100.63100.421700.2668000 | Slab form work & reabar | 7d | 2027-08-07 | 2027-08-13 | 3112 |  | RGA - STRUCTURE | 7856682 |
| 3114 | 40200.40300.41200.53000.55600.62100.63100.421700.2668100 | Concreting | 1d | 2027-08-14 | 2027-08-14 | 3113 |  | RGA - STRUCTURE | 7856692 |
| 3115 | 40200.40300.41200.53000.55600.62100.63100.421800 | **25th Floor slab** | 15d | 2027-08-15 | 2027-08-29 |  | start no earlier than 2027-08-15 | RGA - STRUCTURE | 7810392 |
| 3116 | 40200.40300.41200.53000.55600.62100.63100.421800.2668200 | Wall rebar & Form work | 7d | 2027-08-15 | 2027-08-21 | 3114 |  | RGA - STRUCTURE | 7856702 |
| 3117 | 40200.40300.41200.53000.55600.62100.63100.421800.2668300 | Slab form work & reabar | 7d | 2027-08-22 | 2027-08-28 | 3116 |  | RGA - STRUCTURE | 7856712 |
| 3118 | 40200.40300.41200.53000.55600.62100.63100.421800.2668400 | Concreting | 1d | 2027-08-29 | 2027-08-29 | 3117 |  | RGA - STRUCTURE | 7856722 |
| 3119 | 40200.40300.41200.53000.55600.62100.63100.421900 | **Terrace Floor slab work** | 15d | 2027-08-30 | 2027-09-13 |  | start no earlier than 2027-08-30 | RGA - STRUCTURE | 7810422 |
| 3120 | 40200.40300.41200.53000.55600.62100.63100.421900.2668500 | Wall & Slab Form work | 7d | 2027-08-30 | 2027-09-05 | 3118 |  | RGA - STRUCTURE | 7856792 |
| 3121 | 40200.40300.41200.53000.55600.62100.63100.421900.2668600 | Slab & Beam Reinf. | 7d | 2027-09-06 | 2027-09-12 | 3120 |  | RGA - STRUCTURE | 7856802 |
| 3122 | 40200.40300.41200.53000.55600.62100.63100.421900.2668700 | Concreting | 1d | 2027-09-13 | 2027-09-13 | 3121 |  | RGA - STRUCTURE | 7856812 |
| 3123 | 40200.40300.41200.53000.55600.62100.253600 | **RCC work above Terrace** | 49d | 2027-09-14 | 2027-11-01 |  | start no earlier than 2027-09-14 | RGA - STRUCTURE | 7806972 |
| 3124 | 40200.40300.41200.53000.55600.62100.253600.372400 | **STAIRCASE & OHT CORE** | 49d | 2027-09-14 | 2027-11-01 |  | start no earlier than 2027-09-14 | RGA - STRUCTURE | 7808822 |
| 3125 | 40200.40300.41200.53000.55600.62100.253600.372400.2668800 | STAIRCASE HEAD ROOM | 10d | 2027-09-14 | 2027-09-23 | 3122 |  | RGA - STRUCTURE | 7856822 |
| 3126 | 40200.40300.41200.53000.55600.62100.253600.372400.2668900 | OHT | 25d | 2027-09-24 | 2027-10-18 | 3125 |  | RGA - STRUCTURE | 7856832 |
| 3127 | 40200.40300.41200.53000.55600.62100.253600.372400.2669000 | SHAFT COVERING SLAB | 10d | 2027-09-14 | 2027-09-23 | 3122 |  | RGA - STRUCTURE | 7856842 |
| 3128 | 40200.40300.41200.53000.55600.62100.253600.372400.2669100 | DESHUTTERING OF OHT TOP SLAB | 7d | 2027-10-26 | 2027-11-01 | 3126FS+7d |  | RGA - STRUCTURE | 7856852 |

Notes:
- 3119: AVg Slab Cycle of 21 days

| ID | WBS | Task | Duration | Start | Finish | Predecessors | Constraint | Calendar | Unique_Task_ID |
| --- | --- | --- | --- | --- | --- | --- | --- | --- | --- |
| 3129 | 40200.40300.41200.53000.55600.62100.253600.422000 | **LMR BOTTOM & TOP SLAB** | 43d | 2027-09-14 | 2027-10-26 |  | start no earlier than 2027-09-14 | RGA - STRUCTURE | 7810432 |
| 3130 | 40200.40300.41200.53000.55600.62100.253600.422000.2669200 | LMR COLUMNS / WALLS | 15d | 2027-09-14 | 2027-09-28 | 3122 |  | RGA - STRUCTURE | 7856862 |
| 3131 | 40200.40300.41200.53000.55600.62100.253600.422000.2669300 | LMR TOP SLAB | 20d | 2027-09-29 | 2027-10-18 | 3130 |  | RGA - STRUCTURE | 7856872 |
| 3132 | 40200.40300.41200.53000.55600.62100.253600.422000.2669400 | DESHUTTERING | 8d | 2027-10-19 | 2027-10-26 | 3131 |  | RGA - STRUCTURE | 7856882 |
| 3133 | 40200.40300.41200.53000.55600.59200 | **Civil Finishing works (Brick work, Plaster,conduiting, concled plumbing, waterproofing)** | 830d | 2025-11-30 | 2028-03-08 |  | start no earlier than 2025-11-30 | RGA -FINISHING | 7803482 |
| 3134 | 40200.40300.41200.53000.55600.59200.61000 | **Flat finishing works** | 726d | 2025-11-30 | 2027-11-25 |  | start no earlier than 2025-11-30 | RGA -FINISHING | 7803572 |
| 3135 | 40200.40300.41200.53000.55600.59200.61000.268200 | **Ground FLOOR** | 207d | 2026-02-02 | 2026-08-27 |  | start no earlier than 2026-02-02 | RGA -FINISHING | 7807752 |
| 3136 | 40200.40300.41200.53000.55600.59200.61000.268200.2669500 | BALCONY RAILING FIXING | 9d | 2026-06-05 | 2026-06-13 | 3030 |  | RGA -FINISHING | 7856892 |
| 3137 | 40200.40300.41200.53000.55600.59200.61000.268200.2669600 | Block work | 8d | 2026-08-20 | 2026-08-27 | 3141 |  | RGA -FINISHING | 7856902 |
| 3138 | 40200.40300.41200.53000.55600.59200.61000.268200.2669700 | CONCEALED ELEC CONDUITING & ITS FINISHING | 5d | 2026-02-02 | 2026-02-06 | 2981FS-7d |  | RGA -FINISHING | 7380135 |
| 3139 | 40200.40300.41200.53000.55600.59200.61000.268200.2669800 | PLASTER APPLICATION | 6d | 2026-07-29 | 2026-08-03 | 3330FS+30d |  | RGA -FINISHING | 7856912 |
| 3140 | 40200.40300.41200.53000.55600.59200.61000.268200.2669900 | CONCEALED PLUMBING | 8d | 2026-08-04 | 2026-08-11 | 3139 |  | RGA -FINISHING | 7856922 |
| 3141 | 40200.40300.41200.53000.55600.59200.61000.268200.2670000 | WATERPROOFING WORK FOR TOILETS, KITCHEN SUNK & PLANTERS | 8d | 2026-08-12 | 2026-08-19 | 3140 |  | RGA -FINISHING | 7856932 |
| 3142 | 40200.40300.41200.53000.55600.59200.61000.268300 | **1ST FLOOR** | 218d | 2026-03-09 | 2026-10-12 |  | start no earlier than 2026-03-09 | RGA -FINISHING | 7807762 |
| 3143 | 40200.40300.41200.53000.55600.59200.61000.268300.2670100 | BALCONY RAILING FIXING | 9d | 2026-07-30 | 2026-08-07 | 3034 |  | RGA -FINISHING | 7856942 |
| 3144 | 40200.40300.41200.53000.55600.59200.61000.268300.2670200 | Block work | 8d | 2026-10-05 | 2026-10-12 | 3148 |  | RGA -FINISHING | 7856952 |
| 3145 | 40200.40300.41200.53000.55600.59200.61000.268300.2670300 | CONCEALED ELEC CONDUITING & ITS FINISHING | 5d | 2026-03-09 | 2026-03-13 | 3021FS-7d |  | RGA -FINISHING | 7856962 |
| 3146 | 40200.40300.41200.53000.55600.59200.61000.268300.2670400 | PLASTER APPLICATION | 6d | 2026-09-13 | 2026-09-18 | 3343FS+30d |  | RGA -FINISHING | 7856972 |
| 3147 | 40200.40300.41200.53000.55600.59200.61000.268300.2670500 | CONCEALED PLUMBING | 8d | 2026-09-19 | 2026-09-26 | 3146 |  | RGA -FINISHING | 7856982 |
| 3148 | 40200.40300.41200.53000.55600.59200.61000.268300.2670600 | WATERPROOFING WORK FOR TOILETS, KITCHEN SUNK & PLANTERS | 8d | 2026-09-27 | 2026-10-04 | 3147 |  | RGA -FINISHING | 7856992 |
| 3149 | 40200.40300.41200.53000.55600.59200.61000.268400 | **2nd FLOOR** | 209d | 2026-04-18 | 2026-11-12 |  | start no earlier than 2026-04-18 | RGA -FINISHING | 7807772 |
| 3150 | 40200.40300.41200.53000.55600.59200.61000.268400.2670700 | BALCONY RAILING FIXING | 9d | 2026-09-09 | 2026-09-17 | 3038 |  | RGA -FINISHING | 7857002 |
| 3151 | 40200.40300.41200.53000.55600.59200.61000.268400.2670800 | Block work | 8d | 2026-11-05 | 2026-11-12 | 3155 |  | RGA -FINISHING | 7857012 |
| 3152 | 40200.40300.41200.53000.55600.59200.61000.268400.2670900 | CONCEALED ELEC CONDUITING & ITS FINISHING | 5d | 2026-04-18 | 2026-04-22 | 3026FS-7d |  | RGA -FINISHING | 7857022 |
| 3153 | 40200.40300.41200.53000.55600.59200.61000.268400.2671000 | PLASTER APPLICATION | 6d | 2026-10-14 | 2026-10-19 | 3356FS+20d |  | RGA -FINISHING | 7857032 |
| 3154 | 40200.40300.41200.53000.55600.59200.61000.268400.2671100 | CONCEALED PLUMBING | 8d | 2026-10-20 | 2026-10-27 | 3153 |  | RGA -FINISHING | 7857042 |
| 3155 | 40200.40300.41200.53000.55600.59200.61000.268400.2671200 | WATERPROOFING WORK FOR TOILETS, KITCHEN SUNK & PLANTERS | 8d | 2026-10-28 | 2026-11-04 | 3154 |  | RGA -FINISHING | 7857052 |

| ID | WBS | Task | Duration | Start | Finish | Predecessors | Constraint | Calendar | Unique_Task_ID |
| --- | --- | --- | --- | --- | --- | --- | --- | --- | --- |
| 3156 | 40200.40300.41200.53000.55600.59200.61000.268500 | **3rd FLOOR** | 180d | 2026-05-29 | 2026-11-24 |  | start no earlier than 2026-05-29 | RGA -FINISHING | 7807782 |
| 3157 | 40200.40300.41200.53000.55600.59200.61000.268500.2671300 | BALCONY RAILING FIXING | 9d | 2026-10-08 | 2026-10-16 | 3042 |  | RGA -FINISHING | 7857062 |
| 3158 | 40200.40300.41200.53000.55600.59200.61000.268500.2671400 | Block work | 8d | 2026-11-17 | 2026-11-24 | 3162 |  | RGA -FINISHING | 7857072 |
| 3159 | 40200.40300.41200.53000.55600.59200.61000.268500.2671500 | CONCEALED ELEC CONDUITING & ITS FINISHING | 5d | 2026-05-29 | 2026-06-02 | 3030FS-7d |  | RGA -FINISHING | 7857082 |
| 3160 | 40200.40300.41200.53000.55600.59200.61000.268500.2671600 | PLASTER APPLICATION | 6d | 2026-10-26 | 2026-10-31 | 3369FS+3d |  | RGA -FINISHING | 7857092 |
| 3161 | 40200.40300.41200.53000.55600.59200.61000.268500.2671700 | CONCEALED PLUMBING | 8d | 2026-11-01 | 2026-11-08 | 3160 |  | RGA -FINISHING | 7857102 |
| 3162 | 40200.40300.41200.53000.55600.59200.61000.268500.2671800 | WATERPROOFING WORK FOR TOILETS, KITCHEN SUNK & PLANTERS | 8d | 2026-11-09 | 2026-11-16 | 3161 |  | RGA -FINISHING | 7857112 |
| 3163 | 40200.40300.41200.53000.55600.59200.61000.268600 | **4th FLOOR** | 128d | 2026-07-30 | 2026-12-04 |  | start no earlier than 2026-07-30 | RGA -FINISHING | 7807792 |
| 3164 | 40200.40300.41200.53000.55600.59200.61000.268600.2671900 | BALCONY RAILING FIXING | 9d | 2026-10-21 | 2026-10-29 | 3046 |  | RGA -FINISHING | 7857122 |
| 3165 | 40200.40300.41200.53000.55600.59200.61000.268600.2672000 | Block work | 8d | 2026-11-27 | 2026-12-04 | 3169 |  | RGA -FINISHING | 7857132 |
| 3166 | 40200.40300.41200.53000.55600.59200.61000.268600.2672100 | CONCEALED ELEC CONDUITING & ITS FINISHING | 5d | 2026-07-30 | 2026-08-03 | 3034 |  | RGA -FINISHING | 7857142 |
| 3167 | 40200.40300.41200.53000.55600.59200.61000.268600.2672200 | PLASTER APPLICATION | 6d | 2026-11-05 | 2026-11-10 | 3382 |  | RGA -FINISHING | 7857152 |
| 3168 | 40200.40300.41200.53000.55600.59200.61000.268600.2672300 | CONCEALED PLUMBING | 8d | 2026-11-11 | 2026-11-18 | 3167 |  | RGA -FINISHING | 7857162 |
| 3169 | 40200.40300.41200.53000.55600.59200.61000.268600.2672400 | WATERPROOFING WORK FOR TOILETS, KITCHEN SUNK & PLANTERS | 8d | 2026-11-19 | 2026-11-26 | 3168 |  | RGA -FINISHING | 7857172 |
| 3170 | 40200.40300.41200.53000.55600.59200.61000.268700 | **5th FLOOR** | 111d | 2026-09-02 | 2026-12-21 |  | start no earlier than 2026-09-02 | RGA -FINISHING | 7807802 |
| 3171 | 40200.40300.41200.53000.55600.59200.61000.268700.2672500 | BALCONY RAILING FIXING | 9d | 2026-11-07 | 2026-11-15 | 3050 |  | RGA -FINISHING | 7857182 |
| 3172 | 40200.40300.41200.53000.55600.59200.61000.268700.2672600 | Block work | 8d | 2026-12-14 | 2026-12-21 | 3176 |  | RGA -FINISHING | 7857192 |
| 3173 | 40200.40300.41200.53000.55600.59200.61000.268700.2672700 | CONCEALED ELEC CONDUITING & ITS FINISHING | 5d | 2026-09-02 | 2026-09-06 | 3038FS-7d |  | RGA -FINISHING | 7857202 |
| 3174 | 40200.40300.41200.53000.55600.59200.61000.268700.2672800 | PLASTER APPLICATION | 6d | 2026-11-22 | 2026-11-27 | 3395 |  | RGA -FINISHING | 7857212 |
| 3175 | 40200.40300.41200.53000.55600.59200.61000.268700.2672900 | CONCEALED PLUMBING | 8d | 2026-11-28 | 2026-12-05 | 3174 |  | RGA -FINISHING | 7857222 |
| 3176 | 40200.40300.41200.53000.55600.59200.61000.268700.2673000 | WATERPROOFING WORK FOR TOILETS, KITCHEN SUNK & PLANTERS | 8d | 2026-12-06 | 2026-12-13 | 3175 |  | RGA -FINISHING | 7857232 |
| 3177 | 40200.40300.41200.53000.55600.59200.61000.268800 | **6th FLOOR** | 112.5d | 2026-09-30 | 2027-01-20 |  | start no earlier than 2026-09-30 | RGA -FINISHING | 7807812 |
| 3178 | 40200.40300.41200.53000.55600.59200.61000.268800.2673100 | BALCONY RAILING FIXING | 9d | 2026-12-01 | 2026-12-10 | 3054 |  | RGA -FINISHING | 7857242 |
| 3179 | 40200.40300.41200.53000.55600.59200.61000.268800.2673200 | Block work | 8d | 2027-01-12 | 2027-01-20 | 3183 |  | RGA -FINISHING | 7857252 |
| 3180 | 40200.40300.41200.53000.55600.59200.61000.268800.2673300 | CONCEALED ELEC CONDUITING & ITS FINISHING | 5d | 2026-09-30 | 2026-10-04 | 3042FS-8d |  | RGA -FINISHING | 7857262 |
| 3181 | 40200.40300.41200.53000.55600.59200.61000.268800.2673400 | PLASTER APPLICATION | 6d | 2026-12-21 | 2026-12-27 | 3408FS+5d |  | RGA -FINISHING | 7857272 |
| 3182 | 40200.40300.41200.53000.55600.59200.61000.268800.2673500 | CONCEALED PLUMBING | 8d | 2026-12-27 | 2027-01-04 | 3181 |  | RGA -FINISHING | 7857282 |
| 3183 | 40200.40300.41200.53000.55600.59200.61000.268800.2673600 | WATERPROOFING WORK FOR TOILETS, KITCHEN SUNK & PLANTERS | 8d | 2027-01-04 | 2027-01-12 | 3182 |  | RGA -FINISHING | 7857292 |

| ID | WBS | Task | Duration | Start | Finish | Predecessors | Constraint | Calendar | Unique_Task_ID |
| --- | --- | --- | --- | --- | --- | --- | --- | --- | --- |
| 3184 | 40200.40300.41200.53000.55600.59200.61000.268900 | **7th FLOOR** | 123d | 2026-10-14 | 2027-02-13 |  | start no earlier than 2026-10-14 | RGA -FINISHING | 7807822 |
| 3185 | 40200.40300.41200.53000.55600.59200.61000.268900.2673700 | BALCONY RAILING FIXING | 9d | 2026-12-26 | 2027-01-03 | 3058 |  | RGA -FINISHING | 7857302 |
| 3186 | 40200.40300.41200.53000.55600.59200.61000.268900.2673800 | Block work | 8d | 2027-02-06 | 2027-02-13 | 3190 |  | RGA -FINISHING | 7857312 |
| 3187 | 40200.40300.41200.53000.55600.59200.61000.268900.2673900 | CONCEALED ELEC CONDUITING & ITS FINISHING | 5d | 2026-10-14 | 2026-10-18 | 3046FS-7d |  | RGA -FINISHING | 7857322 |
| 3188 | 40200.40300.41200.53000.55600.59200.61000.268900.2674000 | PLASTER APPLICATION | 6d | 2027-01-15 | 2027-01-20 | 3421FS+5d |  | RGA -FINISHING | 7857332 |
| 3189 | 40200.40300.41200.53000.55600.59200.61000.268900.2674100 | CONCEALED PLUMBING | 8d | 2027-01-21 | 2027-01-28 | 3188 |  | RGA -FINISHING | 7857342 |
| 3190 | 40200.40300.41200.53000.55600.59200.61000.268900.2674200 | WATERPROOFING WORK FOR TOILETS, KITCHEN SUNK & PLANTERS | 8d | 2027-01-29 | 2027-02-05 | 3189 |  | RGA -FINISHING | 7857352 |
| 3191 | 40200.40300.41200.53000.55600.59200.61000.269000 | **8th FLOOR** | 123d | 2026-10-31 | 2027-03-02 |  | start no earlier than 2026-10-31 | RGA -FINISHING | 7807832 |
| 3192 | 40200.40300.41200.53000.55600.59200.61000.269000.2674300 | BALCONY RAILING FIXING | 9d | 2027-01-12 | 2027-01-20 | 3062 |  | RGA -FINISHING | 7857362 |
| 3193 | 40200.40300.41200.53000.55600.59200.61000.269000.2674400 | Block work | 8d | 2027-02-23 | 2027-03-02 | 3197 |  | RGA -FINISHING | 7857372 |
| 3194 | 40200.40300.41200.53000.55600.59200.61000.269000.2674500 | CONCEALED ELEC CONDUITING & ITS FINISHING | 5d | 2026-10-31 | 2026-11-04 | 3050FS-7d |  | RGA -FINISHING | 7857382 |
| 3195 | 40200.40300.41200.53000.55600.59200.61000.269000.2674600 | PLASTER APPLICATION | 6d | 2027-02-01 | 2027-02-06 | 3434FS+5d |  | RGA -FINISHING | 7857392 |
| 3196 | 40200.40300.41200.53000.55600.59200.61000.269000.2674700 | CONCEALED PLUMBING | 8d | 2027-02-07 | 2027-02-14 | 3195 |  | RGA -FINISHING | 7857402 |
| 3197 | 40200.40300.41200.53000.55600.59200.61000.269000.2674800 | WATERPROOFING WORK FOR TOILETS, KITCHEN SUNK & PLANTERS | 8d | 2027-02-15 | 2027-02-22 | 3196 |  | RGA -FINISHING | 7857412 |
| 3198 | 40200.40300.41200.53000.55600.59200.61000.269100 | **9th FLOOR** | 117d | 2026-11-18 | 2027-03-14 |  | start no earlier than 2026-11-18 | RGA -FINISHING | 7807842 |
| 3199 | 40200.40300.41200.53000.55600.59200.61000.269100.2674900 | BALCONY RAILING FIXING | 9d | 2027-01-29 | 2027-02-06 | 3066 |  | RGA -FINISHING | 7857422 |
| 3200 | 40200.40300.41200.53000.55600.59200.61000.269100.2675000 | Block work | 8d | 2027-03-07 | 2027-03-14 | 3204 |  | RGA -FINISHING | 7857432 |
| 3201 | 40200.40300.41200.53000.55600.59200.61000.269100.2675100 | CONCEALED ELEC CONDUITING & ITS FINISHING | 5d | 2026-11-18 | 2026-11-22 | 3054FS-13.5d |  | RGA -FINISHING | 7857442 |
| 3202 | 40200.40300.41200.53000.55600.59200.61000.269100.2675200 | PLASTER APPLICATION | 6d | 2027-02-13 | 2027-02-18 | 3447 |  | RGA -FINISHING | 7857452 |
| 3203 | 40200.40300.41200.53000.55600.59200.61000.269100.2675300 | CONCEALED PLUMBING | 8d | 2027-02-19 | 2027-02-26 | 3202 |  | RGA -FINISHING | 7857462 |
| 3204 | 40200.40300.41200.53000.55600.59200.61000.269100.2675400 | WATERPROOFING WORK FOR TOILETS, KITCHEN SUNK & PLANTERS | 8d | 2027-02-27 | 2027-03-06 | 3203 |  | RGA -FINISHING | 7857472 |
| 3205 | 40200.40300.41200.53000.55600.59200.61000.269200 | **10th FLOOR** | 103d | 2026-12-19 | 2027-03-31 |  | start no earlier than 2026-12-19 | RGA -FINISHING | 7807852 |
| 3206 | 40200.40300.41200.53000.55600.59200.61000.269200.2675500 | BALCONY RAILING FIXING | 9d | 2027-02-15 | 2027-02-23 | 3070 |  | RGA -FINISHING | 7857482 |
| 3207 | 40200.40300.41200.53000.55600.59200.61000.269200.2675600 | Block work | 8d | 2027-03-24 | 2027-03-31 | 3211 |  | RGA -FINISHING | 7857492 |
| 3208 | 40200.40300.41200.53000.55600.59200.61000.269200.2675700 | CONCEALED ELEC CONDUITING & ITS FINISHING | 5d | 2026-12-19 | 2026-12-23 | 3058FS-7d |  | RGA -FINISHING | 7857502 |
| 3209 | 40200.40300.41200.53000.55600.59200.61000.269200.2675800 | PLASTER APPLICATION | 6d | 2027-03-02 | 2027-03-07 | 3460 |  | RGA -FINISHING | 7857512 |
| 3210 | 40200.40300.41200.53000.55600.59200.61000.269200.2675900 | CONCEALED PLUMBING | 8d | 2027-03-08 | 2027-03-15 | 3209 |  | RGA -FINISHING | 7857522 |
| 3211 | 40200.40300.41200.53000.55600.59200.61000.269200.2676000 | WATERPROOFING WORK FOR TOILETS, KITCHEN SUNK & PLANTERS | 8d | 2027-03-16 | 2027-03-23 | 3210 |  | RGA -FINISHING | 7857532 |

| ID | WBS | Task | Duration | Start | Finish | Predecessors | Constraint | Calendar | Unique_Task_ID |
| --- | --- | --- | --- | --- | --- | --- | --- | --- | --- |
| 3212 | 40200.40300.41200.53000.55600.59200.61000.269300 | **11th FLOOR** | 103d | 2027-01-05 | 2027-04-17 |  | start no earlier than 2027-01-05 | RGA -FINISHING | 7807862 |
| 3213 | 40200.40300.41200.53000.55600.59200.61000.269300.2676100 | BALCONY RAILING FIXING | 9d | 2027-03-04 | 2027-03-12 | 3074 |  | RGA -FINISHING | 7857542 |
| 3214 | 40200.40300.41200.53000.55600.59200.61000.269300.2676200 | Block work | 8d | 2027-04-10 | 2027-04-17 | 3218 |  | RGA -FINISHING | 7857552 |
| 3215 | 40200.40300.41200.53000.55600.59200.61000.269300.2676300 | CONCEALED ELEC CONDUITING & ITS FINISHING | 5d | 2027-01-05 | 2027-01-09 | 3062FS-7d |  | RGA -FINISHING | 7857562 |
| 3216 | 40200.40300.41200.53000.55600.59200.61000.269300.2676400 | PLASTER APPLICATION | 6d | 2027-03-19 | 2027-03-24 | 3473 |  | RGA -FINISHING | 7857572 |
| 3217 | 40200.40300.41200.53000.55600.59200.61000.269300.2676500 | CONCEALED PLUMBING | 8d | 2027-03-25 | 2027-04-01 | 3216 |  | RGA -FINISHING | 7857582 |
| 3218 | 40200.40300.41200.53000.55600.59200.61000.269300.2676600 | WATERPROOFING WORK FOR TOILETS, KITCHEN SUNK & PLANTERS | 8d | 2027-04-02 | 2027-04-09 | 3217 |  | RGA -FINISHING | 7857592 |
| 3219 | 40200.40300.41200.53000.55600.59200.61000.269400 | **12th FLOOR** | 95d | 2027-01-22 | 2027-04-26 |  | start no earlier than 2027-01-22 | RGA -FINISHING | 7807872 |
| 3220 | 40200.40300.41200.53000.55600.59200.61000.269400.2676700 | BALCONY RAILING FIXING | 9d | 2027-03-21 | 2027-03-29 | 3078 |  | RGA -FINISHING | 7857602 |
| 3221 | 40200.40300.41200.53000.55600.59200.61000.269400.2676800 | Block work | 8d | 2027-04-19 | 2027-04-26 | 3224 |  | RGA -FINISHING | 7857612 |
| 3222 | 40200.40300.41200.53000.55600.59200.61000.269400.2676900 | CONCEALED ELEC CONDUITING & ITS FINISHING | 5d | 2027-01-22 | 2027-01-26 | 3066FS-7d |  | RGA -FINISHING | 7857622 |
| 3223 | 40200.40300.41200.53000.55600.59200.61000.269400.2677000 | PLASTER APPLICATION | 6d | 2027-04-05 | 2027-04-10 | 3486 |  | RGA -FINISHING | 7857632 |
| 3224 | 40200.40300.41200.53000.55600.59200.61000.269400.2677100 | CONCEALED PLUMBING | 8d | 2027-04-11 | 2027-04-18 | 3223 |  | RGA -FINISHING | 7857642 |
| 3225 | 40200.40300.41200.53000.55600.59200.61000.269400.2677200 | WATERPROOFING WORK FOR TOILETS, KITCHEN SUNK & PLANTERS | 8d | 2027-04-19 | 2027-04-26 | 3224 |  | RGA -FINISHING | 7857652 |
| 3226 | 40200.40300.41200.53000.55600.59200.61000.269500 | **13th FLOOR** | 119d | 2027-02-08 | 2027-06-06 |  | start no earlier than 2027-02-08 | RGA -FINISHING | 7807882 |
| 3227 | 40200.40300.41200.53000.55600.59200.61000.269500.2677300 | BALCONY RAILING FIXING | 9d | 2027-04-07 | 2027-04-15 | 3082 |  | RGA -FINISHING | 7857662 |
| 3228 | 40200.40300.41200.53000.55600.59200.61000.269500.2677400 | Block work | 8d | 2027-05-30 | 2027-06-06 | 3232 |  | RGA -FINISHING | 7857672 |
| 3229 | 40200.40300.41200.53000.55600.59200.61000.269500.2677500 | CONCEALED ELEC CONDUITING & ITS FINISHING | 5d | 2027-02-08 | 2027-02-12 | 3070FS-7d |  | RGA -FINISHING | 7857682 |
| 3230 | 40200.40300.41200.53000.55600.59200.61000.269500.2677600 | PLASTER APPLICATION | 15d | 2027-04-24 | 2027-05-08 | 3499 |  | RGA -FINISHING | 7857692 |
| 3231 | 40200.40300.41200.53000.55600.59200.61000.269500.2677700 | CONCEALED PLUMBING | 9d | 2027-05-09 | 2027-05-17 | 3230 |  | RGA -FINISHING | 7857702 |
| 3232 | 40200.40300.41200.53000.55600.59200.61000.269500.2677800 | WATERPROOFING WORK FOR TOILETS, KITCHEN SUNK & PLANTERS | 12d | 2027-05-18 | 2027-05-29 | 3231 |  | RGA -FINISHING | 7857712 |
| 3233 | 40200.40300.41200.53000.55600.59200.61000.269600 | **14th FLOOR** | 119d | 2027-02-25 | 2027-06-23 |  | start no earlier than 2027-02-25 | RGA -FINISHING | 7807892 |
| 3234 | 40200.40300.41200.53000.55600.59200.61000.269600.2677900 | BALCONY RAILING FIXING | 9d | 2027-04-24 | 2027-05-02 | 3086 |  | RGA -FINISHING | 7857722 |
| 3235 | 40200.40300.41200.53000.55600.59200.61000.269600.2678000 | Block work | 8d | 2027-06-16 | 2027-06-23 | 3239 |  | RGA -FINISHING | 7857732 |
| 3236 | 40200.40300.41200.53000.55600.59200.61000.269600.2678100 | CONCEALED ELEC CONDUITING & ITS FINISHING | 5d | 2027-02-25 | 2027-03-01 | 3074FS-7d |  | RGA -FINISHING | 7857742 |
| 3237 | 40200.40300.41200.53000.55600.59200.61000.269600.2678200 | PLASTER APPLICATION | 15d | 2027-05-11 | 2027-05-25 | 3512 |  | RGA -FINISHING | 7857752 |
| 3238 | 40200.40300.41200.53000.55600.59200.61000.269600.2678300 | CONCEALED PLUMBING | 9d | 2027-05-26 | 2027-06-03 | 3237 |  | RGA -FINISHING | 7857762 |
| 3239 | 40200.40300.41200.53000.55600.59200.61000.269600.2678400 | WATERPROOFING WORK FOR TOILETS, KITCHEN SUNK & PLANTERS | 12d | 2027-06-04 | 2027-06-15 | 3238 |  | RGA -FINISHING | 7857772 |

| ID | WBS | Task | Duration | Start | Finish | Predecessors | Constraint | Calendar | Unique_Task_ID |
| --- | --- | --- | --- | --- | --- | --- | --- | --- | --- |
| 3240 | 40200.40300.41200.53000.55600.59200.61000.269700 | **15th FLOOR** | 119d | 2027-03-14 | 2027-07-10 |  | start no earlier than 2027-03-14 | RGA -FINISHING | 7807902 |
| 3241 | 40200.40300.41200.53000.55600.59200.61000.269700.2678500 | BALCONY RAILING FIXING | 9d | 2027-05-11 | 2027-05-19 | 3090 |  | RGA -FINISHING | 7857782 |
| 3242 | 40200.40300.41200.53000.55600.59200.61000.269700.2678600 | Block work | 8d | 2027-07-03 | 2027-07-10 | 3246 |  | RGA -FINISHING | 7857792 |
| 3243 | 40200.40300.41200.53000.55600.59200.61000.269700.2678700 | CONCEALED ELEC CONDUITING & ITS FINISHING | 5d | 2027-03-14 | 2027-03-18 | 3078FS-7d |  | RGA -FINISHING | 7857802 |
| 3244 | 40200.40300.41200.53000.55600.59200.61000.269700.2678800 | PLASTER APPLICATION | 15d | 2027-05-28 | 2027-06-11 | 3525 |  | RGA -FINISHING | 7857812 |
| 3245 | 40200.40300.41200.53000.55600.59200.61000.269700.2678900 | CONCEALED PLUMBING | 9d | 2027-06-12 | 2027-06-20 | 3244 |  | RGA -FINISHING | 7857822 |
| 3246 | 40200.40300.41200.53000.55600.59200.61000.269700.2679000 | WATERPROOFING WORK FOR TOILETS, KITCHEN SUNK & PLANTERS | 12d | 2027-06-21 | 2027-07-02 | 3245 |  | RGA -FINISHING | 7381065 |
| 3247 | 40200.40300.41200.53000.55600.59200.61000.269800 | **16th FLOOR** | 119d | 2027-03-31 | 2027-07-27 |  | start no earlier than 2027-03-31 | RGA -FINISHING | 7807912 |
| 3248 | 40200.40300.41200.53000.55600.59200.61000.269800.2679100 | BALCONY RAILING FIXING | 9d | 2027-05-28 | 2027-06-05 | 3094 |  | RGA -FINISHING | 7857832 |
| 3249 | 40200.40300.41200.53000.55600.59200.61000.269800.2679200 | Block work | 8d | 2027-07-20 | 2027-07-27 | 3253 |  | RGA -FINISHING | 7381085 |
| 3250 | 40200.40300.41200.53000.55600.59200.61000.269800.2679300 | CONCEALED ELEC CONDUITING & ITS FINISHING | 5d | 2027-03-31 | 2027-04-04 | 3082FS-7d |  | RGA -FINISHING | 7381095 |
| 3251 | 40200.40300.41200.53000.55600.59200.61000.269800.2679400 | PLASTER APPLICATION | 15d | 2027-06-14 | 2027-06-28 | 3538 |  | RGA -FINISHING | 7381105 |
| 3252 | 40200.40300.41200.53000.55600.59200.61000.269800.2679500 | CONCEALED PLUMBING | 9d | 2027-06-29 | 2027-07-07 | 3251 |  | RGA -FINISHING | 7381115 |
| 3253 | 40200.40300.41200.53000.55600.59200.61000.269800.2679600 | WATERPROOFING WORK FOR TOILETS, KITCHEN SUNK & PLANTERS | 12d | 2027-07-08 | 2027-07-19 | 3252 |  | RGA -FINISHING | 7381125 |
| 3254 | 40200.40300.41200.53000.55600.59200.61000.269900 | **17th FLOOR** | 119d | 2027-04-17 | 2027-08-13 |  | start no earlier than 2027-04-17 | RGA -FINISHING | 7807922 |
| 3255 | 40200.40300.41200.53000.55600.59200.61000.269900.2679700 | BALCONY RAILING FIXING | 9d | 2027-06-14 | 2027-06-22 | 3098 |  | RGA -FINISHING | 7381135 |
| 3256 | 40200.40300.41200.53000.55600.59200.61000.269900.2679800 | Block work | 8d | 2027-08-06 | 2027-08-13 | 3260 |  | RGA -FINISHING | 7381145 |
| 3257 | 40200.40300.41200.53000.55600.59200.61000.269900.2679900 | CONCEALED ELEC CONDUITING & ITS FINISHING | 5d | 2027-04-17 | 2027-04-21 | 3086FS-7d |  | RGA -FINISHING | 7381155 |
| 3258 | 40200.40300.41200.53000.55600.59200.61000.269900.2680000 | PLASTER APPLICATION | 15d | 2027-07-01 | 2027-07-15 | 3551 |  | RGA -FINISHING | 7381165 |
| 3259 | 40200.40300.41200.53000.55600.59200.61000.269900.2680100 | CONCEALED PLUMBING | 9d | 2027-07-16 | 2027-07-24 | 3258 |  | RGA -FINISHING | 7381175 |
| 3260 | 40200.40300.41200.53000.55600.59200.61000.269900.2680200 | WATERPROOFING WORK FOR TOILETS, KITCHEN SUNK & PLANTERS | 12d | 2027-07-25 | 2027-08-05 | 3259 |  | RGA -FINISHING | 7381185 |
| 3261 | 40200.40300.41200.53000.55600.59200.61000.270000 | **18th FLOOR** | 119d | 2027-05-04 | 2027-08-30 |  | start no earlier than 2027-05-04 | RGA -FINISHING | 7807932 |
| 3262 | 40200.40300.41200.53000.55600.59200.61000.270000.2680300 | BALCONY RAILING FIXING | 9d | 2027-07-01 | 2027-07-09 | 3102 |  | RGA -FINISHING | 7381195 |
| 3263 | 40200.40300.41200.53000.55600.59200.61000.270000.2680400 | Block work | 8d | 2027-08-23 | 2027-08-30 | 3267 |  | RGA -FINISHING | 7381205 |
| 3264 | 40200.40300.41200.53000.55600.59200.61000.270000.2680500 | CONCEALED ELEC CONDUITING & ITS FINISHING | 5d | 2027-05-04 | 2027-05-08 | 3090FS-7d |  | RGA -FINISHING | 7381215 |
| 3265 | 40200.40300.41200.53000.55600.59200.61000.270000.2680600 | PLASTER APPLICATION | 15d | 2027-07-18 | 2027-08-01 | 3564 |  | RGA -FINISHING | 7381225 |
| 3266 | 40200.40300.41200.53000.55600.59200.61000.270000.2680700 | CONCEALED PLUMBING | 9d | 2027-08-02 | 2027-08-10 | 3265 |  | RGA -FINISHING | 7381235 |
| 3267 | 40200.40300.41200.53000.55600.59200.61000.270000.2680800 | WATERPROOFING WORK FOR TOILETS, KITCHEN SUNK & PLANTERS | 12d | 2027-08-11 | 2027-08-22 | 3266 |  | RGA -FINISHING | 7381245 |

Notes:
- 3263: Last floor BW completion 2 months post Last RCC

| ID | WBS | Task | Duration | Start | Finish | Predecessors | Constraint | Calendar | Unique_Task_ID |
| --- | --- | --- | --- | --- | --- | --- | --- | --- | --- |
| 3268 | 40200.40300.41200.53000.55600.59200.61000.270100 | **19th FLOOR** | 117d | 2027-05-21 | 2027-09-14 |  | start no earlier than 2027-05-21 | RGA -FINISHING | 7807942 |
| 3269 | 40200.40300.41200.53000.55600.59200.61000.270100.2680900 | BALCONY RAILING FIXING | 9d | 2027-07-16 | 2027-07-24 | 3106 |  | RGA -FINISHING | 7381255 |
| 3270 | 40200.40300.41200.53000.55600.59200.61000.270100.2681000 | Block work | 8d | 2027-09-07 | 2027-09-14 | 3274 |  | RGA -FINISHING | 7381265 |
| 3271 | 40200.40300.41200.53000.55600.59200.61000.270100.2681100 | CONCEALED ELEC CONDUITING & ITS FINISHING | 5d | 2027-05-21 | 2027-05-25 | 3094FS-7d |  | RGA -FINISHING | 7381275 |
| 3272 | 40200.40300.41200.53000.55600.59200.61000.270100.2681200 | PLASTER APPLICATION | 15d | 2027-08-02 | 2027-08-16 | 3577 |  | RGA -FINISHING | 7381285 |
| 3273 | 40200.40300.41200.53000.55600.59200.61000.270100.2681300 | CONCEALED PLUMBING | 9d | 2027-08-17 | 2027-08-25 | 3272 |  | RGA -FINISHING | 7381295 |
| 3274 | 40200.40300.41200.53000.55600.59200.61000.270100.2681400 | WATERPROOFING WORK FOR TOILETS, KITCHEN SUNK & PLANTERS | 12d | 2027-08-26 | 2027-09-06 | 3273 |  | RGA -FINISHING | 7381305 |
| 3275 | 40200.40300.41200.53000.55600.59200.61000.270200 | **20th FLOOR** | 115d | 2027-06-07 | 2027-09-29 |  | start no earlier than 2027-06-07 | RGA -FINISHING | 7807952 |
| 3276 | 40200.40300.41200.53000.55600.59200.61000.270200.2681500 | BALCONY RAILING FIXING | 9d | 2027-07-31 | 2027-08-08 | 3110 |  | RGA -FINISHING | 7381315 |
| 3277 | 40200.40300.41200.53000.55600.59200.61000.270200.2681600 | Block work | 8d | 2027-09-22 | 2027-09-29 | 3281 |  | RGA -FINISHING | 7381325 |
| 3278 | 40200.40300.41200.53000.55600.59200.61000.270200.2681700 | CONCEALED ELEC CONDUITING & ITS FINISHING | 5d | 2027-06-07 | 2027-06-11 | 3098FS-7d |  | RGA -FINISHING | 7381335 |
| 3279 | 40200.40300.41200.53000.55600.59200.61000.270200.2681800 | PLASTER APPLICATION | 15d | 2027-08-17 | 2027-08-31 | 3590 |  | RGA -FINISHING | 7381345 |
| 3280 | 40200.40300.41200.53000.55600.59200.61000.270200.2681900 | CONCEALED PLUMBING | 9d | 2027-09-01 | 2027-09-09 | 3279 |  | RGA -FINISHING | 7381355 |
| 3281 | 40200.40300.41200.53000.55600.59200.61000.270200.2682000 | WATERPROOFING WORK FOR TOILETS, KITCHEN SUNK & PLANTERS | 12d | 2027-09-10 | 2027-09-21 | 3280 |  | RGA -FINISHING | 7381365 |
| 3282 | 40200.40300.41200.53000.55600.59200.61000.270300 | **21th FLOOR** | 113d | 2027-06-24 | 2027-10-14 |  | start no earlier than 2027-06-24 | RGA -FINISHING | 7807962 |
| 3283 | 40200.40300.41200.53000.55600.59200.61000.270300.2682100 | BALCONY RAILING FIXING | 9d | 2027-08-15 | 2027-08-23 | 3114 |  | RGA -FINISHING | 7381375 |
| 3284 | 40200.40300.41200.53000.55600.59200.61000.270300.2682200 | Block work | 8d | 2027-10-07 | 2027-10-14 | 3288 |  | RGA -FINISHING | 7381385 |
| 3285 | 40200.40300.41200.53000.55600.59200.61000.270300.2682300 | CONCEALED ELEC CONDUITING & ITS FINISHING | 5d | 2027-06-24 | 2027-06-28 | 3102FS-7d |  | RGA -FINISHING | 7381395 |
| 3286 | 40200.40300.41200.53000.55600.59200.61000.270300.2682400 | PLASTER APPLICATION | 15d | 2027-09-01 | 2027-09-15 | 3603 |  | RGA -FINISHING | 7381405 |
| 3287 | 40200.40300.41200.53000.55600.59200.61000.270300.2682500 | CONCEALED PLUMBING | 9d | 2027-09-16 | 2027-09-24 | 3286 |  | RGA -FINISHING | 7381415 |
| 3288 | 40200.40300.41200.53000.55600.59200.61000.270300.2682600 | WATERPROOFING WORK FOR TOILETS, KITCHEN SUNK & PLANTERS | 12d | 2027-09-25 | 2027-10-06 | 3287 |  | RGA -FINISHING | 7381425 |
| 3289 | 40200.40300.41200.53000.55600.59200.61000.270400 | **22th FLOOR** | 113d | 2027-07-09 | 2027-10-29 |  | start no earlier than 2027-07-09 | RGA -FINISHING | 7807972 |
| 3290 | 40200.40300.41200.53000.55600.59200.61000.270400.2682700 | BALCONY RAILING FIXING | 9d | 2027-08-30 | 2027-09-07 | 3118 |  | RGA -FINISHING | 7381435 |
| 3291 | 40200.40300.41200.53000.55600.59200.61000.270400.2682800 | Block work | 8d | 2027-10-22 | 2027-10-29 | 3295 |  | RGA -FINISHING | 7381445 |
| 3292 | 40200.40300.41200.53000.55600.59200.61000.270400.2682900 | CONCEALED ELEC CONDUITING & ITS FINISHING | 5d | 2027-07-09 | 2027-07-13 | 3106FS-7d |  | RGA -FINISHING | 7381455 |
| 3293 | 40200.40300.41200.53000.55600.59200.61000.270400.2683000 | PLASTER APPLICATION | 15d | 2027-09-16 | 2027-09-30 | 3616 |  | RGA -FINISHING | 7381465 |
| 3294 | 40200.40300.41200.53000.55600.59200.61000.270400.2683100 | CONCEALED PLUMBING | 9d | 2027-10-01 | 2027-10-09 | 3293 |  | RGA -FINISHING | 7381475 |
| 3295 | 40200.40300.41200.53000.55600.59200.61000.270400.2683200 | WATERPROOFING WORK FOR TOILETS, KITCHEN SUNK & PLANTERS | 12d | 2027-10-10 | 2027-10-21 | 3294 |  | RGA -FINISHING | 7381485 |

Notes:
- 3270: Last floor BW completion 2 months post Last RCC
- 3277: Last floor BW completion 2 months post Last RCC
- 3284: Last floor BW completion 2 months post Last RCC
- 3291: Last floor BW completion 2 months post Last RCC

| ID | WBS | Task | Duration | Start | Finish | Predecessors | Constraint | Calendar | Unique_Task_ID |
| --- | --- | --- | --- | --- | --- | --- | --- | --- | --- |
| 3296 | 40200.40300.41200.53000.55600.59200.61000.270500 | **23th FLOOR** | 107d | 2027-07-24 | 2027-11-07 |  | start no earlier than 2027-07-24 | RGA -FINISHING | 7807982 |
| 3297 | 40200.40300.41200.53000.55600.59200.61000.270500.2683300 | BALCONY RAILING FIXING | 9d | 2027-09-08 | 2027-09-16 | 3290 |  | RGA -FINISHING | 7381495 |
| 3298 | 40200.40300.41200.53000.55600.59200.61000.270500.2683400 | Block work | 8d | 2027-10-31 | 2027-11-07 | 3302 |  | RGA -FINISHING | 7381505 |
| 3299 | 40200.40300.41200.53000.55600.59200.61000.270500.2683500 | CONCEALED ELEC CONDUITING & ITS FINISHING | 5d | 2027-07-24 | 2027-07-28 | 3110FS-7d |  | RGA -FINISHING | 7381515 |
| 3300 | 40200.40300.41200.53000.55600.59200.61000.270500.2683600 | PLASTER APPLICATION | 15d | 2027-09-25 | 2027-10-09 | 3629 |  | RGA -FINISHING | 7381525 |
| 3301 | 40200.40300.41200.53000.55600.59200.61000.270500.2683700 | CONCEALED PLUMBING | 9d | 2027-10-10 | 2027-10-18 | 3300 |  | RGA -FINISHING | 7381535 |
| 3302 | 40200.40300.41200.53000.55600.59200.61000.270500.2683800 | WATERPROOFING WORK FOR TOILETS, KITCHEN SUNK & PLANTERS | 12d | 2027-10-19 | 2027-10-30 | 3301 |  | RGA -FINISHING | 7381545 |
| 3303 | 40200.40300.41200.53000.55600.59200.61000.270600 | **24th FLOOR** | 101d | 2027-08-08 | 2027-11-16 |  | start no earlier than 2027-08-08 | RGA -FINISHING | 7807992 |
| 3304 | 40200.40300.41200.53000.55600.59200.61000.270600.2683900 | BALCONY RAILING FIXING | 9d | 2027-09-17 | 2027-09-25 | 3297 |  | RGA -FINISHING | 7381555 |
| 3305 | 40200.40300.41200.53000.55600.59200.61000.270600.2684000 | Block work | 8d | 2027-11-09 | 2027-11-16 | 3309 |  | RGA -FINISHING | 7381565 |
| 3306 | 40200.40300.41200.53000.55600.59200.61000.270600.2684100 | CONCEALED ELEC CONDUITING & ITS FINISHING | 5d | 2027-08-08 | 2027-08-12 | 3114FS-7d |  | RGA -FINISHING | 7381575 |
| 3307 | 40200.40300.41200.53000.55600.59200.61000.270600.2684200 | PLASTER APPLICATION | 15d | 2027-10-04 | 2027-10-18 | 3642 |  | RGA -FINISHING | 7381585 |
| 3308 | 40200.40300.41200.53000.55600.59200.61000.270600.2684300 | CONCEALED PLUMBING | 9d | 2027-10-19 | 2027-10-27 | 3307 |  | RGA -FINISHING | 7381595 |
| 3309 | 40200.40300.41200.53000.55600.59200.61000.270600.2684400 | WATERPROOFING WORK FOR TOILETS, KITCHEN SUNK & PLANTERS | 12d | 2027-10-28 | 2027-11-08 | 3308 |  | RGA -FINISHING | 7381605 |
| 3310 | 40200.40300.41200.53000.55600.59200.61000.270700 | **25thFLOOR** | 95d | 2027-08-23 | 2027-11-25 |  | start no earlier than 2027-08-23 | RGA -FINISHING | 7808002 |
| 3311 | 40200.40300.41200.53000.55600.59200.61000.270700.2684500 | BALCONY RAILING FIXING | 9d | 2027-09-26 | 2027-10-04 | 3304 |  | RGA -FINISHING | 7381615 |
| 3312 | 40200.40300.41200.53000.55600.59200.61000.270700.2684600 | Block work | 8d | 2027-11-18 | 2027-11-25 | 3316 |  | RGA -FINISHING | 7381625 |
| 3313 | 40200.40300.41200.53000.55600.59200.61000.270700.2684700 | CONCEALED ELEC CONDUITING & ITS FINISHING | 5d | 2027-08-23 | 2027-08-27 | 3118FS-7d |  | RGA -FINISHING | 7381635 |
| 3314 | 40200.40300.41200.53000.55600.59200.61000.270700.2684800 | PLASTER APPLICATION | 15d | 2027-10-13 | 2027-10-27 | 3655 |  | RGA -FINISHING | 7381645 |
| 3315 | 40200.40300.41200.53000.55600.59200.61000.270700.2684900 | CONCEALED PLUMBING | 9d | 2027-10-28 | 2027-11-05 | 3314 |  | RGA -FINISHING | 7381655 |
| 3316 | 40200.40300.41200.53000.55600.59200.61000.270700.2685000 | WATERPROOFING WORK FOR TOILETS, KITCHEN SUNK & PLANTERS | 12d | 2027-11-06 | 2027-11-17 | 3315 |  | RGA -FINISHING | 7857842 |
| 3317 | 40200.40300.41200.53000.55600.59200.61000.372500 | **LMR (To Be Deleted)** | 15d | 2025-11-30 | 2025-12-14 |  | start no earlier than 2025-11-30 | RGA -FINISHING | 7808732 |
| 3318 | 40200.40300.41200.53000.55600.59200.61000.372500.2685100 | Block work | 8d | 2025-11-30 | 2025-12-07 |  | start no earlier than 2025-11-30 | RGA -FINISHING | 7858272 |
| 3319 | 40200.40300.41200.53000.55600.59200.61000.372500.2685200 | CONCEALED ELEC CONDUITING & ITS FINISHING | 7d | 2025-11-30 | 2025-12-06 |  | start no earlier than 2025-11-30 | RGA -FINISHING | 7858282 |
| 3320 | 40200.40300.41200.53000.55600.59200.61000.372500.2685300 | PLASTER APPLICATION | 15d | 2025-11-30 | 2025-12-14 |  | start no earlier than 2025-11-30 | RGA -FINISHING | 7858292 |
| 3321 | 40200.40300.41200.53000.55600.59200.61000.372500.2685400 | DOOR FRAME FIXING | 3d | 2025-11-30 | 2025-12-02 |  | start no earlier than 2025-11-30 | RGA -FINISHING | 7858302 |

Notes:
- 3298: Last floor BW completion 2 months post Last RCC
- 3305: Last floor BW completion 2 months post Last RCC

| ID | WBS | Task | Duration | Start | Finish | Predecessors | Constraint | Calendar | Unique_Task_ID |
| --- | --- | --- | --- | --- | --- | --- | --- | --- | --- |
| 3322 | 40200.40300.41200.53000.55600.59200.506500 | **Terrace Finishing works** | 30d | 2028-02-08 | 2028-03-08 |  | start no earlier than 2028-02-08 | RGA -FINISHING | 7432055 |
| 3323 | 40200.40300.41200.53000.55600.59200.506500.2269900 | Terrace Waterproofing work | 30d | 2028-02-08 | 2028-03-08 | 3325FS+7d |  | RGA -FINISHING | 7432075 |
| 3324 | 40200.40300.41200.53000.55600.59200.506600 | **EXTERNAL Painting** | 130d | 2027-09-24 | 2028-01-31 |  | start no earlier than 2027-09-24 | RGA -FINISHING | 7432065 |
| 3325 | 40200.40300.41200.53000.55600.59200.506600.2270000 | 2nd coat | 130d | 2027-09-24 | 2028-01-31 | 3122FS+10d |  | RGA -FINISHING | 7432085 |
| 3326 | 40200.40300.41200.53000.55600.58200 | **Flat internal finishing & services works** | 619d | 2026-06-07 | 2028-02-15 |  | start no earlier than 2026-06-07 | RGA -FINISHING | 7803402 |
| 3327 | 40200.40300.41200.53000.55600.58200.139200 | **GROUND FLOOR** | 589d | 2026-06-07 | 2028-01-16 |  | start no earlier than 2026-06-07 | RGA -FINISHING | 7805162 |
| 3328 | 40200.40300.41200.53000.55600.58200.139200.2270100 | TOILET DADO TILE FIXING | 10d | 2026-06-07 | 2026-06-16 | 3138FS+120d |  | RGA -FINISHING | 7837182 |
| 3329 | 40200.40300.41200.53000.55600.58200.139200.2270200 | TOILET FLOORING WORK | 7d | 2026-06-17 | 2026-06-23 | 3328 |  | RGA -FINISHING | 7861182 |
| 3330 | 40200.40300.41200.53000.55600.58200.139200.2270300 | FIRE FIGHTING | 15d | 2026-06-14 | 2026-06-28 | 3136 |  | RGA -FINISHING | 7837192 |
| 3331 | 40200.40300.41200.53000.55600.58200.139200.2270400 | INTERNAL PAINTING - PUTTY / PRIMER APPLICATION | 15d | 2026-07-27 | 2026-08-10 | 3333 |  | RGA -FINISHING | 7837202 |
| 3332 | 40200.40300.41200.53000.55600.58200.139200.2270500 | FLAT FLOORING | 11d | 2026-06-24 | 2026-07-04 | 3329 |  | RGA -FINISHING | 7837212 |
| 3333 | 40200.40300.41200.53000.55600.58200.139200.2270600 | WINDOW FIXING | 12d | 2026-07-15 | 2026-07-26 | 3332FS+10d |  | RGA -FINISHING | 7837222 |
| 3334 | 40200.40300.41200.53000.55600.58200.139200.2270700 | INTERNAL PAINTING - 1ST COAT | 12d | 2026-08-11 | 2026-08-22 | 3331 |  | RGA -FINISHING | 7837232 |
| 3335 | 40200.40300.41200.53000.55600.58200.139200.2270800 | INTERNAL DOOR FIXING | 15d | 2026-08-23 | 2026-09-06 | 3334 |  | RGA -FINISHING | 7837242 |
| 3336 | 40200.40300.41200.53000.55600.58200.139200.2270900 | WIRING & SWITCH PLATE FIXING | 8d | 2026-09-07 | 2026-09-14 | 3335 |  | RGA -FINISHING | 7837252 |
| 3337 | 40200.40300.41200.53000.55600.58200.139200.2271000 | TOILET FALSE CEILING | 7d | 2026-09-15 | 2026-09-21 | 3336 |  | RGA -FINISHING | 7837262 |
| 3338 | 40200.40300.41200.53000.55600.58200.139200.2271100 | MAIN DOOR FRAME SHUTTER FIXING | 6d | 2028-01-03 | 2028-01-08 | 3670 |  | RGA -FINISHING | 7837272 |
| 3339 | 40200.40300.41200.53000.55600.58200.139200.2271200 | FINAL COAT PAINT | 8d | 2028-01-09 | 2028-01-16 | 3338 |  | RGA -FINISHING | 7837282 |
| 3340 | 40200.40300.41200.53000.55600.58200.139300 | **1ST FLOOR** | 527d | 2026-08-08 | 2028-01-16 |  | start no earlier than 2026-08-08 | RGA -FINISHING | 7805152 |
| 3341 | 40200.40300.41200.53000.55600.58200.139300.2271300 | TOILET DADO TILE FIXING | 7d | 2026-10-13 | 2026-10-19 | 3144 |  | RGA -FINISHING | 7837292 |
| 3342 | 40200.40300.41200.53000.55600.58200.139300.2271400 | TOILET FLOORING WORK | 7d | 2026-10-20 | 2026-10-26 | 3341 |  | RGA -FINISHING | 7837302 |
| 3343 | 40200.40300.41200.53000.55600.58200.139300.2271500 | FIRE FIGHTING | 6d | 2026-08-08 | 2026-08-13 | 3143 |  | RGA -FINISHING | 7837312 |
| 3344 | 40200.40300.41200.53000.55600.58200.139300.2271600 | INTERNAL PAINTING - PUTTY / PRIMER APPLICATION | 6d | 2026-11-23 | 2026-11-28 | 3346 |  | RGA -FINISHING | 7837322 |
| 3345 | 40200.40300.41200.53000.55600.58200.139300.2271700 | FLAT FLOORING | 5d | 2026-10-27 | 2026-10-31 | 3342 |  | RGA -FINISHING | 7837332 |
| 3346 | 40200.40300.41200.53000.55600.58200.139300.2271800 | WINDOW FIXING | 12d | 2026-11-11 | 2026-11-22 | 3345FS+10d |  | RGA -FINISHING | 7837342 |
| 3347 | 40200.40300.41200.53000.55600.58200.139300.2271900 | INTERNAL PAINTING - 1ST COAT | 12d | 2026-11-29 | 2026-12-10 | 3344 |  | RGA -FINISHING | 7837352 |
| 3348 | 40200.40300.41200.53000.55600.58200.139300.2272000 | INTERNAL DOOR FIXING | 15d | 2026-12-11 | 2026-12-25 | 3347 |  | RGA -FINISHING | 7837362 |
| 3349 | 40200.40300.41200.53000.55600.58200.139300.2272100 | WIRING & SWITCH PLATE FIXING | 8d | 2026-12-26 | 2027-01-02 | 3348 |  | RGA -FINISHING | 7837372 |
| 3350 | 40200.40300.41200.53000.55600.58200.139300.2272200 | TOILET FALSE CEILING | 7d | 2027-01-03 | 2027-01-09 | 3349 |  | RGA -FINISHING | 7837382 |
| 3351 | 40200.40300.41200.53000.55600.58200.139300.2272300 | MAIN DOOR FRAME SHUTTER FIXING | 6d | 2028-01-03 | 2028-01-08 | 3678 |  | RGA -FINISHING | 7837392 |
| 3352 | 40200.40300.41200.53000.55600.58200.139300.2272400 | FINAL COAT PAINT | 8d | 2028-01-09 | 2028-01-16 | 3351 |  | RGA -FINISHING | 7837402 |

Notes:
- 3324: Ext Plaster (in 2 phases) completion 3.5 months post last BW
- 3326: Completion in 12 months post last RCC

| ID | WBS | Task | Duration | Start | Finish | Predecessors | Constraint | Calendar | Unique_Task_ID |
| --- | --- | --- | --- | --- | --- | --- | --- | --- | --- |
| 3353 | 40200.40300.41200.53000.55600.58200.139400 | **2ND FLOOR** | 486d | 2026-09-18 | 2028-01-16 |  | start no earlier than 2026-09-18 | RGA -FINISHING | 7805142 |
| 3354 | 40200.40300.41200.53000.55600.58200.139400.2272500 | TOILET DADO TILE FIXING | 7d | 2026-11-13 | 2026-11-19 | 3151 |  | RGA -FINISHING | 7837412 |
| 3355 | 40200.40300.41200.53000.55600.58200.139400.2272600 | TOILET FLOORING WORK | 7d | 2026-11-20 | 2026-11-26 | 3354 |  | RGA -FINISHING | 7837422 |
| 3356 | 40200.40300.41200.53000.55600.58200.139400.2272700 | FIRE FIGHTING | 6d | 2026-09-18 | 2026-09-23 | 3150 |  | RGA -FINISHING | 7837432 |
| 3357 | 40200.40300.41200.53000.55600.58200.139400.2272800 | INTERNAL PAINTING - PUTTY / PRIMER APPLICATION | 6d | 2026-12-24 | 2026-12-29 | 3359 |  | RGA -FINISHING | 7837442 |
| 3358 | 40200.40300.41200.53000.55600.58200.139400.2272900 | FLAT FLOORING | 5d | 2026-11-27 | 2026-12-01 | 3355 |  | RGA -FINISHING | 7837452 |
| 3359 | 40200.40300.41200.53000.55600.58200.139400.2273000 | WINDOW FIXING | 12d | 2026-12-12 | 2026-12-23 | 3358FS+10d |  | RGA -FINISHING | 7837462 |
| 3360 | 40200.40300.41200.53000.55600.58200.139400.2273100 | INTERNAL PAINTING - 1ST COAT | 12d | 2026-12-30 | 2027-01-10 | 3357 |  | RGA -FINISHING | 7837472 |
| 3361 | 40200.40300.41200.53000.55600.58200.139400.2273200 | INTERNAL DOOR FIXING | 15d | 2027-01-09 | 2027-01-23 | 3360FS-2d |  | RGA -FINISHING | 7837482 |
| 3362 | 40200.40300.41200.53000.55600.58200.139400.2273300 | WIRING & SWITCH PLATE FIXING | 8d | 2027-01-20 | 2027-01-27 | 3361FS-4d |  | RGA -FINISHING | 7837492 |
| 3363 | 40200.40300.41200.53000.55600.58200.139400.2273400 | TOILET FALSE CEILING | 7d | 2027-01-28 | 2027-02-03 | 3362 |  | RGA -FINISHING | 7837502 |
| 3364 | 40200.40300.41200.53000.55600.58200.139400.2273500 | MAIN DOOR FRAME SHUTTER FIXING | 6d | 2028-01-03 | 2028-01-08 | 3686 |  | RGA -FINISHING | 7837512 |
| 3365 | 40200.40300.41200.53000.55600.58200.139400.2273600 | FINAL COAT PAINT | 8d | 2028-01-09 | 2028-01-16 | 3364 |  | RGA -FINISHING | 7837522 |
| 3366 | 40200.40300.41200.53000.55600.58200.139500 | **3RD FLOOR** | 460d | 2026-10-17 | 2028-01-19 |  | start no earlier than 2026-10-17 | RGA -FINISHING | 7805132 |
| 3367 | 40200.40300.41200.53000.55600.58200.139500.2273700 | TOILET DADO TILE FIXING | 7d | 2026-11-25 | 2026-12-01 | 3158 |  | RGA -FINISHING | 7837532 |
| 3368 | 40200.40300.41200.53000.55600.58200.139500.2273800 | TOILET FLOORING WORK | 7d | 2026-12-02 | 2026-12-08 | 3367 |  | RGA -FINISHING | 7837542 |
| 3369 | 40200.40300.41200.53000.55600.58200.139500.2273900 | FIRE FIGHTING | 6d | 2026-10-17 | 2026-10-22 | 3157 |  | RGA -FINISHING | 7837552 |
| 3370 | 40200.40300.41200.53000.55600.58200.139500.2274000 | INTERNAL PAINTING - PUTTY / PRIMER APPLICATION | 6d | 2026-12-31 | 2027-01-05 | 3372 |  | RGA -FINISHING | 7837562 |
| 3371 | 40200.40300.41200.53000.55600.58200.139500.2274100 | FLAT FLOORING | 5d | 2026-12-09 | 2026-12-13 | 3368 |  | RGA -FINISHING | 7837572 |
| 3372 | 40200.40300.41200.53000.55600.58200.139500.2274200 | WINDOW FIXING | 7d | 2026-12-24 | 2026-12-30 | 3371FS+10d |  | RGA -FINISHING | 7837582 |
| 3373 | 40200.40300.41200.53000.55600.58200.139500.2274300 | INTERNAL PAINTING - 1ST COAT | 7d | 2027-01-06 | 2027-01-12 | 3370 |  | RGA -FINISHING | 7837592 |
| 3374 | 40200.40300.41200.53000.55600.58200.139500.2274400 | INTERNAL DOOR FIXING | 15d | 2027-01-11 | 2027-01-25 | 3373FS-2d |  | RGA -FINISHING | 7837602 |
| 3375 | 40200.40300.41200.53000.55600.58200.139500.2274500 | WIRING & SWITCH PLATE FIXING | 8d | 2027-01-22 | 2027-01-29 | 3374FS-4d |  | RGA -FINISHING | 7837612 |
| 3376 | 40200.40300.41200.53000.55600.58200.139500.2274600 | TOILET FALSE CEILING | 7d | 2027-01-30 | 2027-02-05 | 3375 |  | RGA -FINISHING | 7837622 |
| 3377 | 40200.40300.41200.53000.55600.58200.139500.2274700 | MAIN DOOR FRAME SHUTTER FIXING | 6d | 2028-01-06 | 2028-01-11 | 3694 |  | RGA -FINISHING | 7837632 |
| 3378 | 40200.40300.41200.53000.55600.58200.139500.2274800 | FINAL COAT PAINT | 8d | 2028-01-12 | 2028-01-19 | 3377 |  | RGA -FINISHING | 7837642 |

| ID | WBS | Task | Duration | Start | Finish | Predecessors | Constraint | Calendar | Unique_Task_ID |
| --- | --- | --- | --- | --- | --- | --- | --- | --- | --- |
| 3379 | 40200.40300.41200.53000.55600.58200.139600 | **4TH FLOOR** | 447d | 2026-10-30 | 2028-01-19 |  | start no earlier than 2026-10-30 | RGA -FINISHING | 7805122 |
| 3380 | 40200.40300.41200.53000.55600.58200.139600.2274900 | TOILET DADO TILE FIXING | 7d | 2026-12-05 | 2026-12-11 | 3165 |  | RGA -FINISHING | 7837652 |
| 3381 | 40200.40300.41200.53000.55600.58200.139600.2275000 | TOILET FLOORING WORK | 7d | 2026-12-12 | 2026-12-18 | 3380 |  | RGA -FINISHING | 7837662 |
| 3382 | 40200.40300.41200.53000.55600.58200.139600.2275100 | FIRE FIGHTING | 6d | 2026-10-30 | 2026-11-04 | 3164 |  | RGA -FINISHING | 7837672 |
| 3383 | 40200.40300.41200.53000.55600.58200.139600.2275200 | INTERNAL PAINTING - PUTTY / PRIMER APPLICATION | 6d | 2027-01-10 | 2027-01-15 | 3385 |  | RGA -FINISHING | 7837682 |
| 3384 | 40200.40300.41200.53000.55600.58200.139600.2275300 | FLAT FLOORING | 5d | 2026-12-19 | 2026-12-23 | 3381 |  | RGA -FINISHING | 7837692 |
| 3385 | 40200.40300.41200.53000.55600.58200.139600.2275400 | WINDOW FIXING | 7d | 2027-01-03 | 2027-01-09 | 3384FS+10d |  | RGA -FINISHING | 7837702 |
| 3386 | 40200.40300.41200.53000.55600.58200.139600.2275500 | INTERNAL PAINTING - 1ST COAT | 7d | 2027-01-16 | 2027-01-22 | 3383 |  | RGA -FINISHING | 7837712 |
| 3387 | 40200.40300.41200.53000.55600.58200.139600.2275600 | INTERNAL DOOR FIXING | 15d | 2027-01-21 | 2027-02-04 | 3386FS-2d |  | RGA -FINISHING | 7837722 |
| 3388 | 40200.40300.41200.53000.55600.58200.139600.2275700 | WIRING & SWITCH PLATE FIXING | 8d | 2027-02-01 | 2027-02-08 | 3387FS-4d |  | RGA -FINISHING | 7837732 |
| 3389 | 40200.40300.41200.53000.55600.58200.139600.2275800 | TOILET FALSE CEILING | 7d | 2027-02-09 | 2027-02-15 | 3388 |  | RGA -FINISHING | 7837742 |
| 3390 | 40200.40300.41200.53000.55600.58200.139600.2275900 | MAIN DOOR FRAME SHUTTER FIXING | 6d | 2028-01-06 | 2028-01-11 | 3702 |  | RGA -FINISHING | 7837752 |
| 3391 | 40200.40300.41200.53000.55600.58200.139600.2276000 | FINAL COAT PAINT | 8d | 2028-01-12 | 2028-01-19 | 3390 |  | RGA -FINISHING | 7837762 |
| 3392 | 40200.40300.41200.53000.55600.58200.139700 | **5TH FLOOR** | 430d | 2026-11-16 | 2028-01-19 |  | start no earlier than 2026-11-16 | RGA -FINISHING | 7805112 |
| 3393 | 40200.40300.41200.53000.55600.58200.139700.2276100 | TOILET DADO TILE FIXING | 7d | 2026-12-22 | 2026-12-28 | 3172 |  | RGA -FINISHING | 7837772 |
| 3394 | 40200.40300.41200.53000.55600.58200.139700.2276200 | TOILET FLOORING WORK | 7d | 2026-12-29 | 2027-01-04 | 3393 |  | RGA -FINISHING | 7837782 |
| 3395 | 40200.40300.41200.53000.55600.58200.139700.2276300 | FIRE FIGHTING | 6d | 2026-11-16 | 2026-11-21 | 3171 |  | RGA -FINISHING | 7837792 |
| 3396 | 40200.40300.41200.53000.55600.58200.139700.2276400 | INTERNAL PAINTING - PUTTY / PRIMER APPLICATION | 6d | 2027-01-27 | 2027-02-01 | 3398 |  | RGA -FINISHING | 7837802 |
| 3397 | 40200.40300.41200.53000.55600.58200.139700.2276500 | FLAT FLOORING | 5d | 2027-01-05 | 2027-01-09 | 3394 |  | RGA -FINISHING | 7837812 |
| 3398 | 40200.40300.41200.53000.55600.58200.139700.2276600 | WINDOW FIXING | 7d | 2027-01-20 | 2027-01-26 | 3397FS+10d |  | RGA -FINISHING | 7837822 |
| 3399 | 40200.40300.41200.53000.55600.58200.139700.2276700 | INTERNAL PAINTING - 1ST COAT | 7d | 2027-02-02 | 2027-02-08 | 3396 |  | RGA -FINISHING | 7837832 |
| 3400 | 40200.40300.41200.53000.55600.58200.139700.2276800 | INTERNAL DOOR FIXING | 15d | 2027-02-07 | 2027-02-21 | 3399FS-2d |  | RGA -FINISHING | 7837842 |
| 3401 | 40200.40300.41200.53000.55600.58200.139700.2276900 | WIRING & SWITCH PLATE FIXING | 8d | 2027-02-18 | 2027-02-25 | 3400FS-4d |  | RGA -FINISHING | 7837852 |
| 3402 | 40200.40300.41200.53000.55600.58200.139700.2277000 | TOILET FALSE CEILING | 7d | 2027-02-26 | 2027-03-04 | 3401 |  | RGA -FINISHING | 7837862 |
| 3403 | 40200.40300.41200.53000.55600.58200.139700.2277100 | MAIN DOOR FRAME SHUTTER FIXING | 6d | 2028-01-06 | 2028-01-11 | 3710 |  | RGA -FINISHING | 7837872 |
| 3404 | 40200.40300.41200.53000.55600.58200.139700.2277200 | FINAL COAT PAINT | 8d | 2028-01-12 | 2028-01-19 | 3403 |  | RGA -FINISHING | 7837882 |

| ID | WBS | Task | Duration | Start | Finish | Predecessors | Constraint | Calendar | Unique_Task_ID |
| --- | --- | --- | --- | --- | --- | --- | --- | --- | --- |
| 3405 | 40200.40300.41200.53000.55600.58200.139800 | **6TH FLOOR** | 408.5d | 2026-12-10 | 2028-01-22 |  | start no earlier than 2026-12-10 | RGA -FINISHING | 7805102 |
| 3406 | 40200.40300.41200.53000.55600.58200.139800.2277300 | TOILET DADO TILE FIXING | 7d | 2027-01-20 | 2027-01-27 | 3179 |  | RGA -FINISHING | 7837892 |
| 3407 | 40200.40300.41200.53000.55600.58200.139800.2277400 | TOILET FLOORING WORK | 7d | 2027-01-20 | 2027-01-27 | 3406FF |  | RGA -FINISHING | 7837902 |
| 3408 | 40200.40300.41200.53000.55600.58200.139800.2277500 | FIRE FIGHTING | 6d | 2026-12-10 | 2026-12-16 | 3178 |  | RGA -FINISHING | 7837912 |
| 3409 | 40200.40300.41200.53000.55600.58200.139800.2277600 | INTERNAL PAINTING - PUTTY / PRIMER APPLICATION | 6d | 2027-02-23 | 2027-03-01 | 3411 |  | RGA -FINISHING | 7837922 |
| 3410 | 40200.40300.41200.53000.55600.58200.139800.2277700 | FLAT FLOORING | 5d | 2027-01-27 | 2027-02-01 | 3407 |  | RGA -FINISHING | 7837932 |
| 3411 | 40200.40300.41200.53000.55600.58200.139800.2277800 | WINDOW FIXING | 12d | 2027-02-11 | 2027-02-23 | 3410FS+10d |  | RGA -FINISHING | 7837942 |
| 3412 | 40200.40300.41200.53000.55600.58200.139800.2277900 | INTERNAL PAINTING - 1ST COAT | 12d | 2027-03-01 | 2027-03-13 | 3409 |  | RGA -FINISHING | 7837952 |
| 3413 | 40200.40300.41200.53000.55600.58200.139800.2278000 | INTERNAL DOOR FIXING | 15d | 2027-03-11 | 2027-03-26 | 3412FS-2d |  | RGA -FINISHING | 7837962 |
| 3414 | 40200.40300.41200.53000.55600.58200.139800.2278100 | WIRING & SWITCH PLATE FIXING | 8d | 2027-03-22 | 2027-03-30 | 3413FS-4d |  | RGA -FINISHING | 7837972 |
| 3415 | 40200.40300.41200.53000.55600.58200.139800.2278200 | TOILET FALSE CEILING | 7d | 2027-03-30 | 2027-04-06 | 3414 |  | RGA -FINISHING | 7837982 |
| 3416 | 40200.40300.41200.53000.55600.58200.139800.2278300 | MAIN DOOR FRAME SHUTTER FIXING | 6d | 2028-01-09 | 2028-01-14 | 3718 |  | RGA -FINISHING | 7837992 |
| 3417 | 40200.40300.41200.53000.55600.58200.139800.2278400 | FINAL COAT PAINT | 8d | 2028-01-15 | 2028-01-22 | 3416 |  | RGA -FINISHING | 7838002 |
| 3418 | 40200.40300.41200.53000.55600.58200.139900 | **7TH FLOOR** | 384d | 2027-01-04 | 2028-01-22 |  | start no earlier than 2027-01-04 | RGA -FINISHING | 7805092 |
| 3419 | 40200.40300.41200.53000.55600.58200.139900.2278500 | TOILET DADO TILE FIXING | 7d | 2027-02-14 | 2027-02-20 | 3186 |  | RGA -FINISHING | 7838012 |
| 3420 | 40200.40300.41200.53000.55600.58200.139900.2278600 | TOILET FLOORING WORK | 7d | 2027-02-21 | 2027-02-27 | 3419 |  | RGA -FINISHING | 7838022 |
| 3421 | 40200.40300.41200.53000.55600.58200.139900.2278700 | FIRE FIGHTING | 6d | 2027-01-04 | 2027-01-09 | 3185 |  | RGA -FINISHING | 7838032 |
| 3422 | 40200.40300.41200.53000.55600.58200.139900.2278800 | INTERNAL PAINTING - PUTTY / PRIMER APPLICATION | 6d | 2027-03-27 | 2027-04-01 | 3424 |  | RGA -FINISHING | 7838042 |
| 3423 | 40200.40300.41200.53000.55600.58200.139900.2278900 | FLAT FLOORING | 5d | 2027-02-28 | 2027-03-04 | 3420 |  | RGA -FINISHING | 7838052 |
| 3424 | 40200.40300.41200.53000.55600.58200.139900.2279000 | WINDOW FIXING | 12d | 2027-03-15 | 2027-03-26 | 3423FS+10d |  | RGA -FINISHING | 7838062 |
| 3425 | 40200.40300.41200.53000.55600.58200.139900.2279100 | INTERNAL PAINTING - 1ST COAT | 5d | 2027-04-02 | 2027-04-06 | 3422 |  | RGA -FINISHING | 7838072 |
| 3426 | 40200.40300.41200.53000.55600.58200.139900.2279200 | INTERNAL DOOR FIXING | 15d | 2027-04-05 | 2027-04-19 | 3425FS-2d |  | RGA -FINISHING | 7838082 |
| 3427 | 40200.40300.41200.53000.55600.58200.139900.2279300 | WIRING & SWITCH PLATE FIXING | 8d | 2027-04-16 | 2027-04-23 | 3426FS-4d |  | RGA -FINISHING | 7838092 |
| 3428 | 40200.40300.41200.53000.55600.58200.139900.2279400 | TOILET FALSE CEILING | 7d | 2027-04-24 | 2027-04-30 | 3427 |  | RGA -FINISHING | 7838102 |
| 3429 | 40200.40300.41200.53000.55600.58200.139900.2279500 | MAIN DOOR FRAME SHUTTER FIXING | 6d | 2028-01-09 | 2028-01-14 | 3726 |  | RGA -FINISHING | 7838112 |
| 3430 | 40200.40300.41200.53000.55600.58200.139900.2279600 | FINAL COAT PAINT | 8d | 2028-01-15 | 2028-01-22 | 3429 |  | RGA -FINISHING | 7838122 |

| ID | WBS | Task | Duration | Start | Finish | Predecessors | Constraint | Calendar | Unique_Task_ID |
| --- | --- | --- | --- | --- | --- | --- | --- | --- | --- |
| 3431 | 40200.40300.41200.53000.55600.58200.140000 | **8TH FLOOR** | 367d | 2027-01-21 | 2028-01-22 |  | start no earlier than 2027-01-21 | RGA -FINISHING | 7805082 |
| 3432 | 40200.40300.41200.53000.55600.58200.140000.2279700 | TOILET DADO TILE FIXING | 7d | 2027-03-03 | 2027-03-09 | 3193 |  | RGA -FINISHING | 7838132 |
| 3433 | 40200.40300.41200.53000.55600.58200.140000.2279800 | TOILET FLOORING WORK | 7d | 2027-03-10 | 2027-03-16 | 3432 |  | RGA -FINISHING | 7838142 |
| 3434 | 40200.40300.41200.53000.55600.58200.140000.2279900 | FIRE FIGHTING | 6d | 2027-01-21 | 2027-01-26 | 3192 |  | RGA -FINISHING | 7838152 |
| 3435 | 40200.40300.41200.53000.55600.58200.140000.2280000 | INTERNAL PAINTING - PUTTY / PRIMER APPLICATION | 6d | 2027-04-13 | 2027-04-18 | 3437 |  | RGA -FINISHING | 7838162 |
| 3436 | 40200.40300.41200.53000.55600.58200.140000.2280100 | FLAT FLOORING | 5d | 2027-03-17 | 2027-03-21 | 3433 |  | RGA -FINISHING | 7838172 |
| 3437 | 40200.40300.41200.53000.55600.58200.140000.2280200 | WINDOW FIXING | 12d | 2027-04-01 | 2027-04-12 | 3436FS+10d |  | RGA -FINISHING | 7838182 |
| 3438 | 40200.40300.41200.53000.55600.58200.140000.2280300 | INTERNAL PAINTING - 1ST COAT | 10d | 2027-04-19 | 2027-04-28 | 3435 |  | RGA -FINISHING | 7838192 |
| 3439 | 40200.40300.41200.53000.55600.58200.140000.2280400 | INTERNAL DOOR FIXING | 15d | 2027-04-27 | 2027-05-11 | 3438FS-2d |  | RGA -FINISHING | 7838202 |
| 3440 | 40200.40300.41200.53000.55600.58200.140000.2280500 | WIRING & SWITCH PLATE FIXING | 8d | 2027-05-08 | 2027-05-15 | 3439FS-4d |  | RGA -FINISHING | 7374775 |
| 3441 | 40200.40300.41200.53000.55600.58200.140000.2280600 | TOILET FALSE CEILING | 7d | 2027-05-16 | 2027-05-22 | 3440 |  | RGA -FINISHING | 7838212 |
| 3442 | 40200.40300.41200.53000.55600.58200.140000.2280700 | MAIN DOOR FRAME SHUTTER FIXING | 6d | 2028-01-09 | 2028-01-14 | 3734 |  | RGA -FINISHING | 7838222 |
| 3443 | 40200.40300.41200.53000.55600.58200.140000.2280800 | FINAL COAT PAINT | 8d | 2028-01-15 | 2028-01-22 | 3442 |  | RGA -FINISHING | 7838232 |
| 3444 | 40200.40300.41200.53000.55600.58200.140100 | **9TH FLOOR** | 354d | 2027-02-07 | 2028-01-26 |  | start no earlier than 2027-02-07 | RGA -FINISHING | 7805072 |
| 3445 | 40200.40300.41200.53000.55600.58200.140100.2280900 | TOILET DADO TILE FIXING | 7d | 2027-03-15 | 2027-03-21 | 3200 |  | RGA -FINISHING | 7838242 |
| 3446 | 40200.40300.41200.53000.55600.58200.140100.2281000 | TOILET FLOORING WORK | 7d | 2027-03-22 | 2027-03-28 | 3445 |  | RGA -FINISHING | 7838252 |
| 3447 | 40200.40300.41200.53000.55600.58200.140100.2281100 | FIRE FIGHTING | 6d | 2027-02-07 | 2027-02-12 | 3199 |  | RGA -FINISHING | 7838262 |
| 3448 | 40200.40300.41200.53000.55600.58200.140100.2281200 | INTERNAL PAINTING - PUTTY / PRIMER APPLICATION | 6d | 2027-04-25 | 2027-04-30 | 3450 |  | RGA -FINISHING | 7838272 |
| 3449 | 40200.40300.41200.53000.55600.58200.140100.2281300 | FLAT FLOORING | 5d | 2027-03-29 | 2027-04-02 | 3446 |  | RGA -FINISHING | 7838282 |
| 3450 | 40200.40300.41200.53000.55600.58200.140100.2281400 | WINDOW FIXING | 12d | 2027-04-13 | 2027-04-24 | 3449FS+10d |  | RGA -FINISHING | 7838292 |
| 3451 | 40200.40300.41200.53000.55600.58200.140100.2281500 | INTERNAL PAINTING - 1ST COAT | 2d | 2027-05-01 | 2027-05-02 | 3448 |  | RGA -FINISHING | 7838302 |
| 3452 | 40200.40300.41200.53000.55600.58200.140100.2281600 | INTERNAL DOOR FIXING | 15d | 2027-05-01 | 2027-05-15 | 3451FS-2d |  | RGA -FINISHING | 7838312 |
| 3453 | 40200.40300.41200.53000.55600.58200.140100.2281700 | WIRING & SWITCH PLATE FIXING | 8d | 2027-05-12 | 2027-05-19 | 3452FS-4d |  | RGA -FINISHING | 7838322 |
| 3454 | 40200.40300.41200.53000.55600.58200.140100.2281800 | TOILET FALSE CEILING | 7d | 2027-05-20 | 2027-05-26 | 3453 |  | RGA -FINISHING | 7838332 |
| 3455 | 40200.40300.41200.53000.55600.58200.140100.2281900 | MAIN DOOR FRAME SHUTTER FIXING | 6d | 2028-01-09 | 2028-01-14 | 3742 |  | RGA -FINISHING | 7838342 |
| 3456 | 40200.40300.41200.53000.55600.58200.140100.2282000 | FINAL COAT PAINT | 8d | 2028-01-19 | 2028-01-26 | 3455FS+4d |  | RGA -FINISHING | 7838352 |

| ID | WBS | Task | Duration | Start | Finish | Predecessors | Constraint | Calendar | Unique_Task_ID |
| --- | --- | --- | --- | --- | --- | --- | --- | --- | --- |
| 3457 | 40200.40300.41200.53000.55600.58200.140200 | **10TH FLOOR** | 336d | 2027-02-24 | 2028-01-25 |  | start no earlier than 2027-02-24 | RGA -FINISHING | 7805062 |
| 3458 | 40200.40300.41200.53000.55600.58200.140200.2282100 | TOILET DADO TILE FIXING | 7d | 2027-04-01 | 2027-04-07 | 3207 |  | RGA -FINISHING | 7838362 |
| 3459 | 40200.40300.41200.53000.55600.58200.140200.2282200 | TOILET FLOORING WORK | 7d | 2027-04-08 | 2027-04-14 | 3458 |  | RGA -FINISHING | 7838372 |
| 3460 | 40200.40300.41200.53000.55600.58200.140200.2282300 | FIRE FIGHTING | 6d | 2027-02-24 | 2027-03-01 | 3206 |  | RGA -FINISHING | 7838382 |
| 3461 | 40200.40300.41200.53000.55600.58200.140200.2282400 | INTERNAL PAINTING - PUTTY / PRIMER APPLICATION | 6d | 2027-05-12 | 2027-05-17 | 3463 |  | RGA -FINISHING | 7838392 |
| 3462 | 40200.40300.41200.53000.55600.58200.140200.2282500 | FLAT FLOORING | 5d | 2027-04-15 | 2027-04-19 | 3459 |  | RGA -FINISHING | 7838402 |
| 3463 | 40200.40300.41200.53000.55600.58200.140200.2282600 | WINDOW FIXING | 12d | 2027-04-30 | 2027-05-11 | 3462FS+10d |  | RGA -FINISHING | 7838412 |
| 3464 | 40200.40300.41200.53000.55600.58200.140200.2282700 | INTERNAL PAINTING - 1ST COAT | 12d | 2027-05-18 | 2027-05-29 | 3461 |  | RGA -FINISHING | 7838422 |
| 3465 | 40200.40300.41200.53000.55600.58200.140200.2282800 | INTERNAL DOOR FIXING | 15d | 2027-05-28 | 2027-06-11 | 3464FS-2d |  | RGA -FINISHING | 7838432 |
| 3466 | 40200.40300.41200.53000.55600.58200.140200.2282900 | WIRING & SWITCH PLATE FIXING | 8d | 2027-06-08 | 2027-06-15 | 3465FS-4d |  | RGA -FINISHING | 7838442 |
| 3467 | 40200.40300.41200.53000.55600.58200.140200.2283000 | TOILET FALSE CEILING | 7d | 2027-06-16 | 2027-06-22 | 3466 |  | RGA -FINISHING | 7838452 |
| 3468 | 40200.40300.41200.53000.55600.58200.140200.2283100 | MAIN DOOR FRAME SHUTTER FIXING | 6d | 2028-01-12 | 2028-01-17 | 3750 |  | RGA -FINISHING | 7838462 |
| 3469 | 40200.40300.41200.53000.55600.58200.140200.2283200 | FINAL COAT PAINT | 8d | 2028-01-18 | 2028-01-25 | 3468 |  | RGA -FINISHING | 7838472 |
| 3470 | 40200.40300.41200.53000.55600.58200.140300 | **11TH FLOOR** | 319d | 2027-03-13 | 2028-01-25 |  | start no earlier than 2027-03-13 | RGA -FINISHING | 7805052 |
| 3471 | 40200.40300.41200.53000.55600.58200.140300.2283300 | TOILET DADO TILE FIXING | 7d | 2027-04-18 | 2027-04-24 | 3214 |  | RGA -FINISHING | 7838482 |
| 3472 | 40200.40300.41200.53000.55600.58200.140300.2283400 | TOILET FLOORING WORK | 7d | 2027-04-25 | 2027-05-01 | 3471 |  | RGA -FINISHING | 7838492 |
| 3473 | 40200.40300.41200.53000.55600.58200.140300.2283500 | FIRE FIGHTING | 6d | 2027-03-13 | 2027-03-18 | 3213 |  | RGA -FINISHING | 7838502 |
| 3474 | 40200.40300.41200.53000.55600.58200.140300.2283600 | INTERNAL PAINTING - PUTTY / PRIMER APPLICATION | 6d | 2027-05-29 | 2027-06-03 | 3476 |  | RGA -FINISHING | 7838512 |
| 3475 | 40200.40300.41200.53000.55600.58200.140300.2283700 | FLAT FLOORING | 5d | 2027-05-02 | 2027-05-06 | 3472 |  | RGA -FINISHING | 7838522 |
| 3476 | 40200.40300.41200.53000.55600.58200.140300.2283800 | WINDOW FIXING | 12d | 2027-05-17 | 2027-05-28 | 3475FS+10d |  | RGA -FINISHING | 7838532 |
| 3477 | 40200.40300.41200.53000.55600.58200.140300.2283900 | INTERNAL PAINTING - 1ST COAT | 12d | 2027-06-04 | 2027-06-15 | 3474 |  | RGA -FINISHING | 7838542 |
| 3478 | 40200.40300.41200.53000.55600.58200.140300.2284000 | INTERNAL DOOR FIXING | 15d | 2027-06-14 | 2027-06-28 | 3477FS-2d |  | RGA -FINISHING | 7838552 |
| 3479 | 40200.40300.41200.53000.55600.58200.140300.2284100 | WIRING & SWITCH PLATE FIXING | 8d | 2027-06-25 | 2027-07-02 | 3478FS-4d |  | RGA -FINISHING | 7838562 |
| 3480 | 40200.40300.41200.53000.55600.58200.140300.2284200 | TOILET FALSE CEILING | 7d | 2027-07-03 | 2027-07-09 | 3479 |  | RGA -FINISHING | 7838572 |
| 3481 | 40200.40300.41200.53000.55600.58200.140300.2284300 | MAIN DOOR FRAME SHUTTER FIXING | 6d | 2028-01-12 | 2028-01-17 | 3758 |  | RGA -FINISHING | 7838582 |
| 3482 | 40200.40300.41200.53000.55600.58200.140300.2284400 | FINAL COAT PAINT | 8d | 2028-01-18 | 2028-01-25 | 3481 |  | RGA -FINISHING | 7838592 |

| ID | WBS | Task | Duration | Start | Finish | Predecessors | Constraint | Calendar | Unique_Task_ID |
| --- | --- | --- | --- | --- | --- | --- | --- | --- | --- |
| 3483 | 40200.40300.41200.53000.55600.58200.140400 | **12TH FLOOR** | 302d | 2027-03-30 | 2028-01-25 |  | start no earlier than 2027-03-30 | RGA -FINISHING | 7805042 |
| 3484 | 40200.40300.41200.53000.55600.58200.140400.2284500 | TOILET DADO TILE FIXING | 7d | 2027-04-27 | 2027-05-03 | 3221 |  | RGA -FINISHING | 7838602 |
| 3485 | 40200.40300.41200.53000.55600.58200.140400.2284600 | TOILET FLOORING WORK | 7d | 2027-04-27 | 2027-05-03 | 3484FF |  | RGA -FINISHING | 7838612 |
| 3486 | 40200.40300.41200.53000.55600.58200.140400.2284700 | FIRE FIGHTING | 6d | 2027-03-30 | 2027-04-04 | 3220 |  | RGA -FINISHING | 7838622 |
| 3487 | 40200.40300.41200.53000.55600.58200.140400.2284800 | INTERNAL PAINTING - PUTTY / PRIMER APPLICATION | 6d | 2027-05-31 | 2027-06-05 | 3489 |  | RGA -FINISHING | 7838632 |
| 3488 | 40200.40300.41200.53000.55600.58200.140400.2284900 | FLAT FLOORING | 5d | 2027-05-04 | 2027-05-08 | 3485 |  | RGA -FINISHING | 7838642 |
| 3489 | 40200.40300.41200.53000.55600.58200.140400.2285000 | WINDOW FIXING | 12d | 2027-05-19 | 2027-05-30 | 3488FS+10d |  | RGA -FINISHING | 7838652 |
| 3490 | 40200.40300.41200.53000.55600.58200.140400.2285100 | INTERNAL PAINTING - 1ST COAT | 12d | 2027-06-06 | 2027-06-17 | 3487 |  | RGA -FINISHING | 7838662 |
| 3491 | 40200.40300.41200.53000.55600.58200.140400.2285200 | INTERNAL DOOR FIXING | 15d | 2027-06-16 | 2027-06-30 | 3490FS-2d |  | RGA -FINISHING | 7838672 |
| 3492 | 40200.40300.41200.53000.55600.58200.140400.2285300 | WIRING & SWITCH PLATE FIXING | 8d | 2027-06-27 | 2027-07-04 | 3491FS-4d |  | RGA -FINISHING | 7838682 |
| 3493 | 40200.40300.41200.53000.55600.58200.140400.2285400 | TOILET FALSE CEILING | 7d | 2027-07-05 | 2027-07-11 | 3492 |  | RGA -FINISHING | 7838692 |
| 3494 | 40200.40300.41200.53000.55600.58200.140400.2285500 | MAIN DOOR FRAME SHUTTER FIXING | 6d | 2028-01-12 | 2028-01-17 | 3766 |  | RGA -FINISHING | 7838702 |
| 3495 | 40200.40300.41200.53000.55600.58200.140400.2285600 | FINAL COAT PAINT | 8d | 2028-01-18 | 2028-01-25 | 3494 |  | RGA -FINISHING | 7838712 |
| 3496 | 40200.40300.41200.53000.55600.58200.140500 | **13TH FLOOR** | 285d | 2027-04-16 | 2028-01-25 |  | start no earlier than 2027-04-16 | RGA -FINISHING | 7805032 |
| 3497 | 40200.40300.41200.53000.55600.58200.140500.2285700 | TOILET DADO TILE FIXING | 10d | 2027-06-07 | 2027-06-16 | 3228 |  | RGA -FINISHING | 7838722 |
| 3498 | 40200.40300.41200.53000.55600.58200.140500.2285800 | TOILET FLOORING WORK | 7d | 2027-06-17 | 2027-06-23 | 3497 |  | RGA -FINISHING | 7838732 |
| 3499 | 40200.40300.41200.53000.55600.58200.140500.2285900 | FIRE FIGHTING | 8d | 2027-04-16 | 2027-04-23 | 3227 |  | RGA -FINISHING | 7838742 |
| 3500 | 40200.40300.41200.53000.55600.58200.140500.2286000 | INTERNAL PAINTING - PUTTY / PRIMER APPLICATION | 5d | 2027-07-16 | 2027-07-20 | 3502 |  | RGA -FINISHING | 7838752 |
| 3501 | 40200.40300.41200.53000.55600.58200.140500.2286100 | FLAT FLOORING | 7d | 2027-06-24 | 2027-06-30 | 3498 |  | RGA -FINISHING | 7838762 |
| 3502 | 40200.40300.41200.53000.55600.58200.140500.2286200 | WINDOW FIXING | 5d | 2027-07-11 | 2027-07-15 | 3501FS+10d |  | RGA -FINISHING | 7838772 |
| 3503 | 40200.40300.41200.53000.55600.58200.140500.2286300 | INTERNAL PAINTING - 1ST COAT | 4d | 2027-07-21 | 2027-07-24 | 3500 |  | RGA -FINISHING | 7838782 |
| 3504 | 40200.40300.41200.53000.55600.58200.140500.2286400 | INTERNAL DOOR FIXING | 15d | 2027-07-23 | 2027-08-06 | 3503FS-2d |  | RGA -FINISHING | 7838792 |
| 3505 | 40200.40300.41200.53000.55600.58200.140500.2286500 | WIRING & SWITCH PLATE FIXING | 8d | 2027-08-03 | 2027-08-10 | 3504FS-4d |  | RGA -FINISHING | 7838802 |
| 3506 | 40200.40300.41200.53000.55600.58200.140500.2286600 | TOILET FALSE CEILING | 7d | 2027-08-11 | 2027-08-17 | 3505 |  | RGA -FINISHING | 7838812 |
| 3507 | 40200.40300.41200.53000.55600.58200.140500.2286700 | MAIN DOOR FRAME SHUTTER FIXING | 6d | 2028-01-12 | 2028-01-17 | 3774 |  | RGA -FINISHING | 7838822 |
| 3508 | 40200.40300.41200.53000.55600.58200.140500.2286800 | FINAL COAT PAINT | 8d | 2028-01-18 | 2028-01-25 | 3507 |  | RGA -FINISHING | 7838832 |

| ID | WBS | Task | Duration | Start | Finish | Predecessors | Constraint | Calendar | Unique_Task_ID |
| --- | --- | --- | --- | --- | --- | --- | --- | --- | --- |
| 3509 | 40200.40300.41200.53000.55600.58200.140600 | **14TH FLOOR** | 271d | 2027-05-03 | 2028-01-28 |  | start no earlier than 2027-05-03 | RGA -FINISHING | 7805022 |
| 3510 | 40200.40300.41200.53000.55600.58200.140600.2286900 | TOILET DADO TILE FIXING | 10d | 2027-06-24 | 2027-07-03 | 3235 |  | RGA -FINISHING | 7838842 |
| 3511 | 40200.40300.41200.53000.55600.58200.140600.2287000 | TOILET FLOORING WORK | 7d | 2027-07-04 | 2027-07-10 | 3510 |  | RGA -FINISHING | 7838852 |
| 3512 | 40200.40300.41200.53000.55600.58200.140600.2287100 | FIRE FIGHTING | 8d | 2027-05-03 | 2027-05-10 | 3234 |  | RGA -FINISHING | 7838862 |
| 3513 | 40200.40300.41200.53000.55600.58200.140600.2287200 | INTERNAL PAINTING - PUTTY / PRIMER APPLICATION | 5d | 2027-08-02 | 2027-08-06 | 3515 |  | RGA -FINISHING | 7838872 |
| 3514 | 40200.40300.41200.53000.55600.58200.140600.2287300 | FLAT FLOORING | 7d | 2027-07-11 | 2027-07-17 | 3511 |  | RGA -FINISHING | 7838882 |
| 3515 | 40200.40300.41200.53000.55600.58200.140600.2287400 | WINDOW FIXING | 5d | 2027-07-28 | 2027-08-01 | 3514FS+10d |  | RGA -FINISHING | 7838892 |
| 3516 | 40200.40300.41200.53000.55600.58200.140600.2287500 | INTERNAL PAINTING - 1ST COAT | 4d | 2027-08-07 | 2027-08-10 | 3513 |  | RGA -FINISHING | 7838902 |
| 3517 | 40200.40300.41200.53000.55600.58200.140600.2287600 | INTERNAL DOOR FIXING | 15d | 2027-08-09 | 2027-08-23 | 3516FS-2d |  | RGA -FINISHING | 7838912 |
| 3518 | 40200.40300.41200.53000.55600.58200.140600.2287700 | WIRING & SWITCH PLATE FIXING | 8d | 2027-08-20 | 2027-08-27 | 3517FS-4d |  | RGA -FINISHING | 7838922 |
| 3519 | 40200.40300.41200.53000.55600.58200.140600.2287800 | TOILET FALSE CEILING | 7d | 2027-08-28 | 2027-09-03 | 3518 |  | RGA -FINISHING | 7838932 |
| 3520 | 40200.40300.41200.53000.55600.58200.140600.2287900 | MAIN DOOR FRAME SHUTTER FIXING | 6d | 2028-01-15 | 2028-01-20 | 3782 |  | RGA -FINISHING | 7838942 |
| 3521 | 40200.40300.41200.53000.55600.58200.140600.2288000 | FINAL COAT PAINT | 8d | 2028-01-21 | 2028-01-28 | 3520 |  | RGA -FINISHING | 7838952 |
| 3522 | 40200.40300.41200.53000.55600.58200.140700 | **15TH FLOOR** | 254d | 2027-05-20 | 2028-01-28 |  | start no earlier than 2027-05-20 | RGA -FINISHING | 7805012 |
| 3523 | 40200.40300.41200.53000.55600.58200.140700.2288100 | TOILET DADO TILE FIXING | 10d | 2027-07-11 | 2027-07-20 | 3242 |  | RGA -FINISHING | 7375535 |
| 3524 | 40200.40300.41200.53000.55600.58200.140700.2288200 | TOILET FLOORING WORK | 7d | 2027-07-21 | 2027-07-27 | 3523 |  | RGA -FINISHING | 7375545 |
| 3525 | 40200.40300.41200.53000.55600.58200.140700.2288300 | FIRE FIGHTING | 8d | 2027-05-20 | 2027-05-27 | 3241 |  | RGA -FINISHING | 7375555 |
| 3526 | 40200.40300.41200.53000.55600.58200.140700.2288400 | INTERNAL PAINTING - PUTTY / PRIMER APPLICATION | 5d | 2027-08-19 | 2027-08-23 | 3528 |  | RGA -FINISHING | 7838962 |
| 3527 | 40200.40300.41200.53000.55600.58200.140700.2288500 | FLAT FLOORING | 7d | 2027-07-28 | 2027-08-03 | 3524 |  | RGA -FINISHING | 7838972 |
| 3528 | 40200.40300.41200.53000.55600.58200.140700.2288600 | WINDOW FIXING | 5d | 2027-08-14 | 2027-08-18 | 3527FS+10d |  | RGA -FINISHING | 7838982 |
| 3529 | 40200.40300.41200.53000.55600.58200.140700.2288700 | INTERNAL PAINTING - 1ST COAT | 4d | 2027-08-24 | 2027-08-27 | 3526 |  | RGA -FINISHING | 7838992 |
| 3530 | 40200.40300.41200.53000.55600.58200.140700.2288800 | INTERNAL DOOR FIXING | 15d | 2027-08-26 | 2027-09-09 | 3529FS-2d |  | RGA -FINISHING | 7839002 |
| 3531 | 40200.40300.41200.53000.55600.58200.140700.2288900 | WIRING & SWITCH PLATE FIXING | 8d | 2027-09-06 | 2027-09-13 | 3530FS-4d |  | RGA -FINISHING | 7839012 |
| 3532 | 40200.40300.41200.53000.55600.58200.140700.2289000 | TOILET FALSE CEILING | 7d | 2027-09-14 | 2027-09-20 | 3531 |  | RGA -FINISHING | 7839022 |
| 3533 | 40200.40300.41200.53000.55600.58200.140700.2289100 | MAIN DOOR FRAME SHUTTER FIXING | 6d | 2028-01-15 | 2028-01-20 | 3790 |  | RGA -FINISHING | 7839032 |
| 3534 | 40200.40300.41200.53000.55600.58200.140700.2289200 | FINAL COAT PAINT | 8d | 2028-01-21 | 2028-01-28 | 3533 |  | RGA -FINISHING | 7839042 |

| ID | WBS | Task | Duration | Start | Finish | Predecessors | Constraint | Calendar | Unique_Task_ID |
| --- | --- | --- | --- | --- | --- | --- | --- | --- | --- |
| 3535 | 40200.40300.41200.53000.55600.58200.140800 | **16TH FLOOR** | 237d | 2027-06-06 | 2028-01-28 |  | start no earlier than 2027-06-06 | RGA -FINISHING | 7805002 |
| 3536 | 40200.40300.41200.53000.55600.58200.140800.2289300 | TOILET DADO TILE FIXING | 10d | 2027-07-28 | 2027-08-06 | 3249 |  | RGA -FINISHING | 7839052 |
| 3537 | 40200.40300.41200.53000.55600.58200.140800.2289400 | TOILET FLOORING WORK | 7d | 2027-08-07 | 2027-08-13 | 3536 |  | RGA -FINISHING | 7839062 |
| 3538 | 40200.40300.41200.53000.55600.58200.140800.2289500 | FIRE FIGHTING | 8d | 2027-06-06 | 2027-06-13 | 3248 |  | RGA -FINISHING | 7839072 |
| 3539 | 40200.40300.41200.53000.55600.58200.140800.2289600 | INTERNAL PAINTING - PUTTY / PRIMER APPLICATION | 5d | 2027-09-05 | 2027-09-09 | 3541 |  | RGA -FINISHING | 7839082 |
| 3540 | 40200.40300.41200.53000.55600.58200.140800.2289700 | FLAT FLOORING | 7d | 2027-08-14 | 2027-08-20 | 3537 |  | RGA -FINISHING | 7839092 |
| 3541 | 40200.40300.41200.53000.55600.58200.140800.2289800 | WINDOW FIXING | 5d | 2027-08-31 | 2027-09-04 | 3540FS+10d |  | RGA -FINISHING | 7839102 |
| 3542 | 40200.40300.41200.53000.55600.58200.140800.2289900 | INTERNAL PAINTING - 1ST COAT | 4d | 2027-09-10 | 2027-09-13 | 3539 |  | RGA -FINISHING | 7839112 |
| 3543 | 40200.40300.41200.53000.55600.58200.140800.2290000 | INTERNAL DOOR FIXING | 15d | 2027-09-12 | 2027-09-26 | 3542FS-2d |  | RGA -FINISHING | 7839122 |
| 3544 | 40200.40300.41200.53000.55600.58200.140800.2290100 | WIRING & SWITCH PLATE FIXING | 8d | 2027-09-23 | 2027-09-30 | 3543FS-4d |  | RGA -FINISHING | 7839132 |
| 3545 | 40200.40300.41200.53000.55600.58200.140800.2290200 | TOILET FALSE CEILING | 7d | 2027-10-01 | 2027-10-07 | 3544 |  | RGA -FINISHING | 7839142 |
| 3546 | 40200.40300.41200.53000.55600.58200.140800.2290300 | MAIN DOOR FRAME SHUTTER FIXING | 6d | 2028-01-15 | 2028-01-20 | 3798 |  | RGA -FINISHING | 7839152 |
| 3547 | 40200.40300.41200.53000.55600.58200.140800.2290400 | FINAL COAT PAINT | 8d | 2028-01-21 | 2028-01-28 | 3546 |  | RGA -FINISHING | 7839162 |
| 3548 | 40200.40300.41200.53000.55600.58200.140900 | **17TH FLOOR** | 220d | 2027-06-23 | 2028-01-28 |  | start no earlier than 2027-06-23 | RGA -FINISHING | 7804992 |
| 3549 | 40200.40300.41200.53000.55600.58200.140900.2290500 | TOILET DADO TILE FIXING | 10d | 2027-08-14 | 2027-08-23 | 3256 |  | RGA -FINISHING | 7839172 |
| 3550 | 40200.40300.41200.53000.55600.58200.140900.2290600 | TOILET FLOORING WORK | 7d | 2027-08-24 | 2027-08-30 | 3549 |  | RGA -FINISHING | 7375785 |
| 3551 | 40200.40300.41200.53000.55600.58200.140900.2290700 | FIRE FIGHTING | 8d | 2027-06-23 | 2027-06-30 | 3255 |  | RGA -FINISHING | 7375795 |
| 3552 | 40200.40300.41200.53000.55600.58200.140900.2290800 | INTERNAL PAINTING - PUTTY / PRIMER APPLICATION | 5d | 2027-09-22 | 2027-09-26 | 3554 |  | RGA -FINISHING | 7375805 |
| 3553 | 40200.40300.41200.53000.55600.58200.140900.2290900 | FLAT FLOORING | 7d | 2027-08-31 | 2027-09-06 | 3550 |  | RGA -FINISHING | 7375815 |
| 3554 | 40200.40300.41200.53000.55600.58200.140900.2291000 | WINDOW FIXING | 5d | 2027-09-17 | 2027-09-21 | 3553FS+10d |  | RGA -FINISHING | 7375825 |
| 3555 | 40200.40300.41200.53000.55600.58200.140900.2291100 | INTERNAL PAINTING - 1ST COAT | 4d | 2027-09-27 | 2027-09-30 | 3552 |  | RGA -FINISHING | 7375835 |
| 3556 | 40200.40300.41200.53000.55600.58200.140900.2291200 | INTERNAL DOOR FIXING | 15d | 2027-09-29 | 2027-10-13 | 3555FS-2d |  | RGA -FINISHING | 7375845 |
| 3557 | 40200.40300.41200.53000.55600.58200.140900.2291300 | WIRING & SWITCH PLATE FIXING | 8d | 2027-10-10 | 2027-10-17 | 3556FS-4d |  | RGA -FINISHING | 7375855 |
| 3558 | 40200.40300.41200.53000.55600.58200.140900.2291400 | TOILET FALSE CEILING | 7d | 2027-10-18 | 2027-10-24 | 3557 |  | RGA -FINISHING | 7375865 |
| 3559 | 40200.40300.41200.53000.55600.58200.140900.2291500 | MAIN DOOR FRAME SHUTTER FIXING | 6d | 2028-01-15 | 2028-01-20 | 3806 |  | RGA -FINISHING | 7375875 |
| 3560 | 40200.40300.41200.53000.55600.58200.140900.2291600 | FINAL COAT PAINT | 8d | 2028-01-21 | 2028-01-28 | 3559 |  | RGA -FINISHING | 7375885 |

| ID | WBS | Task | Duration | Start | Finish | Predecessors | Constraint | Calendar | Unique_Task_ID |
| --- | --- | --- | --- | --- | --- | --- | --- | --- | --- |
| 3561 | 40200.40300.41200.53000.55600.58200.141000 | **18TH FLOOR** | 206d | 2027-07-10 | 2028-01-31 |  | start no earlier than 2027-07-10 | RGA -FINISHING | 7804982 |
| 3562 | 40200.40300.41200.53000.55600.58200.141000.2291700 | TOILET DADO TILE FIXING | 10d | 2027-08-31 | 2027-09-09 | 3263 |  | RGA -FINISHING | 7375895 |
| 3563 | 40200.40300.41200.53000.55600.58200.141000.2291800 | TOILET FLOORING WORK | 7d | 2027-09-10 | 2027-09-16 | 3562 |  | RGA -FINISHING | 7375905 |
| 3564 | 40200.40300.41200.53000.55600.58200.141000.2291900 | FIRE FIGHTING | 8d | 2027-07-10 | 2027-07-17 | 3262 |  | RGA -FINISHING | 7375915 |
| 3565 | 40200.40300.41200.53000.55600.58200.141000.2292000 | INTERNAL PAINTING - PUTTY / PRIMER APPLICATION | 5d | 2027-10-09 | 2027-10-13 | 3567 |  | RGA -FINISHING | 7375925 |
| 3566 | 40200.40300.41200.53000.55600.58200.141000.2292100 | FLAT FLOORING | 7d | 2027-09-17 | 2027-09-23 | 3563 |  | RGA -FINISHING | 7375935 |
| 3567 | 40200.40300.41200.53000.55600.58200.141000.2292200 | WINDOW FIXING | 5d | 2027-10-04 | 2027-10-08 | 3566FS+10d |  | RGA -FINISHING | 7375945 |
| 3568 | 40200.40300.41200.53000.55600.58200.141000.2292300 | INTERNAL PAINTING - 1ST COAT | 4d | 2027-10-14 | 2027-10-17 | 3565 |  | RGA -FINISHING | 7375955 |
| 3569 | 40200.40300.41200.53000.55600.58200.141000.2292400 | INTERNAL DOOR FIXING | 15d | 2027-10-16 | 2027-10-30 | 3568FS-2d |  | RGA -FINISHING | 7375965 |
| 3570 | 40200.40300.41200.53000.55600.58200.141000.2292500 | WIRING & SWITCH PLATE FIXING | 8d | 2027-10-27 | 2027-11-03 | 3569FS-4d |  | RGA -FINISHING | 7375975 |
| 3571 | 40200.40300.41200.53000.55600.58200.141000.2292600 | TOILET FALSE CEILING | 7d | 2027-11-04 | 2027-11-10 | 3570 |  | RGA -FINISHING | 7375985 |
| 3572 | 40200.40300.41200.53000.55600.58200.141000.2292700 | MAIN DOOR FRAME SHUTTER FIXING | 6d | 2028-01-18 | 2028-01-23 | 3814 |  | RGA -FINISHING | 7375995 |
| 3573 | 40200.40300.41200.53000.55600.58200.141000.2292800 | FINAL COAT PAINT | 8d | 2028-01-24 | 2028-01-31 | 3572 |  | RGA -FINISHING | 7839182 |
| 3574 | 40200.40300.41200.53000.55600.58200.141100 | **19TH FLOOR** | 191d | 2027-07-25 | 2028-01-31 |  | start no earlier than 2027-07-25 | RGA -FINISHING | 7804972 |
| 3575 | 40200.40300.41200.53000.55600.58200.141100.2292900 | TOILET DADO TILE FIXING | 10d | 2027-09-15 | 2027-09-24 | 3270 |  | RGA -FINISHING | 7839192 |
| 3576 | 40200.40300.41200.53000.55600.58200.141100.2293000 | TOILET FLOORING WORK | 7d | 2027-09-25 | 2027-10-01 | 3575 |  | RGA -FINISHING | 7839202 |
| 3577 | 40200.40300.41200.53000.55600.58200.141100.2293100 | FIRE FIGHTING | 8d | 2027-07-25 | 2027-08-01 | 3269 |  | RGA -FINISHING | 7839212 |
| 3578 | 40200.40300.41200.53000.55600.58200.141100.2293200 | INTERNAL PAINTING - PUTTY / PRIMER APPLICATION | 5d | 2027-10-24 | 2027-10-28 | 3580 |  | RGA -FINISHING | 7839222 |
| 3579 | 40200.40300.41200.53000.55600.58200.141100.2293300 | FLAT FLOORING | 7d | 2027-10-02 | 2027-10-08 | 3576 |  | RGA -FINISHING | 7839232 |
| 3580 | 40200.40300.41200.53000.55600.58200.141100.2293400 | WINDOW FIXING | 5d | 2027-10-19 | 2027-10-23 | 3579FS+10d |  | RGA -FINISHING | 7839242 |
| 3581 | 40200.40300.41200.53000.55600.58200.141100.2293500 | INTERNAL PAINTING - 1ST COAT | 4d | 2027-10-29 | 2027-11-01 | 3578 |  | RGA -FINISHING | 7839252 |
| 3582 | 40200.40300.41200.53000.55600.58200.141100.2293600 | INTERNAL DOOR FIXING | 15d | 2027-10-31 | 2027-11-14 | 3581FS-2d |  | RGA -FINISHING | 7839262 |
| 3583 | 40200.40300.41200.53000.55600.58200.141100.2293700 | WIRING & SWITCH PLATE FIXING | 8d | 2027-11-11 | 2027-11-18 | 3582FS-4d |  | RGA -FINISHING | 7839272 |
| 3584 | 40200.40300.41200.53000.55600.58200.141100.2293800 | TOILET FALSE CEILING | 7d | 2027-11-19 | 2027-11-25 | 3583 |  | RGA -FINISHING | 7839282 |
| 3585 | 40200.40300.41200.53000.55600.58200.141100.2293900 | MAIN DOOR FRAME SHUTTER FIXING | 6d | 2028-01-18 | 2028-01-23 | 3822 |  | RGA -FINISHING | 7839292 |
| 3586 | 40200.40300.41200.53000.55600.58200.141100.2294000 | FINAL COAT PAINT | 8d | 2028-01-24 | 2028-01-31 | 3585 |  | RGA -FINISHING | 7839302 |

| ID | WBS | Task | Duration | Start | Finish | Predecessors | Constraint | Calendar | Unique_Task_ID |
| --- | --- | --- | --- | --- | --- | --- | --- | --- | --- |
| 3587 | 40200.40300.41200.53000.55600.58200.141200 | **20TH FLOOR** | 176d | 2027-08-09 | 2028-01-31 |  | start no earlier than 2027-08-09 | RGA -FINISHING | 7804962 |
| 3588 | 40200.40300.41200.53000.55600.58200.141200.2294100 | TOILET DADO TILE FIXING | 10d | 2027-09-30 | 2027-10-09 | 3277 |  | RGA -FINISHING | 7839312 |
| 3589 | 40200.40300.41200.53000.55600.58200.141200.2294200 | TOILET FLOORING WORK | 7d | 2027-10-10 | 2027-10-16 | 3588 |  | RGA -FINISHING | 7839322 |
| 3590 | 40200.40300.41200.53000.55600.58200.141200.2294300 | FIRE FIGHTING | 8d | 2027-08-09 | 2027-08-16 | 3276 |  | RGA -FINISHING | 7839332 |
| 3591 | 40200.40300.41200.53000.55600.58200.141200.2294400 | INTERNAL PAINTING - PUTTY / PRIMER APPLICATION | 5d | 2027-11-08 | 2027-11-12 | 3593 |  | RGA -FINISHING | 7839342 |
| 3592 | 40200.40300.41200.53000.55600.58200.141200.2294500 | FLAT FLOORING | 7d | 2027-10-17 | 2027-10-23 | 3589 |  | RGA -FINISHING | 7839352 |
| 3593 | 40200.40300.41200.53000.55600.58200.141200.2294600 | WINDOW FIXING | 5d | 2027-11-03 | 2027-11-07 | 3592FS+10d |  | RGA -FINISHING | 7839362 |
| 3594 | 40200.40300.41200.53000.55600.58200.141200.2294700 | INTERNAL PAINTING - 1ST COAT | 4d | 2027-11-13 | 2027-11-16 | 3591 |  | RGA -FINISHING | 7839372 |
| 3595 | 40200.40300.41200.53000.55600.58200.141200.2294800 | INTERNAL DOOR FIXING | 15d | 2027-11-15 | 2027-11-29 | 3594FS-2d |  | RGA -FINISHING | 7839382 |
| 3596 | 40200.40300.41200.53000.55600.58200.141200.2294900 | WIRING & SWITCH PLATE FIXING | 8d | 2027-11-26 | 2027-12-03 | 3595FS-4d |  | RGA -FINISHING | 7839392 |
| 3597 | 40200.40300.41200.53000.55600.58200.141200.2295000 | TOILET FALSE CEILING | 7d | 2027-12-04 | 2027-12-10 | 3596 |  | RGA -FINISHING | 7839402 |
| 3598 | 40200.40300.41200.53000.55600.58200.141200.2295100 | MAIN DOOR FRAME SHUTTER FIXING | 6d | 2028-01-18 | 2028-01-23 | 3830 |  | RGA -FINISHING | 7839412 |
| 3599 | 40200.40300.41200.53000.55600.58200.141200.2295200 | FINAL COAT PAINT | 8d | 2028-01-24 | 2028-01-31 | 3598 |  | RGA -FINISHING | 7839422 |
| 3600 | 40200.40300.41200.53000.55600.58200.141300 | **21st FLOOR** | 161d | 2027-08-24 | 2028-01-31 |  | start no earlier than 2027-08-24 | RGA -FINISHING | 7804952 |
| 3601 | 40200.40300.41200.53000.55600.58200.141300.2295300 | TOILET DADO TILE FIXING | 10d | 2027-10-15 | 2027-10-24 | 3284 |  | RGA -FINISHING | 7839432 |
| 3602 | 40200.40300.41200.53000.55600.58200.141300.2295400 | TOILET FLOORING WORK | 7d | 2027-10-25 | 2027-10-31 | 3601 |  | RGA -FINISHING | 7839442 |
| 3603 | 40200.40300.41200.53000.55600.58200.141300.2295500 | FIRE FIGHTING | 8d | 2027-08-24 | 2027-08-31 | 3283 |  | RGA -FINISHING | 7839452 |
| 3604 | 40200.40300.41200.53000.55600.58200.141300.2295600 | INTERNAL PAINTING - PUTTY / PRIMER APPLICATION | 15d | 2027-11-23 | 2027-12-07 | 3606 |  | RGA -FINISHING | 7839462 |
| 3605 | 40200.40300.41200.53000.55600.58200.141300.2295700 | FLAT FLOORING | 5d | 2027-11-01 | 2027-11-05 | 3602 |  | RGA -FINISHING | 7839472 |
| 3606 | 40200.40300.41200.53000.55600.58200.141300.2295800 | WINDOW FIXING | 7d | 2027-11-16 | 2027-11-22 | 3605FS+10d |  | RGA -FINISHING | 7839482 |
| 3607 | 40200.40300.41200.53000.55600.58200.141300.2295900 | INTERNAL PAINTING - 1ST COAT | 5d | 2027-12-08 | 2027-12-12 | 3604 |  | RGA -FINISHING | 7839492 |
| 3608 | 40200.40300.41200.53000.55600.58200.141300.2296000 | INTERNAL DOOR FIXING | 4d | 2027-12-11 | 2027-12-14 | 3607FS-2d |  | RGA -FINISHING | 7839502 |
| 3609 | 40200.40300.41200.53000.55600.58200.141300.2296100 | WIRING & SWITCH PLATE FIXING | 8d | 2027-12-11 | 2027-12-18 | 3608FS-4d |  | RGA -FINISHING | 7839512 |
| 3610 | 40200.40300.41200.53000.55600.58200.141300.2296200 | TOILET FALSE CEILING | 7d | 2027-12-19 | 2027-12-25 | 3609 |  | RGA -FINISHING | 7839522 |
| 3611 | 40200.40300.41200.53000.55600.58200.141300.2296300 | MAIN DOOR FRAME SHUTTER FIXING | 6d | 2028-01-18 | 2028-01-23 | 3838 |  | RGA -FINISHING | 7839532 |
| 3612 | 40200.40300.41200.53000.55600.58200.141300.2296400 | FINAL COAT PAINT | 8d | 2028-01-24 | 2028-01-31 | 3611 |  | RGA -FINISHING | 7839542 |

| ID | WBS | Task | Duration | Start | Finish | Predecessors | Constraint | Calendar | Unique_Task_ID |
| --- | --- | --- | --- | --- | --- | --- | --- | --- | --- |
| 3613 | 40200.40300.41200.53000.55600.58200.141400 | **22nd FLOOR** | 149d | 2027-09-08 | 2028-02-03 |  | start no earlier than 2027-09-08 | RGA -FINISHING | 7804942 |
| 3614 | 40200.40300.41200.53000.55600.58200.141400.2296500 | TOILET DADO TILE FIXING | 10d | 2027-10-30 | 2027-11-08 | 3291 |  | RGA -FINISHING | 7839552 |
| 3615 | 40200.40300.41200.53000.55600.58200.141400.2296600 | TOILET FLOORING WORK | 7d | 2027-11-09 | 2027-11-15 | 3614 |  | RGA -FINISHING | 7839562 |
| 3616 | 40200.40300.41200.53000.55600.58200.141400.2296700 | FIRE FIGHTING | 8d | 2027-09-08 | 2027-09-15 | 3290 |  | RGA -FINISHING | 7839572 |
| 3617 | 40200.40300.41200.53000.55600.58200.141400.2296800 | INTERNAL PAINTING - PUTTY / PRIMER APPLICATION | 5d | 2027-12-13 | 2027-12-17 | 3619 |  | RGA -FINISHING | 7839582 |
| 3618 | 40200.40300.41200.53000.55600.58200.141400.2296900 | FLAT FLOORING | 7d | 2027-11-16 | 2027-11-22 | 3615 |  | RGA -FINISHING | 7839592 |
| 3619 | 40200.40300.41200.53000.55600.58200.141400.2297000 | WINDOW FIXING | 5d | 2027-12-08 | 2027-12-12 | 3606FS+15d |  | RGA -FINISHING | 7839602 |
| 3620 | 40200.40300.41200.53000.55600.58200.141400.2297100 | INTERNAL PAINTING - 1ST COAT | 4d | 2027-12-18 | 2027-12-21 | 3617 |  | RGA -FINISHING | 7839612 |
| 3621 | 40200.40300.41200.53000.55600.58200.141400.2297200 | INTERNAL DOOR FIXING | 15d | 2027-12-20 | 2028-01-03 | 3620FS-2d |  | RGA -FINISHING | 7839622 |
| 3622 | 40200.40300.41200.53000.55600.58200.141400.2297300 | WIRING & SWITCH PLATE FIXING | 8d | 2027-12-31 | 2028-01-07 | 3621FS-4d |  | RGA -FINISHING | 7839632 |
| 3623 | 40200.40300.41200.53000.55600.58200.141400.2297400 | TOILET FALSE CEILING | 7d | 2028-01-08 | 2028-01-14 | 3622 |  | RGA -FINISHING | 7839642 |
| 3624 | 40200.40300.41200.53000.55600.58200.141400.2297500 | MAIN DOOR FRAME SHUTTER FIXING | 6d | 2028-01-21 | 2028-01-26 | 3846 |  | RGA -FINISHING | 7839652 |
| 3625 | 40200.40300.41200.53000.55600.58200.141400.2297600 | FINAL COAT PAINT | 8d | 2028-01-27 | 2028-02-03 | 3624 |  | RGA -FINISHING | 7839662 |
| 3626 | 40200.40300.41200.53000.55600.58200.141500 | **23TH FLOOR** | 140d | 2027-09-17 | 2028-02-03 |  | start no earlier than 2027-09-17 | RGA -FINISHING | 7804932 |
| 3627 | 40200.40300.41200.53000.55600.58200.141500.2297700 | TOILET DADO TILE FIXING | 10d | 2027-11-08 | 2027-11-17 | 3298 |  | RGA -FINISHING | 7839672 |
| 3628 | 40200.40300.41200.53000.55600.58200.141500.2297800 | TOILET FLOORING WORK | 7d | 2027-11-18 | 2027-11-24 | 3627 |  | RGA -FINISHING | 7839682 |
| 3629 | 40200.40300.41200.53000.55600.58200.141500.2297900 | FIRE FIGHTING | 8d | 2027-09-17 | 2027-09-24 | 3297 |  | RGA -FINISHING | 7839692 |
| 3630 | 40200.40300.41200.53000.55600.58200.141500.2298000 | INTERNAL PAINTING - PUTTY / PRIMER APPLICATION | 5d | 2027-12-22 | 2027-12-26 | 3632 |  | RGA -FINISHING | 7839702 |
| 3631 | 40200.40300.41200.53000.55600.58200.141500.2298100 | FLAT FLOORING | 7d | 2027-11-25 | 2027-12-01 | 3628 |  | RGA -FINISHING | 7839712 |
| 3632 | 40200.40300.41200.53000.55600.58200.141500.2298200 | WINDOW FIXING | 5d | 2027-12-17 | 2027-12-21 | 3631FS+15d |  | RGA -FINISHING | 7839722 |
| 3633 | 40200.40300.41200.53000.55600.58200.141500.2298300 | INTERNAL PAINTING - 1ST COAT | 4d | 2027-12-27 | 2027-12-30 | 3630 |  | RGA -FINISHING | 7376555 |
| 3634 | 40200.40300.41200.53000.55600.58200.141500.2298400 | INTERNAL DOOR FIXING | 15d | 2027-12-29 | 2028-01-12 | 3633FS-2d |  | RGA -FINISHING | 7376565 |
| 3635 | 40200.40300.41200.53000.55600.58200.141500.2298500 | WIRING & SWITCH PLATE FIXING | 8d | 2028-01-09 | 2028-01-16 | 3634FS-4d |  | RGA -FINISHING | 7376575 |
| 3636 | 40200.40300.41200.53000.55600.58200.141500.2298600 | TOILET FALSE CEILING | 7d | 2028-01-17 | 2028-01-23 | 3635 |  | RGA -FINISHING | 7376585 |
| 3637 | 40200.40300.41200.53000.55600.58200.141500.2298700 | MAIN DOOR FRAME SHUTTER FIXING | 6d | 2028-01-21 | 2028-01-26 | 3854 |  | RGA -FINISHING | 7376595 |
| 3638 | 40200.40300.41200.53000.55600.58200.141500.2298800 | FINAL COAT PAINT | 8d | 2028-01-27 | 2028-02-03 | 3637 |  | RGA -FINISHING | 7376605 |

| ID | WBS | Task | Duration | Start | Finish | Predecessors | Constraint | Calendar | Unique_Task_ID |
| --- | --- | --- | --- | --- | --- | --- | --- | --- | --- |
| 3639 | 40200.40300.41200.53000.55600.58200.141600 | **24TH FLOOR** | 131d | 2027-09-26 | 2028-02-03 |  | start no earlier than 2027-09-26 | RGA -FINISHING | 7804922 |
| 3640 | 40200.40300.41200.53000.55600.58200.141600.2298900 | TOILET DADO TILE FIXING | 10d | 2027-11-17 | 2027-11-26 | 3305 |  | RGA -FINISHING | 7376615 |
| 3641 | 40200.40300.41200.53000.55600.58200.141600.2299000 | TOILET FLOORING WORK | 7d | 2027-11-27 | 2027-12-03 | 3640 |  | RGA -FINISHING | 7376625 |
| 3642 | 40200.40300.41200.53000.55600.58200.141600.2299100 | FIRE FIGHTING | 8d | 2027-09-26 | 2027-10-03 | 3304 |  | RGA -FINISHING | 7376635 |
| 3643 | 40200.40300.41200.53000.55600.58200.141600.2299200 | INTERNAL PAINTING - PUTTY / PRIMER APPLICATION | 5d | 2027-12-31 | 2028-01-04 | 3645 |  | RGA -FINISHING | 7376645 |
| 3644 | 40200.40300.41200.53000.55600.58200.141600.2299300 | FLAT FLOORING | 7d | 2027-12-04 | 2027-12-10 | 3641 |  | RGA -FINISHING | 7376655 |
| 3645 | 40200.40300.41200.53000.55600.58200.141600.2299400 | WINDOW FIXING | 5d | 2027-12-26 | 2027-12-30 | 3644FS+15d |  | RGA -FINISHING | 7376665 |
| 3646 | 40200.40300.41200.53000.55600.58200.141600.2299500 | INTERNAL PAINTING - 1ST COAT | 4d | 2028-01-05 | 2028-01-08 | 3643 |  | RGA -FINISHING | 7376675 |
| 3647 | 40200.40300.41200.53000.55600.58200.141600.2299600 | INTERNAL DOOR FIXING | 15d | 2028-01-07 | 2028-01-21 | 3646FS-2d |  | RGA -FINISHING | 7376685 |
| 3648 | 40200.40300.41200.53000.55600.58200.141600.2299700 | WIRING & SWITCH PLATE FIXING | 8d | 2028-01-18 | 2028-01-25 | 3647FS-4d |  | RGA -FINISHING | 7376695 |
| 3649 | 40200.40300.41200.53000.55600.58200.141600.2299800 | TOILET FALSE CEILING | 7d | 2028-01-26 | 2028-02-01 | 3648 |  | RGA -FINISHING | 7376705 |
| 3650 | 40200.40300.41200.53000.55600.58200.141600.2299900 | MAIN DOOR FRAME SHUTTER FIXING | 6d | 2028-01-21 | 2028-01-26 | 3862 |  | RGA -FINISHING | 7376715 |
| 3651 | 40200.40300.41200.53000.55600.58200.141600.2300000 | FINAL COAT PAINT | 8d | 2028-01-27 | 2028-02-03 | 3650 |  | RGA -FINISHING | 7376725 |
| 3652 | 40200.40300.41200.53000.55600.58200.141700 | **25TH FLOOR** | 134d | 2027-10-05 | 2028-02-15 |  | start no earlier than 2027-10-05 | RGA -FINISHING | 7804912 |
| 3653 | 40200.40300.41200.53000.55600.58200.141700.2300100 | TOILET DADO TILE FIXING | 10d | 2027-11-26 | 2027-12-05 | 3312 |  | RGA -FINISHING | 7376735 |
| 3654 | 40200.40300.41200.53000.55600.58200.141700.2300200 | TOILET FLOORING WORK | 7d | 2027-12-06 | 2027-12-12 | 3653 |  | RGA -FINISHING | 7376745 |
| 3655 | 40200.40300.41200.53000.55600.58200.141700.2300300 | FIRE FIGHTING | 8d | 2027-10-05 | 2027-10-12 | 3311 |  | RGA -FINISHING | 7376755 |
| 3656 | 40200.40300.41200.53000.55600.58200.141700.2300400 | INTERNAL PAINTING - PUTTY / PRIMER APPLICATION | 5d | 2028-01-14 | 2028-01-18 | 3658 |  | RGA -FINISHING | 7839732 |
| 3657 | 40200.40300.41200.53000.55600.58200.141700.2300500 | FLAT FLOORING | 7d | 2027-12-13 | 2027-12-19 | 3654 |  | RGA -FINISHING | 7839742 |
| 3658 | 40200.40300.41200.53000.55600.58200.141700.2300600 | WINDOW FIXING | 5d | 2028-01-09 | 2028-01-13 | 3657FS+20d |  | RGA -FINISHING | 7839752 |
| 3659 | 40200.40300.41200.53000.55600.58200.141700.2300700 | INTERNAL PAINTING - 1ST COAT | 4d | 2028-01-19 | 2028-01-22 | 3656 |  | RGA -FINISHING | 7839762 |
| 3660 | 40200.40300.41200.53000.55600.58200.141700.2300800 | INTERNAL DOOR FIXING | 15d | 2028-01-21 | 2028-02-04 | 3659FS-2d |  | RGA -FINISHING | 7839772 |
| 3661 | 40200.40300.41200.53000.55600.58200.141700.2300900 | WIRING & SWITCH PLATE FIXING | 8d | 2028-02-01 | 2028-02-08 | 3660FS-4d |  | RGA -FINISHING | 7839782 |
| 3662 | 40200.40300.41200.53000.55600.58200.141700.2301000 | TOILET FALSE CEILING | 7d | 2028-02-09 | 2028-02-15 | 3661 |  | RGA -FINISHING | 7376825 |
| 3663 | 40200.40300.41200.53000.55600.58200.141700.2301100 | MAIN DOOR FRAME SHUTTER FIXING | 6d | 2028-01-21 | 2028-01-26 | 3870 |  | RGA -FINISHING | 7376835 |
| 3664 | 40200.40300.41200.53000.55600.58200.141700.2301200 | FINAL COAT PAINT | 8d | 2028-01-27 | 2028-02-03 | 3663 |  | RGA -FINISHING | 7376845 |

| ID | WBS | Task | Duration | Start | Finish | Predecessors | Constraint | Calendar | Unique_Task_ID |
| --- | --- | --- | --- | --- | --- | --- | --- | --- | --- |
| 3665 | 40200.40300.41200.53000.55600.59800 | **LIFT LOBBY & STAIRCASE FINISHING WORK** | 590d | 2026-07-04 | 2028-02-13 |  | start no earlier than 2026-07-04 | RGA -FINISHING | 7803502 |
| 3666 | 40200.40300.41200.53000.55600.59800.237300 | **GROUND FLOOR** | 567d | 2026-07-04 | 2028-01-21 |  | start no earlier than 2026-07-04 | RGA -FINISHING | 7806202 |
| 3667 | 40200.40300.41200.53000.55600.59800.237300.2301300 | FIRE FIGHTING | 5d | 2026-07-04 | 2026-07-08 | 3330FS+5d |  | RGA -FINISHING | 7840092 |
| 3668 | 40200.40300.41200.53000.55600.59800.237300.2301400 | LIFT BLOCK WORK | 3d | 2027-09-14 | 2027-09-16 | 3122 |  | RGA -FINISHING | 7840102 |
| 3669 | 40200.40300.41200.53000.55600.59800.237300.2301500 | LIFT DADO WORK | 3d | 2027-12-27 | 2027-12-29 | 3877 |  | RGA -FINISHING | 7840112 |
| 3670 | 40200.40300.41200.53000.55600.59800.237300.2301600 | LOBBY FLOORING WORK | 4d | 2027-12-30 | 2028-01-02 | 3669 |  | RGA -FINISHING | 7840122 |
| 3671 | 40200.40300.41200.53000.55600.59800.237300.2301700 | ELECTRICAL WIRING & SWITCH PLATE FIXING WORK | 6d | 2028-01-03 | 2028-01-08 | 3670 |  | RGA -FINISHING | 7840132 |
| 3672 | 40200.40300.41200.53000.55600.59800.237300.2301800 | False ceiling & 1ST COAT PAINTING | 10d | 2028-01-09 | 2028-01-18 | 3671 |  | RGA -FINISHING | 7840142 |
| 3673 | 40200.40300.41200.53000.55600.59800.237300.2301900 | CLEANING | 3d | 2028-01-19 | 2028-01-21 | 3672 |  | RGA -FINISHING | 7840152 |
| 3674 | 40200.40300.41200.53000.55600.59800.237400 | **1ST FLOOR** | 536d | 2026-08-09 | 2028-01-26 |  | start no earlier than 2026-08-09 | RGA -FINISHING | 7806212 |
| 3675 | 40200.40300.41200.53000.55600.59800.237400.2302000 | FIRE FIGHTING | 10d | 2026-08-09 | 2026-08-18 | 3343FS-5d |  | RGA -FINISHING | 7840162 |
| 3676 | 40200.40300.41200.53000.55600.59800.237400.2302100 | LIFT BLOCK WORK | 3d | 2027-09-14 | 2027-09-16 | 3122 |  | RGA -FINISHING | 7840172 |
| 3677 | 40200.40300.41200.53000.55600.59800.237400.2302200 | LIFT DADO WORK | 3d | 2027-12-27 | 2027-12-29 | 3877 |  | RGA -FINISHING | 7840182 |
| 3678 | 40200.40300.41200.53000.55600.59800.237400.2302300 | LOBBY FLOORING WORK | 4d | 2027-12-30 | 2028-01-02 | 3677 |  | RGA -FINISHING | 7840192 |
| 3679 | 40200.40300.41200.53000.55600.59800.237400.2302400 | ELECTRICAL WIRING & SWITCH PLATE FIXING WORK | 6d | 2028-01-03 | 2028-01-08 | 3678 |  | RGA -FINISHING | 7840202 |
| 3680 | 40200.40300.41200.53000.55600.59800.237400.2302500 | False ceiling & 1ST COAT PAINTING | 15d | 2028-01-09 | 2028-01-23 | 3679 |  | RGA -FINISHING | 7840212 |
| 3681 | 40200.40300.41200.53000.55600.59800.237400.2302600 | CLEANING | 3d | 2028-01-24 | 2028-01-26 | 3680 |  | RGA -FINISHING | 7840222 |
| 3682 | 40200.40300.41200.53000.55600.59800.237500 | **2nd FLOOR** | 495d | 2026-09-19 | 2028-01-26 |  | start no earlier than 2026-09-19 | RGA -FINISHING | 7806222 |
| 3683 | 40200.40300.41200.53000.55600.59800.237500.2302700 | FIRE FIGHTING | 10d | 2026-09-19 | 2026-09-28 | 3356FS-5d |  | RGA -FINISHING | 7840232 |
| 3684 | 40200.40300.41200.53000.55600.59800.237500.2302800 | LIFT BLOCK WORK | 3d | 2027-09-14 | 2027-09-16 | 3676SS |  | RGA -FINISHING | 7840242 |
| 3685 | 40200.40300.41200.53000.55600.59800.237500.2302900 | LIFT DADO WORK | 3d | 2027-12-27 | 2027-12-29 | 3677SS |  | RGA -FINISHING | 7840252 |
| 3686 | 40200.40300.41200.53000.55600.59800.237500.2303000 | LOBBY FLOORING WORK | 4d | 2027-12-30 | 2028-01-02 | 3685 |  | RGA -FINISHING | 7840262 |
| 3687 | 40200.40300.41200.53000.55600.59800.237500.2303100 | ELECTRICAL WIRING & SWITCH PLATE FIXING WORK | 6d | 2028-01-03 | 2028-01-08 | 3686 |  | RGA -FINISHING | 7840272 |
| 3688 | 40200.40300.41200.53000.55600.59800.237500.2303200 | False ceiling & 1ST COAT PAINTING | 15d | 2028-01-09 | 2028-01-23 | 3687 |  | RGA -FINISHING | 7377885 |
| 3689 | 40200.40300.41200.53000.55600.59800.237500.2303300 | CLEANING | 3d | 2028-01-24 | 2028-01-26 | 3688 |  | RGA -FINISHING | 7377895 |

Notes:
- 3665: Completion in 12 months post last RCC
- 3667: Assumed
- 3675: Assumed
- 3683: Assumed

| ID | WBS | Task | Duration | Start | Finish | Predecessors | Constraint | Calendar | Unique_Task_ID |
| --- | --- | --- | --- | --- | --- | --- | --- | --- | --- |
| 3690 | 40200.40300.41200.53000.55600.59800.237600 | **3rd FLOOR** | 469d | 2026-10-18 | 2028-01-29 |  | start no earlier than 2026-10-18 | RGA -FINISHING | 7806232 |
| 3691 | 40200.40300.41200.53000.55600.59800.237600.2303400 | FIRE FIGHTING | 10d | 2026-10-18 | 2026-10-27 | 3369FS-5d |  | RGA -FINISHING | 7840282 |
| 3692 | 40200.40300.41200.53000.55600.59800.237600.2303500 | LIFT BLOCK WORK | 3d | 2027-09-17 | 2027-09-19 | 3684 |  | RGA -FINISHING | 7840292 |
| 3693 | 40200.40300.41200.53000.55600.59800.237600.2303600 | LIFT DADO WORK | 3d | 2027-12-30 | 2028-01-01 | 3685 |  | RGA -FINISHING | 7840302 |
| 3694 | 40200.40300.41200.53000.55600.59800.237600.2303700 | LOBBY FLOORING WORK | 4d | 2028-01-02 | 2028-01-05 | 3693 |  | RGA -FINISHING | 7840312 |
| 3695 | 40200.40300.41200.53000.55600.59800.237600.2303800 | ELECTRICAL WIRING & SWITCH PLATE FIXING WORK | 6d | 2028-01-06 | 2028-01-11 | 3694 |  | RGA -FINISHING | 7840322 |
| 3696 | 40200.40300.41200.53000.55600.59800.237600.2303900 | False ceiling & 1ST COAT PAINTING | 15d | 2028-01-12 | 2028-01-26 | 3695 |  | RGA -FINISHING | 7840332 |
| 3697 | 40200.40300.41200.53000.55600.59800.237600.2304000 | CLEANING | 3d | 2028-01-27 | 2028-01-29 | 3696 |  | RGA -FINISHING | 7840342 |
| 3698 | 40200.40300.41200.53000.55600.59800.237700 | **4th FLOOR** | 456d | 2026-10-31 | 2028-01-29 |  | start no earlier than 2026-10-31 | RGA -FINISHING | 7806242 |
| 3699 | 40200.40300.41200.53000.55600.59800.237700.2304100 | FIRE FIGHTING | 10d | 2026-10-31 | 2026-11-09 | 3382FS-5d |  | RGA -FINISHING | 7840352 |
| 3700 | 40200.40300.41200.53000.55600.59800.237700.2304200 | LIFT BLOCK WORK | 3d | 2027-09-17 | 2027-09-19 | 3692SS |  | RGA -FINISHING | 7840362 |
| 3701 | 40200.40300.41200.53000.55600.59800.237700.2304300 | LIFT DADO WORK | 3d | 2027-12-30 | 2028-01-01 | 3693SS |  | RGA -FINISHING | 7840372 |
| 3702 | 40200.40300.41200.53000.55600.59800.237700.2304400 | LOBBY FLOORING WORK | 4d | 2028-01-02 | 2028-01-05 | 3701 |  | RGA -FINISHING | 7840382 |
| 3703 | 40200.40300.41200.53000.55600.59800.237700.2304500 | ELECTRICAL WIRING & SWITCH PLATE FIXING WORK | 6d | 2028-01-06 | 2028-01-11 | 3702 |  | RGA -FINISHING | 7840392 |
| 3704 | 40200.40300.41200.53000.55600.59800.237700.2304600 | False ceiling & 1ST COAT PAINTING | 15d | 2028-01-12 | 2028-01-26 | 3703 |  | RGA -FINISHING | 7840402 |
| 3705 | 40200.40300.41200.53000.55600.59800.237700.2304700 | CLEANING | 3d | 2028-01-27 | 2028-01-29 | 3704 |  | RGA -FINISHING | 7840412 |
| 3706 | 40200.40300.41200.53000.55600.59800.237800 | **5th FLOOR** | 439d | 2026-11-17 | 2028-01-29 |  | start no earlier than 2026-11-17 | RGA -FINISHING | 7806252 |
| 3707 | 40200.40300.41200.53000.55600.59800.237800.2304800 | FIRE FIGHTING | 10d | 2026-11-17 | 2026-11-26 | 3395FS-5d |  | RGA -FINISHING | 7840422 |
| 3708 | 40200.40300.41200.53000.55600.59800.237800.2304900 | LIFT BLOCK WORK | 3d | 2027-09-17 | 2027-09-19 | 3700SS |  | RGA -FINISHING | 7840432 |
| 3709 | 40200.40300.41200.53000.55600.59800.237800.2305000 | LIFT DADO WORK | 3d | 2027-12-30 | 2028-01-01 | 3701SS |  | RGA -FINISHING | 7840442 |
| 3710 | 40200.40300.41200.53000.55600.59800.237800.2305100 | LOBBY FLOORING WORK | 4d | 2028-01-02 | 2028-01-05 | 3709 |  | RGA -FINISHING | 7840452 |
| 3711 | 40200.40300.41200.53000.55600.59800.237800.2305200 | ELECTRICAL WIRING & SWITCH PLATE FIXING WORK | 6d | 2028-01-06 | 2028-01-11 | 3710 |  | RGA -FINISHING | 7840462 |
| 3712 | 40200.40300.41200.53000.55600.59800.237800.2305300 | False ceiling & 1ST COAT PAINTING | 15d | 2028-01-12 | 2028-01-26 | 3711 |  | RGA -FINISHING | 7840472 |
| 3713 | 40200.40300.41200.53000.55600.59800.237800.2305400 | CLEANING | 3d | 2028-01-27 | 2028-01-29 | 3712 |  | RGA -FINISHING | 7840482 |

Notes:
- 3691: Assumed
- 3699: Assumed
- 3707: Assumed

| ID | WBS | Task | Duration | Start | Finish | Predecessors | Constraint | Calendar | Unique_Task_ID |
| --- | --- | --- | --- | --- | --- | --- | --- | --- | --- |
| 3714 | 40200.40300.41200.53000.55600.59800.237900 | **6th FLOOR** | 417.5d | 2026-12-11 | 2028-02-01 |  | start no earlier than 2026-12-11 | RGA -FINISHING | 7806262 |
| 3715 | 40200.40300.41200.53000.55600.59800.237900.2305500 | FIRE FIGHTING | 10d | 2026-12-11 | 2026-12-21 | 3408FS-5d |  | RGA -FINISHING | 7840492 |
| 3716 | 40200.40300.41200.53000.55600.59800.237900.2305600 | LIFT BLOCK WORK | 3d | 2027-09-20 | 2027-09-22 | 3708 |  | RGA -FINISHING | 7840502 |
| 3717 | 40200.40300.41200.53000.55600.59800.237900.2305700 | LIFT DADO WORK | 3d | 2028-01-02 | 2028-01-04 | 3709 |  | RGA -FINISHING | 7840512 |
| 3718 | 40200.40300.41200.53000.55600.59800.237900.2305800 | LOBBY FLOORING WORK | 4d | 2028-01-05 | 2028-01-08 | 3717 |  | RGA -FINISHING | 7840522 |
| 3719 | 40200.40300.41200.53000.55600.59800.237900.2305900 | ELECTRICAL WIRING & SWITCH PLATE FIXING WORK | 6d | 2028-01-09 | 2028-01-14 | 3718 |  | RGA -FINISHING | 7840532 |
| 3720 | 40200.40300.41200.53000.55600.59800.237900.2306000 | False ceiling & 1ST COAT PAINTING | 15d | 2028-01-15 | 2028-01-29 | 3719 |  | RGA -FINISHING | 7840542 |
| 3721 | 40200.40300.41200.53000.55600.59800.237900.2306100 | CLEANING | 3d | 2028-01-30 | 2028-02-01 | 3720 |  | RGA -FINISHING | 7840552 |
| 3722 | 40200.40300.41200.53000.55600.59800.238000 | **7th FLOOR** | 393d | 2027-01-05 | 2028-02-01 |  | start no earlier than 2027-01-05 | RGA -FINISHING | 7806272 |
| 3723 | 40200.40300.41200.53000.55600.59800.238000.2306200 | FIRE FIGHTING | 10d | 2027-01-05 | 2027-01-14 | 3421FS-5d |  | RGA -FINISHING | 7840562 |
| 3724 | 40200.40300.41200.53000.55600.59800.238000.2306300 | LIFT BLOCK WORK | 3d | 2027-09-20 | 2027-09-22 | 3716SS |  | RGA -FINISHING | 7840572 |
| 3725 | 40200.40300.41200.53000.55600.59800.238000.2306400 | LIFT DADO WORK | 3d | 2028-01-02 | 2028-01-04 | 3717SS |  | RGA -FINISHING | 7840582 |
| 3726 | 40200.40300.41200.53000.55600.59800.238000.2306500 | LOBBY FLOORING WORK | 4d | 2028-01-05 | 2028-01-08 | 3725 |  | RGA -FINISHING | 7840592 |
| 3727 | 40200.40300.41200.53000.55600.59800.238000.2306600 | ELECTRICAL WIRING & SWITCH PLATE FIXING WORK | 6d | 2028-01-09 | 2028-01-14 | 3726 |  | RGA -FINISHING | 7840602 |
| 3728 | 40200.40300.41200.53000.55600.59800.238000.2306700 | False ceiling & 1ST COAT PAINTING | 15d | 2028-01-15 | 2028-01-29 | 3727 |  | RGA -FINISHING | 7840612 |
| 3729 | 40200.40300.41200.53000.55600.59800.238000.2306800 | CLEANING | 3d | 2028-01-30 | 2028-02-01 | 3728 |  | RGA -FINISHING | 7840622 |
| 3730 | 40200.40300.41200.53000.55600.59800.238100 | **8th FLOOR** | 376d | 2027-01-22 | 2028-02-01 |  | start no earlier than 2027-01-22 | RGA -FINISHING | 7806282 |
| 3731 | 40200.40300.41200.53000.55600.59800.238100.2306900 | FIRE FIGHTING | 10d | 2027-01-22 | 2027-01-31 | 3434FS-5d |  | RGA -FINISHING | 7840632 |
| 3732 | 40200.40300.41200.53000.55600.59800.238100.2307000 | LIFT BLOCK WORK | 3d | 2027-09-20 | 2027-09-22 | 3724SS |  | RGA -FINISHING | 7840642 |
| 3733 | 40200.40300.41200.53000.55600.59800.238100.2307100 | LIFT DADO WORK | 3d | 2028-01-02 | 2028-01-04 | 3725SS |  | RGA -FINISHING | 7840652 |
| 3734 | 40200.40300.41200.53000.55600.59800.238100.2307200 | LOBBY FLOORING WORK | 4d | 2028-01-05 | 2028-01-08 | 3733 |  | RGA -FINISHING | 7840662 |
| 3735 | 40200.40300.41200.53000.55600.59800.238100.2307300 | ELECTRICAL WIRING & SWITCH PLATE FIXING WORK | 6d | 2028-01-09 | 2028-01-14 | 3734 |  | RGA -FINISHING | 7840672 |
| 3736 | 40200.40300.41200.53000.55600.59800.238100.2307400 | False ceiling & 1ST COAT PAINTING | 15d | 2028-01-15 | 2028-01-29 | 3735 |  | RGA -FINISHING | 7840682 |
| 3737 | 40200.40300.41200.53000.55600.59800.238100.2307500 | CLEANING | 3d | 2028-01-30 | 2028-02-01 | 3736 |  | RGA -FINISHING | 7840692 |

Notes:
- 3715: Assumed
- 3723: Assumed
- 3731: Assumed

| ID | WBS | Task | Duration | Start | Finish | Predecessors | Constraint | Calendar | Unique_Task_ID |
| --- | --- | --- | --- | --- | --- | --- | --- | --- | --- |
| 3738 | 40200.40300.41200.53000.55600.59800.238200 | **9th FLOOR** | 359d | 2027-02-08 | 2028-02-01 |  | start no earlier than 2027-02-08 | RGA -FINISHING | 7806292 |
| 3739 | 40200.40300.41200.53000.55600.59800.238200.2307600 | FIRE FIGHTING | 10d | 2027-02-08 | 2027-02-17 | 3447FS-5d |  | RGA -FINISHING | 7840702 |
| 3740 | 40200.40300.41200.53000.55600.59800.238200.2307700 | LIFT BLOCK WORK | 3d | 2027-09-20 | 2027-09-22 | 3732SS |  | RGA -FINISHING | 7840712 |
| 3741 | 40200.40300.41200.53000.55600.59800.238200.2307800 | LIFT DADO WORK | 3d | 2028-01-02 | 2028-01-04 | 3733SS |  | RGA -FINISHING | 7840722 |
| 3742 | 40200.40300.41200.53000.55600.59800.238200.2307900 | LOBBY FLOORING WORK | 4d | 2028-01-05 | 2028-01-08 | 3741 |  | RGA -FINISHING | 7840732 |
| 3743 | 40200.40300.41200.53000.55600.59800.238200.2308000 | ELECTRICAL WIRING & SWITCH PLATE FIXING WORK | 6d | 2028-01-09 | 2028-01-14 | 3742 |  | RGA -FINISHING | 7840742 |
| 3744 | 40200.40300.41200.53000.55600.59800.238200.2308100 | False ceiling & 1ST COAT PAINTING | 15d | 2028-01-15 | 2028-01-29 | 3743 |  | RGA -FINISHING | 7840752 |
| 3745 | 40200.40300.41200.53000.55600.59800.238200.2308200 | CLEANING | 3d | 2028-01-30 | 2028-02-01 | 3744 |  | RGA -FINISHING | 7840762 |
| 3746 | 40200.40300.41200.53000.55600.59800.238300 | **10th FLOOR** | 345d | 2027-02-25 | 2028-02-04 |  | start no earlier than 2027-02-25 | RGA -FINISHING | 7806302 |
| 3747 | 40200.40300.41200.53000.55600.59800.238300.2308300 | FIRE FIGHTING | 10d | 2027-02-25 | 2027-03-06 | 3460FS-5d |  | RGA -FINISHING | 7840772 |
| 3748 | 40200.40300.41200.53000.55600.59800.238300.2308400 | LIFT BLOCK WORK | 3d | 2027-09-23 | 2027-09-25 | 3740 |  | RGA -FINISHING | 7840782 |
| 3749 | 40200.40300.41200.53000.55600.59800.238300.2308500 | LIFT DADO WORK | 3d | 2028-01-05 | 2028-01-07 | 3741 |  | RGA -FINISHING | 7840792 |
| 3750 | 40200.40300.41200.53000.55600.59800.238300.2308600 | LOBBY FLOORING WORK | 4d | 2028-01-08 | 2028-01-11 | 3749 |  | RGA -FINISHING | 7840802 |
| 3751 | 40200.40300.41200.53000.55600.59800.238300.2308700 | ELECTRICAL WIRING & SWITCH PLATE FIXING WORK | 6d | 2028-01-12 | 2028-01-17 | 3750 |  | RGA -FINISHING | 7840812 |
| 3752 | 40200.40300.41200.53000.55600.59800.238300.2308800 | False ceiling & 1ST COAT PAINTING | 15d | 2028-01-18 | 2028-02-01 | 3751 |  | RGA -FINISHING | 7840822 |
| 3753 | 40200.40300.41200.53000.55600.59800.238300.2308900 | CLEANING | 3d | 2028-02-02 | 2028-02-04 | 3752 |  | RGA -FINISHING | 7840832 |
| 3754 | 40200.40300.41200.53000.55600.59800.238400 | **11th FLOOR** | 328d | 2027-03-14 | 2028-02-04 |  | start no earlier than 2027-03-14 | RGA -FINISHING | 7806312 |
| 3755 | 40200.40300.41200.53000.55600.59800.238400.2309000 | FIRE FIGHTING | 10d | 2027-03-14 | 2027-03-23 | 3473FS-5d |  | RGA -FINISHING | 7840842 |
| 3756 | 40200.40300.41200.53000.55600.59800.238400.2309100 | LIFT BLOCK WORK | 3d | 2027-09-23 | 2027-09-25 | 3748SS |  | RGA -FINISHING | 7840852 |
| 3757 | 40200.40300.41200.53000.55600.59800.238400.2309200 | LIFT DADO WORK | 3d | 2028-01-05 | 2028-01-07 | 3749SS |  | RGA -FINISHING | 7840862 |
| 3758 | 40200.40300.41200.53000.55600.59800.238400.2309300 | LOBBY FLOORING WORK | 4d | 2028-01-08 | 2028-01-11 | 3757 |  | RGA -FINISHING | 7840872 |
| 3759 | 40200.40300.41200.53000.55600.59800.238400.2309400 | ELECTRICAL WIRING & SWITCH PLATE FIXING WORK | 6d | 2028-01-12 | 2028-01-17 | 3758 |  | RGA -FINISHING | 7840882 |
| 3760 | 40200.40300.41200.53000.55600.59800.238400.2309500 | False ceiling & 1ST COAT PAINTING | 15d | 2028-01-18 | 2028-02-01 | 3759 |  | RGA -FINISHING | 7840892 |
| 3761 | 40200.40300.41200.53000.55600.59800.238400.2309600 | CLEANING | 3d | 2028-02-02 | 2028-02-04 | 3760 |  | RGA -FINISHING | 7840902 |

Notes:
- 3739: Assumed
- 3747: Assumed
- 3755: Assumed

| ID | WBS | Task | Duration | Start | Finish | Predecessors | Constraint | Calendar | Unique_Task_ID |
| --- | --- | --- | --- | --- | --- | --- | --- | --- | --- |
| 3762 | 40200.40300.41200.53000.55600.59800.238500 | **12th FLOOR** | 311d | 2027-03-31 | 2028-02-04 |  | start no earlier than 2027-03-31 | RGA -FINISHING | 7806322 |
| 3763 | 40200.40300.41200.53000.55600.59800.238500.2309700 | FIRE FIGHTING | 10d | 2027-03-31 | 2027-04-09 | 3486FS-5d |  | RGA -FINISHING | 7840912 |
| 3764 | 40200.40300.41200.53000.55600.59800.238500.2309800 | LIFT BLOCK WORK | 3d | 2027-09-23 | 2027-09-25 | 3756SS |  | RGA -FINISHING | 7840922 |
| 3765 | 40200.40300.41200.53000.55600.59800.238500.2309900 | LIFT DADO WORK | 3d | 2028-01-05 | 2028-01-07 | 3757SS |  | RGA -FINISHING | 7840932 |
| 3766 | 40200.40300.41200.53000.55600.59800.238500.2310000 | LOBBY FLOORING WORK | 4d | 2028-01-08 | 2028-01-11 | 3765 |  | RGA -FINISHING | 7840942 |
| 3767 | 40200.40300.41200.53000.55600.59800.238500.2310100 | ELECTRICAL WIRING & SWITCH PLATE FIXING WORK | 6d | 2028-01-12 | 2028-01-17 | 3766 |  | RGA -FINISHING | 7840952 |
| 3768 | 40200.40300.41200.53000.55600.59800.238500.2310200 | False ceiling & 1ST COAT PAINTING | 15d | 2028-01-18 | 2028-02-01 | 3767 |  | RGA -FINISHING | 7840962 |
| 3769 | 40200.40300.41200.53000.55600.59800.238500.2310300 | CLEANING | 3d | 2028-02-02 | 2028-02-04 | 3768 |  | RGA -FINISHING | 7840972 |
| 3770 | 40200.40300.41200.53000.55600.59800.238600 | **13th FLOOR** | 292d | 2027-04-19 | 2028-02-04 |  | start no earlier than 2027-04-19 | RGA -FINISHING | 7806332 |
| 3771 | 40200.40300.41200.53000.55600.59800.238600.2310400 | FIRE FIGHTING | 10d | 2027-04-19 | 2027-04-28 | 3499FS-5d |  | RGA -FINISHING | 7840982 |
| 3772 | 40200.40300.41200.53000.55600.59800.238600.2310500 | LIFT BLOCK WORK | 3d | 2027-09-23 | 2027-09-25 | 3764SS |  | RGA -FINISHING | 7840992 |
| 3773 | 40200.40300.41200.53000.55600.59800.238600.2310600 | LIFT DADO WORK | 3d | 2028-01-05 | 2028-01-07 | 3765SS |  | RGA -FINISHING | 7841002 |
| 3774 | 40200.40300.41200.53000.55600.59800.238600.2310700 | LOBBY FLOORING WORK | 4d | 2028-01-08 | 2028-01-11 | 3773 |  | RGA -FINISHING | 7841012 |
| 3775 | 40200.40300.41200.53000.55600.59800.238600.2310800 | ELECTRICAL WIRING & SWITCH PLATE FIXING WORK | 6d | 2028-01-12 | 2028-01-17 | 3774 |  | RGA -FINISHING | 7841022 |
| 3776 | 40200.40300.41200.53000.55600.59800.238600.2310900 | False ceiling & 1ST COAT PAINTING | 15d | 2028-01-18 | 2028-02-01 | 3775 |  | RGA -FINISHING | 7841032 |
| 3777 | 40200.40300.41200.53000.55600.59800.238600.2311000 | CLEANING | 3d | 2028-02-02 | 2028-02-04 | 3776 |  | RGA -FINISHING | 7841042 |
| 3778 | 40200.40300.41200.53000.55600.59800.238700 | **14th FLOOR** | 278d | 2027-05-06 | 2028-02-07 |  | start no earlier than 2027-05-06 | RGA -FINISHING | 7806342 |
| 3779 | 40200.40300.41200.53000.55600.59800.238700.2311100 | FIRE FIGHTING | 10d | 2027-05-06 | 2027-05-15 | 3512FS-5d |  | RGA -FINISHING | 7841052 |
| 3780 | 40200.40300.41200.53000.55600.59800.238700.2311200 | LIFT BLOCK WORK | 3d | 2027-09-26 | 2027-09-28 | 3772 |  | RGA -FINISHING | 7841062 |
| 3781 | 40200.40300.41200.53000.55600.59800.238700.2311300 | LIFT DADO WORK | 3d | 2028-01-08 | 2028-01-10 | 3773 |  | RGA -FINISHING | 7841072 |
| 3782 | 40200.40300.41200.53000.55600.59800.238700.2311400 | LOBBY FLOORING WORK | 4d | 2028-01-11 | 2028-01-14 | 3781 |  | RGA -FINISHING | 7841082 |
| 3783 | 40200.40300.41200.53000.55600.59800.238700.2311500 | ELECTRICAL WIRING & SWITCH PLATE FIXING WORK | 6d | 2028-01-15 | 2028-01-20 | 3782 |  | RGA -FINISHING | 7841092 |
| 3784 | 40200.40300.41200.53000.55600.59800.238700.2311600 | False ceiling & 1ST COAT PAINTING | 15d | 2028-01-21 | 2028-02-04 | 3783 |  | RGA -FINISHING | 7841102 |
| 3785 | 40200.40300.41200.53000.55600.59800.238700.2311700 | CLEANING | 3d | 2028-02-05 | 2028-02-07 | 3784 |  | RGA -FINISHING | 7841112 |

Notes:
- 3763: Assumed
- 3771: Assumed
- 3779: Assumed

| ID | WBS | Task | Duration | Start | Finish | Predecessors | Constraint | Calendar | Unique_Task_ID |
| --- | --- | --- | --- | --- | --- | --- | --- | --- | --- |
| 3786 | 40200.40300.41200.53000.55600.59800.238800 | **15th FLOOR** | 261d | 2027-05-23 | 2028-02-07 |  | start no earlier than 2027-05-23 | RGA -FINISHING | 7806352 |
| 3787 | 40200.40300.41200.53000.55600.59800.238800.2311800 | FIRE FIGHTING | 10d | 2027-05-23 | 2027-06-01 | 3525FS-5d |  | RGA -FINISHING | 7841122 |
| 3788 | 40200.40300.41200.53000.55600.59800.238800.2311900 | LIFT BLOCK WORK | 3d | 2027-09-26 | 2027-09-28 | 3780SS |  | RGA -FINISHING | 7841132 |
| 3789 | 40200.40300.41200.53000.55600.59800.238800.2312000 | LIFT DADO WORK | 3d | 2028-01-08 | 2028-01-10 | 3781SS |  | RGA -FINISHING | 7841142 |
| 3790 | 40200.40300.41200.53000.55600.59800.238800.2312100 | LOBBY FLOORING WORK | 4d | 2028-01-11 | 2028-01-14 | 3789 |  | RGA -FINISHING | 7841152 |
| 3791 | 40200.40300.41200.53000.55600.59800.238800.2312200 | ELECTRICAL WIRING & SWITCH PLATE FIXING WORK | 6d | 2028-01-15 | 2028-01-20 | 3790 |  | RGA -FINISHING | 7841162 |
| 3792 | 40200.40300.41200.53000.55600.59800.238800.2312300 | False ceiling & 1ST COAT PAINTING | 15d | 2028-01-21 | 2028-02-04 | 3791 |  | RGA -FINISHING | 7841172 |
| 3793 | 40200.40300.41200.53000.55600.59800.238800.2312400 | CLEANING | 3d | 2028-02-05 | 2028-02-07 | 3792 |  | RGA -FINISHING | 7841182 |
| 3794 | 40200.40300.41200.53000.55600.59800.238900 | **16th FLOOR** | 244d | 2027-06-09 | 2028-02-07 |  | start no earlier than 2027-06-09 | RGA -FINISHING | 7806362 |
| 3795 | 40200.40300.41200.53000.55600.59800.238900.2312500 | FIRE FIGHTING | 10d | 2027-06-09 | 2027-06-18 | 3538FS-5d |  | RGA -FINISHING | 7841192 |
| 3796 | 40200.40300.41200.53000.55600.59800.238900.2312600 | LIFT BLOCK WORK | 3d | 2027-09-26 | 2027-09-28 | 3788SS |  | RGA -FINISHING | 7841202 |
| 3797 | 40200.40300.41200.53000.55600.59800.238900.2312700 | LIFT DADO WORK | 3d | 2028-01-08 | 2028-01-10 | 3789SS |  | RGA -FINISHING | 7841212 |
| 3798 | 40200.40300.41200.53000.55600.59800.238900.2312800 | LOBBY FLOORING WORK | 4d | 2028-01-11 | 2028-01-14 | 3797 |  | RGA -FINISHING | 7841222 |
| 3799 | 40200.40300.41200.53000.55600.59800.238900.2312900 | ELECTRICAL WIRING & SWITCH PLATE FIXING WORK | 6d | 2028-01-15 | 2028-01-20 | 3798 |  | RGA -FINISHING | 7841232 |
| 3800 | 40200.40300.41200.53000.55600.59800.238900.2313000 | False ceiling & 1ST COAT PAINTING | 15d | 2028-01-21 | 2028-02-04 | 3799 |  | RGA -FINISHING | 7841242 |
| 3801 | 40200.40300.41200.53000.55600.59800.238900.2313100 | CLEANING | 3d | 2028-02-05 | 2028-02-07 | 3800 |  | RGA -FINISHING | 7841252 |
| 3802 | 40200.40300.41200.53000.55600.59800.239000 | **17th FLOOR** | 227d | 2027-06-26 | 2028-02-07 |  | start no earlier than 2027-06-26 | RGA -FINISHING | 7806372 |
| 3803 | 40200.40300.41200.53000.55600.59800.239000.2313200 | FIRE FIGHTING | 10d | 2027-06-26 | 2027-07-05 | 3551FS-5d |  | RGA -FINISHING | 7841262 |
| 3804 | 40200.40300.41200.53000.55600.59800.239000.2313300 | LIFT BLOCK WORK | 3d | 2027-09-26 | 2027-09-28 | 3796SS |  | RGA -FINISHING | 7841272 |
| 3805 | 40200.40300.41200.53000.55600.59800.239000.2313400 | LIFT DADO WORK | 3d | 2028-01-08 | 2028-01-10 | 3797SS |  | RGA -FINISHING | 7841282 |
| 3806 | 40200.40300.41200.53000.55600.59800.239000.2313500 | LOBBY FLOORING WORK | 4d | 2028-01-11 | 2028-01-14 | 3805 |  | RGA -FINISHING | 7841292 |
| 3807 | 40200.40300.41200.53000.55600.59800.239000.2313600 | ELECTRICAL WIRING & SWITCH PLATE FIXING WORK | 6d | 2028-01-15 | 2028-01-20 | 3806 |  | RGA -FINISHING | 7841302 |
| 3808 | 40200.40300.41200.53000.55600.59800.239000.2313700 | False ceiling & 1ST COAT PAINTING | 15d | 2028-01-21 | 2028-02-04 | 3807 |  | RGA -FINISHING | 7841312 |
| 3809 | 40200.40300.41200.53000.55600.59800.239000.2313800 | CLEANING | 3d | 2028-02-05 | 2028-02-07 | 3808 |  | RGA -FINISHING | 7841322 |

Notes:
- 3787: Assumed
- 3795: Assumed
- 3803: Assumed

| ID | WBS | Task | Duration | Start | Finish | Predecessors | Constraint | Calendar | Unique_Task_ID |
| --- | --- | --- | --- | --- | --- | --- | --- | --- | --- |
| 3810 | 40200.40300.41200.53000.55600.59800.239100 | **18th FLOOR** | 213d | 2027-07-13 | 2028-02-10 |  | start no earlier than 2027-07-13 | RGA -FINISHING | 7806382 |
| 3811 | 40200.40300.41200.53000.55600.59800.239100.2313900 | FIRE FIGHTING | 10d | 2027-07-13 | 2027-07-22 | 3564FS-5d |  | RGA -FINISHING | 7841332 |
| 3812 | 40200.40300.41200.53000.55600.59800.239100.2314000 | LIFT BLOCK WORK | 3d | 2027-09-29 | 2027-10-01 | 3804 |  | RGA -FINISHING | 7841342 |
| 3813 | 40200.40300.41200.53000.55600.59800.239100.2314100 | LIFT DADO WORK | 3d | 2028-01-11 | 2028-01-13 | 3805 |  | RGA -FINISHING | 7841352 |
| 3814 | 40200.40300.41200.53000.55600.59800.239100.2314200 | LOBBY FLOORING WORK | 4d | 2028-01-14 | 2028-01-17 | 3813 |  | RGA -FINISHING | 7841362 |
| 3815 | 40200.40300.41200.53000.55600.59800.239100.2314300 | ELECTRICAL WIRING & SWITCH PLATE FIXING WORK | 6d | 2028-01-18 | 2028-01-23 | 3814 |  | RGA -FINISHING | 7841372 |
| 3816 | 40200.40300.41200.53000.55600.59800.239100.2314400 | False ceiling & 1ST COAT PAINTING | 15d | 2028-01-24 | 2028-02-07 | 3815 |  | RGA -FINISHING | 7841382 |
| 3817 | 40200.40300.41200.53000.55600.59800.239100.2314500 | CLEANING | 3d | 2028-02-08 | 2028-02-10 | 3816 |  | RGA -FINISHING | 7841392 |
| 3818 | 40200.40300.41200.53000.55600.59800.239200 | **19th FLOOR** | 198d | 2027-07-28 | 2028-02-10 |  | start no earlier than 2027-07-28 | RGA -FINISHING | 7806392 |
| 3819 | 40200.40300.41200.53000.55600.59800.239200.2314600 | FIRE FIGHTING | 10d | 2027-07-28 | 2027-08-06 | 3577FS-5d |  | RGA -FINISHING | 7841402 |
| 3820 | 40200.40300.41200.53000.55600.59800.239200.2314700 | LIFT BLOCK WORK | 3d | 2027-09-29 | 2027-10-01 | 3812SS |  | RGA -FINISHING | 7841412 |
| 3821 | 40200.40300.41200.53000.55600.59800.239200.2314800 | LIFT DADO WORK | 3d | 2028-01-11 | 2028-01-13 | 3813SS |  | RGA -FINISHING | 7841422 |
| 3822 | 40200.40300.41200.53000.55600.59800.239200.2314900 | LOBBY FLOORING WORK | 4d | 2028-01-14 | 2028-01-17 | 3821 |  | RGA -FINISHING | 7841432 |
| 3823 | 40200.40300.41200.53000.55600.59800.239200.2315000 | ELECTRICAL WIRING & SWITCH PLATE FIXING WORK | 6d | 2028-01-18 | 2028-01-23 | 3822 |  | RGA -FINISHING | 7841442 |
| 3824 | 40200.40300.41200.53000.55600.59800.239200.2315100 | False ceiling & 1ST COAT PAINTING | 15d | 2028-01-24 | 2028-02-07 | 3823 |  | RGA -FINISHING | 7841452 |
| 3825 | 40200.40300.41200.53000.55600.59800.239200.2315200 | CLEANING | 3d | 2028-02-08 | 2028-02-10 | 3824 |  | RGA -FINISHING | 7841462 |
| 3826 | 40200.40300.41200.53000.55600.59800.239300 | **20th FLOOR** | 183d | 2027-08-12 | 2028-02-10 |  | start no earlier than 2027-08-12 | RGA -FINISHING | 7806402 |
| 3827 | 40200.40300.41200.53000.55600.59800.239300.2315300 | FIRE FIGHTING | 10d | 2027-08-12 | 2027-08-21 | 3590FS-5d |  | RGA -FINISHING | 7841472 |
| 3828 | 40200.40300.41200.53000.55600.59800.239300.2315400 | LIFT BLOCK WORK | 3d | 2027-09-29 | 2027-10-01 | 3820SS |  | RGA -FINISHING | 7841482 |
| 3829 | 40200.40300.41200.53000.55600.59800.239300.2315500 | LIFT DADO WORK | 3d | 2028-01-11 | 2028-01-13 | 3821SS |  | RGA -FINISHING | 7841492 |
| 3830 | 40200.40300.41200.53000.55600.59800.239300.2315600 | LOBBY FLOORING WORK | 4d | 2028-01-14 | 2028-01-17 | 3829 |  | RGA -FINISHING | 7841502 |
| 3831 | 40200.40300.41200.53000.55600.59800.239300.2315700 | ELECTRICAL WIRING & SWITCH PLATE FIXING WORK | 6d | 2028-01-18 | 2028-01-23 | 3830 |  | RGA -FINISHING | 7841512 |
| 3832 | 40200.40300.41200.53000.55600.59800.239300.2315800 | False ceiling & 1ST COAT PAINTING | 15d | 2028-01-24 | 2028-02-07 | 3831 |  | RGA -FINISHING | 7841522 |
| 3833 | 40200.40300.41200.53000.55600.59800.239300.2315900 | CLEANING | 3d | 2028-02-08 | 2028-02-10 | 3832 |  | RGA -FINISHING | 7841532 |

Notes:
- 3811: Assumed
- 3819: Assumed
- 3827: Assumed

| ID | WBS | Task | Duration | Start | Finish | Predecessors | Constraint | Calendar | Unique_Task_ID |
| --- | --- | --- | --- | --- | --- | --- | --- | --- | --- |
| 3834 | 40200.40300.41200.53000.55600.59800.239400 | **21th FLOOR** | 168d | 2027-08-27 | 2028-02-10 |  | start no earlier than 2027-08-27 | RGA -FINISHING | 7806412 |
| 3835 | 40200.40300.41200.53000.55600.59800.239400.2316000 | FIRE FIGHTING | 10d | 2027-08-27 | 2027-09-05 | 3603FS-5d |  | RGA -FINISHING | 7841542 |
| 3836 | 40200.40300.41200.53000.55600.59800.239400.2316100 | LIFT BLOCK WORK | 3d | 2027-09-29 | 2027-10-01 | 3828SS |  | RGA -FINISHING | 7841552 |
| 3837 | 40200.40300.41200.53000.55600.59800.239400.2316200 | LIFT DADO WORK | 3d | 2028-01-11 | 2028-01-13 | 3829SS |  | RGA -FINISHING | 7841562 |
| 3838 | 40200.40300.41200.53000.55600.59800.239400.2316300 | LOBBY FLOORING WORK | 4d | 2028-01-14 | 2028-01-17 | 3837 |  | RGA -FINISHING | 7841572 |
| 3839 | 40200.40300.41200.53000.55600.59800.239400.2316400 | ELECTRICAL WIRING & SWITCH PLATE FIXING WORK | 6d | 2028-01-18 | 2028-01-23 | 3838 |  | RGA -FINISHING | 7841582 |
| 3840 | 40200.40300.41200.53000.55600.59800.239400.2316500 | False ceiling & 1ST COAT PAINTING | 15d | 2028-01-24 | 2028-02-07 | 3839 |  | RGA -FINISHING | 7841592 |
| 3841 | 40200.40300.41200.53000.55600.59800.239400.2316600 | CLEANING | 3d | 2028-02-08 | 2028-02-10 | 3840 |  | RGA -FINISHING | 7841602 |
| 3842 | 40200.40300.41200.53000.55600.59800.239500 | **22th FLOOR** | 156d | 2027-09-11 | 2028-02-13 |  | start no earlier than 2027-09-11 | RGA -FINISHING | 7806422 |
| 3843 | 40200.40300.41200.53000.55600.59800.239500.2316700 | FIRE FIGHTING | 10d | 2027-09-11 | 2027-09-20 | 3616FS-5d |  | RGA -FINISHING | 7841612 |
| 3844 | 40200.40300.41200.53000.55600.59800.239500.2316800 | LIFT BLOCK WORK | 3d | 2027-10-02 | 2027-10-04 | 3836 |  | RGA -FINISHING | 7841622 |
| 3845 | 40200.40300.41200.53000.55600.59800.239500.2316900 | LIFT DADO WORK | 3d | 2028-01-14 | 2028-01-16 | 3837 |  | RGA -FINISHING | 7841632 |
| 3846 | 40200.40300.41200.53000.55600.59800.239500.2317000 | LOBBY FLOORING WORK | 4d | 2028-01-17 | 2028-01-20 | 3845 |  | RGA -FINISHING | 7841642 |
| 3847 | 40200.40300.41200.53000.55600.59800.239500.2317100 | ELECTRICAL WIRING & SWITCH PLATE FIXING WORK | 6d | 2028-01-21 | 2028-01-26 | 3846 |  | RGA -FINISHING | 7841652 |
| 3848 | 40200.40300.41200.53000.55600.59800.239500.2317200 | False ceiling & 1ST COAT PAINTING | 15d | 2028-01-27 | 2028-02-10 | 3847 |  | RGA -FINISHING | 7841662 |
| 3849 | 40200.40300.41200.53000.55600.59800.239500.2317300 | CLEANING | 3d | 2028-02-11 | 2028-02-13 | 3848 |  | RGA -FINISHING | 7841672 |
| 3850 | 40200.40300.41200.53000.55600.59800.239600 | **23th FLOOR** | 147d | 2027-09-20 | 2028-02-13 |  | start no earlier than 2027-09-20 | RGA -FINISHING | 7806432 |
| 3851 | 40200.40300.41200.53000.55600.59800.239600.2317400 | FIRE FIGHTING | 10d | 2027-09-20 | 2027-09-29 | 3629FS-5d |  | RGA -FINISHING | 7841682 |
| 3852 | 40200.40300.41200.53000.55600.59800.239600.2317500 | LIFT BLOCK WORK | 3d | 2027-10-02 | 2027-10-04 | 3844SS |  | RGA -FINISHING | 7841692 |
| 3853 | 40200.40300.41200.53000.55600.59800.239600.2317600 | LIFT DADO WORK | 3d | 2028-01-14 | 2028-01-16 | 3845SS |  | RGA -FINISHING | 7841702 |
| 3854 | 40200.40300.41200.53000.55600.59800.239600.2317700 | LOBBY FLOORING WORK | 4d | 2028-01-17 | 2028-01-20 | 3853 |  | RGA -FINISHING | 7841712 |
| 3855 | 40200.40300.41200.53000.55600.59800.239600.2317800 | ELECTRICAL WIRING & SWITCH PLATE FIXING WORK | 6d | 2028-01-21 | 2028-01-26 | 3854 |  | RGA -FINISHING | 7841722 |
| 3856 | 40200.40300.41200.53000.55600.59800.239600.2317900 | False ceiling & 1ST COAT PAINTING | 15d | 2028-01-27 | 2028-02-10 | 3855 |  | RGA -FINISHING | 7841732 |
| 3857 | 40200.40300.41200.53000.55600.59800.239600.2318000 | CLEANING | 3d | 2028-02-11 | 2028-02-13 | 3856 |  | RGA -FINISHING | 7841742 |

Notes:
- 3835: Assumed
- 3843: Assumed
- 3851: Assumed

| ID | WBS | Task | Duration | Start | Finish | Predecessors | Constraint | Calendar | Unique_Task_ID |
| --- | --- | --- | --- | --- | --- | --- | --- | --- | --- |
| 3858 | 40200.40300.41200.53000.55600.59800.239700 | **24th FLOOR** | 138d | 2027-09-29 | 2028-02-13 |  | start no earlier than 2027-09-29 | RGA -FINISHING | 7806442 |
| 3859 | 40200.40300.41200.53000.55600.59800.239700.2318100 | FIRE FIGHTING | 10d | 2027-09-29 | 2027-10-08 | 3642FS-5d |  | RGA -FINISHING | 7841752 |
| 3860 | 40200.40300.41200.53000.55600.59800.239700.2318200 | LIFT BLOCK WORK | 3d | 2027-10-02 | 2027-10-04 | 3852SS |  | RGA -FINISHING | 7841762 |
| 3861 | 40200.40300.41200.53000.55600.59800.239700.2318300 | LIFT DADO WORK | 3d | 2028-01-14 | 2028-01-16 | 3853SS |  | RGA -FINISHING | 7841772 |
| 3862 | 40200.40300.41200.53000.55600.59800.239700.2318400 | LOBBY FLOORING WORK | 4d | 2028-01-17 | 2028-01-20 | 3861 |  | RGA -FINISHING | 7841782 |
| 3863 | 40200.40300.41200.53000.55600.59800.239700.2318500 | ELECTRICAL WIRING & SWITCH PLATE FIXING WORK | 6d | 2028-01-21 | 2028-01-26 | 3862 |  | RGA -FINISHING | 7841792 |
| 3864 | 40200.40300.41200.53000.55600.59800.239700.2318600 | False ceiling & 1ST COAT PAINTING | 15d | 2028-01-27 | 2028-02-10 | 3863 |  | RGA -FINISHING | 7841802 |
| 3865 | 40200.40300.41200.53000.55600.59800.239700.2318700 | CLEANING | 3d | 2028-02-11 | 2028-02-13 | 3864 |  | RGA -FINISHING | 7841812 |
| 3866 | 40200.40300.41200.53000.55600.59800.239800 | **25th FLOOR** | 135d | 2027-10-02 | 2028-02-13 |  | start no earlier than 2027-10-02 | RGA -FINISHING | 7806452 |
| 3867 | 40200.40300.41200.53000.55600.59800.239800.2318800 | FIRE FIGHTING | 10d | 2027-10-08 | 2027-10-17 | 3655FS-5d |  | RGA -FINISHING | 7841822 |
| 3868 | 40200.40300.41200.53000.55600.59800.239800.2318900 | LIFT BLOCK WORK | 3d | 2027-10-02 | 2027-10-04 | 3860SS |  | RGA -FINISHING | 7841832 |
| 3869 | 40200.40300.41200.53000.55600.59800.239800.2319000 | LIFT DADO WORK | 3d | 2028-01-14 | 2028-01-16 | 3861SS |  | RGA -FINISHING | 7841842 |
| 3870 | 40200.40300.41200.53000.55600.59800.239800.2319100 | LOBBY FLOORING WORK | 4d | 2028-01-17 | 2028-01-20 | 3869 |  | RGA -FINISHING | 7841852 |
| 3871 | 40200.40300.41200.53000.55600.59800.239800.2319200 | ELECTRICAL WIRING & SWITCH PLATE FIXING WORK | 6d | 2028-01-21 | 2028-01-26 | 3870 |  | RGA -FINISHING | 7841862 |
| 3872 | 40200.40300.41200.53000.55600.59800.239800.2319300 | False ceiling & 1ST COAT PAINTING | 15d | 2028-01-27 | 2028-02-10 | 3871 |  | RGA -FINISHING | 7841872 |
| 3873 | 40200.40300.41200.53000.55600.59800.239800.2319400 | CLEANING | 3d | 2028-02-11 | 2028-02-13 | 3872 |  | RGA -FINISHING | 7841882 |
| 3874 | 40200.40300.41200.53000.55600.161300 | **Common MEP Works** | 257d | 2027-10-15 | 2028-06-27 |  | start no earlier than 2027-10-15 | RGA -FINISHING | 7805262 |
| 3875 | 40200.40300.41200.53000.55600.161300.481100 | **Lift Works** | 61d | 2027-10-27 | 2027-12-26 |  | start no earlier than 2027-10-27 | RGA -FINISHING | 7811342 |
| 3876 | 40200.40300.41200.53000.55600.161300.481100.2319500 | Lift Shaft Handover | 20d | 2027-10-27 | 2027-11-15 | 3132 |  | RGA -FINISHING | 7842372 |
| 3877 | 40200.40300.41200.53000.55600.161300.481100.2319600 | Lift installation work | 40d | 2027-11-17 | 2027-12-26 | 3876FS+1d |  | RGA -FINISHING | 7842382 |
| 3878 | 40200.40300.41200.53000.55600.161300.480900 | **Plumbing works** | 98d | 2028-03-09 | 2028-06-14 |  | start no earlier than 2028-03-09 | RGA -FINISHING | 7811332 |
| 3879 | 40200.40300.41200.53000.55600.161300.480900.2319700 | Shaft Plumbing | 90d | 2028-03-17 | 2028-06-14 | 3325FS+45d |  | RGA -FINISHING | 7842392 |
| 3880 | 40200.40300.41200.53000.55600.161300.480900.2319800 | Terrace Looping | 90d | 2028-03-09 | 2028-06-06 | 3323 |  | RGA -FINISHING | 7842402 |
| 3881 | 40200.40300.41200.53000.55600.161300.480800 | **Fire Fighting works** | 75d | 2027-10-15 | 2027-12-28 |  | start no earlier than 2027-10-15 | RGA -FINISHING | 7811322 |
| 3882 | 40200.40300.41200.53000.55600.161300.480800.2319900 | Shaft Downtake works | 60d | 2027-10-15 | 2027-12-13 | 3127FS+21d |  | RGA -FINISHING | 7842412 |
| 3883 | 40200.40300.41200.53000.55600.161300.480800.2320000 | Connection to pump room | 15d | 2027-12-14 | 2027-12-28 | 3882 |  | RGA -FINISHING | 7842422 |

Notes:
- 3859: Assumed
- 3867: Assumed
- 3874: Completion in 12 months post last RCC

| ID | WBS | Task | Duration | Start | Finish | Predecessors | Complete | Constraint | Calendar | Unique_Task_ID |
| --- | --- | --- | --- | --- | --- | --- | --- | --- | --- | --- |
| 3884 | 40200.40300.41200.53000.55600.161300.343200 | **Electrical works** | 105d | 2028-03-15 | 2028-06-27 |  |  | start no earlier than 2028-03-15 | RGA -FINISHING | 7808252 |
| 3885 | 40200.40300.41200.53000.55600.161300.343200.2320100 | Shaft cabling | 45d | 2028-04-21 | 2028-06-04 | 3122FS+220d |  |  | RGA -FINISHING | 7842432 |
| 3886 | 40200.40300.41200.53000.55600.161300.343200.2320200 | Meter room erection | 15d | 2028-05-29 | 2028-06-12 | 2985FS+260d |  |  | RGA -FINISHING | 7842442 |
| 3887 | 40200.40300.41200.53000.55600.161300.343200.2320300 | Panel erection | 15d | 2028-06-13 | 2028-06-27 | 3886 |  |  | RGA -FINISHING | 7842452 |
| 3888 | 40200.40300.41200.53000.55600.161300.343200.2320400 | DG Installtion | 10d | 2028-03-15 | 2028-03-24 | 3886FS-90d |  |  | RGA -FINISHING | 7842462 |
| 3889 | 40200.40300.41200.53000.55600.161300.343200.2320500 | Transformer erection | 15d | 2028-03-15 | 2028-03-29 | 3888SS |  |  | RGA -FINISHING | 7842472 |
| 3890 | 40200.40300.41200.352400 | **Capex Item Procurment** | 170d | 2027-10-27 | 2028-04-13 |  |  | start no earlier than 2027-10-27 | RGA -FINISHING | 7808722 |
| 3891 | 40200.40300.41200.352400.570300 | Lift Procurement & delivery | 30d | 2027-10-27 | 2027-11-25 | 3876SS |  |  | RGA -FINISHING | 7814542 |
| 3892 | 40200.40300.41200.352400.570400 | Panels | 30d | 2028-03-15 | 2028-04-13 | 3887SS-90d |  |  | RGA -FINISHING | 7814552 |
| 3893 | 40200.40300.41200.352400.570500 | DG procurement | 30d | 2027-12-16 | 2028-01-14 | 3888SS-90d |  |  | RGA -FINISHING | 7814562 |
| 3894 | 40200.40300.41200.352400.570600 | Transformer | 30d | 2027-12-16 | 2028-01-14 | 3889SS-90d |  |  | RGA -FINISHING | 7814572 |
| 3895 | 40200.40300.41200.44700 | **Handing Over Activities** | 56d | 2028-05-24 | 2028-07-18 |  |  | start no earlier than 2028-05-24 | RGA -FINISHING | 7803232 |
| 3896 | 40200.40300.41200.44700.570700 | SOAP WASHING GROUND FLOOR | 1d | 2028-05-24 | 2028-05-24 | 3873FS+100d |  |  | RGA -FINISHING | 7814582 |
| 3897 | 40200.40300.41200.44700.570800 | SOAP WASHING L1 | 1d | 2028-05-25 | 2028-05-25 | 3896 |  |  | RGA -FINISHING | 7814592 |
| 3898 | 40200.40300.41200.44700.570900 | SOAP WASHING L2 | 1d | 2028-05-26 | 2028-05-26 | 3897 |  |  | RGA -FINISHING | 7814602 |
| 3899 | 40200.40300.41200.44700.571000 | SOAP WASHING L3 | 1d | 2028-05-27 | 2028-05-27 | 3898 |  |  | RGA -FINISHING | 7814612 |
| 3900 | 40200.40300.41200.44700.571100 | SOAP WASHING L4 | 1d | 2028-05-28 | 2028-05-28 | 3899 |  |  | RGA -FINISHING | 7814622 |
| 3901 | 40200.40300.41200.44700.571200 | SOAP WASHING L5 | 1d | 2028-05-29 | 2028-05-29 | 3900 |  |  | RGA -FINISHING | 7814632 |
| 3902 | 40200.40300.41200.44700.571300 | SOAP WASHING L6 | 1d | 2028-05-30 | 2028-05-30 | 3901 |  |  | RGA -FINISHING | 7814642 |
| 3903 | 40200.40300.41200.44700.571400 | SOAP WASHING L7 | 1d | 2028-05-31 | 2028-05-31 | 3902 |  |  | RGA -FINISHING | 7814652 |
| 3904 | 40200.40300.41200.44700.571500 | SOAP WASHING L8 | 1d | 2028-06-01 | 2028-06-01 | 3903 |  |  | RGA -FINISHING | 7814662 |
| 3905 | 40200.40300.41200.44700.571600 | SOAP WASHING L9 | 1d | 2028-06-02 | 2028-06-02 | 3904 |  |  | RGA -FINISHING | 7814672 |
| 3906 | 40200.40300.41200.44700.571700 | SOAP WASHING L10 | 1d | 2028-06-03 | 2028-06-03 | 3905 |  |  | RGA -FINISHING | 7814682 |
| 3907 | 40200.40300.41200.44700.571800 | SOAP WASHING L11 | 1d | 2028-06-04 | 2028-06-04 | 3906 |  |  | RGA -FINISHING | 7814692 |
| 3908 | 40200.40300.41200.44700.571900 | SOAP WASHING L12 | 1d | 2028-06-05 | 2028-06-05 | 3907 |  |  | RGA -FINISHING | 7814702 |
| 3909 | 40200.40300.41200.44700.572000 | SOAP WASHING L13 | 1d | 2028-06-06 | 2028-06-06 | 3908 |  |  | RGA -FINISHING | 7814712 |
| 3910 | 40200.40300.41200.44700.572100 | SOAP WASHING L14 | 1d | 2028-06-07 | 2028-06-07 | 3909 |  |  | RGA -FINISHING | 7814722 |
| 3911 | 40200.40300.41200.44700.572200 | SOAP WASHING L15 | 1d | 2028-06-08 | 2028-06-08 | 3910 |  |  | RGA -FINISHING | 7814732 |
| 3912 | 40200.40300.41200.44700.572300 | SOAP WASHING L16 | 1d | 2028-06-09 | 2028-06-09 | 3911 |  |  | RGA -FINISHING | 7814742 |
| 3913 | 40200.40300.41200.44700.572400 | SOAP WASHING L17 | 1d | 2028-06-10 | 2028-06-10 | 3912 |  |  | RGA -FINISHING | 7814752 |
| 3914 | 40200.40300.41200.44700.572500 | SOAP WASHING L18 | 1d | 2028-06-11 | 2028-06-11 | 3913 |  |  | RGA -FINISHING | 7814762 |
| 3915 | 40200.40300.41200.44700.572600 | SOAP WASHING L19 | 1d | 2028-06-12 | 2028-06-12 | 3914 |  |  | RGA -FINISHING | 7814772 |
| 3916 | 40200.40300.41200.44700.572700 | SOAP WASHING L20 | 1d | 2028-06-13 | 2028-06-13 | 3915 |  |  | RGA -FINISHING | 7814782 |
| 3917 | 40200.40300.41200.44700.572800 | SOAP WASHING L21 | 1d | 2028-06-14 | 2028-06-14 | 3916 |  |  | RGA -FINISHING | 7814792 |
| 3918 | 40200.40300.41200.44700.572900 | SOAP WASHING L22 | 1d | 2028-06-15 | 2028-06-15 | 3917 |  |  | RGA -FINISHING | 7814802 |
| 3919 | 40200.40300.41200.44700.573000 | SOAP WASHING L23 | 1d | 2028-06-16 | 2028-06-16 | 3918 |  |  | RGA -FINISHING | 7814812 |
| 3920 | 40200.40300.41200.44700.573100 | SOAP WASHING L24 | 1d | 2028-06-17 | 2028-06-17 | 3919 |  |  | RGA -FINISHING | 7814822 |
| 3921 | 40200.40300.41200.44700.573200 | SOAP WASHING L25 | 1d | 2028-06-18 | 2028-06-18 | 3920 |  |  | RGA -FINISHING | 7814832 |
| 3922 | 40200.40300.41200.44700.573300 | CP & SANITARYWARE FIXING Ground | 2d | 2028-05-26 | 2028-05-27 | 3897 |  |  | RGA -FINISHING | 7814862 |
| 3923 | 40200.40300.41200.44700.573400 | CP & SANITARYWARE FIXING L1 | 2d | 2028-05-28 | 2028-05-29 | 3922 |  |  | RGA -FINISHING | 7814872 |
| 3924 | 40200.40300.41200.44700.573500 | CP & SANITARYWARE FIXING L2 | 2d | 2028-05-30 | 2028-05-31 | 3923 |  |  | RGA -FINISHING | 7814882 |
| 3925 | 40200.40300.41200.44700.573600 | CP & SANITARYWARE FIXING L3 | 2d | 2028-06-01 | 2028-06-02 | 3924 |  |  | RGA -FINISHING | 7814892 |
| 3926 | 40200.40300.41200.44700.573700 | CP & SANITARYWARE FIXING L4 | 2d | 2028-06-03 | 2028-06-04 | 3925 |  |  | RGA -FINISHING | 7814902 |
| 3927 | 40200.40300.41200.44700.573800 | CP & SANITARYWARE FIXING L5 | 2d | 2028-06-05 | 2028-06-06 | 3926 |  |  | RGA -FINISHING | 7814912 |
| 3928 | 40200.40300.41200.44700.573900 | CP & SANITARYWARE FIXING L6 | 2d | 2028-06-07 | 2028-06-08 | 3927 |  |  | RGA -FINISHING | 7814922 |
| 3929 | 40200.40300.41200.44700.574000 | CP & SANITARYWARE FIXING L7 | 2d | 2028-06-09 | 2028-06-10 | 3928 |  |  | RGA -FINISHING | 7814932 |
| 3930 | 40200.40300.41200.44700.574100 | CP & SANITARYWARE FIXING L8 | 2d | 2028-06-11 | 2028-06-12 | 3929 |  |  | RGA -FINISHING | 7814942 |
| 3931 | 40200.40300.41200.44700.574200 | CP & SANITARYWARE FIXING L9 | 2d | 2028-06-13 | 2028-06-14 | 3930 |  |  | RGA -FINISHING | 7814952 |
| 3932 | 40200.40300.41200.44700.574300 | CP & SANITARYWARE FIXING L10 | 2d | 2028-06-15 | 2028-06-16 | 3931 |  |  | RGA -FINISHING | 7814962 |
| 3933 | 40200.40300.41200.44700.574400 | CP & SANITARYWARE FIXING L11 | 2d | 2028-06-17 | 2028-06-18 | 3932 |  |  | RGA -FINISHING | 7814972 |
| 3934 | 40200.40300.41200.44700.574500 | CP & SANITARYWARE FIXING L12 | 2d | 2028-06-19 | 2028-06-20 | 3933 |  |  | RGA -FINISHING | 7814982 |
| 3935 | 40200.40300.41200.44700.574600 | CP & SANITARYWARE FIXING L13 | 2d | 2028-06-21 | 2028-06-22 | 3934 |  |  | RGA -FINISHING | 7814992 |
| 3936 | 40200.40300.41200.44700.574700 | CP & SANITARYWARE FIXING L14 | 2d | 2028-06-23 | 2028-06-24 | 3935 |  |  | RGA -FINISHING | 7815002 |
| 3937 | 40200.40300.41200.44700.574800 | CP & SANITARYWARE FIXING L15 | 2d | 2028-06-25 | 2028-06-26 | 3936 |  |  | RGA -FINISHING | 7815012 |
| 3938 | 40200.40300.41200.44700.574900 | CP & SANITARYWARE FIXING L16 | 2d | 2028-06-27 | 2028-06-28 | 3937 |  |  | RGA -FINISHING | 7815022 |
| 3939 | 40200.40300.41200.44700.575000 | CP & SANITARYWARE FIXING L17 | 2d | 2028-06-29 | 2028-06-30 | 3938 |  |  | RGA -FINISHING | 7815032 |
| 3940 | 40200.40300.41200.44700.575100 | CP & SANITARYWARE FIXING L18 | 2d | 2028-07-01 | 2028-07-02 | 3939 |  |  | RGA -FINISHING | 7815042 |
| 3941 | 40200.40300.41200.44700.575200 | CP & SANITARYWARE FIXING L18 | 2d | 2028-07-03 | 2028-07-04 | 3940 |  |  | RGA -FINISHING | 7815052 |
| 3942 | 40200.40300.41200.44700.575300 | CP & SANITARYWARE FIXING L19 | 2d | 2028-07-05 | 2028-07-06 | 3941 |  |  | RGA -FINISHING | 7815062 |
| 3943 | 40200.40300.41200.44700.575400 | CP & SANITARYWARE FIXING L20 | 2d | 2028-07-07 | 2028-07-08 | 3942 |  |  | RGA -FINISHING | 7815072 |
| 3944 | 40200.40300.41200.44700.575500 | CP & SANITARYWARE FIXING L21 | 2d | 2028-07-09 | 2028-07-10 | 3943 |  |  | RGA -FINISHING | 7815082 |
| 3945 | 40200.40300.41200.44700.575600 | CP & SANITARYWARE FIXING L22 | 2d | 2028-07-11 | 2028-07-12 | 3944 |  |  | RGA -FINISHING | 7815092 |
| 3946 | 40200.40300.41200.44700.575700 | CP & SANITARYWARE FIXING L23 | 2d | 2028-07-13 | 2028-07-14 | 3945 |  |  | RGA -FINISHING | 7815102 |
| 3947 | 40200.40300.41200.44700.575800 | CP & SANITARYWARE FIXING L24 | 2d | 2028-07-15 | 2028-07-16 | 3946 |  |  | RGA -FINISHING | 7815112 |
| 3948 | 40200.40300.41200.44700.575900 | CP & SANITARYWARE FIXING L25 | 2d | 2028-07-17 | 2028-07-18 | 3947 |  |  | RGA -FINISHING | 7815122 |
| 3949 | 40200.40300.41200.536300 | MIscellaneous (Aluform Supply) | 47d | 2025-09-01 | 2025-10-17 | 3022FS-67.07d | 100% | start no earlier than 2025-09-01 | RGA -FINISHING | 7812572 |
| 3950 | 40200.40300.41200.545800 | Miscellaneous | 550d | 2027-04-21 | 2029-01-20 | 3949FS+471d |  |  | Indian Calendar | 7812582 |

| ID | WBS | Task | Type | Duration | Start | Finish | Predecessors | Complete | Constraint | Calendar | Unique_Task_ID |
| --- | --- | --- | --- | --- | --- | --- | --- | --- | --- | --- | --- |
| 3951 | 40200.40300.40900 | **TOWER 3 - (2B+G+25 Floors+Terrace)** |  | 1405d | 2025-02-12 | 2029-01-25 |  | 2% | start no earlier than 2025-02-12 | RGA - STRUCTURE | 7803182 |
| 3952 | 40200.40300.40900.1170400 | Start date for Tower 3 | milestone | 0d | 2025-12-21 | 2025-12-21 | 4940FS+7d |  |  | RGA - STRUCTURE | 7847642 |
| 3953 | 40200.40300.40900.460400 | **Earth work** |  | 221d | 2025-02-12 | 2025-09-23 |  | 100% | start no earlier than 2025-02-12 | RGA - STRUCTURE | 7811772 |
| 3954 | 40200.40300.40900.460400.521200 | EXCAVATION - Tower Area |  | 98d | 2025-02-12 | 2025-06-20 | 3952SS-115d | 100% | start no earlier than 2025-02-12 | RGA - STRUCTURE | 7815152 |
| 3955 | 40200.40300.40900.460400.521100 | Excavation - Non Tower Area |  | 56d | 2025-02-24 | 2025-09-23 | 3954FS-145d | 100% | start no earlier than 2025-02-24 | 5 day week, Bank Hols Xmas | 7433495 |
| 3956 | 40200.40300.40900.70300 | **Substructure works (Works up to plinth)** |  | 1049d | 2025-10-13 | 2028-09-30 |  | 2% | start no earlier than 2025-10-13 | RGA - STRUCTURE | 7803892 |
| 3957 | 40200.40300.40900.70300.168000 | **Civil works (Shell & Core basement)** |  | 103d | 2025-10-13 | 2026-01-24 |  | 30% | start no earlier than 2025-10-13 | RGA - STRUCTURE | 7806872 |
| 3958 | 40200.40300.40900.70300.168000.252400 | **RCC Works - Tower area- 1st Basement** |  | 68d | 2025-10-13 | 2025-12-20 |  | 57% | start no earlier than 2025-10-13 | RGA - STRUCTURE | 7808262 |
| 3959 | 40200.40300.40900.70300.168000.252400.369100 | **Foundation** |  | 42d | 2025-10-13 | 2025-11-24 |  | 100% | start no earlier than 2025-10-13 | RGA - STRUCTURE | 7809332 |
| 3960 | 40200.40300.40900.70300.168000.252400.369100.544500 | Pocket Excavation |  | 1d | 2025-10-14 | 2025-10-14 | 3954FS+19d | 100% | start no earlier than 2025-10-14 | RGA - STRUCTURE | 7842482 |
| 3961 | 40200.40300.40900.70300.168000.252400.369100.544600 | Footing PCC |  | 5d | 2025-10-14 | 2025-11-12 | 3960 | 100% | start no earlier than 2025-10-14 | RGA - STRUCTURE | 7842492 |
| 3962 | 40200.40300.40900.70300.168000.252400.369100.544700 | Footing / Raft works |  | 19d | 2025-10-13 | 2025-11-24 | 3961FS-29d | 100% | start no earlier than 2025-10-13 | RGA - STRUCTURE | 7842502 |
| 3963 | 40200.40300.40900.70300.168000.252400.480700 | **UB Slab** |  | 52d | 2025-10-30 | 2025-12-20 |  | 16% | start no earlier than 2025-10-30 | RGA - STRUCTURE | 7811312 |
| 3964 | 40200.40300.40900.70300.168000.252400.480700.544800 | Columns in Upper basement |  | 15d | 2025-10-30 | 2025-12-10 | 3962FS-30d | 26% | start no earlier than 2025-10-30 | RGA - STRUCTURE | 7842512 |
| 3965 | 40200.40300.40900.70300.168000.252400.480700.2320600 | Upper Basement slab |  | 10d | 2025-12-11 | 2025-12-20 | 3964 |  |  | RGA - STRUCTURE | 7842522 |
| 3966 | 40200.40300.40900.70300.168000.494500 | **Ground Floor Slab** |  | 35d | 2025-12-21 | 2026-01-24 |  |  | start no earlier than 2025-12-21 | RGA - STRUCTURE | 8865664 |
| 3967 | 40200.40300.40900.70300.168000.494500.989200 | Columns in Upper basement |  | 20d | 2025-12-21 | 2026-01-09 | 3965 |  |  | RGA - STRUCTURE | 8865674 |
| 3968 | 40200.40300.40900.70300.168000.494500.989300 | Upper Basement slab |  | 15d | 2026-01-10 | 2026-01-24 | 3967 |  |  | RGA - STRUCTURE | 8865684 |
| 3969 | 40200.40300.40900.70300.168000.853600 | Backfilling |  | 10d | 2025-11-30 | 2025-12-09 |  |  | start no earlier than 2025-11-30 | RGA - STRUCTURE | 7820172 |
| 3970 | 40200.40300.40900.70300.492300 | **Basement Block work and Plaster finishing** |  | 90d | 2027-05-25 | 2027-08-22 |  |  | start no earlier than 2027-05-25 | RGA - STRUCTURE | 7812042 |
| 3971 | 40200.40300.40900.70300.492300.853700 | Upper basement |  | 45d | 2027-05-25 | 2027-07-08 | 4085 |  |  | RGA - STRUCTURE | 7820182 |
| 3972 | 40200.40300.40900.70300.492300.853800 | Upper Basement Plumbing |  | 45d | 2027-07-09 | 2027-08-22 | 3971 |  |  | RGA -FINISHING | 8865694 |
| 3973 | 40200.40300.40900.70300.161900 | **Services** |  | 450d | 2027-07-09 | 2028-09-30 |  |  | start no earlier than 2027-07-09 | RGA -FINISHING | 7805362 |
| 3974 | 40200.40300.40900.70300.161900.366500 | **Plumbing** |  | 180d | 2027-07-09 | 2028-01-04 |  |  | start no earlier than 2027-07-09 | RGA -FINISHING | 7809142 |
| 3975 | 40200.40300.40900.70300.161900.366500.480600 | **Upper Basement Plumbing** |  | 180d | 2027-07-09 | 2028-01-04 |  |  | start no earlier than 2027-07-09 | RGA -FINISHING | 7812032 |
| 3976 | 40200.40300.40900.70300.161900.366500.480600.2320700 | Upper Basement Plumbing |  | 90d | 2027-07-09 | 2027-10-06 | 3971 |  |  | RGA -FINISHING | 7842532 |
| 3977 | 40200.40300.40900.70300.161900.366500.480600.2320800 | Upper Basement Plumbing |  | 90d | 2027-10-07 | 2028-01-04 | 3976 |  |  | RGA -FINISHING | 8865704 |

Notes:
- 3953: 2 Months for Excavation

| ID | WBS | Task | Duration | Start | Finish | Predecessors | Constraint | Calendar | Unique_Task_ID |
| --- | --- | --- | --- | --- | --- | --- | --- | --- | --- |
| 3978 | 40200.40300.40900.70300.161900.366600 | **Fire fighting** | 180d | 2027-10-07 | 2028-04-03 |  | start no earlier than 2027-10-07 | RGA -FINISHING | 7809152 |
| 3979 | 40200.40300.40900.70300.161900.366600.480500 | **Upper Basement Fire fighting** | 180d | 2027-10-07 | 2028-04-03 |  | start no earlier than 2027-10-07 | RGA -FINISHING | 7812022 |
| 3980 | 40200.40300.40900.70300.161900.366600.480500.2320900 | Upper Basement Fire fighting | 90d | 2027-10-07 | 2028-01-04 | 3976 |  | RGA -FINISHING | 7842542 |
| 3981 | 40200.40300.40900.70300.161900.366600.480500.2321000 | Upper Basement Plumbing | 90d | 2028-01-05 | 2028-04-03 | 3980 |  | RGA -FINISHING | 8865714 |
| 3982 | 40200.40300.40900.70300.161900.366700 | **Ventilation** | 180d | 2028-01-05 | 2028-07-02 |  | start no earlier than 2028-01-05 | RGA -FINISHING | 7809162 |
| 3983 | 40200.40300.40900.70300.161900.366700.480400 | **Upper Basement ventilation** | 180d | 2028-01-05 | 2028-07-02 |  | start no earlier than 2028-01-05 | RGA -FINISHING | 7812012 |
| 3984 | 40200.40300.40900.70300.161900.366700.480400.2321100 | Upper Basement ventilation | 90d | 2028-01-05 | 2028-04-03 | 3980 |  | RGA -FINISHING | 7842552 |
| 3985 | 40200.40300.40900.70300.161900.366700.480400.2321200 | Upper Basement Plumbing | 90d | 2028-04-04 | 2028-07-02 | 3984 |  | RGA -FINISHING | 8865724 |
| 3986 | 40200.40300.40900.70300.161900.366800 | **Electrification** | 180d | 2028-04-04 | 2028-09-30 |  | start no earlier than 2028-04-04 | RGA -FINISHING | 7809172 |
| 3987 | 40200.40300.40900.70300.161900.366800.480200 | **Upper Basement Electrification** | 180d | 2028-04-04 | 2028-09-30 |  | start no earlier than 2028-04-04 | RGA -FINISHING | 7812002 |
| 3988 | 40200.40300.40900.70300.161900.366800.480200.2321300 | Upper Basement Electrification | 90d | 2028-04-04 | 2028-07-02 | 3984 |  | RGA -FINISHING | 7842562 |
| 3989 | 40200.40300.40900.70300.161900.366800.480200.2321400 | Upper Basement Plumbing | 90d | 2028-07-03 | 2028-09-30 | 3988 |  | RGA -FINISHING | 8865734 |
| 3990 | 40200.40300.40900.70300.161900.366900 | **Security installations** | 90d | 2028-07-03 | 2028-09-30 |  | start no earlier than 2028-07-03 | RGA -FINISHING | 7809182 |
| 3991 | 40200.40300.40900.70300.161900.366900.479900 | **Upper Basement Security installations** | 90d | 2028-07-03 | 2028-09-30 |  | start no earlier than 2028-07-03 | RGA -FINISHING | 7811992 |
| 3992 | 40200.40300.40900.70300.161900.366900.479900.2321500 | Upper Basement Security installations | 45d | 2028-07-03 | 2028-08-16 | 3988 |  | RGA -FINISHING | 7842572 |
| 3993 | 40200.40300.40900.70300.161900.366900.479900.2321600 | Upper Basement Plumbing | 45d | 2028-08-17 | 2028-09-30 | 3992 |  | RGA -FINISHING | 8865744 |
| 3994 | 40200.40300.40900.70300.340800 | **Finishing work** | 270d | 2027-07-09 | 2028-04-03 |  | start no earlier than 2027-07-09 | RGA -FINISHING | 7808652 |
| 3995 | 40200.40300.40900.70300.340800.494300 | **Basement Flooring** | 180d | 2027-07-09 | 2028-01-04 |  | start no earlier than 2027-07-09 | RGA -FINISHING | 7812422 |
| 3996 | 40200.40300.40900.70300.340800.494300.989400 | 1st Basement ventilation | 90d | 2027-07-09 | 2027-10-06 | 3971 |  | RGA -FINISHING | 7832002 |
| 3997 | 40200.40300.40900.70300.340800.494300.989500 | Upper Basement Plumbing | 90d | 2027-10-07 | 2028-01-04 | 3996 |  | RGA -FINISHING | 8865754 |
| 3998 | 40200.40300.40900.70300.340800.494200 | **Basement Painting (1st Coat)** | 180d | 2027-10-07 | 2028-04-03 |  | start no earlier than 2027-10-07 | RGA -FINISHING | 7812432 |
| 3999 | 40200.40300.40900.70300.340800.494200.989600 | 2nd Basement ventilation | 90d | 2027-10-07 | 2028-01-04 | 3996 |  | RGA -FINISHING | 7832012 |
| 4000 | 40200.40300.40900.70300.340800.494200.989700 | Upper Basement Plumbing | 90d | 2028-01-05 | 2028-04-03 | 3999 |  | RGA -FINISHING | 8865764 |
| 4001 | 40200.40300.40900.70300.492200 | **Water Proofing work** | 90d | 2027-07-09 | 2027-10-06 |  | start no earlier than 2027-07-09 | RGA -FINISHING | 7812052 |
| 4002 | 40200.40300.40900.70300.492200.853900 | 1st Basement | 45d | 2027-07-09 | 2027-08-22 | 3971 |  | RGA -FINISHING | 7820192 |
| 4003 | 40200.40300.40900.70300.492200.854000 | Upper Basement Plumbing | 45d | 2027-08-23 | 2027-10-06 | 4002 |  | RGA -FINISHING | 8865774 |

| ID | WBS | Task | Duration | Start | Finish | Predecessors | Constraint | Calendar | Unique_Task_ID |
| --- | --- | --- | --- | --- | --- | --- | --- | --- | --- |
| 4004 | 40200.40300.40900.52800 | **Superstructure works** | 931d | 2025-11-30 | 2028-07-21 |  | start no earlier than 2025-11-30 | RGA - STRUCTURE | 7803312 |
| 4005 | 40200.40300.40900.52800.55800 | **Civil works** | 931d | 2025-11-30 | 2028-07-21 |  | start no earlier than 2025-11-30 | RGA - STRUCTURE | 7803342 |
| 4006 | 40200.40300.40900.52800.55800.61800 | **Superstructure RCC Work** | 602d | 2026-01-25 | 2027-10-22 |  | start no earlier than 2026-01-25 | RGA - STRUCTURE | 7803612 |
| 4007 | 40200.40300.40900.52800.55800.61800.63200 | **Slab RCC works** | 553d | 2026-01-25 | 2027-09-03 |  | start no earlier than 2026-01-25 | RGA - STRUCTURE | 7803682 |
| 4008 | 40200.40300.40900.52800.55800.61800.63200.503800 | **1st Floor slab (Height More)** | 35d | 2026-01-25 | 2026-03-01 |  | start no earlier than 2026-01-25 | RGA - STRUCTURE | 7811412 |
| 4009 | 40200.40300.40900.52800.55800.61800.63200.503800.2685500 | Columns | 20d | 2026-01-25 | 2026-02-14 | 3968 |  | RGA - STRUCTURE | 7858312 |
| 4010 | 40200.40300.40900.52800.55800.61800.63200.503800.2685600 | Slab Work | 15d | 2026-02-15 | 2026-03-01 | 4009 |  | RGA - STRUCTURE | 7858322 |
| 4011 | 40200.40300.40900.52800.55800.61800.63200.503900 | **2nd Floor slab (Combo)** | 30d | 2026-03-02 | 2026-03-31 |  | start no earlier than 2026-03-02 | RGA - STRUCTURE | 7811402 |
| 4012 | 40200.40300.40900.52800.55800.61800.63200.503900.2685700 | Columns | 15d | 2026-03-02 | 2026-03-16 | 4010 |  | RGA - STRUCTURE | 7858332 |
| 4013 | 40200.40300.40900.52800.55800.61800.63200.503900.2685800 | Slab Work | 15d | 2026-03-17 | 2026-03-31 | 4012 |  | RGA - STRUCTURE | 7858342 |
| 4014 | 40200.40300.40900.52800.55800.61800.63200.456000 | **3rd Floor slab (Combo)** | 40d | 2026-04-01 | 2026-05-11 |  | start no earlier than 2026-04-01 | RGA - STRUCTURE | 7810442 |
| 4015 | 40200.40300.40900.52800.55800.61800.63200.456000.2685900 | Wall Rebar & Form work | 20d | 2026-04-01 | 2026-04-20 | 4013 |  | RGA - STRUCTURE | 7858352 |
| 4016 | 40200.40300.40900.52800.55800.61800.63200.456000.2686000 | Slab Form work & Rebar | 19d | 2026-04-21 | 2026-05-10 | 4015 |  | RGA - STRUCTURE | 7858362 |
| 4017 | 40200.40300.40900.52800.55800.61800.63200.456000.2686100 | Concreting | 1d | 2026-05-11 | 2026-05-11 | 4016 |  | RGA - STRUCTURE | 7858372 |
| 4018 | 40200.40300.40900.52800.55800.61800.63200.456100 | **4th Floor slab (1st Set Up)** | 40d | 2026-05-12 | 2026-06-25 |  | start no earlier than 2026-05-12 | RGA - STRUCTURE | 7810452 |
| 4019 | 40200.40300.40900.52800.55800.61800.63200.456100.2686200 | Wall Rebar & Form work | 20d | 2026-05-12 | 2026-05-31 | 4017 |  | RGA - STRUCTURE | 7858382 |
| 4020 | 40200.40300.40900.52800.55800.61800.63200.456100.2686300 | Slab Form work & Rebar | 19d | 2026-06-01 | 2026-06-23 | 4019 |  | RGA - STRUCTURE | 7858392 |
| 4021 | 40200.40300.40900.52800.55800.61800.63200.456100.2686400 | Concreting | 1d | 2026-06-24 | 2026-06-25 | 4020 |  | RGA - STRUCTURE | 7858402 |
| 4022 | 40200.40300.40900.52800.55800.61800.63200.456200 | **5th Floor slab (2nd Set Up)** | 40d | 2026-06-26 | 2026-08-14 |  | start no earlier than 2026-06-26 | RGA - STRUCTURE | 7810462 |
| 4023 | 40200.40300.40900.52800.55800.61800.63200.456200.2686500 | Wall Rebar & Form work | 20d | 2026-06-26 | 2026-07-25 | 4021 |  | RGA - STRUCTURE | 7858412 |
| 4024 | 40200.40300.40900.52800.55800.61800.63200.456200.2686600 | Slab Form work & Rebar | 19d | 2026-07-26 | 2026-08-13 | 4023 |  | RGA - STRUCTURE | 7858422 |
| 4025 | 40200.40300.40900.52800.55800.61800.63200.456200.2686700 | Concreting | 1d | 2026-08-14 | 2026-08-14 | 4024 |  | RGA - STRUCTURE | 7858432 |
| 4026 | 40200.40300.40900.52800.55800.61800.63200.456300 | **6th Floor slab** | 28d | 2026-08-16 | 2026-09-12 |  | start no earlier than 2026-08-16 | RGA - STRUCTURE | 7810472 |
| 4027 | 40200.40300.40900.52800.55800.61800.63200.456300.2686800 | Wall Rebar & Form work | 14d | 2026-08-16 | 2026-08-29 | 4025 |  | RGA - STRUCTURE | 7858442 |
| 4028 | 40200.40300.40900.52800.55800.61800.63200.456300.2686900 | Slab Form work & Rebar | 13d | 2026-08-30 | 2026-09-11 | 4027 |  | RGA - STRUCTURE | 7858452 |
| 4029 | 40200.40300.40900.52800.55800.61800.63200.456300.2687000 | Concreting | 1d | 2026-09-12 | 2026-09-12 | 4028 |  | RGA - STRUCTURE | 7858462 |

Notes:
- 4011: AVg Slab Cycle of 21 days
- 4014: AVg Slab Cycle of 21 days
- 4018: AVg Slab Cycle of 21 days

| ID | WBS | Task | Duration | Start | Finish | Predecessors | Constraint | Calendar | Unique_Task_ID |
| --- | --- | --- | --- | --- | --- | --- | --- | --- | --- |
| 4030 | 40200.40300.40900.52800.55800.61800.63200.456400 | **7th Floor slab** | 17d | 2026-09-13 | 2026-09-29 |  | start no earlier than 2026-09-13 | RGA - STRUCTURE | 7810482 |
| 4031 | 40200.40300.40900.52800.55800.61800.63200.456400.2687100 | Wall Rebar & Form work | 8d | 2026-09-13 | 2026-09-20 | 4029 |  | RGA - STRUCTURE | 7858472 |
| 4032 | 40200.40300.40900.52800.55800.61800.63200.456400.2687200 | Slab Form work & Rebar | 8d | 2026-09-21 | 2026-09-28 | 4031 |  | RGA - STRUCTURE | 7858482 |
| 4033 | 40200.40300.40900.52800.55800.61800.63200.456400.2687300 | Concreting | 1d | 2026-09-29 | 2026-09-29 | 4032 |  | RGA - STRUCTURE | 7858492 |
| 4034 | 40200.40300.40900.52800.55800.61800.63200.456500 | **8th Floor slab** | 17d | 2026-09-30 | 2026-10-17 |  | start no earlier than 2026-09-30 | RGA - STRUCTURE | 7810492 |
| 4035 | 40200.40300.40900.52800.55800.61800.63200.456500.2687400 | Wall Rebar & Form work | 8d | 2026-09-30 | 2026-10-08 | 4033 |  | RGA - STRUCTURE | 7858502 |
| 4036 | 40200.40300.40900.52800.55800.61800.63200.456500.2687500 | Slab Form work & Rebar | 8d | 2026-10-09 | 2026-10-16 | 4035 |  | RGA - STRUCTURE | 7858512 |
| 4037 | 40200.40300.40900.52800.55800.61800.63200.456500.2687600 | Concreting | 1d | 2026-10-17 | 2026-10-17 | 4036 |  | RGA - STRUCTURE | 7858522 |
| 4038 | 40200.40300.40900.52800.55800.61800.63200.456600 | **9th Floor slab** | 17d | 2026-10-18 | 2026-11-03 |  | start no earlier than 2026-10-18 | RGA - STRUCTURE | 7810502 |
| 4039 | 40200.40300.40900.52800.55800.61800.63200.456600.2687700 | Wall Rebar & Form work | 8d | 2026-10-18 | 2026-10-25 | 4037 |  | RGA - STRUCTURE | 7858532 |
| 4040 | 40200.40300.40900.52800.55800.61800.63200.456600.2687800 | Slab Form work & Rebar | 8d | 2026-10-26 | 2026-11-02 | 4039 |  | RGA - STRUCTURE | 7858542 |
| 4041 | 40200.40300.40900.52800.55800.61800.63200.456600.2687900 | Concreting | 1d | 2026-11-03 | 2026-11-03 | 4040 |  | RGA - STRUCTURE | 7858552 |
| 4042 | 40200.40300.40900.52800.55800.61800.63200.456700 | **10th Floor slab** | 17d | 2026-11-04 | 2026-11-25 |  | start no earlier than 2026-11-04 | RGA - STRUCTURE | 7810512 |
| 4043 | 40200.40300.40900.52800.55800.61800.63200.456700.2688000 | Wall Rebar & Form work | 8d | 2026-11-04 | 2026-11-11 | 4041 |  | RGA - STRUCTURE | 7858562 |
| 4044 | 40200.40300.40900.52800.55800.61800.63200.456700.2688100 | Slab Form work & Rebar | 8d | 2026-11-12 | 2026-11-23 | 4043 |  | RGA - STRUCTURE | 7858572 |
| 4045 | 40200.40300.40900.52800.55800.61800.63200.456700.2688200 | Concreting | 1d | 2026-11-24 | 2026-11-25 | 4044 |  | RGA - STRUCTURE | 7858582 |
| 4046 | 40200.40300.40900.52800.55800.61800.63200.456800 | **11th Floor slab** | 17d | 2026-11-26 | 2026-12-22 |  | start no earlier than 2026-11-26 | RGA - STRUCTURE | 7810522 |
| 4047 | 40200.40300.40900.52800.55800.61800.63200.456800.2688300 | Wall Rebar & Form work | 8d | 2026-11-26 | 2026-12-11 | 4045 |  | RGA - STRUCTURE | 7858592 |
| 4048 | 40200.40300.40900.52800.55800.61800.63200.456800.2688400 | Slab Form work & Rebar | 8d | 2026-12-12 | 2026-12-21 | 4047 |  | RGA - STRUCTURE | 7858602 |
| 4049 | 40200.40300.40900.52800.55800.61800.63200.456800.2688500 | Concreting | 1d | 2026-12-22 | 2026-12-22 | 4048 |  | RGA - STRUCTURE | 7858612 |
| 4050 | 40200.40300.40900.52800.55800.61800.63200.456900 | **12th Floor slab** | 17d | 2026-12-23 | 2027-01-08 |  | start no earlier than 2026-12-23 | RGA - STRUCTURE | 7810532 |
| 4051 | 40200.40300.40900.52800.55800.61800.63200.456900.2688600 | Wall Rebar & Form work | 8d | 2026-12-23 | 2026-12-30 | 4049 |  | RGA - STRUCTURE | 7858622 |
| 4052 | 40200.40300.40900.52800.55800.61800.63200.456900.2688700 | Slab Form work & Rebar | 8d | 2026-12-31 | 2027-01-07 | 4051 |  | RGA - STRUCTURE | 7858632 |
| 4053 | 40200.40300.40900.52800.55800.61800.63200.456900.2688800 | Concreting | 1d | 2027-01-08 | 2027-01-08 | 4052 |  | RGA - STRUCTURE | 7858642 |

Notes:
- 4050: AVg Slab Cycle of 21 days

| ID | WBS | Task | Duration | Start | Finish | Predecessors | Constraint | Calendar | Unique_Task_ID |
| --- | --- | --- | --- | --- | --- | --- | --- | --- | --- |
| 4054 | 40200.40300.40900.52800.55800.61800.63200.457000 | **13th Floor slab** | 17d | 2027-01-09 | 2027-01-25 |  | start no earlier than 2027-01-09 | RGA - STRUCTURE | 7810542 |
| 4055 | 40200.40300.40900.52800.55800.61800.63200.457000.2688900 | Wall Rebar & Form work | 8d | 2027-01-09 | 2027-01-16 | 4053 |  | RGA - STRUCTURE | 7858652 |
| 4056 | 40200.40300.40900.52800.55800.61800.63200.457000.2689000 | Slab Form work & Rebar | 8d | 2027-01-17 | 2027-01-24 | 4055 |  | RGA - STRUCTURE | 7858662 |
| 4057 | 40200.40300.40900.52800.55800.61800.63200.457000.2689100 | Concreting | 1d | 2027-01-25 | 2027-01-25 | 4056 |  | RGA - STRUCTURE | 7858672 |
| 4058 | 40200.40300.40900.52800.55800.61800.63200.457100 | **14th Floor slab** | 17d | 2027-01-26 | 2027-02-11 |  | start no earlier than 2027-01-26 | RGA - STRUCTURE | 7810552 |
| 4059 | 40200.40300.40900.52800.55800.61800.63200.457100.2689200 | Wall Rebar & Form work | 8d | 2027-01-26 | 2027-02-02 | 4057 |  | RGA - STRUCTURE | 7858682 |
| 4060 | 40200.40300.40900.52800.55800.61800.63200.457100.2689300 | Slab Form work & Rebar | 8d | 2027-02-03 | 2027-02-10 | 4059 |  | RGA - STRUCTURE | 7858692 |
| 4061 | 40200.40300.40900.52800.55800.61800.63200.457100.2689400 | Concreting | 1d | 2027-02-11 | 2027-02-11 | 4060 |  | RGA - STRUCTURE | 7858702 |
| 4062 | 40200.40300.40900.52800.55800.61800.63200.457200 | **15th Floor slab** | 17d | 2027-02-12 | 2027-02-28 |  | start no earlier than 2027-02-12 | RGA - STRUCTURE | 7810562 |
| 4063 | 40200.40300.40900.52800.55800.61800.63200.457200.2689500 | Wall Rebar & Form work | 8d | 2027-02-12 | 2027-02-19 | 4061 |  | RGA - STRUCTURE | 7858712 |
| 4064 | 40200.40300.40900.52800.55800.61800.63200.457200.2689600 | Slab Form work & Rebar | 8d | 2027-02-20 | 2027-02-27 | 4063 |  | RGA - STRUCTURE | 7858722 |
| 4065 | 40200.40300.40900.52800.55800.61800.63200.457200.2689700 | Concreting | 1d | 2027-02-28 | 2027-02-28 | 4064 |  | RGA - STRUCTURE | 7858732 |
| 4066 | 40200.40300.40900.52800.55800.61800.63200.457300 | **16th Floor slab** | 17d | 2027-03-01 | 2027-03-17 |  | start no earlier than 2027-03-01 | RGA - STRUCTURE | 7810572 |
| 4067 | 40200.40300.40900.52800.55800.61800.63200.457300.2689800 | Wall Rebar & Form work | 8d | 2027-03-01 | 2027-03-08 | 4065 |  | RGA - STRUCTURE | 7858742 |
| 4068 | 40200.40300.40900.52800.55800.61800.63200.457300.2689900 | Slab Form work & Rebar | 8d | 2027-03-09 | 2027-03-16 | 4067 |  | RGA - STRUCTURE | 7858752 |
| 4069 | 40200.40300.40900.52800.55800.61800.63200.457300.2690000 | Concreting | 1d | 2027-03-17 | 2027-03-17 | 4068 |  | RGA - STRUCTURE | 7858762 |
| 4070 | 40200.40300.40900.52800.55800.61800.63200.457400 | **17th Floor slab** | 17d | 2027-03-18 | 2027-04-03 |  | start no earlier than 2027-03-18 | RGA - STRUCTURE | 7810582 |
| 4071 | 40200.40300.40900.52800.55800.61800.63200.457400.2690100 | Wall Rebar & Form work | 8d | 2027-03-18 | 2027-03-25 | 4069 |  | RGA - STRUCTURE | 7858772 |
| 4072 | 40200.40300.40900.52800.55800.61800.63200.457400.2690200 | Slab Form work & Rebar | 8d | 2027-03-26 | 2027-04-02 | 4071 |  | RGA - STRUCTURE | 7858782 |
| 4073 | 40200.40300.40900.52800.55800.61800.63200.457400.2690300 | Concreting | 1d | 2027-04-03 | 2027-04-03 | 4072 |  | RGA - STRUCTURE | 7858792 |
| 4074 | 40200.40300.40900.52800.55800.61800.63200.457500 | **18th Floor slab** | 17d | 2027-04-04 | 2027-04-20 |  | start no earlier than 2027-04-04 | RGA - STRUCTURE | 7810592 |
| 4075 | 40200.40300.40900.52800.55800.61800.63200.457500.2690400 | Wall Rebar & Form work | 8d | 2027-04-04 | 2027-04-11 | 4073 |  | RGA - STRUCTURE | 7858802 |
| 4076 | 40200.40300.40900.52800.55800.61800.63200.457500.2690500 | Slab Form work & Rebar | 8d | 2027-04-12 | 2027-04-19 | 4075 |  | RGA - STRUCTURE | 7858812 |
| 4077 | 40200.40300.40900.52800.55800.61800.63200.457500.2690600 | Concreting | 1d | 2027-04-20 | 2027-04-20 | 4076 |  | RGA - STRUCTURE | 7858822 |

Notes:
- 4054: AVg Slab Cycle of 21 days
- 4058: AVg Slab Cycle of 21 days

| ID | WBS | Task | Duration | Start | Finish | Predecessors | Constraint | Calendar | Unique_Task_ID |
| --- | --- | --- | --- | --- | --- | --- | --- | --- | --- |
| 4078 | 40200.40300.40900.52800.55800.61800.63200.457600 | **19th Floor slab** | 17d | 2027-04-21 | 2027-05-07 |  | start no earlier than 2027-04-21 | RGA - STRUCTURE | 7810602 |
| 4079 | 40200.40300.40900.52800.55800.61800.63200.457600.2690700 | Wall Rebar & Form work | 8d | 2027-04-21 | 2027-04-28 | 4077 |  | RGA - STRUCTURE | 7858832 |
| 4080 | 40200.40300.40900.52800.55800.61800.63200.457600.2690800 | Slab Form work & Rebar | 8d | 2027-04-29 | 2027-05-06 | 4079 |  | RGA - STRUCTURE | 7858842 |
| 4081 | 40200.40300.40900.52800.55800.61800.63200.457600.2690900 | Concreting | 1d | 2027-05-07 | 2027-05-07 | 4080 |  | RGA - STRUCTURE | 7858852 |
| 4082 | 40200.40300.40900.52800.55800.61800.63200.457700 | **20th Floor slab (Refuge floor )** | 17d | 2027-05-08 | 2027-05-24 |  | start no earlier than 2027-05-08 | RGA - STRUCTURE | 7810612 |
| 4083 | 40200.40300.40900.52800.55800.61800.63200.457700.2691000 | Wall Rebar & Form work | 8d | 2027-05-08 | 2027-05-15 | 4081 |  | RGA - STRUCTURE | 7858862 |
| 4084 | 40200.40300.40900.52800.55800.61800.63200.457700.2691100 | Slab Form work & Rebar | 8d | 2027-05-16 | 2027-05-23 | 4083 |  | RGA - STRUCTURE | 7858872 |
| 4085 | 40200.40300.40900.52800.55800.61800.63200.457700.2691200 | Concreting | 1d | 2027-05-24 | 2027-05-24 | 4084 |  | RGA - STRUCTURE | 7858882 |
| 4086 | 40200.40300.40900.52800.55800.61800.63200.457800 | **21st Floor slab** | 17d | 2027-05-25 | 2027-06-10 |  | start no earlier than 2027-05-25 | RGA - STRUCTURE | 7810622 |
| 4087 | 40200.40300.40900.52800.55800.61800.63200.457800.2691300 | Wall Rebar & Form work | 8d | 2027-05-25 | 2027-06-01 | 4085 |  | RGA - STRUCTURE | 7858892 |
| 4088 | 40200.40300.40900.52800.55800.61800.63200.457800.2691400 | Slab Form work & Rebar | 8d | 2027-06-02 | 2027-06-09 | 4087 |  | RGA - STRUCTURE | 7858902 |
| 4089 | 40200.40300.40900.52800.55800.61800.63200.457800.2691500 | Concreting | 1d | 2027-06-10 | 2027-06-10 | 4088 |  | RGA - STRUCTURE | 7858912 |
| 4090 | 40200.40300.40900.52800.55800.61800.63200.457900 | **22nd Floor slab** | 17d | 2027-06-11 | 2027-06-27 |  | start no earlier than 2027-06-11 | RGA - STRUCTURE | 7810632 |
| 4091 | 40200.40300.40900.52800.55800.61800.63200.457900.2691600 | Wall Rebar & Form work | 8d | 2027-06-11 | 2027-06-18 | 4089 |  | RGA - STRUCTURE | 7858922 |
| 4092 | 40200.40300.40900.52800.55800.61800.63200.457900.2691700 | Slab Form work & Rebar | 8d | 2027-06-19 | 2027-06-26 | 4091 |  | RGA - STRUCTURE | 7858932 |
| 4093 | 40200.40300.40900.52800.55800.61800.63200.457900.2691800 | Concreting | 1d | 2027-06-27 | 2027-06-27 | 4092 |  | RGA - STRUCTURE | 7858942 |
| 4094 | 40200.40300.40900.52800.55800.61800.63200.458000 | **23rd Floor slab** | 17d | 2027-06-28 | 2027-07-14 |  | start no earlier than 2027-06-28 | RGA - STRUCTURE | 7810642 |
| 4095 | 40200.40300.40900.52800.55800.61800.63200.458000.2691900 | Wall Rebar & Form work | 8d | 2027-06-28 | 2027-07-05 | 4093 |  | RGA - STRUCTURE | 7858952 |
| 4096 | 40200.40300.40900.52800.55800.61800.63200.458000.2692000 | Slab Form work & Rebar | 8d | 2027-07-06 | 2027-07-13 | 4095 |  | RGA - STRUCTURE | 7858962 |
| 4097 | 40200.40300.40900.52800.55800.61800.63200.458000.2692100 | Concreting | 1d | 2027-07-14 | 2027-07-14 | 4096 |  | RGA - STRUCTURE | 7858972 |
| 4098 | 40200.40300.40900.52800.55800.61800.63200.458100 | **24th Floor slab** | 17d | 2027-07-15 | 2027-07-31 |  | start no earlier than 2027-07-15 | RGA - STRUCTURE | 7810652 |
| 4099 | 40200.40300.40900.52800.55800.61800.63200.458100.2692200 | Wall Rebar & Form work | 8d | 2027-07-15 | 2027-07-22 | 4097 |  | RGA - STRUCTURE | 7858982 |
| 4100 | 40200.40300.40900.52800.55800.61800.63200.458100.2692300 | Slab Form work & Rebar | 8d | 2027-07-23 | 2027-07-30 | 4099 |  | RGA - STRUCTURE | 7858992 |
| 4101 | 40200.40300.40900.52800.55800.61800.63200.458100.2692400 | Concreting | 1d | 2027-07-31 | 2027-07-31 | 4100 |  | RGA - STRUCTURE | 7859002 |

| ID | WBS | Task | Duration | Start | Finish | Predecessors | Constraint | Calendar | Unique_Task_ID |
| --- | --- | --- | --- | --- | --- | --- | --- | --- | --- |
| 4102 | 40200.40300.40900.52800.55800.61800.63200.458200 | **25th Floor slab** | 17d | 2027-08-01 | 2027-08-17 |  | start no earlier than 2027-08-01 | RGA - STRUCTURE | 7810662 |
| 4103 | 40200.40300.40900.52800.55800.61800.63200.458200.2692500 | Wall Rebar & Form work | 8d | 2027-08-01 | 2027-08-08 | 4101 |  | RGA - STRUCTURE | 7859012 |
| 4104 | 40200.40300.40900.52800.55800.61800.63200.458200.2692600 | Slab Form work & Rebar | 8d | 2027-08-09 | 2027-08-16 | 4103 |  | RGA - STRUCTURE | 7859022 |
| 4105 | 40200.40300.40900.52800.55800.61800.63200.458200.2692700 | Concreting | 1d | 2027-08-17 | 2027-08-17 | 4104 |  | RGA - STRUCTURE | 7859032 |
| 4106 | 40200.40300.40900.52800.55800.61800.63200.458300 | **Terrace Floor slab work** | 17d | 2027-08-18 | 2027-09-03 |  | start no earlier than 2027-08-18 | RGA - STRUCTURE | 7810692 |
| 4107 | 40200.40300.40900.52800.55800.61800.63200.458300.2692800 | Wall & Slab Form work | 8d | 2027-08-18 | 2027-08-25 | 4105 |  | RGA - STRUCTURE | 7859102 |
| 4108 | 40200.40300.40900.52800.55800.61800.63200.458300.2692900 | Slab & Beam Reinf. | 8d | 2027-08-26 | 2027-09-02 | 4107 |  | RGA - STRUCTURE | 7859112 |
| 4109 | 40200.40300.40900.52800.55800.61800.63200.458300.2693000 | Concreting | 1d | 2027-09-03 | 2027-09-03 | 4108 |  | RGA - STRUCTURE | 7859122 |
| 4110 | 40200.40300.40900.52800.55800.61800.253700 | **RCC work above Terrace** | 49d | 2027-09-04 | 2027-10-22 |  | start no earlier than 2027-09-04 | RGA - STRUCTURE | 7806982 |
| 4111 | 40200.40300.40900.52800.55800.61800.253700.372600 | **STAIRCASE & OHT CORE** | 49d | 2027-09-04 | 2027-10-22 |  | start no earlier than 2027-09-04 | RGA - STRUCTURE | 7808392 |
| 4112 | 40200.40300.40900.52800.55800.61800.253700.372600.2693100 | STAIRCASE HEAD ROOM | 10d | 2027-09-04 | 2027-09-13 | 4109 |  | RGA - STRUCTURE | 7859132 |
| 4113 | 40200.40300.40900.52800.55800.61800.253700.372600.2693200 | OHT | 25d | 2027-09-14 | 2027-10-08 | 4112 |  | RGA - STRUCTURE | 7859142 |
| 4114 | 40200.40300.40900.52800.55800.61800.253700.372600.2693300 | SHAFT COVERING SLAB | 10d | 2027-09-04 | 2027-09-13 | 4109 |  | RGA - STRUCTURE | 7859152 |
| 4115 | 40200.40300.40900.52800.55800.61800.253700.372600.2693400 | DESHUTTERING OF OHT TOP SLAB | 7d | 2027-10-16 | 2027-10-22 | 4113FS+7d |  | RGA - STRUCTURE | 7859162 |
| 4116 | 40200.40300.40900.52800.55800.61800.253700.458400 | **LMR BOTTOM & TOP SLAB** | 43d | 2027-09-04 | 2027-10-16 |  | start no earlier than 2027-09-04 | RGA - STRUCTURE | 7810702 |
| 4117 | 40200.40300.40900.52800.55800.61800.253700.458400.2693500 | LMR COLUMNS / WALLS | 15d | 2027-09-04 | 2027-09-18 | 4109 |  | RGA - STRUCTURE | 7859172 |
| 4118 | 40200.40300.40900.52800.55800.61800.253700.458400.2693600 | LMR TOP SLAB | 20d | 2027-09-19 | 2027-10-08 | 4117 |  | RGA - STRUCTURE | 7859182 |
| 4119 | 40200.40300.40900.52800.55800.61800.253700.458400.2693700 | DESHUTTERING | 8d | 2027-10-09 | 2027-10-16 | 4118 |  | RGA - STRUCTURE | 7859192 |
| 4120 | 40200.40300.40900.52800.55800.59300 | **Civil Finishing works (Brick work, Plaster,conduiting, concled plumbing, waterproofing)** | 855d | 2025-11-30 | 2028-04-02 |  | start no earlier than 2025-11-30 | RGA -FINISHING | 7803462 |
| 4121 | 40200.40300.40900.52800.55800.59300.61100 | **Flat finishing works** | 724d | 2025-11-30 | 2027-11-23 |  | start no earlier than 2025-11-30 | RGA -FINISHING | 7803562 |
| 4122 | 40200.40300.40900.52800.55800.59300.61100.270800 | **Ground FLOOR** | 198d | 2026-01-18 | 2026-08-03 |  | start no earlier than 2026-01-18 | RGA -FINISHING | 7808092 |
| 4123 | 40200.40300.40900.52800.55800.59300.61100.270800.2693800 | BALCONY RAILING FIXING | 9d | 2026-06-11 | 2026-06-19 | 4017FS+30d |  | RGA -FINISHING | 7389775 |
| 4124 | 40200.40300.40900.52800.55800.59300.61100.270800.2693900 | Block work | 8d | 2026-07-27 | 2026-08-03 | 4128 |  | RGA -FINISHING | 7859202 |
| 4125 | 40200.40300.40900.52800.55800.59300.61100.270800.2694000 | CONCEALED ELEC CONDUITING & ITS FINISHING | 5d | 2026-01-18 | 2026-01-22 | 3968FS-7d |  | RGA -FINISHING | 7389795 |
| 4126 | 40200.40300.40900.52800.55800.59300.61100.270800.2694100 | PLASTER APPLICATION | 6d | 2026-07-05 | 2026-07-10 | 4317 |  | RGA -FINISHING | 7389805 |
| 4127 | 40200.40300.40900.52800.55800.59300.61100.270800.2694200 | CONCEALED PLUMBING | 8d | 2026-07-11 | 2026-07-18 | 4126 |  | RGA -FINISHING | 7389815 |
| 4128 | 40200.40300.40900.52800.55800.59300.61100.270800.2694300 | WATERPROOFING WORK FOR TOILETS, KITCHEN SUNK & PLANTERS | 8d | 2026-07-19 | 2026-07-26 | 4127 |  | RGA -FINISHING | 7389825 |

Notes:
- 4106: AVg Slab Cycle of 21 days

| ID | WBS | Task | Duration | Start | Finish | Predecessors | Constraint | Calendar | Unique_Task_ID |
| --- | --- | --- | --- | --- | --- | --- | --- | --- | --- |
| 4129 | 40200.40300.40900.52800.55800.59300.61100.270900 | **1ST FLOOR** | 223d | 2026-02-08 | 2026-09-18 |  | start no earlier than 2026-02-08 | RGA -FINISHING | 7808102 |
| 4130 | 40200.40300.40900.52800.55800.59300.61100.270900.2694400 | BALCONY RAILING FIXING | 9d | 2026-08-05 | 2026-08-13 | 4021FS+40.5d |  | RGA -FINISHING | 7389835 |
| 4131 | 40200.40300.40900.52800.55800.59300.61100.270900.2694500 | Block work | 8d | 2026-09-11 | 2026-09-18 | 4135 |  | RGA -FINISHING | 7389845 |
| 4132 | 40200.40300.40900.52800.55800.59300.61100.270900.2694600 | CONCEALED ELEC CONDUITING & ITS FINISHING | 5d | 2026-02-08 | 2026-02-12 | 4009FS-7d |  | RGA -FINISHING | 7389855 |
| 4133 | 40200.40300.40900.52800.55800.59300.61100.270900.2694700 | PLASTER APPLICATION | 6d | 2026-08-20 | 2026-08-25 | 4330 |  | RGA -FINISHING | 7389865 |
| 4134 | 40200.40300.40900.52800.55800.59300.61100.270900.2694800 | CONCEALED PLUMBING | 8d | 2026-08-26 | 2026-09-02 | 4133 |  | RGA -FINISHING | 7389875 |
| 4135 | 40200.40300.40900.52800.55800.59300.61100.270900.2694900 | WATERPROOFING WORK FOR TOILETS, KITCHEN SUNK & PLANTERS | 8d | 2026-09-03 | 2026-09-10 | 4134 |  | RGA -FINISHING | 7389885 |
| 4136 | 40200.40300.40900.52800.55800.59300.61100.271000 | **2nd FLOOR** | 204d | 2026-03-25 | 2026-10-14 |  | start no earlier than 2026-03-25 | RGA -FINISHING | 7808112 |
| 4137 | 40200.40300.40900.52800.55800.59300.61100.271000.2695000 | BALCONY RAILING FIXING | 9d | 2026-08-31 | 2026-09-08 | 4025FS+16d |  | RGA -FINISHING | 7389895 |
| 4138 | 40200.40300.40900.52800.55800.59300.61100.271000.2695100 | Block work | 8d | 2026-10-07 | 2026-10-14 | 4142 |  | RGA -FINISHING | 7389905 |
| 4139 | 40200.40300.40900.52800.55800.59300.61100.271000.2695200 | CONCEALED ELEC CONDUITING & ITS FINISHING | 5d | 2026-03-25 | 2026-03-29 | 4013FS-7d |  | RGA -FINISHING | 7389915 |
| 4140 | 40200.40300.40900.52800.55800.59300.61100.271000.2695300 | PLASTER APPLICATION | 6d | 2026-09-15 | 2026-09-20 | 4343 |  | RGA -FINISHING | 7389925 |
| 4141 | 40200.40300.40900.52800.55800.59300.61100.271000.2695400 | CONCEALED PLUMBING | 8d | 2026-09-21 | 2026-09-28 | 4140 |  | RGA -FINISHING | 7389935 |
| 4142 | 40200.40300.40900.52800.55800.59300.61100.271000.2695500 | WATERPROOFING WORK FOR TOILETS, KITCHEN SUNK & PLANTERS | 8d | 2026-09-29 | 2026-10-06 | 4141 |  | RGA -FINISHING | 7389945 |
| 4143 | 40200.40300.40900.52800.55800.59300.61100.271100 | **3rd FLOOR** | 186d | 2026-05-05 | 2026-11-06 |  | start no earlier than 2026-05-05 | RGA -FINISHING | 7808122 |
| 4144 | 40200.40300.40900.52800.55800.59300.61100.271100.2695600 | BALCONY RAILING FIXING | 9d | 2026-09-23 | 2026-10-01 | 4029FS+10d |  | RGA -FINISHING | 7389955 |
| 4145 | 40200.40300.40900.52800.55800.59300.61100.271100.2695700 | Block work | 8d | 2026-10-30 | 2026-11-06 | 4149 |  | RGA -FINISHING | 7389965 |
| 4146 | 40200.40300.40900.52800.55800.59300.61100.271100.2695800 | CONCEALED ELEC CONDUITING & ITS FINISHING | 5d | 2026-05-05 | 2026-05-09 | 4017FS-7d |  | RGA -FINISHING | 7389975 |
| 4147 | 40200.40300.40900.52800.55800.59300.61100.271100.2695900 | PLASTER APPLICATION | 6d | 2026-10-08 | 2026-10-13 | 4356 |  | RGA -FINISHING | 7389985 |
| 4148 | 40200.40300.40900.52800.55800.59300.61100.271100.2696000 | CONCEALED PLUMBING | 8d | 2026-10-14 | 2026-10-21 | 4147 |  | RGA -FINISHING | 7389995 |
| 4149 | 40200.40300.40900.52800.55800.59300.61100.271100.2696100 | WATERPROOFING WORK FOR TOILETS, KITCHEN SUNK & PLANTERS | 8d | 2026-10-22 | 2026-10-29 | 4148 |  | RGA -FINISHING | 7390005 |
| 4150 | 40200.40300.40900.52800.55800.59300.61100.271200 | **4th FLOOR** | 164d | 2026-06-14 | 2026-11-24 |  | start no earlier than 2026-06-14 | RGA -FINISHING | 7808132 |
| 4151 | 40200.40300.40900.52800.55800.59300.61100.271200.2696200 | BALCONY RAILING FIXING | 9d | 2026-10-11 | 2026-10-19 | 4033FS+11d |  | RGA -FINISHING | 7390015 |
| 4152 | 40200.40300.40900.52800.55800.59300.61100.271200.2696300 | Block work | 8d | 2026-11-17 | 2026-11-24 | 4156 |  | RGA -FINISHING | 7390025 |
| 4153 | 40200.40300.40900.52800.55800.59300.61100.271200.2696400 | CONCEALED ELEC CONDUITING & ITS FINISHING | 5d | 2026-06-14 | 2026-06-18 | 4021FS-11.5d |  | RGA -FINISHING | 7390035 |
| 4154 | 40200.40300.40900.52800.55800.59300.61100.271200.2696500 | PLASTER APPLICATION | 6d | 2026-10-26 | 2026-10-31 | 4369 |  | RGA -FINISHING | 7390045 |
| 4155 | 40200.40300.40900.52800.55800.59300.61100.271200.2696600 | CONCEALED PLUMBING | 8d | 2026-11-01 | 2026-11-08 | 4154 |  | RGA -FINISHING | 7390055 |
| 4156 | 40200.40300.40900.52800.55800.59300.61100.271200.2696700 | WATERPROOFING WORK FOR TOILETS, KITCHEN SUNK & PLANTERS | 8d | 2026-11-09 | 2026-11-16 | 4155 |  | RGA -FINISHING | 7390065 |

| ID | WBS | Task | Duration | Start | Finish | Predecessors | Constraint | Calendar | Unique_Task_ID |
| --- | --- | --- | --- | --- | --- | --- | --- | --- | --- |
| 4157 | 40200.40300.40900.52800.55800.59300.61100.271300 | **5th FLOOR** | 126d | 2026-08-08 | 2026-12-11 |  | start no earlier than 2026-08-08 | RGA -FINISHING | 7808142 |
| 4158 | 40200.40300.40900.52800.55800.59300.61100.271300.2696800 | BALCONY RAILING FIXING | 9d | 2026-10-28 | 2026-11-05 | 4037FS+10d |  | RGA -FINISHING | 7390075 |
| 4159 | 40200.40300.40900.52800.55800.59300.61100.271300.2696900 | Block work | 8d | 2026-12-04 | 2026-12-11 | 4163 |  | RGA -FINISHING | 7390085 |
| 4160 | 40200.40300.40900.52800.55800.59300.61100.271300.2697000 | CONCEALED ELEC CONDUITING & ITS FINISHING | 5d | 2026-08-08 | 2026-08-12 | 4025FS-7d |  | RGA -FINISHING | 7390095 |
| 4161 | 40200.40300.40900.52800.55800.59300.61100.271300.2697100 | PLASTER APPLICATION | 6d | 2026-11-12 | 2026-11-17 | 4382 |  | RGA -FINISHING | 7390105 |
| 4162 | 40200.40300.40900.52800.55800.59300.61100.271300.2697200 | CONCEALED PLUMBING | 8d | 2026-11-18 | 2026-11-25 | 4161 |  | RGA -FINISHING | 7390115 |
| 4163 | 40200.40300.40900.52800.55800.59300.61100.271300.2697300 | WATERPROOFING WORK FOR TOILETS, KITCHEN SUNK & PLANTERS | 8d | 2026-11-26 | 2026-12-03 | 4162 |  | RGA -FINISHING | 7390125 |
| 4164 | 40200.40300.40900.52800.55800.59300.61100.271400 | **6th FLOOR** | 114d | 2026-09-06 | 2026-12-28 |  | start no earlier than 2026-09-06 | RGA -FINISHING | 7383105 |
| 4165 | 40200.40300.40900.52800.55800.59300.61100.271400.2697400 | BALCONY RAILING FIXING | 9d | 2026-11-14 | 2026-11-22 | 4041FS+10d |  | RGA -FINISHING | 7390135 |
| 4166 | 40200.40300.40900.52800.55800.59300.61100.271400.2697500 | Block work | 8d | 2026-12-21 | 2026-12-28 | 4170 |  | RGA -FINISHING | 7390145 |
| 4167 | 40200.40300.40900.52800.55800.59300.61100.271400.2697600 | CONCEALED ELEC CONDUITING & ITS FINISHING | 5d | 2026-09-06 | 2026-09-10 | 4029FS-7d |  | RGA -FINISHING | 7390155 |
| 4168 | 40200.40300.40900.52800.55800.59300.61100.271400.2697700 | PLASTER APPLICATION | 6d | 2026-11-29 | 2026-12-04 | 4395 |  | RGA -FINISHING | 7390165 |
| 4169 | 40200.40300.40900.52800.55800.59300.61100.271400.2697800 | CONCEALED PLUMBING | 8d | 2026-12-05 | 2026-12-12 | 4168 |  | RGA -FINISHING | 7390175 |
| 4170 | 40200.40300.40900.52800.55800.59300.61100.271400.2697900 | WATERPROOFING WORK FOR TOILETS, KITCHEN SUNK & PLANTERS | 8d | 2026-12-13 | 2026-12-20 | 4169 |  | RGA -FINISHING | 7390185 |
| 4171 | 40200.40300.40900.52800.55800.59300.61100.271500 | **7th FLOOR** | 128.5d | 2026-09-23 | 2027-01-29 |  | start no earlier than 2026-09-23 | RGA -FINISHING | 7382935 |
| 4172 | 40200.40300.40900.52800.55800.59300.61100.271500.2698000 | BALCONY RAILING FIXING | 9d | 2026-12-15 | 2026-12-24 | 4045FS+20d |  | RGA -FINISHING | 7390195 |
| 4173 | 40200.40300.40900.52800.55800.59300.61100.271500.2698100 | Block work | 8d | 2027-01-21 | 2027-01-29 | 4177 |  | RGA -FINISHING | 7390205 |
| 4174 | 40200.40300.40900.52800.55800.59300.61100.271500.2698200 | CONCEALED ELEC CONDUITING & ITS FINISHING | 5d | 2026-09-23 | 2026-09-27 | 4033FS-7d |  | RGA -FINISHING | 7390215 |
| 4175 | 40200.40300.40900.52800.55800.59300.61100.271500.2698300 | PLASTER APPLICATION | 6d | 2026-12-30 | 2027-01-05 | 4408 |  | RGA -FINISHING | 7390225 |
| 4176 | 40200.40300.40900.52800.55800.59300.61100.271500.2698400 | CONCEALED PLUMBING | 8d | 2027-01-05 | 2027-01-13 | 4175 |  | RGA -FINISHING | 7390235 |
| 4177 | 40200.40300.40900.52800.55800.59300.61100.271500.2698500 | WATERPROOFING WORK FOR TOILETS, KITCHEN SUNK & PLANTERS | 8d | 2027-01-13 | 2027-01-21 | 4176 |  | RGA -FINISHING | 7390245 |
| 4178 | 40200.40300.40900.52800.55800.59300.61100.271600 | **8th FLOOR** | 128d | 2026-10-11 | 2027-02-15 |  | start no earlier than 2026-10-11 | RGA -FINISHING | 7383095 |
| 4179 | 40200.40300.40900.52800.55800.59300.61100.271600.2698600 | BALCONY RAILING FIXING | 9d | 2027-01-02 | 2027-01-10 | 4049FS+10d |  | RGA -FINISHING | 7390255 |
| 4180 | 40200.40300.40900.52800.55800.59300.61100.271600.2698700 | Block work | 8d | 2027-02-08 | 2027-02-15 | 4184 |  | RGA -FINISHING | 7390265 |
| 4181 | 40200.40300.40900.52800.55800.59300.61100.271600.2698800 | CONCEALED ELEC CONDUITING & ITS FINISHING | 5d | 2026-10-11 | 2026-10-15 | 4037FS-7d |  | RGA -FINISHING | 7390275 |
| 4182 | 40200.40300.40900.52800.55800.59300.61100.271600.2698900 | PLASTER APPLICATION | 6d | 2027-01-17 | 2027-01-22 | 4421 |  | RGA -FINISHING | 7390285 |
| 4183 | 40200.40300.40900.52800.55800.59300.61100.271600.2699000 | CONCEALED PLUMBING | 8d | 2027-01-23 | 2027-01-30 | 4182 |  | RGA -FINISHING | 7390295 |
| 4184 | 40200.40300.40900.52800.55800.59300.61100.271600.2699100 | WATERPROOFING WORK FOR TOILETS, KITCHEN SUNK & PLANTERS | 8d | 2027-01-31 | 2027-02-07 | 4183 |  | RGA -FINISHING | 7390305 |

| ID | WBS | Task | Duration | Start | Finish | Predecessors | Constraint | Calendar | Unique_Task_ID |
| --- | --- | --- | --- | --- | --- | --- | --- | --- | --- |
| 4185 | 40200.40300.40900.52800.55800.59300.61100.271700 | **9th FLOOR** | 128d | 2026-10-28 | 2027-03-04 |  | start no earlier than 2026-10-28 | RGA -FINISHING | 7383085 |
| 4186 | 40200.40300.40900.52800.55800.59300.61100.271700.2699200 | BALCONY RAILING FIXING | 9d | 2027-01-19 | 2027-01-27 | 4053FS+10d |  | RGA -FINISHING | 7390315 |
| 4187 | 40200.40300.40900.52800.55800.59300.61100.271700.2699300 | Block work | 8d | 2027-02-25 | 2027-03-04 | 4191 |  | RGA -FINISHING | 7390325 |
| 4188 | 40200.40300.40900.52800.55800.59300.61100.271700.2699400 | CONCEALED ELEC CONDUITING & ITS FINISHING | 5d | 2026-10-28 | 2026-11-01 | 4041FS-7d |  | RGA -FINISHING | 7390335 |
| 4189 | 40200.40300.40900.52800.55800.59300.61100.271700.2699500 | PLASTER APPLICATION | 6d | 2027-02-03 | 2027-02-08 | 4434 |  | RGA -FINISHING | 7390345 |
| 4190 | 40200.40300.40900.52800.55800.59300.61100.271700.2699600 | CONCEALED PLUMBING | 8d | 2027-02-09 | 2027-02-16 | 4189 |  | RGA -FINISHING | 7390355 |
| 4191 | 40200.40300.40900.52800.55800.59300.61100.271700.2699700 | WATERPROOFING WORK FOR TOILETS, KITCHEN SUNK & PLANTERS | 8d | 2027-02-17 | 2027-02-24 | 4190 |  | RGA -FINISHING | 7390365 |
| 4192 | 40200.40300.40900.52800.55800.59300.61100.271800 | **10th FLOOR** | 118d | 2026-11-14 | 2027-03-11 |  | start no earlier than 2026-11-14 | RGA -FINISHING | 7383075 |
| 4193 | 40200.40300.40900.52800.55800.59300.61100.271800.2699800 | BALCONY RAILING FIXING | 9d | 2027-01-26 | 2027-02-03 | 4057 |  | RGA -FINISHING | 7390375 |
| 4194 | 40200.40300.40900.52800.55800.59300.61100.271800.2699900 | Block work | 8d | 2027-03-04 | 2027-03-11 | 4198 |  | RGA -FINISHING | 7390385 |
| 4195 | 40200.40300.40900.52800.55800.59300.61100.271800.2700000 | CONCEALED ELEC CONDUITING & ITS FINISHING | 5d | 2026-11-14 | 2026-11-18 | 4045FS-11.5d |  | RGA -FINISHING | 7390395 |
| 4196 | 40200.40300.40900.52800.55800.59300.61100.271800.2700100 | PLASTER APPLICATION | 6d | 2027-02-10 | 2027-02-15 | 4447 |  | RGA -FINISHING | 7390405 |
| 4197 | 40200.40300.40900.52800.55800.59300.61100.271800.2700200 | CONCEALED PLUMBING | 8d | 2027-02-16 | 2027-02-23 | 4196 |  | RGA -FINISHING | 7390415 |
| 4198 | 40200.40300.40900.52800.55800.59300.61100.271800.2700300 | WATERPROOFING WORK FOR TOILETS, KITCHEN SUNK & PLANTERS | 8d | 2027-02-24 | 2027-03-03 | 4197 |  | RGA -FINISHING | 7390425 |
| 4199 | 40200.40300.40900.52800.55800.59300.61100.271900 | **11th FLOOR** | 103d | 2026-12-16 | 2027-03-28 |  | start no earlier than 2026-12-16 | RGA -FINISHING | 7382845 |
| 4200 | 40200.40300.40900.52800.55800.59300.61100.271900.2700400 | BALCONY RAILING FIXING | 9d | 2027-02-12 | 2027-02-20 | 4061 |  | RGA -FINISHING | 7390435 |
| 4201 | 40200.40300.40900.52800.55800.59300.61100.271900.2700500 | Block work | 8d | 2027-03-21 | 2027-03-28 | 4205 |  | RGA -FINISHING | 7390445 |
| 4202 | 40200.40300.40900.52800.55800.59300.61100.271900.2700600 | CONCEALED ELEC CONDUITING & ITS FINISHING | 5d | 2026-12-16 | 2026-12-20 | 4049FS-7d |  | RGA -FINISHING | 7390455 |
| 4203 | 40200.40300.40900.52800.55800.59300.61100.271900.2700700 | PLASTER APPLICATION | 6d | 2027-02-27 | 2027-03-04 | 4460 |  | RGA -FINISHING | 7390465 |
| 4204 | 40200.40300.40900.52800.55800.59300.61100.271900.2700800 | CONCEALED PLUMBING | 8d | 2027-03-05 | 2027-03-12 | 4203 |  | RGA -FINISHING | 7390475 |
| 4205 | 40200.40300.40900.52800.55800.59300.61100.271900.2700900 | WATERPROOFING WORK FOR TOILETS, KITCHEN SUNK & PLANTERS | 8d | 2027-03-13 | 2027-03-20 | 4204 |  | RGA -FINISHING | 7390485 |
| 4206 | 40200.40300.40900.52800.55800.59300.61100.272000 | **12th FLOOR** | 95d | 2027-01-02 | 2027-04-06 |  | start no earlier than 2027-01-02 | RGA -FINISHING | 7382855 |
| 4207 | 40200.40300.40900.52800.55800.59300.61100.272000.2701000 | BALCONY RAILING FIXING | 9d | 2027-03-01 | 2027-03-09 | 4065 |  | RGA -FINISHING | 7390495 |
| 4208 | 40200.40300.40900.52800.55800.59300.61100.272000.2701100 | Block work | 8d | 2027-03-30 | 2027-04-06 | 4211 |  | RGA -FINISHING | 7390505 |
| 4209 | 40200.40300.40900.52800.55800.59300.61100.272000.2701200 | CONCEALED ELEC CONDUITING & ITS FINISHING | 5d | 2027-01-02 | 2027-01-06 | 4053FS-7d |  | RGA -FINISHING | 7390515 |
| 4210 | 40200.40300.40900.52800.55800.59300.61100.272000.2701300 | PLASTER APPLICATION | 6d | 2027-03-16 | 2027-03-21 | 4473 |  | RGA -FINISHING | 7390525 |
| 4211 | 40200.40300.40900.52800.55800.59300.61100.272000.2701400 | CONCEALED PLUMBING | 8d | 2027-03-22 | 2027-03-29 | 4210 |  | RGA -FINISHING | 7390535 |
| 4212 | 40200.40300.40900.52800.55800.59300.61100.272000.2701500 | WATERPROOFING WORK FOR TOILETS, KITCHEN SUNK & PLANTERS | 8d | 2027-03-30 | 2027-04-06 | 4211 |  | RGA -FINISHING | 7390545 |

| ID | WBS | Task | Duration | Start | Finish | Predecessors | Constraint | Calendar | Unique_Task_ID |
| --- | --- | --- | --- | --- | --- | --- | --- | --- | --- |
| 4213 | 40200.40300.40900.52800.55800.59300.61100.272100 | **13th FLOOR** | 119d | 2027-01-19 | 2027-05-17 |  | start no earlier than 2027-01-19 | RGA -FINISHING | 7382865 |
| 4214 | 40200.40300.40900.52800.55800.59300.61100.272100.2701600 | BALCONY RAILING FIXING | 9d | 2027-03-18 | 2027-03-26 | 4069 |  | RGA -FINISHING | 7390555 |
| 4215 | 40200.40300.40900.52800.55800.59300.61100.272100.2701700 | Block work | 8d | 2027-05-10 | 2027-05-17 | 4219 |  | RGA -FINISHING | 7390565 |
| 4216 | 40200.40300.40900.52800.55800.59300.61100.272100.2701800 | CONCEALED ELEC CONDUITING & ITS FINISHING | 5d | 2027-01-19 | 2027-01-23 | 4057FS-7d |  | RGA -FINISHING | 7390575 |
| 4217 | 40200.40300.40900.52800.55800.59300.61100.272100.2701900 | PLASTER APPLICATION | 15d | 2027-04-04 | 2027-04-18 | 4486 |  | RGA -FINISHING | 7390585 |
| 4218 | 40200.40300.40900.52800.55800.59300.61100.272100.2702000 | CONCEALED PLUMBING | 9d | 2027-04-19 | 2027-04-27 | 4217 |  | RGA -FINISHING | 7390595 |
| 4219 | 40200.40300.40900.52800.55800.59300.61100.272100.2702100 | WATERPROOFING WORK FOR TOILETS, KITCHEN SUNK & PLANTERS | 12d | 2027-04-28 | 2027-05-09 | 4218 |  | RGA -FINISHING | 7390605 |
| 4220 | 40200.40300.40900.52800.55800.59300.61100.272200 | **14th FLOOR** | 119d | 2027-02-05 | 2027-06-03 |  | start no earlier than 2027-02-05 | RGA -FINISHING | 7382875 |
| 4221 | 40200.40300.40900.52800.55800.59300.61100.272200.2702200 | BALCONY RAILING FIXING | 9d | 2027-04-04 | 2027-04-12 | 4073 |  | RGA -FINISHING | 7390615 |
| 4222 | 40200.40300.40900.52800.55800.59300.61100.272200.2702300 | Block work | 8d | 2027-05-27 | 2027-06-03 | 4226 |  | RGA -FINISHING | 7390625 |
| 4223 | 40200.40300.40900.52800.55800.59300.61100.272200.2702400 | CONCEALED ELEC CONDUITING & ITS FINISHING | 5d | 2027-02-05 | 2027-02-09 | 4061FS-7d |  | RGA -FINISHING | 7390635 |
| 4224 | 40200.40300.40900.52800.55800.59300.61100.272200.2702500 | PLASTER APPLICATION | 15d | 2027-04-21 | 2027-05-05 | 4499 |  | RGA -FINISHING | 7390645 |
| 4225 | 40200.40300.40900.52800.55800.59300.61100.272200.2702600 | CONCEALED PLUMBING | 9d | 2027-05-06 | 2027-05-14 | 4224 |  | RGA -FINISHING | 7390655 |
| 4226 | 40200.40300.40900.52800.55800.59300.61100.272200.2702700 | WATERPROOFING WORK FOR TOILETS, KITCHEN SUNK & PLANTERS | 12d | 2027-05-15 | 2027-05-26 | 4225 |  | RGA -FINISHING | 7390665 |
| 4227 | 40200.40300.40900.52800.55800.59300.61100.272300 | **15th FLOOR** | 119d | 2027-02-22 | 2027-06-20 |  | start no earlier than 2027-02-22 | RGA -FINISHING | 7382885 |
| 4228 | 40200.40300.40900.52800.55800.59300.61100.272300.2702800 | BALCONY RAILING FIXING | 9d | 2027-04-21 | 2027-04-29 | 4077 |  | RGA -FINISHING | 7390675 |
| 4229 | 40200.40300.40900.52800.55800.59300.61100.272300.2702900 | Block work | 8d | 2027-06-13 | 2027-06-20 | 4233 |  | RGA -FINISHING | 7390685 |
| 4230 | 40200.40300.40900.52800.55800.59300.61100.272300.2703000 | CONCEALED ELEC CONDUITING & ITS FINISHING | 5d | 2027-02-22 | 2027-02-26 | 4065FS-7d |  | RGA -FINISHING | 7390695 |
| 4231 | 40200.40300.40900.52800.55800.59300.61100.272300.2703100 | PLASTER APPLICATION | 15d | 2027-05-08 | 2027-05-22 | 4512 |  | RGA -FINISHING | 7390705 |
| 4232 | 40200.40300.40900.52800.55800.59300.61100.272300.2703200 | CONCEALED PLUMBING | 9d | 2027-05-23 | 2027-05-31 | 4231 |  | RGA -FINISHING | 7390715 |
| 4233 | 40200.40300.40900.52800.55800.59300.61100.272300.2703300 | WATERPROOFING WORK FOR TOILETS, KITCHEN SUNK & PLANTERS | 12d | 2027-06-01 | 2027-06-12 | 4232 |  | RGA -FINISHING | 7390725 |
| 4234 | 40200.40300.40900.52800.55800.59300.61100.272400 | **16th FLOOR** | 119d | 2027-03-11 | 2027-07-07 |  | start no earlier than 2027-03-11 | RGA -FINISHING | 7382895 |
| 4235 | 40200.40300.40900.52800.55800.59300.61100.272400.2703400 | BALCONY RAILING FIXING | 9d | 2027-05-08 | 2027-05-16 | 4081 |  | RGA -FINISHING | 7390735 |
| 4236 | 40200.40300.40900.52800.55800.59300.61100.272400.2703500 | Block work | 8d | 2027-06-30 | 2027-07-07 | 4240 |  | RGA -FINISHING | 7390745 |
| 4237 | 40200.40300.40900.52800.55800.59300.61100.272400.2703600 | CONCEALED ELEC CONDUITING & ITS FINISHING | 5d | 2027-03-11 | 2027-03-15 | 4069FS-7d |  | RGA -FINISHING | 7390755 |
| 4238 | 40200.40300.40900.52800.55800.59300.61100.272400.2703700 | PLASTER APPLICATION | 15d | 2027-05-25 | 2027-06-08 | 4525 |  | RGA -FINISHING | 7390765 |
| 4239 | 40200.40300.40900.52800.55800.59300.61100.272400.2703800 | CONCEALED PLUMBING | 9d | 2027-06-09 | 2027-06-17 | 4238 |  | RGA -FINISHING | 7390775 |
| 4240 | 40200.40300.40900.52800.55800.59300.61100.272400.2703900 | WATERPROOFING WORK FOR TOILETS, KITCHEN SUNK & PLANTERS | 12d | 2027-06-18 | 2027-06-29 | 4239 |  | RGA -FINISHING | 7390785 |

| ID | WBS | Task | Duration | Start | Finish | Predecessors | Constraint | Calendar | Unique_Task_ID |
| --- | --- | --- | --- | --- | --- | --- | --- | --- | --- |
| 4241 | 40200.40300.40900.52800.55800.59300.61100.272500 | **17th FLOOR** | 119d | 2027-03-28 | 2027-07-24 |  | start no earlier than 2027-03-28 | RGA -FINISHING | 7382905 |
| 4242 | 40200.40300.40900.52800.55800.59300.61100.272500.2704000 | BALCONY RAILING FIXING | 9d | 2027-05-25 | 2027-06-02 | 4085 |  | RGA -FINISHING | 7390795 |
| 4243 | 40200.40300.40900.52800.55800.59300.61100.272500.2704100 | Block work | 8d | 2027-07-17 | 2027-07-24 | 4247 |  | RGA -FINISHING | 7390805 |
| 4244 | 40200.40300.40900.52800.55800.59300.61100.272500.2704200 | CONCEALED ELEC CONDUITING & ITS FINISHING | 5d | 2027-03-28 | 2027-04-01 | 4073FS-7d |  | RGA -FINISHING | 7390815 |
| 4245 | 40200.40300.40900.52800.55800.59300.61100.272500.2704300 | PLASTER APPLICATION | 15d | 2027-06-11 | 2027-06-25 | 4538 |  | RGA -FINISHING | 7390825 |
| 4246 | 40200.40300.40900.52800.55800.59300.61100.272500.2704400 | CONCEALED PLUMBING | 9d | 2027-06-26 | 2027-07-04 | 4245 |  | RGA -FINISHING | 7390835 |
| 4247 | 40200.40300.40900.52800.55800.59300.61100.272500.2704500 | WATERPROOFING WORK FOR TOILETS, KITCHEN SUNK & PLANTERS | 12d | 2027-07-05 | 2027-07-16 | 4246 |  | RGA -FINISHING | 7390845 |
| 4248 | 40200.40300.40900.52800.55800.59300.61100.272600 | **18th FLOOR** | 119d | 2027-04-14 | 2027-08-10 |  | start no earlier than 2027-04-14 | RGA -FINISHING | 7382915 |
| 4249 | 40200.40300.40900.52800.55800.59300.61100.272600.2704600 | BALCONY RAILING FIXING | 9d | 2027-06-11 | 2027-06-19 | 4089 |  | RGA -FINISHING | 7390855 |
| 4250 | 40200.40300.40900.52800.55800.59300.61100.272600.2704700 | Block work | 8d | 2027-08-03 | 2027-08-10 | 4254 |  | RGA -FINISHING | 7390865 |
| 4251 | 40200.40300.40900.52800.55800.59300.61100.272600.2704800 | CONCEALED ELEC CONDUITING & ITS FINISHING | 5d | 2027-04-14 | 2027-04-18 | 4077FS-7d |  | RGA -FINISHING | 7390875 |
| 4252 | 40200.40300.40900.52800.55800.59300.61100.272600.2704900 | PLASTER APPLICATION | 15d | 2027-06-28 | 2027-07-12 | 4551 |  | RGA -FINISHING | 7390885 |
| 4253 | 40200.40300.40900.52800.55800.59300.61100.272600.2705000 | CONCEALED PLUMBING | 9d | 2027-07-13 | 2027-07-21 | 4252 |  | RGA -FINISHING | 7390895 |
| 4254 | 40200.40300.40900.52800.55800.59300.61100.272600.2705100 | WATERPROOFING WORK FOR TOILETS, KITCHEN SUNK & PLANTERS | 12d | 2027-07-22 | 2027-08-02 | 4253 |  | RGA -FINISHING | 7390905 |
| 4255 | 40200.40300.40900.52800.55800.59300.61100.272700 | **19th FLOOR** | 67d | 2027-05-01 | 2027-07-06 |  | start no earlier than 2027-05-01 | RGA -FINISHING | 7382925 |
| 4256 | 40200.40300.40900.52800.55800.59300.61100.272700.2705200 | BALCONY RAILING FIXING | 9d | 2027-06-28 | 2027-07-06 | 4093 |  | RGA -FINISHING | 7390915 |
| 4257 | 40200.40300.40900.52800.55800.59300.61100.272700.2705300 | Block work | 8d | 2027-06-19 | 2027-06-26 | 4261 |  | RGA -FINISHING | 7390925 |
| 4258 | 40200.40300.40900.52800.55800.59300.61100.272700.2705400 | CONCEALED ELEC CONDUITING & ITS FINISHING | 5d | 2027-05-01 | 2027-05-05 | 4081FS-7d |  | RGA -FINISHING | 7390935 |
| 4259 | 40200.40300.40900.52800.55800.59300.61100.272700.2705500 | PLASTER APPLICATION | 15d | 2027-05-14 | 2027-05-28 | 4564 |  | RGA -FINISHING | 7390945 |
| 4260 | 40200.40300.40900.52800.55800.59300.61100.272700.2705600 | CONCEALED PLUMBING | 9d | 2027-05-29 | 2027-06-06 | 4259 |  | RGA -FINISHING | 7390955 |
| 4261 | 40200.40300.40900.52800.55800.59300.61100.272700.2705700 | WATERPROOFING WORK FOR TOILETS, KITCHEN SUNK & PLANTERS | 12d | 2027-06-07 | 2027-06-18 | 4260 |  | RGA -FINISHING | 7390965 |
| 4262 | 40200.40300.40900.52800.55800.59300.61100.272800 | **20th FLOOR** | 119d | 2027-05-18 | 2027-09-13 |  | start no earlier than 2027-05-18 | RGA -FINISHING | 7382955 |
| 4263 | 40200.40300.40900.52800.55800.59300.61100.272800.2705800 | BALCONY RAILING FIXING | 9d | 2027-07-15 | 2027-07-23 | 4097 |  | RGA -FINISHING | 7390975 |
| 4264 | 40200.40300.40900.52800.55800.59300.61100.272800.2705900 | Block work | 8d | 2027-09-06 | 2027-09-13 | 4268 |  | RGA -FINISHING | 7390985 |
| 4265 | 40200.40300.40900.52800.55800.59300.61100.272800.2706000 | CONCEALED ELEC CONDUITING & ITS FINISHING | 5d | 2027-05-18 | 2027-05-22 | 4085FS-7d |  | RGA -FINISHING | 7390995 |
| 4266 | 40200.40300.40900.52800.55800.59300.61100.272800.2706100 | PLASTER APPLICATION | 15d | 2027-08-01 | 2027-08-15 | 4577 |  | RGA -FINISHING | 7391005 |
| 4267 | 40200.40300.40900.52800.55800.59300.61100.272800.2706200 | CONCEALED PLUMBING | 9d | 2027-08-16 | 2027-08-24 | 4266 |  | RGA -FINISHING | 7391015 |
| 4268 | 40200.40300.40900.52800.55800.59300.61100.272800.2706300 | WATERPROOFING WORK FOR TOILETS, KITCHEN SUNK & PLANTERS | 12d | 2027-08-25 | 2027-09-05 | 4267 |  | RGA -FINISHING | 7391025 |

Notes:
- 4250: Last floor BW completion 2 months post Last RCC
- 4257: Last floor BW completion 2 months post Last RCC
- 4264: Last floor BW completion 2 months post Last RCC

| ID | WBS | Task | Duration | Start | Finish | Predecessors | Constraint | Calendar | Unique_Task_ID |
| --- | --- | --- | --- | --- | --- | --- | --- | --- | --- |
| 4269 | 40200.40300.40900.52800.55800.59300.61100.272900 | **21th FLOOR** | 119d | 2027-06-04 | 2027-09-30 |  | start no earlier than 2027-06-04 | RGA -FINISHING | 7382965 |
| 4270 | 40200.40300.40900.52800.55800.59300.61100.272900.2706400 | BALCONY RAILING FIXING | 9d | 2027-08-01 | 2027-08-09 | 4101 |  | RGA -FINISHING | 7391035 |
| 4271 | 40200.40300.40900.52800.55800.59300.61100.272900.2706500 | Block work | 8d | 2027-09-23 | 2027-09-30 | 4275 |  | RGA -FINISHING | 7391045 |
| 4272 | 40200.40300.40900.52800.55800.59300.61100.272900.2706600 | CONCEALED ELEC CONDUITING & ITS FINISHING | 5d | 2027-06-04 | 2027-06-08 | 4089FS-7d |  | RGA -FINISHING | 7391055 |
| 4273 | 40200.40300.40900.52800.55800.59300.61100.272900.2706700 | PLASTER APPLICATION | 15d | 2027-08-18 | 2027-09-01 | 4590 |  | RGA -FINISHING | 7391065 |
| 4274 | 40200.40300.40900.52800.55800.59300.61100.272900.2706800 | CONCEALED PLUMBING | 9d | 2027-09-02 | 2027-09-10 | 4273 |  | RGA -FINISHING | 7391075 |
| 4275 | 40200.40300.40900.52800.55800.59300.61100.272900.2706900 | WATERPROOFING WORK FOR TOILETS, KITCHEN SUNK & PLANTERS | 12d | 2027-09-11 | 2027-09-22 | 4274 |  | RGA -FINISHING | 7391085 |
| 4276 | 40200.40300.40900.52800.55800.59300.61100.273000 | **22th FLOOR** | 119d | 2027-06-21 | 2027-10-17 |  | start no earlier than 2027-06-21 | RGA -FINISHING | 7382985 |
| 4277 | 40200.40300.40900.52800.55800.59300.61100.273000.2707000 | BALCONY RAILING FIXING | 9d | 2027-08-18 | 2027-08-26 | 4105 |  | RGA -FINISHING | 7391095 |
| 4278 | 40200.40300.40900.52800.55800.59300.61100.273000.2707100 | Block work | 8d | 2027-10-10 | 2027-10-17 | 4282 |  | RGA -FINISHING | 7391105 |
| 4279 | 40200.40300.40900.52800.55800.59300.61100.273000.2707200 | CONCEALED ELEC CONDUITING & ITS FINISHING | 5d | 2027-06-21 | 2027-06-25 | 4093FS-7d |  | RGA -FINISHING | 7391115 |
| 4280 | 40200.40300.40900.52800.55800.59300.61100.273000.2707300 | PLASTER APPLICATION | 15d | 2027-09-04 | 2027-09-18 | 4603 |  | RGA -FINISHING | 7391125 |
| 4281 | 40200.40300.40900.52800.55800.59300.61100.273000.2707400 | CONCEALED PLUMBING | 9d | 2027-09-19 | 2027-09-27 | 4280 |  | RGA -FINISHING | 7391135 |
| 4282 | 40200.40300.40900.52800.55800.59300.61100.273000.2707500 | WATERPROOFING WORK FOR TOILETS, KITCHEN SUNK & PLANTERS | 12d | 2027-09-28 | 2027-10-09 | 4281 |  | RGA -FINISHING | 7391145 |
| 4283 | 40200.40300.40900.52800.55800.59300.61100.273100 | **23th FLOOR** | 111d | 2027-07-08 | 2027-10-26 |  | start no earlier than 2027-07-08 | RGA -FINISHING | 7383005 |
| 4284 | 40200.40300.40900.52800.55800.59300.61100.273100.2707600 | BALCONY RAILING FIXING | 9d | 2027-08-27 | 2027-09-04 | 4277 |  | RGA -FINISHING | 7391155 |
| 4285 | 40200.40300.40900.52800.55800.59300.61100.273100.2707700 | Block work | 8d | 2027-10-19 | 2027-10-26 | 4289 |  | RGA -FINISHING | 7391165 |
| 4286 | 40200.40300.40900.52800.55800.59300.61100.273100.2707800 | CONCEALED ELEC CONDUITING & ITS FINISHING | 5d | 2027-07-08 | 2027-07-12 | 4097FS-7d |  | RGA -FINISHING | 7391175 |
| 4287 | 40200.40300.40900.52800.55800.59300.61100.273100.2707900 | PLASTER APPLICATION | 15d | 2027-09-13 | 2027-09-27 | 4616 |  | RGA -FINISHING | 7391185 |
| 4288 | 40200.40300.40900.52800.55800.59300.61100.273100.2708000 | CONCEALED PLUMBING | 9d | 2027-09-28 | 2027-10-06 | 4287 |  | RGA -FINISHING | 7391195 |
| 4289 | 40200.40300.40900.52800.55800.59300.61100.273100.2708100 | WATERPROOFING WORK FOR TOILETS, KITCHEN SUNK & PLANTERS | 12d | 2027-10-07 | 2027-10-18 | 4288 |  | RGA -FINISHING | 7391205 |
| 4290 | 40200.40300.40900.52800.55800.59300.61100.273200 | **24th FLOOR** | 103d | 2027-07-25 | 2027-11-04 |  | start no earlier than 2027-07-25 | RGA -FINISHING | 7383015 |
| 4291 | 40200.40300.40900.52800.55800.59300.61100.273200.2708200 | BALCONY RAILING FIXING | 9d | 2027-09-05 | 2027-09-13 | 4284 |  | RGA -FINISHING | 7391215 |
| 4292 | 40200.40300.40900.52800.55800.59300.61100.273200.2708300 | Block work | 8d | 2027-10-28 | 2027-11-04 | 4296 |  | RGA -FINISHING | 7391225 |
| 4293 | 40200.40300.40900.52800.55800.59300.61100.273200.2708400 | CONCEALED ELEC CONDUITING & ITS FINISHING | 5d | 2027-07-25 | 2027-07-29 | 4101FS-7d |  | RGA -FINISHING | 7391235 |
| 4294 | 40200.40300.40900.52800.55800.59300.61100.273200.2708500 | PLASTER APPLICATION | 15d | 2027-09-22 | 2027-10-06 | 4629 |  | RGA -FINISHING | 7391245 |
| 4295 | 40200.40300.40900.52800.55800.59300.61100.273200.2708600 | CONCEALED PLUMBING | 9d | 2027-10-07 | 2027-10-15 | 4294 |  | RGA -FINISHING | 7391255 |
| 4296 | 40200.40300.40900.52800.55800.59300.61100.273200.2708700 | WATERPROOFING WORK FOR TOILETS, KITCHEN SUNK & PLANTERS | 12d | 2027-10-16 | 2027-10-27 | 4295 |  | RGA -FINISHING | 7391265 |

Notes:
- 4271: Last floor BW completion 2 months post Last RCC
- 4278: Last floor BW completion 2 months post Last RCC
- 4285: Last floor BW completion 2 months post Last RCC
- 4292: Last floor BW completion 2 months post Last RCC

| ID | WBS | Task | Duration | Start | Finish | Predecessors | Constraint | Calendar | Unique_Task_ID |
| --- | --- | --- | --- | --- | --- | --- | --- | --- | --- |
| 4297 | 40200.40300.40900.52800.55800.59300.61100.273300 | **25thFLOOR** | 105d | 2027-08-11 | 2027-11-23 |  | start no earlier than 2027-08-11 | RGA -FINISHING | 7383035 |
| 4298 | 40200.40300.40900.52800.55800.59300.61100.273300.2708800 | BALCONY RAILING FIXING | 9d | 2027-09-24 | 2027-10-02 | 4291FS+10d |  | RGA -FINISHING | 7391275 |
| 4299 | 40200.40300.40900.52800.55800.59300.61100.273300.2708900 | Block work | 8d | 2027-11-16 | 2027-11-23 | 4303 |  | RGA -FINISHING | 7391285 |
| 4300 | 40200.40300.40900.52800.55800.59300.61100.273300.2709000 | CONCEALED ELEC CONDUITING & ITS FINISHING | 5d | 2027-08-11 | 2027-08-15 | 4105FS-7d |  | RGA -FINISHING | 7391295 |
| 4301 | 40200.40300.40900.52800.55800.59300.61100.273300.2709100 | PLASTER APPLICATION | 15d | 2027-10-11 | 2027-10-25 | 4642 |  | RGA -FINISHING | 7391305 |
| 4302 | 40200.40300.40900.52800.55800.59300.61100.273300.2709200 | CONCEALED PLUMBING | 9d | 2027-10-26 | 2027-11-03 | 4301 |  | RGA -FINISHING | 7391315 |
| 4303 | 40200.40300.40900.52800.55800.59300.61100.273300.2709300 | WATERPROOFING WORK FOR TOILETS, KITCHEN SUNK & PLANTERS | 12d | 2027-11-04 | 2027-11-15 | 4302 |  | RGA -FINISHING | 7391325 |
| 4304 | 40200.40300.40900.52800.55800.59300.61100.372700 | **LMR(To be Deleted)** | 15d | 2025-11-30 | 2025-12-14 |  | start no earlier than 2025-11-30 | RGA -FINISHING | 7808502 |
| 4305 | 40200.40300.40900.52800.55800.59300.61100.372700.2709400 | Block work | 8d | 2025-11-30 | 2025-12-07 |  | start no earlier than 2025-11-30 | RGA -FINISHING | 7391755 |
| 4306 | 40200.40300.40900.52800.55800.59300.61100.372700.2709500 | CONCEALED ELEC CONDUITING & ITS FINISHING | 7d | 2025-11-30 | 2025-12-06 |  | start no earlier than 2025-11-30 | RGA -FINISHING | 7391765 |
| 4307 | 40200.40300.40900.52800.55800.59300.61100.372700.2709600 | PLASTER APPLICATION | 15d | 2025-11-30 | 2025-12-14 |  | start no earlier than 2025-11-30 | RGA -FINISHING | 7391775 |
| 4308 | 40200.40300.40900.52800.55800.59300.61100.372700.2709700 | DOOR FRAME FIXING | 3d | 2025-11-30 | 2025-12-02 |  | start no earlier than 2025-11-30 | RGA -FINISHING | 7391785 |
| 4309 | 40200.40300.40900.52800.55800.59300.506700 | **Terrace Finishing works** | 30d | 2028-03-04 | 2028-04-02 |  | start no earlier than 2028-03-04 | RGA -FINISHING | 7811982 |
| 4310 | 40200.40300.40900.52800.55800.59300.506700.2321700 | Terrace Waterproofing work | 30d | 2028-03-04 | 2028-04-02 | 4312FS+7d |  | RGA -FINISHING | 7842582 |
| 4311 | 40200.40300.40900.52800.55800.59300.506800 | **EXTERNAL Painting** | 165d | 2027-09-14 | 2028-02-25 |  | start no earlier than 2027-09-14 | RGA -FINISHING | 7811972 |
| 4312 | 40200.40300.40900.52800.55800.59300.506800.2321800 | 2nd coat | 165d | 2027-09-14 | 2028-02-25 | 4109FS+10d |  | RGA -FINISHING | 7842592 |
| 4313 | 40200.40300.40900.52800.55800.57500 | **Flat internal finishing & services works** | 612d | 2026-06-20 | 2028-02-21 |  | start no earlier than 2026-06-20 | RGA -FINISHING | 7803392 |
| 4314 | 40200.40300.40900.52800.55800.57500.141800 | **GROUND FLOOR** | 554d | 2026-06-20 | 2027-12-25 |  | start no earlier than 2026-06-20 | RGA -FINISHING | 7804832 |
| 4315 | 40200.40300.40900.52800.55800.57500.141800.2321900 | TOILET DADO TILE FIXING | 10d | 2026-08-04 | 2026-08-13 | 4124 |  | RGA -FINISHING | 7842602 |
| 4316 | 40200.40300.40900.52800.55800.57500.141800.2322000 | TOILET FLOORING WORK | 7d | 2026-08-14 | 2026-08-20 | 4315 |  | RGA -FINISHING | 7842612 |
| 4317 | 40200.40300.40900.52800.55800.57500.141800.2322100 | FIRE FIGHTING | 15d | 2026-06-20 | 2026-07-04 | 4123 |  | RGA -FINISHING | 7842622 |
| 4318 | 40200.40300.40900.52800.55800.57500.141800.2322200 | INTERNAL PAINTING - PUTTY / PRIMER APPLICATION | 15d | 2026-09-23 | 2026-10-07 | 4320 |  | RGA -FINISHING | 7842632 |
| 4319 | 40200.40300.40900.52800.55800.57500.141800.2322300 | FLAT FLOORING | 11d | 2026-08-21 | 2026-08-31 | 4316 |  | RGA -FINISHING | 7842642 |
| 4320 | 40200.40300.40900.52800.55800.57500.141800.2322400 | WINDOW FIXING | 12d | 2026-09-11 | 2026-09-22 | 4319FS+10d |  | RGA -FINISHING | 7842652 |
| 4321 | 40200.40300.40900.52800.55800.57500.141800.2322500 | INTERNAL PAINTING - 1ST COAT | 12d | 2026-10-08 | 2026-10-19 | 4318 |  | RGA -FINISHING | 7842662 |
| 4322 | 40200.40300.40900.52800.55800.57500.141800.2322600 | INTERNAL DOOR FIXING | 15d | 2026-10-20 | 2026-11-03 | 4321 |  | RGA -FINISHING | 7842672 |
| 4323 | 40200.40300.40900.52800.55800.57500.141800.2322700 | WIRING & SWITCH PLATE FIXING | 8d | 2026-11-04 | 2026-11-11 | 4322 |  | RGA -FINISHING | 7842682 |
| 4324 | 40200.40300.40900.52800.55800.57500.141800.2322800 | TOILET FALSE CEILING | 7d | 2026-11-12 | 2026-11-18 | 4323 |  | RGA -FINISHING | 7842692 |
| 4325 | 40200.40300.40900.52800.55800.57500.141800.2322900 | MAIN DOOR FRAME SHUTTER FIXING | 6d | 2027-12-12 | 2027-12-17 | 4657 |  | RGA -FINISHING | 7842702 |
| 4326 | 40200.40300.40900.52800.55800.57500.141800.2323000 | FINAL COAT PAINT | 8d | 2027-12-18 | 2027-12-25 | 4325 |  | RGA -FINISHING | 7842712 |

Notes:
- 4311: Ext Plaster (in 2 phases) completion 3.5 months post last BW
- 4313: Completion in 12 months post last RCC

| ID | WBS | Task | Duration | Start | Finish | Predecessors | Constraint | Calendar | Unique_Task_ID |
| --- | --- | --- | --- | --- | --- | --- | --- | --- | --- |
| 4327 | 40200.40300.40900.52800.55800.57500.141900 | **1ST FLOOR** | 512d | 2026-08-14 | 2028-01-07 |  | start no earlier than 2026-08-14 | RGA -FINISHING | 7804822 |
| 4328 | 40200.40300.40900.52800.55800.57500.141900.2323100 | TOILET DADO TILE FIXING | 7d | 2026-09-19 | 2026-09-25 | 4131 |  | RGA -FINISHING | 7842722 |
| 4329 | 40200.40300.40900.52800.55800.57500.141900.2323200 | TOILET FLOORING WORK | 7d | 2026-09-26 | 2026-10-02 | 4328 |  | RGA -FINISHING | 7842732 |
| 4330 | 40200.40300.40900.52800.55800.57500.141900.2323300 | FIRE FIGHTING | 6d | 2026-08-14 | 2026-08-19 | 4130 |  | RGA -FINISHING | 7842742 |
| 4331 | 40200.40300.40900.52800.55800.57500.141900.2323400 | INTERNAL PAINTING - PUTTY / PRIMER APPLICATION | 6d | 2026-10-30 | 2026-11-04 | 4333 |  | RGA -FINISHING | 7842752 |
| 4332 | 40200.40300.40900.52800.55800.57500.141900.2323500 | FLAT FLOORING | 5d | 2026-10-03 | 2026-10-07 | 4329 |  | RGA -FINISHING | 7842762 |
| 4333 | 40200.40300.40900.52800.55800.57500.141900.2323600 | WINDOW FIXING | 12d | 2026-10-18 | 2026-10-29 | 4332FS+10d |  | RGA -FINISHING | 7842772 |
| 4334 | 40200.40300.40900.52800.55800.57500.141900.2323700 | INTERNAL PAINTING - 1ST COAT | 12d | 2026-11-05 | 2026-11-16 | 4331 |  | RGA -FINISHING | 7842782 |
| 4335 | 40200.40300.40900.52800.55800.57500.141900.2323800 | INTERNAL DOOR FIXING | 15d | 2026-11-17 | 2026-12-01 | 4334 |  | RGA -FINISHING | 7842792 |
| 4336 | 40200.40300.40900.52800.55800.57500.141900.2323900 | WIRING & SWITCH PLATE FIXING | 8d | 2026-12-02 | 2026-12-09 | 4335 |  | RGA -FINISHING | 7842802 |
| 4337 | 40200.40300.40900.52800.55800.57500.141900.2324000 | TOILET FALSE CEILING | 7d | 2026-12-10 | 2026-12-16 | 4336 |  | RGA -FINISHING | 7842812 |
| 4338 | 40200.40300.40900.52800.55800.57500.141900.2324100 | MAIN DOOR FRAME SHUTTER FIXING | 6d | 2027-12-25 | 2027-12-30 | 4665 |  | RGA -FINISHING | 7842822 |
| 4339 | 40200.40300.40900.52800.55800.57500.141900.2324200 | FINAL COAT PAINT | 8d | 2027-12-31 | 2028-01-07 | 4338 |  | RGA -FINISHING | 7842832 |
| 4340 | 40200.40300.40900.52800.55800.57500.142000 | **2ND FLOOR** | 486d | 2026-09-09 | 2028-01-07 |  | start no earlier than 2026-09-09 | RGA -FINISHING | 7804812 |
| 4341 | 40200.40300.40900.52800.55800.57500.142000.2324300 | TOILET DADO TILE FIXING | 7d | 2026-10-15 | 2026-10-21 | 4138 |  | RGA -FINISHING | 7842842 |
| 4342 | 40200.40300.40900.52800.55800.57500.142000.2324400 | TOILET FLOORING WORK | 7d | 2026-10-22 | 2026-10-28 | 4341 |  | RGA -FINISHING | 7842852 |
| 4343 | 40200.40300.40900.52800.55800.57500.142000.2324500 | FIRE FIGHTING | 6d | 2026-09-09 | 2026-09-14 | 4137 |  | RGA -FINISHING | 7842862 |
| 4344 | 40200.40300.40900.52800.55800.57500.142000.2324600 | INTERNAL PAINTING - PUTTY / PRIMER APPLICATION | 6d | 2026-11-25 | 2026-11-30 | 4346 |  | RGA -FINISHING | 7842872 |
| 4345 | 40200.40300.40900.52800.55800.57500.142000.2324700 | FLAT FLOORING | 5d | 2026-10-29 | 2026-11-02 | 4342 |  | RGA -FINISHING | 7842882 |
| 4346 | 40200.40300.40900.52800.55800.57500.142000.2324800 | WINDOW FIXING | 12d | 2026-11-13 | 2026-11-24 | 4345FS+10d |  | RGA -FINISHING | 7842892 |
| 4347 | 40200.40300.40900.52800.55800.57500.142000.2324900 | INTERNAL PAINTING - 1ST COAT | 12d | 2026-12-01 | 2026-12-12 | 4344 |  | RGA -FINISHING | 7842902 |
| 4348 | 40200.40300.40900.52800.55800.57500.142000.2325000 | INTERNAL DOOR FIXING | 15d | 2026-12-11 | 2026-12-25 | 4347FS-2d |  | RGA -FINISHING | 7842912 |
| 4349 | 40200.40300.40900.52800.55800.57500.142000.2325100 | WIRING & SWITCH PLATE FIXING | 8d | 2026-12-22 | 2026-12-29 | 4348FS-4d |  | RGA -FINISHING | 7842922 |
| 4350 | 40200.40300.40900.52800.55800.57500.142000.2325200 | TOILET FALSE CEILING | 7d | 2026-12-30 | 2027-01-05 | 4349 |  | RGA -FINISHING | 7842932 |
| 4351 | 40200.40300.40900.52800.55800.57500.142000.2325300 | MAIN DOOR FRAME SHUTTER FIXING | 6d | 2027-12-25 | 2027-12-30 | 4673 |  | RGA -FINISHING | 7842942 |
| 4352 | 40200.40300.40900.52800.55800.57500.142000.2325400 | FINAL COAT PAINT | 8d | 2027-12-31 | 2028-01-07 | 4351 |  | RGA -FINISHING | 7842952 |

| ID | WBS | Task | Duration | Start | Finish | Predecessors | Constraint | Calendar | Unique_Task_ID |
| --- | --- | --- | --- | --- | --- | --- | --- | --- | --- |
| 4353 | 40200.40300.40900.52800.55800.57500.142100 | **3RD FLOOR** | 463d | 2026-10-02 | 2028-01-07 |  | start no earlier than 2026-10-02 | RGA -FINISHING | 7804802 |
| 4354 | 40200.40300.40900.52800.55800.57500.142100.2325500 | TOILET DADO TILE FIXING | 7d | 2026-11-07 | 2026-11-13 | 4145 |  | RGA -FINISHING | 7842962 |
| 4355 | 40200.40300.40900.52800.55800.57500.142100.2325600 | TOILET FLOORING WORK | 7d | 2026-11-14 | 2026-11-20 | 4354 |  | RGA -FINISHING | 7842972 |
| 4356 | 40200.40300.40900.52800.55800.57500.142100.2325700 | FIRE FIGHTING | 6d | 2026-10-02 | 2026-10-07 | 4144 |  | RGA -FINISHING | 7842982 |
| 4357 | 40200.40300.40900.52800.55800.57500.142100.2325800 | INTERNAL PAINTING - PUTTY / PRIMER APPLICATION | 6d | 2026-12-13 | 2026-12-18 | 4359 |  | RGA -FINISHING | 7842992 |
| 4358 | 40200.40300.40900.52800.55800.57500.142100.2325900 | FLAT FLOORING | 5d | 2026-11-21 | 2026-11-25 | 4355 |  | RGA -FINISHING | 7843002 |
| 4359 | 40200.40300.40900.52800.55800.57500.142100.2326000 | WINDOW FIXING | 7d | 2026-12-06 | 2026-12-12 | 4358FS+10d |  | RGA -FINISHING | 7843012 |
| 4360 | 40200.40300.40900.52800.55800.57500.142100.2326100 | INTERNAL PAINTING - 1ST COAT | 7d | 2026-12-19 | 2026-12-25 | 4357 |  | RGA -FINISHING | 7843022 |
| 4361 | 40200.40300.40900.52800.55800.57500.142100.2326200 | INTERNAL DOOR FIXING | 15d | 2026-12-24 | 2027-01-07 | 4360FS-2d |  | RGA -FINISHING | 7843032 |
| 4362 | 40200.40300.40900.52800.55800.57500.142100.2326300 | WIRING & SWITCH PLATE FIXING | 8d | 2027-01-04 | 2027-01-11 | 4361FS-4d |  | RGA -FINISHING | 7843042 |
| 4363 | 40200.40300.40900.52800.55800.57500.142100.2326400 | TOILET FALSE CEILING | 7d | 2027-01-12 | 2027-01-18 | 4362 |  | RGA -FINISHING | 7843052 |
| 4364 | 40200.40300.40900.52800.55800.57500.142100.2326500 | MAIN DOOR FRAME SHUTTER FIXING | 6d | 2027-12-25 | 2027-12-30 | 4681 |  | RGA -FINISHING | 7843062 |
| 4365 | 40200.40300.40900.52800.55800.57500.142100.2326600 | FINAL COAT PAINT | 8d | 2027-12-31 | 2028-01-07 | 4364 |  | RGA -FINISHING | 7843072 |
| 4366 | 40200.40300.40900.52800.55800.57500.142200 | **4TH FLOOR** | 448d | 2026-10-20 | 2028-01-10 |  | start no earlier than 2026-10-20 | RGA -FINISHING | 7804792 |
| 4367 | 40200.40300.40900.52800.55800.57500.142200.2326700 | TOILET DADO TILE FIXING | 7d | 2026-11-25 | 2026-12-01 | 4152 |  | RGA -FINISHING | 7843082 |
| 4368 | 40200.40300.40900.52800.55800.57500.142200.2326800 | TOILET FLOORING WORK | 7d | 2026-12-02 | 2026-12-08 | 4367 |  | RGA -FINISHING | 7843092 |
| 4369 | 40200.40300.40900.52800.55800.57500.142200.2326900 | FIRE FIGHTING | 6d | 2026-10-20 | 2026-10-25 | 4151 |  | RGA -FINISHING | 7843102 |
| 4370 | 40200.40300.40900.52800.55800.57500.142200.2327000 | INTERNAL PAINTING - PUTTY / PRIMER APPLICATION | 6d | 2026-12-31 | 2027-01-05 | 4372 |  | RGA -FINISHING | 7843112 |
| 4371 | 40200.40300.40900.52800.55800.57500.142200.2327100 | FLAT FLOORING | 5d | 2026-12-09 | 2026-12-13 | 4368 |  | RGA -FINISHING | 7843122 |
| 4372 | 40200.40300.40900.52800.55800.57500.142200.2327200 | WINDOW FIXING | 7d | 2026-12-24 | 2026-12-30 | 4371FS+10d |  | RGA -FINISHING | 7843132 |
| 4373 | 40200.40300.40900.52800.55800.57500.142200.2327300 | INTERNAL PAINTING - 1ST COAT | 7d | 2027-01-06 | 2027-01-12 | 4370 |  | RGA -FINISHING | 7843142 |
| 4374 | 40200.40300.40900.52800.55800.57500.142200.2327400 | INTERNAL DOOR FIXING | 15d | 2027-01-11 | 2027-01-25 | 4373FS-2d |  | RGA -FINISHING | 7843152 |
| 4375 | 40200.40300.40900.52800.55800.57500.142200.2327500 | WIRING & SWITCH PLATE FIXING | 8d | 2027-01-22 | 2027-01-29 | 4374FS-4d |  | RGA -FINISHING | 7843162 |
| 4376 | 40200.40300.40900.52800.55800.57500.142200.2327600 | TOILET FALSE CEILING | 7d | 2027-01-30 | 2027-02-05 | 4375 |  | RGA -FINISHING | 7843172 |
| 4377 | 40200.40300.40900.52800.55800.57500.142200.2327700 | MAIN DOOR FRAME SHUTTER FIXING | 6d | 2027-12-28 | 2028-01-02 | 4689 |  | RGA -FINISHING | 7843182 |
| 4378 | 40200.40300.40900.52800.55800.57500.142200.2327800 | FINAL COAT PAINT | 8d | 2028-01-03 | 2028-01-10 | 4377 |  | RGA -FINISHING | 7843192 |

| ID | WBS | Task | Duration | Start | Finish | Predecessors | Constraint | Calendar | Unique_Task_ID |
| --- | --- | --- | --- | --- | --- | --- | --- | --- | --- |
| 4379 | 40200.40300.40900.52800.55800.57500.142300 | **5TH FLOOR** | 434d | 2026-11-06 | 2028-01-13 |  | start no earlier than 2026-11-06 | RGA -FINISHING | 7804782 |
| 4380 | 40200.40300.40900.52800.55800.57500.142300.2327900 | TOILET DADO TILE FIXING | 7d | 2026-12-12 | 2026-12-18 | 4159 |  | RGA -FINISHING | 7843202 |
| 4381 | 40200.40300.40900.52800.55800.57500.142300.2328000 | TOILET FLOORING WORK | 7d | 2026-12-19 | 2026-12-25 | 4380 |  | RGA -FINISHING | 7843212 |
| 4382 | 40200.40300.40900.52800.55800.57500.142300.2328100 | FIRE FIGHTING | 6d | 2026-11-06 | 2026-11-11 | 4158 |  | RGA -FINISHING | 7843222 |
| 4383 | 40200.40300.40900.52800.55800.57500.142300.2328200 | INTERNAL PAINTING - PUTTY / PRIMER APPLICATION | 6d | 2027-01-17 | 2027-01-22 | 4385 |  | RGA -FINISHING | 7843232 |
| 4384 | 40200.40300.40900.52800.55800.57500.142300.2328300 | FLAT FLOORING | 5d | 2026-12-26 | 2026-12-30 | 4381 |  | RGA -FINISHING | 7843242 |
| 4385 | 40200.40300.40900.52800.55800.57500.142300.2328400 | WINDOW FIXING | 7d | 2027-01-10 | 2027-01-16 | 4384FS+10d |  | RGA -FINISHING | 7843252 |
| 4386 | 40200.40300.40900.52800.55800.57500.142300.2328500 | INTERNAL PAINTING - 1ST COAT | 7d | 2027-01-23 | 2027-01-29 | 4383 |  | RGA -FINISHING | 7843262 |
| 4387 | 40200.40300.40900.52800.55800.57500.142300.2328600 | INTERNAL DOOR FIXING | 15d | 2027-01-28 | 2027-02-11 | 4386FS-2d |  | RGA -FINISHING | 7843272 |
| 4388 | 40200.40300.40900.52800.55800.57500.142300.2328700 | WIRING & SWITCH PLATE FIXING | 8d | 2027-02-08 | 2027-02-15 | 4387FS-4d |  | RGA -FINISHING | 7843282 |
| 4389 | 40200.40300.40900.52800.55800.57500.142300.2328800 | TOILET FALSE CEILING | 7d | 2027-02-16 | 2027-02-22 | 4388 |  | RGA -FINISHING | 7843292 |
| 4390 | 40200.40300.40900.52800.55800.57500.142300.2328900 | MAIN DOOR FRAME SHUTTER FIXING | 6d | 2027-12-31 | 2028-01-05 | 4697 |  | RGA -FINISHING | 7843302 |
| 4391 | 40200.40300.40900.52800.55800.57500.142300.2329000 | FINAL COAT PAINT | 8d | 2028-01-06 | 2028-01-13 | 4390 |  | RGA -FINISHING | 7843312 |
| 4392 | 40200.40300.40900.52800.55800.57500.142400 | **6TH FLOOR** | 417d | 2026-11-23 | 2028-01-13 |  | start no earlier than 2026-11-23 | RGA -FINISHING | 7804772 |
| 4393 | 40200.40300.40900.52800.55800.57500.142400.2329100 | TOILET DADO TILE FIXING | 7d | 2026-12-29 | 2027-01-04 | 4166 |  | RGA -FINISHING | 7843322 |
| 4394 | 40200.40300.40900.52800.55800.57500.142400.2329200 | TOILET FLOORING WORK | 7d | 2026-12-29 | 2027-01-04 | 4393FF |  | RGA -FINISHING | 7843332 |
| 4395 | 40200.40300.40900.52800.55800.57500.142400.2329300 | FIRE FIGHTING | 6d | 2026-11-23 | 2026-11-28 | 4165 |  | RGA -FINISHING | 7843342 |
| 4396 | 40200.40300.40900.52800.55800.57500.142400.2329400 | INTERNAL PAINTING - PUTTY / PRIMER APPLICATION | 6d | 2027-02-01 | 2027-02-06 | 4398 |  | RGA -FINISHING | 7843352 |
| 4397 | 40200.40300.40900.52800.55800.57500.142400.2329500 | FLAT FLOORING | 5d | 2027-01-05 | 2027-01-09 | 4394 |  | RGA -FINISHING | 7843362 |
| 4398 | 40200.40300.40900.52800.55800.57500.142400.2329600 | WINDOW FIXING | 12d | 2027-01-20 | 2027-01-31 | 4397FS+10d |  | RGA -FINISHING | 7843372 |
| 4399 | 40200.40300.40900.52800.55800.57500.142400.2329700 | INTERNAL PAINTING - 1ST COAT | 12d | 2027-02-07 | 2027-02-18 | 4396 |  | RGA -FINISHING | 7843382 |
| 4400 | 40200.40300.40900.52800.55800.57500.142400.2329800 | INTERNAL DOOR FIXING | 15d | 2027-02-17 | 2027-03-03 | 4399FS-2d |  | RGA -FINISHING | 7843392 |
| 4401 | 40200.40300.40900.52800.55800.57500.142400.2329900 | WIRING & SWITCH PLATE FIXING | 8d | 2027-02-28 | 2027-03-07 | 4400FS-4d |  | RGA -FINISHING | 7843402 |
| 4402 | 40200.40300.40900.52800.55800.57500.142400.2330000 | TOILET FALSE CEILING | 7d | 2027-03-08 | 2027-03-14 | 4401 |  | RGA -FINISHING | 7843412 |
| 4403 | 40200.40300.40900.52800.55800.57500.142400.2330100 | MAIN DOOR FRAME SHUTTER FIXING | 6d | 2027-12-31 | 2028-01-05 | 4705 |  | RGA -FINISHING | 7843422 |
| 4404 | 40200.40300.40900.52800.55800.57500.142400.2330200 | FINAL COAT PAINT | 8d | 2028-01-06 | 2028-01-13 | 4403 |  | RGA -FINISHING | 7843432 |

| ID | WBS | Task | Duration | Start | Finish | Predecessors | Constraint | Calendar | Unique_Task_ID |
| --- | --- | --- | --- | --- | --- | --- | --- | --- | --- |
| 4405 | 40200.40300.40900.52800.55800.57500.142500 | **7TH FLOOR** | 385.5d | 2026-12-24 | 2028-01-13 |  | start no earlier than 2026-12-24 | RGA -FINISHING | 7804762 |
| 4406 | 40200.40300.40900.52800.55800.57500.142500.2330300 | TOILET DADO TILE FIXING | 7d | 2027-01-29 | 2027-02-05 | 4173 |  | RGA -FINISHING | 7843442 |
| 4407 | 40200.40300.40900.52800.55800.57500.142500.2330400 | TOILET FLOORING WORK | 7d | 2027-02-05 | 2027-02-12 | 4406 |  | RGA -FINISHING | 7843452 |
| 4408 | 40200.40300.40900.52800.55800.57500.142500.2330500 | FIRE FIGHTING | 6d | 2026-12-24 | 2026-12-30 | 4172 |  | RGA -FINISHING | 7843462 |
| 4409 | 40200.40300.40900.52800.55800.57500.142500.2330600 | INTERNAL PAINTING - PUTTY / PRIMER APPLICATION | 6d | 2027-03-11 | 2027-03-17 | 4411 |  | RGA -FINISHING | 7843472 |
| 4410 | 40200.40300.40900.52800.55800.57500.142500.2330700 | FLAT FLOORING | 5d | 2027-02-12 | 2027-02-17 | 4407 |  | RGA -FINISHING | 7843482 |
| 4411 | 40200.40300.40900.52800.55800.57500.142500.2330800 | WINDOW FIXING | 12d | 2027-02-27 | 2027-03-11 | 4410FS+10d |  | RGA -FINISHING | 7843492 |
| 4412 | 40200.40300.40900.52800.55800.57500.142500.2330900 | INTERNAL PAINTING - 1ST COAT | 5d | 2027-03-17 | 2027-03-22 | 4409 |  | RGA -FINISHING | 7843502 |
| 4413 | 40200.40300.40900.52800.55800.57500.142500.2331000 | INTERNAL DOOR FIXING | 15d | 2027-03-20 | 2027-04-04 | 4412FS-2d |  | RGA -FINISHING | 7843512 |
| 4414 | 40200.40300.40900.52800.55800.57500.142500.2331100 | WIRING & SWITCH PLATE FIXING | 8d | 2027-03-31 | 2027-04-08 | 4413FS-4d |  | RGA -FINISHING | 7843522 |
| 4415 | 40200.40300.40900.52800.55800.57500.142500.2331200 | TOILET FALSE CEILING | 7d | 2027-04-08 | 2027-04-15 | 4414 |  | RGA -FINISHING | 7843532 |
| 4416 | 40200.40300.40900.52800.55800.57500.142500.2331300 | MAIN DOOR FRAME SHUTTER FIXING | 6d | 2027-12-31 | 2028-01-05 | 4713 |  | RGA -FINISHING | 7843542 |
| 4417 | 40200.40300.40900.52800.55800.57500.142500.2331400 | FINAL COAT PAINT | 8d | 2028-01-06 | 2028-01-13 | 4416 |  | RGA -FINISHING | 7843552 |
| 4418 | 40200.40300.40900.52800.55800.57500.142600 | **8TH FLOOR** | 368d | 2027-01-11 | 2028-01-13 |  | start no earlier than 2027-01-11 | RGA -FINISHING | 7804752 |
| 4419 | 40200.40300.40900.52800.55800.57500.142600.2331500 | TOILET DADO TILE FIXING | 7d | 2027-02-16 | 2027-02-22 | 4180 |  | RGA -FINISHING | 7843562 |
| 4420 | 40200.40300.40900.52800.55800.57500.142600.2331600 | TOILET FLOORING WORK | 7d | 2027-02-23 | 2027-03-01 | 4419 |  | RGA -FINISHING | 7843572 |
| 4421 | 40200.40300.40900.52800.55800.57500.142600.2331700 | FIRE FIGHTING | 6d | 2027-01-11 | 2027-01-16 | 4179 |  | RGA -FINISHING | 7843582 |
| 4422 | 40200.40300.40900.52800.55800.57500.142600.2331800 | INTERNAL PAINTING - PUTTY / PRIMER APPLICATION | 6d | 2027-03-29 | 2027-04-03 | 4424 |  | RGA -FINISHING | 7843592 |
| 4423 | 40200.40300.40900.52800.55800.57500.142600.2331900 | FLAT FLOORING | 5d | 2027-03-02 | 2027-03-06 | 4420 |  | RGA -FINISHING | 7843602 |
| 4424 | 40200.40300.40900.52800.55800.57500.142600.2332000 | WINDOW FIXING | 12d | 2027-03-17 | 2027-03-28 | 4423FS+10d |  | RGA -FINISHING | 7843612 |
| 4425 | 40200.40300.40900.52800.55800.57500.142600.2332100 | INTERNAL PAINTING - 1ST COAT | 10d | 2027-04-04 | 2027-04-13 | 4422 |  | RGA -FINISHING | 7843622 |
| 4426 | 40200.40300.40900.52800.55800.57500.142600.2332200 | INTERNAL DOOR FIXING | 15d | 2027-04-12 | 2027-04-26 | 4425FS-2d |  | RGA -FINISHING | 7843632 |
| 4427 | 40200.40300.40900.52800.55800.57500.142600.2332300 | WIRING & SWITCH PLATE FIXING | 8d | 2027-04-23 | 2027-04-30 | 4426FS-4d |  | RGA -FINISHING | 7843642 |
| 4428 | 40200.40300.40900.52800.55800.57500.142600.2332400 | TOILET FALSE CEILING | 7d | 2027-05-01 | 2027-05-07 | 4427 |  | RGA -FINISHING | 7843652 |
| 4429 | 40200.40300.40900.52800.55800.57500.142600.2332500 | MAIN DOOR FRAME SHUTTER FIXING | 6d | 2027-12-31 | 2028-01-05 | 4721 |  | RGA -FINISHING | 7843662 |
| 4430 | 40200.40300.40900.52800.55800.57500.142600.2332600 | FINAL COAT PAINT | 8d | 2028-01-06 | 2028-01-13 | 4429 |  | RGA -FINISHING | 7843672 |

| ID | WBS | Task | Duration | Start | Finish | Predecessors | Constraint | Calendar | Unique_Task_ID |
| --- | --- | --- | --- | --- | --- | --- | --- | --- | --- |
| 4431 | 40200.40300.40900.52800.55800.57500.142700 | **9TH FLOOR** | 358d | 2027-01-28 | 2028-01-20 |  | start no earlier than 2027-01-28 | RGA -FINISHING | 7804742 |
| 4432 | 40200.40300.40900.52800.55800.57500.142700.2332700 | TOILET DADO TILE FIXING | 7d | 2027-03-05 | 2027-03-11 | 4187 |  | RGA -FINISHING | 7843682 |
| 4433 | 40200.40300.40900.52800.55800.57500.142700.2332800 | TOILET FLOORING WORK | 7d | 2027-03-12 | 2027-03-18 | 4432 |  | RGA -FINISHING | 7843692 |
| 4434 | 40200.40300.40900.52800.55800.57500.142700.2332900 | FIRE FIGHTING | 6d | 2027-01-28 | 2027-02-02 | 4186 |  | RGA -FINISHING | 7843702 |
| 4435 | 40200.40300.40900.52800.55800.57500.142700.2333000 | INTERNAL PAINTING - PUTTY / PRIMER APPLICATION | 6d | 2027-04-15 | 2027-04-20 | 4437 |  | RGA -FINISHING | 7843712 |
| 4436 | 40200.40300.40900.52800.55800.57500.142700.2333100 | FLAT FLOORING | 5d | 2027-03-19 | 2027-03-23 | 4433 |  | RGA -FINISHING | 7843722 |
| 4437 | 40200.40300.40900.52800.55800.57500.142700.2333200 | WINDOW FIXING | 12d | 2027-04-03 | 2027-04-14 | 4436FS+10d |  | RGA -FINISHING | 7843732 |
| 4438 | 40200.40300.40900.52800.55800.57500.142700.2333300 | INTERNAL PAINTING - 1ST COAT | 2d | 2027-04-21 | 2027-04-22 | 4435 |  | RGA -FINISHING | 7843742 |
| 4439 | 40200.40300.40900.52800.55800.57500.142700.2333400 | INTERNAL DOOR FIXING | 15d | 2027-04-21 | 2027-05-05 | 4438FS-2d |  | RGA -FINISHING | 7843752 |
| 4440 | 40200.40300.40900.52800.55800.57500.142700.2333500 | WIRING & SWITCH PLATE FIXING | 8d | 2027-05-02 | 2027-05-09 | 4439FS-4d |  | RGA -FINISHING | 7843762 |
| 4441 | 40200.40300.40900.52800.55800.57500.142700.2333600 | TOILET FALSE CEILING | 7d | 2027-05-10 | 2027-05-16 | 4440 |  | RGA -FINISHING | 7843772 |
| 4442 | 40200.40300.40900.52800.55800.57500.142700.2333700 | MAIN DOOR FRAME SHUTTER FIXING | 6d | 2028-01-03 | 2028-01-08 | 4729 |  | RGA -FINISHING | 7843782 |
| 4443 | 40200.40300.40900.52800.55800.57500.142700.2333800 | FINAL COAT PAINT | 8d | 2028-01-13 | 2028-01-20 | 4442FS+4d |  | RGA -FINISHING | 7843792 |
| 4444 | 40200.40300.40900.52800.55800.57500.142800 | **10TH FLOOR** | 347d | 2027-02-04 | 2028-01-16 |  | start no earlier than 2027-02-04 | RGA -FINISHING | 7804732 |
| 4445 | 40200.40300.40900.52800.55800.57500.142800.2333900 | TOILET DADO TILE FIXING | 7d | 2027-03-12 | 2027-03-18 | 4194 |  | RGA -FINISHING | 7843802 |
| 4446 | 40200.40300.40900.52800.55800.57500.142800.2334000 | TOILET FLOORING WORK | 7d | 2027-03-19 | 2027-03-25 | 4445 |  | RGA -FINISHING | 7843812 |
| 4447 | 40200.40300.40900.52800.55800.57500.142800.2334100 | FIRE FIGHTING | 6d | 2027-02-04 | 2027-02-09 | 4193 |  | RGA -FINISHING | 7843822 |
| 4448 | 40200.40300.40900.52800.55800.57500.142800.2334200 | INTERNAL PAINTING - PUTTY / PRIMER APPLICATION | 6d | 2027-04-22 | 2027-04-27 | 4450 |  | RGA -FINISHING | 7843832 |
| 4449 | 40200.40300.40900.52800.55800.57500.142800.2334300 | FLAT FLOORING | 5d | 2027-03-26 | 2027-03-30 | 4446 |  | RGA -FINISHING | 7843842 |
| 4450 | 40200.40300.40900.52800.55800.57500.142800.2334400 | WINDOW FIXING | 12d | 2027-04-10 | 2027-04-21 | 4449FS+10d |  | RGA -FINISHING | 7843852 |
| 4451 | 40200.40300.40900.52800.55800.57500.142800.2334500 | INTERNAL PAINTING - 1ST COAT | 12d | 2027-04-28 | 2027-05-09 | 4448 |  | RGA -FINISHING | 7843862 |
| 4452 | 40200.40300.40900.52800.55800.57500.142800.2334600 | INTERNAL DOOR FIXING | 15d | 2027-05-08 | 2027-05-22 | 4451FS-2d |  | RGA -FINISHING | 7843872 |
| 4453 | 40200.40300.40900.52800.55800.57500.142800.2334700 | WIRING & SWITCH PLATE FIXING | 8d | 2027-05-19 | 2027-05-26 | 4452FS-4d |  | RGA -FINISHING | 7843882 |
| 4454 | 40200.40300.40900.52800.55800.57500.142800.2334800 | TOILET FALSE CEILING | 7d | 2027-05-27 | 2027-06-02 | 4453 |  | RGA -FINISHING | 7843892 |
| 4455 | 40200.40300.40900.52800.55800.57500.142800.2334900 | MAIN DOOR FRAME SHUTTER FIXING | 6d | 2028-01-03 | 2028-01-08 | 4737 |  | RGA -FINISHING | 7843902 |
| 4456 | 40200.40300.40900.52800.55800.57500.142800.2335000 | FINAL COAT PAINT | 8d | 2028-01-09 | 2028-01-16 | 4455 |  | RGA -FINISHING | 7843912 |

| ID | WBS | Task | Duration | Start | Finish | Predecessors | Constraint | Calendar | Unique_Task_ID |
| --- | --- | --- | --- | --- | --- | --- | --- | --- | --- |
| 4457 | 40200.40300.40900.52800.55800.57500.142900 | **11TH FLOOR** | 330d | 2027-02-21 | 2028-01-16 |  | start no earlier than 2027-02-21 | RGA -FINISHING | 7804722 |
| 4458 | 40200.40300.40900.52800.55800.57500.142900.2335100 | TOILET DADO TILE FIXING | 7d | 2027-03-29 | 2027-04-04 | 4201 |  | RGA -FINISHING | 7843922 |
| 4459 | 40200.40300.40900.52800.55800.57500.142900.2335200 | TOILET FLOORING WORK | 7d | 2027-04-05 | 2027-04-11 | 4458 |  | RGA -FINISHING | 7843932 |
| 4460 | 40200.40300.40900.52800.55800.57500.142900.2335300 | FIRE FIGHTING | 6d | 2027-02-21 | 2027-02-26 | 4200 |  | RGA -FINISHING | 7843942 |
| 4461 | 40200.40300.40900.52800.55800.57500.142900.2335400 | INTERNAL PAINTING - PUTTY / PRIMER APPLICATION | 6d | 2027-05-09 | 2027-05-14 | 4463 |  | RGA -FINISHING | 7843952 |
| 4462 | 40200.40300.40900.52800.55800.57500.142900.2335500 | FLAT FLOORING | 5d | 2027-04-12 | 2027-04-16 | 4459 |  | RGA -FINISHING | 7843962 |
| 4463 | 40200.40300.40900.52800.55800.57500.142900.2335600 | WINDOW FIXING | 12d | 2027-04-27 | 2027-05-08 | 4462FS+10d |  | RGA -FINISHING | 7843972 |
| 4464 | 40200.40300.40900.52800.55800.57500.142900.2335700 | INTERNAL PAINTING - 1ST COAT | 12d | 2027-05-15 | 2027-05-26 | 4461 |  | RGA -FINISHING | 7843982 |
| 4465 | 40200.40300.40900.52800.55800.57500.142900.2335800 | INTERNAL DOOR FIXING | 15d | 2027-05-25 | 2027-06-08 | 4464FS-2d |  | RGA -FINISHING | 7843992 |
| 4466 | 40200.40300.40900.52800.55800.57500.142900.2335900 | WIRING & SWITCH PLATE FIXING | 8d | 2027-06-05 | 2027-06-12 | 4465FS-4d |  | RGA -FINISHING | 7844002 |
| 4467 | 40200.40300.40900.52800.55800.57500.142900.2336000 | TOILET FALSE CEILING | 7d | 2027-06-13 | 2027-06-19 | 4466 |  | RGA -FINISHING | 7844012 |
| 4468 | 40200.40300.40900.52800.55800.57500.142900.2336100 | MAIN DOOR FRAME SHUTTER FIXING | 6d | 2028-01-03 | 2028-01-08 | 4745 |  | RGA -FINISHING | 7844022 |
| 4469 | 40200.40300.40900.52800.55800.57500.142900.2336200 | FINAL COAT PAINT | 8d | 2028-01-09 | 2028-01-16 | 4468 |  | RGA -FINISHING | 7844032 |
| 4470 | 40200.40300.40900.52800.55800.57500.143000 | **12TH FLOOR** | 313d | 2027-03-10 | 2028-01-16 |  | start no earlier than 2027-03-10 | RGA -FINISHING | 7804712 |
| 4471 | 40200.40300.40900.52800.55800.57500.143000.2336300 | TOILET DADO TILE FIXING | 7d | 2027-04-07 | 2027-04-13 | 4208 |  | RGA -FINISHING | 7844042 |
| 4472 | 40200.40300.40900.52800.55800.57500.143000.2336400 | TOILET FLOORING WORK | 7d | 2027-04-07 | 2027-04-13 | 4471FF |  | RGA -FINISHING | 7844052 |
| 4473 | 40200.40300.40900.52800.55800.57500.143000.2336500 | FIRE FIGHTING | 6d | 2027-03-10 | 2027-03-15 | 4207 |  | RGA -FINISHING | 7844062 |
| 4474 | 40200.40300.40900.52800.55800.57500.143000.2336600 | INTERNAL PAINTING - PUTTY / PRIMER APPLICATION | 6d | 2027-05-11 | 2027-05-16 | 4476 |  | RGA -FINISHING | 7844072 |
| 4475 | 40200.40300.40900.52800.55800.57500.143000.2336700 | FLAT FLOORING | 5d | 2027-04-14 | 2027-04-18 | 4472 |  | RGA -FINISHING | 7844082 |
| 4476 | 40200.40300.40900.52800.55800.57500.143000.2336800 | WINDOW FIXING | 12d | 2027-04-29 | 2027-05-10 | 4475FS+10d |  | RGA -FINISHING | 7844092 |
| 4477 | 40200.40300.40900.52800.55800.57500.143000.2336900 | INTERNAL PAINTING - 1ST COAT | 12d | 2027-05-17 | 2027-05-28 | 4474 |  | RGA -FINISHING | 7844102 |
| 4478 | 40200.40300.40900.52800.55800.57500.143000.2337000 | INTERNAL DOOR FIXING | 15d | 2027-05-27 | 2027-06-10 | 4477FS-2d |  | RGA -FINISHING | 7844112 |
| 4479 | 40200.40300.40900.52800.55800.57500.143000.2337100 | WIRING & SWITCH PLATE FIXING | 8d | 2027-06-07 | 2027-06-14 | 4478FS-4d |  | RGA -FINISHING | 7844122 |
| 4480 | 40200.40300.40900.52800.55800.57500.143000.2337200 | TOILET FALSE CEILING | 7d | 2027-06-15 | 2027-06-21 | 4479 |  | RGA -FINISHING | 7844132 |
| 4481 | 40200.40300.40900.52800.55800.57500.143000.2337300 | MAIN DOOR FRAME SHUTTER FIXING | 6d | 2028-01-03 | 2028-01-08 | 4753 |  | RGA -FINISHING | 7844142 |
| 4482 | 40200.40300.40900.52800.55800.57500.143000.2337400 | FINAL COAT PAINT | 8d | 2028-01-09 | 2028-01-16 | 4481 |  | RGA -FINISHING | 7844152 |

| ID | WBS | Task | Duration | Start | Finish | Predecessors | Constraint | Calendar | Unique_Task_ID |
| --- | --- | --- | --- | --- | --- | --- | --- | --- | --- |
| 4483 | 40200.40300.40900.52800.55800.57500.143100 | **13TH FLOOR** | 296d | 2027-03-27 | 2028-01-16 |  | start no earlier than 2027-03-27 | RGA -FINISHING | 7804702 |
| 4484 | 40200.40300.40900.52800.55800.57500.143100.2337500 | TOILET DADO TILE FIXING | 10d | 2027-05-18 | 2027-05-27 | 4215 |  | RGA -FINISHING | 7844162 |
| 4485 | 40200.40300.40900.52800.55800.57500.143100.2337600 | TOILET FLOORING WORK | 7d | 2027-05-28 | 2027-06-03 | 4484 |  | RGA -FINISHING | 7844172 |
| 4486 | 40200.40300.40900.52800.55800.57500.143100.2337700 | FIRE FIGHTING | 8d | 2027-03-27 | 2027-04-03 | 4214 |  | RGA -FINISHING | 7844182 |
| 4487 | 40200.40300.40900.52800.55800.57500.143100.2337800 | INTERNAL PAINTING - PUTTY / PRIMER APPLICATION | 5d | 2027-06-26 | 2027-06-30 | 4489 |  | RGA -FINISHING | 7844192 |
| 4488 | 40200.40300.40900.52800.55800.57500.143100.2337900 | FLAT FLOORING | 7d | 2027-06-04 | 2027-06-10 | 4485 |  | RGA -FINISHING | 7844202 |
| 4489 | 40200.40300.40900.52800.55800.57500.143100.2338000 | WINDOW FIXING | 5d | 2027-06-21 | 2027-06-25 | 4488FS+10d |  | RGA -FINISHING | 7844212 |
| 4490 | 40200.40300.40900.52800.55800.57500.143100.2338100 | INTERNAL PAINTING - 1ST COAT | 4d | 2027-07-01 | 2027-07-04 | 4487 |  | RGA -FINISHING | 7844222 |
| 4491 | 40200.40300.40900.52800.55800.57500.143100.2338200 | INTERNAL DOOR FIXING | 15d | 2027-07-03 | 2027-07-17 | 4490FS-2d |  | RGA -FINISHING | 7844232 |
| 4492 | 40200.40300.40900.52800.55800.57500.143100.2338300 | WIRING & SWITCH PLATE FIXING | 8d | 2027-07-14 | 2027-07-21 | 4491FS-4d |  | RGA -FINISHING | 7844242 |
| 4493 | 40200.40300.40900.52800.55800.57500.143100.2338400 | TOILET FALSE CEILING | 7d | 2027-07-22 | 2027-07-28 | 4492 |  | RGA -FINISHING | 7844252 |
| 4494 | 40200.40300.40900.52800.55800.57500.143100.2338500 | MAIN DOOR FRAME SHUTTER FIXING | 6d | 2028-01-03 | 2028-01-08 | 4761 |  | RGA -FINISHING | 7844262 |
| 4495 | 40200.40300.40900.52800.55800.57500.143100.2338600 | FINAL COAT PAINT | 8d | 2028-01-09 | 2028-01-16 | 4494 |  | RGA -FINISHING | 7844272 |
| 4496 | 40200.40300.40900.52800.55800.57500.143200 | **14TH FLOOR** | 295d | 2027-04-13 | 2028-02-01 |  | start no earlier than 2027-04-13 | RGA -FINISHING | 7804692 |
| 4497 | 40200.40300.40900.52800.55800.57500.143200.2338700 | TOILET DADO TILE FIXING | 10d | 2027-06-04 | 2027-06-13 | 4222 |  | RGA -FINISHING | 7844282 |
| 4498 | 40200.40300.40900.52800.55800.57500.143200.2338800 | TOILET FLOORING WORK | 7d | 2027-06-14 | 2027-06-20 | 4497 |  | RGA -FINISHING | 7844292 |
| 4499 | 40200.40300.40900.52800.55800.57500.143200.2338900 | FIRE FIGHTING | 8d | 2027-04-13 | 2027-04-20 | 4221 |  | RGA -FINISHING | 7844302 |
| 4500 | 40200.40300.40900.52800.55800.57500.143200.2339000 | INTERNAL PAINTING - PUTTY / PRIMER APPLICATION | 5d | 2027-07-13 | 2027-07-17 | 4502 |  | RGA -FINISHING | 7844312 |
| 4501 | 40200.40300.40900.52800.55800.57500.143200.2339100 | FLAT FLOORING | 7d | 2027-06-21 | 2027-06-27 | 4498 |  | RGA -FINISHING | 7844322 |
| 4502 | 40200.40300.40900.52800.55800.57500.143200.2339200 | WINDOW FIXING | 5d | 2027-07-08 | 2027-07-12 | 4501FS+10d |  | RGA -FINISHING | 7844332 |
| 4503 | 40200.40300.40900.52800.55800.57500.143200.2339300 | INTERNAL PAINTING - 1ST COAT | 4d | 2027-07-18 | 2027-07-21 | 4500 |  | RGA -FINISHING | 7844342 |
| 4504 | 40200.40300.40900.52800.55800.57500.143200.2339400 | INTERNAL DOOR FIXING | 15d | 2027-07-20 | 2027-08-03 | 4503FS-2d |  | RGA -FINISHING | 7844352 |
| 4505 | 40200.40300.40900.52800.55800.57500.143200.2339500 | WIRING & SWITCH PLATE FIXING | 8d | 2027-07-31 | 2027-08-07 | 4504FS-4d |  | RGA -FINISHING | 7844362 |
| 4506 | 40200.40300.40900.52800.55800.57500.143200.2339600 | TOILET FALSE CEILING | 7d | 2027-08-08 | 2027-08-14 | 4505 |  | RGA -FINISHING | 7844372 |
| 4507 | 40200.40300.40900.52800.55800.57500.143200.2339700 | MAIN DOOR FRAME SHUTTER FIXING | 6d | 2028-01-19 | 2028-01-24 | 4769 |  | RGA -FINISHING | 7844382 |
| 4508 | 40200.40300.40900.52800.55800.57500.143200.2339800 | FINAL COAT PAINT | 8d | 2028-01-25 | 2028-02-01 | 4507 |  | RGA -FINISHING | 7844392 |

| ID | WBS | Task | Duration | Start | Finish | Predecessors | Constraint | Calendar | Unique_Task_ID |
| --- | --- | --- | --- | --- | --- | --- | --- | --- | --- |
| 4509 | 40200.40300.40900.52800.55800.57500.143300 | **15TH FLOOR** | 278d | 2027-04-30 | 2028-02-01 |  | start no earlier than 2027-04-30 | RGA -FINISHING | 7804682 |
| 4510 | 40200.40300.40900.52800.55800.57500.143300.2339900 | TOILET DADO TILE FIXING | 10d | 2027-06-21 | 2027-06-30 | 4229 |  | RGA -FINISHING | 7385195 |
| 4511 | 40200.40300.40900.52800.55800.57500.143300.2340000 | TOILET FLOORING WORK | 7d | 2027-07-01 | 2027-07-07 | 4510 |  | RGA -FINISHING | 7385205 |
| 4512 | 40200.40300.40900.52800.55800.57500.143300.2340100 | FIRE FIGHTING | 8d | 2027-04-30 | 2027-05-07 | 4228 |  | RGA -FINISHING | 7385215 |
| 4513 | 40200.40300.40900.52800.55800.57500.143300.2340200 | INTERNAL PAINTING - PUTTY / PRIMER APPLICATION | 5d | 2027-07-30 | 2027-08-03 | 4515 |  | RGA -FINISHING | 7385225 |
| 4514 | 40200.40300.40900.52800.55800.57500.143300.2340300 | FLAT FLOORING | 7d | 2027-07-08 | 2027-07-14 | 4511 |  | RGA -FINISHING | 7385235 |
| 4515 | 40200.40300.40900.52800.55800.57500.143300.2340400 | WINDOW FIXING | 5d | 2027-07-25 | 2027-07-29 | 4514FS+10d |  | RGA -FINISHING | 7385245 |
| 4516 | 40200.40300.40900.52800.55800.57500.143300.2340500 | INTERNAL PAINTING - 1ST COAT | 4d | 2027-08-04 | 2027-08-07 | 4513 |  | RGA -FINISHING | 7385255 |
| 4517 | 40200.40300.40900.52800.55800.57500.143300.2340600 | INTERNAL DOOR FIXING | 15d | 2027-08-06 | 2027-08-20 | 4516FS-2d |  | RGA -FINISHING | 7385265 |
| 4518 | 40200.40300.40900.52800.55800.57500.143300.2340700 | WIRING & SWITCH PLATE FIXING | 8d | 2027-08-17 | 2027-08-24 | 4517FS-4d |  | RGA -FINISHING | 7385275 |
| 4519 | 40200.40300.40900.52800.55800.57500.143300.2340800 | TOILET FALSE CEILING | 7d | 2027-08-25 | 2027-08-31 | 4518 |  | RGA -FINISHING | 7385285 |
| 4520 | 40200.40300.40900.52800.55800.57500.143300.2340900 | MAIN DOOR FRAME SHUTTER FIXING | 6d | 2028-01-19 | 2028-01-24 | 4777 |  | RGA -FINISHING | 7385295 |
| 4521 | 40200.40300.40900.52800.55800.57500.143300.2341000 | FINAL COAT PAINT | 8d | 2028-01-25 | 2028-02-01 | 4520 |  | RGA -FINISHING | 7385305 |
| 4522 | 40200.40300.40900.52800.55800.57500.143400 | **16TH FLOOR** | 261d | 2027-05-17 | 2028-02-01 |  | start no earlier than 2027-05-17 | RGA -FINISHING | 7804672 |
| 4523 | 40200.40300.40900.52800.55800.57500.143400.2341100 | TOILET DADO TILE FIXING | 10d | 2027-07-08 | 2027-07-17 | 4236 |  | RGA -FINISHING | 7385315 |
| 4524 | 40200.40300.40900.52800.55800.57500.143400.2341200 | TOILET FLOORING WORK | 7d | 2027-07-18 | 2027-07-24 | 4523 |  | RGA -FINISHING | 7385325 |
| 4525 | 40200.40300.40900.52800.55800.57500.143400.2341300 | FIRE FIGHTING | 8d | 2027-05-17 | 2027-05-24 | 4235 |  | RGA -FINISHING | 7385335 |
| 4526 | 40200.40300.40900.52800.55800.57500.143400.2341400 | INTERNAL PAINTING - PUTTY / PRIMER APPLICATION | 5d | 2027-08-16 | 2027-08-20 | 4528 |  | RGA -FINISHING | 7385345 |
| 4527 | 40200.40300.40900.52800.55800.57500.143400.2341500 | FLAT FLOORING | 7d | 2027-07-25 | 2027-07-31 | 4524 |  | RGA -FINISHING | 7385355 |
| 4528 | 40200.40300.40900.52800.55800.57500.143400.2341600 | WINDOW FIXING | 5d | 2027-08-11 | 2027-08-15 | 4527FS+10d |  | RGA -FINISHING | 7385365 |
| 4529 | 40200.40300.40900.52800.55800.57500.143400.2341700 | INTERNAL PAINTING - 1ST COAT | 4d | 2027-08-21 | 2027-08-24 | 4526 |  | RGA -FINISHING | 7385375 |
| 4530 | 40200.40300.40900.52800.55800.57500.143400.2341800 | INTERNAL DOOR FIXING | 15d | 2027-08-23 | 2027-09-06 | 4529FS-2d |  | RGA -FINISHING | 7385385 |
| 4531 | 40200.40300.40900.52800.55800.57500.143400.2341900 | WIRING & SWITCH PLATE FIXING | 8d | 2027-09-03 | 2027-09-10 | 4530FS-4d |  | RGA -FINISHING | 7385395 |
| 4532 | 40200.40300.40900.52800.55800.57500.143400.2342000 | TOILET FALSE CEILING | 7d | 2027-09-11 | 2027-09-17 | 4531 |  | RGA -FINISHING | 7385405 |
| 4533 | 40200.40300.40900.52800.55800.57500.143400.2342100 | MAIN DOOR FRAME SHUTTER FIXING | 6d | 2028-01-19 | 2028-01-24 | 4785 |  | RGA -FINISHING | 7385415 |
| 4534 | 40200.40300.40900.52800.55800.57500.143400.2342200 | FINAL COAT PAINT | 8d | 2028-01-25 | 2028-02-01 | 4533 |  | RGA -FINISHING | 7385425 |

| ID | WBS | Task | Duration | Start | Finish | Predecessors | Constraint | Calendar | Unique_Task_ID |
| --- | --- | --- | --- | --- | --- | --- | --- | --- | --- |
| 4535 | 40200.40300.40900.52800.55800.57500.143500 | **17TH FLOOR** | 244d | 2027-06-03 | 2028-02-01 |  | start no earlier than 2027-06-03 | RGA -FINISHING | 7804662 |
| 4536 | 40200.40300.40900.52800.55800.57500.143500.2342300 | TOILET DADO TILE FIXING | 10d | 2027-07-25 | 2027-08-03 | 4243 |  | RGA -FINISHING | 7385435 |
| 4537 | 40200.40300.40900.52800.55800.57500.143500.2342400 | TOILET FLOORING WORK | 7d | 2027-08-04 | 2027-08-10 | 4536 |  | RGA -FINISHING | 7385445 |
| 4538 | 40200.40300.40900.52800.55800.57500.143500.2342500 | FIRE FIGHTING | 8d | 2027-06-03 | 2027-06-10 | 4242 |  | RGA -FINISHING | 7385455 |
| 4539 | 40200.40300.40900.52800.55800.57500.143500.2342600 | INTERNAL PAINTING - PUTTY / PRIMER APPLICATION | 5d | 2027-09-02 | 2027-09-06 | 4541 |  | RGA -FINISHING | 7385465 |
| 4540 | 40200.40300.40900.52800.55800.57500.143500.2342700 | FLAT FLOORING | 7d | 2027-08-11 | 2027-08-17 | 4537 |  | RGA -FINISHING | 7385475 |
| 4541 | 40200.40300.40900.52800.55800.57500.143500.2342800 | WINDOW FIXING | 5d | 2027-08-28 | 2027-09-01 | 4540FS+10d |  | RGA -FINISHING | 7385485 |
| 4542 | 40200.40300.40900.52800.55800.57500.143500.2342900 | INTERNAL PAINTING - 1ST COAT | 4d | 2027-09-07 | 2027-09-10 | 4539 |  | RGA -FINISHING | 7385495 |
| 4543 | 40200.40300.40900.52800.55800.57500.143500.2343000 | INTERNAL DOOR FIXING | 15d | 2027-09-09 | 2027-09-23 | 4542FS-2d |  | RGA -FINISHING | 7844402 |
| 4544 | 40200.40300.40900.52800.55800.57500.143500.2343100 | WIRING & SWITCH PLATE FIXING | 8d | 2027-09-20 | 2027-09-27 | 4543FS-4d |  | RGA -FINISHING | 7844412 |
| 4545 | 40200.40300.40900.52800.55800.57500.143500.2343200 | TOILET FALSE CEILING | 7d | 2027-09-28 | 2027-10-04 | 4544 |  | RGA -FINISHING | 7844422 |
| 4546 | 40200.40300.40900.52800.55800.57500.143500.2343300 | MAIN DOOR FRAME SHUTTER FIXING | 6d | 2028-01-19 | 2028-01-24 | 4793 |  | RGA -FINISHING | 7844432 |
| 4547 | 40200.40300.40900.52800.55800.57500.143500.2343400 | FINAL COAT PAINT | 8d | 2028-01-25 | 2028-02-01 | 4546 |  | RGA -FINISHING | 7844442 |
| 4548 | 40200.40300.40900.52800.55800.57500.143600 | **18TH FLOOR** | 237d | 2027-06-20 | 2028-02-11 |  | start no earlier than 2027-06-20 | RGA -FINISHING | 7382355 |
| 4549 | 40200.40300.40900.52800.55800.57500.143600.2343500 | TOILET DADO TILE FIXING | 10d | 2027-08-11 | 2027-08-20 | 4250 |  | RGA -FINISHING | 7844452 |
| 4550 | 40200.40300.40900.52800.55800.57500.143600.2343600 | TOILET FLOORING WORK | 7d | 2027-08-21 | 2027-08-27 | 4549 |  | RGA -FINISHING | 7844462 |
| 4551 | 40200.40300.40900.52800.55800.57500.143600.2343700 | FIRE FIGHTING | 8d | 2027-06-20 | 2027-06-27 | 4249 |  | RGA -FINISHING | 7844472 |
| 4552 | 40200.40300.40900.52800.55800.57500.143600.2343800 | INTERNAL PAINTING - PUTTY / PRIMER APPLICATION | 5d | 2027-09-19 | 2027-09-23 | 4554 |  | RGA -FINISHING | 7844482 |
| 4553 | 40200.40300.40900.52800.55800.57500.143600.2343900 | FLAT FLOORING | 7d | 2027-08-28 | 2027-09-03 | 4550 |  | RGA -FINISHING | 7844492 |
| 4554 | 40200.40300.40900.52800.55800.57500.143600.2344000 | WINDOW FIXING | 5d | 2027-09-14 | 2027-09-18 | 4553FS+10d |  | RGA -FINISHING | 7844502 |
| 4555 | 40200.40300.40900.52800.55800.57500.143600.2344100 | INTERNAL PAINTING - 1ST COAT | 4d | 2027-09-24 | 2027-09-27 | 4552 |  | RGA -FINISHING | 7844512 |
| 4556 | 40200.40300.40900.52800.55800.57500.143600.2344200 | INTERNAL DOOR FIXING | 15d | 2027-09-26 | 2027-10-10 | 4555FS-2d |  | RGA -FINISHING | 7844522 |
| 4557 | 40200.40300.40900.52800.55800.57500.143600.2344300 | WIRING & SWITCH PLATE FIXING | 8d | 2027-10-07 | 2027-10-14 | 4556FS-4d |  | RGA -FINISHING | 7844532 |
| 4558 | 40200.40300.40900.52800.55800.57500.143600.2344400 | TOILET FALSE CEILING | 7d | 2027-10-15 | 2027-10-21 | 4557 |  | RGA -FINISHING | 7844542 |
| 4559 | 40200.40300.40900.52800.55800.57500.143600.2344500 | MAIN DOOR FRAME SHUTTER FIXING | 6d | 2028-01-29 | 2028-02-03 | 4801 |  | RGA -FINISHING | 7844552 |
| 4560 | 40200.40300.40900.52800.55800.57500.143600.2344600 | FINAL COAT PAINT | 8d | 2028-02-04 | 2028-02-11 | 4559 |  | RGA -FINISHING | 7844562 |

| ID | WBS | Task | Duration | Start | Finish | Predecessors | Constraint | Calendar | Unique_Task_ID |
| --- | --- | --- | --- | --- | --- | --- | --- | --- | --- |
| 4561 | 40200.40300.40900.52800.55800.57500.143700 | **19TH FLOOR** | 282d | 2027-05-06 | 2028-02-11 |  | start no earlier than 2027-05-06 | RGA -FINISHING | 7382365 |
| 4562 | 40200.40300.40900.52800.55800.57500.143700.2344700 | TOILET DADO TILE FIXING | 10d | 2027-06-27 | 2027-07-06 | 4257 |  | RGA -FINISHING | 7844572 |
| 4563 | 40200.40300.40900.52800.55800.57500.143700.2344800 | TOILET FLOORING WORK | 7d | 2027-07-07 | 2027-07-13 | 4562 |  | RGA -FINISHING | 7844582 |
| 4564 | 40200.40300.40900.52800.55800.57500.143700.2344900 | FIRE FIGHTING | 8d | 2027-05-06 | 2027-05-13 | 4258 |  | RGA -FINISHING | 7844592 |
| 4565 | 40200.40300.40900.52800.55800.57500.143700.2345000 | INTERNAL PAINTING - PUTTY / PRIMER APPLICATION | 5d | 2027-08-05 | 2027-08-09 | 4567 |  | RGA -FINISHING | 7844602 |
| 4566 | 40200.40300.40900.52800.55800.57500.143700.2345100 | FLAT FLOORING | 7d | 2027-07-14 | 2027-07-20 | 4563 |  | RGA -FINISHING | 7844612 |
| 4567 | 40200.40300.40900.52800.55800.57500.143700.2345200 | WINDOW FIXING | 5d | 2027-07-31 | 2027-08-04 | 4566FS+10d |  | RGA -FINISHING | 7844622 |
| 4568 | 40200.40300.40900.52800.55800.57500.143700.2345300 | INTERNAL PAINTING - 1ST COAT | 4d | 2027-08-10 | 2027-08-13 | 4565 |  | RGA -FINISHING | 7844632 |
| 4569 | 40200.40300.40900.52800.55800.57500.143700.2345400 | INTERNAL DOOR FIXING | 15d | 2027-08-12 | 2027-08-26 | 4568FS-2d |  | RGA -FINISHING | 7844642 |
| 4570 | 40200.40300.40900.52800.55800.57500.143700.2345500 | WIRING & SWITCH PLATE FIXING | 8d | 2027-08-23 | 2027-08-30 | 4569FS-4d |  | RGA -FINISHING | 7844652 |
| 4571 | 40200.40300.40900.52800.55800.57500.143700.2345600 | TOILET FALSE CEILING | 7d | 2027-08-31 | 2027-09-06 | 4570 |  | RGA -FINISHING | 7844662 |
| 4572 | 40200.40300.40900.52800.55800.57500.143700.2345700 | MAIN DOOR FRAME SHUTTER FIXING | 6d | 2028-01-29 | 2028-02-03 | 4809 |  | RGA -FINISHING | 7844672 |
| 4573 | 40200.40300.40900.52800.55800.57500.143700.2345800 | FINAL COAT PAINT | 8d | 2028-02-04 | 2028-02-11 | 4572 |  | RGA -FINISHING | 7844682 |
| 4574 | 40200.40300.40900.52800.55800.57500.143800 | **20TH FLOOR** | 203d | 2027-07-24 | 2028-02-11 |  | start no earlier than 2027-07-24 | RGA -FINISHING | 7804652 |
| 4575 | 40200.40300.40900.52800.55800.57500.143800.2345900 | TOILET DADO TILE FIXING | 10d | 2027-09-14 | 2027-09-23 | 4264 |  | RGA -FINISHING | 7844692 |
| 4576 | 40200.40300.40900.52800.55800.57500.143800.2346000 | TOILET FLOORING WORK | 7d | 2027-09-24 | 2027-09-30 | 4575 |  | RGA -FINISHING | 7844702 |
| 4577 | 40200.40300.40900.52800.55800.57500.143800.2346100 | FIRE FIGHTING | 8d | 2027-07-24 | 2027-07-31 | 4263 |  | RGA -FINISHING | 7844712 |
| 4578 | 40200.40300.40900.52800.55800.57500.143800.2346200 | INTERNAL PAINTING - PUTTY / PRIMER APPLICATION | 5d | 2027-10-23 | 2027-10-27 | 4580 |  | RGA -FINISHING | 7844722 |
| 4579 | 40200.40300.40900.52800.55800.57500.143800.2346300 | FLAT FLOORING | 7d | 2027-10-01 | 2027-10-07 | 4576 |  | RGA -FINISHING | 7844732 |
| 4580 | 40200.40300.40900.52800.55800.57500.143800.2346400 | WINDOW FIXING | 5d | 2027-10-18 | 2027-10-22 | 4579FS+10d |  | RGA -FINISHING | 7844742 |
| 4581 | 40200.40300.40900.52800.55800.57500.143800.2346500 | INTERNAL PAINTING - 1ST COAT | 4d | 2027-10-28 | 2027-10-31 | 4578 |  | RGA -FINISHING | 7385855 |
| 4582 | 40200.40300.40900.52800.55800.57500.143800.2346600 | INTERNAL DOOR FIXING | 15d | 2027-10-30 | 2027-11-13 | 4581FS-2d |  | RGA -FINISHING | 7385865 |
| 4583 | 40200.40300.40900.52800.55800.57500.143800.2346700 | WIRING & SWITCH PLATE FIXING | 8d | 2027-11-10 | 2027-11-17 | 4582FS-4d |  | RGA -FINISHING | 7385875 |
| 4584 | 40200.40300.40900.52800.55800.57500.143800.2346800 | TOILET FALSE CEILING | 7d | 2027-11-18 | 2027-11-24 | 4583 |  | RGA -FINISHING | 7844752 |
| 4585 | 40200.40300.40900.52800.55800.57500.143800.2346900 | MAIN DOOR FRAME SHUTTER FIXING | 6d | 2028-01-29 | 2028-02-03 | 4817 |  | RGA -FINISHING | 7844762 |
| 4586 | 40200.40300.40900.52800.55800.57500.143800.2347000 | FINAL COAT PAINT | 8d | 2028-02-04 | 2028-02-11 | 4585 |  | RGA -FINISHING | 7844772 |

| ID | WBS | Task | Duration | Start | Finish | Predecessors | Constraint | Calendar | Unique_Task_ID |
| --- | --- | --- | --- | --- | --- | --- | --- | --- | --- |
| 4587 | 40200.40300.40900.52800.55800.57500.143900 | **21st FLOOR** | 186d | 2027-08-10 | 2028-02-11 |  | start no earlier than 2027-08-10 | RGA -FINISHING | 7804642 |
| 4588 | 40200.40300.40900.52800.55800.57500.143900.2347100 | TOILET DADO TILE FIXING | 10d | 2027-10-01 | 2027-10-10 | 4271 |  | RGA -FINISHING | 7844782 |
| 4589 | 40200.40300.40900.52800.55800.57500.143900.2347200 | TOILET FLOORING WORK | 7d | 2027-10-11 | 2027-10-17 | 4588 |  | RGA -FINISHING | 7844792 |
| 4590 | 40200.40300.40900.52800.55800.57500.143900.2347300 | FIRE FIGHTING | 8d | 2027-08-10 | 2027-08-17 | 4270 |  | RGA -FINISHING | 7844802 |
| 4591 | 40200.40300.40900.52800.55800.57500.143900.2347400 | INTERNAL PAINTING - PUTTY / PRIMER APPLICATION | 15d | 2027-11-09 | 2027-11-23 | 4593 |  | RGA -FINISHING | 7844812 |
| 4592 | 40200.40300.40900.52800.55800.57500.143900.2347500 | FLAT FLOORING | 5d | 2027-10-18 | 2027-10-22 | 4589 |  | RGA -FINISHING | 7844822 |
| 4593 | 40200.40300.40900.52800.55800.57500.143900.2347600 | WINDOW FIXING | 7d | 2027-11-02 | 2027-11-08 | 4592FS+10d |  | RGA -FINISHING | 7844832 |
| 4594 | 40200.40300.40900.52800.55800.57500.143900.2347700 | INTERNAL PAINTING - 1ST COAT | 5d | 2027-11-24 | 2027-11-28 | 4591 |  | RGA -FINISHING | 7844842 |
| 4595 | 40200.40300.40900.52800.55800.57500.143900.2347800 | INTERNAL DOOR FIXING | 4d | 2027-11-27 | 2027-11-30 | 4594FS-2d |  | RGA -FINISHING | 7844852 |
| 4596 | 40200.40300.40900.52800.55800.57500.143900.2347900 | WIRING & SWITCH PLATE FIXING | 8d | 2027-11-27 | 2027-12-04 | 4595FS-4d |  | RGA -FINISHING | 7844862 |
| 4597 | 40200.40300.40900.52800.55800.57500.143900.2348000 | TOILET FALSE CEILING | 7d | 2027-12-05 | 2027-12-11 | 4596 |  | RGA -FINISHING | 7844872 |
| 4598 | 40200.40300.40900.52800.55800.57500.143900.2348100 | MAIN DOOR FRAME SHUTTER FIXING | 6d | 2028-01-29 | 2028-02-03 | 4825 |  | RGA -FINISHING | 7844882 |
| 4599 | 40200.40300.40900.52800.55800.57500.143900.2348200 | FINAL COAT PAINT | 8d | 2028-02-04 | 2028-02-11 | 4598 |  | RGA -FINISHING | 7844892 |
| 4600 | 40200.40300.40900.52800.55800.57500.144000 | **22nd FLOOR** | 179d | 2027-08-27 | 2028-02-21 |  | start no earlier than 2027-08-27 | RGA -FINISHING | 7804632 |
| 4601 | 40200.40300.40900.52800.55800.57500.144000.2348300 | TOILET DADO TILE FIXING | 10d | 2027-10-18 | 2027-10-27 | 4278 |  | RGA -FINISHING | 7844902 |
| 4602 | 40200.40300.40900.52800.55800.57500.144000.2348400 | TOILET FLOORING WORK | 7d | 2027-10-28 | 2027-11-03 | 4601 |  | RGA -FINISHING | 7844912 |
| 4603 | 40200.40300.40900.52800.55800.57500.144000.2348500 | FIRE FIGHTING | 8d | 2027-08-27 | 2027-09-03 | 4277 |  | RGA -FINISHING | 7844922 |
| 4604 | 40200.40300.40900.52800.55800.57500.144000.2348600 | INTERNAL PAINTING - PUTTY / PRIMER APPLICATION | 5d | 2027-11-24 | 2027-11-28 | 4606 |  | RGA -FINISHING | 7844932 |
| 4605 | 40200.40300.40900.52800.55800.57500.144000.2348700 | FLAT FLOORING | 7d | 2027-11-04 | 2027-11-10 | 4602 |  | RGA -FINISHING | 7844942 |
| 4606 | 40200.40300.40900.52800.55800.57500.144000.2348800 | WINDOW FIXING | 5d | 2027-11-19 | 2027-11-23 | 4593FS+10d |  | RGA -FINISHING | 7844952 |
| 4607 | 40200.40300.40900.52800.55800.57500.144000.2348900 | INTERNAL PAINTING - 1ST COAT | 4d | 2027-11-29 | 2027-12-02 | 4604 |  | RGA -FINISHING | 7844962 |
| 4608 | 40200.40300.40900.52800.55800.57500.144000.2349000 | INTERNAL DOOR FIXING | 15d | 2027-12-01 | 2027-12-15 | 4607FS-2d |  | RGA -FINISHING | 7844972 |
| 4609 | 40200.40300.40900.52800.55800.57500.144000.2349100 | WIRING & SWITCH PLATE FIXING | 8d | 2027-12-12 | 2027-12-19 | 4608FS-4d |  | RGA -FINISHING | 7844982 |
| 4610 | 40200.40300.40900.52800.55800.57500.144000.2349200 | TOILET FALSE CEILING | 7d | 2027-12-20 | 2027-12-26 | 4609 |  | RGA -FINISHING | 7844992 |
| 4611 | 40200.40300.40900.52800.55800.57500.144000.2349300 | MAIN DOOR FRAME SHUTTER FIXING | 6d | 2028-02-08 | 2028-02-13 | 4833 |  | RGA -FINISHING | 7845002 |
| 4612 | 40200.40300.40900.52800.55800.57500.144000.2349400 | FINAL COAT PAINT | 8d | 2028-02-14 | 2028-02-21 | 4611 |  | RGA -FINISHING | 7845012 |

| ID | WBS | Task | Duration | Start | Finish | Predecessors | Constraint | Calendar | Unique_Task_ID |
| --- | --- | --- | --- | --- | --- | --- | --- | --- | --- |
| 4613 | 40200.40300.40900.52800.55800.57500.144100 | **23TH FLOOR** | 170d | 2027-09-05 | 2028-02-21 |  | start no earlier than 2027-09-05 | RGA -FINISHING | 7382405 |
| 4614 | 40200.40300.40900.52800.55800.57500.144100.2349500 | TOILET DADO TILE FIXING | 10d | 2027-10-27 | 2027-11-05 | 4285 |  | RGA -FINISHING | 7386155 |
| 4615 | 40200.40300.40900.52800.55800.57500.144100.2349600 | TOILET FLOORING WORK | 7d | 2027-11-06 | 2027-11-12 | 4614 |  | RGA -FINISHING | 7386165 |
| 4616 | 40200.40300.40900.52800.55800.57500.144100.2349700 | FIRE FIGHTING | 8d | 2027-09-05 | 2027-09-12 | 4284 |  | RGA -FINISHING | 7386175 |
| 4617 | 40200.40300.40900.52800.55800.57500.144100.2349800 | INTERNAL PAINTING - PUTTY / PRIMER APPLICATION | 5d | 2027-12-15 | 2027-12-19 | 4619 |  | RGA -FINISHING | 7386185 |
| 4618 | 40200.40300.40900.52800.55800.57500.144100.2349900 | FLAT FLOORING | 7d | 2027-11-13 | 2027-11-19 | 4615 |  | RGA -FINISHING | 7386195 |
| 4619 | 40200.40300.40900.52800.55800.57500.144100.2350000 | WINDOW FIXING | 5d | 2027-12-10 | 2027-12-14 | 4618FS+20d |  | RGA -FINISHING | 7386205 |
| 4620 | 40200.40300.40900.52800.55800.57500.144100.2350100 | INTERNAL PAINTING - 1ST COAT | 4d | 2027-12-20 | 2027-12-23 | 4617 |  | RGA -FINISHING | 7386215 |
| 4621 | 40200.40300.40900.52800.55800.57500.144100.2350200 | INTERNAL DOOR FIXING | 15d | 2027-12-22 | 2028-01-05 | 4620FS-2d |  | RGA -FINISHING | 7386225 |
| 4622 | 40200.40300.40900.52800.55800.57500.144100.2350300 | WIRING & SWITCH PLATE FIXING | 8d | 2028-01-02 | 2028-01-09 | 4621FS-4d |  | RGA -FINISHING | 7386235 |
| 4623 | 40200.40300.40900.52800.55800.57500.144100.2350400 | TOILET FALSE CEILING | 7d | 2028-01-10 | 2028-01-16 | 4622 |  | RGA -FINISHING | 7386245 |
| 4624 | 40200.40300.40900.52800.55800.57500.144100.2350500 | MAIN DOOR FRAME SHUTTER FIXING | 6d | 2028-02-08 | 2028-02-13 | 4841 |  | RGA -FINISHING | 7386255 |
| 4625 | 40200.40300.40900.52800.55800.57500.144100.2350600 | FINAL COAT PAINT | 8d | 2028-02-14 | 2028-02-21 | 4624 |  | RGA -FINISHING | 7386265 |
| 4626 | 40200.40300.40900.52800.55800.57500.144200 | **24TH FLOOR** | 161d | 2027-09-14 | 2028-02-21 |  | start no earlier than 2027-09-14 | RGA -FINISHING | 7804622 |
| 4627 | 40200.40300.40900.52800.55800.57500.144200.2350700 | TOILET DADO TILE FIXING | 10d | 2027-11-05 | 2027-11-14 | 4292 |  | RGA -FINISHING | 7386275 |
| 4628 | 40200.40300.40900.52800.55800.57500.144200.2350800 | TOILET FLOORING WORK | 7d | 2027-11-15 | 2027-11-21 | 4627 |  | RGA -FINISHING | 7386285 |
| 4629 | 40200.40300.40900.52800.55800.57500.144200.2350900 | FIRE FIGHTING | 8d | 2027-09-14 | 2027-09-21 | 4291 |  | RGA -FINISHING | 7386295 |
| 4630 | 40200.40300.40900.52800.55800.57500.144200.2351000 | INTERNAL PAINTING - PUTTY / PRIMER APPLICATION | 5d | 2027-11-29 | 2027-12-03 | 4631 |  | RGA -FINISHING | 7386305 |
| 4631 | 40200.40300.40900.52800.55800.57500.144200.2351100 | FLAT FLOORING | 7d | 2027-11-22 | 2027-11-28 | 4628 |  | RGA -FINISHING | 7386315 |
| 4632 | 40200.40300.40900.52800.55800.57500.144200.2351200 | WINDOW FIXING | 5d | 2027-12-19 | 2027-12-23 | 4631FS+20d |  | RGA -FINISHING | 7386325 |
| 4633 | 40200.40300.40900.52800.55800.57500.144200.2351300 | INTERNAL PAINTING - 1ST COAT | 4d | 2027-12-04 | 2027-12-07 | 4630 |  | RGA -FINISHING | 7386335 |
| 4634 | 40200.40300.40900.52800.55800.57500.144200.2351400 | INTERNAL DOOR FIXING | 15d | 2027-12-06 | 2027-12-20 | 4633FS-2d |  | RGA -FINISHING | 7845022 |
| 4635 | 40200.40300.40900.52800.55800.57500.144200.2351500 | WIRING & SWITCH PLATE FIXING | 8d | 2027-12-17 | 2027-12-24 | 4634FS-4d |  | RGA -FINISHING | 7845032 |
| 4636 | 40200.40300.40900.52800.55800.57500.144200.2351600 | TOILET FALSE CEILING | 7d | 2027-12-25 | 2027-12-31 | 4635 |  | RGA -FINISHING | 7845042 |
| 4637 | 40200.40300.40900.52800.55800.57500.144200.2351700 | MAIN DOOR FRAME SHUTTER FIXING | 6d | 2028-02-08 | 2028-02-13 | 4849 |  | RGA -FINISHING | 7845052 |
| 4638 | 40200.40300.40900.52800.55800.57500.144200.2351800 | FINAL COAT PAINT | 8d | 2028-02-14 | 2028-02-21 | 4637 |  | RGA -FINISHING | 7845062 |

| ID | WBS | Task | Duration | Start | Finish | Predecessors | Constraint | Calendar | Unique_Task_ID |
| --- | --- | --- | --- | --- | --- | --- | --- | --- | --- |
| 4639 | 40200.40300.40900.52800.55800.57500.144300 | **25TH FLOOR** | 142d | 2027-10-03 | 2028-02-21 |  | start no earlier than 2027-10-03 | RGA -FINISHING | 7804612 |
| 4640 | 40200.40300.40900.52800.55800.57500.144300.2351900 | TOILET DADO TILE FIXING | 10d | 2027-11-24 | 2027-12-03 | 4299 |  | RGA -FINISHING | 7845072 |
| 4641 | 40200.40300.40900.52800.55800.57500.144300.2352000 | TOILET FLOORING WORK | 7d | 2027-12-04 | 2027-12-10 | 4640 |  | RGA -FINISHING | 7845082 |
| 4642 | 40200.40300.40900.52800.55800.57500.144300.2352100 | FIRE FIGHTING | 8d | 2027-10-03 | 2027-10-10 | 4298 |  | RGA -FINISHING | 7845092 |
| 4643 | 40200.40300.40900.52800.55800.57500.144300.2352200 | INTERNAL PAINTING - PUTTY / PRIMER APPLICATION | 5d | 2028-01-17 | 2028-01-21 | 4645 |  | RGA -FINISHING | 7845102 |
| 4644 | 40200.40300.40900.52800.55800.57500.144300.2352300 | FLAT FLOORING | 7d | 2027-12-11 | 2027-12-17 | 4641 |  | RGA -FINISHING | 7845112 |
| 4645 | 40200.40300.40900.52800.55800.57500.144300.2352400 | WINDOW FIXING | 5d | 2028-01-12 | 2028-01-16 | 4644FS+25d |  | RGA -FINISHING | 7845122 |
| 4646 | 40200.40300.40900.52800.55800.57500.144300.2352500 | INTERNAL PAINTING - 1ST COAT | 4d | 2028-01-22 | 2028-01-25 | 4643 |  | RGA -FINISHING | 7845132 |
| 4647 | 40200.40300.40900.52800.55800.57500.144300.2352600 | INTERNAL DOOR FIXING | 15d | 2028-01-24 | 2028-02-07 | 4646FS-2d |  | RGA -FINISHING | 7845142 |
| 4648 | 40200.40300.40900.52800.55800.57500.144300.2352700 | WIRING & SWITCH PLATE FIXING | 8d | 2028-02-04 | 2028-02-11 | 4647FS-4d |  | RGA -FINISHING | 7845152 |
| 4649 | 40200.40300.40900.52800.55800.57500.144300.2352800 | TOILET FALSE CEILING | 7d | 2028-02-12 | 2028-02-18 | 4648 |  | RGA -FINISHING | 7845162 |
| 4650 | 40200.40300.40900.52800.55800.57500.144300.2352900 | MAIN DOOR FRAME SHUTTER FIXING | 6d | 2028-02-08 | 2028-02-13 | 4857 |  | RGA -FINISHING | 7845172 |
| 4651 | 40200.40300.40900.52800.55800.57500.144300.2353000 | FINAL COAT PAINT | 8d | 2028-02-14 | 2028-02-21 | 4650 |  | RGA -FINISHING | 7845182 |
| 4652 | 40200.40300.40900.52800.55800.60100 | **LIFT LOBBY & STAIRCASE FINISHING WORK** | 607d | 2026-07-05 | 2028-03-02 |  | start no earlier than 2026-07-05 | RGA -FINISHING | 7803532 |
| 4653 | 40200.40300.40900.52800.55800.60100.239900 | **GROUND FLOOR** | 544d | 2026-07-05 | 2027-12-30 |  | start no earlier than 2026-07-05 | RGA -FINISHING | 7806532 |
| 4654 | 40200.40300.40900.52800.55800.60100.239900.2353100 | FIRE FIGHTING | 5d | 2026-07-05 | 2026-07-09 | 4317 |  | RGA -FINISHING | 7846022 |
| 4655 | 40200.40300.40900.52800.55800.60100.239900.2353200 | LIFT BLOCK WORK | 6d | 2027-09-04 | 2027-09-09 | 4109 |  | RGA -FINISHING | 7846032 |
| 4656 | 40200.40300.40900.52800.55800.60100.239900.2353300 | LIFT DADO WORK | 6d | 2027-11-28 | 2027-12-03 | 4311FS-90d |  | RGA -FINISHING | 7846042 |
| 4657 | 40200.40300.40900.52800.55800.60100.239900.2353400 | LOBBY FLOORING WORK | 8d | 2027-12-04 | 2027-12-11 | 4656 |  | RGA -FINISHING | 7846052 |
| 4658 | 40200.40300.40900.52800.55800.60100.239900.2353500 | ELECTRICAL WIRING & SWITCH PLATE FIXING WORK | 6d | 2027-12-12 | 2027-12-17 | 4657 |  | RGA -FINISHING | 7846062 |
| 4659 | 40200.40300.40900.52800.55800.60100.239900.2353600 | False ceiling & 1ST COAT PAINTING | 10d | 2027-12-18 | 2027-12-27 | 4658 |  | RGA -FINISHING | 7846072 |
| 4660 | 40200.40300.40900.52800.55800.60100.239900.2353700 | CLEANING | 3d | 2027-12-28 | 2027-12-30 | 4659 |  | RGA -FINISHING | 7846082 |
| 4661 | 40200.40300.40900.52800.55800.60100.240000 | **1ST FLOOR** | 521d | 2026-08-15 | 2028-01-17 |  | start no earlier than 2026-08-15 | RGA -FINISHING | 7806542 |
| 4662 | 40200.40300.40900.52800.55800.60100.240000.2353800 | FIRE FIGHTING | 10d | 2026-08-15 | 2026-08-24 | 4330FS-5d |  | RGA -FINISHING | 7846092 |
| 4663 | 40200.40300.40900.52800.55800.60100.240000.2353900 | LIFT BLOCK WORK | 3d | 2027-09-04 | 2027-09-06 | 4109 |  | RGA -FINISHING | 7846102 |
| 4664 | 40200.40300.40900.52800.55800.60100.240000.2354000 | LIFT DADO WORK | 3d | 2027-12-18 | 2027-12-20 | 4311FS-70d |  | RGA -FINISHING | 7846112 |
| 4665 | 40200.40300.40900.52800.55800.60100.240000.2354100 | LOBBY FLOORING WORK | 4d | 2027-12-21 | 2027-12-24 | 4664 |  | RGA -FINISHING | 7846122 |
| 4666 | 40200.40300.40900.52800.55800.60100.240000.2354200 | ELECTRICAL WIRING & SWITCH PLATE FIXING WORK | 6d | 2027-12-25 | 2027-12-30 | 4665 |  | RGA -FINISHING | 7846132 |
| 4667 | 40200.40300.40900.52800.55800.60100.240000.2354300 | False ceiling & 1ST COAT PAINTING | 15d | 2027-12-31 | 2028-01-14 | 4666 |  | RGA -FINISHING | 7846142 |
| 4668 | 40200.40300.40900.52800.55800.60100.240000.2354400 | CLEANING | 3d | 2028-01-15 | 2028-01-17 | 4667 |  | RGA -FINISHING | 7846152 |

Notes:
- 4652: Completion in 12 months post last RCC
- 4654: Assumed
- 4662: Assumed

| ID | WBS | Task | Duration | Start | Finish | Predecessors | Constraint | Calendar | Unique_Task_ID |
| --- | --- | --- | --- | --- | --- | --- | --- | --- | --- |
| 4669 | 40200.40300.40900.52800.55800.60100.240100 | **2nd FLOOR** | 495d | 2026-09-10 | 2028-01-17 |  | start no earlier than 2026-09-10 | RGA -FINISHING | 7806552 |
| 4670 | 40200.40300.40900.52800.55800.60100.240100.2354500 | FIRE FIGHTING | 10d | 2026-09-10 | 2026-09-19 | 4343FS-5d |  | RGA -FINISHING | 7846162 |
| 4671 | 40200.40300.40900.52800.55800.60100.240100.2354600 | LIFT BLOCK WORK | 3d | 2027-09-04 | 2027-09-06 | 4663SS |  | RGA -FINISHING | 7846172 |
| 4672 | 40200.40300.40900.52800.55800.60100.240100.2354700 | LIFT DADO WORK | 3d | 2027-12-18 | 2027-12-20 | 4664SS |  | RGA -FINISHING | 7846182 |
| 4673 | 40200.40300.40900.52800.55800.60100.240100.2354800 | LOBBY FLOORING WORK | 4d | 2027-12-21 | 2027-12-24 | 4672 |  | RGA -FINISHING | 7846192 |
| 4674 | 40200.40300.40900.52800.55800.60100.240100.2354900 | ELECTRICAL WIRING & SWITCH PLATE FIXING WORK | 6d | 2027-12-25 | 2027-12-30 | 4673 |  | RGA -FINISHING | 7846202 |
| 4675 | 40200.40300.40900.52800.55800.60100.240100.2355000 | False ceiling & 1ST COAT PAINTING | 15d | 2027-12-31 | 2028-01-14 | 4674 |  | RGA -FINISHING | 7846212 |
| 4676 | 40200.40300.40900.52800.55800.60100.240100.2355100 | CLEANING | 3d | 2028-01-15 | 2028-01-17 | 4675 |  | RGA -FINISHING | 7846222 |
| 4677 | 40200.40300.40900.52800.55800.60100.240200 | **3rd FLOOR** | 472d | 2026-10-03 | 2028-01-17 |  | start no earlier than 2026-10-03 | RGA -FINISHING | 7806562 |
| 4678 | 40200.40300.40900.52800.55800.60100.240200.2355200 | FIRE FIGHTING | 10d | 2026-10-03 | 2026-10-12 | 4356FS-5d |  | RGA -FINISHING | 7846232 |
| 4679 | 40200.40300.40900.52800.55800.60100.240200.2355300 | LIFT BLOCK WORK | 3d | 2027-09-04 | 2027-09-06 | 4671SS |  | RGA -FINISHING | 7846242 |
| 4680 | 40200.40300.40900.52800.55800.60100.240200.2355400 | LIFT DADO WORK | 3d | 2027-12-18 | 2027-12-20 | 4672SS |  | RGA -FINISHING | 7846252 |
| 4681 | 40200.40300.40900.52800.55800.60100.240200.2355500 | LOBBY FLOORING WORK | 4d | 2027-12-21 | 2027-12-24 | 4680 |  | RGA -FINISHING | 7846262 |
| 4682 | 40200.40300.40900.52800.55800.60100.240200.2355600 | ELECTRICAL WIRING & SWITCH PLATE FIXING WORK | 6d | 2027-12-25 | 2027-12-30 | 4681 |  | RGA -FINISHING | 7846272 |
| 4683 | 40200.40300.40900.52800.55800.60100.240200.2355700 | False ceiling & 1ST COAT PAINTING | 15d | 2027-12-31 | 2028-01-14 | 4682 |  | RGA -FINISHING | 7846282 |
| 4684 | 40200.40300.40900.52800.55800.60100.240200.2355800 | CLEANING | 3d | 2028-01-15 | 2028-01-17 | 4683 |  | RGA -FINISHING | 7846292 |
| 4685 | 40200.40300.40900.52800.55800.60100.240300 | **4th FLOOR** | 457d | 2026-10-21 | 2028-01-20 |  | start no earlier than 2026-10-21 | RGA -FINISHING | 7806572 |
| 4686 | 40200.40300.40900.52800.55800.60100.240300.2355900 | FIRE FIGHTING | 10d | 2026-10-21 | 2026-10-30 | 4369FS-5d |  | RGA -FINISHING | 7846302 |
| 4687 | 40200.40300.40900.52800.55800.60100.240300.2356000 | LIFT BLOCK WORK | 3d | 2027-09-07 | 2027-09-09 | 4679 |  | RGA -FINISHING | 7846312 |
| 4688 | 40200.40300.40900.52800.55800.60100.240300.2356100 | LIFT DADO WORK | 3d | 2027-12-21 | 2027-12-23 | 4680 |  | RGA -FINISHING | 7846322 |
| 4689 | 40200.40300.40900.52800.55800.60100.240300.2356200 | LOBBY FLOORING WORK | 4d | 2027-12-24 | 2027-12-27 | 4688 |  | RGA -FINISHING | 7846332 |
| 4690 | 40200.40300.40900.52800.55800.60100.240300.2356300 | ELECTRICAL WIRING & SWITCH PLATE FIXING WORK | 6d | 2027-12-28 | 2028-01-02 | 4689 |  | RGA -FINISHING | 7846342 |
| 4691 | 40200.40300.40900.52800.55800.60100.240300.2356400 | False ceiling & 1ST COAT PAINTING | 15d | 2028-01-03 | 2028-01-17 | 4690 |  | RGA -FINISHING | 7846352 |
| 4692 | 40200.40300.40900.52800.55800.60100.240300.2356500 | CLEANING | 3d | 2028-01-18 | 2028-01-20 | 4691 |  | RGA -FINISHING | 7846362 |

Notes:
- 4670: Assumed
- 4678: Assumed
- 4686: Assumed

| ID | WBS | Task | Duration | Start | Finish | Predecessors | Constraint | Calendar | Unique_Task_ID |
| --- | --- | --- | --- | --- | --- | --- | --- | --- | --- |
| 4693 | 40200.40300.40900.52800.55800.60100.240400 | **5th FLOOR** | 443d | 2026-11-07 | 2028-01-23 |  | start no earlier than 2026-11-07 | RGA -FINISHING | 7806582 |
| 4694 | 40200.40300.40900.52800.55800.60100.240400.2356600 | FIRE FIGHTING | 10d | 2026-11-07 | 2026-11-16 | 4382FS-5d |  | RGA -FINISHING | 7846372 |
| 4695 | 40200.40300.40900.52800.55800.60100.240400.2356700 | LIFT BLOCK WORK | 3d | 2027-09-10 | 2027-09-12 | 4687 |  | RGA -FINISHING | 7846382 |
| 4696 | 40200.40300.40900.52800.55800.60100.240400.2356800 | LIFT DADO WORK | 3d | 2027-12-24 | 2027-12-26 | 4688 |  | RGA -FINISHING | 7846392 |
| 4697 | 40200.40300.40900.52800.55800.60100.240400.2356900 | LOBBY FLOORING WORK | 4d | 2027-12-27 | 2027-12-30 | 4696 |  | RGA -FINISHING | 7846402 |
| 4698 | 40200.40300.40900.52800.55800.60100.240400.2357000 | ELECTRICAL WIRING & SWITCH PLATE FIXING WORK | 6d | 2027-12-31 | 2028-01-05 | 4697 |  | RGA -FINISHING | 7846412 |
| 4699 | 40200.40300.40900.52800.55800.60100.240400.2357100 | False ceiling & 1ST COAT PAINTING | 15d | 2028-01-06 | 2028-01-20 | 4698 |  | RGA -FINISHING | 7846422 |
| 4700 | 40200.40300.40900.52800.55800.60100.240400.2357200 | CLEANING | 3d | 2028-01-21 | 2028-01-23 | 4699 |  | RGA -FINISHING | 7846432 |
| 4701 | 40200.40300.40900.52800.55800.60100.240500 | **6th FLOOR** | 426d | 2026-11-24 | 2028-01-23 |  | start no earlier than 2026-11-24 | RGA -FINISHING | 7806592 |
| 4702 | 40200.40300.40900.52800.55800.60100.240500.2357300 | FIRE FIGHTING | 10d | 2026-11-24 | 2026-12-03 | 4395FS-5d |  | RGA -FINISHING | 7846442 |
| 4703 | 40200.40300.40900.52800.55800.60100.240500.2357400 | LIFT BLOCK WORK | 3d | 2027-09-10 | 2027-09-12 | 4695SS |  | RGA -FINISHING | 7846452 |
| 4704 | 40200.40300.40900.52800.55800.60100.240500.2357500 | LIFT DADO WORK | 3d | 2027-12-24 | 2027-12-26 | 4696SS |  | RGA -FINISHING | 7846462 |
| 4705 | 40200.40300.40900.52800.55800.60100.240500.2357600 | LOBBY FLOORING WORK | 4d | 2027-12-27 | 2027-12-30 | 4704 |  | RGA -FINISHING | 7387805 |
| 4706 | 40200.40300.40900.52800.55800.60100.240500.2357700 | ELECTRICAL WIRING & SWITCH PLATE FIXING WORK | 6d | 2027-12-31 | 2028-01-05 | 4705 |  | RGA -FINISHING | 7387815 |
| 4707 | 40200.40300.40900.52800.55800.60100.240500.2357800 | False ceiling & 1ST COAT PAINTING | 15d | 2028-01-06 | 2028-01-20 | 4706 |  | RGA -FINISHING | 7387825 |
| 4708 | 40200.40300.40900.52800.55800.60100.240500.2357900 | CLEANING | 3d | 2028-01-21 | 2028-01-23 | 4707 |  | RGA -FINISHING | 7387835 |
| 4709 | 40200.40300.40900.52800.55800.60100.240600 | **7th FLOOR** | 394.5d | 2026-12-25 | 2028-01-23 |  | start no earlier than 2026-12-25 | RGA -FINISHING | 7806602 |
| 4710 | 40200.40300.40900.52800.55800.60100.240600.2358000 | FIRE FIGHTING | 10d | 2026-12-25 | 2027-01-04 | 4408FS-5d |  | RGA -FINISHING | 7387845 |
| 4711 | 40200.40300.40900.52800.55800.60100.240600.2358100 | LIFT BLOCK WORK | 3d | 2027-09-10 | 2027-09-12 | 4703SS |  | RGA -FINISHING | 7387855 |
| 4712 | 40200.40300.40900.52800.55800.60100.240600.2358200 | LIFT DADO WORK | 3d | 2027-12-24 | 2027-12-26 | 4704SS |  | RGA -FINISHING | 7387865 |
| 4713 | 40200.40300.40900.52800.55800.60100.240600.2358300 | LOBBY FLOORING WORK | 4d | 2027-12-27 | 2027-12-30 | 4712 |  | RGA -FINISHING | 7387875 |
| 4714 | 40200.40300.40900.52800.55800.60100.240600.2358400 | ELECTRICAL WIRING & SWITCH PLATE FIXING WORK | 6d | 2027-12-31 | 2028-01-05 | 4713 |  | RGA -FINISHING | 7387885 |
| 4715 | 40200.40300.40900.52800.55800.60100.240600.2358500 | False ceiling & 1ST COAT PAINTING | 15d | 2028-01-06 | 2028-01-20 | 4714 |  | RGA -FINISHING | 7387895 |
| 4716 | 40200.40300.40900.52800.55800.60100.240600.2358600 | CLEANING | 3d | 2028-01-21 | 2028-01-23 | 4715 |  | RGA -FINISHING | 7387905 |

Notes:
- 4694: Assumed
- 4702: Assumed
- 4710: Assumed

| ID | WBS | Task | Duration | Start | Finish | Predecessors | Constraint | Calendar | Unique_Task_ID |
| --- | --- | --- | --- | --- | --- | --- | --- | --- | --- |
| 4717 | 40200.40300.40900.52800.55800.60100.240700 | **8th FLOOR** | 377d | 2027-01-12 | 2028-01-23 |  | start no earlier than 2027-01-12 | RGA -FINISHING | 7806612 |
| 4718 | 40200.40300.40900.52800.55800.60100.240700.2358700 | FIRE FIGHTING | 10d | 2027-01-12 | 2027-01-21 | 4421FS-5d |  | RGA -FINISHING | 7387915 |
| 4719 | 40200.40300.40900.52800.55800.60100.240700.2358800 | LIFT BLOCK WORK | 3d | 2027-09-10 | 2027-09-12 | 4711SS |  | RGA -FINISHING | 7387925 |
| 4720 | 40200.40300.40900.52800.55800.60100.240700.2358900 | LIFT DADO WORK | 3d | 2027-12-24 | 2027-12-26 | 4712SS |  | RGA -FINISHING | 7387935 |
| 4721 | 40200.40300.40900.52800.55800.60100.240700.2359000 | LOBBY FLOORING WORK | 4d | 2027-12-27 | 2027-12-30 | 4720 |  | RGA -FINISHING | 7387945 |
| 4722 | 40200.40300.40900.52800.55800.60100.240700.2359100 | ELECTRICAL WIRING & SWITCH PLATE FIXING WORK | 6d | 2027-12-31 | 2028-01-05 | 4721 |  | RGA -FINISHING | 7846472 |
| 4723 | 40200.40300.40900.52800.55800.60100.240700.2359200 | False ceiling & 1ST COAT PAINTING | 15d | 2028-01-06 | 2028-01-20 | 4722 |  | RGA -FINISHING | 7846482 |
| 4724 | 40200.40300.40900.52800.55800.60100.240700.2359300 | CLEANING | 3d | 2028-01-21 | 2028-01-23 | 4723 |  | RGA -FINISHING | 7846492 |
| 4725 | 40200.40300.40900.52800.55800.60100.240800 | **9th FLOOR** | 363d | 2027-01-29 | 2028-01-26 |  | start no earlier than 2027-01-29 | RGA -FINISHING | 7806622 |
| 4726 | 40200.40300.40900.52800.55800.60100.240800.2359400 | FIRE FIGHTING | 10d | 2027-01-29 | 2027-02-07 | 4434FS-5d |  | RGA -FINISHING | 7846502 |
| 4727 | 40200.40300.40900.52800.55800.60100.240800.2359500 | LIFT BLOCK WORK | 3d | 2027-09-13 | 2027-09-15 | 4719 |  | RGA -FINISHING | 7846512 |
| 4728 | 40200.40300.40900.52800.55800.60100.240800.2359600 | LIFT DADO WORK | 3d | 2027-12-27 | 2027-12-29 | 4720 |  | RGA -FINISHING | 7846522 |
| 4729 | 40200.40300.40900.52800.55800.60100.240800.2359700 | LOBBY FLOORING WORK | 4d | 2027-12-30 | 2028-01-02 | 4728 |  | RGA -FINISHING | 7846532 |
| 4730 | 40200.40300.40900.52800.55800.60100.240800.2359800 | ELECTRICAL WIRING & SWITCH PLATE FIXING WORK | 6d | 2028-01-03 | 2028-01-08 | 4729 |  | RGA -FINISHING | 7846542 |
| 4731 | 40200.40300.40900.52800.55800.60100.240800.2359900 | False ceiling & 1ST COAT PAINTING | 15d | 2028-01-09 | 2028-01-23 | 4730 |  | RGA -FINISHING | 7846552 |
| 4732 | 40200.40300.40900.52800.55800.60100.240800.2360000 | CLEANING | 3d | 2028-01-24 | 2028-01-26 | 4731 |  | RGA -FINISHING | 7846562 |
| 4733 | 40200.40300.40900.52800.55800.60100.240900 | **10th FLOOR** | 356d | 2027-02-05 | 2028-01-26 |  | start no earlier than 2027-02-05 | RGA -FINISHING | 7806632 |
| 4734 | 40200.40300.40900.52800.55800.60100.240900.2360100 | FIRE FIGHTING | 10d | 2027-02-05 | 2027-02-14 | 4447FS-5d |  | RGA -FINISHING | 7846572 |
| 4735 | 40200.40300.40900.52800.55800.60100.240900.2360200 | LIFT BLOCK WORK | 3d | 2027-09-13 | 2027-09-15 | 4727SS |  | RGA -FINISHING | 7846582 |
| 4736 | 40200.40300.40900.52800.55800.60100.240900.2360300 | LIFT DADO WORK | 3d | 2027-12-27 | 2027-12-29 | 4728SS |  | RGA -FINISHING | 7846592 |
| 4737 | 40200.40300.40900.52800.55800.60100.240900.2360400 | LOBBY FLOORING WORK | 4d | 2027-12-30 | 2028-01-02 | 4736 |  | RGA -FINISHING | 7846602 |
| 4738 | 40200.40300.40900.52800.55800.60100.240900.2360500 | ELECTRICAL WIRING & SWITCH PLATE FIXING WORK | 6d | 2028-01-03 | 2028-01-08 | 4737 |  | RGA -FINISHING | 7846612 |
| 4739 | 40200.40300.40900.52800.55800.60100.240900.2360600 | False ceiling & 1ST COAT PAINTING | 15d | 2028-01-09 | 2028-01-23 | 4738 |  | RGA -FINISHING | 7846622 |
| 4740 | 40200.40300.40900.52800.55800.60100.240900.2360700 | CLEANING | 3d | 2028-01-24 | 2028-01-26 | 4739 |  | RGA -FINISHING | 7846632 |

Notes:
- 4718: Assumed
- 4726: Assumed
- 4734: Assumed

| ID | WBS | Task | Duration | Start | Finish | Predecessors | Constraint | Calendar | Unique_Task_ID |
| --- | --- | --- | --- | --- | --- | --- | --- | --- | --- |
| 4741 | 40200.40300.40900.52800.55800.60100.241000 | **11th FLOOR** | 339d | 2027-02-22 | 2028-01-26 |  | start no earlier than 2027-02-22 | RGA -FINISHING | 7806642 |
| 4742 | 40200.40300.40900.52800.55800.60100.241000.2360800 | FIRE FIGHTING | 10d | 2027-02-22 | 2027-03-03 | 4460FS-5d |  | RGA -FINISHING | 7846642 |
| 4743 | 40200.40300.40900.52800.55800.60100.241000.2360900 | LIFT BLOCK WORK | 3d | 2027-09-13 | 2027-09-15 | 4735SS |  | RGA -FINISHING | 7846652 |
| 4744 | 40200.40300.40900.52800.55800.60100.241000.2361000 | LIFT DADO WORK | 3d | 2027-12-27 | 2027-12-29 | 4736SS |  | RGA -FINISHING | 7846662 |
| 4745 | 40200.40300.40900.52800.55800.60100.241000.2361100 | LOBBY FLOORING WORK | 4d | 2027-12-30 | 2028-01-02 | 4744 |  | RGA -FINISHING | 7846672 |
| 4746 | 40200.40300.40900.52800.55800.60100.241000.2361200 | ELECTRICAL WIRING & SWITCH PLATE FIXING WORK | 6d | 2028-01-03 | 2028-01-08 | 4745 |  | RGA -FINISHING | 7846682 |
| 4747 | 40200.40300.40900.52800.55800.60100.241000.2361300 | False ceiling & 1ST COAT PAINTING | 15d | 2028-01-09 | 2028-01-23 | 4746 |  | RGA -FINISHING | 7846692 |
| 4748 | 40200.40300.40900.52800.55800.60100.241000.2361400 | CLEANING | 3d | 2028-01-24 | 2028-01-26 | 4747 |  | RGA -FINISHING | 7846702 |
| 4749 | 40200.40300.40900.52800.55800.60100.241100 | **12th FLOOR** | 322d | 2027-03-11 | 2028-01-26 |  | start no earlier than 2027-03-11 | RGA -FINISHING | 7806652 |
| 4750 | 40200.40300.40900.52800.55800.60100.241100.2361500 | FIRE FIGHTING | 10d | 2027-03-11 | 2027-03-20 | 4473FS-5d |  | RGA -FINISHING | 7846712 |
| 4751 | 40200.40300.40900.52800.55800.60100.241100.2361600 | LIFT BLOCK WORK | 3d | 2027-09-13 | 2027-09-15 | 4743SS |  | RGA -FINISHING | 7846722 |
| 4752 | 40200.40300.40900.52800.55800.60100.241100.2361700 | LIFT DADO WORK | 3d | 2027-12-27 | 2027-12-29 | 4744SS |  | RGA -FINISHING | 7846732 |
| 4753 | 40200.40300.40900.52800.55800.60100.241100.2361800 | LOBBY FLOORING WORK | 4d | 2027-12-30 | 2028-01-02 | 4752 |  | RGA -FINISHING | 7846742 |
| 4754 | 40200.40300.40900.52800.55800.60100.241100.2361900 | ELECTRICAL WIRING & SWITCH PLATE FIXING WORK | 6d | 2028-01-03 | 2028-01-08 | 4753 |  | RGA -FINISHING | 7846752 |
| 4755 | 40200.40300.40900.52800.55800.60100.241100.2362000 | False ceiling & 1ST COAT PAINTING | 15d | 2028-01-09 | 2028-01-23 | 4754 |  | RGA -FINISHING | 7846762 |
| 4756 | 40200.40300.40900.52800.55800.60100.241100.2362100 | CLEANING | 3d | 2028-01-24 | 2028-01-26 | 4755 |  | RGA -FINISHING | 7846772 |
| 4757 | 40200.40300.40900.52800.55800.60100.241200 | **13th FLOOR** | 303d | 2027-03-30 | 2028-01-26 |  | start no earlier than 2027-03-30 | RGA -FINISHING | 7806662 |
| 4758 | 40200.40300.40900.52800.55800.60100.241200.2362200 | FIRE FIGHTING | 10d | 2027-03-30 | 2027-04-08 | 4486FS-5d |  | RGA -FINISHING | 7846782 |
| 4759 | 40200.40300.40900.52800.55800.60100.241200.2362300 | LIFT BLOCK WORK | 3d | 2027-09-13 | 2027-09-15 | 4751SS |  | RGA -FINISHING | 7846792 |
| 4760 | 40200.40300.40900.52800.55800.60100.241200.2362400 | LIFT DADO WORK | 3d | 2027-12-27 | 2027-12-29 | 4752SS |  | RGA -FINISHING | 7846802 |
| 4761 | 40200.40300.40900.52800.55800.60100.241200.2362500 | LOBBY FLOORING WORK | 4d | 2027-12-30 | 2028-01-02 | 4760 |  | RGA -FINISHING | 7846812 |
| 4762 | 40200.40300.40900.52800.55800.60100.241200.2362600 | ELECTRICAL WIRING & SWITCH PLATE FIXING WORK | 6d | 2028-01-03 | 2028-01-08 | 4761 |  | RGA -FINISHING | 7846822 |
| 4763 | 40200.40300.40900.52800.55800.60100.241200.2362700 | False ceiling & 1ST COAT PAINTING | 15d | 2028-01-09 | 2028-01-23 | 4762 |  | RGA -FINISHING | 7846832 |
| 4764 | 40200.40300.40900.52800.55800.60100.241200.2362800 | CLEANING | 3d | 2028-01-24 | 2028-01-26 | 4763 |  | RGA -FINISHING | 7846842 |

Notes:
- 4742: Assumed
- 4750: Assumed
- 4758: Assumed

| ID | WBS | Task | Duration | Start | Finish | Predecessors | Constraint | Calendar | Unique_Task_ID |
| --- | --- | --- | --- | --- | --- | --- | --- | --- | --- |
| 4765 | 40200.40300.40900.52800.55800.60100.241300 | **14th FLOOR** | 302d | 2027-04-16 | 2028-02-11 |  | start no earlier than 2027-04-16 | RGA -FINISHING | 7806672 |
| 4766 | 40200.40300.40900.52800.55800.60100.241300.2362900 | FIRE FIGHTING | 10d | 2027-04-16 | 2027-04-25 | 4499FS-5d |  | RGA -FINISHING | 7846852 |
| 4767 | 40200.40300.40900.52800.55800.60100.241300.2363000 | LIFT BLOCK WORK | 3d | 2027-09-16 | 2027-09-18 | 4759 |  | RGA -FINISHING | 7846862 |
| 4768 | 40200.40300.40900.52800.55800.60100.241300.2363100 | LIFT DADO WORK | 10d | 2027-12-30 | 2028-01-08 | 4760 |  | RGA -FINISHING | 7846872 |
| 4769 | 40200.40300.40900.52800.55800.60100.241300.2363200 | LOBBY FLOORING WORK | 10d | 2028-01-09 | 2028-01-18 | 4768 |  | RGA -FINISHING | 7846882 |
| 4770 | 40200.40300.40900.52800.55800.60100.241300.2363300 | ELECTRICAL WIRING & SWITCH PLATE FIXING WORK | 6d | 2028-01-19 | 2028-01-24 | 4769 |  | RGA -FINISHING | 7846892 |
| 4771 | 40200.40300.40900.52800.55800.60100.241300.2363400 | False ceiling & 1ST COAT PAINTING | 15d | 2028-01-25 | 2028-02-08 | 4770 |  | RGA -FINISHING | 7846902 |
| 4772 | 40200.40300.40900.52800.55800.60100.241300.2363500 | CLEANING | 3d | 2028-02-09 | 2028-02-11 | 4771 |  | RGA -FINISHING | 7846912 |
| 4773 | 40200.40300.40900.52800.55800.60100.241400 | **15th FLOOR** | 285d | 2027-05-03 | 2028-02-11 |  | start no earlier than 2027-05-03 | RGA -FINISHING | 7806682 |
| 4774 | 40200.40300.40900.52800.55800.60100.241400.2363600 | FIRE FIGHTING | 10d | 2027-05-03 | 2027-05-12 | 4512FS-5d |  | RGA -FINISHING | 7846922 |
| 4775 | 40200.40300.40900.52800.55800.60100.241400.2363700 | LIFT BLOCK WORK | 3d | 2027-09-16 | 2027-09-18 | 4767SS |  | RGA -FINISHING | 7846932 |
| 4776 | 40200.40300.40900.52800.55800.60100.241400.2363800 | LIFT DADO WORK | 10d | 2027-12-30 | 2028-01-08 | 4768SS |  | RGA -FINISHING | 7846942 |
| 4777 | 40200.40300.40900.52800.55800.60100.241400.2363900 | LOBBY FLOORING WORK | 10d | 2028-01-09 | 2028-01-18 | 4776 |  | RGA -FINISHING | 7846952 |
| 4778 | 40200.40300.40900.52800.55800.60100.241400.2364000 | ELECTRICAL WIRING & SWITCH PLATE FIXING WORK | 6d | 2028-01-19 | 2028-01-24 | 4777 |  | RGA -FINISHING | 7846962 |
| 4779 | 40200.40300.40900.52800.55800.60100.241400.2364100 | False ceiling & 1ST COAT PAINTING | 15d | 2028-01-25 | 2028-02-08 | 4778 |  | RGA -FINISHING | 7846972 |
| 4780 | 40200.40300.40900.52800.55800.60100.241400.2364200 | CLEANING | 3d | 2028-02-09 | 2028-02-11 | 4779 |  | RGA -FINISHING | 7846982 |
| 4781 | 40200.40300.40900.52800.55800.60100.241500 | **16th FLOOR** | 268d | 2027-05-20 | 2028-02-11 |  | start no earlier than 2027-05-20 | RGA -FINISHING | 7806692 |
| 4782 | 40200.40300.40900.52800.55800.60100.241500.2364300 | FIRE FIGHTING | 10d | 2027-05-20 | 2027-05-29 | 4525FS-5d |  | RGA -FINISHING | 7846992 |
| 4783 | 40200.40300.40900.52800.55800.60100.241500.2364400 | LIFT BLOCK WORK | 3d | 2027-09-16 | 2027-09-18 | 4775SS |  | RGA -FINISHING | 7847002 |
| 4784 | 40200.40300.40900.52800.55800.60100.241500.2364500 | LIFT DADO WORK | 10d | 2027-12-30 | 2028-01-08 | 4776SS |  | RGA -FINISHING | 7847012 |
| 4785 | 40200.40300.40900.52800.55800.60100.241500.2364600 | LOBBY FLOORING WORK | 10d | 2028-01-09 | 2028-01-18 | 4784 |  | RGA -FINISHING | 7847022 |
| 4786 | 40200.40300.40900.52800.55800.60100.241500.2364700 | ELECTRICAL WIRING & SWITCH PLATE FIXING WORK | 6d | 2028-01-19 | 2028-01-24 | 4785 |  | RGA -FINISHING | 7847032 |
| 4787 | 40200.40300.40900.52800.55800.60100.241500.2364800 | False ceiling & 1ST COAT PAINTING | 15d | 2028-01-25 | 2028-02-08 | 4786 |  | RGA -FINISHING | 7847042 |
| 4788 | 40200.40300.40900.52800.55800.60100.241500.2364900 | CLEANING | 3d | 2028-02-09 | 2028-02-11 | 4787 |  | RGA -FINISHING | 7847052 |

Notes:
- 4766: Assumed
- 4774: Assumed
- 4782: Assumed

| ID | WBS | Task | Duration | Start | Finish | Predecessors | Constraint | Calendar | Unique_Task_ID |
| --- | --- | --- | --- | --- | --- | --- | --- | --- | --- |
| 4789 | 40200.40300.40900.52800.55800.60100.241600 | **17th FLOOR** | 251d | 2027-06-06 | 2028-02-11 |  | start no earlier than 2027-06-06 | RGA -FINISHING | 7806702 |
| 4790 | 40200.40300.40900.52800.55800.60100.241600.2365000 | FIRE FIGHTING | 10d | 2027-06-06 | 2027-06-15 | 4538FS-5d |  | RGA -FINISHING | 7847062 |
| 4791 | 40200.40300.40900.52800.55800.60100.241600.2365100 | LIFT BLOCK WORK | 3d | 2027-09-16 | 2027-09-18 | 4783SS |  | RGA -FINISHING | 7847072 |
| 4792 | 40200.40300.40900.52800.55800.60100.241600.2365200 | LIFT DADO WORK | 10d | 2027-12-30 | 2028-01-08 | 4784SS |  | RGA -FINISHING | 7847082 |
| 4793 | 40200.40300.40900.52800.55800.60100.241600.2365300 | LOBBY FLOORING WORK | 10d | 2028-01-09 | 2028-01-18 | 4792 |  | RGA -FINISHING | 7847092 |
| 4794 | 40200.40300.40900.52800.55800.60100.241600.2365400 | ELECTRICAL WIRING & SWITCH PLATE FIXING WORK | 6d | 2028-01-19 | 2028-01-24 | 4793 |  | RGA -FINISHING | 7847102 |
| 4795 | 40200.40300.40900.52800.55800.60100.241600.2365500 | False ceiling & 1ST COAT PAINTING | 15d | 2028-01-25 | 2028-02-08 | 4794 |  | RGA -FINISHING | 7847112 |
| 4796 | 40200.40300.40900.52800.55800.60100.241600.2365600 | CLEANING | 3d | 2028-02-09 | 2028-02-11 | 4795 |  | RGA -FINISHING | 7847122 |
| 4797 | 40200.40300.40900.52800.55800.60100.241700 | **18th FLOOR** | 244d | 2027-06-23 | 2028-02-21 |  | start no earlier than 2027-06-23 | RGA -FINISHING | 7806712 |
| 4798 | 40200.40300.40900.52800.55800.60100.241700.2365700 | FIRE FIGHTING | 10d | 2027-06-23 | 2027-07-02 | 4551FS-5d |  | RGA -FINISHING | 7847132 |
| 4799 | 40200.40300.40900.52800.55800.60100.241700.2365800 | LIFT BLOCK WORK | 3d | 2027-09-19 | 2027-09-21 | 4791 |  | RGA -FINISHING | 7847142 |
| 4800 | 40200.40300.40900.52800.55800.60100.241700.2365900 | LIFT DADO WORK | 10d | 2028-01-09 | 2028-01-18 | 4792 |  | RGA -FINISHING | 7847152 |
| 4801 | 40200.40300.40900.52800.55800.60100.241700.2366000 | LOBBY FLOORING WORK | 10d | 2028-01-19 | 2028-01-28 | 4800 |  | RGA -FINISHING | 7847162 |
| 4802 | 40200.40300.40900.52800.55800.60100.241700.2366100 | ELECTRICAL WIRING & SWITCH PLATE FIXING WORK | 6d | 2028-01-29 | 2028-02-03 | 4801 |  | RGA -FINISHING | 7847172 |
| 4803 | 40200.40300.40900.52800.55800.60100.241700.2366200 | False ceiling & 1ST COAT PAINTING | 15d | 2028-02-04 | 2028-02-18 | 4802 |  | RGA -FINISHING | 7847182 |
| 4804 | 40200.40300.40900.52800.55800.60100.241700.2366300 | CLEANING | 3d | 2028-02-19 | 2028-02-21 | 4803 |  | RGA -FINISHING | 7847192 |
| 4805 | 40200.40300.40900.52800.55800.60100.241800 | **19th FLOOR** | 289d | 2027-05-09 | 2028-02-21 |  | start no earlier than 2027-05-09 | RGA -FINISHING | 7806722 |
| 4806 | 40200.40300.40900.52800.55800.60100.241800.2366400 | FIRE FIGHTING | 10d | 2027-05-09 | 2027-05-18 | 4564FS-5d |  | RGA -FINISHING | 7847202 |
| 4807 | 40200.40300.40900.52800.55800.60100.241800.2366500 | LIFT BLOCK WORK | 3d | 2027-09-19 | 2027-09-21 | 4799SS |  | RGA -FINISHING | 7847212 |
| 4808 | 40200.40300.40900.52800.55800.60100.241800.2366600 | LIFT DADO WORK | 10d | 2028-01-09 | 2028-01-18 | 4800SS |  | RGA -FINISHING | 7847222 |
| 4809 | 40200.40300.40900.52800.55800.60100.241800.2366700 | LOBBY FLOORING WORK | 10d | 2028-01-19 | 2028-01-28 | 4808 |  | RGA -FINISHING | 7847232 |
| 4810 | 40200.40300.40900.52800.55800.60100.241800.2366800 | ELECTRICAL WIRING & SWITCH PLATE FIXING WORK | 6d | 2028-01-29 | 2028-02-03 | 4809 |  | RGA -FINISHING | 7847242 |
| 4811 | 40200.40300.40900.52800.55800.60100.241800.2366900 | False ceiling & 1ST COAT PAINTING | 15d | 2028-02-04 | 2028-02-18 | 4810 |  | RGA -FINISHING | 7847252 |
| 4812 | 40200.40300.40900.52800.55800.60100.241800.2367000 | CLEANING | 3d | 2028-02-19 | 2028-02-21 | 4811 |  | RGA -FINISHING | 7388745 |

Notes:
- 4790: Assumed
- 4798: Assumed
- 4806: Assumed

| ID | WBS | Task | Duration | Start | Finish | Predecessors | Constraint | Calendar | Unique_Task_ID |
| --- | --- | --- | --- | --- | --- | --- | --- | --- | --- |
| 4813 | 40200.40300.40900.52800.55800.60100.241900 | **20th FLOOR** | 210d | 2027-07-27 | 2028-02-21 |  | start no earlier than 2027-07-27 | RGA -FINISHING | 7806732 |
| 4814 | 40200.40300.40900.52800.55800.60100.241900.2367100 | FIRE FIGHTING | 10d | 2027-07-27 | 2027-08-05 | 4577FS-5d |  | RGA -FINISHING | 7847262 |
| 4815 | 40200.40300.40900.52800.55800.60100.241900.2367200 | LIFT BLOCK WORK | 3d | 2027-09-19 | 2027-09-21 | 4807SS |  | RGA -FINISHING | 7847272 |
| 4816 | 40200.40300.40900.52800.55800.60100.241900.2367300 | LIFT DADO WORK | 10d | 2028-01-09 | 2028-01-18 | 4808SS |  | RGA -FINISHING | 7847282 |
| 4817 | 40200.40300.40900.52800.55800.60100.241900.2367400 | LOBBY FLOORING WORK | 10d | 2028-01-19 | 2028-01-28 | 4816 |  | RGA -FINISHING | 7847292 |
| 4818 | 40200.40300.40900.52800.55800.60100.241900.2367500 | ELECTRICAL WIRING & SWITCH PLATE FIXING WORK | 6d | 2028-01-29 | 2028-02-03 | 4817 |  | RGA -FINISHING | 7847302 |
| 4819 | 40200.40300.40900.52800.55800.60100.241900.2367600 | False ceiling & 1ST COAT PAINTING | 15d | 2028-02-04 | 2028-02-18 | 4818 |  | RGA -FINISHING | 7847312 |
| 4820 | 40200.40300.40900.52800.55800.60100.241900.2367700 | CLEANING | 3d | 2028-02-19 | 2028-02-21 | 4819 |  | RGA -FINISHING | 7847322 |
| 4821 | 40200.40300.40900.52800.55800.60100.242000 | **21th FLOOR** | 193d | 2027-08-13 | 2028-02-21 |  | start no earlier than 2027-08-13 | RGA -FINISHING | 7806742 |
| 4822 | 40200.40300.40900.52800.55800.60100.242000.2367800 | FIRE FIGHTING | 10d | 2027-08-13 | 2027-08-22 | 4590FS-5d |  | RGA -FINISHING | 7847332 |
| 4823 | 40200.40300.40900.52800.55800.60100.242000.2367900 | LIFT BLOCK WORK | 3d | 2027-09-19 | 2027-09-21 | 4815SS |  | RGA -FINISHING | 7847342 |
| 4824 | 40200.40300.40900.52800.55800.60100.242000.2368000 | LIFT DADO WORK | 10d | 2028-01-09 | 2028-01-18 | 4816SS |  | RGA -FINISHING | 7847352 |
| 4825 | 40200.40300.40900.52800.55800.60100.242000.2368100 | LOBBY FLOORING WORK | 10d | 2028-01-19 | 2028-01-28 | 4824 |  | RGA -FINISHING | 7847362 |
| 4826 | 40200.40300.40900.52800.55800.60100.242000.2368200 | ELECTRICAL WIRING & SWITCH PLATE FIXING WORK | 6d | 2028-01-29 | 2028-02-03 | 4825 |  | RGA -FINISHING | 7847372 |
| 4827 | 40200.40300.40900.52800.55800.60100.242000.2368300 | False ceiling & 1ST COAT PAINTING | 15d | 2028-02-04 | 2028-02-18 | 4826 |  | RGA -FINISHING | 7847382 |
| 4828 | 40200.40300.40900.52800.55800.60100.242000.2368400 | CLEANING | 3d | 2028-02-19 | 2028-02-21 | 4827 |  | RGA -FINISHING | 7847392 |
| 4829 | 40200.40300.40900.52800.55800.60100.242100 | **22th FLOOR** | 186d | 2027-08-30 | 2028-03-02 |  | start no earlier than 2027-08-30 | RGA -FINISHING | 7806752 |
| 4830 | 40200.40300.40900.52800.55800.60100.242100.2368500 | FIRE FIGHTING | 10d | 2027-08-30 | 2027-09-08 | 4603FS-5d |  | RGA -FINISHING | 7847402 |
| 4831 | 40200.40300.40900.52800.55800.60100.242100.2368600 | LIFT BLOCK WORK | 3d | 2027-09-22 | 2027-09-24 | 4823 |  | RGA -FINISHING | 7847412 |
| 4832 | 40200.40300.40900.52800.55800.60100.242100.2368700 | LIFT DADO WORK | 10d | 2028-01-19 | 2028-01-28 | 4824 |  | RGA -FINISHING | 7847422 |
| 4833 | 40200.40300.40900.52800.55800.60100.242100.2368800 | LOBBY FLOORING WORK | 10d | 2028-01-29 | 2028-02-07 | 4832 |  | RGA -FINISHING | 7847432 |
| 4834 | 40200.40300.40900.52800.55800.60100.242100.2368900 | ELECTRICAL WIRING & SWITCH PLATE FIXING WORK | 6d | 2028-02-08 | 2028-02-13 | 4833 |  | RGA -FINISHING | 7847442 |
| 4835 | 40200.40300.40900.52800.55800.60100.242100.2369000 | False ceiling & 1ST COAT PAINTING | 15d | 2028-02-14 | 2028-02-28 | 4834 |  | RGA -FINISHING | 7847452 |
| 4836 | 40200.40300.40900.52800.55800.60100.242100.2369100 | CLEANING | 3d | 2028-02-29 | 2028-03-02 | 4835 |  | RGA -FINISHING | 7847462 |

Notes:
- 4814: Assumed
- 4822: Assumed
- 4830: Assumed

| ID | WBS | Task | Duration | Start | Finish | Predecessors | Constraint | Calendar | Unique_Task_ID |
| --- | --- | --- | --- | --- | --- | --- | --- | --- | --- |
| 4837 | 40200.40300.40900.52800.55800.60100.242200 | **23th FLOOR** | 177d | 2027-09-08 | 2028-03-02 |  | start no earlier than 2027-09-08 | RGA -FINISHING | 7806762 |
| 4838 | 40200.40300.40900.52800.55800.60100.242200.2369200 | FIRE FIGHTING | 10d | 2027-09-08 | 2027-09-17 | 4616FS-5d |  | RGA -FINISHING | 7847472 |
| 4839 | 40200.40300.40900.52800.55800.60100.242200.2369300 | LIFT BLOCK WORK | 3d | 2027-09-22 | 2027-09-24 | 4831SS |  | RGA -FINISHING | 7847482 |
| 4840 | 40200.40300.40900.52800.55800.60100.242200.2369400 | LIFT DADO WORK | 10d | 2028-01-19 | 2028-01-28 | 4832SS |  | RGA -FINISHING | 7847492 |
| 4841 | 40200.40300.40900.52800.55800.60100.242200.2369500 | LOBBY FLOORING WORK | 10d | 2028-01-29 | 2028-02-07 | 4840 |  | RGA -FINISHING | 7847502 |
| 4842 | 40200.40300.40900.52800.55800.60100.242200.2369600 | ELECTRICAL WIRING & SWITCH PLATE FIXING WORK | 6d | 2028-02-08 | 2028-02-13 | 4841 |  | RGA -FINISHING | 7847512 |
| 4843 | 40200.40300.40900.52800.55800.60100.242200.2369700 | False ceiling & 1ST COAT PAINTING | 15d | 2028-02-14 | 2028-02-28 | 4842 |  | RGA -FINISHING | 7847522 |
| 4844 | 40200.40300.40900.52800.55800.60100.242200.2369800 | CLEANING | 3d | 2028-02-29 | 2028-03-02 | 4843 |  | RGA -FINISHING | 7847532 |
| 4845 | 40200.40300.40900.52800.55800.60100.242300 | **24th FLOOR** | 168d | 2027-09-17 | 2028-03-02 |  | start no earlier than 2027-09-17 | RGA -FINISHING | 7806772 |
| 4846 | 40200.40300.40900.52800.55800.60100.242300.2369900 | FIRE FIGHTING | 10d | 2027-09-17 | 2027-09-26 | 4629FS-5d |  | RGA -FINISHING | 7847542 |
| 4847 | 40200.40300.40900.52800.55800.60100.242300.2370000 | LIFT BLOCK WORK | 3d | 2027-09-22 | 2027-09-24 | 4839SS |  | RGA -FINISHING | 7847552 |
| 4848 | 40200.40300.40900.52800.55800.60100.242300.2370100 | LIFT DADO WORK | 10d | 2028-01-19 | 2028-01-28 | 4840SS |  | RGA -FINISHING | 7847562 |
| 4849 | 40200.40300.40900.52800.55800.60100.242300.2370200 | LOBBY FLOORING WORK | 10d | 2028-01-29 | 2028-02-07 | 4848 |  | RGA -FINISHING | 7847572 |
| 4850 | 40200.40300.40900.52800.55800.60100.242300.2370300 | ELECTRICAL WIRING & SWITCH PLATE FIXING WORK | 6d | 2028-02-08 | 2028-02-13 | 4849 |  | RGA -FINISHING | 7847582 |
| 4851 | 40200.40300.40900.52800.55800.60100.242300.2370400 | False ceiling & 1ST COAT PAINTING | 15d | 2028-02-14 | 2028-02-28 | 4850 |  | RGA -FINISHING | 7847592 |
| 4852 | 40200.40300.40900.52800.55800.60100.242300.2370500 | CLEANING | 3d | 2028-02-29 | 2028-03-02 | 4851 |  | RGA -FINISHING | 7847602 |
| 4853 | 40200.40300.40900.52800.55800.60100.242400 | **25th FLOOR** | 163d | 2027-09-22 | 2028-03-02 |  | start no earlier than 2027-09-22 | RGA -FINISHING | 7806782 |
| 4854 | 40200.40300.40900.52800.55800.60100.242400.2370600 | FIRE FIGHTING | 10d | 2027-10-06 | 2027-10-15 | 4642FS-5d |  | RGA -FINISHING | 7847612 |
| 4855 | 40200.40300.40900.52800.55800.60100.242400.2370700 | LIFT BLOCK WORK | 3d | 2027-09-22 | 2027-09-24 | 4847SS |  | RGA -FINISHING | 7847702 |
| 4856 | 40200.40300.40900.52800.55800.60100.242400.2370800 | LIFT DADO WORK | 10d | 2028-01-19 | 2028-01-28 | 4848SS |  | RGA -FINISHING | 7847712 |
| 4857 | 40200.40300.40900.52800.55800.60100.242400.2370900 | LOBBY FLOORING WORK | 10d | 2028-01-29 | 2028-02-07 | 4856 |  | RGA -FINISHING | 7847722 |
| 4858 | 40200.40300.40900.52800.55800.60100.242400.2371000 | ELECTRICAL WIRING & SWITCH PLATE FIXING WORK | 6d | 2028-02-08 | 2028-02-13 | 4857 |  | RGA -FINISHING | 7847732 |
| 4859 | 40200.40300.40900.52800.55800.60100.242400.2371100 | False ceiling & 1ST COAT PAINTING | 15d | 2028-02-14 | 2028-02-28 | 4858 |  | RGA -FINISHING | 7847742 |
| 4860 | 40200.40300.40900.52800.55800.60100.242400.2371200 | CLEANING | 3d | 2028-02-29 | 2028-03-02 | 4859 |  | RGA -FINISHING | 7847752 |

Notes:
- 4838: Assumed
- 4846: Assumed
- 4854: Assumed

| ID | WBS | Task | Duration | Start | Finish | Predecessors | Constraint | Calendar | Unique_Task_ID |
| --- | --- | --- | --- | --- | --- | --- | --- | --- | --- |
| 4861 | 40200.40300.40900.52800.55800.161400 | **Common MEP Works** | 291d | 2027-10-05 | 2028-07-21 |  | start no earlier than 2027-10-05 | RGA -FINISHING | 7805282 |
| 4862 | 40200.40300.40900.52800.55800.161400.478700 | **Lift Works** | 81d | 2027-10-17 | 2028-01-05 |  | start no earlier than 2027-10-17 | RGA -FINISHING | 7811282 |
| 4863 | 40200.40300.40900.52800.55800.161400.478700.2371300 | Lift Shaft Handover | 30d | 2027-10-17 | 2027-11-15 | 4119 |  | RGA -FINISHING | 7389665 |
| 4864 | 40200.40300.40900.52800.55800.161400.478700.2371400 | Lift installation work | 50d | 2027-11-17 | 2028-01-05 | 4863FS+1d |  | RGA -FINISHING | 7389675 |
| 4865 | 40200.40300.40900.52800.55800.161400.478600 | **Plumbing works** | 147d | 2028-02-26 | 2028-07-21 |  | start no earlier than 2028-02-26 | RGA -FINISHING | 7811292 |
| 4866 | 40200.40300.40900.52800.55800.161400.478600.2371500 | Shaft Plumbing | 90d | 2028-02-26 | 2028-05-25 | 4312FF+90d |  | RGA -FINISHING | 7389685 |
| 4867 | 40200.40300.40900.52800.55800.161400.478600.2371600 | Terrace Looping | 90d | 2028-04-23 | 2028-07-21 | 4310FF+110d |  | RGA -FINISHING | 7389695 |
| 4868 | 40200.40300.40900.52800.55800.161400.478500 | **Fire Fighting works** | 75d | 2027-10-05 | 2027-12-18 |  | start no earlier than 2027-10-05 | RGA -FINISHING | 7811302 |
| 4869 | 40200.40300.40900.52800.55800.161400.478500.2371700 | Shaft Downtake works | 60d | 2027-10-05 | 2027-12-03 | 4114FS+21d |  | RGA -FINISHING | 7389705 |
| 4870 | 40200.40300.40900.52800.55800.161400.478500.2371800 | Connection to pump room | 15d | 2027-12-04 | 2027-12-18 | 4869 |  | RGA -FINISHING | 7389715 |
| 4871 | 40200.40300.40900.52800.55800.161400.342900 | **Electrical works** | 120d | 2028-02-19 | 2028-06-17 |  | start no earlier than 2028-02-19 | RGA -FINISHING | 7808242 |
| 4872 | 40200.40300.40900.52800.55800.161400.342900.2371900 | Shaft cabling | 45d | 2028-05-01 | 2028-06-14 | 4114FS+230d |  | RGA -FINISHING | 7389725 |
| 4873 | 40200.40300.40900.52800.55800.161400.342900.2372000 | Meter room erection | 15d | 2028-05-19 | 2028-06-02 | 3972FS+270d |  | RGA -FINISHING | 7389735 |
| 4874 | 40200.40300.40900.52800.55800.161400.342900.2372100 | Panel erection | 15d | 2028-06-03 | 2028-06-17 | 4873 |  | RGA -FINISHING | 7389745 |
| 4875 | 40200.40300.40900.52800.55800.161400.342900.2372200 | DG Installtion | 10d | 2028-02-19 | 2028-02-28 | 4873SS-90d |  | RGA -FINISHING | 7389755 |
| 4876 | 40200.40300.40900.52800.55800.161400.342900.2372300 | Transformer erection | 15d | 2028-02-19 | 2028-03-04 | 4875SS |  | RGA -FINISHING | 7389765 |
| 4877 | 40200.40300.40900.352500 | **Capex Item Procurment** | 170d | 2027-10-17 | 2028-04-03 |  | start no earlier than 2027-10-17 | RGA -FINISHING | 7808712 |
| 4878 | 40200.40300.40900.352500.576000 | Lift Procurement & delivery | 30d | 2027-10-17 | 2027-11-15 | 4863SS |  | RGA -FINISHING | 7815162 |
| 4879 | 40200.40300.40900.352500.576100 | Panels | 30d | 2028-03-05 | 2028-04-03 | 4874SS-90d |  | RGA -FINISHING | 7815172 |
| 4880 | 40200.40300.40900.352500.576200 | DG procurement | 30d | 2027-11-21 | 2027-12-20 | 4875SS-90d |  | RGA -FINISHING | 7815182 |
| 4881 | 40200.40300.40900.352500.576300 | Transformer | 30d | 2027-11-21 | 2027-12-20 | 4876SS-90d |  | RGA -FINISHING | 7815192 |
| 4882 | 40200.40300.40900.43100 | **Handing Over Activities** | 56d | 2028-06-11 | 2028-08-05 |  | start no earlier than 2028-06-11 | RGA -FINISHING | 7803242 |
| 4883 | 40200.40300.40900.43100.576400 | SOAP WASHING GROUND FLOOR | 1d | 2028-06-11 | 2028-06-11 | 4860FS+100d |  | RGA -FINISHING | 7815202 |
| 4884 | 40200.40300.40900.43100.576500 | SOAP WASHING L1 | 1d | 2028-06-12 | 2028-06-12 | 4883 |  | RGA -FINISHING | 7815212 |
| 4885 | 40200.40300.40900.43100.576600 | SOAP WASHING L2 | 1d | 2028-06-13 | 2028-06-13 | 4884 |  | RGA -FINISHING | 7815222 |
| 4886 | 40200.40300.40900.43100.576700 | SOAP WASHING L3 | 1d | 2028-06-14 | 2028-06-14 | 4885 |  | RGA -FINISHING | 7815232 |
| 4887 | 40200.40300.40900.43100.576800 | SOAP WASHING L4 | 1d | 2028-06-15 | 2028-06-15 | 4886 |  | RGA -FINISHING | 7815242 |
| 4888 | 40200.40300.40900.43100.576900 | SOAP WASHING L5 | 1d | 2028-06-16 | 2028-06-16 | 4887 |  | RGA -FINISHING | 7815252 |
| 4889 | 40200.40300.40900.43100.577000 | SOAP WASHING L6 | 1d | 2028-06-17 | 2028-06-17 | 4888 |  | RGA -FINISHING | 7815262 |
| 4890 | 40200.40300.40900.43100.577100 | SOAP WASHING L7 | 1d | 2028-06-18 | 2028-06-18 | 4889 |  | RGA -FINISHING | 7815272 |
| 4891 | 40200.40300.40900.43100.577200 | SOAP WASHING L8 | 1d | 2028-06-19 | 2028-06-19 | 4890 |  | RGA -FINISHING | 7815282 |
| 4892 | 40200.40300.40900.43100.577300 | SOAP WASHING L9 | 1d | 2028-06-20 | 2028-06-20 | 4891 |  | RGA -FINISHING | 7815292 |
| 4893 | 40200.40300.40900.43100.577400 | SOAP WASHING L10 | 1d | 2028-06-21 | 2028-06-21 | 4892 |  | RGA -FINISHING | 7815302 |
| 4894 | 40200.40300.40900.43100.577500 | SOAP WASHING L11 | 1d | 2028-06-22 | 2028-06-22 | 4893 |  | RGA -FINISHING | 7815312 |
| 4895 | 40200.40300.40900.43100.577600 | SOAP WASHING L12 | 1d | 2028-06-23 | 2028-06-23 | 4894 |  | RGA -FINISHING | 7815322 |
| 4896 | 40200.40300.40900.43100.577700 | SOAP WASHING L13 | 1d | 2028-06-24 | 2028-06-24 | 4895 |  | RGA -FINISHING | 7815332 |
| 4897 | 40200.40300.40900.43100.577800 | SOAP WASHING L14 | 1d | 2028-06-25 | 2028-06-25 | 4896 |  | RGA -FINISHING | 7815342 |
| 4898 | 40200.40300.40900.43100.577900 | SOAP WASHING L15 | 1d | 2028-06-26 | 2028-06-26 | 4897 |  | RGA -FINISHING | 7815352 |
| 4899 | 40200.40300.40900.43100.578000 | SOAP WASHING L16 | 1d | 2028-06-27 | 2028-06-27 | 4898 |  | RGA -FINISHING | 7815362 |
| 4900 | 40200.40300.40900.43100.578100 | SOAP WASHING L17 | 1d | 2028-06-28 | 2028-06-28 | 4899 |  | RGA -FINISHING | 7815372 |
| 4901 | 40200.40300.40900.43100.578200 | SOAP WASHING L18 | 1d | 2028-06-29 | 2028-06-29 | 4900 |  | RGA -FINISHING | 7815382 |
| 4902 | 40200.40300.40900.43100.578300 | SOAP WASHING L19 | 1d | 2028-06-30 | 2028-06-30 | 4901 |  | RGA -FINISHING | 7815392 |
| 4903 | 40200.40300.40900.43100.578400 | SOAP WASHING L20 | 1d | 2028-07-01 | 2028-07-01 | 4902 |  | RGA -FINISHING | 7815402 |
| 4904 | 40200.40300.40900.43100.578500 | SOAP WASHING L21 | 1d | 2028-07-02 | 2028-07-02 | 4903 |  | RGA -FINISHING | 7815412 |
| 4905 | 40200.40300.40900.43100.578600 | SOAP WASHING L22 | 1d | 2028-07-03 | 2028-07-03 | 4904 |  | RGA -FINISHING | 7815422 |
| 4906 | 40200.40300.40900.43100.578700 | SOAP WASHING L23 | 1d | 2028-07-04 | 2028-07-04 | 4905 |  | RGA -FINISHING | 7815432 |
| 4907 | 40200.40300.40900.43100.578800 | SOAP WASHING L24 | 1d | 2028-07-05 | 2028-07-05 | 4906 |  | RGA -FINISHING | 7815442 |
| 4908 | 40200.40300.40900.43100.578900 | SOAP WASHING L25 | 1d | 2028-07-06 | 2028-07-06 | 4907 |  | RGA -FINISHING | 7815452 |
| 4909 | 40200.40300.40900.43100.579000 | CP & SANITARYWARE FIXING Ground | 2d | 2028-06-13 | 2028-06-14 | 4884 |  | RGA -FINISHING | 7815482 |
| 4910 | 40200.40300.40900.43100.579100 | CP & SANITARYWARE FIXING L1 | 2d | 2028-06-15 | 2028-06-16 | 4909 |  | RGA -FINISHING | 7815492 |
| 4911 | 40200.40300.40900.43100.579200 | CP & SANITARYWARE FIXING L2 | 2d | 2028-06-17 | 2028-06-18 | 4910 |  | RGA -FINISHING | 7815502 |
| 4912 | 40200.40300.40900.43100.579300 | CP & SANITARYWARE FIXING L3 | 2d | 2028-06-19 | 2028-06-20 | 4911 |  | RGA -FINISHING | 7815512 |
| 4913 | 40200.40300.40900.43100.579400 | CP & SANITARYWARE FIXING L4 | 2d | 2028-06-21 | 2028-06-22 | 4912 |  | RGA -FINISHING | 7815522 |
| 4914 | 40200.40300.40900.43100.579500 | CP & SANITARYWARE FIXING L5 | 2d | 2028-06-23 | 2028-06-24 | 4913 |  | RGA -FINISHING | 7815532 |
| 4915 | 40200.40300.40900.43100.579600 | CP & SANITARYWARE FIXING L6 | 2d | 2028-06-25 | 2028-06-26 | 4914 |  | RGA -FINISHING | 7815542 |
| 4916 | 40200.40300.40900.43100.579700 | CP & SANITARYWARE FIXING L7 | 2d | 2028-06-27 | 2028-06-28 | 4915 |  | RGA -FINISHING | 7815552 |
| 4917 | 40200.40300.40900.43100.579800 | CP & SANITARYWARE FIXING L8 | 2d | 2028-06-29 | 2028-06-30 | 4916 |  | RGA -FINISHING | 7815562 |
| 4918 | 40200.40300.40900.43100.579900 | CP & SANITARYWARE FIXING L9 | 2d | 2028-07-01 | 2028-07-02 | 4917 |  | RGA -FINISHING | 7815572 |
| 4919 | 40200.40300.40900.43100.580000 | CP & SANITARYWARE FIXING L10 | 2d | 2028-07-03 | 2028-07-04 | 4918 |  | RGA -FINISHING | 7815582 |
| 4920 | 40200.40300.40900.43100.580100 | CP & SANITARYWARE FIXING L11 | 2d | 2028-07-05 | 2028-07-06 | 4919 |  | RGA -FINISHING | 7815592 |
| 4921 | 40200.40300.40900.43100.580200 | CP & SANITARYWARE FIXING L12 | 2d | 2028-07-07 | 2028-07-08 | 4920 |  | RGA -FINISHING | 7815602 |
| 4922 | 40200.40300.40900.43100.580300 | CP & SANITARYWARE FIXING L13 | 2d | 2028-07-09 | 2028-07-10 | 4921 |  | RGA -FINISHING | 7815612 |
| 4923 | 40200.40300.40900.43100.580400 | CP & SANITARYWARE FIXING L14 | 2d | 2028-07-11 | 2028-07-12 | 4922 |  | RGA -FINISHING | 7815622 |
| 4924 | 40200.40300.40900.43100.580500 | CP & SANITARYWARE FIXING L15 | 2d | 2028-07-13 | 2028-07-14 | 4923 |  | RGA -FINISHING | 7815632 |
| 4925 | 40200.40300.40900.43100.580600 | CP & SANITARYWARE FIXING L16 | 2d | 2028-07-15 | 2028-07-16 | 4924 |  | RGA -FINISHING | 7815642 |
| 4926 | 40200.40300.40900.43100.580700 | CP & SANITARYWARE FIXING L17 | 2d | 2028-07-17 | 2028-07-18 | 4925 |  | RGA -FINISHING | 7815652 |
| 4927 | 40200.40300.40900.43100.580800 | CP & SANITARYWARE FIXING L18 | 2d | 2028-07-19 | 2028-07-20 | 4926 |  | RGA -FINISHING | 7815662 |
| 4928 | 40200.40300.40900.43100.580900 | CP & SANITARYWARE FIXING L18 | 2d | 2028-07-21 | 2028-07-22 | 4927 |  | RGA -FINISHING | 7815672 |
| 4929 | 40200.40300.40900.43100.581000 | CP & SANITARYWARE FIXING L19 | 2d | 2028-07-23 | 2028-07-24 | 4928 |  | RGA -FINISHING | 7815682 |
| 4930 | 40200.40300.40900.43100.581100 | CP & SANITARYWARE FIXING L20 | 2d | 2028-07-25 | 2028-07-26 | 4929 |  | RGA -FINISHING | 7815692 |

Notes:
- 4861: Completion in 12 months post last RCC

| ID | WBS | Task | Type | Duration | Start | Finish | Predecessors | Complete | Constraint | Calendar | Unique_Task_ID |
| --- | --- | --- | --- | --- | --- | --- | --- | --- | --- | --- | --- |
| 4931 | 40200.40300.40900.43100.581200 | CP & SANITARYWARE FIXING L21 |  | 2d | 2028-07-27 | 2028-07-28 | 4930 |  |  | RGA -FINISHING | 7815702 |
| 4932 | 40200.40300.40900.43100.581300 | CP & SANITARYWARE FIXING L22 |  | 2d | 2028-07-29 | 2028-07-30 | 4931 |  |  | RGA -FINISHING | 7815712 |
| 4933 | 40200.40300.40900.43100.581400 | CP & SANITARYWARE FIXING L23 |  | 2d | 2028-07-31 | 2028-08-01 | 4932 |  |  | RGA -FINISHING | 7815722 |
| 4934 | 40200.40300.40900.43100.581500 | CP & SANITARYWARE FIXING L24 |  | 2d | 2028-08-02 | 2028-08-03 | 4933 |  |  | RGA -FINISHING | 7815732 |
| 4935 | 40200.40300.40900.43100.581600 | CP & SANITARYWARE FIXING L25 |  | 2d | 2028-08-04 | 2028-08-05 | 4934 |  |  | RGA -FINISHING | 7815742 |
| 4936 | 40200.40300.40900.535500 | MIscellaneous (Aluform Supply) |  | 61d | 2025-07-27 | 2025-09-25 | 4009FS-77.95d | 100% | start no earlier than 2025-07-27 | RGA -FINISHING | 7812592 |
| 4937 | 40200.40300.40900.535400 | Miscellaneous |  | 270d | 2025-10-10 | 2026-10-08 | 4936FS+428d |  | start no earlier than 2025-10-10 | Indian Calendar | 7812602 |
| 4938 | 40200.40300.40900.545900 | Miscellaneous |  | 530d | 2027-05-19 | 2029-01-25 | 4936FS+514d |  |  | Indian Calendar | 10722968 |
| 4939 | 40200.40300.40800 | **TOWER 2A - (B+G+25 Floors+Terrace)** |  | 1814.62d | 2023-09-06 | 2028-10-10 |  | 10% | start no earlier than 2023-09-06 | RGA - STRUCTURE | 7803132 |
| 4940 | 40200.40300.40800.1170500 | Start date for Tower 2A | milestone | 0d | 2025-12-14 | 2025-12-14 | 5918SS+7d |  |  | RGA - STRUCTURE | 7847632 |
| 4941 | 40200.40300.40800.461200 | **Earth work** |  | 270d | 2025-02-18 | 2025-11-19 |  | 100% | start no earlier than 2025-02-18 | RGA - STRUCTURE | 7811782 |
| 4942 | 40200.40300.40800.461200.521000 | EXCAVATION - Tower Area |  | 101d | 2025-02-18 | 2025-11-18 | 4940SS-268d | 100% | start no earlier than 2025-02-18 | RGA - STRUCTURE | 7815772 |
| 4943 | 40200.40300.40800.461200.520900 | Excavation - Non Tower Area |  | 75d | 2025-02-19 | 2025-11-19 | 4942FS-185d | 100% | start no earlier than 2025-02-19 | 5 day week, Bank Hols Xmas | 7433505 |
| 4944 | 40200.40300.40800.71300 | **Substructure works (Works up to plinth)** |  | 745d | 2025-06-24 | 2027-08-14 |  | 9% | start no earlier than 2025-06-24 | RGA - STRUCTURE | 7803942 |
| 4945 | 40200.40300.40800.71300.162000 | **Civil works (Shell & Core basement)** |  | 410d | 2025-06-24 | 2026-08-28 |  | 61% | start no earlier than 2025-06-24 | RGA - STRUCTURE | 7805352 |
| 4946 | 40200.40300.40800.71300.162000.168300 | **1st Basement** |  | 410d | 2025-06-24 | 2026-08-28 |  | 61% | start no earlier than 2025-06-24 | RGA - STRUCTURE | 7805412 |
| 4947 | 40200.40300.40800.71300.162000.168300.253800 | **RCC Works - Tower area** |  | 167d | 2025-06-24 | 2025-12-10 |  | 75% | start no earlier than 2025-06-24 | RGA - STRUCTURE | 7808232 |
| 4948 | 40200.40300.40800.71300.162000.168300.253800.372800 | **Foundation** |  | 33d | 2025-06-24 | 2025-07-26 |  | 100% | start no earlier than 2025-06-24 | RGA - STRUCTURE | 7810712 |
| 4949 | 40200.40300.40800.71300.162000.168300.253800.372800.523800 | Pocket Excavation |  | 1d | 2025-06-24 | 2025-06-24 | 4942FS+67d | 100% | start no earlier than 2025-06-24 | RGA - STRUCTURE | 7859212 |
| 4950 | 40200.40300.40800.71300.162000.168300.253800.372800.522000 | Footing PCC (Construction start for Tower 2A) |  | 4d | 2025-06-25 | 2025-06-28 | 4949 | 100% | start no earlier than 2025-06-25 | RGA - STRUCTURE | 7859222 |
| 4951 | 40200.40300.40800.71300.162000.168300.253800.372800.521900 | Footing / Raft works |  | 8d | 2025-07-07 | 2025-07-26 | 4950 | 100% | start no earlier than 2025-07-07 | RGA - STRUCTURE | 7859232 |
| 4952 | 40200.40300.40800.71300.162000.168300.253800.462600 | **GF Slab** |  | 134d | 2025-07-27 | 2025-12-10 |  | 64% | start no earlier than 2025-07-27 | RGA - STRUCTURE | 7811422 |
| 4953 | 40200.40300.40800.71300.162000.168300.253800.462600.521800 | Columns in Upper basement |  | 14d | 2025-07-27 | 2025-11-20 | 4951 | 100% | start no earlier than 2025-07-27 | RGA - STRUCTURE | 7859242 |
| 4954 | 40200.40300.40800.71300.162000.168300.253800.462600.521700 | Upper Basement slab |  | 17d | 2025-10-23 | 2025-12-10 | 4953FS-28d | 35% | start no earlier than 2025-10-23 | RGA - STRUCTURE | 7859252 |
| 4955 | 40200.40300.40800.71300.162000.168300.989800 | Backfilling |  | 10d | 2026-08-19 | 2026-08-28 | 7896 |  |  | RGA - STRUCTURE | 7832022 |

Notes:
- 4941: 2 Months for Excavation

| ID | WBS | Task | Duration | Start | Finish | Predecessors | Constraint | Calendar | Unique_Task_ID |
| --- | --- | --- | --- | --- | --- | --- | --- | --- | --- |
| 4956 | 40200.40300.40800.71300.511300 | **Basement Block work and Plaster finishing** | 30d | 2027-02-16 | 2027-03-17 |  | start no earlier than 2027-02-16 | RGA - STRUCTURE | 7812202 |
| 4957 | 40200.40300.40800.71300.511300.854100 | Upper basement | 30d | 2027-02-16 | 2027-03-17 | 5062 |  | RGA - STRUCTURE | 7820202 |
| 4958 | 40200.40300.40800.71300.165700 | **Services** | 150d | 2027-03-18 | 2027-08-14 |  | start no earlier than 2027-03-18 | RGA -FINISHING | 7805342 |
| 4959 | 40200.40300.40800.71300.165700.433600 | **Plumbing** | 30d | 2027-03-18 | 2027-04-16 |  | start no earlier than 2027-03-18 | RGA -FINISHING | 7809192 |
| 4960 | 40200.40300.40800.71300.165700.433600.506900 | **Upper Basement Plumbing** | 30d | 2027-03-18 | 2027-04-16 |  | start no earlier than 2027-03-18 | RGA -FINISHING | 7811962 |
| 4961 | 40200.40300.40800.71300.165700.433600.506900.2372400 | Upper Basement Plumbing | 30d | 2027-03-18 | 2027-04-16 | 4957 |  | RGA -FINISHING | 7848102 |
| 4962 | 40200.40300.40800.71300.165700.433700 | **Fire fighting** | 30d | 2027-04-17 | 2027-05-16 |  | start no earlier than 2027-04-17 | RGA -FINISHING | 7809202 |
| 4963 | 40200.40300.40800.71300.165700.433700.507000 | **Upper Basement Fire fighting** | 30d | 2027-04-17 | 2027-05-16 |  | start no earlier than 2027-04-17 | RGA -FINISHING | 7811952 |
| 4964 | 40200.40300.40800.71300.165700.433700.507000.2372500 | Upper Basement Fire fighting | 30d | 2027-04-17 | 2027-05-16 | 4961 |  | RGA -FINISHING | 7848112 |
| 4965 | 40200.40300.40800.71300.165700.433800 | **Ventilation** | 30d | 2027-05-17 | 2027-06-15 |  | start no earlier than 2027-05-17 | RGA -FINISHING | 7809212 |
| 4966 | 40200.40300.40800.71300.165700.433800.507100 | **Upper Basement ventilation** | 30d | 2027-05-17 | 2027-06-15 |  | start no earlier than 2027-05-17 | RGA -FINISHING | 7811942 |
| 4967 | 40200.40300.40800.71300.165700.433800.507100.2372600 | Upper Basement ventilation | 30d | 2027-05-17 | 2027-06-15 | 4964 |  | RGA -FINISHING | 7848122 |
| 4968 | 40200.40300.40800.71300.165700.433900 | **Electrification** | 30d | 2027-06-16 | 2027-07-15 |  | start no earlier than 2027-06-16 | RGA -FINISHING | 7809222 |
| 4969 | 40200.40300.40800.71300.165700.433900.507200 | **Upper Basement Electrification** | 30d | 2027-06-16 | 2027-07-15 |  | start no earlier than 2027-06-16 | RGA -FINISHING | 7811932 |
| 4970 | 40200.40300.40800.71300.165700.433900.507200.2372700 | Upper Basement Electrification | 30d | 2027-06-16 | 2027-07-15 | 4967 |  | RGA -FINISHING | 7848132 |
| 4971 | 40200.40300.40800.71300.165700.434000 | **Security installations** | 30d | 2027-07-16 | 2027-08-14 |  | start no earlier than 2027-07-16 | RGA -FINISHING | 7809232 |
| 4972 | 40200.40300.40800.71300.165700.434000.507300 | **Upper Basement Security installations** | 30d | 2027-07-16 | 2027-08-14 |  | start no earlier than 2027-07-16 | RGA -FINISHING | 7811922 |
| 4973 | 40200.40300.40800.71300.165700.434000.507300.2372800 | Upper Basement Security installations | 30d | 2027-07-16 | 2027-08-14 | 4970 |  | RGA -FINISHING | 7848142 |
| 4974 | 40200.40300.40800.71300.364000 | **Finishing work** | 60d | 2027-03-18 | 2027-05-16 |  | start no earlier than 2027-03-18 | RGA -FINISHING | 7808872 |
| 4975 | 40200.40300.40800.71300.364000.512400 | **Basement Flooring** | 30d | 2027-03-18 | 2027-04-16 |  | start no earlier than 2027-03-18 | RGA -FINISHING | 7812442 |
| 4976 | 40200.40300.40800.71300.364000.512400.989900 | 1st Basement ventilation | 30d | 2027-03-18 | 2027-04-16 | 4957 |  | RGA -FINISHING | 7832032 |
| 4977 | 40200.40300.40800.71300.364000.512300 | **Basement Painting (1st Coat)** | 30d | 2027-04-17 | 2027-05-16 |  | start no earlier than 2027-04-17 | RGA -FINISHING | 7812452 |
| 4978 | 40200.40300.40800.71300.364000.512300.990000 | 2nd Basement ventilation | 30d | 2027-04-17 | 2027-05-16 | 4976 |  | RGA -FINISHING | 7832042 |
| 4979 | 40200.40300.40800.71300.511200 | **Water Proofing work** | 45d | 2027-03-18 | 2027-05-01 |  | start no earlier than 2027-03-18 | RGA -FINISHING | 7812212 |
| 4980 | 40200.40300.40800.71300.511200.854200 | GF/Stilt Floor | 45d | 2027-03-18 | 2027-05-01 | 4957 |  | RGA -FINISHING | 7820212 |

| ID | WBS | Task | Duration | Start | Finish | Predecessors | Complete | Constraint | Calendar | Unique_Task_ID |
| --- | --- | --- | --- | --- | --- | --- | --- | --- | --- | --- |
| 4981 | 40200.40300.40800.53800 | **Superstructure works** | 912d | 2025-11-26 | 2028-06-28 |  |  | start no earlier than 2025-11-26 | RGA - STRUCTURE | 7803272 |
| 4982 | 40200.40300.40800.53800.55900 | **Civil works** | 912d | 2025-11-26 | 2028-06-28 |  |  | start no earlier than 2025-11-26 | RGA - STRUCTURE | 7803292 |
| 4983 | 40200.40300.40800.53800.55900.61600 | **Superstructure RCC Work** | 563d | 2025-11-26 | 2027-07-15 |  |  | start no earlier than 2025-11-26 | RGA - STRUCTURE | 7803552 |
| 4984 | 40200.40300.40800.53800.55900.61600.63300 | **Slab RCC works** | 515d | 2025-11-26 | 2027-05-28 |  |  | start no earlier than 2025-11-26 | RGA - STRUCTURE | 7803642 |
| 4985 | 40200.40300.40800.53800.55900.61600.63300.490000 | **1st Floor slab (Height More)** | 60d | 2025-11-26 | 2026-01-24 |  | 11% | start no earlier than 2025-11-26 | RGA - STRUCTURE | 7811432 |
| 4986 | 40200.40300.40800.53800.55900.61600.63300.490000.521600 | Columns | 20d | 2025-11-26 | 2026-01-09 | 4954FS-15d | 20% |  | RGA - STRUCTURE | 7859262 |
| 4987 | 40200.40300.40800.53800.55900.61600.63300.490000.2709800 | Slab Work | 15d | 2026-01-10 | 2026-01-24 | 4986 |  |  | RGA - STRUCTURE | 7859272 |
| 4988 | 40200.40300.40800.53800.55900.61600.63300.489200 | **2nd Floor slab (Combo Height More)** | 30d | 2026-01-25 | 2026-02-24 |  |  | start no earlier than 2026-01-25 | RGA - STRUCTURE | 7811442 |
| 4989 | 40200.40300.40800.53800.55900.61600.63300.489200.2709900 | Columns | 15d | 2026-01-25 | 2026-02-09 | 4987 |  |  | RGA - STRUCTURE | 7859282 |
| 4990 | 40200.40300.40800.53800.55900.61600.63300.489200.2710000 | Slab Work | 15d | 2026-02-10 | 2026-02-24 | 4989 |  |  | RGA - STRUCTURE | 7859292 |
| 4991 | 40200.40300.40800.53800.55900.61600.63300.464000 | **3rd Floor slab (1st Set Up)** | 30d | 2026-02-25 | 2026-03-26 |  |  | start no earlier than 2026-02-25 | RGA - STRUCTURE | 7810722 |
| 4992 | 40200.40300.40800.53800.55900.61600.63300.464000.2710100 | Wall Reinforcement & Form work | 15d | 2026-02-25 | 2026-03-11 | 4990 |  |  | RGA - STRUCTURE | 7859302 |
| 4993 | 40200.40300.40800.53800.55900.61600.63300.464000.2710200 | Slab shuttering & Rebar. | 14d | 2026-03-12 | 2026-03-25 | 4992 |  |  | RGA - STRUCTURE | 7859312 |
| 4994 | 40200.40300.40800.53800.55900.61600.63300.464000.2710300 | Concreting | 1d | 2026-03-26 | 2026-03-26 | 4993 |  |  | RGA - STRUCTURE | 7859322 |
| 4995 | 40200.40300.40800.53800.55900.61600.63300.464600 | **4th Floor slab (2nd Set Up)** | 21d | 2026-03-27 | 2026-04-16 |  |  | start no earlier than 2026-03-27 | RGA - STRUCTURE | 7810732 |
| 4996 | 40200.40300.40800.53800.55900.61600.63300.464600.2710400 | Wall Reinforcement & Form work | 10d | 2026-03-27 | 2026-04-05 | 4994 |  |  | RGA - STRUCTURE | 7859332 |
| 4997 | 40200.40300.40800.53800.55900.61600.63300.464600.2710500 | Slab shuttering & Rebar. | 10d | 2026-04-06 | 2026-04-15 | 4996 |  |  | RGA - STRUCTURE | 7859342 |
| 4998 | 40200.40300.40800.53800.55900.61600.63300.464600.2710600 | Concreting | 1d | 2026-04-16 | 2026-04-16 | 4997 |  |  | RGA - STRUCTURE | 7859352 |
| 4999 | 40200.40300.40800.53800.55900.61600.63300.465500 | **5th Floor slab** | 17d | 2026-04-17 | 2026-05-04 |  |  | start no earlier than 2026-04-17 | RGA - STRUCTURE | 7810742 |
| 5000 | 40200.40300.40800.53800.55900.61600.63300.465500.2710700 | Wall Reinforcement & Form work | 8d | 2026-04-17 | 2026-04-24 | 4998 |  |  | RGA - STRUCTURE | 7859362 |
| 5001 | 40200.40300.40800.53800.55900.61600.63300.465500.2710800 | Slab shuttering & Rebar. | 8d | 2026-04-25 | 2026-05-03 | 5000 |  |  | RGA - STRUCTURE | 7859372 |
| 5002 | 40200.40300.40800.53800.55900.61600.63300.465500.2710900 | Concreting | 1d | 2026-05-04 | 2026-05-04 | 5001 |  |  | RGA - STRUCTURE | 7859382 |
| 5003 | 40200.40300.40800.53800.55900.61600.63300.466000 | **6th Floor slab** | 17d | 2026-05-05 | 2026-05-21 |  |  | start no earlier than 2026-05-05 | RGA - STRUCTURE | 7810752 |
| 5004 | 40200.40300.40800.53800.55900.61600.63300.466000.2711000 | Wall Reinforcement & Form work | 8d | 2026-05-05 | 2026-05-12 | 5002 |  |  | RGA - STRUCTURE | 7859392 |
| 5005 | 40200.40300.40800.53800.55900.61600.63300.466000.2711100 | Slab shuttering & Rebar. | 8d | 2026-05-13 | 2026-05-20 | 5004 |  |  | RGA - STRUCTURE | 7859402 |
| 5006 | 40200.40300.40800.53800.55900.61600.63300.466000.2711200 | Concreting | 1d | 2026-05-21 | 2026-05-21 | 5005 |  |  | RGA - STRUCTURE | 7859412 |

Notes:
- 4988: AVg Slab Cycle of 21 days
- 4991: AVg Slab Cycle of 21 days
- 4995: AVg Slab Cycle of 21 days

| ID | WBS | Task | Duration | Start | Finish | Predecessors | Constraint | Calendar | Unique_Task_ID |
| --- | --- | --- | --- | --- | --- | --- | --- | --- | --- |
| 5007 | 40200.40300.40800.53800.55900.61600.63300.467700 | **7th Floor slab** | 17d | 2026-05-22 | 2026-06-07 |  | start no earlier than 2026-05-22 | RGA - STRUCTURE | 7810762 |
| 5008 | 40200.40300.40800.53800.55900.61600.63300.467700.2711300 | Wall Reinforcement & Form work | 8d | 2026-05-22 | 2026-05-29 | 5006 |  | RGA - STRUCTURE | 7859422 |
| 5009 | 40200.40300.40800.53800.55900.61600.63300.467700.2711400 | Slab shuttering & Rebar. | 8d | 2026-05-30 | 2026-06-06 | 5008 |  | RGA - STRUCTURE | 7859432 |
| 5010 | 40200.40300.40800.53800.55900.61600.63300.467700.2711500 | Concreting | 1d | 2026-06-07 | 2026-06-07 | 5009 |  | RGA - STRUCTURE | 7859442 |
| 5011 | 40200.40300.40800.53800.55900.61600.63300.467800 | **8th Floor slab** | 17d | 2026-06-08 | 2026-07-03 |  | start no earlier than 2026-06-08 | RGA - STRUCTURE | 7810772 |
| 5012 | 40200.40300.40800.53800.55900.61600.63300.467800.2711600 | Wall Reinforcement & Form work | 8d | 2026-06-08 | 2026-06-15 | 5010 |  | RGA - STRUCTURE | 7859452 |
| 5013 | 40200.40300.40800.53800.55900.61600.63300.467800.2711700 | Slab shuttering & Rebar. | 8d | 2026-06-16 | 2026-07-01 | 5012 |  | RGA - STRUCTURE | 7859462 |
| 5014 | 40200.40300.40800.53800.55900.61600.63300.467800.2711800 | Concreting | 1d | 2026-07-02 | 2026-07-03 | 5013 |  | RGA - STRUCTURE | 7859472 |
| 5015 | 40200.40300.40800.53800.55900.61600.63300.470200 | **9th Floor slab** | 17d | 2026-07-04 | 2026-07-26 |  | start no earlier than 2026-07-04 | RGA - STRUCTURE | 7810782 |
| 5016 | 40200.40300.40800.53800.55900.61600.63300.470200.2711900 | Wall Reinforcement & Form work | 8d | 2026-07-04 | 2026-07-17 | 5014 |  | RGA - STRUCTURE | 7859482 |
| 5017 | 40200.40300.40800.53800.55900.61600.63300.470200.2712000 | Slab shuttering & Rebar. | 8d | 2026-07-18 | 2026-07-25 | 5016 |  | RGA - STRUCTURE | 7859492 |
| 5018 | 40200.40300.40800.53800.55900.61600.63300.470200.2712100 | Concreting | 1d | 2026-07-26 | 2026-07-26 | 5017 |  | RGA - STRUCTURE | 7859502 |
| 5019 | 40200.40300.40800.53800.55900.61600.63300.472400 | **10th Floor slab** | 17d | 2026-07-27 | 2026-08-12 |  | start no earlier than 2026-07-27 | RGA - STRUCTURE | 7810792 |
| 5020 | 40200.40300.40800.53800.55900.61600.63300.472400.2712200 | Wall Reinforcement & Form work | 8d | 2026-07-27 | 2026-08-03 | 5018 |  | RGA - STRUCTURE | 7859512 |
| 5021 | 40200.40300.40800.53800.55900.61600.63300.472400.2712300 | Slab shuttering & Rebar. | 8d | 2026-08-04 | 2026-08-11 | 5020 |  | RGA - STRUCTURE | 7859522 |
| 5022 | 40200.40300.40800.53800.55900.61600.63300.472400.2712400 | Concreting | 1d | 2026-08-12 | 2026-08-12 | 5021 |  | RGA - STRUCTURE | 7859532 |
| 5023 | 40200.40300.40800.53800.55900.61600.63300.472700 | **11th Floor slab** | 17d | 2026-08-13 | 2026-08-30 |  | start no earlier than 2026-08-13 | RGA - STRUCTURE | 7810802 |
| 5024 | 40200.40300.40800.53800.55900.61600.63300.472700.2712500 | Wall Reinforcement & Form work | 8d | 2026-08-13 | 2026-08-21 | 5022 |  | RGA - STRUCTURE | 7859542 |
| 5025 | 40200.40300.40800.53800.55900.61600.63300.472700.2712600 | Slab shuttering & Rebar. | 8d | 2026-08-22 | 2026-08-29 | 5024 |  | RGA - STRUCTURE | 7859552 |
| 5026 | 40200.40300.40800.53800.55900.61600.63300.472700.2712700 | Concreting | 1d | 2026-08-30 | 2026-08-30 | 5025 |  | RGA - STRUCTURE | 7859562 |
| 5027 | 40200.40300.40800.53800.55900.61600.63300.472800 | **12th Floor slab** | 17d | 2026-08-31 | 2026-09-16 |  | start no earlier than 2026-08-31 | RGA - STRUCTURE | 7810812 |
| 5028 | 40200.40300.40800.53800.55900.61600.63300.472800.2712800 | Wall Reinforcement & Form work | 8d | 2026-08-31 | 2026-09-07 | 5026 |  | RGA - STRUCTURE | 7859572 |
| 5029 | 40200.40300.40800.53800.55900.61600.63300.472800.2712900 | Slab shuttering & Rebar. | 8d | 2026-09-08 | 2026-09-15 | 5028 |  | RGA - STRUCTURE | 7859582 |
| 5030 | 40200.40300.40800.53800.55900.61600.63300.472800.2713000 | Concreting | 1d | 2026-09-16 | 2026-09-16 | 5029 |  | RGA - STRUCTURE | 7859592 |

Notes:
- 5027: AVg Slab Cycle of 21 days

| ID | WBS | Task | Duration | Start | Finish | Predecessors | Constraint | Calendar | Unique_Task_ID |
| --- | --- | --- | --- | --- | --- | --- | --- | --- | --- |
| 5031 | 40200.40300.40800.53800.55900.61600.63300.474100 | **13th Floor slab** | 17d | 2026-09-17 | 2026-10-04 |  | start no earlier than 2026-09-17 | RGA - STRUCTURE | 7810822 |
| 5032 | 40200.40300.40800.53800.55900.61600.63300.474100.2713100 | Wall Reinforcement & Form work | 8d | 2026-09-17 | 2026-09-24 | 5030 |  | RGA - STRUCTURE | 7859602 |
| 5033 | 40200.40300.40800.53800.55900.61600.63300.474100.2713200 | Slab shuttering & Rebar. | 8d | 2026-09-25 | 2026-10-03 | 5032 |  | RGA - STRUCTURE | 7859612 |
| 5034 | 40200.40300.40800.53800.55900.61600.63300.474100.2713300 | Concreting | 1d | 2026-10-04 | 2026-10-04 | 5033 |  | RGA - STRUCTURE | 7859622 |
| 5035 | 40200.40300.40800.53800.55900.61600.63300.476100 | **14th Floor slab** | 17d | 2026-10-05 | 2026-10-21 |  | start no earlier than 2026-10-05 | RGA - STRUCTURE | 7810832 |
| 5036 | 40200.40300.40800.53800.55900.61600.63300.476100.2713400 | Wall Reinforcement & Form work | 8d | 2026-10-05 | 2026-10-12 | 5034 |  | RGA - STRUCTURE | 7859632 |
| 5037 | 40200.40300.40800.53800.55900.61600.63300.476100.2713500 | Slab shuttering & Rebar. | 8d | 2026-10-13 | 2026-10-20 | 5036 |  | RGA - STRUCTURE | 7859642 |
| 5038 | 40200.40300.40800.53800.55900.61600.63300.476100.2713600 | Concreting | 1d | 2026-10-21 | 2026-10-21 | 5037 |  | RGA - STRUCTURE | 7859652 |
| 5039 | 40200.40300.40800.53800.55900.61600.63300.476200 | **15th Floor slab** | 17d | 2026-10-22 | 2026-11-07 |  | start no earlier than 2026-10-22 | RGA - STRUCTURE | 7810842 |
| 5040 | 40200.40300.40800.53800.55900.61600.63300.476200.2713700 | Wall Reinforcement & Form work | 8d | 2026-10-22 | 2026-10-29 | 5038 |  | RGA - STRUCTURE | 7859662 |
| 5041 | 40200.40300.40800.53800.55900.61600.63300.476200.2713800 | Slab shuttering & Rebar. | 8d | 2026-10-30 | 2026-11-06 | 5040 |  | RGA - STRUCTURE | 7859672 |
| 5042 | 40200.40300.40800.53800.55900.61600.63300.476200.2713900 | Concreting | 1d | 2026-11-07 | 2026-11-07 | 5041 |  | RGA - STRUCTURE | 7859682 |
| 5043 | 40200.40300.40800.53800.55900.61600.63300.476300 | **16th Floor slab** | 17d | 2026-11-08 | 2026-12-03 |  | start no earlier than 2026-11-08 | RGA - STRUCTURE | 7810852 |
| 5044 | 40200.40300.40800.53800.55900.61600.63300.476300.2714000 | Wall Reinforcement & Form work | 8d | 2026-11-08 | 2026-11-15 | 5042 |  | RGA - STRUCTURE | 7859692 |
| 5045 | 40200.40300.40800.53800.55900.61600.63300.476300.2714100 | Slab shuttering & Rebar. | 8d | 2026-11-16 | 2026-12-01 | 5044 |  | RGA - STRUCTURE | 7859702 |
| 5046 | 40200.40300.40800.53800.55900.61600.63300.476300.2714200 | Concreting | 1d | 2026-12-02 | 2026-12-03 | 5045 |  | RGA - STRUCTURE | 7859712 |
| 5047 | 40200.40300.40800.53800.55900.61600.63300.464800 | **17th Floor slab** | 17d | 2026-12-04 | 2026-12-26 |  | start no earlier than 2026-12-04 | RGA - STRUCTURE | 7810862 |
| 5048 | 40200.40300.40800.53800.55900.61600.63300.464800.2714300 | Wall Reinforcement & Form work | 8d | 2026-12-04 | 2026-12-17 | 5046 |  | RGA - STRUCTURE | 7859722 |
| 5049 | 40200.40300.40800.53800.55900.61600.63300.464800.2714400 | Slab shuttering & Rebar. | 8d | 2026-12-18 | 2026-12-25 | 5048 |  | RGA - STRUCTURE | 7859732 |
| 5050 | 40200.40300.40800.53800.55900.61600.63300.464800.2714500 | Concreting | 1d | 2026-12-26 | 2026-12-26 | 5049 |  | RGA - STRUCTURE | 7859742 |
| 5051 | 40200.40300.40800.53800.55900.61600.63300.467000 | **18th Floor slab** | 17d | 2026-12-27 | 2027-01-12 |  | start no earlier than 2026-12-27 | RGA - STRUCTURE | 7810872 |
| 5052 | 40200.40300.40800.53800.55900.61600.63300.467000.2714600 | Wall Reinforcement & Form work | 8d | 2026-12-27 | 2027-01-03 | 5050 |  | RGA - STRUCTURE | 7859752 |
| 5053 | 40200.40300.40800.53800.55900.61600.63300.467000.2714700 | Slab shuttering & Rebar. | 8d | 2027-01-04 | 2027-01-11 | 5052 |  | RGA - STRUCTURE | 7859762 |
| 5054 | 40200.40300.40800.53800.55900.61600.63300.467000.2714800 | Concreting | 1d | 2027-01-12 | 2027-01-12 | 5053 |  | RGA - STRUCTURE | 7859772 |

Notes:
- 5031: AVg Slab Cycle of 21 days
- 5035: AVg Slab Cycle of 21 days

| ID | WBS | Task | Duration | Start | Finish | Predecessors | Constraint | Calendar | Unique_Task_ID |
| --- | --- | --- | --- | --- | --- | --- | --- | --- | --- |
| 5055 | 40200.40300.40800.53800.55900.61600.63300.468500 | **19th Floor slab** | 17d | 2027-01-13 | 2027-01-29 |  | start no earlier than 2027-01-13 | RGA - STRUCTURE | 7810882 |
| 5056 | 40200.40300.40800.53800.55900.61600.63300.468500.2714900 | Wall Reinforcement & Form work | 8d | 2027-01-13 | 2027-01-20 | 5054 |  | RGA - STRUCTURE | 7859782 |
| 5057 | 40200.40300.40800.53800.55900.61600.63300.468500.2715000 | Slab shuttering & Rebar. | 8d | 2027-01-21 | 2027-01-28 | 5056 |  | RGA - STRUCTURE | 7859792 |
| 5058 | 40200.40300.40800.53800.55900.61600.63300.468500.2715100 | Concreting | 1d | 2027-01-29 | 2027-01-29 | 5057 |  | RGA - STRUCTURE | 7859802 |
| 5059 | 40200.40300.40800.53800.55900.61600.63300.473600 | **20th Floor slab (Refuge floor)** | 17d | 2027-01-30 | 2027-02-15 |  | start no earlier than 2027-01-30 | RGA - STRUCTURE | 7810892 |
| 5060 | 40200.40300.40800.53800.55900.61600.63300.473600.2715200 | Wall Reinforcement & Form work | 8d | 2027-01-30 | 2027-02-06 | 5058 |  | RGA - STRUCTURE | 7859812 |
| 5061 | 40200.40300.40800.53800.55900.61600.63300.473600.2715300 | Slab shuttering & Rebar. | 8d | 2027-02-07 | 2027-02-14 | 5060 |  | RGA - STRUCTURE | 7859822 |
| 5062 | 40200.40300.40800.53800.55900.61600.63300.473600.2715400 | Concreting | 1d | 2027-02-15 | 2027-02-15 | 5061 |  | RGA - STRUCTURE | 7859832 |
| 5063 | 40200.40300.40800.53800.55900.61600.63300.473700 | **21th Floor slab** | 17d | 2027-02-16 | 2027-03-04 |  | start no earlier than 2027-02-16 | RGA - STRUCTURE | 7810902 |
| 5064 | 40200.40300.40800.53800.55900.61600.63300.473700.2715500 | Wall Reinforcement & Form work | 8d | 2027-02-16 | 2027-02-23 | 5062 |  | RGA - STRUCTURE | 7859842 |
| 5065 | 40200.40300.40800.53800.55900.61600.63300.473700.2715600 | Slab shuttering & Rebar. | 8d | 2027-02-24 | 2027-03-03 | 5064 |  | RGA - STRUCTURE | 7859852 |
| 5066 | 40200.40300.40800.53800.55900.61600.63300.473700.2715700 | Concreting | 1d | 2027-03-04 | 2027-03-04 | 5065 |  | RGA - STRUCTURE | 7859862 |
| 5067 | 40200.40300.40800.53800.55900.61600.63300.473800 | **22th Floor slab** | 17d | 2027-03-05 | 2027-03-21 |  | start no earlier than 2027-03-05 | RGA - STRUCTURE | 7810912 |
| 5068 | 40200.40300.40800.53800.55900.61600.63300.473800.2715800 | Wall Reinforcement & Form work | 8d | 2027-03-05 | 2027-03-12 | 5066 |  | RGA - STRUCTURE | 7859872 |
| 5069 | 40200.40300.40800.53800.55900.61600.63300.473800.2715900 | Slab shuttering & Rebar. | 8d | 2027-03-13 | 2027-03-20 | 5068 |  | RGA - STRUCTURE | 7859882 |
| 5070 | 40200.40300.40800.53800.55900.61600.63300.473800.2716000 | Concreting | 1d | 2027-03-21 | 2027-03-21 | 5069 |  | RGA - STRUCTURE | 7859892 |
| 5071 | 40200.40300.40800.53800.55900.61600.63300.473900 | **23th Floor slab** | 17d | 2027-03-22 | 2027-04-07 |  | start no earlier than 2027-03-22 | RGA - STRUCTURE | 7810922 |
| 5072 | 40200.40300.40800.53800.55900.61600.63300.473900.2716100 | Wall Reinforcement & Form work | 8d | 2027-03-22 | 2027-03-29 | 5070 |  | RGA - STRUCTURE | 7859902 |
| 5073 | 40200.40300.40800.53800.55900.61600.63300.473900.2716200 | Slab shuttering & Rebar. | 8d | 2027-03-30 | 2027-04-06 | 5072 |  | RGA - STRUCTURE | 7859912 |
| 5074 | 40200.40300.40800.53800.55900.61600.63300.473900.2716300 | Concreting | 1d | 2027-04-07 | 2027-04-07 | 5073 |  | RGA - STRUCTURE | 7859922 |
| 5075 | 40200.40300.40800.53800.55900.61600.63300.474000 | **24th Floor slab** | 17d | 2027-04-08 | 2027-04-24 |  | start no earlier than 2027-04-08 | RGA - STRUCTURE | 7810932 |
| 5076 | 40200.40300.40800.53800.55900.61600.63300.474000.2716400 | Wall Reinforcement & Form work | 8d | 2027-04-08 | 2027-04-15 | 5074 |  | RGA - STRUCTURE | 7859932 |
| 5077 | 40200.40300.40800.53800.55900.61600.63300.474000.2716500 | Slab shuttering & Rebar. | 8d | 2027-04-16 | 2027-04-23 | 5076 |  | RGA - STRUCTURE | 7859942 |
| 5078 | 40200.40300.40800.53800.55900.61600.63300.474000.2716600 | Concreting | 1d | 2027-04-24 | 2027-04-24 | 5077 |  | RGA - STRUCTURE | 7859952 |

| ID | WBS | Task | Duration | Start | Finish | Predecessors | Constraint | Calendar | Unique_Task_ID |
| --- | --- | --- | --- | --- | --- | --- | --- | --- | --- |
| 5079 | 40200.40300.40800.53800.55900.61600.63300.474300 | **25th Floor slab** | 17d | 2027-04-25 | 2027-05-11 |  | start no earlier than 2027-04-25 | RGA - STRUCTURE | 7810942 |
| 5080 | 40200.40300.40800.53800.55900.61600.63300.474300.2716700 | Wall Reinforcement & Form work | 8d | 2027-04-25 | 2027-05-02 | 5078 |  | RGA - STRUCTURE | 7859962 |
| 5081 | 40200.40300.40800.53800.55900.61600.63300.474300.2716800 | Slab shuttering & Rebar. | 8d | 2027-05-03 | 2027-05-10 | 5080 |  | RGA - STRUCTURE | 7859972 |
| 5082 | 40200.40300.40800.53800.55900.61600.63300.474300.2716900 | Concreting | 1d | 2027-05-11 | 2027-05-11 | 5081 |  | RGA - STRUCTURE | 7859982 |
| 5083 | 40200.40300.40800.53800.55900.61600.63300.474400 | **Terrace Floor slab** | 17d | 2027-05-12 | 2027-05-28 |  | start no earlier than 2027-05-12 | RGA - STRUCTURE | 7810972 |
| 5084 | 40200.40300.40800.53800.55900.61600.63300.474400.2717000 | Wall Reinforcement & Form work | 8d | 2027-05-12 | 2027-05-19 | 5082 |  | RGA - STRUCTURE | 7860052 |
| 5085 | 40200.40300.40800.53800.55900.61600.63300.474400.2717100 | Slab shuttering & Rebar. | 8d | 2027-05-20 | 2027-05-27 | 5084 |  | RGA - STRUCTURE | 7860062 |
| 5086 | 40200.40300.40800.53800.55900.61600.63300.474400.2717200 | Concreting | 1d | 2027-05-28 | 2027-05-28 | 5085 |  | RGA - STRUCTURE | 7860072 |
| 5087 | 40200.40300.40800.53800.55900.61600.253900 | **RCC work above Terrace** | 49d | 2027-05-28 | 2027-07-15 |  | start no earlier than 2027-05-28 | RGA - STRUCTURE | 7806992 |
| 5088 | 40200.40300.40800.53800.55900.61600.253900.372900 | **STAIRCASE & OHT CORE** | 49d | 2027-05-28 | 2027-07-15 |  | start no earlier than 2027-05-28 | RGA - STRUCTURE | 7808692 |
| 5089 | 40200.40300.40800.53800.55900.61600.253900.372900.2717300 | STAIRCASE HEAD ROOM | 10d | 2027-05-28 | 2027-06-06 | 5085 |  | RGA - STRUCTURE | 7860082 |
| 5090 | 40200.40300.40800.53800.55900.61600.253900.372900.2717400 | OHT | 25d | 2027-06-07 | 2027-07-01 | 5089 |  | RGA - STRUCTURE | 7860092 |
| 5091 | 40200.40300.40800.53800.55900.61600.253900.372900.2717500 | SHAFT COVERING SLAB | 20d | 2027-05-29 | 2027-06-17 | 5086 |  | RGA - STRUCTURE | 7860102 |
| 5092 | 40200.40300.40800.53800.55900.61600.253900.372900.2717600 | DESHUTTERING OF OHT TOP SLAB | 7d | 2027-07-09 | 2027-07-15 | 5090FS+7d |  | RGA - STRUCTURE | 7860112 |
| 5093 | 40200.40300.40800.53800.55900.61600.253900.476700 | **LMR BOTTOM & TOP SLAB** | 43d | 2027-05-29 | 2027-07-10 |  | start no earlier than 2027-05-29 | RGA - STRUCTURE | 7810982 |
| 5094 | 40200.40300.40800.53800.55900.61600.253900.476700.2717700 | LMR COLUMNS / WALLS | 15d | 2027-05-29 | 2027-06-12 | 5086 |  | RGA - STRUCTURE | 7860122 |
| 5095 | 40200.40300.40800.53800.55900.61600.253900.476700.2717800 | LMR TOP SLAB | 20d | 2027-06-13 | 2027-07-02 | 5094 |  | RGA - STRUCTURE | 7860132 |
| 5096 | 40200.40300.40800.53800.55900.61600.253900.476700.2717900 | DESHUTTERING | 8d | 2027-07-03 | 2027-07-10 | 5095 |  | RGA - STRUCTURE | 7860142 |
| 5097 | 40200.40300.40800.53800.55900.59400 | **Civil Finishing works (Brick work, Plaster,conduiting, concled plumbing, waterproofing)** | 807d | 2025-11-30 | 2028-02-14 |  | start no earlier than 2025-11-30 | RGA -FINISHING | 7391795 |
| 5098 | 40200.40300.40800.53800.55900.59400.61200 | **Flat finishing works** | 667d | 2025-11-30 | 2027-09-27 |  | start no earlier than 2025-11-30 | RGA -FINISHING | 7391815 |
| 5099 | 40200.40300.40800.53800.55900.59400.61200.273400 | **Ground FLOOR** | 528d | 2025-12-15 | 2027-05-26 |  | start no earlier than 2025-12-15 | RGA -FINISHING | 7392515 |
| 5100 | 40200.40300.40800.53800.55900.59400.61200.273400.2718000 | BALCONY RAILING FIXING | 9d | 2026-04-06 | 2026-04-14 | 4994FS+10d |  | RGA -FINISHING | 7399435 |
| 5101 | 40200.40300.40800.53800.55900.59400.61200.273400.2718100 | Block work | 8d | 2026-01-06 | 2026-01-13 | 5105 |  | RGA -FINISHING | 7399445 |
| 5102 | 40200.40300.40800.53800.55900.59400.61200.273400.2718200 | CONCEALED ELEC CONDUITING & ITS FINISHING | 5d | 2027-05-22 | 2027-05-26 | 4984FS-7d |  | RGA -FINISHING | 7399455 |
| 5103 | 40200.40300.40800.53800.55900.59400.61200.273400.2718300 | PLASTER APPLICATION | 6d | 2025-12-15 | 2025-12-20 | 5281 |  | RGA -FINISHING | 7399465 |
| 5104 | 40200.40300.40800.53800.55900.59400.61200.273400.2718400 | CONCEALED PLUMBING | 8d | 2025-12-21 | 2025-12-28 | 5103 |  | RGA -FINISHING | 7399475 |
| 5105 | 40200.40300.40800.53800.55900.59400.61200.273400.2718500 | WATERPROOFING WORK FOR TOILETS, KITCHEN SUNK & PLANTERS | 8d | 2025-12-29 | 2026-01-05 | 5104 |  | RGA -FINISHING | 7399485 |

Notes:
- 5083: AVg Slab Cycle of 21 days

| ID | WBS | Task | Duration | Start | Finish | Predecessors | Constraint | Calendar | Unique_Task_ID |
| --- | --- | --- | --- | --- | --- | --- | --- | --- | --- |
| 5106 | 40200.40300.40800.53800.55900.59400.61200.273500 | **1ST FLOOR** | 132d | 2026-01-18 | 2026-05-29 |  | start no earlier than 2026-01-18 | RGA -FINISHING | 7392525 |
| 5107 | 40200.40300.40800.53800.55900.59400.61200.273500.2718600 | BALCONY RAILING FIXING | 9d | 2026-04-27 | 2026-05-05 | 4998FS+10d |  | RGA -FINISHING | 7399495 |
| 5108 | 40200.40300.40800.53800.55900.59400.61200.273500.2718700 | Block work | 8d | 2026-05-22 | 2026-05-29 | 5112 |  | RGA -FINISHING | 7399505 |
| 5109 | 40200.40300.40800.53800.55900.59400.61200.273500.2718800 | CONCEALED ELEC CONDUITING & ITS FINISHING | 5d | 2026-01-18 | 2026-01-22 | 4987FS-7d |  | RGA -FINISHING | 7399515 |
| 5110 | 40200.40300.40800.53800.55900.59400.61200.273500.2718900 | PLASTER APPLICATION | 6d | 2026-04-30 | 2026-05-05 | 5294 |  | RGA -FINISHING | 7399525 |
| 5111 | 40200.40300.40800.53800.55900.59400.61200.273500.2719000 | CONCEALED PLUMBING | 8d | 2026-05-06 | 2026-05-13 | 5110 |  | RGA -FINISHING | 7399535 |
| 5112 | 40200.40300.40800.53800.55900.59400.61200.273500.2719100 | WATERPROOFING WORK FOR TOILETS, KITCHEN SUNK & PLANTERS | 8d | 2026-05-14 | 2026-05-21 | 5111 |  | RGA -FINISHING | 7399545 |
| 5113 | 40200.40300.40800.53800.55900.59400.61200.273600 | **2nd FLOOR** | 121d | 2026-02-20 | 2026-06-20 |  | start no earlier than 2026-02-20 | RGA -FINISHING | 7392735 |
| 5114 | 40200.40300.40800.53800.55900.59400.61200.273600.2719200 | BALCONY RAILING FIXING | 9d | 2026-05-15 | 2026-05-23 | 5002FS+10d |  | RGA -FINISHING | 7399555 |
| 5115 | 40200.40300.40800.53800.55900.59400.61200.273600.2719300 | Block work | 8d | 2026-06-13 | 2026-06-20 | 5119 |  | RGA -FINISHING | 7399565 |
| 5116 | 40200.40300.40800.53800.55900.59400.61200.273600.2719400 | CONCEALED ELEC CONDUITING & ITS FINISHING | 5d | 2026-02-20 | 2026-02-24 | 4990FS-5d |  | RGA -FINISHING | 7399575 |
| 5117 | 40200.40300.40800.53800.55900.59400.61200.273600.2719500 | PLASTER APPLICATION | 6d | 2026-05-22 | 2026-05-27 | 5307FS+10d |  | RGA -FINISHING | 7399585 |
| 5118 | 40200.40300.40800.53800.55900.59400.61200.273600.2719600 | CONCEALED PLUMBING | 8d | 2026-05-28 | 2026-06-04 | 5117 |  | RGA -FINISHING | 7399595 |
| 5119 | 40200.40300.40800.53800.55900.59400.61200.273600.2719700 | WATERPROOFING WORK FOR TOILETS, KITCHEN SUNK & PLANTERS | 8d | 2026-06-05 | 2026-06-12 | 5118 |  | RGA -FINISHING | 7399605 |
| 5120 | 40200.40300.40800.53800.55900.59400.61200.273700 | **3rd FLOOR** | 111d | 2026-03-20 | 2026-07-08 |  | start no earlier than 2026-03-20 | RGA -FINISHING | 7392505 |
| 5121 | 40200.40300.40800.53800.55900.59400.61200.273700.2719800 | BALCONY RAILING FIXING | 9d | 2026-06-01 | 2026-06-09 | 5006FS+10d |  | RGA -FINISHING | 7399615 |
| 5122 | 40200.40300.40800.53800.55900.59400.61200.273700.2719900 | Block work | 8d | 2026-07-01 | 2026-07-08 | 5126 |  | RGA -FINISHING | 7399625 |
| 5123 | 40200.40300.40800.53800.55900.59400.61200.273700.2720000 | CONCEALED ELEC CONDUITING & ITS FINISHING | 5d | 2026-03-20 | 2026-03-24 | 4994FS-7d |  | RGA -FINISHING | 7399635 |
| 5124 | 40200.40300.40800.53800.55900.59400.61200.273700.2720100 | PLASTER APPLICATION | 6d | 2026-06-09 | 2026-06-14 | 5320FS+10d |  | RGA -FINISHING | 7399645 |
| 5125 | 40200.40300.40800.53800.55900.59400.61200.273700.2720200 | CONCEALED PLUMBING | 8d | 2026-06-15 | 2026-06-22 | 5124 |  | RGA -FINISHING | 7399655 |
| 5126 | 40200.40300.40800.53800.55900.59400.61200.273700.2720300 | WATERPROOFING WORK FOR TOILETS, KITCHEN SUNK & PLANTERS | 8d | 2026-06-23 | 2026-06-30 | 5125 |  | RGA -FINISHING | 7399665 |
| 5127 | 40200.40300.40800.53800.55900.59400.61200.273800 | **4th FLOOR** | 107d | 2026-04-10 | 2026-07-25 |  | start no earlier than 2026-04-10 | RGA -FINISHING | 7392535 |
| 5128 | 40200.40300.40800.53800.55900.59400.61200.273800.2720400 | BALCONY RAILING FIXING | 9d | 2026-06-19 | 2026-06-28 | 5010FS+11.5d |  | RGA -FINISHING | 7399675 |
| 5129 | 40200.40300.40800.53800.55900.59400.61200.273800.2720500 | Block work | 8d | 2026-07-18 | 2026-07-25 | 5133 |  | RGA -FINISHING | 7399685 |
| 5130 | 40200.40300.40800.53800.55900.59400.61200.273800.2720600 | CONCEALED ELEC CONDUITING & ITS FINISHING | 5d | 2026-04-10 | 2026-04-14 | 4998FS-7d |  | RGA -FINISHING | 7399695 |
| 5131 | 40200.40300.40800.53800.55900.59400.61200.273800.2720700 | PLASTER APPLICATION | 6d | 2026-06-26 | 2026-07-01 | 5333FS+10d |  | RGA -FINISHING | 7399705 |
| 5132 | 40200.40300.40800.53800.55900.59400.61200.273800.2720800 | CONCEALED PLUMBING | 8d | 2026-07-02 | 2026-07-09 | 5131 |  | RGA -FINISHING | 7399715 |
| 5133 | 40200.40300.40800.53800.55900.59400.61200.273800.2720900 | WATERPROOFING WORK FOR TOILETS, KITCHEN SUNK & PLANTERS | 8d | 2026-07-10 | 2026-07-17 | 5132 |  | RGA -FINISHING | 7399725 |

| ID | WBS | Task | Duration | Start | Finish | Predecessors | Constraint | Calendar | Unique_Task_ID |
| --- | --- | --- | --- | --- | --- | --- | --- | --- | --- |
| 5134 | 40200.40300.40800.53800.55900.59400.61200.273900 | **5th FLOOR** | 108.5d | 2026-04-27 | 2026-08-13 |  | start no earlier than 2026-04-27 | RGA -FINISHING | 7392825 |
| 5135 | 40200.40300.40800.53800.55900.59400.61200.273900.2721000 | BALCONY RAILING FIXING | 9d | 2026-07-20 | 2026-07-28 | 5014FS+16.5d |  | RGA -FINISHING | 7399735 |
| 5136 | 40200.40300.40800.53800.55900.59400.61200.273900.2721100 | Block work | 8d | 2026-08-05 | 2026-08-13 | 5140 |  | RGA -FINISHING | 7399745 |
| 5137 | 40200.40300.40800.53800.55900.59400.61200.273900.2721200 | CONCEALED ELEC CONDUITING & ITS FINISHING | 5d | 2026-04-27 | 2026-05-01 | 5002FS-8d |  | RGA -FINISHING | 7399755 |
| 5138 | 40200.40300.40800.53800.55900.59400.61200.273900.2721300 | PLASTER APPLICATION | 6d | 2026-07-14 | 2026-07-20 | 5346FS+10d |  | RGA -FINISHING | 7399765 |
| 5139 | 40200.40300.40800.53800.55900.59400.61200.273900.2721400 | CONCEALED PLUMBING | 8d | 2026-07-20 | 2026-07-28 | 5138 |  | RGA -FINISHING | 7399775 |
| 5140 | 40200.40300.40800.53800.55900.59400.61200.273900.2721500 | WATERPROOFING WORK FOR TOILETS, KITCHEN SUNK & PLANTERS | 8d | 2026-07-28 | 2026-08-05 | 5139 |  | RGA -FINISHING | 7399785 |
| 5141 | 40200.40300.40800.53800.55900.59400.61200.274000 | **6th FLOOR** | 121d | 2026-05-15 | 2026-09-12 |  | start no earlier than 2026-05-15 | RGA -FINISHING | 7392815 |
| 5142 | 40200.40300.40800.53800.55900.59400.61200.274000.2721600 | BALCONY RAILING FIXING | 9d | 2026-08-01 | 2026-08-09 | 5018FS+5d |  | RGA -FINISHING | 7399795 |
| 5143 | 40200.40300.40800.53800.55900.59400.61200.274000.2721700 | Block work | 8d | 2026-09-05 | 2026-09-12 | 5147 |  | RGA -FINISHING | 7399805 |
| 5144 | 40200.40300.40800.53800.55900.59400.61200.274000.2721800 | CONCEALED ELEC CONDUITING & ITS FINISHING | 5d | 2026-05-15 | 2026-05-19 | 5006FS-7d |  | RGA -FINISHING | 7399815 |
| 5145 | 40200.40300.40800.53800.55900.59400.61200.274000.2721900 | PLASTER APPLICATION | 6d | 2026-08-14 | 2026-08-19 | 5359FS+10d |  | RGA -FINISHING | 7399825 |
| 5146 | 40200.40300.40800.53800.55900.59400.61200.274000.2722000 | CONCEALED PLUMBING | 8d | 2026-08-20 | 2026-08-27 | 5145 |  | RGA -FINISHING | 7399835 |
| 5147 | 40200.40300.40800.53800.55900.59400.61200.274000.2722100 | WATERPROOFING WORK FOR TOILETS, KITCHEN SUNK & PLANTERS | 8d | 2026-08-28 | 2026-09-04 | 5146 |  | RGA -FINISHING | 7399845 |
| 5148 | 40200.40300.40800.53800.55900.59400.61200.274100 | **7th FLOOR** | 116d | 2026-06-01 | 2026-09-24 |  | start no earlier than 2026-06-01 | RGA -FINISHING | 7392805 |
| 5149 | 40200.40300.40800.53800.55900.59400.61200.274100.2722200 | BALCONY RAILING FIXING | 9d | 2026-08-24 | 2026-09-01 | 5022FS+11d |  | RGA -FINISHING | 7399855 |
| 5150 | 40200.40300.40800.53800.55900.59400.61200.274100.2722300 | Block work | 8d | 2026-09-17 | 2026-09-24 | 5154 |  | RGA -FINISHING | 7399865 |
| 5151 | 40200.40300.40800.53800.55900.59400.61200.274100.2722400 | CONCEALED ELEC CONDUITING & ITS FINISHING | 5d | 2026-06-01 | 2026-06-05 | 5010FS-7d |  | RGA -FINISHING | 7399875 |
| 5152 | 40200.40300.40800.53800.55900.59400.61200.274100.2722500 | PLASTER APPLICATION | 6d | 2026-08-26 | 2026-08-31 | 5372FS+10d |  | RGA -FINISHING | 7399885 |
| 5153 | 40200.40300.40800.53800.55900.59400.61200.274100.2722600 | CONCEALED PLUMBING | 8d | 2026-09-01 | 2026-09-08 | 5152 |  | RGA -FINISHING | 7399895 |
| 5154 | 40200.40300.40800.53800.55900.59400.61200.274100.2722700 | WATERPROOFING WORK FOR TOILETS, KITCHEN SUNK & PLANTERS | 8d | 2026-09-09 | 2026-09-16 | 5153 |  | RGA -FINISHING | 7399905 |
| 5155 | 40200.40300.40800.53800.55900.59400.61200.274200 | **8th FLOOR** | 139d | 2026-06-24 | 2026-11-09 |  | start no earlier than 2026-06-24 | RGA -FINISHING | 7392795 |
| 5156 | 40200.40300.40800.53800.55900.59400.61200.274200.2722800 | BALCONY RAILING FIXING | 9d | 2026-09-10 | 2026-09-18 | 5026FS+10d |  | RGA -FINISHING | 7399915 |
| 5157 | 40200.40300.40800.53800.55900.59400.61200.274200.2722900 | Block work | 8d | 2026-11-02 | 2026-11-09 | 5161 |  | RGA -FINISHING | 7399925 |
| 5158 | 40200.40300.40800.53800.55900.59400.61200.274200.2723000 | CONCEALED ELEC CONDUITING & ITS FINISHING | 5d | 2026-06-24 | 2026-06-28 | 5014FS-9.5d |  | RGA -FINISHING | 7399935 |
| 5159 | 40200.40300.40800.53800.55900.59400.61200.274200.2723100 | PLASTER APPLICATION | 6d | 2026-10-11 | 2026-10-16 | 5385FS+10d |  | RGA -FINISHING | 7399945 |
| 5160 | 40200.40300.40800.53800.55900.59400.61200.274200.2723200 | CONCEALED PLUMBING | 8d | 2026-10-17 | 2026-10-24 | 5159 |  | RGA -FINISHING | 7399955 |
| 5161 | 40200.40300.40800.53800.55900.59400.61200.274200.2723300 | WATERPROOFING WORK FOR TOILETS, KITCHEN SUNK & PLANTERS | 8d | 2026-10-25 | 2026-11-01 | 5160 |  | RGA -FINISHING | 7399965 |

| ID | WBS | Task | Duration | Start | Finish | Predecessors | Constraint | Calendar | Unique_Task_ID |
| --- | --- | --- | --- | --- | --- | --- | --- | --- | --- |
| 5162 | 40200.40300.40800.53800.55900.59400.61200.274300 | **9th FLOOR** | 89d | 2026-07-22 | 2026-10-18 |  | start no earlier than 2026-07-22 | RGA -FINISHING | 7392785 |
| 5163 | 40200.40300.40800.53800.55900.59400.61200.274300.2723400 | BALCONY RAILING FIXING | 9d | 2026-09-27 | 2026-10-05 | 5030FS+10d |  | RGA -FINISHING | 7399975 |
| 5164 | 40200.40300.40800.53800.55900.59400.61200.274300.2723500 | Block work | 8d | 2026-10-11 | 2026-10-18 | 5168 |  | RGA -FINISHING | 7399985 |
| 5165 | 40200.40300.40800.53800.55900.59400.61200.274300.2723600 | CONCEALED ELEC CONDUITING & ITS FINISHING | 5d | 2026-07-22 | 2026-07-26 | 5018FS-5d |  | RGA -FINISHING | 7399995 |
| 5166 | 40200.40300.40800.53800.55900.59400.61200.274300.2723700 | PLASTER APPLICATION | 6d | 2026-10-05 | 2026-10-10 | 5398FS+10d |  | RGA -FINISHING | 7400005 |
| 5167 | 40200.40300.40800.53800.55900.59400.61200.274300.2723800 | CONCEALED PLUMBING | 8d | 2026-09-25 | 2026-10-02 | 5398 |  | RGA -FINISHING | 7400015 |
| 5168 | 40200.40300.40800.53800.55900.59400.61200.274300.2723900 | WATERPROOFING WORK FOR TOILETS, KITCHEN SUNK & PLANTERS | 8d | 2026-10-03 | 2026-10-10 | 5167 |  | RGA -FINISHING | 7400025 |
| 5169 | 40200.40300.40800.53800.55900.59400.61200.274400 | **10th FLOOR** | 107d | 2026-08-06 | 2026-11-20 |  | start no earlier than 2026-08-06 | RGA -FINISHING | 7392775 |
| 5170 | 40200.40300.40800.53800.55900.59400.61200.274400.2724000 | BALCONY RAILING FIXING | 9d | 2026-10-15 | 2026-10-23 | 5034FS+10d |  | RGA -FINISHING | 7400035 |
| 5171 | 40200.40300.40800.53800.55900.59400.61200.274400.2724100 | Block work | 8d | 2026-11-13 | 2026-11-20 | 5175 |  | RGA -FINISHING | 7400045 |
| 5172 | 40200.40300.40800.53800.55900.59400.61200.274400.2724200 | CONCEALED ELEC CONDUITING & ITS FINISHING | 5d | 2026-08-06 | 2026-08-10 | 5022FS-7d |  | RGA -FINISHING | 7400055 |
| 5173 | 40200.40300.40800.53800.55900.59400.61200.274400.2724300 | PLASTER APPLICATION | 6d | 2026-10-22 | 2026-10-27 | 5411FS+10d |  | RGA -FINISHING | 7400065 |
| 5174 | 40200.40300.40800.53800.55900.59400.61200.274400.2724400 | CONCEALED PLUMBING | 8d | 2026-10-28 | 2026-11-04 | 5173 |  | RGA -FINISHING | 7400075 |
| 5175 | 40200.40300.40800.53800.55900.59400.61200.274400.2724500 | WATERPROOFING WORK FOR TOILETS, KITCHEN SUNK & PLANTERS | 8d | 2026-11-05 | 2026-11-12 | 5174 |  | RGA -FINISHING | 7400085 |
| 5176 | 40200.40300.40800.53800.55900.59400.61200.274500 | **11th FLOOR** | 107d | 2026-08-24 | 2026-12-08 |  | start no earlier than 2026-08-24 | RGA -FINISHING | 7392765 |
| 5177 | 40200.40300.40800.53800.55900.59400.61200.274500.2724600 | BALCONY RAILING FIXING | 9d | 2026-11-01 | 2026-11-09 | 5038FS+10d |  | RGA -FINISHING | 7400095 |
| 5178 | 40200.40300.40800.53800.55900.59400.61200.274500.2724700 | Block work | 8d | 2026-12-01 | 2026-12-08 | 5182 |  | RGA -FINISHING | 7400105 |
| 5179 | 40200.40300.40800.53800.55900.59400.61200.274500.2724800 | CONCEALED ELEC CONDUITING & ITS FINISHING | 5d | 2026-08-24 | 2026-08-28 | 5026FS-7d |  | RGA -FINISHING | 7400115 |
| 5180 | 40200.40300.40800.53800.55900.59400.61200.274500.2724900 | PLASTER APPLICATION | 6d | 2026-11-09 | 2026-11-14 | 5424FS+10d |  | RGA -FINISHING | 7400125 |
| 5181 | 40200.40300.40800.53800.55900.59400.61200.274500.2725000 | CONCEALED PLUMBING | 8d | 2026-11-15 | 2026-11-22 | 5180 |  | RGA -FINISHING | 7400135 |
| 5182 | 40200.40300.40800.53800.55900.59400.61200.274500.2725100 | WATERPROOFING WORK FOR TOILETS, KITCHEN SUNK & PLANTERS | 8d | 2026-11-23 | 2026-11-30 | 5181 |  | RGA -FINISHING | 7400145 |
| 5183 | 40200.40300.40800.53800.55900.59400.61200.274600 | **12th FLOOR** | 99d | 2026-09-10 | 2026-12-17 |  | start no earlier than 2026-09-10 | RGA -FINISHING | 7392755 |
| 5184 | 40200.40300.40800.53800.55900.59400.61200.274600.2725200 | BALCONY RAILING FIXING | 9d | 2026-11-08 | 2026-11-16 | 5042 |  | RGA -FINISHING | 7400155 |
| 5185 | 40200.40300.40800.53800.55900.59400.61200.274600.2725300 | Block work | 8d | 2026-12-10 | 2026-12-17 | 5188 |  | RGA -FINISHING | 7400165 |
| 5186 | 40200.40300.40800.53800.55900.59400.61200.274600.2725400 | CONCEALED ELEC CONDUITING & ITS FINISHING | 5d | 2026-09-10 | 2026-09-14 | 5030FS-7d |  | RGA -FINISHING | 7400175 |
| 5187 | 40200.40300.40800.53800.55900.59400.61200.274600.2725500 | PLASTER APPLICATION | 6d | 2026-11-26 | 2026-12-01 | 5437FS+10d |  | RGA -FINISHING | 7400185 |
| 5188 | 40200.40300.40800.53800.55900.59400.61200.274600.2725600 | CONCEALED PLUMBING | 8d | 2026-12-02 | 2026-12-09 | 5187 |  | RGA -FINISHING | 7400195 |
| 5189 | 40200.40300.40800.53800.55900.59400.61200.274600.2725700 | WATERPROOFING WORK FOR TOILETS, KITCHEN SUNK & PLANTERS | 8d | 2026-12-10 | 2026-12-17 | 5188 |  | RGA -FINISHING | 7400205 |

| ID | WBS | Task | Duration | Start | Finish | Predecessors | Constraint | Calendar | Unique_Task_ID |
| --- | --- | --- | --- | --- | --- | --- | --- | --- | --- |
| 5190 | 40200.40300.40800.53800.55900.59400.61200.274700 | **13th FLOOR** | 111d | 2026-09-27 | 2027-01-15 |  | start no earlier than 2026-09-27 | RGA -FINISHING | 7392745 |
| 5191 | 40200.40300.40800.53800.55900.59400.61200.274700.2725800 | BALCONY RAILING FIXING | 9d | 2026-12-03 | 2026-12-12 | 5046 |  | RGA -FINISHING | 7400215 |
| 5192 | 40200.40300.40800.53800.55900.59400.61200.274700.2725900 | Block work | 8d | 2027-01-08 | 2027-01-15 | 5196 |  | RGA -FINISHING | 7400225 |
| 5193 | 40200.40300.40800.53800.55900.59400.61200.274700.2726000 | CONCEALED ELEC CONDUITING & ITS FINISHING | 5d | 2026-09-27 | 2026-10-01 | 5034FS-8d |  | RGA -FINISHING | 7400235 |
| 5194 | 40200.40300.40800.53800.55900.59400.61200.274700.2726100 | PLASTER APPLICATION | 15d | 2026-12-03 | 2026-12-17 | 5450FS+10d |  | RGA -FINISHING | 7400245 |
| 5195 | 40200.40300.40800.53800.55900.59400.61200.274700.2726200 | CONCEALED PLUMBING | 9d | 2026-12-18 | 2026-12-26 | 5194 |  | RGA -FINISHING | 7400255 |
| 5196 | 40200.40300.40800.53800.55900.59400.61200.274700.2726300 | WATERPROOFING WORK FOR TOILETS, KITCHEN SUNK & PLANTERS | 12d | 2026-12-27 | 2027-01-07 | 5195 |  | RGA -FINISHING | 7400265 |
| 5197 | 40200.40300.40800.53800.55900.59400.61200.274800 | **14th FLOOR** | 120.5d | 2026-10-15 | 2027-02-12 |  | start no earlier than 2026-10-15 | RGA -FINISHING | 7392725 |
| 5198 | 40200.40300.40800.53800.55900.59400.61200.274800.2726400 | BALCONY RAILING FIXING | 9d | 2026-12-27 | 2027-01-04 | 5050 |  | RGA -FINISHING | 7400275 |
| 5199 | 40200.40300.40800.53800.55900.59400.61200.274800.2726500 | Block work | 8d | 2027-02-04 | 2027-02-12 | 5203 |  | RGA -FINISHING | 7400285 |
| 5200 | 40200.40300.40800.53800.55900.59400.61200.274800.2726600 | CONCEALED ELEC CONDUITING & ITS FINISHING | 5d | 2026-10-15 | 2026-10-19 | 5038FS-7d |  | RGA -FINISHING | 7400295 |
| 5201 | 40200.40300.40800.53800.55900.59400.61200.274800.2726700 | PLASTER APPLICATION | 15d | 2026-12-30 | 2027-01-14 | 5463FS+10d |  | RGA -FINISHING | 7400305 |
| 5202 | 40200.40300.40800.53800.55900.59400.61200.274800.2726800 | CONCEALED PLUMBING | 9d | 2027-01-14 | 2027-01-23 | 5201 |  | RGA -FINISHING | 7400315 |
| 5203 | 40200.40300.40800.53800.55900.59400.61200.274800.2726900 | WATERPROOFING WORK FOR TOILETS, KITCHEN SUNK & PLANTERS | 12d | 2027-01-23 | 2027-02-04 | 5202 |  | RGA -FINISHING | 7400325 |
| 5204 | 40200.40300.40800.53800.55900.59400.61200.274900 | **15th FLOOR** | 127d | 2026-11-01 | 2027-03-07 |  | start no earlier than 2026-11-01 | RGA -FINISHING | 7392715 |
| 5205 | 40200.40300.40800.53800.55900.59400.61200.274900.2727000 | BALCONY RAILING FIXING | 9d | 2027-01-13 | 2027-01-21 | 5054 |  | RGA -FINISHING | 7400335 |
| 5206 | 40200.40300.40800.53800.55900.59400.61200.274900.2727100 | Block work | 8d | 2027-02-28 | 2027-03-07 | 5210 |  | RGA -FINISHING | 7400345 |
| 5207 | 40200.40300.40800.53800.55900.59400.61200.274900.2727200 | CONCEALED ELEC CONDUITING & ITS FINISHING | 5d | 2026-11-01 | 2026-11-05 | 5042FS-7d |  | RGA -FINISHING | 7400355 |
| 5208 | 40200.40300.40800.53800.55900.59400.61200.274900.2727300 | PLASTER APPLICATION | 15d | 2027-01-23 | 2027-02-06 | 5476FS+10d |  | RGA -FINISHING | 7400365 |
| 5209 | 40200.40300.40800.53800.55900.59400.61200.274900.2727400 | CONCEALED PLUMBING | 9d | 2027-02-07 | 2027-02-15 | 5208 |  | RGA -FINISHING | 7400375 |
| 5210 | 40200.40300.40800.53800.55900.59400.61200.274900.2727500 | WATERPROOFING WORK FOR TOILETS, KITCHEN SUNK & PLANTERS | 12d | 2027-02-16 | 2027-02-27 | 5209 |  | RGA -FINISHING | 7400385 |
| 5211 | 40200.40300.40800.53800.55900.59400.61200.275000 | **16th FLOOR** | 125d | 2026-11-20 | 2027-03-24 |  | start no earlier than 2026-11-20 | RGA -FINISHING | 7392705 |
| 5212 | 40200.40300.40800.53800.55900.59400.61200.275000.2727600 | BALCONY RAILING FIXING | 9d | 2027-01-30 | 2027-02-07 | 5058 |  | RGA -FINISHING | 7400395 |
| 5213 | 40200.40300.40800.53800.55900.59400.61200.275000.2727700 | Block work | 8d | 2027-03-17 | 2027-03-24 | 5217 |  | RGA -FINISHING | 7400405 |
| 5214 | 40200.40300.40800.53800.55900.59400.61200.275000.2727800 | CONCEALED ELEC CONDUITING & ITS FINISHING | 5d | 2026-11-20 | 2026-11-24 | 5046FS-13.5d |  | RGA -FINISHING | 7400415 |
| 5215 | 40200.40300.40800.53800.55900.59400.61200.275000.2727900 | PLASTER APPLICATION | 15d | 2027-02-09 | 2027-02-23 | 5489FS+10d |  | RGA -FINISHING | 7400425 |
| 5216 | 40200.40300.40800.53800.55900.59400.61200.275000.2728000 | CONCEALED PLUMBING | 9d | 2027-02-24 | 2027-03-04 | 5215 |  | RGA -FINISHING | 7400435 |
| 5217 | 40200.40300.40800.53800.55900.59400.61200.275000.2728100 | WATERPROOFING WORK FOR TOILETS, KITCHEN SUNK & PLANTERS | 12d | 2027-03-05 | 2027-03-16 | 5216 |  | RGA -FINISHING | 7400445 |

| ID | WBS | Task | Duration | Start | Finish | Predecessors | Constraint | Calendar | Unique_Task_ID |
| --- | --- | --- | --- | --- | --- | --- | --- | --- | --- |
| 5218 | 40200.40300.40800.53800.55900.59400.61200.275100 | **17th FLOOR** | 112d | 2026-12-20 | 2027-04-10 |  | start no earlier than 2026-12-20 | RGA -FINISHING | 7392695 |
| 5219 | 40200.40300.40800.53800.55900.59400.61200.275100.2728200 | BALCONY RAILING FIXING | 9d | 2027-02-16 | 2027-02-24 | 5062 |  | RGA -FINISHING | 7400455 |
| 5220 | 40200.40300.40800.53800.55900.59400.61200.275100.2728300 | Block work | 8d | 2027-04-03 | 2027-04-10 | 5224 |  | RGA -FINISHING | 7400465 |
| 5221 | 40200.40300.40800.53800.55900.59400.61200.275100.2728400 | CONCEALED ELEC CONDUITING & ITS FINISHING | 5d | 2026-12-20 | 2026-12-24 | 5050FS-7d |  | RGA -FINISHING | 7400475 |
| 5222 | 40200.40300.40800.53800.55900.59400.61200.275100.2728500 | PLASTER APPLICATION | 15d | 2027-02-26 | 2027-03-12 | 5502FS+10d |  | RGA -FINISHING | 7400485 |
| 5223 | 40200.40300.40800.53800.55900.59400.61200.275100.2728600 | CONCEALED PLUMBING | 9d | 2027-03-13 | 2027-03-21 | 5222 |  | RGA -FINISHING | 7400495 |
| 5224 | 40200.40300.40800.53800.55900.59400.61200.275100.2728700 | WATERPROOFING WORK FOR TOILETS, KITCHEN SUNK & PLANTERS | 12d | 2027-03-22 | 2027-04-02 | 5223 |  | RGA -FINISHING | 7400505 |
| 5225 | 40200.40300.40800.53800.55900.59400.61200.275200 | **18th FLOOR** | 112d | 2027-01-06 | 2027-04-27 |  | start no earlier than 2027-01-06 | RGA -FINISHING | 7392685 |
| 5226 | 40200.40300.40800.53800.55900.59400.61200.275200.2728800 | BALCONY RAILING FIXING | 9d | 2027-03-05 | 2027-03-13 | 5066 |  | RGA -FINISHING | 7400515 |
| 5227 | 40200.40300.40800.53800.55900.59400.61200.275200.2728900 | Block work | 8d | 2027-04-20 | 2027-04-27 | 5231 |  | RGA -FINISHING | 7400525 |
| 5228 | 40200.40300.40800.53800.55900.59400.61200.275200.2729000 | CONCEALED ELEC CONDUITING & ITS FINISHING | 5d | 2027-01-06 | 2027-01-10 | 5054FS-7d |  | RGA -FINISHING | 7400535 |
| 5229 | 40200.40300.40800.53800.55900.59400.61200.275200.2729100 | PLASTER APPLICATION | 15d | 2027-03-15 | 2027-03-29 | 5515FS+10d |  | RGA -FINISHING | 7400545 |
| 5230 | 40200.40300.40800.53800.55900.59400.61200.275200.2729200 | CONCEALED PLUMBING | 9d | 2027-03-30 | 2027-04-07 | 5229 |  | RGA -FINISHING | 7400555 |
| 5231 | 40200.40300.40800.53800.55900.59400.61200.275200.2729300 | WATERPROOFING WORK FOR TOILETS, KITCHEN SUNK & PLANTERS | 12d | 2027-04-08 | 2027-04-19 | 5230 |  | RGA -FINISHING | 7400565 |
| 5232 | 40200.40300.40800.53800.55900.59400.61200.275300 | **19th FLOOR** | 112d | 2027-01-23 | 2027-05-14 |  | start no earlier than 2027-01-23 | RGA -FINISHING | 7392675 |
| 5233 | 40200.40300.40800.53800.55900.59400.61200.275300.2729400 | BALCONY RAILING FIXING | 9d | 2027-03-22 | 2027-03-30 | 5070 |  | RGA -FINISHING | 7400575 |
| 5234 | 40200.40300.40800.53800.55900.59400.61200.275300.2729500 | Block work | 8d | 2027-05-07 | 2027-05-14 | 5238 |  | RGA -FINISHING | 7400585 |
| 5235 | 40200.40300.40800.53800.55900.59400.61200.275300.2729600 | CONCEALED ELEC CONDUITING & ITS FINISHING | 5d | 2027-01-23 | 2027-01-27 | 5058FS-7d |  | RGA -FINISHING | 7400595 |
| 5236 | 40200.40300.40800.53800.55900.59400.61200.275300.2729700 | PLASTER APPLICATION | 15d | 2027-04-01 | 2027-04-15 | 5528FS+10d |  | RGA -FINISHING | 7400605 |
| 5237 | 40200.40300.40800.53800.55900.59400.61200.275300.2729800 | CONCEALED PLUMBING | 9d | 2027-04-16 | 2027-04-24 | 5236 |  | RGA -FINISHING | 7400615 |
| 5238 | 40200.40300.40800.53800.55900.59400.61200.275300.2729900 | WATERPROOFING WORK FOR TOILETS, KITCHEN SUNK & PLANTERS | 12d | 2027-04-25 | 2027-05-06 | 5237 |  | RGA -FINISHING | 7400625 |
| 5239 | 40200.40300.40800.53800.55900.59400.61200.275400 | **20th FLOOR** | 112d | 2027-02-09 | 2027-05-31 |  | start no earlier than 2027-02-09 | RGA -FINISHING | 7392665 |
| 5240 | 40200.40300.40800.53800.55900.59400.61200.275400.2730000 | BALCONY RAILING FIXING | 9d | 2027-04-08 | 2027-04-16 | 5074 |  | RGA -FINISHING | 7400635 |
| 5241 | 40200.40300.40800.53800.55900.59400.61200.275400.2730100 | Block work | 8d | 2027-05-24 | 2027-05-31 | 5245 |  | RGA -FINISHING | 7400645 |
| 5242 | 40200.40300.40800.53800.55900.59400.61200.275400.2730200 | CONCEALED ELEC CONDUITING & ITS FINISHING | 5d | 2027-02-09 | 2027-02-13 | 5062FS-7d |  | RGA -FINISHING | 7400655 |
| 5243 | 40200.40300.40800.53800.55900.59400.61200.275400.2730300 | PLASTER APPLICATION | 15d | 2027-04-18 | 2027-05-02 | 5541FS+10d |  | RGA -FINISHING | 7400665 |
| 5244 | 40200.40300.40800.53800.55900.59400.61200.275400.2730400 | CONCEALED PLUMBING | 9d | 2027-05-03 | 2027-05-11 | 5243 |  | RGA -FINISHING | 7400675 |
| 5245 | 40200.40300.40800.53800.55900.59400.61200.275400.2730500 | WATERPROOFING WORK FOR TOILETS, KITCHEN SUNK & PLANTERS | 12d | 2027-05-12 | 2027-05-23 | 5244 |  | RGA -FINISHING | 7400685 |

Notes:
- 5227: Last floor BW completion 2 months post Last RCC
- 5234: Last floor BW completion 2 months post Last RCC
- 5241: Last floor BW completion 2 months post Last RCC

| ID | WBS | Task | Duration | Start | Finish | Predecessors | Constraint | Calendar | Unique_Task_ID |
| --- | --- | --- | --- | --- | --- | --- | --- | --- | --- |
| 5246 | 40200.40300.40800.53800.55900.59400.61200.275500 | **21th FLOOR** | 112d | 2027-02-26 | 2027-06-17 |  | start no earlier than 2027-02-26 | RGA -FINISHING | 7392655 |
| 5247 | 40200.40300.40800.53800.55900.59400.61200.275500.2730600 | BALCONY RAILING FIXING | 9d | 2027-04-25 | 2027-05-03 | 5078 |  | RGA -FINISHING | 7400695 |
| 5248 | 40200.40300.40800.53800.55900.59400.61200.275500.2730700 | Block work | 8d | 2027-06-10 | 2027-06-17 | 5252 |  | RGA -FINISHING | 7400705 |
| 5249 | 40200.40300.40800.53800.55900.59400.61200.275500.2730800 | CONCEALED ELEC CONDUITING & ITS FINISHING | 5d | 2027-02-26 | 2027-03-02 | 5066FS-7d |  | RGA -FINISHING | 7400715 |
| 5250 | 40200.40300.40800.53800.55900.59400.61200.275500.2730900 | PLASTER APPLICATION | 15d | 2027-05-05 | 2027-05-19 | 5554FS+10d |  | RGA -FINISHING | 7400725 |
| 5251 | 40200.40300.40800.53800.55900.59400.61200.275500.2731000 | CONCEALED PLUMBING | 9d | 2027-05-20 | 2027-05-28 | 5250 |  | RGA -FINISHING | 7400735 |
| 5252 | 40200.40300.40800.53800.55900.59400.61200.275500.2731100 | WATERPROOFING WORK FOR TOILETS, KITCHEN SUNK & PLANTERS | 12d | 2027-05-29 | 2027-06-09 | 5251 |  | RGA -FINISHING | 7400745 |
| 5253 | 40200.40300.40800.53800.55900.59400.61200.275600 | **22th FLOOR** | 112d | 2027-03-15 | 2027-07-04 |  | start no earlier than 2027-03-15 | RGA -FINISHING | 7392645 |
| 5254 | 40200.40300.40800.53800.55900.59400.61200.275600.2731200 | BALCONY RAILING FIXING | 9d | 2027-05-12 | 2027-05-20 | 5082 |  | RGA -FINISHING | 7400755 |
| 5255 | 40200.40300.40800.53800.55900.59400.61200.275600.2731300 | Block work | 8d | 2027-06-27 | 2027-07-04 | 5259 |  | RGA -FINISHING | 7400765 |
| 5256 | 40200.40300.40800.53800.55900.59400.61200.275600.2731400 | CONCEALED ELEC CONDUITING & ITS FINISHING | 5d | 2027-03-15 | 2027-03-19 | 5070FS-7d |  | RGA -FINISHING | 7400775 |
| 5257 | 40200.40300.40800.53800.55900.59400.61200.275600.2731500 | PLASTER APPLICATION | 15d | 2027-05-22 | 2027-06-05 | 5567FS+10d |  | RGA -FINISHING | 7400785 |
| 5258 | 40200.40300.40800.53800.55900.59400.61200.275600.2731600 | CONCEALED PLUMBING | 9d | 2027-06-06 | 2027-06-14 | 5257 |  | RGA -FINISHING | 7400795 |
| 5259 | 40200.40300.40800.53800.55900.59400.61200.275600.2731700 | WATERPROOFING WORK FOR TOILETS, KITCHEN SUNK & PLANTERS | 12d | 2027-06-15 | 2027-06-26 | 5258 |  | RGA -FINISHING | 7400805 |
| 5260 | 40200.40300.40800.53800.55900.59400.61200.275700 | **23th FLOOR** | 162d | 2027-04-01 | 2027-09-09 |  | start no earlier than 2027-04-01 | RGA -FINISHING | 7392635 |
| 5261 | 40200.40300.40800.53800.55900.59400.61200.275700.2731800 | BALCONY RAILING FIXING | 9d | 2027-05-21 | 2027-05-29 | 5254 |  | RGA -FINISHING | 7400815 |
| 5262 | 40200.40300.40800.53800.55900.59400.61200.275700.2731900 | Block work | 8d | 2027-09-02 | 2027-09-09 | 5266 |  | RGA -FINISHING | 7400825 |
| 5263 | 40200.40300.40800.53800.55900.59400.61200.275700.2732000 | CONCEALED ELEC CONDUITING & ITS FINISHING | 5d | 2027-04-01 | 2027-04-05 | 5074FS-7d |  | RGA -FINISHING | 7400835 |
| 5264 | 40200.40300.40800.53800.55900.59400.61200.275700.2732100 | PLASTER APPLICATION | 15d | 2027-07-28 | 2027-08-11 | 5580FS+60d |  | RGA -FINISHING | 7400845 |
| 5265 | 40200.40300.40800.53800.55900.59400.61200.275700.2732200 | CONCEALED PLUMBING | 9d | 2027-08-12 | 2027-08-20 | 5264 |  | RGA -FINISHING | 7400855 |
| 5266 | 40200.40300.40800.53800.55900.59400.61200.275700.2732300 | WATERPROOFING WORK FOR TOILETS, KITCHEN SUNK & PLANTERS | 12d | 2027-08-21 | 2027-09-01 | 5265 |  | RGA -FINISHING | 7400865 |
| 5267 | 40200.40300.40800.53800.55900.59400.61200.275800 | **24th FLOOR** | 154d | 2027-04-18 | 2027-09-18 |  | start no earlier than 2027-04-18 | RGA -FINISHING | 7392625 |
| 5268 | 40200.40300.40800.53800.55900.59400.61200.275800.2732400 | BALCONY RAILING FIXING | 9d | 2027-06-19 | 2027-06-27 | 5261FS+20d |  | RGA -FINISHING | 7400875 |
| 5269 | 40200.40300.40800.53800.55900.59400.61200.275800.2732500 | Block work | 8d | 2027-09-11 | 2027-09-18 | 5273 |  | RGA -FINISHING | 7400885 |
| 5270 | 40200.40300.40800.53800.55900.59400.61200.275800.2732600 | CONCEALED ELEC CONDUITING & ITS FINISHING | 5d | 2027-04-18 | 2027-04-22 | 5078FS-7d |  | RGA -FINISHING | 7400895 |
| 5271 | 40200.40300.40800.53800.55900.59400.61200.275800.2732700 | PLASTER APPLICATION | 15d | 2027-08-06 | 2027-08-20 | 5593FS+60d |  | RGA -FINISHING | 7400905 |
| 5272 | 40200.40300.40800.53800.55900.59400.61200.275800.2732800 | CONCEALED PLUMBING | 9d | 2027-08-21 | 2027-08-29 | 5271 |  | RGA -FINISHING | 7400915 |
| 5273 | 40200.40300.40800.53800.55900.59400.61200.275800.2732900 | WATERPROOFING WORK FOR TOILETS, KITCHEN SUNK & PLANTERS | 12d | 2027-08-30 | 2027-09-10 | 5272 |  | RGA -FINISHING | 7400925 |

Notes:
- 5248: Last floor BW completion 2 months post Last RCC
- 5255: Last floor BW completion 2 months post Last RCC
- 5262: Last floor BW completion 2 months post Last RCC
- 5269: Last floor BW completion 2 months post Last RCC

| ID | WBS | Task | Duration | Start | Finish | Predecessors | Constraint | Calendar | Unique_Task_ID |
| --- | --- | --- | --- | --- | --- | --- | --- | --- | --- |
| 5274 | 40200.40300.40800.53800.55900.59400.61200.275900 | **25thFLOOR** | 146d | 2027-05-05 | 2027-09-27 |  | start no earlier than 2027-05-05 | RGA -FINISHING | 7392615 |
| 5275 | 40200.40300.40800.53800.55900.59400.61200.275900.2733000 | BALCONY RAILING FIXING | 9d | 2027-07-18 | 2027-07-26 | 5268FS+20d |  | RGA -FINISHING | 7400935 |
| 5276 | 40200.40300.40800.53800.55900.59400.61200.275900.2733100 | Block work | 8d | 2027-09-20 | 2027-09-27 | 5280 |  | RGA -FINISHING | 7400945 |
| 5277 | 40200.40300.40800.53800.55900.59400.61200.275900.2733200 | CONCEALED ELEC CONDUITING & ITS FINISHING | 5d | 2027-05-05 | 2027-05-09 | 5082FS-7d |  | RGA -FINISHING | 7400955 |
| 5278 | 40200.40300.40800.53800.55900.59400.61200.275900.2733300 | PLASTER APPLICATION | 15d | 2027-08-15 | 2027-08-29 | 5606FS+40d |  | RGA -FINISHING | 7400965 |
| 5279 | 40200.40300.40800.53800.55900.59400.61200.275900.2733400 | CONCEALED PLUMBING | 9d | 2027-08-30 | 2027-09-07 | 5278 |  | RGA -FINISHING | 7400975 |
| 5280 | 40200.40300.40800.53800.55900.59400.61200.275900.2733500 | WATERPROOFING WORK FOR TOILETS, KITCHEN SUNK & PLANTERS | 12d | 2027-09-08 | 2027-09-19 | 5279 |  | RGA -FINISHING | 7400985 |
| 5281 | 40200.40300.40800.53800.55900.59400.61200.373000 | **LMR(To be deleted)** | 15d | 2025-11-30 | 2025-12-14 |  | start no earlier than 2025-11-30 | RGA -FINISHING | 7392845 |
| 5282 | 40200.40300.40800.53800.55900.59400.61200.373000.2733600 | Block work | 8d | 2025-11-30 | 2025-12-07 |  | start no earlier than 2025-11-30 | RGA -FINISHING | 7401415 |
| 5283 | 40200.40300.40800.53800.55900.59400.61200.373000.2733700 | CONCEALED ELEC CONDUITING & ITS FINISHING | 7d | 2025-11-30 | 2025-12-06 |  | start no earlier than 2025-11-30 | RGA -FINISHING | 7401425 |
| 5284 | 40200.40300.40800.53800.55900.59400.61200.373000.2733800 | PLASTER APPLICATION | 15d | 2025-11-30 | 2025-12-14 |  | start no earlier than 2025-11-30 | RGA -FINISHING | 7401435 |
| 5285 | 40200.40300.40800.53800.55900.59400.61200.373000.2733900 | DOOR FRAME FIXING | 3d | 2025-11-30 | 2025-12-02 |  | start no earlier than 2025-11-30 | RGA -FINISHING | 7401445 |
| 5286 | 40200.40300.40800.53800.55900.59400.507400 | **Terrace Finishing works** | 30d | 2028-01-16 | 2028-02-14 |  | start no earlier than 2028-01-16 | RGA -FINISHING | 7392895 |
| 5287 | 40200.40300.40800.53800.55900.59400.507400.2372900 | Terrace Waterproofing work | 30d | 2028-01-16 | 2028-02-14 | 5289FS+7d |  | RGA -FINISHING | 7392915 |
| 5288 | 40200.40300.40800.53800.55900.59400.507500 | **EXTERNAL Painting** | 215d | 2027-06-08 | 2028-01-08 |  | start no earlier than 2027-06-08 | RGA -FINISHING | 7392885 |
| 5289 | 40200.40300.40800.53800.55900.59400.507500.2373000 | 2nd coat | 215d | 2027-06-08 | 2028-01-08 | 5086FS+10d |  | RGA -FINISHING | 7392925 |
| 5290 | 40200.40300.40800.53800.55900.58400 | **Flat internal finishing & services works** | 771d | 2026-01-14 | 2028-02-23 |  | start no earlier than 2026-01-14 | RGA -FINISHING | 7803372 |
| 5291 | 40200.40300.40800.53800.55900.58400.144400 | **GROUND FLOOR** | 689d | 2026-01-14 | 2027-12-03 |  | start no earlier than 2026-01-14 | RGA -FINISHING | 7391835 |
| 5292 | 40200.40300.40800.53800.55900.58400.144400.2373100 | TOILET DADO TILE FIXING | 10d | 2026-01-14 | 2026-01-23 | 5101 |  | RGA -FINISHING | 7393055 |
| 5293 | 40200.40300.40800.53800.55900.58400.144400.2373200 | TOILET FLOORING WORK | 7d | 2026-01-24 | 2026-01-30 | 5292 |  | RGA -FINISHING | 7393065 |
| 5294 | 40200.40300.40800.53800.55900.58400.144400.2373300 | FIRE FIGHTING | 15d | 2026-04-15 | 2026-04-29 | 5100 |  | RGA -FINISHING | 7393075 |
| 5295 | 40200.40300.40800.53800.55900.58400.144400.2373400 | INTERNAL PAINTING - PUTTY / PRIMER APPLICATION | 15d | 2026-03-05 | 2026-03-19 | 5297 |  | RGA -FINISHING | 7393085 |
| 5296 | 40200.40300.40800.53800.55900.58400.144400.2373500 | FLAT FLOORING | 11d | 2026-01-31 | 2026-02-10 | 5293 |  | RGA -FINISHING | 7393095 |
| 5297 | 40200.40300.40800.53800.55900.58400.144400.2373600 | WINDOW FIXING | 12d | 2026-02-21 | 2026-03-04 | 5296FS+10d |  | RGA -FINISHING | 7393105 |
| 5298 | 40200.40300.40800.53800.55900.58400.144400.2373700 | INTERNAL PAINTING - 1ST COAT | 12d | 2026-03-20 | 2026-03-31 | 5295 |  | RGA -FINISHING | 7393115 |
| 5299 | 40200.40300.40800.53800.55900.58400.144400.2373800 | INTERNAL DOOR FIXING | 15d | 2026-04-01 | 2026-04-15 | 5298 |  | RGA -FINISHING | 7393125 |
| 5300 | 40200.40300.40800.53800.55900.58400.144400.2373900 | WIRING & SWITCH PLATE FIXING | 8d | 2026-04-16 | 2026-04-23 | 5299 |  | RGA -FINISHING | 7393135 |
| 5301 | 40200.40300.40800.53800.55900.58400.144400.2374000 | TOILET FALSE CEILING | 7d | 2026-04-24 | 2026-04-30 | 5300 |  | RGA -FINISHING | 7393145 |
| 5302 | 40200.40300.40800.53800.55900.58400.144400.2374100 | MAIN DOOR FRAME SHUTTER FIXING | 6d | 2027-11-20 | 2027-11-25 | 5634 |  | RGA -FINISHING | 7393155 |
| 5303 | 40200.40300.40800.53800.55900.58400.144400.2374200 | FINAL COAT PAINT | 8d | 2027-11-26 | 2027-12-03 | 5302 |  | RGA -FINISHING | 7393165 |

Notes:
- 5288: Ext Plaster (in 2 phases) completion 3.5 months post last BW
- 5290: Completion in 12 months post last RCC

| ID | WBS | Task | Duration | Start | Finish | Predecessors | Constraint | Calendar | Unique_Task_ID |
| --- | --- | --- | --- | --- | --- | --- | --- | --- | --- |
| 5304 | 40200.40300.40800.53800.55900.58400.144500 | **1ST FLOOR** | 589d | 2026-05-06 | 2027-12-15 |  | start no earlier than 2026-05-06 | RGA -FINISHING | 7391845 |
| 5305 | 40200.40300.40800.53800.55900.58400.144500.2374300 | TOILET DADO TILE FIXING | 7d | 2026-05-30 | 2026-06-05 | 5108 |  | RGA -FINISHING | 7393175 |
| 5306 | 40200.40300.40800.53800.55900.58400.144500.2374400 | TOILET FLOORING WORK | 7d | 2026-05-30 | 2026-06-05 | 5305FF |  | RGA -FINISHING | 7393185 |
| 5307 | 40200.40300.40800.53800.55900.58400.144500.2374500 | FIRE FIGHTING | 6d | 2026-05-06 | 2026-05-11 | 5107 |  | RGA -FINISHING | 7393195 |
| 5308 | 40200.40300.40800.53800.55900.58400.144500.2374600 | INTERNAL PAINTING - PUTTY / PRIMER APPLICATION | 6d | 2026-07-03 | 2026-07-08 | 5310 |  | RGA -FINISHING | 7393205 |
| 5309 | 40200.40300.40800.53800.55900.58400.144500.2374700 | FLAT FLOORING | 5d | 2026-06-06 | 2026-06-10 | 5306 |  | RGA -FINISHING | 7393215 |
| 5310 | 40200.40300.40800.53800.55900.58400.144500.2374800 | WINDOW FIXING | 12d | 2026-06-21 | 2026-07-02 | 5309FS+10d |  | RGA -FINISHING | 7393225 |
| 5311 | 40200.40300.40800.53800.55900.58400.144500.2374900 | INTERNAL PAINTING - 1ST COAT | 12d | 2026-07-09 | 2026-07-20 | 5308 |  | RGA -FINISHING | 7393235 |
| 5312 | 40200.40300.40800.53800.55900.58400.144500.2375000 | INTERNAL DOOR FIXING | 15d | 2026-07-19 | 2026-08-02 | 5311FS-2d |  | RGA -FINISHING | 7393245 |
| 5313 | 40200.40300.40800.53800.55900.58400.144500.2375100 | WIRING & SWITCH PLATE FIXING | 8d | 2026-07-30 | 2026-08-06 | 5312FS-4d |  | RGA -FINISHING | 7393255 |
| 5314 | 40200.40300.40800.53800.55900.58400.144500.2375200 | TOILET FALSE CEILING | 7d | 2026-08-07 | 2026-08-13 | 5313 |  | RGA -FINISHING | 7393265 |
| 5315 | 40200.40300.40800.53800.55900.58400.144500.2375300 | MAIN DOOR FRAME SHUTTER FIXING | 6d | 2027-12-02 | 2027-12-07 | 5642 |  | RGA -FINISHING | 7393275 |
| 5316 | 40200.40300.40800.53800.55900.58400.144500.2375400 | FINAL COAT PAINT | 8d | 2027-12-08 | 2027-12-15 | 5315 |  | RGA -FINISHING | 7393285 |
| 5317 | 40200.40300.40800.53800.55900.58400.144600 | **2ND FLOOR** | 571d | 2026-05-24 | 2027-12-15 |  | start no earlier than 2026-05-24 | RGA -FINISHING | 7391855 |
| 5318 | 40200.40300.40800.53800.55900.58400.144600.2375500 | TOILET DADO TILE FIXING | 7d | 2026-06-21 | 2026-06-27 | 5115 |  | RGA -FINISHING | 7393295 |
| 5319 | 40200.40300.40800.53800.55900.58400.144600.2375600 | TOILET FLOORING WORK | 7d | 2026-06-28 | 2026-07-04 | 5318 |  | RGA -FINISHING | 7393305 |
| 5320 | 40200.40300.40800.53800.55900.58400.144600.2375700 | FIRE FIGHTING | 6d | 2026-05-24 | 2026-05-29 | 5114 |  | RGA -FINISHING | 7393315 |
| 5321 | 40200.40300.40800.53800.55900.58400.144600.2375800 | INTERNAL PAINTING - PUTTY / PRIMER APPLICATION | 6d | 2026-08-01 | 2026-08-06 | 5323 |  | RGA -FINISHING | 7393325 |
| 5322 | 40200.40300.40800.53800.55900.58400.144600.2375900 | FLAT FLOORING | 5d | 2026-07-05 | 2026-07-09 | 5319 |  | RGA -FINISHING | 7393335 |
| 5323 | 40200.40300.40800.53800.55900.58400.144600.2376000 | WINDOW FIXING | 12d | 2026-07-20 | 2026-07-31 | 5322FS+10d |  | RGA -FINISHING | 7393345 |
| 5324 | 40200.40300.40800.53800.55900.58400.144600.2376100 | INTERNAL PAINTING - 1ST COAT | 12d | 2026-08-07 | 2026-08-18 | 5321 |  | RGA -FINISHING | 7393355 |
| 5325 | 40200.40300.40800.53800.55900.58400.144600.2376200 | INTERNAL DOOR FIXING | 15d | 2026-08-17 | 2026-08-31 | 5324FS-2d |  | RGA -FINISHING | 7393365 |
| 5326 | 40200.40300.40800.53800.55900.58400.144600.2376300 | WIRING & SWITCH PLATE FIXING | 8d | 2026-08-28 | 2026-09-04 | 5325FS-4d |  | RGA -FINISHING | 7393375 |
| 5327 | 40200.40300.40800.53800.55900.58400.144600.2376400 | TOILET FALSE CEILING | 7d | 2026-09-05 | 2026-09-11 | 5326 |  | RGA -FINISHING | 7393385 |
| 5328 | 40200.40300.40800.53800.55900.58400.144600.2376500 | MAIN DOOR FRAME SHUTTER FIXING | 6d | 2027-12-02 | 2027-12-07 | 5650 |  | RGA -FINISHING | 7393395 |
| 5329 | 40200.40300.40800.53800.55900.58400.144600.2376600 | FINAL COAT PAINT | 8d | 2027-12-08 | 2027-12-15 | 5328 |  | RGA -FINISHING | 7393405 |

| ID | WBS | Task | Duration | Start | Finish | Predecessors | Constraint | Calendar | Unique_Task_ID |
| --- | --- | --- | --- | --- | --- | --- | --- | --- | --- |
| 5330 | 40200.40300.40800.53800.55900.58400.144700 | **3RD FLOOR** | 554d | 2026-06-10 | 2027-12-15 |  | start no earlier than 2026-06-10 | RGA -FINISHING | 7391865 |
| 5331 | 40200.40300.40800.53800.55900.58400.144700.2376700 | TOILET DADO TILE FIXING | 7d | 2026-07-09 | 2026-07-15 | 5122 |  | RGA -FINISHING | 7393415 |
| 5332 | 40200.40300.40800.53800.55900.58400.144700.2376800 | TOILET FLOORING WORK | 7d | 2026-07-16 | 2026-07-22 | 5331 |  | RGA -FINISHING | 7393425 |
| 5333 | 40200.40300.40800.53800.55900.58400.144700.2376900 | FIRE FIGHTING | 6d | 2026-06-10 | 2026-06-15 | 5121 |  | RGA -FINISHING | 7393435 |
| 5334 | 40200.40300.40800.53800.55900.58400.144700.2377000 | INTERNAL PAINTING - PUTTY / PRIMER APPLICATION | 6d | 2026-08-14 | 2026-08-19 | 5336 |  | RGA -FINISHING | 7393445 |
| 5335 | 40200.40300.40800.53800.55900.58400.144700.2377100 | FLAT FLOORING | 5d | 2026-07-23 | 2026-07-27 | 5332 |  | RGA -FINISHING | 7393455 |
| 5336 | 40200.40300.40800.53800.55900.58400.144700.2377200 | WINDOW FIXING | 7d | 2026-08-07 | 2026-08-13 | 5335FS+10d |  | RGA -FINISHING | 7393465 |
| 5337 | 40200.40300.40800.53800.55900.58400.144700.2377300 | INTERNAL PAINTING - 1ST COAT | 7d | 2026-08-20 | 2026-08-26 | 5334 |  | RGA -FINISHING | 7393475 |
| 5338 | 40200.40300.40800.53800.55900.58400.144700.2377400 | INTERNAL DOOR FIXING | 15d | 2026-08-25 | 2026-09-08 | 5337FS-2d |  | RGA -FINISHING | 7393485 |
| 5339 | 40200.40300.40800.53800.55900.58400.144700.2377500 | WIRING & SWITCH PLATE FIXING | 8d | 2026-09-05 | 2026-09-12 | 5338FS-4d |  | RGA -FINISHING | 7393495 |
| 5340 | 40200.40300.40800.53800.55900.58400.144700.2377600 | TOILET FALSE CEILING | 7d | 2026-09-13 | 2026-09-19 | 5339 |  | RGA -FINISHING | 7393505 |
| 5341 | 40200.40300.40800.53800.55900.58400.144700.2377700 | MAIN DOOR FRAME SHUTTER FIXING | 6d | 2027-12-02 | 2027-12-07 | 5658 |  | RGA -FINISHING | 7848152 |
| 5342 | 40200.40300.40800.53800.55900.58400.144700.2377800 | FINAL COAT PAINT | 8d | 2027-12-08 | 2027-12-15 | 5341 |  | RGA -FINISHING | 7393525 |
| 5343 | 40200.40300.40800.53800.55900.58400.144800 | **4TH FLOOR** | 545.5d | 2026-06-28 | 2027-12-25 |  | start no earlier than 2026-06-28 | RGA -FINISHING | 7391875 |
| 5344 | 40200.40300.40800.53800.55900.58400.144800.2377900 | TOILET DADO TILE FIXING | 7d | 2026-07-26 | 2026-08-01 | 5129 |  | RGA -FINISHING | 7393535 |
| 5345 | 40200.40300.40800.53800.55900.58400.144800.2378000 | TOILET FLOORING WORK | 7d | 2026-08-02 | 2026-08-08 | 5344 |  | RGA -FINISHING | 7393545 |
| 5346 | 40200.40300.40800.53800.55900.58400.144800.2378100 | FIRE FIGHTING | 6d | 2026-06-28 | 2026-07-04 | 5128 |  | RGA -FINISHING | 7393555 |
| 5347 | 40200.40300.40800.53800.55900.58400.144800.2378200 | INTERNAL PAINTING - PUTTY / PRIMER APPLICATION | 6d | 2026-08-31 | 2026-09-05 | 5349 |  | RGA -FINISHING | 7393565 |
| 5348 | 40200.40300.40800.53800.55900.58400.144800.2378300 | FLAT FLOORING | 5d | 2026-08-09 | 2026-08-13 | 5345 |  | RGA -FINISHING | 7393575 |
| 5349 | 40200.40300.40800.53800.55900.58400.144800.2378400 | WINDOW FIXING | 7d | 2026-08-24 | 2026-08-30 | 5348FS+10d |  | RGA -FINISHING | 7393585 |
| 5350 | 40200.40300.40800.53800.55900.58400.144800.2378500 | INTERNAL PAINTING - 1ST COAT | 7d | 2026-09-06 | 2026-09-12 | 5347 |  | RGA -FINISHING | 7393595 |
| 5351 | 40200.40300.40800.53800.55900.58400.144800.2378600 | INTERNAL DOOR FIXING | 15d | 2026-09-11 | 2026-09-25 | 5350FS-2d |  | RGA -FINISHING | 7393605 |
| 5352 | 40200.40300.40800.53800.55900.58400.144800.2378700 | WIRING & SWITCH PLATE FIXING | 8d | 2026-09-22 | 2026-09-29 | 5351FS-4d |  | RGA -FINISHING | 7393615 |
| 5353 | 40200.40300.40800.53800.55900.58400.144800.2378800 | TOILET FALSE CEILING | 7d | 2026-09-30 | 2026-10-06 | 5352 |  | RGA -FINISHING | 7393625 |
| 5354 | 40200.40300.40800.53800.55900.58400.144800.2378900 | MAIN DOOR FRAME SHUTTER FIXING | 6d | 2027-12-12 | 2027-12-17 | 5666 |  | RGA -FINISHING | 7393635 |
| 5355 | 40200.40300.40800.53800.55900.58400.144800.2379000 | FINAL COAT PAINT | 8d | 2027-12-18 | 2027-12-25 | 5354 |  | RGA -FINISHING | 7393645 |

| ID | WBS | Task | Duration | Start | Finish | Predecessors | Constraint | Calendar | Unique_Task_ID |
| --- | --- | --- | --- | --- | --- | --- | --- | --- | --- |
| 5356 | 40200.40300.40800.53800.55900.58400.144900 | **5TH FLOOR** | 515d | 2026-07-29 | 2027-12-25 |  | start no earlier than 2026-07-29 | RGA -FINISHING | 7391885 |
| 5357 | 40200.40300.40800.53800.55900.58400.144900.2379100 | TOILET DADO TILE FIXING | 7d | 2026-08-13 | 2026-08-20 | 5136 |  | RGA -FINISHING | 7393655 |
| 5358 | 40200.40300.40800.53800.55900.58400.144900.2379200 | TOILET FLOORING WORK | 7d | 2026-08-20 | 2026-08-27 | 5357 |  | RGA -FINISHING | 7393665 |
| 5359 | 40200.40300.40800.53800.55900.58400.144900.2379300 | FIRE FIGHTING | 6d | 2026-07-29 | 2026-08-03 | 5135 |  | RGA -FINISHING | 7393675 |
| 5360 | 40200.40300.40800.53800.55900.58400.144900.2379400 | INTERNAL PAINTING - PUTTY / PRIMER APPLICATION | 6d | 2026-09-18 | 2026-09-24 | 5362 |  | RGA -FINISHING | 7393685 |
| 5361 | 40200.40300.40800.53800.55900.58400.144900.2379500 | FLAT FLOORING | 5d | 2026-08-27 | 2026-09-01 | 5358 |  | RGA -FINISHING | 7393695 |
| 5362 | 40200.40300.40800.53800.55900.58400.144900.2379600 | WINDOW FIXING | 7d | 2026-09-11 | 2026-09-18 | 5361FS+10d |  | RGA -FINISHING | 7393705 |
| 5363 | 40200.40300.40800.53800.55900.58400.144900.2379700 | INTERNAL PAINTING - 1ST COAT | 7d | 2026-09-24 | 2026-10-01 | 5360 |  | RGA -FINISHING | 7393715 |
| 5364 | 40200.40300.40800.53800.55900.58400.144900.2379800 | INTERNAL DOOR FIXING | 15d | 2026-09-29 | 2026-10-14 | 5363FS-2d |  | RGA -FINISHING | 7393725 |
| 5365 | 40200.40300.40800.53800.55900.58400.144900.2379900 | WIRING & SWITCH PLATE FIXING | 8d | 2026-10-10 | 2026-10-18 | 5364FS-4d |  | RGA -FINISHING | 7393735 |
| 5366 | 40200.40300.40800.53800.55900.58400.144900.2380000 | TOILET FALSE CEILING | 7d | 2026-10-18 | 2026-10-25 | 5365 |  | RGA -FINISHING | 7393745 |
| 5367 | 40200.40300.40800.53800.55900.58400.144900.2380100 | MAIN DOOR FRAME SHUTTER FIXING | 6d | 2027-12-12 | 2027-12-17 | 5674 |  | RGA -FINISHING | 7393755 |
| 5368 | 40200.40300.40800.53800.55900.58400.144900.2380200 | FINAL COAT PAINT | 8d | 2027-12-18 | 2027-12-25 | 5367 |  | RGA -FINISHING | 7393765 |
| 5369 | 40200.40300.40800.53800.55900.58400.145000 | **6TH FLOOR** | 503d | 2026-08-10 | 2027-12-25 |  | start no earlier than 2026-08-10 | RGA -FINISHING | 7391895 |
| 5370 | 40200.40300.40800.53800.55900.58400.145000.2380300 | TOILET DADO TILE FIXING | 7d | 2026-09-13 | 2026-09-19 | 5143 |  | RGA -FINISHING | 7393775 |
| 5371 | 40200.40300.40800.53800.55900.58400.145000.2380400 | TOILET FLOORING WORK | 7d | 2026-09-13 | 2026-09-19 | 5370FF |  | RGA -FINISHING | 7393785 |
| 5372 | 40200.40300.40800.53800.55900.58400.145000.2380500 | FIRE FIGHTING | 6d | 2026-08-10 | 2026-08-15 | 5142 |  | RGA -FINISHING | 7393795 |
| 5373 | 40200.40300.40800.53800.55900.58400.145000.2380600 | INTERNAL PAINTING - PUTTY / PRIMER APPLICATION | 6d | 2026-10-17 | 2026-10-22 | 5375 |  | RGA -FINISHING | 7393805 |
| 5374 | 40200.40300.40800.53800.55900.58400.145000.2380700 | FLAT FLOORING | 5d | 2026-09-20 | 2026-09-24 | 5371 |  | RGA -FINISHING | 7393815 |
| 5375 | 40200.40300.40800.53800.55900.58400.145000.2380800 | WINDOW FIXING | 12d | 2026-10-05 | 2026-10-16 | 5374FS+10d |  | RGA -FINISHING | 7393825 |
| 5376 | 40200.40300.40800.53800.55900.58400.145000.2380900 | INTERNAL PAINTING - 1ST COAT | 12d | 2026-10-23 | 2026-11-03 | 5373 |  | RGA -FINISHING | 7393835 |
| 5377 | 40200.40300.40800.53800.55900.58400.145000.2381000 | INTERNAL DOOR FIXING | 15d | 2026-11-02 | 2026-11-16 | 5376FS-2d |  | RGA -FINISHING | 7393845 |
| 5378 | 40200.40300.40800.53800.55900.58400.145000.2381100 | WIRING & SWITCH PLATE FIXING | 8d | 2026-11-13 | 2026-11-20 | 5377FS-4d |  | RGA -FINISHING | 7393855 |
| 5379 | 40200.40300.40800.53800.55900.58400.145000.2381200 | TOILET FALSE CEILING | 7d | 2026-11-21 | 2026-11-27 | 5378 |  | RGA -FINISHING | 7393865 |
| 5380 | 40200.40300.40800.53800.55900.58400.145000.2381300 | MAIN DOOR FRAME SHUTTER FIXING | 6d | 2027-12-12 | 2027-12-17 | 5682 |  | RGA -FINISHING | 7393875 |
| 5381 | 40200.40300.40800.53800.55900.58400.145000.2381400 | FINAL COAT PAINT | 8d | 2027-12-18 | 2027-12-25 | 5380 |  | RGA -FINISHING | 7393885 |

| ID | WBS | Task | Duration | Start | Finish | Predecessors | Constraint | Calendar | Unique_Task_ID |
| --- | --- | --- | --- | --- | --- | --- | --- | --- | --- |
| 5382 | 40200.40300.40800.53800.55900.58400.145100 | **7TH FLOOR** | 457d | 2026-09-25 | 2027-12-25 |  | start no earlier than 2026-09-25 | RGA -FINISHING | 7391905 |
| 5383 | 40200.40300.40800.53800.55900.58400.145100.2381500 | TOILET DADO TILE FIXING | 7d | 2026-09-25 | 2026-10-01 | 5150 |  | RGA -FINISHING | 7393895 |
| 5384 | 40200.40300.40800.53800.55900.58400.145100.2381600 | TOILET FLOORING WORK | 7d | 2026-10-02 | 2026-10-08 | 5383 |  | RGA -FINISHING | 7393905 |
| 5385 | 40200.40300.40800.53800.55900.58400.145100.2381700 | FIRE FIGHTING | 6d | 2026-09-25 | 2026-09-30 | 5150 |  | RGA -FINISHING | 7393915 |
| 5386 | 40200.40300.40800.53800.55900.58400.145100.2381800 | INTERNAL PAINTING - PUTTY / PRIMER APPLICATION | 6d | 2026-11-05 | 2026-11-10 | 5388 |  | RGA -FINISHING | 7393925 |
| 5387 | 40200.40300.40800.53800.55900.58400.145100.2381900 | FLAT FLOORING | 5d | 2026-10-09 | 2026-10-13 | 5384 |  | RGA -FINISHING | 7393935 |
| 5388 | 40200.40300.40800.53800.55900.58400.145100.2382000 | WINDOW FIXING | 12d | 2026-10-24 | 2026-11-04 | 5387FS+10d |  | RGA -FINISHING | 7393945 |
| 5389 | 40200.40300.40800.53800.55900.58400.145100.2382100 | INTERNAL PAINTING - 1ST COAT | 5d | 2026-11-11 | 2026-11-15 | 5386 |  | RGA -FINISHING | 7393955 |
| 5390 | 40200.40300.40800.53800.55900.58400.145100.2382200 | INTERNAL DOOR FIXING | 15d | 2026-11-14 | 2026-11-28 | 5389FS-2d |  | RGA -FINISHING | 7393965 |
| 5391 | 40200.40300.40800.53800.55900.58400.145100.2382300 | WIRING & SWITCH PLATE FIXING | 8d | 2026-11-25 | 2026-12-02 | 5390FS-4d |  | RGA -FINISHING | 7393975 |
| 5392 | 40200.40300.40800.53800.55900.58400.145100.2382400 | TOILET FALSE CEILING | 7d | 2026-12-03 | 2026-12-09 | 5391 |  | RGA -FINISHING | 7393985 |
| 5393 | 40200.40300.40800.53800.55900.58400.145100.2382500 | MAIN DOOR FRAME SHUTTER FIXING | 6d | 2027-12-12 | 2027-12-17 | 5690 |  | RGA -FINISHING | 7393995 |
| 5394 | 40200.40300.40800.53800.55900.58400.145100.2382600 | FINAL COAT PAINT | 8d | 2027-12-18 | 2027-12-25 | 5393 |  | RGA -FINISHING | 7394005 |
| 5395 | 40200.40300.40800.53800.55900.58400.145200 | **8TH FLOOR** | 473d | 2026-09-19 | 2028-01-04 |  | start no earlier than 2026-09-19 | RGA -FINISHING | 7391915 |
| 5396 | 40200.40300.40800.53800.55900.58400.145200.2382700 | TOILET DADO TILE FIXING | 7d | 2026-11-10 | 2026-11-16 | 5157 |  | RGA -FINISHING | 7394015 |
| 5397 | 40200.40300.40800.53800.55900.58400.145200.2382800 | TOILET FLOORING WORK | 7d | 2026-11-17 | 2026-11-23 | 5396 |  | RGA -FINISHING | 7394025 |
| 5398 | 40200.40300.40800.53800.55900.58400.145200.2382900 | FIRE FIGHTING | 6d | 2026-09-19 | 2026-09-24 | 5156 |  | RGA -FINISHING | 7394035 |
| 5399 | 40200.40300.40800.53800.55900.58400.145200.2383000 | INTERNAL PAINTING - PUTTY / PRIMER APPLICATION | 6d | 2026-12-21 | 2026-12-26 | 5401 |  | RGA -FINISHING | 7394045 |
| 5400 | 40200.40300.40800.53800.55900.58400.145200.2383100 | FLAT FLOORING | 5d | 2026-11-24 | 2026-11-28 | 5397 |  | RGA -FINISHING | 7394055 |
| 5401 | 40200.40300.40800.53800.55900.58400.145200.2383200 | WINDOW FIXING | 12d | 2026-12-09 | 2026-12-20 | 5400FS+10d |  | RGA -FINISHING | 7394065 |
| 5402 | 40200.40300.40800.53800.55900.58400.145200.2383300 | INTERNAL PAINTING - 1ST COAT | 10d | 2026-12-27 | 2027-01-05 | 5399 |  | RGA -FINISHING | 7394075 |
| 5403 | 40200.40300.40800.53800.55900.58400.145200.2383400 | INTERNAL DOOR FIXING | 15d | 2027-01-04 | 2027-01-18 | 5402FS-2d |  | RGA -FINISHING | 7394085 |
| 5404 | 40200.40300.40800.53800.55900.58400.145200.2383500 | WIRING & SWITCH PLATE FIXING | 8d | 2027-01-15 | 2027-01-22 | 5403FS-4d |  | RGA -FINISHING | 7394095 |
| 5405 | 40200.40300.40800.53800.55900.58400.145200.2383600 | TOILET FALSE CEILING | 7d | 2027-01-23 | 2027-01-29 | 5404 |  | RGA -FINISHING | 7394105 |
| 5406 | 40200.40300.40800.53800.55900.58400.145200.2383700 | MAIN DOOR FRAME SHUTTER FIXING | 6d | 2027-12-22 | 2027-12-27 | 5698 |  | RGA -FINISHING | 7394115 |
| 5407 | 40200.40300.40800.53800.55900.58400.145200.2383800 | FINAL COAT PAINT | 8d | 2027-12-28 | 2028-01-04 | 5406 |  | RGA -FINISHING | 7394125 |

| ID | WBS | Task | Duration | Start | Finish | Predecessors | Constraint | Calendar | Unique_Task_ID |
| --- | --- | --- | --- | --- | --- | --- | --- | --- | --- |
| 5408 | 40200.40300.40800.53800.55900.58400.145300 | **9TH FLOOR** | 460d | 2026-10-06 | 2028-01-08 |  | start no earlier than 2026-10-06 | RGA -FINISHING | 7391925 |
| 5409 | 40200.40300.40800.53800.55900.58400.145300.2383900 | TOILET DADO TILE FIXING | 7d | 2026-10-19 | 2026-10-25 | 5164 |  | RGA -FINISHING | 7394135 |
| 5410 | 40200.40300.40800.53800.55900.58400.145300.2384000 | TOILET FLOORING WORK | 7d | 2026-10-26 | 2026-11-01 | 5409 |  | RGA -FINISHING | 7394145 |
| 5411 | 40200.40300.40800.53800.55900.58400.145300.2384100 | FIRE FIGHTING | 6d | 2026-10-06 | 2026-10-11 | 5163 |  | RGA -FINISHING | 7394155 |
| 5412 | 40200.40300.40800.53800.55900.58400.145300.2384200 | INTERNAL PAINTING - PUTTY / PRIMER APPLICATION | 6d | 2026-11-29 | 2026-12-04 | 5414 |  | RGA -FINISHING | 7394165 |
| 5413 | 40200.40300.40800.53800.55900.58400.145300.2384300 | FLAT FLOORING | 5d | 2026-11-02 | 2026-11-06 | 5410 |  | RGA -FINISHING | 7394175 |
| 5414 | 40200.40300.40800.53800.55900.58400.145300.2384400 | WINDOW FIXING | 12d | 2026-11-17 | 2026-11-28 | 5413FS+10d |  | RGA -FINISHING | 7394185 |
| 5415 | 40200.40300.40800.53800.55900.58400.145300.2384500 | INTERNAL PAINTING - 1ST COAT | 2d | 2026-12-05 | 2026-12-06 | 5412 |  | RGA -FINISHING | 7394195 |
| 5416 | 40200.40300.40800.53800.55900.58400.145300.2384600 | INTERNAL DOOR FIXING | 15d | 2026-12-05 | 2026-12-19 | 5415FS-2d |  | RGA -FINISHING | 7394205 |
| 5417 | 40200.40300.40800.53800.55900.58400.145300.2384700 | WIRING & SWITCH PLATE FIXING | 8d | 2026-12-16 | 2026-12-23 | 5416FS-4d |  | RGA -FINISHING | 7394215 |
| 5418 | 40200.40300.40800.53800.55900.58400.145300.2384800 | TOILET FALSE CEILING | 7d | 2026-12-24 | 2026-12-30 | 5417 |  | RGA -FINISHING | 7394225 |
| 5419 | 40200.40300.40800.53800.55900.58400.145300.2384900 | MAIN DOOR FRAME SHUTTER FIXING | 6d | 2027-12-22 | 2027-12-27 | 5706 |  | RGA -FINISHING | 7394235 |
| 5420 | 40200.40300.40800.53800.55900.58400.145300.2385000 | FINAL COAT PAINT | 8d | 2028-01-01 | 2028-01-08 | 5419FS+4d |  | RGA -FINISHING | 7394245 |
| 5421 | 40200.40300.40800.53800.55900.58400.145400 | **10TH FLOOR** | 438d | 2026-10-24 | 2028-01-04 |  | start no earlier than 2026-10-24 | RGA -FINISHING | 7391935 |
| 5422 | 40200.40300.40800.53800.55900.58400.145400.2385100 | TOILET DADO TILE FIXING | 7d | 2026-11-21 | 2026-11-27 | 5171 |  | RGA -FINISHING | 7394255 |
| 5423 | 40200.40300.40800.53800.55900.58400.145400.2385200 | TOILET FLOORING WORK | 7d | 2026-11-28 | 2026-12-04 | 5422 |  | RGA -FINISHING | 7394265 |
| 5424 | 40200.40300.40800.53800.55900.58400.145400.2385300 | FIRE FIGHTING | 6d | 2026-10-24 | 2026-10-29 | 5170 |  | RGA -FINISHING | 7394275 |
| 5425 | 40200.40300.40800.53800.55900.58400.145400.2385400 | INTERNAL PAINTING - PUTTY / PRIMER APPLICATION | 6d | 2027-01-01 | 2027-01-06 | 5427 |  | RGA -FINISHING | 7394285 |
| 5426 | 40200.40300.40800.53800.55900.58400.145400.2385500 | FLAT FLOORING | 5d | 2026-12-05 | 2026-12-09 | 5423 |  | RGA -FINISHING | 7394295 |
| 5427 | 40200.40300.40800.53800.55900.58400.145400.2385600 | WINDOW FIXING | 12d | 2026-12-20 | 2026-12-31 | 5426FS+10d |  | RGA -FINISHING | 7394305 |
| 5428 | 40200.40300.40800.53800.55900.58400.145400.2385700 | INTERNAL PAINTING - 1ST COAT | 12d | 2027-01-07 | 2027-01-18 | 5425 |  | RGA -FINISHING | 7394315 |
| 5429 | 40200.40300.40800.53800.55900.58400.145400.2385800 | INTERNAL DOOR FIXING | 15d | 2027-01-17 | 2027-01-31 | 5428FS-2d |  | RGA -FINISHING | 7394325 |
| 5430 | 40200.40300.40800.53800.55900.58400.145400.2385900 | WIRING & SWITCH PLATE FIXING | 8d | 2027-01-28 | 2027-02-04 | 5429FS-4d |  | RGA -FINISHING | 7394335 |
| 5431 | 40200.40300.40800.53800.55900.58400.145400.2386000 | TOILET FALSE CEILING | 7d | 2027-02-05 | 2027-02-11 | 5430 |  | RGA -FINISHING | 7394345 |
| 5432 | 40200.40300.40800.53800.55900.58400.145400.2386100 | MAIN DOOR FRAME SHUTTER FIXING | 6d | 2027-12-22 | 2027-12-27 | 5714 |  | RGA -FINISHING | 7394355 |
| 5433 | 40200.40300.40800.53800.55900.58400.145400.2386200 | FINAL COAT PAINT | 8d | 2027-12-28 | 2028-01-04 | 5432 |  | RGA -FINISHING | 7394365 |

| ID | WBS | Task | Duration | Start | Finish | Predecessors | Constraint | Calendar | Unique_Task_ID |
| --- | --- | --- | --- | --- | --- | --- | --- | --- | --- |
| 5434 | 40200.40300.40800.53800.55900.58400.145500 | **11TH FLOOR** | 421d | 2026-11-10 | 2028-01-04 |  | start no earlier than 2026-11-10 | RGA -FINISHING | 7391945 |
| 5435 | 40200.40300.40800.53800.55900.58400.145500.2386300 | TOILET DADO TILE FIXING | 7d | 2026-12-09 | 2026-12-15 | 5178 |  | RGA -FINISHING | 7394375 |
| 5436 | 40200.40300.40800.53800.55900.58400.145500.2386400 | TOILET FLOORING WORK | 7d | 2026-12-16 | 2026-12-22 | 5435 |  | RGA -FINISHING | 7394385 |
| 5437 | 40200.40300.40800.53800.55900.58400.145500.2386500 | FIRE FIGHTING | 6d | 2026-11-10 | 2026-11-15 | 5177 |  | RGA -FINISHING | 7394395 |
| 5438 | 40200.40300.40800.53800.55900.58400.145500.2386600 | INTERNAL PAINTING - PUTTY / PRIMER APPLICATION | 6d | 2027-01-19 | 2027-01-24 | 5440 |  | RGA -FINISHING | 7394405 |
| 5439 | 40200.40300.40800.53800.55900.58400.145500.2386700 | FLAT FLOORING | 5d | 2026-12-23 | 2026-12-27 | 5436 |  | RGA -FINISHING | 7394415 |
| 5440 | 40200.40300.40800.53800.55900.58400.145500.2386800 | WINDOW FIXING | 12d | 2027-01-07 | 2027-01-18 | 5439FS+10d |  | RGA -FINISHING | 7394425 |
| 5441 | 40200.40300.40800.53800.55900.58400.145500.2386900 | INTERNAL PAINTING - 1ST COAT | 12d | 2027-01-25 | 2027-02-05 | 5438 |  | RGA -FINISHING | 7394435 |
| 5442 | 40200.40300.40800.53800.55900.58400.145500.2387000 | INTERNAL DOOR FIXING | 15d | 2027-02-04 | 2027-02-18 | 5441FS-2d |  | RGA -FINISHING | 7394445 |
| 5443 | 40200.40300.40800.53800.55900.58400.145500.2387100 | WIRING & SWITCH PLATE FIXING | 8d | 2027-02-15 | 2027-02-22 | 5442FS-4d |  | RGA -FINISHING | 7394455 |
| 5444 | 40200.40300.40800.53800.55900.58400.145500.2387200 | TOILET FALSE CEILING | 7d | 2027-02-23 | 2027-03-01 | 5443 |  | RGA -FINISHING | 7394465 |
| 5445 | 40200.40300.40800.53800.55900.58400.145500.2387300 | MAIN DOOR FRAME SHUTTER FIXING | 6d | 2027-12-22 | 2027-12-27 | 5722 |  | RGA -FINISHING | 7394475 |
| 5446 | 40200.40300.40800.53800.55900.58400.145500.2387400 | FINAL COAT PAINT | 8d | 2027-12-28 | 2028-01-04 | 5445 |  | RGA -FINISHING | 7394485 |
| 5447 | 40200.40300.40800.53800.55900.58400.145600 | **12TH FLOOR** | 424d | 2026-11-17 | 2028-01-14 |  | start no earlier than 2026-11-17 | RGA -FINISHING | 7391955 |
| 5448 | 40200.40300.40800.53800.55900.58400.145600.2387500 | TOILET DADO TILE FIXING | 7d | 2026-12-18 | 2026-12-24 | 5185 |  | RGA -FINISHING | 7394495 |
| 5449 | 40200.40300.40800.53800.55900.58400.145600.2387600 | TOILET FLOORING WORK | 7d | 2026-12-18 | 2026-12-24 | 5448FF |  | RGA -FINISHING | 7394505 |
| 5450 | 40200.40300.40800.53800.55900.58400.145600.2387700 | FIRE FIGHTING | 6d | 2026-11-17 | 2026-11-22 | 5184 |  | RGA -FINISHING | 7394515 |
| 5451 | 40200.40300.40800.53800.55900.58400.145600.2387800 | INTERNAL PAINTING - PUTTY / PRIMER APPLICATION | 6d | 2027-01-21 | 2027-01-26 | 5453 |  | RGA -FINISHING | 7394525 |
| 5452 | 40200.40300.40800.53800.55900.58400.145600.2387900 | FLAT FLOORING | 5d | 2026-12-25 | 2026-12-29 | 5449 |  | RGA -FINISHING | 7394535 |
| 5453 | 40200.40300.40800.53800.55900.58400.145600.2388000 | WINDOW FIXING | 12d | 2027-01-09 | 2027-01-20 | 5452FS+10d |  | RGA -FINISHING | 7394545 |
| 5454 | 40200.40300.40800.53800.55900.58400.145600.2388100 | INTERNAL PAINTING - 1ST COAT | 12d | 2027-01-27 | 2027-02-07 | 5451 |  | RGA -FINISHING | 7394555 |
| 5455 | 40200.40300.40800.53800.55900.58400.145600.2388200 | INTERNAL DOOR FIXING | 15d | 2027-02-06 | 2027-02-20 | 5454FS-2d |  | RGA -FINISHING | 7394565 |
| 5456 | 40200.40300.40800.53800.55900.58400.145600.2388300 | WIRING & SWITCH PLATE FIXING | 8d | 2027-02-17 | 2027-02-24 | 5455FS-4d |  | RGA -FINISHING | 7394575 |
| 5457 | 40200.40300.40800.53800.55900.58400.145600.2388400 | TOILET FALSE CEILING | 7d | 2027-02-25 | 2027-03-03 | 5456 |  | RGA -FINISHING | 7394585 |
| 5458 | 40200.40300.40800.53800.55900.58400.145600.2388500 | MAIN DOOR FRAME SHUTTER FIXING | 6d | 2028-01-01 | 2028-01-06 | 5730 |  | RGA -FINISHING | 7394595 |
| 5459 | 40200.40300.40800.53800.55900.58400.145600.2388600 | FINAL COAT PAINT | 8d | 2028-01-07 | 2028-01-14 | 5458 |  | RGA -FINISHING | 7394605 |

| ID | WBS | Task | Duration | Start | Finish | Predecessors | Constraint | Calendar | Unique_Task_ID |
| --- | --- | --- | --- | --- | --- | --- | --- | --- | --- |
| 5460 | 40200.40300.40800.53800.55900.58400.145700 | **13TH FLOOR** | 398.5d | 2026-12-12 | 2028-01-14 |  | start no earlier than 2026-12-12 | RGA -FINISHING | 7391965 |
| 5461 | 40200.40300.40800.53800.55900.58400.145700.2388700 | TOILET DADO TILE FIXING | 10d | 2027-01-16 | 2027-01-25 | 5192 |  | RGA -FINISHING | 7394615 |
| 5462 | 40200.40300.40800.53800.55900.58400.145700.2388800 | TOILET FLOORING WORK | 7d | 2027-01-26 | 2027-02-01 | 5461 |  | RGA -FINISHING | 7394625 |
| 5463 | 40200.40300.40800.53800.55900.58400.145700.2388900 | FIRE FIGHTING | 8d | 2026-12-12 | 2026-12-20 | 5191 |  | RGA -FINISHING | 7394635 |
| 5464 | 40200.40300.40800.53800.55900.58400.145700.2389000 | INTERNAL PAINTING - PUTTY / PRIMER APPLICATION | 5d | 2027-02-24 | 2027-02-28 | 5466 |  | RGA -FINISHING | 7394645 |
| 5465 | 40200.40300.40800.53800.55900.58400.145700.2389100 | FLAT FLOORING | 7d | 2027-02-02 | 2027-02-08 | 5462 |  | RGA -FINISHING | 7394655 |
| 5466 | 40200.40300.40800.53800.55900.58400.145700.2389200 | WINDOW FIXING | 5d | 2027-02-19 | 2027-02-23 | 5465FS+10d |  | RGA -FINISHING | 7394665 |
| 5467 | 40200.40300.40800.53800.55900.58400.145700.2389300 | INTERNAL PAINTING - 1ST COAT | 4d | 2027-03-01 | 2027-03-04 | 5464 |  | RGA -FINISHING | 7394675 |
| 5468 | 40200.40300.40800.53800.55900.58400.145700.2389400 | INTERNAL DOOR FIXING | 15d | 2027-03-03 | 2027-03-17 | 5467FS-2d |  | RGA -FINISHING | 7394685 |
| 5469 | 40200.40300.40800.53800.55900.58400.145700.2389500 | WIRING & SWITCH PLATE FIXING | 8d | 2027-03-14 | 2027-03-21 | 5468FS-4d |  | RGA -FINISHING | 7394695 |
| 5470 | 40200.40300.40800.53800.55900.58400.145700.2389600 | TOILET FALSE CEILING | 7d | 2027-03-22 | 2027-03-28 | 5469 |  | RGA -FINISHING | 7394705 |
| 5471 | 40200.40300.40800.53800.55900.58400.145700.2389700 | MAIN DOOR FRAME SHUTTER FIXING | 6d | 2028-01-01 | 2028-01-06 | 5738 |  | RGA -FINISHING | 7394715 |
| 5472 | 40200.40300.40800.53800.55900.58400.145700.2389800 | FINAL COAT PAINT | 8d | 2028-01-07 | 2028-01-14 | 5471 |  | RGA -FINISHING | 7394725 |
| 5473 | 40200.40300.40800.53800.55900.58400.145800 | **14TH FLOOR** | 375d | 2027-01-05 | 2028-01-14 |  | start no earlier than 2027-01-05 | RGA -FINISHING | 7391975 |
| 5474 | 40200.40300.40800.53800.55900.58400.145800.2389900 | TOILET DADO TILE FIXING | 10d | 2027-02-12 | 2027-02-22 | 5199 |  | RGA -FINISHING | 7394735 |
| 5475 | 40200.40300.40800.53800.55900.58400.145800.2390000 | TOILET FLOORING WORK | 7d | 2027-02-22 | 2027-03-01 | 5474 |  | RGA -FINISHING | 7394745 |
| 5476 | 40200.40300.40800.53800.55900.58400.145800.2390100 | FIRE FIGHTING | 8d | 2027-01-05 | 2027-01-12 | 5198 |  | RGA -FINISHING | 7394755 |
| 5477 | 40200.40300.40800.53800.55900.58400.145800.2390200 | INTERNAL PAINTING - PUTTY / PRIMER APPLICATION | 5d | 2027-03-23 | 2027-03-28 | 5479 |  | RGA -FINISHING | 7394765 |
| 5478 | 40200.40300.40800.53800.55900.58400.145800.2390300 | FLAT FLOORING | 7d | 2027-03-01 | 2027-03-08 | 5475 |  | RGA -FINISHING | 7394775 |
| 5479 | 40200.40300.40800.53800.55900.58400.145800.2390400 | WINDOW FIXING | 5d | 2027-03-18 | 2027-03-23 | 5478FS+10d |  | RGA -FINISHING | 7394785 |
| 5480 | 40200.40300.40800.53800.55900.58400.145800.2390500 | INTERNAL PAINTING - 1ST COAT | 4d | 2027-03-28 | 2027-04-01 | 5477 |  | RGA -FINISHING | 7394795 |
| 5481 | 40200.40300.40800.53800.55900.58400.145800.2390600 | INTERNAL DOOR FIXING | 15d | 2027-03-30 | 2027-04-14 | 5480FS-2d |  | RGA -FINISHING | 7394805 |
| 5482 | 40200.40300.40800.53800.55900.58400.145800.2390700 | WIRING & SWITCH PLATE FIXING | 8d | 2027-04-10 | 2027-04-18 | 5481FS-4d |  | RGA -FINISHING | 7394815 |
| 5483 | 40200.40300.40800.53800.55900.58400.145800.2390800 | TOILET FALSE CEILING | 7d | 2027-04-18 | 2027-04-25 | 5482 |  | RGA -FINISHING | 7394825 |
| 5484 | 40200.40300.40800.53800.55900.58400.145800.2390900 | MAIN DOOR FRAME SHUTTER FIXING | 6d | 2028-01-01 | 2028-01-06 | 5746 |  | RGA -FINISHING | 7394835 |
| 5485 | 40200.40300.40800.53800.55900.58400.145800.2391000 | FINAL COAT PAINT | 8d | 2028-01-07 | 2028-01-14 | 5484 |  | RGA -FINISHING | 7394845 |

| ID | WBS | Task | Duration | Start | Finish | Predecessors | Constraint | Calendar | Unique_Task_ID |
| --- | --- | --- | --- | --- | --- | --- | --- | --- | --- |
| 5486 | 40200.40300.40800.53800.55900.58400.145900 | **15TH FLOOR** | 358d | 2027-01-22 | 2028-01-14 |  | start no earlier than 2027-01-22 | RGA -FINISHING | 7391985 |
| 5487 | 40200.40300.40800.53800.55900.58400.145900.2391100 | TOILET DADO TILE FIXING | 10d | 2027-03-08 | 2027-03-17 | 5206 |  | RGA -FINISHING | 7394855 |
| 5488 | 40200.40300.40800.53800.55900.58400.145900.2391200 | TOILET FLOORING WORK | 7d | 2027-03-18 | 2027-03-24 | 5487 |  | RGA -FINISHING | 7394865 |
| 5489 | 40200.40300.40800.53800.55900.58400.145900.2391300 | FIRE FIGHTING | 8d | 2027-01-22 | 2027-01-29 | 5205 |  | RGA -FINISHING | 7394875 |
| 5490 | 40200.40300.40800.53800.55900.58400.145900.2391400 | INTERNAL PAINTING - PUTTY / PRIMER APPLICATION | 5d | 2027-04-16 | 2027-04-20 | 5492 |  | RGA -FINISHING | 7394885 |
| 5491 | 40200.40300.40800.53800.55900.58400.145900.2391500 | FLAT FLOORING | 7d | 2027-03-25 | 2027-03-31 | 5488 |  | RGA -FINISHING | 7394895 |
| 5492 | 40200.40300.40800.53800.55900.58400.145900.2391600 | WINDOW FIXING | 5d | 2027-04-11 | 2027-04-15 | 5491FS+10d |  | RGA -FINISHING | 7394905 |
| 5493 | 40200.40300.40800.53800.55900.58400.145900.2391700 | INTERNAL PAINTING - 1ST COAT | 4d | 2027-04-21 | 2027-04-24 | 5490 |  | RGA -FINISHING | 7394915 |
| 5494 | 40200.40300.40800.53800.55900.58400.145900.2391800 | INTERNAL DOOR FIXING | 15d | 2027-04-23 | 2027-05-07 | 5493FS-2d |  | RGA -FINISHING | 7394925 |
| 5495 | 40200.40300.40800.53800.55900.58400.145900.2391900 | WIRING & SWITCH PLATE FIXING | 8d | 2027-05-04 | 2027-05-11 | 5494FS-4d |  | RGA -FINISHING | 7394935 |
| 5496 | 40200.40300.40800.53800.55900.58400.145900.2392000 | TOILET FALSE CEILING | 7d | 2027-05-12 | 2027-05-18 | 5495 |  | RGA -FINISHING | 7394945 |
| 5497 | 40200.40300.40800.53800.55900.58400.145900.2392100 | MAIN DOOR FRAME SHUTTER FIXING | 6d | 2028-01-01 | 2028-01-06 | 5754 |  | RGA -FINISHING | 7394955 |
| 5498 | 40200.40300.40800.53800.55900.58400.145900.2392200 | FINAL COAT PAINT | 8d | 2028-01-07 | 2028-01-14 | 5497 |  | RGA -FINISHING | 7394965 |
| 5499 | 40200.40300.40800.53800.55900.58400.146000 | **16TH FLOOR** | 351d | 2027-02-08 | 2028-01-24 |  | start no earlier than 2027-02-08 | RGA -FINISHING | 7391995 |
| 5500 | 40200.40300.40800.53800.55900.58400.146000.2392300 | TOILET DADO TILE FIXING | 10d | 2027-03-25 | 2027-04-03 | 5213 |  | RGA -FINISHING | 7394975 |
| 5501 | 40200.40300.40800.53800.55900.58400.146000.2392400 | TOILET FLOORING WORK | 7d | 2027-04-04 | 2027-04-10 | 5500 |  | RGA -FINISHING | 7394985 |
| 5502 | 40200.40300.40800.53800.55900.58400.146000.2392500 | FIRE FIGHTING | 8d | 2027-02-08 | 2027-02-15 | 5212 |  | RGA -FINISHING | 7394995 |
| 5503 | 40200.40300.40800.53800.55900.58400.146000.2392600 | INTERNAL PAINTING - PUTTY / PRIMER APPLICATION | 5d | 2027-05-03 | 2027-05-07 | 5505 |  | RGA -FINISHING | 7395005 |
| 5504 | 40200.40300.40800.53800.55900.58400.146000.2392700 | FLAT FLOORING | 7d | 2027-04-11 | 2027-04-17 | 5501 |  | RGA -FINISHING | 7395015 |
| 5505 | 40200.40300.40800.53800.55900.58400.146000.2392800 | WINDOW FIXING | 5d | 2027-04-28 | 2027-05-02 | 5504FS+10d |  | RGA -FINISHING | 7395025 |
| 5506 | 40200.40300.40800.53800.55900.58400.146000.2392900 | INTERNAL PAINTING - 1ST COAT | 4d | 2027-05-08 | 2027-05-11 | 5503 |  | RGA -FINISHING | 7395035 |
| 5507 | 40200.40300.40800.53800.55900.58400.146000.2393000 | INTERNAL DOOR FIXING | 15d | 2027-05-10 | 2027-05-24 | 5506FS-2d |  | RGA -FINISHING | 7395045 |
| 5508 | 40200.40300.40800.53800.55900.58400.146000.2393100 | WIRING & SWITCH PLATE FIXING | 8d | 2027-05-21 | 2027-05-28 | 5507FS-4d |  | RGA -FINISHING | 7395055 |
| 5509 | 40200.40300.40800.53800.55900.58400.146000.2393200 | TOILET FALSE CEILING | 7d | 2027-05-29 | 2027-06-04 | 5508 |  | RGA -FINISHING | 7395065 |
| 5510 | 40200.40300.40800.53800.55900.58400.146000.2393300 | MAIN DOOR FRAME SHUTTER FIXING | 6d | 2028-01-11 | 2028-01-16 | 5762 |  | RGA -FINISHING | 7395075 |
| 5511 | 40200.40300.40800.53800.55900.58400.146000.2393400 | FINAL COAT PAINT | 8d | 2028-01-17 | 2028-01-24 | 5510 |  | RGA -FINISHING | 7395085 |

| ID | WBS | Task | Duration | Start | Finish | Predecessors | Constraint | Calendar | Unique_Task_ID |
| --- | --- | --- | --- | --- | --- | --- | --- | --- | --- |
| 5512 | 40200.40300.40800.53800.55900.58400.146100 | **17TH FLOOR** | 334d | 2027-02-25 | 2028-01-24 |  | start no earlier than 2027-02-25 | RGA -FINISHING | 7392005 |
| 5513 | 40200.40300.40800.53800.55900.58400.146100.2393500 | TOILET DADO TILE FIXING | 10d | 2027-04-11 | 2027-04-20 | 5220 |  | RGA -FINISHING | 7395095 |
| 5514 | 40200.40300.40800.53800.55900.58400.146100.2393600 | TOILET FLOORING WORK | 7d | 2027-04-21 | 2027-04-27 | 5513 |  | RGA -FINISHING | 7395105 |
| 5515 | 40200.40300.40800.53800.55900.58400.146100.2393700 | FIRE FIGHTING | 8d | 2027-02-25 | 2027-03-04 | 5219 |  | RGA -FINISHING | 7395115 |
| 5516 | 40200.40300.40800.53800.55900.58400.146100.2393800 | INTERNAL PAINTING - PUTTY / PRIMER APPLICATION | 5d | 2027-05-20 | 2027-05-24 | 5518 |  | RGA -FINISHING | 7395125 |
| 5517 | 40200.40300.40800.53800.55900.58400.146100.2393900 | FLAT FLOORING | 7d | 2027-04-28 | 2027-05-04 | 5514 |  | RGA -FINISHING | 7395135 |
| 5518 | 40200.40300.40800.53800.55900.58400.146100.2394000 | WINDOW FIXING | 5d | 2027-05-15 | 2027-05-19 | 5517FS+10d |  | RGA -FINISHING | 7395145 |
| 5519 | 40200.40300.40800.53800.55900.58400.146100.2394100 | INTERNAL PAINTING - 1ST COAT | 4d | 2027-05-25 | 2027-05-28 | 5516 |  | RGA -FINISHING | 7395155 |
| 5520 | 40200.40300.40800.53800.55900.58400.146100.2394200 | INTERNAL DOOR FIXING | 15d | 2027-05-27 | 2027-06-10 | 5519FS-2d |  | RGA -FINISHING | 7395165 |
| 5521 | 40200.40300.40800.53800.55900.58400.146100.2394300 | WIRING & SWITCH PLATE FIXING | 8d | 2027-06-07 | 2027-06-14 | 5520FS-4d |  | RGA -FINISHING | 7395175 |
| 5522 | 40200.40300.40800.53800.55900.58400.146100.2394400 | TOILET FALSE CEILING | 7d | 2027-06-15 | 2027-06-21 | 5521 |  | RGA -FINISHING | 7395185 |
| 5523 | 40200.40300.40800.53800.55900.58400.146100.2394500 | MAIN DOOR FRAME SHUTTER FIXING | 6d | 2028-01-11 | 2028-01-16 | 5770 |  | RGA -FINISHING | 7395195 |
| 5524 | 40200.40300.40800.53800.55900.58400.146100.2394600 | FINAL COAT PAINT | 8d | 2028-01-17 | 2028-01-24 | 5523 |  | RGA -FINISHING | 7395205 |
| 5525 | 40200.40300.40800.53800.55900.58400.146200 | **18TH FLOOR** | 317d | 2027-03-14 | 2028-01-24 |  | start no earlier than 2027-03-14 | RGA -FINISHING | 7392015 |
| 5526 | 40200.40300.40800.53800.55900.58400.146200.2394700 | TOILET DADO TILE FIXING | 10d | 2027-04-28 | 2027-05-07 | 5227 |  | RGA -FINISHING | 7395215 |
| 5527 | 40200.40300.40800.53800.55900.58400.146200.2394800 | TOILET FLOORING WORK | 7d | 2027-05-08 | 2027-05-14 | 5526 |  | RGA -FINISHING | 7395225 |
| 5528 | 40200.40300.40800.53800.55900.58400.146200.2394900 | FIRE FIGHTING | 8d | 2027-03-14 | 2027-03-21 | 5226 |  | RGA -FINISHING | 7395235 |
| 5529 | 40200.40300.40800.53800.55900.58400.146200.2395000 | INTERNAL PAINTING - PUTTY / PRIMER APPLICATION | 5d | 2027-06-06 | 2027-06-10 | 5531 |  | RGA -FINISHING | 7395245 |
| 5530 | 40200.40300.40800.53800.55900.58400.146200.2395100 | FLAT FLOORING | 7d | 2027-05-15 | 2027-05-21 | 5527 |  | RGA -FINISHING | 7395255 |
| 5531 | 40200.40300.40800.53800.55900.58400.146200.2395200 | WINDOW FIXING | 5d | 2027-06-01 | 2027-06-05 | 5530FS+10d |  | RGA -FINISHING | 7395265 |
| 5532 | 40200.40300.40800.53800.55900.58400.146200.2395300 | INTERNAL PAINTING - 1ST COAT | 4d | 2027-06-11 | 2027-06-14 | 5529 |  | RGA -FINISHING | 7395275 |
| 5533 | 40200.40300.40800.53800.55900.58400.146200.2395400 | INTERNAL DOOR FIXING | 15d | 2027-06-13 | 2027-06-27 | 5532FS-2d |  | RGA -FINISHING | 7395285 |
| 5534 | 40200.40300.40800.53800.55900.58400.146200.2395500 | WIRING & SWITCH PLATE FIXING | 8d | 2027-06-24 | 2027-07-01 | 5533FS-4d |  | RGA -FINISHING | 7395295 |
| 5535 | 40200.40300.40800.53800.55900.58400.146200.2395600 | TOILET FALSE CEILING | 7d | 2027-07-02 | 2027-07-08 | 5534 |  | RGA -FINISHING | 7395305 |
| 5536 | 40200.40300.40800.53800.55900.58400.146200.2395700 | MAIN DOOR FRAME SHUTTER FIXING | 6d | 2028-01-11 | 2028-01-16 | 5778 |  | RGA -FINISHING | 7395315 |
| 5537 | 40200.40300.40800.53800.55900.58400.146200.2395800 | FINAL COAT PAINT | 8d | 2028-01-17 | 2028-01-24 | 5536 |  | RGA -FINISHING | 7395325 |

| ID | WBS | Task | Duration | Start | Finish | Predecessors | Constraint | Calendar | Unique_Task_ID |
| --- | --- | --- | --- | --- | --- | --- | --- | --- | --- |
| 5538 | 40200.40300.40800.53800.55900.58400.146300 | **19TH FLOOR** | 310d | 2027-03-31 | 2028-02-03 |  | start no earlier than 2027-03-31 | RGA -FINISHING | 7392025 |
| 5539 | 40200.40300.40800.53800.55900.58400.146300.2395900 | TOILET DADO TILE FIXING | 10d | 2027-05-15 | 2027-05-24 | 5234 |  | RGA -FINISHING | 7395335 |
| 5540 | 40200.40300.40800.53800.55900.58400.146300.2396000 | TOILET FLOORING WORK | 7d | 2027-05-25 | 2027-05-31 | 5539 |  | RGA -FINISHING | 7395345 |
| 5541 | 40200.40300.40800.53800.55900.58400.146300.2396100 | FIRE FIGHTING | 8d | 2027-03-31 | 2027-04-07 | 5233 |  | RGA -FINISHING | 7395355 |
| 5542 | 40200.40300.40800.53800.55900.58400.146300.2396200 | INTERNAL PAINTING - PUTTY / PRIMER APPLICATION | 5d | 2027-06-23 | 2027-06-27 | 5544 |  | RGA -FINISHING | 7395365 |
| 5543 | 40200.40300.40800.53800.55900.58400.146300.2396300 | FLAT FLOORING | 7d | 2027-06-01 | 2027-06-07 | 5540 |  | RGA -FINISHING | 7395375 |
| 5544 | 40200.40300.40800.53800.55900.58400.146300.2396400 | WINDOW FIXING | 5d | 2027-06-18 | 2027-06-22 | 5543FS+10d |  | RGA -FINISHING | 7395385 |
| 5545 | 40200.40300.40800.53800.55900.58400.146300.2396500 | INTERNAL PAINTING - 1ST COAT | 4d | 2027-06-28 | 2027-07-01 | 5542 |  | RGA -FINISHING | 7395395 |
| 5546 | 40200.40300.40800.53800.55900.58400.146300.2396600 | INTERNAL DOOR FIXING | 15d | 2027-06-30 | 2027-07-14 | 5545FS-2d |  | RGA -FINISHING | 7395405 |
| 5547 | 40200.40300.40800.53800.55900.58400.146300.2396700 | WIRING & SWITCH PLATE FIXING | 8d | 2027-07-11 | 2027-07-18 | 5546FS-4d |  | RGA -FINISHING | 7395415 |
| 5548 | 40200.40300.40800.53800.55900.58400.146300.2396800 | TOILET FALSE CEILING | 7d | 2027-07-19 | 2027-07-25 | 5547 |  | RGA -FINISHING | 7395425 |
| 5549 | 40200.40300.40800.53800.55900.58400.146300.2396900 | MAIN DOOR FRAME SHUTTER FIXING | 6d | 2028-01-21 | 2028-01-26 | 5786 |  | RGA -FINISHING | 7395435 |
| 5550 | 40200.40300.40800.53800.55900.58400.146300.2397000 | FINAL COAT PAINT | 8d | 2028-01-27 | 2028-02-03 | 5549 |  | RGA -FINISHING | 7395445 |
| 5551 | 40200.40300.40800.53800.55900.58400.146400 | **20TH FLOOR** | 293d | 2027-04-17 | 2028-02-03 |  | start no earlier than 2027-04-17 | RGA -FINISHING | 7392035 |
| 5552 | 40200.40300.40800.53800.55900.58400.146400.2397100 | TOILET DADO TILE FIXING | 10d | 2027-06-01 | 2027-06-10 | 5241 |  | RGA -FINISHING | 7395455 |
| 5553 | 40200.40300.40800.53800.55900.58400.146400.2397200 | TOILET FLOORING WORK | 7d | 2027-06-11 | 2027-06-17 | 5552 |  | RGA -FINISHING | 7395465 |
| 5554 | 40200.40300.40800.53800.55900.58400.146400.2397300 | FIRE FIGHTING | 8d | 2027-04-17 | 2027-04-24 | 5240 |  | RGA -FINISHING | 7395475 |
| 5555 | 40200.40300.40800.53800.55900.58400.146400.2397400 | INTERNAL PAINTING - PUTTY / PRIMER APPLICATION | 5d | 2027-07-10 | 2027-07-14 | 5557 |  | RGA -FINISHING | 7395485 |
| 5556 | 40200.40300.40800.53800.55900.58400.146400.2397500 | FLAT FLOORING | 7d | 2027-06-18 | 2027-06-24 | 5553 |  | RGA -FINISHING | 7395495 |
| 5557 | 40200.40300.40800.53800.55900.58400.146400.2397600 | WINDOW FIXING | 5d | 2027-07-05 | 2027-07-09 | 5556FS+10d |  | RGA -FINISHING | 7395505 |
| 5558 | 40200.40300.40800.53800.55900.58400.146400.2397700 | INTERNAL PAINTING - 1ST COAT | 4d | 2027-07-15 | 2027-07-18 | 5555 |  | RGA -FINISHING | 7395515 |
| 5559 | 40200.40300.40800.53800.55900.58400.146400.2397800 | INTERNAL DOOR FIXING | 15d | 2027-07-17 | 2027-07-31 | 5558FS-2d |  | RGA -FINISHING | 7395525 |
| 5560 | 40200.40300.40800.53800.55900.58400.146400.2397900 | WIRING & SWITCH PLATE FIXING | 8d | 2027-07-28 | 2027-08-04 | 5559FS-4d |  | RGA -FINISHING | 7395535 |
| 5561 | 40200.40300.40800.53800.55900.58400.146400.2398000 | TOILET FALSE CEILING | 7d | 2027-08-05 | 2027-08-11 | 5560 |  | RGA -FINISHING | 7395545 |
| 5562 | 40200.40300.40800.53800.55900.58400.146400.2398100 | MAIN DOOR FRAME SHUTTER FIXING | 6d | 2028-01-21 | 2028-01-26 | 5794 |  | RGA -FINISHING | 7395555 |
| 5563 | 40200.40300.40800.53800.55900.58400.146400.2398200 | FINAL COAT PAINT | 8d | 2028-01-27 | 2028-02-03 | 5562 |  | RGA -FINISHING | 7395565 |

| ID | WBS | Task | Duration | Start | Finish | Predecessors | Constraint | Calendar | Unique_Task_ID |
| --- | --- | --- | --- | --- | --- | --- | --- | --- | --- |
| 5564 | 40200.40300.40800.53800.55900.58400.146500 | **21st FLOOR** | 286d | 2027-05-04 | 2028-02-13 |  | start no earlier than 2027-05-04 | RGA -FINISHING | 7392045 |
| 5565 | 40200.40300.40800.53800.55900.58400.146500.2398300 | TOILET DADO TILE FIXING | 10d | 2027-06-18 | 2027-06-27 | 5248 |  | RGA -FINISHING | 7395575 |
| 5566 | 40200.40300.40800.53800.55900.58400.146500.2398400 | TOILET FLOORING WORK | 7d | 2027-06-28 | 2027-07-04 | 5565 |  | RGA -FINISHING | 7395585 |
| 5567 | 40200.40300.40800.53800.55900.58400.146500.2398500 | FIRE FIGHTING | 8d | 2027-05-04 | 2027-05-11 | 5247 |  | RGA -FINISHING | 7395595 |
| 5568 | 40200.40300.40800.53800.55900.58400.146500.2398600 | INTERNAL PAINTING - PUTTY / PRIMER APPLICATION | 15d | 2027-07-27 | 2027-08-10 | 5570 |  | RGA -FINISHING | 7395605 |
| 5569 | 40200.40300.40800.53800.55900.58400.146500.2398700 | FLAT FLOORING | 5d | 2027-07-05 | 2027-07-09 | 5566 |  | RGA -FINISHING | 7395615 |
| 5570 | 40200.40300.40800.53800.55900.58400.146500.2398800 | WINDOW FIXING | 7d | 2027-07-20 | 2027-07-26 | 5569FS+10d |  | RGA -FINISHING | 7395625 |
| 5571 | 40200.40300.40800.53800.55900.58400.146500.2398900 | INTERNAL PAINTING - 1ST COAT | 5d | 2027-08-11 | 2027-08-15 | 5568 |  | RGA -FINISHING | 7395635 |
| 5572 | 40200.40300.40800.53800.55900.58400.146500.2399000 | INTERNAL DOOR FIXING | 4d | 2027-08-14 | 2027-08-17 | 5571FS-2d |  | RGA -FINISHING | 7395645 |
| 5573 | 40200.40300.40800.53800.55900.58400.146500.2399100 | WIRING & SWITCH PLATE FIXING | 8d | 2027-08-14 | 2027-08-21 | 5572FS-4d |  | RGA -FINISHING | 7395655 |
| 5574 | 40200.40300.40800.53800.55900.58400.146500.2399200 | TOILET FALSE CEILING | 7d | 2027-08-22 | 2027-08-28 | 5573 |  | RGA -FINISHING | 7395665 |
| 5575 | 40200.40300.40800.53800.55900.58400.146500.2399300 | MAIN DOOR FRAME SHUTTER FIXING | 6d | 2028-01-31 | 2028-02-05 | 5802 |  | RGA -FINISHING | 7395675 |
| 5576 | 40200.40300.40800.53800.55900.58400.146500.2399400 | FINAL COAT PAINT | 8d | 2028-02-06 | 2028-02-13 | 5575 |  | RGA -FINISHING | 7395685 |
| 5577 | 40200.40300.40800.53800.55900.58400.146600 | **22nd FLOOR** | 269d | 2027-05-21 | 2028-02-13 |  | start no earlier than 2027-05-21 | RGA -FINISHING | 7392055 |
| 5578 | 40200.40300.40800.53800.55900.58400.146600.2399500 | TOILET DADO TILE FIXING | 10d | 2027-07-05 | 2027-07-14 | 5255 |  | RGA -FINISHING | 7395695 |
| 5579 | 40200.40300.40800.53800.55900.58400.146600.2399600 | TOILET FLOORING WORK | 7d | 2027-07-15 | 2027-07-21 | 5578 |  | RGA -FINISHING | 7395705 |
| 5580 | 40200.40300.40800.53800.55900.58400.146600.2399700 | FIRE FIGHTING | 8d | 2027-05-21 | 2027-05-28 | 5254 |  | RGA -FINISHING | 7395715 |
| 5581 | 40200.40300.40800.53800.55900.58400.146600.2399800 | INTERNAL PAINTING - PUTTY / PRIMER APPLICATION | 5d | 2027-08-11 | 2027-08-15 | 5583 |  | RGA -FINISHING | 7395725 |
| 5582 | 40200.40300.40800.53800.55900.58400.146600.2399900 | FLAT FLOORING | 7d | 2027-07-22 | 2027-07-28 | 5579 |  | RGA -FINISHING | 7395735 |
| 5583 | 40200.40300.40800.53800.55900.58400.146600.2400000 | WINDOW FIXING | 5d | 2027-08-06 | 2027-08-10 | 5570FS+10d |  | RGA -FINISHING | 7395745 |
| 5584 | 40200.40300.40800.53800.55900.58400.146600.2400100 | INTERNAL PAINTING - 1ST COAT | 4d | 2027-08-16 | 2027-08-19 | 5581 |  | RGA -FINISHING | 7395755 |
| 5585 | 40200.40300.40800.53800.55900.58400.146600.2400200 | INTERNAL DOOR FIXING | 15d | 2027-08-18 | 2027-09-01 | 5584FS-2d |  | RGA -FINISHING | 7395765 |
| 5586 | 40200.40300.40800.53800.55900.58400.146600.2400300 | WIRING & SWITCH PLATE FIXING | 8d | 2027-08-29 | 2027-09-05 | 5585FS-4d |  | RGA -FINISHING | 7395775 |
| 5587 | 40200.40300.40800.53800.55900.58400.146600.2400400 | TOILET FALSE CEILING | 7d | 2027-09-06 | 2027-09-12 | 5586 |  | RGA -FINISHING | 7395785 |
| 5588 | 40200.40300.40800.53800.55900.58400.146600.2400500 | MAIN DOOR FRAME SHUTTER FIXING | 6d | 2028-01-31 | 2028-02-05 | 5810 |  | RGA -FINISHING | 7395795 |
| 5589 | 40200.40300.40800.53800.55900.58400.146600.2400600 | FINAL COAT PAINT | 8d | 2028-02-06 | 2028-02-13 | 5588 |  | RGA -FINISHING | 7395805 |

| ID | WBS | Task | Duration | Start | Finish | Predecessors | Constraint | Calendar | Unique_Task_ID |
| --- | --- | --- | --- | --- | --- | --- | --- | --- | --- |
| 5590 | 40200.40300.40800.53800.55900.58400.146700 | **23TH FLOOR** | 260d | 2027-05-30 | 2028-02-13 |  | start no earlier than 2027-05-30 | RGA -FINISHING | 7392065 |
| 5591 | 40200.40300.40800.53800.55900.58400.146700.2400700 | TOILET DADO TILE FIXING | 10d | 2027-09-10 | 2027-09-19 | 5262 |  | RGA -FINISHING | 7395815 |
| 5592 | 40200.40300.40800.53800.55900.58400.146700.2400800 | TOILET FLOORING WORK | 7d | 2027-09-20 | 2027-09-26 | 5591 |  | RGA -FINISHING | 7395825 |
| 5593 | 40200.40300.40800.53800.55900.58400.146700.2400900 | FIRE FIGHTING | 8d | 2027-05-30 | 2027-06-06 | 5261 |  | RGA -FINISHING | 7395835 |
| 5594 | 40200.40300.40800.53800.55900.58400.146700.2401000 | INTERNAL PAINTING - PUTTY / PRIMER APPLICATION | 5d | 2027-10-19 | 2027-10-23 | 5596 |  | RGA -FINISHING | 7395845 |
| 5595 | 40200.40300.40800.53800.55900.58400.146700.2401100 | FLAT FLOORING | 7d | 2027-09-27 | 2027-10-03 | 5592 |  | RGA -FINISHING | 7395855 |
| 5596 | 40200.40300.40800.53800.55900.58400.146700.2401200 | WINDOW FIXING | 5d | 2027-10-14 | 2027-10-18 | 5595FS+10d |  | RGA -FINISHING | 7395865 |
| 5597 | 40200.40300.40800.53800.55900.58400.146700.2401300 | INTERNAL PAINTING - 1ST COAT | 4d | 2027-10-24 | 2027-10-27 | 5594 |  | RGA -FINISHING | 7395875 |
| 5598 | 40200.40300.40800.53800.55900.58400.146700.2401400 | INTERNAL DOOR FIXING | 15d | 2027-10-26 | 2027-11-09 | 5597FS-2d |  | RGA -FINISHING | 7395885 |
| 5599 | 40200.40300.40800.53800.55900.58400.146700.2401500 | WIRING & SWITCH PLATE FIXING | 8d | 2027-11-06 | 2027-11-13 | 5598FS-4d |  | RGA -FINISHING | 7395895 |
| 5600 | 40200.40300.40800.53800.55900.58400.146700.2401600 | TOILET FALSE CEILING | 7d | 2027-11-14 | 2027-11-20 | 5599 |  | RGA -FINISHING | 7395905 |
| 5601 | 40200.40300.40800.53800.55900.58400.146700.2401700 | MAIN DOOR FRAME SHUTTER FIXING | 6d | 2028-01-31 | 2028-02-05 | 5818 |  | RGA -FINISHING | 7395915 |
| 5602 | 40200.40300.40800.53800.55900.58400.146700.2401800 | FINAL COAT PAINT | 8d | 2028-02-06 | 2028-02-13 | 5601 |  | RGA -FINISHING | 7395925 |
| 5603 | 40200.40300.40800.53800.55900.58400.146800 | **24TH FLOOR** | 231d | 2027-06-28 | 2028-02-13 |  | start no earlier than 2027-06-28 | RGA -FINISHING | 7392075 |
| 5604 | 40200.40300.40800.53800.55900.58400.146800.2401900 | TOILET DADO TILE FIXING | 10d | 2027-09-19 | 2027-09-28 | 5269 |  | RGA -FINISHING | 7395935 |
| 5605 | 40200.40300.40800.53800.55900.58400.146800.2402000 | TOILET FLOORING WORK | 7d | 2027-09-29 | 2027-10-05 | 5604 |  | RGA -FINISHING | 7395945 |
| 5606 | 40200.40300.40800.53800.55900.58400.146800.2402100 | FIRE FIGHTING | 8d | 2027-06-28 | 2027-07-05 | 5268 |  | RGA -FINISHING | 7395955 |
| 5607 | 40200.40300.40800.53800.55900.58400.146800.2402200 | INTERNAL PAINTING - PUTTY / PRIMER APPLICATION | 5d | 2027-10-28 | 2027-11-01 | 5609 |  | RGA -FINISHING | 7395965 |
| 5608 | 40200.40300.40800.53800.55900.58400.146800.2402300 | FLAT FLOORING | 7d | 2027-10-06 | 2027-10-12 | 5605 |  | RGA -FINISHING | 7395975 |
| 5609 | 40200.40300.40800.53800.55900.58400.146800.2402400 | WINDOW FIXING | 5d | 2027-10-23 | 2027-10-27 | 5608FS+10d |  | RGA -FINISHING | 7395985 |
| 5610 | 40200.40300.40800.53800.55900.58400.146800.2402500 | INTERNAL PAINTING - 1ST COAT | 4d | 2027-11-02 | 2027-11-05 | 5607 |  | RGA -FINISHING | 7395995 |
| 5611 | 40200.40300.40800.53800.55900.58400.146800.2402600 | INTERNAL DOOR FIXING | 15d | 2027-11-04 | 2027-11-18 | 5610FS-2d |  | RGA -FINISHING | 7396005 |
| 5612 | 40200.40300.40800.53800.55900.58400.146800.2402700 | WIRING & SWITCH PLATE FIXING | 8d | 2027-11-15 | 2027-11-22 | 5611FS-4d |  | RGA -FINISHING | 7396015 |
| 5613 | 40200.40300.40800.53800.55900.58400.146800.2402800 | TOILET FALSE CEILING | 7d | 2027-11-23 | 2027-11-29 | 5612 |  | RGA -FINISHING | 7396025 |
| 5614 | 40200.40300.40800.53800.55900.58400.146800.2402900 | MAIN DOOR FRAME SHUTTER FIXING | 6d | 2028-01-31 | 2028-02-05 | 5826 |  | RGA -FINISHING | 7396035 |
| 5615 | 40200.40300.40800.53800.55900.58400.146800.2403000 | FINAL COAT PAINT | 8d | 2028-02-06 | 2028-02-13 | 5614 |  | RGA -FINISHING | 7396045 |

| ID | WBS | Task | Duration | Start | Finish | Predecessors | Constraint | Calendar | Unique_Task_ID |
| --- | --- | --- | --- | --- | --- | --- | --- | --- | --- |
| 5616 | 40200.40300.40800.53800.55900.58400.146900 | **25TH FLOOR** | 212d | 2027-07-27 | 2028-02-23 |  | start no earlier than 2027-07-27 | RGA -FINISHING | 7392085 |
| 5617 | 40200.40300.40800.53800.55900.58400.146900.2403100 | TOILET DADO TILE FIXING | 10d | 2027-09-28 | 2027-10-07 | 5276 |  | RGA -FINISHING | 7396055 |
| 5618 | 40200.40300.40800.53800.55900.58400.146900.2403200 | TOILET FLOORING WORK | 7d | 2027-10-08 | 2027-10-14 | 5617 |  | RGA -FINISHING | 7396065 |
| 5619 | 40200.40300.40800.53800.55900.58400.146900.2403300 | FIRE FIGHTING | 8d | 2027-07-27 | 2027-08-03 | 5275 |  | RGA -FINISHING | 7396075 |
| 5620 | 40200.40300.40800.53800.55900.58400.146900.2403400 | INTERNAL PAINTING - PUTTY / PRIMER APPLICATION | 5d | 2027-11-16 | 2027-11-20 | 5622 |  | RGA -FINISHING | 7396085 |
| 5621 | 40200.40300.40800.53800.55900.58400.146900.2403500 | FLAT FLOORING | 7d | 2027-10-15 | 2027-10-21 | 5618 |  | RGA -FINISHING | 7396095 |
| 5622 | 40200.40300.40800.53800.55900.58400.146900.2403600 | WINDOW FIXING | 5d | 2027-11-11 | 2027-11-15 | 5621FS+20d |  | RGA -FINISHING | 7396105 |
| 5623 | 40200.40300.40800.53800.55900.58400.146900.2403700 | INTERNAL PAINTING - 1ST COAT | 4d | 2027-11-21 | 2027-11-24 | 5620 |  | RGA -FINISHING | 7396115 |
| 5624 | 40200.40300.40800.53800.55900.58400.146900.2403800 | INTERNAL DOOR FIXING | 15d | 2027-11-23 | 2027-12-07 | 5623FS-2d |  | RGA -FINISHING | 7396125 |
| 5625 | 40200.40300.40800.53800.55900.58400.146900.2403900 | WIRING & SWITCH PLATE FIXING | 8d | 2027-12-04 | 2027-12-11 | 5624FS-4d |  | RGA -FINISHING | 7396135 |
| 5626 | 40200.40300.40800.53800.55900.58400.146900.2404000 | TOILET FALSE CEILING | 7d | 2027-12-12 | 2027-12-18 | 5625 |  | RGA -FINISHING | 7396145 |
| 5627 | 40200.40300.40800.53800.55900.58400.146900.2404100 | MAIN DOOR FRAME SHUTTER FIXING | 6d | 2028-02-10 | 2028-02-15 | 5834 |  | RGA -FINISHING | 7396155 |
| 5628 | 40200.40300.40800.53800.55900.58400.146900.2404200 | FINAL COAT PAINT | 8d | 2028-02-16 | 2028-02-23 | 5627 |  | RGA -FINISHING | 7396165 |
| 5629 | 40200.40300.40800.53800.55900.60300 | **LIFT LOBBY & STAIRCASE FINISHING WORK** | 668d | 2026-05-07 | 2028-03-04 |  | start no earlier than 2026-05-07 | RGA -FINISHING | 7391805 |
| 5630 | 40200.40300.40800.53800.55900.60300.242500 | **GROUND FLOOR** | 581d | 2026-05-07 | 2027-12-08 |  | start no earlier than 2026-05-07 | RGA -FINISHING | 7392215 |
| 5631 | 40200.40300.40800.53800.55900.60300.242500.2404300 | FIRE FIGHTING | 5d | 2026-05-07 | 2026-05-11 | 5307FS-5d |  | RGA -FINISHING | 7397015 |
| 5632 | 40200.40300.40800.53800.55900.60300.242500.2404400 | LIFT BLOCK WORK | 3d | 2027-05-29 | 2027-05-31 | 5086 |  | RGA -FINISHING | 7397025 |
| 5633 | 40200.40300.40800.53800.55900.60300.242500.2404500 | LIFT DADO WORK | 6d | 2027-11-06 | 2027-11-11 | 5841FS-5d |  | RGA -FINISHING | 7397035 |
| 5634 | 40200.40300.40800.53800.55900.60300.242500.2404600 | LOBBY FLOORING WORK | 8d | 2027-11-12 | 2027-11-19 | 5633 |  | RGA -FINISHING | 7397045 |
| 5635 | 40200.40300.40800.53800.55900.60300.242500.2404700 | ELECTRICAL WIRING & SWITCH PLATE FIXING WORK | 6d | 2027-11-20 | 2027-11-25 | 5634 |  | RGA -FINISHING | 7397055 |
| 5636 | 40200.40300.40800.53800.55900.60300.242500.2404800 | False ceiling & 1ST COAT PAINTING | 10d | 2027-11-26 | 2027-12-05 | 5635 |  | RGA -FINISHING | 7397065 |
| 5637 | 40200.40300.40800.53800.55900.60300.242500.2404900 | CLEANING | 3d | 2027-12-06 | 2027-12-08 | 5636 |  | RGA -FINISHING | 7397075 |
| 5638 | 40200.40300.40800.53800.55900.60300.242600 | **1ST FLOOR** | 598d | 2026-05-07 | 2027-12-25 |  | start no earlier than 2026-05-07 | RGA -FINISHING | 7392225 |
| 5639 | 40200.40300.40800.53800.55900.60300.242600.2405000 | FIRE FIGHTING | 10d | 2026-05-07 | 2026-05-16 | 5307FS-5d |  | RGA -FINISHING | 7397085 |
| 5640 | 40200.40300.40800.53800.55900.60300.242600.2405100 | LIFT BLOCK WORK | 3d | 2027-06-01 | 2027-06-03 | 5632 |  | RGA -FINISHING | 7397095 |
| 5641 | 40200.40300.40800.53800.55900.60300.242600.2405200 | LIFT DADO WORK | 10d | 2027-11-12 | 2027-11-21 | 5633 |  | RGA -FINISHING | 7397105 |
| 5642 | 40200.40300.40800.53800.55900.60300.242600.2405300 | LOBBY FLOORING WORK | 10d | 2027-11-22 | 2027-12-01 | 5641 |  | RGA -FINISHING | 7397115 |
| 5643 | 40200.40300.40800.53800.55900.60300.242600.2405400 | ELECTRICAL WIRING & SWITCH PLATE FIXING WORK | 6d | 2027-12-02 | 2027-12-07 | 5642 |  | RGA -FINISHING | 7397125 |
| 5644 | 40200.40300.40800.53800.55900.60300.242600.2405500 | False ceiling & 1ST COAT PAINTING | 15d | 2027-12-08 | 2027-12-22 | 5643 |  | RGA -FINISHING | 7397135 |
| 5645 | 40200.40300.40800.53800.55900.60300.242600.2405600 | CLEANING | 3d | 2027-12-23 | 2027-12-25 | 5644 |  | RGA -FINISHING | 7397145 |

Notes:
- 5629: Completion in 12 months post last RCC
- 5631: Assumed
- 5639: Assumed

| ID | WBS | Task | Duration | Start | Finish | Predecessors | Constraint | Calendar | Unique_Task_ID |
| --- | --- | --- | --- | --- | --- | --- | --- | --- | --- |
| 5646 | 40200.40300.40800.53800.55900.60300.242700 | **2nd FLOOR** | 580d | 2026-05-25 | 2027-12-25 |  | start no earlier than 2026-05-25 | RGA -FINISHING | 7392235 |
| 5647 | 40200.40300.40800.53800.55900.60300.242700.2405700 | FIRE FIGHTING | 10d | 2026-05-25 | 2026-06-03 | 5320FS-5d |  | RGA -FINISHING | 7397155 |
| 5648 | 40200.40300.40800.53800.55900.60300.242700.2405800 | LIFT BLOCK WORK | 3d | 2027-06-01 | 2027-06-03 | 5640SS |  | RGA -FINISHING | 7397165 |
| 5649 | 40200.40300.40800.53800.55900.60300.242700.2405900 | LIFT DADO WORK | 10d | 2027-11-12 | 2027-11-21 | 5641SS |  | RGA -FINISHING | 7397175 |
| 5650 | 40200.40300.40800.53800.55900.60300.242700.2406000 | LOBBY FLOORING WORK | 10d | 2027-11-22 | 2027-12-01 | 5649 |  | RGA -FINISHING | 7397185 |
| 5651 | 40200.40300.40800.53800.55900.60300.242700.2406100 | ELECTRICAL WIRING & SWITCH PLATE FIXING WORK | 6d | 2027-12-02 | 2027-12-07 | 5650 |  | RGA -FINISHING | 7397195 |
| 5652 | 40200.40300.40800.53800.55900.60300.242700.2406200 | False ceiling & 1ST COAT PAINTING | 15d | 2027-12-08 | 2027-12-22 | 5651 |  | RGA -FINISHING | 7397205 |
| 5653 | 40200.40300.40800.53800.55900.60300.242700.2406300 | CLEANING | 3d | 2027-12-23 | 2027-12-25 | 5652 |  | RGA -FINISHING | 7397215 |
| 5654 | 40200.40300.40800.53800.55900.60300.242800 | **3rd FLOOR** | 563d | 2026-06-11 | 2027-12-25 |  | start no earlier than 2026-06-11 | RGA -FINISHING | 7392275 |
| 5655 | 40200.40300.40800.53800.55900.60300.242800.2406400 | FIRE FIGHTING | 10d | 2026-06-11 | 2026-06-20 | 5333FS-5d |  | RGA -FINISHING | 7397225 |
| 5656 | 40200.40300.40800.53800.55900.60300.242800.2406500 | LIFT BLOCK WORK | 3d | 2027-06-01 | 2027-06-03 | 5648SS |  | RGA -FINISHING | 7397235 |
| 5657 | 40200.40300.40800.53800.55900.60300.242800.2406600 | LIFT DADO WORK | 10d | 2027-11-12 | 2027-11-21 | 5649SS |  | RGA -FINISHING | 7397245 |
| 5658 | 40200.40300.40800.53800.55900.60300.242800.2406700 | LOBBY FLOORING WORK | 10d | 2027-11-22 | 2027-12-01 | 5657 |  | RGA -FINISHING | 7397255 |
| 5659 | 40200.40300.40800.53800.55900.60300.242800.2406800 | ELECTRICAL WIRING & SWITCH PLATE FIXING WORK | 6d | 2027-12-02 | 2027-12-07 | 5658 |  | RGA -FINISHING | 7397265 |
| 5660 | 40200.40300.40800.53800.55900.60300.242800.2406900 | False ceiling & 1ST COAT PAINTING | 15d | 2027-12-08 | 2027-12-22 | 5659 |  | RGA -FINISHING | 7397275 |
| 5661 | 40200.40300.40800.53800.55900.60300.242800.2407000 | CLEANING | 3d | 2027-12-23 | 2027-12-25 | 5660 |  | RGA -FINISHING | 7397285 |
| 5662 | 40200.40300.40800.53800.55900.60300.242900 | **4th FLOOR** | 554.5d | 2026-06-29 | 2028-01-04 |  | start no earlier than 2026-06-29 | RGA -FINISHING | 7392325 |
| 5663 | 40200.40300.40800.53800.55900.60300.242900.2407100 | FIRE FIGHTING | 10d | 2026-06-29 | 2026-07-09 | 5346FS-5d |  | RGA -FINISHING | 7397295 |
| 5664 | 40200.40300.40800.53800.55900.60300.242900.2407200 | LIFT BLOCK WORK | 3d | 2027-06-04 | 2027-06-06 | 5656 |  | RGA -FINISHING | 7397305 |
| 5665 | 40200.40300.40800.53800.55900.60300.242900.2407300 | LIFT DADO WORK | 10d | 2027-11-22 | 2027-12-01 | 5657 |  | RGA -FINISHING | 7397315 |
| 5666 | 40200.40300.40800.53800.55900.60300.242900.2407400 | LOBBY FLOORING WORK | 10d | 2027-12-02 | 2027-12-11 | 5665 |  | RGA -FINISHING | 7397325 |
| 5667 | 40200.40300.40800.53800.55900.60300.242900.2407500 | ELECTRICAL WIRING & SWITCH PLATE FIXING WORK | 6d | 2027-12-12 | 2027-12-17 | 5666 |  | RGA -FINISHING | 7397335 |
| 5668 | 40200.40300.40800.53800.55900.60300.242900.2407600 | False ceiling & 1ST COAT PAINTING | 15d | 2027-12-18 | 2028-01-01 | 5667 |  | RGA -FINISHING | 7397345 |
| 5669 | 40200.40300.40800.53800.55900.60300.242900.2407700 | CLEANING | 3d | 2028-01-02 | 2028-01-04 | 5668 |  | RGA -FINISHING | 7397355 |

Notes:
- 5647: Assumed
- 5655: Assumed
- 5663: Assumed

| ID | WBS | Task | Duration | Start | Finish | Predecessors | Constraint | Calendar | Unique_Task_ID |
| --- | --- | --- | --- | --- | --- | --- | --- | --- | --- |
| 5670 | 40200.40300.40800.53800.55900.60300.243000 | **5th FLOOR** | 524d | 2026-07-30 | 2028-01-04 |  | start no earlier than 2026-07-30 | RGA -FINISHING | 7392385 |
| 5671 | 40200.40300.40800.53800.55900.60300.243000.2407800 | FIRE FIGHTING | 10d | 2026-07-30 | 2026-08-08 | 5359FS-5d |  | RGA -FINISHING | 7397365 |
| 5672 | 40200.40300.40800.53800.55900.60300.243000.2407900 | LIFT BLOCK WORK | 3d | 2027-06-04 | 2027-06-06 | 5664SS |  | RGA -FINISHING | 7397375 |
| 5673 | 40200.40300.40800.53800.55900.60300.243000.2408000 | LIFT DADO WORK | 10d | 2027-11-22 | 2027-12-01 | 5665SS |  | RGA -FINISHING | 7397385 |
| 5674 | 40200.40300.40800.53800.55900.60300.243000.2408100 | LOBBY FLOORING WORK | 10d | 2027-12-02 | 2027-12-11 | 5673 |  | RGA -FINISHING | 7397395 |
| 5675 | 40200.40300.40800.53800.55900.60300.243000.2408200 | ELECTRICAL WIRING & SWITCH PLATE FIXING WORK | 6d | 2027-12-12 | 2027-12-17 | 5674 |  | RGA -FINISHING | 7397405 |
| 5676 | 40200.40300.40800.53800.55900.60300.243000.2408300 | False ceiling & 1ST COAT PAINTING | 15d | 2027-12-18 | 2028-01-01 | 5675 |  | RGA -FINISHING | 7397415 |
| 5677 | 40200.40300.40800.53800.55900.60300.243000.2408400 | CLEANING | 3d | 2028-01-02 | 2028-01-04 | 5676 |  | RGA -FINISHING | 7397425 |
| 5678 | 40200.40300.40800.53800.55900.60300.243100 | **6th FLOOR** | 512d | 2026-08-11 | 2028-01-04 |  | start no earlier than 2026-08-11 | RGA -FINISHING | 7392455 |
| 5679 | 40200.40300.40800.53800.55900.60300.243100.2408500 | FIRE FIGHTING | 10d | 2026-08-11 | 2026-08-20 | 5372FS-5d |  | RGA -FINISHING | 7397435 |
| 5680 | 40200.40300.40800.53800.55900.60300.243100.2408600 | LIFT BLOCK WORK | 3d | 2027-06-04 | 2027-06-06 | 5672SS |  | RGA -FINISHING | 7397445 |
| 5681 | 40200.40300.40800.53800.55900.60300.243100.2408700 | LIFT DADO WORK | 10d | 2027-11-22 | 2027-12-01 | 5673SS |  | RGA -FINISHING | 7397455 |
| 5682 | 40200.40300.40800.53800.55900.60300.243100.2408800 | LOBBY FLOORING WORK | 10d | 2027-12-02 | 2027-12-11 | 5681 |  | RGA -FINISHING | 7397465 |
| 5683 | 40200.40300.40800.53800.55900.60300.243100.2408900 | ELECTRICAL WIRING & SWITCH PLATE FIXING WORK | 6d | 2027-12-12 | 2027-12-17 | 5682 |  | RGA -FINISHING | 7397475 |
| 5684 | 40200.40300.40800.53800.55900.60300.243100.2409000 | False ceiling & 1ST COAT PAINTING | 15d | 2027-12-18 | 2028-01-01 | 5683 |  | RGA -FINISHING | 7397485 |
| 5685 | 40200.40300.40800.53800.55900.60300.243100.2409100 | CLEANING | 3d | 2028-01-02 | 2028-01-04 | 5684 |  | RGA -FINISHING | 7397495 |
| 5686 | 40200.40300.40800.53800.55900.60300.243200 | **7th FLOOR** | 466d | 2026-09-26 | 2028-01-04 |  | start no earlier than 2026-09-26 | RGA -FINISHING | 7392495 |
| 5687 | 40200.40300.40800.53800.55900.60300.243200.2409200 | FIRE FIGHTING | 10d | 2026-09-26 | 2026-10-05 | 5385FS-5d |  | RGA -FINISHING | 7397505 |
| 5688 | 40200.40300.40800.53800.55900.60300.243200.2409300 | LIFT BLOCK WORK | 3d | 2027-06-04 | 2027-06-06 | 5680SS |  | RGA -FINISHING | 7397515 |
| 5689 | 40200.40300.40800.53800.55900.60300.243200.2409400 | LIFT DADO WORK | 10d | 2027-11-22 | 2027-12-01 | 5681SS |  | RGA -FINISHING | 7397525 |
| 5690 | 40200.40300.40800.53800.55900.60300.243200.2409500 | LOBBY FLOORING WORK | 10d | 2027-12-02 | 2027-12-11 | 5689 |  | RGA -FINISHING | 7397535 |
| 5691 | 40200.40300.40800.53800.55900.60300.243200.2409600 | ELECTRICAL WIRING & SWITCH PLATE FIXING WORK | 6d | 2027-12-12 | 2027-12-17 | 5690 |  | RGA -FINISHING | 7397545 |
| 5692 | 40200.40300.40800.53800.55900.60300.243200.2409700 | False ceiling & 1ST COAT PAINTING | 15d | 2027-12-18 | 2028-01-01 | 5691 |  | RGA -FINISHING | 7397555 |
| 5693 | 40200.40300.40800.53800.55900.60300.243200.2409800 | CLEANING | 3d | 2028-01-02 | 2028-01-04 | 5692 |  | RGA -FINISHING | 7397565 |

Notes:
- 5671: Assumed
- 5679: Assumed
- 5687: Assumed

| ID | WBS | Task | Duration | Start | Finish | Predecessors | Constraint | Calendar | Unique_Task_ID |
| --- | --- | --- | --- | --- | --- | --- | --- | --- | --- |
| 5694 | 40200.40300.40800.53800.55900.60300.243300 | **8th FLOOR** | 482d | 2026-09-20 | 2028-01-14 |  | start no earlier than 2026-09-20 | RGA -FINISHING | 7392255 |
| 5695 | 40200.40300.40800.53800.55900.60300.243300.2409900 | FIRE FIGHTING | 10d | 2026-09-20 | 2026-09-29 | 5398FS-5d |  | RGA -FINISHING | 7397575 |
| 5696 | 40200.40300.40800.53800.55900.60300.243300.2410000 | LIFT BLOCK WORK | 3d | 2027-06-07 | 2027-06-09 | 5688 |  | RGA -FINISHING | 7397585 |
| 5697 | 40200.40300.40800.53800.55900.60300.243300.2410100 | LIFT DADO WORK | 10d | 2027-12-02 | 2027-12-11 | 5689 |  | RGA -FINISHING | 7397595 |
| 5698 | 40200.40300.40800.53800.55900.60300.243300.2410200 | LOBBY FLOORING WORK | 10d | 2027-12-12 | 2027-12-21 | 5697 |  | RGA -FINISHING | 7397605 |
| 5699 | 40200.40300.40800.53800.55900.60300.243300.2410300 | ELECTRICAL WIRING & SWITCH PLATE FIXING WORK | 6d | 2027-12-22 | 2027-12-27 | 5698 |  | RGA -FINISHING | 7397615 |
| 5700 | 40200.40300.40800.53800.55900.60300.243300.2410400 | False ceiling & 1ST COAT PAINTING | 15d | 2027-12-28 | 2028-01-11 | 5699 |  | RGA -FINISHING | 7397625 |
| 5701 | 40200.40300.40800.53800.55900.60300.243300.2410500 | CLEANING | 3d | 2028-01-12 | 2028-01-14 | 5700 |  | RGA -FINISHING | 7397635 |
| 5702 | 40200.40300.40800.53800.55900.60300.243400 | **9th FLOOR** | 465d | 2026-10-07 | 2028-01-14 |  | start no earlier than 2026-10-07 | RGA -FINISHING | 7392265 |
| 5703 | 40200.40300.40800.53800.55900.60300.243400.2410600 | FIRE FIGHTING | 10d | 2026-10-07 | 2026-10-16 | 5411FS-5d |  | RGA -FINISHING | 7397645 |
| 5704 | 40200.40300.40800.53800.55900.60300.243400.2410700 | LIFT BLOCK WORK | 3d | 2027-06-07 | 2027-06-09 | 5696SS |  | RGA -FINISHING | 7397655 |
| 5705 | 40200.40300.40800.53800.55900.60300.243400.2410800 | LIFT DADO WORK | 10d | 2027-12-02 | 2027-12-11 | 5697SS |  | RGA -FINISHING | 7397665 |
| 5706 | 40200.40300.40800.53800.55900.60300.243400.2410900 | LOBBY FLOORING WORK | 10d | 2027-12-12 | 2027-12-21 | 5705 |  | RGA -FINISHING | 7397675 |
| 5707 | 40200.40300.40800.53800.55900.60300.243400.2411000 | ELECTRICAL WIRING & SWITCH PLATE FIXING WORK | 6d | 2027-12-22 | 2027-12-27 | 5706 |  | RGA -FINISHING | 7397685 |
| 5708 | 40200.40300.40800.53800.55900.60300.243400.2411100 | False ceiling & 1ST COAT PAINTING | 15d | 2027-12-28 | 2028-01-11 | 5707 |  | RGA -FINISHING | 7397695 |
| 5709 | 40200.40300.40800.53800.55900.60300.243400.2411200 | CLEANING | 3d | 2028-01-12 | 2028-01-14 | 5708 |  | RGA -FINISHING | 7397705 |
| 5710 | 40200.40300.40800.53800.55900.60300.243500 | **10th FLOOR** | 447d | 2026-10-25 | 2028-01-14 |  | start no earlier than 2026-10-25 | RGA -FINISHING | 7392285 |
| 5711 | 40200.40300.40800.53800.55900.60300.243500.2411300 | FIRE FIGHTING | 10d | 2026-10-25 | 2026-11-03 | 5424FS-5d |  | RGA -FINISHING | 7397715 |
| 5712 | 40200.40300.40800.53800.55900.60300.243500.2411400 | LIFT BLOCK WORK | 3d | 2027-06-07 | 2027-06-09 | 5704SS |  | RGA -FINISHING | 7397725 |
| 5713 | 40200.40300.40800.53800.55900.60300.243500.2411500 | LIFT DADO WORK | 10d | 2027-12-02 | 2027-12-11 | 5705SS |  | RGA -FINISHING | 7397735 |
| 5714 | 40200.40300.40800.53800.55900.60300.243500.2411600 | LOBBY FLOORING WORK | 10d | 2027-12-12 | 2027-12-21 | 5713 |  | RGA -FINISHING | 7397745 |
| 5715 | 40200.40300.40800.53800.55900.60300.243500.2411700 | ELECTRICAL WIRING & SWITCH PLATE FIXING WORK | 6d | 2027-12-22 | 2027-12-27 | 5714 |  | RGA -FINISHING | 7397755 |
| 5716 | 40200.40300.40800.53800.55900.60300.243500.2411800 | False ceiling & 1ST COAT PAINTING | 15d | 2027-12-28 | 2028-01-11 | 5715 |  | RGA -FINISHING | 7397765 |
| 5717 | 40200.40300.40800.53800.55900.60300.243500.2411900 | CLEANING | 3d | 2028-01-12 | 2028-01-14 | 5716 |  | RGA -FINISHING | 7397775 |

Notes:
- 5695: Assumed
- 5703: Assumed
- 5711: Assumed

| ID | WBS | Task | Duration | Start | Finish | Predecessors | Constraint | Calendar | Unique_Task_ID |
| --- | --- | --- | --- | --- | --- | --- | --- | --- | --- |
| 5718 | 40200.40300.40800.53800.55900.60300.243600 | **11th FLOOR** | 430d | 2026-11-11 | 2028-01-14 |  | start no earlier than 2026-11-11 | RGA -FINISHING | 7392295 |
| 5719 | 40200.40300.40800.53800.55900.60300.243600.2412000 | FIRE FIGHTING | 10d | 2026-11-11 | 2026-11-20 | 5437FS-5d |  | RGA -FINISHING | 7397785 |
| 5720 | 40200.40300.40800.53800.55900.60300.243600.2412100 | LIFT BLOCK WORK | 3d | 2027-06-07 | 2027-06-09 | 5712SS |  | RGA -FINISHING | 7397795 |
| 5721 | 40200.40300.40800.53800.55900.60300.243600.2412200 | LIFT DADO WORK | 10d | 2027-12-02 | 2027-12-11 | 5713SS |  | RGA -FINISHING | 7397805 |
| 5722 | 40200.40300.40800.53800.55900.60300.243600.2412300 | LOBBY FLOORING WORK | 10d | 2027-12-12 | 2027-12-21 | 5721 |  | RGA -FINISHING | 7397815 |
| 5723 | 40200.40300.40800.53800.55900.60300.243600.2412400 | ELECTRICAL WIRING & SWITCH PLATE FIXING WORK | 6d | 2027-12-22 | 2027-12-27 | 5722 |  | RGA -FINISHING | 7397825 |
| 5724 | 40200.40300.40800.53800.55900.60300.243600.2412500 | False ceiling & 1ST COAT PAINTING | 15d | 2027-12-28 | 2028-01-11 | 5723 |  | RGA -FINISHING | 7397835 |
| 5725 | 40200.40300.40800.53800.55900.60300.243600.2412600 | CLEANING | 3d | 2028-01-12 | 2028-01-14 | 5724 |  | RGA -FINISHING | 7397845 |
| 5726 | 40200.40300.40800.53800.55900.60300.243700 | **12th FLOOR** | 433d | 2026-11-18 | 2028-01-24 |  | start no earlier than 2026-11-18 | RGA -FINISHING | 7392305 |
| 5727 | 40200.40300.40800.53800.55900.60300.243700.2412700 | FIRE FIGHTING | 10d | 2026-11-18 | 2026-11-27 | 5450FS-5d |  | RGA -FINISHING | 7397855 |
| 5728 | 40200.40300.40800.53800.55900.60300.243700.2412800 | LIFT BLOCK WORK | 3d | 2027-06-10 | 2027-06-12 | 5720 |  | RGA -FINISHING | 7397865 |
| 5729 | 40200.40300.40800.53800.55900.60300.243700.2412900 | LIFT DADO WORK | 10d | 2027-12-12 | 2027-12-21 | 5721 |  | RGA -FINISHING | 7397875 |
| 5730 | 40200.40300.40800.53800.55900.60300.243700.2413000 | LOBBY FLOORING WORK | 10d | 2027-12-22 | 2027-12-31 | 5729 |  | RGA -FINISHING | 7397885 |
| 5731 | 40200.40300.40800.53800.55900.60300.243700.2413100 | ELECTRICAL WIRING & SWITCH PLATE FIXING WORK | 6d | 2028-01-01 | 2028-01-06 | 5730 |  | RGA -FINISHING | 7397895 |
| 5732 | 40200.40300.40800.53800.55900.60300.243700.2413200 | False ceiling & 1ST COAT PAINTING | 15d | 2028-01-07 | 2028-01-21 | 5731 |  | RGA -FINISHING | 7397905 |
| 5733 | 40200.40300.40800.53800.55900.60300.243700.2413300 | CLEANING | 3d | 2028-01-22 | 2028-01-24 | 5732 |  | RGA -FINISHING | 7397915 |
| 5734 | 40200.40300.40800.53800.55900.60300.243800 | **13th FLOOR** | 405.5d | 2026-12-15 | 2028-01-24 |  | start no earlier than 2026-12-15 | RGA -FINISHING | 7392315 |
| 5735 | 40200.40300.40800.53800.55900.60300.243800.2413400 | FIRE FIGHTING | 10d | 2026-12-15 | 2026-12-25 | 5463FS-5d |  | RGA -FINISHING | 7397925 |
| 5736 | 40200.40300.40800.53800.55900.60300.243800.2413500 | LIFT BLOCK WORK | 3d | 2027-06-10 | 2027-06-12 | 5728SS |  | RGA -FINISHING | 7397935 |
| 5737 | 40200.40300.40800.53800.55900.60300.243800.2413600 | LIFT DADO WORK | 10d | 2027-12-12 | 2027-12-21 | 5729SS |  | RGA -FINISHING | 7397945 |
| 5738 | 40200.40300.40800.53800.55900.60300.243800.2413700 | LOBBY FLOORING WORK | 10d | 2027-12-22 | 2027-12-31 | 5737 |  | RGA -FINISHING | 7397955 |
| 5739 | 40200.40300.40800.53800.55900.60300.243800.2413800 | ELECTRICAL WIRING & SWITCH PLATE FIXING WORK | 6d | 2028-01-01 | 2028-01-06 | 5738 |  | RGA -FINISHING | 7397965 |
| 5740 | 40200.40300.40800.53800.55900.60300.243800.2413900 | False ceiling & 1ST COAT PAINTING | 15d | 2028-01-07 | 2028-01-21 | 5739 |  | RGA -FINISHING | 7397975 |
| 5741 | 40200.40300.40800.53800.55900.60300.243800.2414000 | CLEANING | 3d | 2028-01-22 | 2028-01-24 | 5740 |  | RGA -FINISHING | 7397985 |

Notes:
- 5719: Assumed
- 5727: Assumed
- 5735: Assumed

| ID | WBS | Task | Duration | Start | Finish | Predecessors | Constraint | Calendar | Unique_Task_ID |
| --- | --- | --- | --- | --- | --- | --- | --- | --- | --- |
| 5742 | 40200.40300.40800.53800.55900.60300.243900 | **14th FLOOR** | 382d | 2027-01-08 | 2028-01-24 |  | start no earlier than 2027-01-08 | RGA -FINISHING | 7392345 |
| 5743 | 40200.40300.40800.53800.55900.60300.243900.2414100 | FIRE FIGHTING | 10d | 2027-01-08 | 2027-01-17 | 5476FS-5d |  | RGA -FINISHING | 7397995 |
| 5744 | 40200.40300.40800.53800.55900.60300.243900.2414200 | LIFT BLOCK WORK | 3d | 2027-06-10 | 2027-06-12 | 5736SS |  | RGA -FINISHING | 7398005 |
| 5745 | 40200.40300.40800.53800.55900.60300.243900.2414300 | LIFT DADO WORK | 10d | 2027-12-12 | 2027-12-21 | 5737SS |  | RGA -FINISHING | 7398015 |
| 5746 | 40200.40300.40800.53800.55900.60300.243900.2414400 | LOBBY FLOORING WORK | 10d | 2027-12-22 | 2027-12-31 | 5745 |  | RGA -FINISHING | 7398025 |
| 5747 | 40200.40300.40800.53800.55900.60300.243900.2414500 | ELECTRICAL WIRING & SWITCH PLATE FIXING WORK | 6d | 2028-01-01 | 2028-01-06 | 5746 |  | RGA -FINISHING | 7398035 |
| 5748 | 40200.40300.40800.53800.55900.60300.243900.2414600 | False ceiling & 1ST COAT PAINTING | 15d | 2028-01-07 | 2028-01-21 | 5747 |  | RGA -FINISHING | 7398045 |
| 5749 | 40200.40300.40800.53800.55900.60300.243900.2414700 | CLEANING | 3d | 2028-01-22 | 2028-01-24 | 5748 |  | RGA -FINISHING | 7398055 |
| 5750 | 40200.40300.40800.53800.55900.60300.244000 | **15th FLOOR** | 365d | 2027-01-25 | 2028-01-24 |  | start no earlier than 2027-01-25 | RGA -FINISHING | 7392355 |
| 5751 | 40200.40300.40800.53800.55900.60300.244000.2414800 | FIRE FIGHTING | 10d | 2027-01-25 | 2027-02-03 | 5489FS-5d |  | RGA -FINISHING | 7398065 |
| 5752 | 40200.40300.40800.53800.55900.60300.244000.2414900 | LIFT BLOCK WORK | 3d | 2027-06-10 | 2027-06-12 | 5744SS |  | RGA -FINISHING | 7398075 |
| 5753 | 40200.40300.40800.53800.55900.60300.244000.2415000 | LIFT DADO WORK | 10d | 2027-12-12 | 2027-12-21 | 5745SS |  | RGA -FINISHING | 7398085 |
| 5754 | 40200.40300.40800.53800.55900.60300.244000.2415100 | LOBBY FLOORING WORK | 10d | 2027-12-22 | 2027-12-31 | 5753 |  | RGA -FINISHING | 7398095 |
| 5755 | 40200.40300.40800.53800.55900.60300.244000.2415200 | ELECTRICAL WIRING & SWITCH PLATE FIXING WORK | 6d | 2028-01-01 | 2028-01-06 | 5754 |  | RGA -FINISHING | 7398105 |
| 5756 | 40200.40300.40800.53800.55900.60300.244000.2415300 | False ceiling & 1ST COAT PAINTING | 15d | 2028-01-07 | 2028-01-21 | 5755 |  | RGA -FINISHING | 7398115 |
| 5757 | 40200.40300.40800.53800.55900.60300.244000.2415400 | CLEANING | 3d | 2028-01-22 | 2028-01-24 | 5756 |  | RGA -FINISHING | 7398125 |
| 5758 | 40200.40300.40800.53800.55900.60300.244100 | **16th FLOOR** | 358d | 2027-02-11 | 2028-02-03 |  | start no earlier than 2027-02-11 | RGA -FINISHING | 7392365 |
| 5759 | 40200.40300.40800.53800.55900.60300.244100.2415500 | FIRE FIGHTING | 10d | 2027-02-11 | 2027-02-20 | 5502FS-5d |  | RGA -FINISHING | 7398135 |
| 5760 | 40200.40300.40800.53800.55900.60300.244100.2415600 | LIFT BLOCK WORK | 3d | 2027-06-13 | 2027-06-15 | 5752 |  | RGA -FINISHING | 7398145 |
| 5761 | 40200.40300.40800.53800.55900.60300.244100.2415700 | LIFT DADO WORK | 10d | 2027-12-22 | 2027-12-31 | 5753 |  | RGA -FINISHING | 7398155 |
| 5762 | 40200.40300.40800.53800.55900.60300.244100.2415800 | LOBBY FLOORING WORK | 10d | 2028-01-01 | 2028-01-10 | 5761 |  | RGA -FINISHING | 7398165 |
| 5763 | 40200.40300.40800.53800.55900.60300.244100.2415900 | ELECTRICAL WIRING & SWITCH PLATE FIXING WORK | 6d | 2028-01-11 | 2028-01-16 | 5762 |  | RGA -FINISHING | 7398175 |
| 5764 | 40200.40300.40800.53800.55900.60300.244100.2416000 | False ceiling & 1ST COAT PAINTING | 15d | 2028-01-17 | 2028-01-31 | 5763 |  | RGA -FINISHING | 7398185 |
| 5765 | 40200.40300.40800.53800.55900.60300.244100.2416100 | CLEANING | 3d | 2028-02-01 | 2028-02-03 | 5764 |  | RGA -FINISHING | 7398195 |

Notes:
- 5743: Assumed
- 5751: Assumed
- 5759: Assumed

| ID | WBS | Task | Duration | Start | Finish | Predecessors | Constraint | Calendar | Unique_Task_ID |
| --- | --- | --- | --- | --- | --- | --- | --- | --- | --- |
| 5766 | 40200.40300.40800.53800.55900.60300.244200 | **17th FLOOR** | 341d | 2027-02-28 | 2028-02-03 |  | start no earlier than 2027-02-28 | RGA -FINISHING | 7392375 |
| 5767 | 40200.40300.40800.53800.55900.60300.244200.2416200 | FIRE FIGHTING | 10d | 2027-02-28 | 2027-03-09 | 5515FS-5d |  | RGA -FINISHING | 7398205 |
| 5768 | 40200.40300.40800.53800.55900.60300.244200.2416300 | LIFT BLOCK WORK | 3d | 2027-06-13 | 2027-06-15 | 5760SS |  | RGA -FINISHING | 7398215 |
| 5769 | 40200.40300.40800.53800.55900.60300.244200.2416400 | LIFT DADO WORK | 10d | 2027-12-22 | 2027-12-31 | 5761SS |  | RGA -FINISHING | 7398225 |
| 5770 | 40200.40300.40800.53800.55900.60300.244200.2416500 | LOBBY FLOORING WORK | 10d | 2028-01-01 | 2028-01-10 | 5769 |  | RGA -FINISHING | 7398235 |
| 5771 | 40200.40300.40800.53800.55900.60300.244200.2416600 | ELECTRICAL WIRING & SWITCH PLATE FIXING WORK | 6d | 2028-01-11 | 2028-01-16 | 5770 |  | RGA -FINISHING | 7398245 |
| 5772 | 40200.40300.40800.53800.55900.60300.244200.2416700 | False ceiling & 1ST COAT PAINTING | 15d | 2028-01-17 | 2028-01-31 | 5771 |  | RGA -FINISHING | 7398255 |
| 5773 | 40200.40300.40800.53800.55900.60300.244200.2416800 | CLEANING | 3d | 2028-02-01 | 2028-02-03 | 5772 |  | RGA -FINISHING | 7398265 |
| 5774 | 40200.40300.40800.53800.55900.60300.244300 | **18th FLOOR** | 324d | 2027-03-17 | 2028-02-03 |  | start no earlier than 2027-03-17 | RGA -FINISHING | 7392395 |
| 5775 | 40200.40300.40800.53800.55900.60300.244300.2416900 | FIRE FIGHTING | 10d | 2027-03-17 | 2027-03-26 | 5528FS-5d |  | RGA -FINISHING | 7398275 |
| 5776 | 40200.40300.40800.53800.55900.60300.244300.2417000 | LIFT BLOCK WORK | 3d | 2027-06-13 | 2027-06-15 | 5768SS |  | RGA -FINISHING | 7398285 |
| 5777 | 40200.40300.40800.53800.55900.60300.244300.2417100 | LIFT DADO WORK | 10d | 2027-12-22 | 2027-12-31 | 5769SS |  | RGA -FINISHING | 7398295 |
| 5778 | 40200.40300.40800.53800.55900.60300.244300.2417200 | LOBBY FLOORING WORK | 10d | 2028-01-01 | 2028-01-10 | 5777 |  | RGA -FINISHING | 7398305 |
| 5779 | 40200.40300.40800.53800.55900.60300.244300.2417300 | ELECTRICAL WIRING & SWITCH PLATE FIXING WORK | 6d | 2028-01-11 | 2028-01-16 | 5778 |  | RGA -FINISHING | 7398315 |
| 5780 | 40200.40300.40800.53800.55900.60300.244300.2417400 | False ceiling & 1ST COAT PAINTING | 15d | 2028-01-17 | 2028-01-31 | 5779 |  | RGA -FINISHING | 7398325 |
| 5781 | 40200.40300.40800.53800.55900.60300.244300.2417500 | CLEANING | 3d | 2028-02-01 | 2028-02-03 | 5780 |  | RGA -FINISHING | 7398335 |
| 5782 | 40200.40300.40800.53800.55900.60300.244400 | **19th FLOOR** | 317d | 2027-04-03 | 2028-02-13 |  | start no earlier than 2027-04-03 | RGA -FINISHING | 7392405 |
| 5783 | 40200.40300.40800.53800.55900.60300.244400.2417600 | FIRE FIGHTING | 10d | 2027-04-03 | 2027-04-12 | 5541FS-5d |  | RGA -FINISHING | 7398345 |
| 5784 | 40200.40300.40800.53800.55900.60300.244400.2417700 | LIFT BLOCK WORK | 3d | 2027-06-16 | 2027-06-18 | 5776 |  | RGA -FINISHING | 7398355 |
| 5785 | 40200.40300.40800.53800.55900.60300.244400.2417800 | LIFT DADO WORK | 10d | 2028-01-01 | 2028-01-10 | 5777 |  | RGA -FINISHING | 7398365 |
| 5786 | 40200.40300.40800.53800.55900.60300.244400.2417900 | LOBBY FLOORING WORK | 10d | 2028-01-11 | 2028-01-20 | 5785 |  | RGA -FINISHING | 7398375 |
| 5787 | 40200.40300.40800.53800.55900.60300.244400.2418000 | ELECTRICAL WIRING & SWITCH PLATE FIXING WORK | 6d | 2028-01-21 | 2028-01-26 | 5786 |  | RGA -FINISHING | 7398385 |
| 5788 | 40200.40300.40800.53800.55900.60300.244400.2418100 | False ceiling & 1ST COAT PAINTING | 15d | 2028-01-27 | 2028-02-10 | 5787 |  | RGA -FINISHING | 7398395 |
| 5789 | 40200.40300.40800.53800.55900.60300.244400.2418200 | CLEANING | 3d | 2028-02-11 | 2028-02-13 | 5788 |  | RGA -FINISHING | 7398405 |

Notes:
- 5767: Assumed
- 5775: Assumed
- 5783: Assumed

| ID | WBS | Task | Duration | Start | Finish | Predecessors | Constraint | Calendar | Unique_Task_ID |
| --- | --- | --- | --- | --- | --- | --- | --- | --- | --- |
| 5790 | 40200.40300.40800.53800.55900.60300.244500 | **20th FLOOR** | 300d | 2027-04-20 | 2028-02-13 |  | start no earlier than 2027-04-20 | RGA -FINISHING | 7392425 |
| 5791 | 40200.40300.40800.53800.55900.60300.244500.2418300 | FIRE FIGHTING | 10d | 2027-04-20 | 2027-04-29 | 5554FS-5d |  | RGA -FINISHING | 7398415 |
| 5792 | 40200.40300.40800.53800.55900.60300.244500.2418400 | LIFT BLOCK WORK | 3d | 2027-06-16 | 2027-06-18 | 5784SS |  | RGA -FINISHING | 7398425 |
| 5793 | 40200.40300.40800.53800.55900.60300.244500.2418500 | LIFT DADO WORK | 10d | 2028-01-01 | 2028-01-10 | 5785SS |  | RGA -FINISHING | 7398435 |
| 5794 | 40200.40300.40800.53800.55900.60300.244500.2418600 | LOBBY FLOORING WORK | 10d | 2028-01-11 | 2028-01-20 | 5793 |  | RGA -FINISHING | 7398445 |
| 5795 | 40200.40300.40800.53800.55900.60300.244500.2418700 | ELECTRICAL WIRING & SWITCH PLATE FIXING WORK | 6d | 2028-01-21 | 2028-01-26 | 5794 |  | RGA -FINISHING | 7398455 |
| 5796 | 40200.40300.40800.53800.55900.60300.244500.2418800 | False ceiling & 1ST COAT PAINTING | 15d | 2028-01-27 | 2028-02-10 | 5795 |  | RGA -FINISHING | 7398465 |
| 5797 | 40200.40300.40800.53800.55900.60300.244500.2418900 | CLEANING | 3d | 2028-02-11 | 2028-02-13 | 5796 |  | RGA -FINISHING | 7398475 |
| 5798 | 40200.40300.40800.53800.55900.60300.244600 | **21th FLOOR** | 293d | 2027-05-07 | 2028-02-23 |  | start no earlier than 2027-05-07 | RGA -FINISHING | 7392435 |
| 5799 | 40200.40300.40800.53800.55900.60300.244600.2419000 | FIRE FIGHTING | 10d | 2027-05-07 | 2027-05-16 | 5567FS-5d |  | RGA -FINISHING | 7398485 |
| 5800 | 40200.40300.40800.53800.55900.60300.244600.2419100 | LIFT BLOCK WORK | 3d | 2027-06-19 | 2027-06-21 | 5792 |  | RGA -FINISHING | 7398495 |
| 5801 | 40200.40300.40800.53800.55900.60300.244600.2419200 | LIFT DADO WORK | 10d | 2028-01-11 | 2028-01-20 | 5793 |  | RGA -FINISHING | 7398505 |
| 5802 | 40200.40300.40800.53800.55900.60300.244600.2419300 | LOBBY FLOORING WORK | 10d | 2028-01-21 | 2028-01-30 | 5801 |  | RGA -FINISHING | 7398515 |
| 5803 | 40200.40300.40800.53800.55900.60300.244600.2419400 | ELECTRICAL WIRING & SWITCH PLATE FIXING WORK | 6d | 2028-01-31 | 2028-02-05 | 5802 |  | RGA -FINISHING | 7398525 |
| 5804 | 40200.40300.40800.53800.55900.60300.244600.2419500 | False ceiling & 1ST COAT PAINTING | 15d | 2028-02-06 | 2028-02-20 | 5803 |  | RGA -FINISHING | 7398535 |
| 5805 | 40200.40300.40800.53800.55900.60300.244600.2419600 | CLEANING | 3d | 2028-02-21 | 2028-02-23 | 5804 |  | RGA -FINISHING | 7398545 |
| 5806 | 40200.40300.40800.53800.55900.60300.244700 | **22th FLOOR** | 276d | 2027-05-24 | 2028-02-23 |  | start no earlier than 2027-05-24 | RGA -FINISHING | 7392445 |
| 5807 | 40200.40300.40800.53800.55900.60300.244700.2419700 | FIRE FIGHTING | 10d | 2027-05-24 | 2027-06-02 | 5580FS-5d |  | RGA -FINISHING | 7398555 |
| 5808 | 40200.40300.40800.53800.55900.60300.244700.2419800 | LIFT BLOCK WORK | 3d | 2027-06-19 | 2027-06-21 | 5800SS |  | RGA -FINISHING | 7398565 |
| 5809 | 40200.40300.40800.53800.55900.60300.244700.2419900 | LIFT DADO WORK | 10d | 2028-01-11 | 2028-01-20 | 5801SS |  | RGA -FINISHING | 7398575 |
| 5810 | 40200.40300.40800.53800.55900.60300.244700.2420000 | LOBBY FLOORING WORK | 10d | 2028-01-21 | 2028-01-30 | 5809 |  | RGA -FINISHING | 7398585 |
| 5811 | 40200.40300.40800.53800.55900.60300.244700.2420100 | ELECTRICAL WIRING & SWITCH PLATE FIXING WORK | 6d | 2028-01-31 | 2028-02-05 | 5810 |  | RGA -FINISHING | 7398595 |
| 5812 | 40200.40300.40800.53800.55900.60300.244700.2420200 | False ceiling & 1ST COAT PAINTING | 15d | 2028-02-06 | 2028-02-20 | 5811 |  | RGA -FINISHING | 7398605 |
| 5813 | 40200.40300.40800.53800.55900.60300.244700.2420300 | CLEANING | 3d | 2028-02-21 | 2028-02-23 | 5812 |  | RGA -FINISHING | 7398615 |

Notes:
- 5791: Assumed
- 5799: Assumed
- 5807: Assumed

| ID | WBS | Task | Duration | Start | Finish | Predecessors | Constraint | Calendar | Unique_Task_ID |
| --- | --- | --- | --- | --- | --- | --- | --- | --- | --- |
| 5814 | 40200.40300.40800.53800.55900.60300.244800 | **23th FLOOR** | 267d | 2027-06-02 | 2028-02-23 |  | start no earlier than 2027-06-02 | RGA -FINISHING | 7392465 |
| 5815 | 40200.40300.40800.53800.55900.60300.244800.2420400 | FIRE FIGHTING | 10d | 2027-06-02 | 2027-06-11 | 5593FS-5d |  | RGA -FINISHING | 7398625 |
| 5816 | 40200.40300.40800.53800.55900.60300.244800.2420500 | LIFT BLOCK WORK | 3d | 2027-06-19 | 2027-06-21 | 5808SS |  | RGA -FINISHING | 7398635 |
| 5817 | 40200.40300.40800.53800.55900.60300.244800.2420600 | LIFT DADO WORK | 10d | 2028-01-11 | 2028-01-20 | 5809SS |  | RGA -FINISHING | 7398645 |
| 5818 | 40200.40300.40800.53800.55900.60300.244800.2420700 | LOBBY FLOORING WORK | 10d | 2028-01-21 | 2028-01-30 | 5817 |  | RGA -FINISHING | 7398655 |
| 5819 | 40200.40300.40800.53800.55900.60300.244800.2420800 | ELECTRICAL WIRING & SWITCH PLATE FIXING WORK | 6d | 2028-01-31 | 2028-02-05 | 5818 |  | RGA -FINISHING | 7398665 |
| 5820 | 40200.40300.40800.53800.55900.60300.244800.2420900 | False ceiling & 1ST COAT PAINTING | 15d | 2028-02-06 | 2028-02-20 | 5819 |  | RGA -FINISHING | 7398675 |
| 5821 | 40200.40300.40800.53800.55900.60300.244800.2421000 | CLEANING | 3d | 2028-02-21 | 2028-02-23 | 5820 |  | RGA -FINISHING | 7398685 |
| 5822 | 40200.40300.40800.53800.55900.60300.244900 | **24th FLOOR** | 250d | 2027-06-19 | 2028-02-23 |  | start no earlier than 2027-06-19 | RGA -FINISHING | 7392475 |
| 5823 | 40200.40300.40800.53800.55900.60300.244900.2421100 | FIRE FIGHTING | 10d | 2027-07-01 | 2027-07-10 | 5606FS-5d |  | RGA -FINISHING | 7398695 |
| 5824 | 40200.40300.40800.53800.55900.60300.244900.2421200 | LIFT BLOCK WORK | 3d | 2027-06-19 | 2027-06-21 | 5816SS |  | RGA -FINISHING | 7398705 |
| 5825 | 40200.40300.40800.53800.55900.60300.244900.2421300 | LIFT DADO WORK | 10d | 2028-01-11 | 2028-01-20 | 5817SS |  | RGA -FINISHING | 7398715 |
| 5826 | 40200.40300.40800.53800.55900.60300.244900.2421400 | LOBBY FLOORING WORK | 10d | 2028-01-21 | 2028-01-30 | 5825 |  | RGA -FINISHING | 7398725 |
| 5827 | 40200.40300.40800.53800.55900.60300.244900.2421500 | ELECTRICAL WIRING & SWITCH PLATE FIXING WORK | 6d | 2028-01-31 | 2028-02-05 | 5826 |  | RGA -FINISHING | 7398735 |
| 5828 | 40200.40300.40800.53800.55900.60300.244900.2421600 | False ceiling & 1ST COAT PAINTING | 15d | 2028-02-06 | 2028-02-20 | 5827 |  | RGA -FINISHING | 7398745 |
| 5829 | 40200.40300.40800.53800.55900.60300.244900.2421700 | CLEANING | 3d | 2028-02-21 | 2028-02-23 | 5828 |  | RGA -FINISHING | 7398755 |
| 5830 | 40200.40300.40800.53800.55900.60300.245000 | **25th FLOOR** | 257d | 2027-06-22 | 2028-03-04 |  | start no earlier than 2027-06-22 | RGA -FINISHING | 7392485 |
| 5831 | 40200.40300.40800.53800.55900.60300.245000.2421800 | FIRE FIGHTING | 10d | 2027-07-30 | 2027-08-08 | 5619FS-5d |  | RGA -FINISHING | 7398765 |
| 5832 | 40200.40300.40800.53800.55900.60300.245000.2421900 | LIFT BLOCK WORK | 3d | 2027-06-22 | 2027-06-24 | 5824 |  | RGA -FINISHING | 7398775 |
| 5833 | 40200.40300.40800.53800.55900.60300.245000.2422000 | LIFT DADO WORK | 10d | 2028-01-21 | 2028-01-30 | 5825 |  | RGA -FINISHING | 7398785 |
| 5834 | 40200.40300.40800.53800.55900.60300.245000.2422100 | LOBBY FLOORING WORK | 10d | 2028-01-31 | 2028-02-09 | 5833 |  | RGA -FINISHING | 7398795 |
| 5835 | 40200.40300.40800.53800.55900.60300.245000.2422200 | ELECTRICAL WIRING & SWITCH PLATE FIXING WORK | 6d | 2028-02-10 | 2028-02-15 | 5834 |  | RGA -FINISHING | 7398805 |
| 5836 | 40200.40300.40800.53800.55900.60300.245000.2422300 | False ceiling & 1ST COAT PAINTING | 15d | 2028-02-16 | 2028-03-01 | 5835 |  | RGA -FINISHING | 7398815 |
| 5837 | 40200.40300.40800.53800.55900.60300.245000.2422400 | CLEANING | 3d | 2028-03-02 | 2028-03-04 | 5836 |  | RGA -FINISHING | 7398825 |

Notes:
- 5815: Assumed
- 5823: Assumed
- 5831: Assumed

| ID | WBS | Task | Duration | Start | Finish | Predecessors | Constraint | Calendar | Unique_Task_ID |
| --- | --- | --- | --- | --- | --- | --- | --- | --- | --- |
| 5838 | 40200.40300.40800.53800.55900.161500 | **Common MEP Works** | 397d | 2027-05-29 | 2028-06-28 |  | start no earlier than 2027-05-29 | RGA -FINISHING | 7392165 |
| 5839 | 40200.40300.40800.53800.55900.161500.477500 | **Lift Works** | 166d | 2027-05-29 | 2027-11-10 |  | start no earlier than 2027-05-29 | RGA -FINISHING | 7392875 |
| 5840 | 40200.40300.40800.53800.55900.161500.477500.2422500 | Lift Shaft Handover | 30d | 2027-05-29 | 2027-06-27 | 5086 |  | RGA -FINISHING | 7399325 |
| 5841 | 40200.40300.40800.53800.55900.161500.477500.2422600 | Lift installation work | 135d | 2027-06-29 | 2027-11-10 | 5840FS+1d |  | RGA -FINISHING | 7399335 |
| 5842 | 40200.40300.40800.53800.55900.161500.477600 | **Plumbing works** | 127d | 2028-02-23 | 2028-06-28 |  | start no earlier than 2028-02-23 | RGA -FINISHING | 7392865 |
| 5843 | 40200.40300.40800.53800.55900.161500.477600.2422700 | Shaft Plumbing | 90d | 2028-02-23 | 2028-05-22 | 5289FS+45d |  | RGA -FINISHING | 7399345 |
| 5844 | 40200.40300.40800.53800.55900.161500.477600.2422800 | Terrace Looping | 90d | 2028-03-31 | 2028-06-28 | 5287FS+45d |  | RGA -FINISHING | 7399355 |
| 5845 | 40200.40300.40800.53800.55900.161500.477900 | **Fire Fighting works** | 76d | 2027-07-18 | 2027-10-01 |  | start no earlier than 2027-07-18 | RGA -FINISHING | 7392855 |
| 5846 | 40200.40300.40800.53800.55900.161500.477900.2422900 | Shaft Downtake works | 60d | 2027-07-18 | 2027-09-15 | 5091FF+90d |  | RGA -FINISHING | 7399365 |
| 5847 | 40200.40300.40800.53800.55900.161500.477900.2423000 | Connection to pump room | 15d | 2027-09-17 | 2027-10-01 | 5846FS+1d |  | RGA -FINISHING | 7399375 |
| 5848 | 40200.40300.40800.53800.55900.161500.342700 | **Electrical works** | 120d | 2028-01-02 | 2028-04-30 |  | start no earlier than 2028-01-02 | RGA -FINISHING | 7392835 |
| 5849 | 40200.40300.40800.53800.55900.161500.342700.2423100 | Shaft cabling | 45d | 2028-02-28 | 2028-04-12 | 5091FF+300d |  | RGA -FINISHING | 7399385 |
| 5850 | 40200.40300.40800.53800.55900.161500.342700.2423200 | Meter room erection | 15d | 2028-04-01 | 2028-04-15 | 4957FS+380d |  | RGA -FINISHING | 7399395 |
| 5851 | 40200.40300.40800.53800.55900.161500.342700.2423300 | Panel erection | 15d | 2028-04-16 | 2028-04-30 | 5850 |  | RGA -FINISHING | 7399405 |
| 5852 | 40200.40300.40800.53800.55900.161500.342700.2423400 | DG Installtion | 10d | 2028-01-02 | 2028-01-11 | 5850SS-90d |  | RGA -FINISHING | 7399415 |
| 5853 | 40200.40300.40800.53800.55900.161500.342700.2423500 | Transformer erection | 15d | 2028-01-02 | 2028-01-16 | 5852SS |  | RGA -FINISHING | 7399425 |
| 5854 | 40200.40300.40800.352600 | **Capex Item Procurment** | 203d | 2027-07-28 | 2028-02-15 |  | start no earlier than 2027-07-28 | RGA -FINISHING | 7808702 |
| 5855 | 40200.40300.40800.352600.581700 | Lift Procurement & delivery | 30d | 2027-07-28 | 2027-08-26 | 5840SS+60d |  | RGA -FINISHING | 7815782 |
| 5856 | 40200.40300.40800.352600.581800 | Panels | 30d | 2028-01-17 | 2028-02-15 | 5851SS-90d |  | RGA -FINISHING | 7815792 |
| 5857 | 40200.40300.40800.352600.581900 | DG procurement | 30d | 2027-10-04 | 2027-11-02 | 5852SS-90d |  | RGA -FINISHING | 7815802 |
| 5858 | 40200.40300.40800.352600.582000 | Transformer | 30d | 2027-10-04 | 2027-11-02 | 5853SS-90d |  | RGA -FINISHING | 7815812 |
| 5859 | 40200.40300.40800.43700 | **Handing Over Activities** | 981d | 2025-12-01 | 2028-08-07 |  | start no earlier than 2025-12-01 | RGA -FINISHING | 7803202 |
| 5860 | 40200.40300.40800.43700.582100 | SOAP WASHING GROUND FLOOR | 1d | 2028-06-13 | 2028-06-13 | 5837FS+100d |  | RGA -FINISHING | 7815822 |
| 5861 | 40200.40300.40800.43700.582200 | SOAP WASHING L1 | 1d | 2028-06-14 | 2028-06-14 | 5860 |  | RGA -FINISHING | 7815832 |
| 5862 | 40200.40300.40800.43700.582300 | SOAP WASHING L2 | 1d | 2028-06-15 | 2028-06-15 | 5861 |  | RGA -FINISHING | 7815842 |
| 5863 | 40200.40300.40800.43700.582400 | SOAP WASHING L3 | 1d | 2028-06-16 | 2028-06-16 | 5862 |  | RGA -FINISHING | 7815852 |
| 5864 | 40200.40300.40800.43700.582500 | SOAP WASHING L4 | 1d | 2028-06-17 | 2028-06-17 | 5863 |  | RGA -FINISHING | 7815862 |
| 5865 | 40200.40300.40800.43700.582600 | SOAP WASHING L5 | 1d | 2028-06-18 | 2028-06-18 | 5864 |  | RGA -FINISHING | 7815872 |
| 5866 | 40200.40300.40800.43700.582700 | SOAP WASHING L6 | 1d | 2028-06-19 | 2028-06-19 | 5865 |  | RGA -FINISHING | 7815882 |
| 5867 | 40200.40300.40800.43700.582800 | SOAP WASHING L7 | 1d | 2028-06-20 | 2028-06-20 | 5866 |  | RGA -FINISHING | 7815892 |
| 5868 | 40200.40300.40800.43700.582900 | SOAP WASHING L8 | 1d | 2028-06-21 | 2028-06-21 | 5867 |  | RGA -FINISHING | 7815902 |
| 5869 | 40200.40300.40800.43700.583000 | SOAP WASHING L9 | 1d | 2028-06-22 | 2028-06-22 | 5868 |  | RGA -FINISHING | 7815912 |
| 5870 | 40200.40300.40800.43700.583100 | SOAP WASHING L10 | 1d | 2028-06-23 | 2028-06-23 | 5869 |  | RGA -FINISHING | 7815922 |
| 5871 | 40200.40300.40800.43700.583200 | SOAP WASHING L11 | 1d | 2028-06-24 | 2028-06-24 | 5870 |  | RGA -FINISHING | 7815932 |
| 5872 | 40200.40300.40800.43700.583300 | SOAP WASHING L12 | 1d | 2028-06-25 | 2028-06-25 | 5871 |  | RGA -FINISHING | 7815942 |
| 5873 | 40200.40300.40800.43700.583400 | SOAP WASHING L13 | 1d | 2028-06-26 | 2028-06-26 | 5872 |  | RGA -FINISHING | 7815952 |
| 5874 | 40200.40300.40800.43700.583500 | SOAP WASHING L14 | 1d | 2028-06-27 | 2028-06-27 | 5873 |  | RGA -FINISHING | 7815962 |
| 5875 | 40200.40300.40800.43700.583600 | SOAP WASHING L15 | 1d | 2028-06-28 | 2028-06-28 | 5874 |  | RGA -FINISHING | 7815972 |
| 5876 | 40200.40300.40800.43700.583700 | SOAP WASHING L16 | 1d | 2028-06-29 | 2028-06-29 | 5875 |  | RGA -FINISHING | 7815982 |
| 5877 | 40200.40300.40800.43700.583800 | SOAP WASHING L17 | 1d | 2028-06-30 | 2028-06-30 | 5876 |  | RGA -FINISHING | 7815992 |
| 5878 | 40200.40300.40800.43700.583900 | SOAP WASHING L18 | 1d | 2028-07-01 | 2028-07-01 | 5877 |  | RGA -FINISHING | 7816002 |
| 5879 | 40200.40300.40800.43700.584000 | SOAP WASHING L19 | 1d | 2028-07-02 | 2028-07-02 | 5878 |  | RGA -FINISHING | 7816012 |
| 5880 | 40200.40300.40800.43700.584100 | SOAP WASHING L20 | 1d | 2028-07-03 | 2028-07-03 | 5879 |  | RGA -FINISHING | 7816022 |
| 5881 | 40200.40300.40800.43700.584200 | SOAP WASHING L21 | 1d | 2028-07-04 | 2028-07-04 | 5880 |  | RGA -FINISHING | 7816032 |
| 5882 | 40200.40300.40800.43700.584300 | SOAP WASHING L22 | 1d | 2028-07-05 | 2028-07-05 | 5881 |  | RGA -FINISHING | 7816042 |
| 5883 | 40200.40300.40800.43700.584400 | SOAP WASHING L23 | 1d | 2028-07-06 | 2028-07-06 | 5882 |  | RGA -FINISHING | 7816052 |
| 5884 | 40200.40300.40800.43700.584500 | SOAP WASHING L24 | 1d | 2028-07-07 | 2028-07-07 | 5883 |  | RGA -FINISHING | 7816062 |
| 5885 | 40200.40300.40800.43700.584600 | SOAP WASHING L25 | 1d | 2028-07-08 | 2028-07-08 | 5884 |  | RGA -FINISHING | 7816072 |
| 5886 | 40200.40300.40800.43700.584700 | CP & SANITARYWARE FIXING Ground | 2d | 2028-06-15 | 2028-06-16 | 5861 |  | RGA -FINISHING | 7816102 |
| 5887 | 40200.40300.40800.43700.584800 | CP & SANITARYWARE FIXING L1 | 2d | 2028-06-17 | 2028-06-18 | 5886 |  | RGA -FINISHING | 7816112 |
| 5888 | 40200.40300.40800.43700.584900 | CP & SANITARYWARE FIXING L2 | 2d | 2028-06-19 | 2028-06-20 | 5887 |  | RGA -FINISHING | 7816122 |
| 5889 | 40200.40300.40800.43700.585000 | CP & SANITARYWARE FIXING L3 | 2d | 2028-06-21 | 2028-06-22 | 5888 |  | RGA -FINISHING | 7816132 |
| 5890 | 40200.40300.40800.43700.585100 | CP & SANITARYWARE FIXING L4 | 2d | 2028-06-23 | 2028-06-24 | 5889 |  | RGA -FINISHING | 7816142 |
| 5891 | 40200.40300.40800.43700.585200 | CP & SANITARYWARE FIXING L5 | 2d | 2028-06-25 | 2028-06-26 | 5890 |  | RGA -FINISHING | 7816152 |
| 5892 | 40200.40300.40800.43700.585300 | CP & SANITARYWARE FIXING L6 | 2d | 2028-06-27 | 2028-06-28 | 5891 |  | RGA -FINISHING | 7816162 |
| 5893 | 40200.40300.40800.43700.585400 | CP & SANITARYWARE FIXING L7 | 2d | 2028-06-29 | 2028-06-30 | 5892 |  | RGA -FINISHING | 7816172 |
| 5894 | 40200.40300.40800.43700.585500 | CP & SANITARYWARE FIXING L8 | 2d | 2028-07-01 | 2028-07-02 | 5893 |  | RGA -FINISHING | 7816182 |
| 5895 | 40200.40300.40800.43700.585600 | CP & SANITARYWARE FIXING L9 | 2d | 2028-07-03 | 2028-07-04 | 5894 |  | RGA -FINISHING | 7816192 |
| 5896 | 40200.40300.40800.43700.585700 | CP & SANITARYWARE FIXING L10 | 2d | 2028-07-05 | 2028-07-06 | 5895 |  | RGA -FINISHING | 7816202 |
| 5897 | 40200.40300.40800.43700.585800 | CP & SANITARYWARE FIXING L11 | 2d | 2028-07-07 | 2028-07-08 | 5896 |  | RGA -FINISHING | 7816212 |
| 5898 | 40200.40300.40800.43700.585900 | CP & SANITARYWARE FIXING L12 | 2d | 2028-07-09 | 2028-07-10 | 5897 |  | RGA -FINISHING | 7816222 |
| 5899 | 40200.40300.40800.43700.586000 | CP & SANITARYWARE FIXING L13 | 2d | 2028-07-11 | 2028-07-12 | 5898 |  | RGA -FINISHING | 7816232 |
| 5900 | 40200.40300.40800.43700.586100 | CP & SANITARYWARE FIXING L14 | 2d | 2028-07-13 | 2028-07-14 | 5899 |  | RGA -FINISHING | 7816242 |
| 5901 | 40200.40300.40800.43700.586200 | CP & SANITARYWARE FIXING L15 | 2d | 2028-07-15 | 2028-07-16 | 5900 |  | RGA -FINISHING | 7816252 |
| 5902 | 40200.40300.40800.43700.586300 | CP & SANITARYWARE FIXING L16 | 2d | 2028-07-17 | 2028-07-18 | 5901 |  | RGA -FINISHING | 7816262 |
| 5903 | 40200.40300.40800.43700.586400 | CP & SANITARYWARE FIXING L17 | 2d | 2028-07-19 | 2028-07-20 | 5902 |  | RGA -FINISHING | 7816272 |
| 5904 | 40200.40300.40800.43700.586500 | CP & SANITARYWARE FIXING L18 | 2d | 2028-07-21 | 2028-07-22 | 5903 |  | RGA -FINISHING | 7816282 |
| 5905 | 40200.40300.40800.43700.586600 | CP & SANITARYWARE FIXING L18 | 2d | 2028-07-23 | 2028-07-24 | 5904 |  | RGA -FINISHING | 7816292 |
| 5906 | 40200.40300.40800.43700.586700 | CP & SANITARYWARE FIXING L19 | 2d | 2028-07-25 | 2028-07-26 | 5905 |  | RGA -FINISHING | 7816302 |
| 5907 | 40200.40300.40800.43700.586800 | CP & SANITARYWARE FIXING L20 | 2d | 2028-07-27 | 2028-07-28 | 5906 |  | RGA -FINISHING | 7816312 |

Notes:
- 5838: Completion in 12 months post last RCC

| ID | WBS | Task | Type | Duration | Start | Finish | Predecessors | Complete | Constraint | Calendar | Unique_Task_ID |
| --- | --- | --- | --- | --- | --- | --- | --- | --- | --- | --- | --- |
| 5908 | 40200.40300.40800.43700.586900 | CP & SANITARYWARE FIXING L21 |  | 2d | 2028-07-29 | 2028-07-30 | 5907 |  |  | RGA -FINISHING | 7816322 |
| 5909 | 40200.40300.40800.43700.587000 | CP & SANITARYWARE FIXING L22 |  | 2d | 2028-07-31 | 2028-08-01 | 5908 |  |  | RGA -FINISHING | 7816332 |
| 5910 | 40200.40300.40800.43700.587100 | CP & SANITARYWARE FIXING L23 |  | 2d | 2028-08-02 | 2028-08-03 | 5909 |  |  | RGA -FINISHING | 7816342 |
| 5911 | 40200.40300.40800.43700.587200 | CP & SANITARYWARE FIXING L24 |  | 5d | 2025-12-01 | 2025-12-05 |  |  | start no earlier than 2025-12-01 | Indian Calendar | 7816343 |
| 5912 | 40200.40300.40800.43700.587300 | CP & SANITARYWARE FIXING L24 |  | 2d | 2028-08-04 | 2028-08-05 | 5910, 5911 |  |  | RGA -FINISHING | 7816352 |
| 5913 | 40200.40300.40800.43700.587400 | CP & SANITARYWARE FIXING L25 |  | 2d | 2028-08-06 | 2028-08-07 | 5912 |  |  | RGA -FINISHING | 7816362 |
| 5914 | 40200.40300.40800.535200 | MIscellaneous (Aluform Supply) |  | 107d | 2025-07-08 | 2025-11-19 | 4986FS-122d | 100% | start no earlier than 2025-07-08 | RGA -FINISHING | 7812612 |
| 5915 | 40200.40300.40800.535100 | Miscellaneous |  | 804d | 2023-09-06 | 2028-02-12 | 5914FS-647d | 71% |  | Indian Calendar | 7812622 |
| 5916 | 40200.40300.40800.546000 | Miscellaneous |  | 500d | 2027-03-08 | 2028-10-10 | 5914FS+405d |  |  | Indian Calendar | 7812623 |
| 5917 | 40200.40300.40700 | **TOWER 2 - (B+G+25 Floors+Terrace)** |  | 1379d | 2025-02-12 | 2028-12-30 |  | 2% | start no earlier than 2025-02-12 | RGA - STRUCTURE | 8865784 |
| 5918 | 40200.40300.40700.1170600 | Start date for Tower 2 | milestone | 0d | 2025-12-07 | 2025-12-07 | 6895SS+7d |  |  | RGA - STRUCTURE | 8874144 |
| 5919 | 40200.40300.40700.461500 | **Earth work** |  | 72d | 2025-02-12 | 2025-04-25 |  | 100% | start no earlier than 2025-02-12 | RGA - STRUCTURE | 8867094 |
| 5920 | 40200.40300.40700.461500.520800 | EXCAVATION - Tower Area |  | 12d | 2025-02-12 | 2025-03-10 | 5918SS-29d | 100% | start no earlier than 2025-02-12 | RGA - STRUCTURE | 8867294 |
| 5921 | 40200.40300.40700.461500.520700 | Excavation - Non Tower Area |  | 10d | 2025-03-03 | 2025-04-25 | 5920FS-33d | 100% | start no earlier than 2025-03-03 | 5 day week, Bank Hols Xmas | 8867304 |
| 5922 | 40200.40300.40700.70900 | **Substructure works (Works up to plinth)** |  | 1018d | 2025-06-11 | 2028-04-30 |  | 6% | start no earlier than 2025-06-11 | RGA - STRUCTURE | 8865884 |
| 5923 | 40200.40300.40700.70900.162100 | **Civil works (Shell & Core basement)** |  | 179d | 2025-06-11 | 2025-12-09 |  | 74% | start no earlier than 2025-06-11 | RGA - STRUCTURE | 8866174 |
| 5924 | 40200.40300.40700.70900.162100.168200 | **1st Basement** |  | 179d | 2025-06-11 | 2025-12-09 |  | 74% | start no earlier than 2025-06-11 | RGA - STRUCTURE | 8866184 |
| 5925 | 40200.40300.40700.70900.162100.168200.254000 | **RCC Works - Tower area** |  | 177d | 2025-06-11 | 2025-12-07 |  | 86% | start no earlier than 2025-06-11 | RGA - STRUCTURE | 8866724 |
| 5926 | 40200.40300.40700.70900.162100.168200.254000.373100 | **Foundation** |  | 35d | 2025-06-11 | 2025-07-15 |  | 100% | start no earlier than 2025-06-11 | RGA - STRUCTURE | 8867084 |
| 5927 | 40200.40300.40700.70900.162100.168200.254000.373100.545400 | Pocket Excavation |  | 1d | 2025-07-12 | 2025-07-12 | 5920FS+70d | 100% | start no earlier than 2025-07-12 | RGA - STRUCTURE | 8873054 |
| 5928 | 40200.40300.40700.70900.162100.168200.254000.373100.545300 | Footing PCC (Construction start for Tower 2A) |  | 6d | 2025-06-11 | 2025-06-21 | 5927 | 100% | start no earlier than 2025-06-11 | RGA - STRUCTURE | 8873064 |
| 5929 | 40200.40300.40700.70900.162100.168200.254000.373100.545200 | Footing / Raft works |  | 5d | 2025-06-28 | 2025-07-15 | 5928 | 100% | start no earlier than 2025-06-28 | RGA - STRUCTURE | 8873074 |
| 5930 | 40200.40300.40700.70900.162100.168200.254000.465400 | **GF Slab** |  | 162d | 2025-06-26 | 2025-12-07 |  | 83% | start no earlier than 2025-06-26 | RGA - STRUCTURE | 8867104 |
| 5931 | 40200.40300.40700.70900.162100.168200.254000.465400.545100 | Columns in Upper basement |  | 31d | 2025-06-26 | 2025-11-18 | 5929FS-24d | 100% | start no earlier than 2025-06-26 | RGA - STRUCTURE | 8873084 |
| 5932 | 40200.40300.40700.70900.162100.168200.254000.465400.545000 | Upper Basement slab |  | 17d | 2025-10-08 | 2025-12-07 | 5931FS-42d | 52% | start no earlier than 2025-10-08 | RGA - STRUCTURE | 8873094 |
| 5933 | 40200.40300.40700.70900.162100.168200.990100 | Backfilling |  | 10d | 2025-11-30 | 2025-12-09 |  |  | start no earlier than 2025-11-30 | RGA - STRUCTURE | 8867904 |

Notes:
- 5919: 2 Months for Excavation

| ID | WBS | Task | Duration | Start | Finish | Predecessors | Constraint | Calendar | Unique_Task_ID |
| --- | --- | --- | --- | --- | --- | --- | --- | --- | --- |
| 5934 | 40200.40300.40700.70900.511100 | **Basement Block work and Plaster finishing** | 45d | 2027-02-06 | 2027-03-22 |  | start no earlier than 2027-02-06 | RGA - STRUCTURE | 8867264 |
| 5935 | 40200.40300.40700.70900.511100.854300 | Upper basement | 45d | 2027-02-06 | 2027-03-22 | 6040 |  | RGA - STRUCTURE | 8867884 |
| 5936 | 40200.40300.40700.70900.165800 | **Services** | 405d | 2027-03-23 | 2028-04-30 |  | start no earlier than 2027-03-23 | RGA -FINISHING | 8866164 |
| 5937 | 40200.40300.40700.70900.165800.434200 | **Plumbing** | 90d | 2027-03-23 | 2027-06-20 |  | start no earlier than 2027-03-23 | RGA -FINISHING | 8867074 |
| 5938 | 40200.40300.40700.70900.165800.434200.507600 | **Upper Basement Plumbing** | 90d | 2027-03-23 | 2027-06-20 |  | start no earlier than 2027-03-23 | RGA -FINISHING | 8867164 |
| 5939 | 40200.40300.40700.70900.165800.434200.507600.2423600 | Upper Basement Plumbing | 90d | 2027-03-23 | 2027-06-20 | 5935 |  | RGA -FINISHING | 8867934 |
| 5940 | 40200.40300.40700.70900.165800.434300 | **Fire fighting** | 90d | 2027-06-21 | 2027-09-18 |  | start no earlier than 2027-06-21 | RGA -FINISHING | 8867064 |
| 5941 | 40200.40300.40700.70900.165800.434300.507700 | **Upper Basement Fire fighting** | 90d | 2027-06-21 | 2027-09-18 |  | start no earlier than 2027-06-21 | RGA -FINISHING | 8867174 |
| 5942 | 40200.40300.40700.70900.165800.434300.507700.2423700 | Upper Basement Fire fighting | 90d | 2027-06-21 | 2027-09-18 | 5939 |  | RGA -FINISHING | 8867944 |
| 5943 | 40200.40300.40700.70900.165800.438500 | **Ventilation** | 90d | 2027-09-19 | 2027-12-17 |  | start no earlier than 2027-09-19 | RGA -FINISHING | 8867044 |
| 5944 | 40200.40300.40700.70900.165800.438500.507800 | **Upper Basement ventilation** | 90d | 2027-09-19 | 2027-12-17 |  | start no earlier than 2027-09-19 | RGA -FINISHING | 8867184 |
| 5945 | 40200.40300.40700.70900.165800.438500.507800.2423800 | Upper Basement ventilation | 90d | 2027-09-19 | 2027-12-17 | 5942 |  | RGA -FINISHING | 8867954 |
| 5946 | 40200.40300.40700.70900.165800.438600 | **Electrification** | 90d | 2027-12-18 | 2028-03-16 |  | start no earlier than 2027-12-18 | RGA -FINISHING | 8866904 |
| 5947 | 40200.40300.40700.70900.165800.438600.507900 | **Upper Basement Electrification** | 90d | 2027-12-18 | 2028-03-16 |  | start no earlier than 2027-12-18 | RGA -FINISHING | 8867194 |
| 5948 | 40200.40300.40700.70900.165800.438600.507900.2423900 | Upper Basement Electrification | 90d | 2027-12-18 | 2028-03-16 | 5945 |  | RGA -FINISHING | 8867964 |
| 5949 | 40200.40300.40700.70900.165800.438700 | **Security installations** | 45d | 2028-03-17 | 2028-04-30 |  | start no earlier than 2028-03-17 | RGA -FINISHING | 8866784 |
| 5950 | 40200.40300.40700.70900.165800.438700.508000 | **Upper Basement Security installations** | 45d | 2028-03-17 | 2028-04-30 |  | start no earlier than 2028-03-17 | RGA -FINISHING | 8867204 |
| 5951 | 40200.40300.40700.70900.165800.438700.508000.2424000 | Upper Basement Security installations | 45d | 2028-03-17 | 2028-04-30 | 5948 |  | RGA -FINISHING | 8867974 |
| 5952 | 40200.40300.40700.70900.364100 | **Finishing work** | 180d | 2027-03-23 | 2027-09-18 |  | start no earlier than 2027-03-23 | RGA -FINISHING | 8866764 |
| 5953 | 40200.40300.40700.70900.364100.512200 | **Basement Flooring** | 90d | 2027-03-23 | 2027-06-20 |  | start no earlier than 2027-03-23 | RGA -FINISHING | 8867244 |
| 5954 | 40200.40300.40700.70900.364100.512200.990200 | 1st Basement ventilation | 90d | 2027-03-23 | 2027-06-20 | 5935 |  | RGA -FINISHING | 8867914 |
| 5955 | 40200.40300.40700.70900.364100.512100 | **Basement Painting (1st Coat)** | 90d | 2027-06-21 | 2027-09-18 |  | start no earlier than 2027-06-21 | RGA -FINISHING | 8867234 |
| 5956 | 40200.40300.40700.70900.364100.512100.990300 | 2nd Basement ventilation | 90d | 2027-06-21 | 2027-09-18 | 5954 |  | RGA -FINISHING | 8867924 |
| 5957 | 40200.40300.40700.70900.511000 | **Water Proofing work** | 45d | 2027-03-23 | 2027-05-06 |  | start no earlier than 2027-03-23 | RGA -FINISHING | 8867254 |
| 5958 | 40200.40300.40700.70900.511000.854400 | GF/Stilt Floor | 45d | 2027-03-23 | 2027-05-06 | 5935 |  | RGA -FINISHING | 8867894 |

| ID | WBS | Task | Duration | Start | Finish | Predecessors | Complete | Constraint | Calendar | Unique_Task_ID |
| --- | --- | --- | --- | --- | --- | --- | --- | --- | --- | --- |
| 5959 | 40200.40300.40700.52600 | **Superstructure works** | 887d | 2025-11-26 | 2028-06-03 |  |  | start no earlier than 2025-11-26 | RGA - STRUCTURE | 8865804 |
| 5960 | 40200.40300.40700.52600.55400 | **Civil works** | 887d | 2025-11-26 | 2028-06-03 |  |  | start no earlier than 2025-11-26 | RGA - STRUCTURE | 8865814 |
| 5961 | 40200.40300.40700.52600.55400.61500 | **Superstructure RCC Work** | 548d | 2025-11-26 | 2027-06-30 |  |  | start no earlier than 2025-11-26 | RGA - STRUCTURE | 8865864 |
| 5962 | 40200.40300.40700.52600.55400.61500.63400 | **Slab RCC works** | 505d | 2025-11-26 | 2027-05-18 |  |  | start no earlier than 2025-11-26 | RGA - STRUCTURE | 8865874 |
| 5963 | 40200.40300.40700.52600.55400.61500.63400.504700 | **1st Floor slab (Height More)** | 50d | 2025-11-26 | 2026-01-14 |  | 11% | start no earlier than 2025-11-26 | RGA - STRUCTURE | 8867114 |
| 5964 | 40200.40300.40700.52600.55400.61500.63400.504700.544900 | Columns | 20d | 2025-11-26 | 2025-12-30 | 5932FS-12d | 20% |  | RGA - STRUCTURE | 8873104 |
| 5965 | 40200.40300.40700.52600.55400.61500.63400.504700.2734000 | Slab Work | 15d | 2025-12-31 | 2026-01-14 | 5964 |  |  | RGA - STRUCTURE | 8873114 |
| 5966 | 40200.40300.40700.52600.55400.61500.63400.504600 | **2nd Floor slab (Combo Height More)** | 30d | 2026-01-15 | 2026-02-14 |  |  | start no earlier than 2026-01-15 | RGA - STRUCTURE | 8867124 |
| 5967 | 40200.40300.40700.52600.55400.61500.63400.504600.2734100 | Columns | 15d | 2026-01-15 | 2026-01-30 | 5965 |  |  | RGA - STRUCTURE | 8873124 |
| 5968 | 40200.40300.40700.52600.55400.61500.63400.504600.2734200 | Slab Work | 15d | 2026-01-31 | 2026-02-14 | 5967 |  |  | RGA - STRUCTURE | 8873134 |
| 5969 | 40200.40300.40700.52600.55400.61500.63400.468800 | **3rd Floor slab (1st Set Up)** | 30d | 2026-02-15 | 2026-03-16 |  |  | start no earlier than 2026-02-15 | RGA - STRUCTURE | 8867054 |
| 5970 | 40200.40300.40700.52600.55400.61500.63400.468800.2734300 | Wall Reinforcement & Form work | 15d | 2026-02-15 | 2026-03-01 | 5968 |  |  | RGA - STRUCTURE | 8873144 |
| 5971 | 40200.40300.40700.52600.55400.61500.63400.468800.2734400 | Slab shuttering & Rebar. | 14d | 2026-03-02 | 2026-03-15 | 5970 |  |  | RGA - STRUCTURE | 8873154 |
| 5972 | 40200.40300.40700.52600.55400.61500.63400.468800.2734500 | Concreting | 1d | 2026-03-16 | 2026-03-16 | 5971 |  |  | RGA - STRUCTURE | 8873164 |
| 5973 | 40200.40300.40700.52600.55400.61500.63400.470000 | **4th Floor slab (2nd Set Up)** | 21d | 2026-03-17 | 2026-04-06 |  |  | start no earlier than 2026-03-17 | RGA - STRUCTURE | 8867034 |
| 5974 | 40200.40300.40700.52600.55400.61500.63400.470000.2734600 | Wall Reinforcement & Form work | 10d | 2026-03-17 | 2026-03-26 | 5972 |  |  | RGA - STRUCTURE | 8873174 |
| 5975 | 40200.40300.40700.52600.55400.61500.63400.470000.2734700 | Slab shuttering & Rebar. | 10d | 2026-03-27 | 2026-04-05 | 5974 |  |  | RGA - STRUCTURE | 8873184 |
| 5976 | 40200.40300.40700.52600.55400.61500.63400.470000.2734800 | Concreting | 1d | 2026-04-06 | 2026-04-06 | 5975 |  |  | RGA - STRUCTURE | 8873194 |
| 5977 | 40200.40300.40700.52600.55400.61500.63400.470300 | **5th Floor slab** | 17d | 2026-04-07 | 2026-04-23 |  |  | start no earlier than 2026-04-07 | RGA - STRUCTURE | 8867024 |
| 5978 | 40200.40300.40700.52600.55400.61500.63400.470300.2734900 | Wall Reinforcement & Form work | 8d | 2026-04-07 | 2026-04-14 | 5976 |  |  | RGA - STRUCTURE | 8873204 |
| 5979 | 40200.40300.40700.52600.55400.61500.63400.470300.2735000 | Slab shuttering & Rebar. | 8d | 2026-04-15 | 2026-04-22 | 5978 |  |  | RGA - STRUCTURE | 8873214 |
| 5980 | 40200.40300.40700.52600.55400.61500.63400.470300.2735100 | Concreting | 1d | 2026-04-23 | 2026-04-23 | 5979 |  |  | RGA - STRUCTURE | 8873224 |
| 5981 | 40200.40300.40700.52600.55400.61500.63400.471200 | **6th Floor slab** | 17d | 2026-04-24 | 2026-05-11 |  |  | start no earlier than 2026-04-24 | RGA - STRUCTURE | 8866994 |
| 5982 | 40200.40300.40700.52600.55400.61500.63400.471200.2735200 | Wall Reinforcement & Form work | 8d | 2026-04-24 | 2026-05-02 | 5980 |  |  | RGA - STRUCTURE | 8873234 |
| 5983 | 40200.40300.40700.52600.55400.61500.63400.471200.2735300 | Slab shuttering & Rebar. | 8d | 2026-05-03 | 2026-05-10 | 5982 |  |  | RGA - STRUCTURE | 8873244 |
| 5984 | 40200.40300.40700.52600.55400.61500.63400.471200.2735400 | Concreting | 1d | 2026-05-11 | 2026-05-11 | 5983 |  |  | RGA - STRUCTURE | 8873254 |

Notes:
- 5966: AVg Slab Cycle of 21 days
- 5969: AVg Slab Cycle of 21 days
- 5973: AVg Slab Cycle of 21 days

| ID | WBS | Task | Duration | Start | Finish | Predecessors | Constraint | Calendar | Unique_Task_ID |
| --- | --- | --- | --- | --- | --- | --- | --- | --- | --- |
| 5985 | 40200.40300.40700.52600.55400.61500.63400.471500 | **7th Floor slab** | 17d | 2026-05-12 | 2026-05-28 |  | start no earlier than 2026-05-12 | RGA - STRUCTURE | 8866984 |
| 5986 | 40200.40300.40700.52600.55400.61500.63400.471500.2735500 | Wall Reinforcement & Form work | 8d | 2026-05-12 | 2026-05-19 | 5984 |  | RGA - STRUCTURE | 8873264 |
| 5987 | 40200.40300.40700.52600.55400.61500.63400.471500.2735600 | Slab shuttering & Rebar. | 8d | 2026-05-20 | 2026-05-27 | 5986 |  | RGA - STRUCTURE | 8873274 |
| 5988 | 40200.40300.40700.52600.55400.61500.63400.471500.2735700 | Concreting | 1d | 2026-05-28 | 2026-05-28 | 5987 |  | RGA - STRUCTURE | 8873284 |
| 5989 | 40200.40300.40700.52600.55400.61500.63400.471600 | **8th Floor slab** | 17d | 2026-05-29 | 2026-06-14 |  | start no earlier than 2026-05-29 | RGA - STRUCTURE | 8866954 |
| 5990 | 40200.40300.40700.52600.55400.61500.63400.471600.2735800 | Wall Reinforcement & Form work | 8d | 2026-05-29 | 2026-06-05 | 5988 |  | RGA - STRUCTURE | 8873294 |
| 5991 | 40200.40300.40700.52600.55400.61500.63400.471600.2735900 | Slab shuttering & Rebar. | 8d | 2026-06-06 | 2026-06-13 | 5990 |  | RGA - STRUCTURE | 8873304 |
| 5992 | 40200.40300.40700.52600.55400.61500.63400.471600.2736000 | Concreting | 1d | 2026-06-14 | 2026-06-14 | 5991 |  | RGA - STRUCTURE | 8873314 |
| 5993 | 40200.40300.40700.52600.55400.61500.63400.471700 | **9th Floor slab** | 17d | 2026-06-15 | 2026-07-16 |  | start no earlier than 2026-06-15 | RGA - STRUCTURE | 8866934 |
| 5994 | 40200.40300.40700.52600.55400.61500.63400.471700.2736100 | Wall Reinforcement & Form work | 8d | 2026-06-15 | 2026-06-29 | 5992 |  | RGA - STRUCTURE | 8873324 |
| 5995 | 40200.40300.40700.52600.55400.61500.63400.471700.2736200 | Slab shuttering & Rebar. | 8d | 2026-06-30 | 2026-07-15 | 5994 |  | RGA - STRUCTURE | 8873334 |
| 5996 | 40200.40300.40700.52600.55400.61500.63400.471700.2736300 | Concreting | 1d | 2026-07-16 | 2026-07-16 | 5995 |  | RGA - STRUCTURE | 8873344 |
| 5997 | 40200.40300.40700.52600.55400.61500.63400.471800 | **10th Floor slab** | 17d | 2026-07-17 | 2026-08-02 |  | start no earlier than 2026-07-17 | RGA - STRUCTURE | 8866924 |
| 5998 | 40200.40300.40700.52600.55400.61500.63400.471800.2736400 | Wall Reinforcement & Form work | 8d | 2026-07-17 | 2026-07-24 | 5996 |  | RGA - STRUCTURE | 8873354 |
| 5999 | 40200.40300.40700.52600.55400.61500.63400.471800.2736500 | Slab shuttering & Rebar. | 8d | 2026-07-25 | 2026-08-01 | 5998 |  | RGA - STRUCTURE | 8873364 |
| 6000 | 40200.40300.40700.52600.55400.61500.63400.471800.2736600 | Concreting | 1d | 2026-08-02 | 2026-08-02 | 5999 |  | RGA - STRUCTURE | 8873374 |
| 6001 | 40200.40300.40700.52600.55400.61500.63400.471900 | **11th Floor slab** | 17d | 2026-08-03 | 2026-08-20 |  | start no earlier than 2026-08-03 | RGA - STRUCTURE | 8866834 |
| 6002 | 40200.40300.40700.52600.55400.61500.63400.471900.2736700 | Wall Reinforcement & Form work | 8d | 2026-08-03 | 2026-08-10 | 6000 |  | RGA - STRUCTURE | 8873384 |
| 6003 | 40200.40300.40700.52600.55400.61500.63400.471900.2736800 | Slab shuttering & Rebar. | 8d | 2026-08-11 | 2026-08-19 | 6002 |  | RGA - STRUCTURE | 8873394 |
| 6004 | 40200.40300.40700.52600.55400.61500.63400.471900.2736900 | Concreting | 1d | 2026-08-20 | 2026-08-20 | 6003 |  | RGA - STRUCTURE | 8873404 |
| 6005 | 40200.40300.40700.52600.55400.61500.63400.472300 | **12th Floor slab** | 17d | 2026-08-21 | 2026-09-06 |  | start no earlier than 2026-08-21 | RGA - STRUCTURE | 8866794 |
| 6006 | 40200.40300.40700.52600.55400.61500.63400.472300.2737000 | Wall Reinforcement & Form work | 8d | 2026-08-21 | 2026-08-28 | 6004 |  | RGA - STRUCTURE | 8873414 |
| 6007 | 40200.40300.40700.52600.55400.61500.63400.472300.2737100 | Slab shuttering & Rebar. | 8d | 2026-08-29 | 2026-09-05 | 6006 |  | RGA - STRUCTURE | 8873424 |
| 6008 | 40200.40300.40700.52600.55400.61500.63400.472300.2737200 | Concreting | 1d | 2026-09-06 | 2026-09-06 | 6007 |  | RGA - STRUCTURE | 8873434 |

Notes:
- 6005: AVg Slab Cycle of 21 days

| ID | WBS | Task | Duration | Start | Finish | Predecessors | Constraint | Calendar | Unique_Task_ID |
| --- | --- | --- | --- | --- | --- | --- | --- | --- | --- |
| 6009 | 40200.40300.40700.52600.55400.61500.63400.472900 | **13th Floor slab** | 17d | 2026-09-07 | 2026-09-23 |  | start no earlier than 2026-09-07 | RGA - STRUCTURE | 8866804 |
| 6010 | 40200.40300.40700.52600.55400.61500.63400.472900.2737300 | Wall Reinforcement & Form work | 8d | 2026-09-07 | 2026-09-14 | 6008 |  | RGA - STRUCTURE | 8873444 |
| 6011 | 40200.40300.40700.52600.55400.61500.63400.472900.2737400 | Slab shuttering & Rebar. | 8d | 2026-09-15 | 2026-09-22 | 6010 |  | RGA - STRUCTURE | 8873454 |
| 6012 | 40200.40300.40700.52600.55400.61500.63400.472900.2737500 | Concreting | 1d | 2026-09-23 | 2026-09-23 | 6011 |  | RGA - STRUCTURE | 8873464 |
| 6013 | 40200.40300.40700.52600.55400.61500.63400.473100 | **14th Floor slab** | 17d | 2026-09-24 | 2026-10-11 |  | start no earlier than 2026-09-24 | RGA - STRUCTURE | 8866814 |
| 6014 | 40200.40300.40700.52600.55400.61500.63400.473100.2737600 | Wall Reinforcement & Form work | 8d | 2026-09-24 | 2026-10-01 | 6012 |  | RGA - STRUCTURE | 8873474 |
| 6015 | 40200.40300.40700.52600.55400.61500.63400.473100.2737700 | Slab shuttering & Rebar. | 8d | 2026-10-03 | 2026-10-10 | 6014 |  | RGA - STRUCTURE | 8873484 |
| 6016 | 40200.40300.40700.52600.55400.61500.63400.473100.2737800 | Concreting | 1d | 2026-10-11 | 2026-10-11 | 6015 |  | RGA - STRUCTURE | 8873494 |
| 6017 | 40200.40300.40700.52600.55400.61500.63400.473200 | **15th Floor slab** | 17d | 2026-10-12 | 2026-10-28 |  | start no earlier than 2026-10-12 | RGA - STRUCTURE | 8866824 |
| 6018 | 40200.40300.40700.52600.55400.61500.63400.473200.2737900 | Wall Reinforcement & Form work | 8d | 2026-10-12 | 2026-10-19 | 6016 |  | RGA - STRUCTURE | 8873504 |
| 6019 | 40200.40300.40700.52600.55400.61500.63400.473200.2738000 | Slab shuttering & Rebar. | 8d | 2026-10-20 | 2026-10-27 | 6018 |  | RGA - STRUCTURE | 8873514 |
| 6020 | 40200.40300.40700.52600.55400.61500.63400.473200.2738100 | Concreting | 1d | 2026-10-28 | 2026-10-28 | 6019 |  | RGA - STRUCTURE | 8873524 |
| 6021 | 40200.40300.40700.52600.55400.61500.63400.473300 | **16th Floor slab** | 17d | 2026-10-29 | 2026-11-14 |  | start no earlier than 2026-10-29 | RGA - STRUCTURE | 8866844 |
| 6022 | 40200.40300.40700.52600.55400.61500.63400.473300.2738200 | Wall Reinforcement & Form work | 8d | 2026-10-29 | 2026-11-05 | 6020 |  | RGA - STRUCTURE | 8873534 |
| 6023 | 40200.40300.40700.52600.55400.61500.63400.473300.2738300 | Slab shuttering & Rebar. | 8d | 2026-11-06 | 2026-11-13 | 6022 |  | RGA - STRUCTURE | 8873544 |
| 6024 | 40200.40300.40700.52600.55400.61500.63400.473300.2738400 | Concreting | 1d | 2026-11-14 | 2026-11-14 | 6023 |  | RGA - STRUCTURE | 8873554 |
| 6025 | 40200.40300.40700.52600.55400.61500.63400.473400 | **17th Floor slab** | 17d | 2026-11-15 | 2026-12-16 |  | start no earlier than 2026-11-15 | RGA - STRUCTURE | 8866854 |
| 6026 | 40200.40300.40700.52600.55400.61500.63400.473400.2738500 | Wall Reinforcement & Form work | 8d | 2026-11-15 | 2026-11-29 | 6024 |  | RGA - STRUCTURE | 8873564 |
| 6027 | 40200.40300.40700.52600.55400.61500.63400.473400.2738600 | Slab shuttering & Rebar. | 8d | 2026-11-30 | 2026-12-15 | 6026 |  | RGA - STRUCTURE | 8873574 |
| 6028 | 40200.40300.40700.52600.55400.61500.63400.473400.2738700 | Concreting | 1d | 2026-12-16 | 2026-12-16 | 6027 |  | RGA - STRUCTURE | 8873584 |
| 6029 | 40200.40300.40700.52600.55400.61500.63400.473500 | **18th Floor slab** | 17d | 2026-12-17 | 2027-01-02 |  | start no earlier than 2026-12-17 | RGA - STRUCTURE | 8866864 |
| 6030 | 40200.40300.40700.52600.55400.61500.63400.473500.2738800 | Wall Reinforcement & Form work | 8d | 2026-12-17 | 2026-12-24 | 6028 |  | RGA - STRUCTURE | 8873594 |
| 6031 | 40200.40300.40700.52600.55400.61500.63400.473500.2738900 | Slab shuttering & Rebar. | 8d | 2026-12-25 | 2027-01-01 | 6030 |  | RGA - STRUCTURE | 8873604 |
| 6032 | 40200.40300.40700.52600.55400.61500.63400.473500.2739000 | Concreting | 1d | 2027-01-02 | 2027-01-02 | 6031 |  | RGA - STRUCTURE | 8873614 |

Notes:
- 6009: AVg Slab Cycle of 21 days
- 6013: AVg Slab Cycle of 21 days

| ID | WBS | Task | Duration | Start | Finish | Predecessors | Constraint | Calendar | Unique_Task_ID |
| --- | --- | --- | --- | --- | --- | --- | --- | --- | --- |
| 6033 | 40200.40300.40700.52600.55400.61500.63400.474200 | **19th Floor slab** | 17d | 2027-01-03 | 2027-01-19 |  | start no earlier than 2027-01-03 | RGA - STRUCTURE | 8866874 |
| 6034 | 40200.40300.40700.52600.55400.61500.63400.474200.2739100 | Wall Reinforcement & Form work | 8d | 2027-01-03 | 2027-01-10 | 6032 |  | RGA - STRUCTURE | 8873624 |
| 6035 | 40200.40300.40700.52600.55400.61500.63400.474200.2739200 | Slab shuttering & Rebar. | 8d | 2027-01-11 | 2027-01-18 | 6034 |  | RGA - STRUCTURE | 8873634 |
| 6036 | 40200.40300.40700.52600.55400.61500.63400.474200.2739300 | Concreting | 1d | 2027-01-19 | 2027-01-19 | 6035 |  | RGA - STRUCTURE | 8873644 |
| 6037 | 40200.40300.40700.52600.55400.61500.63400.474600 | **20th Floor slab (Refuge floor)** | 17d | 2027-01-20 | 2027-02-05 |  | start no earlier than 2027-01-20 | RGA - STRUCTURE | 8866884 |
| 6038 | 40200.40300.40700.52600.55400.61500.63400.474600.2739400 | Wall Reinforcement & Form work | 8d | 2027-01-20 | 2027-01-27 | 6036 |  | RGA - STRUCTURE | 8873654 |
| 6039 | 40200.40300.40700.52600.55400.61500.63400.474600.2739500 | Slab shuttering & Rebar. | 8d | 2027-01-28 | 2027-02-04 | 6038 |  | RGA - STRUCTURE | 8873664 |
| 6040 | 40200.40300.40700.52600.55400.61500.63400.474600.2739600 | Concreting | 1d | 2027-02-05 | 2027-02-05 | 6039 |  | RGA - STRUCTURE | 8873674 |
| 6041 | 40200.40300.40700.52600.55400.61500.63400.474700 | **21th Floor slab** | 17d | 2027-02-06 | 2027-02-22 |  | start no earlier than 2027-02-06 | RGA - STRUCTURE | 8866894 |
| 6042 | 40200.40300.40700.52600.55400.61500.63400.474700.2739700 | Wall Reinforcement & Form work | 8d | 2027-02-06 | 2027-02-13 | 6040 |  | RGA - STRUCTURE | 8873684 |
| 6043 | 40200.40300.40700.52600.55400.61500.63400.474700.2739800 | Slab shuttering & Rebar. | 8d | 2027-02-14 | 2027-02-21 | 6042 |  | RGA - STRUCTURE | 8873694 |
| 6044 | 40200.40300.40700.52600.55400.61500.63400.474700.2739900 | Concreting | 1d | 2027-02-22 | 2027-02-22 | 6043 |  | RGA - STRUCTURE | 8873704 |
| 6045 | 40200.40300.40700.52600.55400.61500.63400.474900 | **22th Floor slab** | 17d | 2027-02-23 | 2027-03-11 |  | start no earlier than 2027-02-23 | RGA - STRUCTURE | 8866914 |
| 6046 | 40200.40300.40700.52600.55400.61500.63400.474900.2740000 | Wall Reinforcement & Form work | 8d | 2027-02-23 | 2027-03-02 | 6044 |  | RGA - STRUCTURE | 8873714 |
| 6047 | 40200.40300.40700.52600.55400.61500.63400.474900.2740100 | Slab shuttering & Rebar. | 8d | 2027-03-03 | 2027-03-10 | 6046 |  | RGA - STRUCTURE | 8873724 |
| 6048 | 40200.40300.40700.52600.55400.61500.63400.474900.2740200 | Concreting | 1d | 2027-03-11 | 2027-03-11 | 6047 |  | RGA - STRUCTURE | 8873734 |
| 6049 | 40200.40300.40700.52600.55400.61500.63400.475400 | **23th Floor slab** | 17d | 2027-03-12 | 2027-03-28 |  | start no earlier than 2027-03-12 | RGA - STRUCTURE | 8866944 |
| 6050 | 40200.40300.40700.52600.55400.61500.63400.475400.2740300 | Wall Reinforcement & Form work | 8d | 2027-03-12 | 2027-03-19 | 6048 |  | RGA - STRUCTURE | 8873744 |
| 6051 | 40200.40300.40700.52600.55400.61500.63400.475400.2740400 | Slab shuttering & Rebar. | 8d | 2027-03-20 | 2027-03-27 | 6050 |  | RGA - STRUCTURE | 8873754 |
| 6052 | 40200.40300.40700.52600.55400.61500.63400.475400.2740500 | Concreting | 1d | 2027-03-28 | 2027-03-28 | 6051 |  | RGA - STRUCTURE | 8873764 |
| 6053 | 40200.40300.40700.52600.55400.61500.63400.475500 | **24th Floor slab** | 17d | 2027-03-29 | 2027-04-14 |  | start no earlier than 2027-03-29 | RGA - STRUCTURE | 8866964 |
| 6054 | 40200.40300.40700.52600.55400.61500.63400.475500.2740600 | Wall Reinforcement & Form work | 8d | 2027-03-29 | 2027-04-05 | 6052 |  | RGA - STRUCTURE | 8873774 |
| 6055 | 40200.40300.40700.52600.55400.61500.63400.475500.2740700 | Slab shuttering & Rebar. | 8d | 2027-04-06 | 2027-04-13 | 6054 |  | RGA - STRUCTURE | 8873784 |
| 6056 | 40200.40300.40700.52600.55400.61500.63400.475500.2740800 | Concreting | 1d | 2027-04-14 | 2027-04-14 | 6055 |  | RGA - STRUCTURE | 8873794 |

| ID | WBS | Task | Duration | Start | Finish | Predecessors | Constraint | Calendar | Unique_Task_ID |
| --- | --- | --- | --- | --- | --- | --- | --- | --- | --- |
| 6057 | 40200.40300.40700.52600.55400.61500.63400.475700 | **25th Floor slab** | 17d | 2027-04-15 | 2027-05-01 |  | start no earlier than 2027-04-15 | RGA - STRUCTURE | 8866974 |
| 6058 | 40200.40300.40700.52600.55400.61500.63400.475700.2740900 | Wall Reinforcement & Form work | 8d | 2027-04-15 | 2027-04-22 | 6056 |  | RGA - STRUCTURE | 8873804 |
| 6059 | 40200.40300.40700.52600.55400.61500.63400.475700.2741000 | Slab shuttering & Rebar. | 8d | 2027-04-23 | 2027-04-30 | 6058 |  | RGA - STRUCTURE | 8873814 |
| 6060 | 40200.40300.40700.52600.55400.61500.63400.475700.2741100 | Concreting | 1d | 2027-05-01 | 2027-05-01 | 6059 |  | RGA - STRUCTURE | 8873824 |
| 6061 | 40200.40300.40700.52600.55400.61500.63400.477000 | **Terrace Floor slab** | 17d | 2027-05-02 | 2027-05-18 |  | start no earlier than 2027-05-02 | RGA - STRUCTURE | 8867004 |
| 6062 | 40200.40300.40700.52600.55400.61500.63400.477000.2741200 | Wall Reinforcement & Form work | 8d | 2027-05-02 | 2027-05-09 | 6060 |  | RGA - STRUCTURE | 8873834 |
| 6063 | 40200.40300.40700.52600.55400.61500.63400.477000.2741300 | Slab shuttering & Rebar. | 8d | 2027-05-10 | 2027-05-17 | 6062 |  | RGA - STRUCTURE | 8873844 |
| 6064 | 40200.40300.40700.52600.55400.61500.63400.477000.2741400 | Concreting | 1d | 2027-05-18 | 2027-05-18 | 6063 |  | RGA - STRUCTURE | 8873854 |
| 6065 | 40200.40300.40700.52600.55400.61500.254100 | **RCC work above Terrace** | 44d | 2027-05-18 | 2027-06-30 |  | start no earlier than 2027-05-18 | RGA - STRUCTURE | 8866694 |
| 6066 | 40200.40300.40700.52600.55400.61500.254100.373200 | **STAIRCASE & OHT CORE** | 39d | 2027-05-18 | 2027-06-25 |  | start no earlier than 2027-05-18 | RGA - STRUCTURE | 8866744 |
| 6067 | 40200.40300.40700.52600.55400.61500.254100.373200.2741500 | STAIRCASE HEAD ROOM | 10d | 2027-05-18 | 2027-05-27 | 6063 |  | RGA - STRUCTURE | 8873864 |
| 6068 | 40200.40300.40700.52600.55400.61500.254100.373200.2741600 | OHT | 15d | 2027-05-28 | 2027-06-11 | 6067 |  | RGA - STRUCTURE | 8873874 |
| 6069 | 40200.40300.40700.52600.55400.61500.254100.373200.2741700 | SHAFT COVERING SLAB | 10d | 2027-05-19 | 2027-05-28 | 6064 |  | RGA - STRUCTURE | 8873884 |
| 6070 | 40200.40300.40700.52600.55400.61500.254100.373200.2741800 | DESHUTTERING OF OHT TOP SLAB | 7d | 2027-06-19 | 2027-06-25 | 6068FS+7d |  | RGA - STRUCTURE | 8873894 |
| 6071 | 40200.40300.40700.52600.55400.61500.254100.462400 | **LMR BOTTOM & TOP SLAB** | 43d | 2027-05-19 | 2027-06-30 |  | start no earlier than 2027-05-19 | RGA - STRUCTURE | 8867014 |
| 6072 | 40200.40300.40700.52600.55400.61500.254100.462400.2741900 | LMR COLUMNS / WALLS | 15d | 2027-05-19 | 2027-06-02 | 6064 |  | RGA - STRUCTURE | 8873904 |
| 6073 | 40200.40300.40700.52600.55400.61500.254100.462400.2742000 | LMR TOP SLAB | 20d | 2027-06-03 | 2027-06-22 | 6072 |  | RGA - STRUCTURE | 8873914 |
| 6074 | 40200.40300.40700.52600.55400.61500.254100.462400.2742100 | DESHUTTERING | 8d | 2027-06-23 | 2027-06-30 | 6073 |  | RGA - STRUCTURE | 8873924 |
| 6075 | 40200.40300.40700.52600.55400.59500 | **Civil Finishing works (Brick work, Plaster,conduiting, concled plumbing, waterproofing)** | 797d | 2025-11-30 | 2028-02-04 |  | start no earlier than 2025-11-30 | RGA -FINISHING | 8865834 |
| 6076 | 40200.40300.40700.52600.55400.59500.61300 | **Flat finishing works** | 771d | 2025-11-30 | 2028-01-09 |  | start no earlier than 2025-11-30 | RGA -FINISHING | 8865854 |
| 6077 | 40200.40300.40700.52600.55400.59500.61300.276000 | **Ground FLOOR** | 486d | 2026-01-16 | 2027-05-16 |  | start no earlier than 2026-01-16 | RGA -FINISHING | 8866454 |
| 6078 | 40200.40300.40700.52600.55400.59500.61300.276000.2742200 | BALCONY RAILING FIXING | 9d | 2026-03-27 | 2026-04-04 | 5972FS+10d |  | RGA -FINISHING | 8873934 |
| 6079 | 40200.40300.40700.52600.55400.59500.61300.276000.2742300 | Block work | 8d | 2026-02-07 | 2026-02-14 | 6083 |  | RGA -FINISHING | 8873944 |
| 6080 | 40200.40300.40700.52600.55400.59500.61300.276000.2742400 | CONCEALED ELEC CONDUITING & ITS FINISHING | 5d | 2027-05-12 | 2027-05-16 | 5962FS-7d |  | RGA -FINISHING | 8873954 |
| 6081 | 40200.40300.40700.52600.55400.59500.61300.276000.2742500 | PLASTER APPLICATION | 6d | 2026-01-16 | 2026-01-21 | 6259FS+32d |  | RGA -FINISHING | 8873964 |
| 6082 | 40200.40300.40700.52600.55400.59500.61300.276000.2742600 | CONCEALED PLUMBING | 8d | 2026-01-22 | 2026-01-29 | 6081 |  | RGA -FINISHING | 8873974 |
| 6083 | 40200.40300.40700.52600.55400.59500.61300.276000.2742700 | WATERPROOFING WORK FOR TOILETS, KITCHEN SUNK & PLANTERS | 8d | 2026-01-30 | 2026-02-06 | 6082 |  | RGA -FINISHING | 8873984 |

Notes:
- 6061: AVg Slab Cycle of 21 days

| ID | WBS | Task | Duration | Start | Finish | Predecessors | Constraint | Calendar | Unique_Task_ID |
| --- | --- | --- | --- | --- | --- | --- | --- | --- | --- |
| 6084 | 40200.40300.40700.52600.55400.59500.61300.276100 | **1ST FLOOR** | 162d | 2026-01-08 | 2026-06-18 |  | start no earlier than 2026-01-08 | RGA -FINISHING | 8866464 |
| 6085 | 40200.40300.40700.52600.55400.59500.61300.276100.2742800 | BALCONY RAILING FIXING | 9d | 2026-04-17 | 2026-04-25 | 5976FS+10d |  | RGA -FINISHING | 8873994 |
| 6086 | 40200.40300.40700.52600.55400.59500.61300.276100.2742900 | Block work | 8d | 2026-06-11 | 2026-06-18 | 6090 |  | RGA -FINISHING | 8874004 |
| 6087 | 40200.40300.40700.52600.55400.59500.61300.276100.2743000 | CONCEALED ELEC CONDUITING & ITS FINISHING | 5d | 2026-01-08 | 2026-01-12 | 5965FS-7d |  | RGA -FINISHING | 8874014 |
| 6088 | 40200.40300.40700.52600.55400.59500.61300.276100.2743100 | PLASTER APPLICATION | 6d | 2026-05-20 | 2026-05-25 | 6272FS+30d |  | RGA -FINISHING | 8874024 |
| 6089 | 40200.40300.40700.52600.55400.59500.61300.276100.2743200 | CONCEALED PLUMBING | 8d | 2026-05-26 | 2026-06-02 | 6088 |  | RGA -FINISHING | 8874034 |
| 6090 | 40200.40300.40700.52600.55400.59500.61300.276100.2743300 | WATERPROOFING WORK FOR TOILETS, KITCHEN SUNK & PLANTERS | 8d | 2026-06-03 | 2026-06-10 | 6089 |  | RGA -FINISHING | 8874044 |
| 6091 | 40200.40300.40700.52600.55400.59500.61300.276200 | **2nd FLOOR** | 141d | 2026-02-10 | 2026-06-30 |  | start no earlier than 2026-02-10 | RGA -FINISHING | 8866474 |
| 6092 | 40200.40300.40700.52600.55400.59500.61300.276200.2743400 | BALCONY RAILING FIXING | 9d | 2026-05-05 | 2026-05-13 | 5980FS+11d |  | RGA -FINISHING | 8874054 |
| 6093 | 40200.40300.40700.52600.55400.59500.61300.276200.2743500 | Block work | 8d | 2026-06-23 | 2026-06-30 | 6097 |  | RGA -FINISHING | 8874064 |
| 6094 | 40200.40300.40700.52600.55400.59500.61300.276200.2743600 | CONCEALED ELEC CONDUITING & ITS FINISHING | 5d | 2026-02-10 | 2026-02-14 | 5968FS-5d |  | RGA -FINISHING | 8874074 |
| 6095 | 40200.40300.40700.52600.55400.59500.61300.276200.2743700 | PLASTER APPLICATION | 6d | 2026-06-01 | 2026-06-06 | 6285FS+30d |  | RGA -FINISHING | 8874084 |
| 6096 | 40200.40300.40700.52600.55400.59500.61300.276200.2743800 | CONCEALED PLUMBING | 8d | 2026-06-07 | 2026-06-14 | 6095 |  | RGA -FINISHING | 8874094 |
| 6097 | 40200.40300.40700.52600.55400.59500.61300.276200.2743900 | WATERPROOFING WORK FOR TOILETS, KITCHEN SUNK & PLANTERS | 8d | 2026-06-15 | 2026-06-22 | 6096 |  | RGA -FINISHING | 8874104 |
| 6098 | 40200.40300.40700.52600.55400.59500.61300.276300 | **3rd FLOOR** | 131d | 2026-03-10 | 2026-07-18 |  | start no earlier than 2026-03-10 | RGA -FINISHING | 8866484 |
| 6099 | 40200.40300.40700.52600.55400.59500.61300.276300.2744000 | BALCONY RAILING FIXING | 9d | 2026-05-22 | 2026-05-30 | 5984FS+10d |  | RGA -FINISHING | 8874114 |
| 6100 | 40200.40300.40700.52600.55400.59500.61300.276300.2744100 | Block work | 8d | 2026-07-11 | 2026-07-18 | 6104 |  | RGA -FINISHING | 8874124 |
| 6101 | 40200.40300.40700.52600.55400.59500.61300.276300.2744200 | CONCEALED ELEC CONDUITING & ITS FINISHING | 5d | 2026-03-10 | 2026-03-14 | 5972FS-7d |  | RGA -FINISHING | 8874134 |
| 6102 | 40200.40300.40700.52600.55400.59500.61300.276300.2744300 | PLASTER APPLICATION | 6d | 2026-06-19 | 2026-06-24 | 6298FS+30d |  | RGA -FINISHING | 8874154 |
| 6103 | 40200.40300.40700.52600.55400.59500.61300.276300.2744400 | CONCEALED PLUMBING | 8d | 2026-06-25 | 2026-07-02 | 6102 |  | RGA -FINISHING | 8874164 |
| 6104 | 40200.40300.40700.52600.55400.59500.61300.276300.2744500 | WATERPROOFING WORK FOR TOILETS, KITCHEN SUNK & PLANTERS | 8d | 2026-07-03 | 2026-07-10 | 6103 |  | RGA -FINISHING | 8874174 |
| 6105 | 40200.40300.40700.52600.55400.59500.61300.276400 | **4th FLOOR** | 127d | 2026-03-31 | 2026-08-04 |  | start no earlier than 2026-03-31 | RGA -FINISHING | 8866494 |
| 6106 | 40200.40300.40700.52600.55400.59500.61300.276400.2744600 | BALCONY RAILING FIXING | 9d | 2026-06-08 | 2026-06-16 | 5988FS+10d |  | RGA -FINISHING | 8874184 |
| 6107 | 40200.40300.40700.52600.55400.59500.61300.276400.2744700 | Block work | 8d | 2026-07-28 | 2026-08-04 | 6111 |  | RGA -FINISHING | 8874194 |
| 6108 | 40200.40300.40700.52600.55400.59500.61300.276400.2744800 | CONCEALED ELEC CONDUITING & ITS FINISHING | 5d | 2026-03-31 | 2026-04-04 | 5976FS-7d |  | RGA -FINISHING | 8874204 |
| 6109 | 40200.40300.40700.52600.55400.59500.61300.276400.2744900 | PLASTER APPLICATION | 6d | 2026-07-06 | 2026-07-11 | 6311FS+30d |  | RGA -FINISHING | 8874214 |
| 6110 | 40200.40300.40700.52600.55400.59500.61300.276400.2745000 | CONCEALED PLUMBING | 8d | 2026-07-12 | 2026-07-19 | 6109 |  | RGA -FINISHING | 8874224 |
| 6111 | 40200.40300.40700.52600.55400.59500.61300.276400.2745100 | WATERPROOFING WORK FOR TOILETS, KITCHEN SUNK & PLANTERS | 8d | 2026-07-20 | 2026-07-27 | 6110 |  | RGA -FINISHING | 8874234 |

| ID | WBS | Task | Duration | Start | Finish | Predecessors | Constraint | Calendar | Unique_Task_ID |
| --- | --- | --- | --- | --- | --- | --- | --- | --- | --- |
| 6112 | 40200.40300.40700.52600.55400.59500.61300.276500 | **5th FLOOR** | 112d | 2026-04-17 | 2026-08-06 |  | start no earlier than 2026-04-17 | RGA -FINISHING | 8866504 |
| 6113 | 40200.40300.40700.52600.55400.59500.61300.276500.2745200 | BALCONY RAILING FIXING | 9d | 2026-07-03 | 2026-07-12 | 5992FS+18.5d |  | RGA -FINISHING | 8874244 |
| 6114 | 40200.40300.40700.52600.55400.59500.61300.276500.2745300 | Block work | 8d | 2026-07-30 | 2026-08-06 | 6118 |  | RGA -FINISHING | 8874254 |
| 6115 | 40200.40300.40700.52600.55400.59500.61300.276500.2745400 | CONCEALED ELEC CONDUITING & ITS FINISHING | 5d | 2026-04-17 | 2026-04-21 | 5980FS-7d |  | RGA -FINISHING | 8874264 |
| 6116 | 40200.40300.40700.52600.55400.59500.61300.276500.2745500 | PLASTER APPLICATION | 6d | 2026-07-08 | 2026-07-13 | 6324FS+15d |  | RGA -FINISHING | 8874274 |
| 6117 | 40200.40300.40700.52600.55400.59500.61300.276500.2745600 | CONCEALED PLUMBING | 8d | 2026-07-14 | 2026-07-21 | 6116 |  | RGA -FINISHING | 8874284 |
| 6118 | 40200.40300.40700.52600.55400.59500.61300.276500.2745700 | WATERPROOFING WORK FOR TOILETS, KITCHEN SUNK & PLANTERS | 8d | 2026-07-22 | 2026-07-29 | 6117 |  | RGA -FINISHING | 8874294 |
| 6119 | 40200.40300.40700.52600.55400.59500.61300.276600 | **6th FLOOR** | 119.5d | 2026-05-05 | 2026-09-01 |  | start no earlier than 2026-05-05 | RGA -FINISHING | 8866514 |
| 6120 | 40200.40300.40700.52600.55400.59500.61300.276600.2745800 | BALCONY RAILING FIXING | 9d | 2026-07-27 | 2026-08-04 | 5996FS+10d |  | RGA -FINISHING | 8874304 |
| 6121 | 40200.40300.40700.52600.55400.59500.61300.276600.2745900 | Block work | 8d | 2026-08-24 | 2026-09-01 | 6125 |  | RGA -FINISHING | 8874314 |
| 6122 | 40200.40300.40700.52600.55400.59500.61300.276600.2746000 | CONCEALED ELEC CONDUITING & ITS FINISHING | 5d | 2026-05-05 | 2026-05-09 | 5984FS-7d |  | RGA -FINISHING | 8874324 |
| 6123 | 40200.40300.40700.52600.55400.59500.61300.276600.2746100 | PLASTER APPLICATION | 6d | 2026-08-02 | 2026-08-08 | 6337FS+15d |  | RGA -FINISHING | 8874334 |
| 6124 | 40200.40300.40700.52600.55400.59500.61300.276600.2746200 | CONCEALED PLUMBING | 8d | 2026-08-08 | 2026-08-16 | 6123 |  | RGA -FINISHING | 8874344 |
| 6125 | 40200.40300.40700.52600.55400.59500.61300.276600.2746300 | WATERPROOFING WORK FOR TOILETS, KITCHEN SUNK & PLANTERS | 8d | 2026-08-16 | 2026-08-24 | 6124 |  | RGA -FINISHING | 8874354 |
| 6126 | 40200.40300.40700.52600.55400.59500.61300.276700 | **7th FLOOR** | 126d | 2026-05-22 | 2026-09-24 |  | start no earlier than 2026-05-22 | RGA -FINISHING | 8866524 |
| 6127 | 40200.40300.40700.52600.55400.59500.61300.276700.2746400 | BALCONY RAILING FIXING | 9d | 2026-08-13 | 2026-08-21 | 6000FS+10d |  | RGA -FINISHING | 8874364 |
| 6128 | 40200.40300.40700.52600.55400.59500.61300.276700.2746500 | Block work | 8d | 2026-09-17 | 2026-09-24 | 6132 |  | RGA -FINISHING | 8874374 |
| 6129 | 40200.40300.40700.52600.55400.59500.61300.276700.2746600 | CONCEALED ELEC CONDUITING & ITS FINISHING | 5d | 2026-05-22 | 2026-05-26 | 5988FS-7d |  | RGA -FINISHING | 8874384 |
| 6130 | 40200.40300.40700.52600.55400.59500.61300.276700.2746700 | PLASTER APPLICATION | 6d | 2026-08-26 | 2026-08-31 | 6350FS+15d |  | RGA -FINISHING | 8874394 |
| 6131 | 40200.40300.40700.52600.55400.59500.61300.276700.2746800 | CONCEALED PLUMBING | 8d | 2026-09-01 | 2026-09-08 | 6130 |  | RGA -FINISHING | 8874404 |
| 6132 | 40200.40300.40700.52600.55400.59500.61300.276700.2746900 | WATERPROOFING WORK FOR TOILETS, KITCHEN SUNK & PLANTERS | 8d | 2026-09-09 | 2026-09-16 | 6131 |  | RGA -FINISHING | 8874414 |
| 6133 | 40200.40300.40700.52600.55400.59500.61300.276800 | **8th FLOOR** | 579d | 2026-06-10 | 2028-01-09 |  | start no earlier than 2026-06-10 | RGA -FINISHING | 8866534 |
| 6134 | 40200.40300.40700.52600.55400.59500.61300.276800.2747000 | BALCONY RAILING FIXING | 9d | 2026-08-31 | 2026-09-08 | 6004FS+10d |  | RGA -FINISHING | 8874424 |
| 6135 | 40200.40300.40700.52600.55400.59500.61300.276800.2747100 | Block work | 8d | 2028-01-02 | 2028-01-09 | 6139 |  | RGA -FINISHING | 8874434 |
| 6136 | 40200.40300.40700.52600.55400.59500.61300.276800.2747200 | CONCEALED ELEC CONDUITING & ITS FINISHING | 5d | 2026-06-10 | 2026-06-14 | 5992FS-5d |  | RGA -FINISHING | 8874444 |
| 6137 | 40200.40300.40700.52600.55400.59500.61300.276800.2747300 | PLASTER APPLICATION | 6d | 2027-12-11 | 2027-12-16 | 6360FS+15d |  | RGA -FINISHING | 8874454 |
| 6138 | 40200.40300.40700.52600.55400.59500.61300.276800.2747400 | CONCEALED PLUMBING | 8d | 2027-12-17 | 2027-12-24 | 6137 |  | RGA -FINISHING | 8874464 |
| 6139 | 40200.40300.40700.52600.55400.59500.61300.276800.2747500 | WATERPROOFING WORK FOR TOILETS, KITCHEN SUNK & PLANTERS | 8d | 2027-12-25 | 2028-01-01 | 6138 |  | RGA -FINISHING | 8874474 |

| ID | WBS | Task | Duration | Start | Finish | Predecessors | Constraint | Calendar | Unique_Task_ID |
| --- | --- | --- | --- | --- | --- | --- | --- | --- | --- |
| 6140 | 40200.40300.40700.52600.55400.59500.61300.276900 | **9th FLOOR** | 95d | 2026-07-08 | 2026-10-10 |  | start no earlier than 2026-07-08 | RGA -FINISHING | 8866544 |
| 6141 | 40200.40300.40700.52600.55400.59500.61300.276900.2747600 | BALCONY RAILING FIXING | 9d | 2026-09-17 | 2026-09-25 | 6008FS+10d |  | RGA -FINISHING | 8874484 |
| 6142 | 40200.40300.40700.52600.55400.59500.61300.276900.2747700 | Block work | 8d | 2026-10-01 | 2026-10-08 | 6146 |  | RGA -FINISHING | 8874494 |
| 6143 | 40200.40300.40700.52600.55400.59500.61300.276900.2747800 | CONCEALED ELEC CONDUITING & ITS FINISHING | 5d | 2026-07-08 | 2026-07-12 | 5996FS-9d |  | RGA -FINISHING | 8874504 |
| 6144 | 40200.40300.40700.52600.55400.59500.61300.276900.2747900 | PLASTER APPLICATION | 6d | 2026-10-05 | 2026-10-10 | 6673FS+15d |  | RGA -FINISHING | 8874514 |
| 6145 | 40200.40300.40700.52600.55400.59500.61300.276900.2748000 | CONCEALED PLUMBING | 8d | 2026-09-15 | 2026-09-22 | 6376 |  | RGA -FINISHING | 8874524 |
| 6146 | 40200.40300.40700.52600.55400.59500.61300.276900.2748100 | WATERPROOFING WORK FOR TOILETS, KITCHEN SUNK & PLANTERS | 8d | 2026-09-23 | 2026-09-30 | 6145 |  | RGA -FINISHING | 8874534 |
| 6147 | 40200.40300.40700.52600.55400.59500.61300.277000 | **10th FLOOR** | 112d | 2026-07-27 | 2026-11-15 |  | start no earlier than 2026-07-27 | RGA -FINISHING | 8866554 |
| 6148 | 40200.40300.40700.52600.55400.59500.61300.277000.2748200 | BALCONY RAILING FIXING | 9d | 2026-10-05 | 2026-10-13 | 6012FS+11d |  | RGA -FINISHING | 8874544 |
| 6149 | 40200.40300.40700.52600.55400.59500.61300.277000.2748300 | Block work | 8d | 2026-11-08 | 2026-11-15 | 6153 |  | RGA -FINISHING | 8874554 |
| 6150 | 40200.40300.40700.52600.55400.59500.61300.277000.2748400 | CONCEALED ELEC CONDUITING & ITS FINISHING | 5d | 2026-07-27 | 2026-07-31 | 6000FS-7d |  | RGA -FINISHING | 8874564 |
| 6151 | 40200.40300.40700.52600.55400.59500.61300.277000.2748500 | PLASTER APPLICATION | 6d | 2026-10-17 | 2026-10-22 | 6389FS+15d |  | RGA -FINISHING | 8874574 |
| 6152 | 40200.40300.40700.52600.55400.59500.61300.277000.2748600 | CONCEALED PLUMBING | 8d | 2026-10-23 | 2026-10-30 | 6151 |  | RGA -FINISHING | 8874584 |
| 6153 | 40200.40300.40700.52600.55400.59500.61300.277000.2748700 | WATERPROOFING WORK FOR TOILETS, KITCHEN SUNK & PLANTERS | 8d | 2026-10-31 | 2026-11-07 | 6152 |  | RGA -FINISHING | 8874594 |
| 6154 | 40200.40300.40700.52600.55400.59500.61300.277100 | **11th FLOOR** | 113d | 2026-08-13 | 2026-12-03 |  | start no earlier than 2026-08-13 | RGA -FINISHING | 8866564 |
| 6155 | 40200.40300.40700.52600.55400.59500.61300.277100.2748800 | BALCONY RAILING FIXING | 9d | 2026-10-22 | 2026-10-30 | 6016FS+10d |  | RGA -FINISHING | 8874604 |
| 6156 | 40200.40300.40700.52600.55400.59500.61300.277100.2748900 | Block work | 8d | 2026-11-26 | 2026-12-03 | 6160 |  | RGA -FINISHING | 8874614 |
| 6157 | 40200.40300.40700.52600.55400.59500.61300.277100.2749000 | CONCEALED ELEC CONDUITING & ITS FINISHING | 5d | 2026-08-13 | 2026-08-17 | 6004FS-8d |  | RGA -FINISHING | 8874624 |
| 6158 | 40200.40300.40700.52600.55400.59500.61300.277100.2749100 | PLASTER APPLICATION | 6d | 2026-11-04 | 2026-11-09 | 6402FS+15d |  | RGA -FINISHING | 8874634 |
| 6159 | 40200.40300.40700.52600.55400.59500.61300.277100.2749200 | CONCEALED PLUMBING | 8d | 2026-11-10 | 2026-11-17 | 6158 |  | RGA -FINISHING | 8874644 |
| 6160 | 40200.40300.40700.52600.55400.59500.61300.277100.2749300 | WATERPROOFING WORK FOR TOILETS, KITCHEN SUNK & PLANTERS | 8d | 2026-11-18 | 2026-11-25 | 6159 |  | RGA -FINISHING | 8874654 |
| 6161 | 40200.40300.40700.52600.55400.59500.61300.277200 | **12th FLOOR** | 89d | 2026-08-31 | 2026-11-27 |  | start no earlier than 2026-08-31 | RGA -FINISHING | 8866574 |
| 6162 | 40200.40300.40700.52600.55400.59500.61300.277200.2749400 | BALCONY RAILING FIXING | 9d | 2026-11-08 | 2026-11-16 | 6020FS+10d |  | RGA -FINISHING | 8874664 |
| 6163 | 40200.40300.40700.52600.55400.59500.61300.277200.2749500 | Block work | 8d | 2026-11-20 | 2026-11-27 | 6166 |  | RGA -FINISHING | 8874674 |
| 6164 | 40200.40300.40700.52600.55400.59500.61300.277200.2749600 | CONCEALED ELEC CONDUITING & ITS FINISHING | 5d | 2026-08-31 | 2026-09-04 | 6008FS-7d |  | RGA -FINISHING | 8874684 |
| 6165 | 40200.40300.40700.52600.55400.59500.61300.277200.2749700 | PLASTER APPLICATION | 6d | 2026-11-06 | 2026-11-11 | 6415 |  | RGA -FINISHING | 8874694 |
| 6166 | 40200.40300.40700.52600.55400.59500.61300.277200.2749800 | CONCEALED PLUMBING | 8d | 2026-11-12 | 2026-11-19 | 6165 |  | RGA -FINISHING | 8874704 |
| 6167 | 40200.40300.40700.52600.55400.59500.61300.277200.2749900 | WATERPROOFING WORK FOR TOILETS, KITCHEN SUNK & PLANTERS | 8d | 2026-11-20 | 2026-11-27 | 6166 |  | RGA -FINISHING | 8874714 |

| ID | WBS | Task | Duration | Start | Finish | Predecessors | Constraint | Calendar | Unique_Task_ID |
| --- | --- | --- | --- | --- | --- | --- | --- | --- | --- |
| 6168 | 40200.40300.40700.52600.55400.59500.61300.277300 | **13th FLOOR** | 111d | 2026-09-17 | 2027-01-05 |  | start no earlier than 2026-09-17 | RGA -FINISHING | 8866584 |
| 6169 | 40200.40300.40700.52600.55400.59500.61300.277300.2750000 | BALCONY RAILING FIXING | 9d | 2026-12-03 | 2026-12-12 | 6024FS+18.5d |  | RGA -FINISHING | 8874724 |
| 6170 | 40200.40300.40700.52600.55400.59500.61300.277300.2750100 | Block work | 8d | 2026-12-29 | 2027-01-05 | 6174 |  | RGA -FINISHING | 8874734 |
| 6171 | 40200.40300.40700.52600.55400.59500.61300.277300.2750200 | CONCEALED ELEC CONDUITING & ITS FINISHING | 5d | 2026-09-17 | 2026-09-21 | 6012FS-7d |  | RGA -FINISHING | 8874744 |
| 6172 | 40200.40300.40700.52600.55400.59500.61300.277300.2750300 | PLASTER APPLICATION | 15d | 2026-11-23 | 2026-12-07 | 6428 |  | RGA -FINISHING | 8874754 |
| 6173 | 40200.40300.40700.52600.55400.59500.61300.277300.2750400 | CONCEALED PLUMBING | 9d | 2026-12-08 | 2026-12-16 | 6172 |  | RGA -FINISHING | 8874764 |
| 6174 | 40200.40300.40700.52600.55400.59500.61300.277300.2750500 | WATERPROOFING WORK FOR TOILETS, KITCHEN SUNK & PLANTERS | 12d | 2026-12-17 | 2026-12-28 | 6173 |  | RGA -FINISHING | 8874774 |
| 6175 | 40200.40300.40700.52600.55400.59500.61300.277400 | **14th FLOOR** | 120.5d | 2026-10-05 | 2027-02-02 |  | start no earlier than 2026-10-05 | RGA -FINISHING | 8866594 |
| 6176 | 40200.40300.40700.52600.55400.59500.61300.277400.2750600 | BALCONY RAILING FIXING | 9d | 2026-12-27 | 2027-01-04 | 6028FS+10d |  | RGA -FINISHING | 8874784 |
| 6177 | 40200.40300.40700.52600.55400.59500.61300.277400.2750700 | Block work | 8d | 2027-01-25 | 2027-02-02 | 6181 |  | RGA -FINISHING | 8874794 |
| 6178 | 40200.40300.40700.52600.55400.59500.61300.277400.2750800 | CONCEALED ELEC CONDUITING & ITS FINISHING | 5d | 2026-10-05 | 2026-10-09 | 6016FS-7d |  | RGA -FINISHING | 8874804 |
| 6179 | 40200.40300.40700.52600.55400.59500.61300.277400.2750900 | PLASTER APPLICATION | 15d | 2026-12-20 | 2027-01-04 | 6441 |  | RGA -FINISHING | 8874814 |
| 6180 | 40200.40300.40700.52600.55400.59500.61300.277400.2751000 | CONCEALED PLUMBING | 9d | 2027-01-04 | 2027-01-13 | 6179 |  | RGA -FINISHING | 8874824 |
| 6181 | 40200.40300.40700.52600.55400.59500.61300.277400.2751100 | WATERPROOFING WORK FOR TOILETS, KITCHEN SUNK & PLANTERS | 12d | 2027-01-13 | 2027-01-25 | 6180 |  | RGA -FINISHING | 8874834 |
| 6182 | 40200.40300.40700.52600.55400.59500.61300.277500 | **15th FLOOR** | 127d | 2026-10-22 | 2027-02-25 |  | start no earlier than 2026-10-22 | RGA -FINISHING | 8866604 |
| 6183 | 40200.40300.40700.52600.55400.59500.61300.277500.2751200 | BALCONY RAILING FIXING | 9d | 2027-01-13 | 2027-01-21 | 6032FS+10d |  | RGA -FINISHING | 8874844 |
| 6184 | 40200.40300.40700.52600.55400.59500.61300.277500.2751300 | Block work | 8d | 2027-02-18 | 2027-02-25 | 6188 |  | RGA -FINISHING | 8874854 |
| 6185 | 40200.40300.40700.52600.55400.59500.61300.277500.2751400 | CONCEALED ELEC CONDUITING & ITS FINISHING | 5d | 2026-10-22 | 2026-10-26 | 6020FS-7d |  | RGA -FINISHING | 8874864 |
| 6186 | 40200.40300.40700.52600.55400.59500.61300.277500.2751500 | PLASTER APPLICATION | 15d | 2027-01-13 | 2027-01-27 | 6454 |  | RGA -FINISHING | 8874874 |
| 6187 | 40200.40300.40700.52600.55400.59500.61300.277500.2751600 | CONCEALED PLUMBING | 9d | 2027-01-28 | 2027-02-05 | 6186 |  | RGA -FINISHING | 8874884 |
| 6188 | 40200.40300.40700.52600.55400.59500.61300.277500.2751700 | WATERPROOFING WORK FOR TOILETS, KITCHEN SUNK & PLANTERS | 12d | 2027-02-06 | 2027-02-17 | 6187 |  | RGA -FINISHING | 8874894 |
| 6189 | 40200.40300.40700.52600.55400.59500.61300.277600 | **16th FLOOR** | 127d | 2026-11-08 | 2027-03-14 |  | start no earlier than 2026-11-08 | RGA -FINISHING | 8866614 |
| 6190 | 40200.40300.40700.52600.55400.59500.61300.277600.2751800 | BALCONY RAILING FIXING | 9d | 2027-01-30 | 2027-02-07 | 6036FS+10d |  | RGA -FINISHING | 8874904 |
| 6191 | 40200.40300.40700.52600.55400.59500.61300.277600.2751900 | Block work | 8d | 2027-03-07 | 2027-03-14 | 6195 |  | RGA -FINISHING | 8874914 |
| 6192 | 40200.40300.40700.52600.55400.59500.61300.277600.2752000 | CONCEALED ELEC CONDUITING & ITS FINISHING | 5d | 2026-11-08 | 2026-11-12 | 6024FS-7d |  | RGA -FINISHING | 8874924 |
| 6193 | 40200.40300.40700.52600.55400.59500.61300.277600.2752100 | PLASTER APPLICATION | 15d | 2027-01-30 | 2027-02-13 | 6467 |  | RGA -FINISHING | 8874934 |
| 6194 | 40200.40300.40700.52600.55400.59500.61300.277600.2752200 | CONCEALED PLUMBING | 9d | 2027-02-14 | 2027-02-22 | 6193 |  | RGA -FINISHING | 8874944 |
| 6195 | 40200.40300.40700.52600.55400.59500.61300.277600.2752300 | WATERPROOFING WORK FOR TOILETS, KITCHEN SUNK & PLANTERS | 12d | 2027-02-23 | 2027-03-06 | 6194 |  | RGA -FINISHING | 8874954 |

| ID | WBS | Task | Duration | Start | Finish | Predecessors | Constraint | Calendar | Unique_Task_ID |
| --- | --- | --- | --- | --- | --- | --- | --- | --- | --- |
| 6196 | 40200.40300.40700.52600.55400.59500.61300.277700 | **17th FLOOR** | 118d | 2026-12-04 | 2027-03-31 |  | start no earlier than 2026-12-04 | RGA -FINISHING | 8866624 |
| 6197 | 40200.40300.40700.52600.55400.59500.61300.277700.2752400 | BALCONY RAILING FIXING | 9d | 2027-02-16 | 2027-02-24 | 6040FS+10d |  | RGA -FINISHING | 8874964 |
| 6198 | 40200.40300.40700.52600.55400.59500.61300.277700.2752500 | Block work | 8d | 2027-03-24 | 2027-03-31 | 6202 |  | RGA -FINISHING | 8874974 |
| 6199 | 40200.40300.40700.52600.55400.59500.61300.277700.2752600 | CONCEALED ELEC CONDUITING & ITS FINISHING | 5d | 2026-12-04 | 2026-12-08 | 6028FS-13d |  | RGA -FINISHING | 8874984 |
| 6200 | 40200.40300.40700.52600.55400.59500.61300.277700.2752700 | PLASTER APPLICATION | 15d | 2027-02-16 | 2027-03-02 | 6480 |  | RGA -FINISHING | 8874994 |
| 6201 | 40200.40300.40700.52600.55400.59500.61300.277700.2752800 | CONCEALED PLUMBING | 9d | 2027-03-03 | 2027-03-11 | 6200 |  | RGA -FINISHING | 8875004 |
| 6202 | 40200.40300.40700.52600.55400.59500.61300.277700.2752900 | WATERPROOFING WORK FOR TOILETS, KITCHEN SUNK & PLANTERS | 12d | 2027-03-12 | 2027-03-23 | 6201 |  | RGA -FINISHING | 8875014 |
| 6203 | 40200.40300.40700.52600.55400.59500.61300.277800 | **18th FLOOR** | 112d | 2026-12-27 | 2027-04-17 |  | start no earlier than 2026-12-27 | RGA -FINISHING | 8866634 |
| 6204 | 40200.40300.40700.52600.55400.59500.61300.277800.2753000 | BALCONY RAILING FIXING | 9d | 2027-03-05 | 2027-03-13 | 6044FS+10d |  | RGA -FINISHING | 8875024 |
| 6205 | 40200.40300.40700.52600.55400.59500.61300.277800.2753100 | Block work | 8d | 2027-04-10 | 2027-04-17 | 6209 |  | RGA -FINISHING | 8875034 |
| 6206 | 40200.40300.40700.52600.55400.59500.61300.277800.2753200 | CONCEALED ELEC CONDUITING & ITS FINISHING | 5d | 2026-12-27 | 2026-12-31 | 6032FS-7d |  | RGA -FINISHING | 8875044 |
| 6207 | 40200.40300.40700.52600.55400.59500.61300.277800.2753300 | PLASTER APPLICATION | 15d | 2027-03-05 | 2027-03-19 | 6493 |  | RGA -FINISHING | 8875054 |
| 6208 | 40200.40300.40700.52600.55400.59500.61300.277800.2753400 | CONCEALED PLUMBING | 9d | 2027-03-20 | 2027-03-28 | 6207 |  | RGA -FINISHING | 8875064 |
| 6209 | 40200.40300.40700.52600.55400.59500.61300.277800.2753500 | WATERPROOFING WORK FOR TOILETS, KITCHEN SUNK & PLANTERS | 12d | 2027-03-29 | 2027-04-09 | 6208 |  | RGA -FINISHING | 8875074 |
| 6210 | 40200.40300.40700.52600.55400.59500.61300.277900 | **19th FLOOR** | 112d | 2027-01-13 | 2027-05-04 |  | start no earlier than 2027-01-13 | RGA -FINISHING | 8866644 |
| 6211 | 40200.40300.40700.52600.55400.59500.61300.277900.2753600 | BALCONY RAILING FIXING | 9d | 2027-03-22 | 2027-03-30 | 6048FS+10d |  | RGA -FINISHING | 8875084 |
| 6212 | 40200.40300.40700.52600.55400.59500.61300.277900.2753700 | Block work | 8d | 2027-04-27 | 2027-05-04 | 6216 |  | RGA -FINISHING | 8875094 |
| 6213 | 40200.40300.40700.52600.55400.59500.61300.277900.2753800 | CONCEALED ELEC CONDUITING & ITS FINISHING | 5d | 2027-01-13 | 2027-01-17 | 6036FS-7d |  | RGA -FINISHING | 8875104 |
| 6214 | 40200.40300.40700.52600.55400.59500.61300.277900.2753900 | PLASTER APPLICATION | 15d | 2027-03-22 | 2027-04-05 | 6506 |  | RGA -FINISHING | 8875114 |
| 6215 | 40200.40300.40700.52600.55400.59500.61300.277900.2754000 | CONCEALED PLUMBING | 9d | 2027-04-06 | 2027-04-14 | 6214 |  | RGA -FINISHING | 8875124 |
| 6216 | 40200.40300.40700.52600.55400.59500.61300.277900.2754100 | WATERPROOFING WORK FOR TOILETS, KITCHEN SUNK & PLANTERS | 12d | 2027-04-15 | 2027-04-26 | 6215 |  | RGA -FINISHING | 8875134 |
| 6217 | 40200.40300.40700.52600.55400.59500.61300.278000 | **20th FLOOR** | 112d | 2027-01-30 | 2027-05-21 |  | start no earlier than 2027-01-30 | RGA -FINISHING | 8866654 |
| 6218 | 40200.40300.40700.52600.55400.59500.61300.278000.2754200 | BALCONY RAILING FIXING | 9d | 2027-04-08 | 2027-04-16 | 6052FS+10d |  | RGA -FINISHING | 8875144 |
| 6219 | 40200.40300.40700.52600.55400.59500.61300.278000.2754300 | Block work | 8d | 2027-05-14 | 2027-05-21 | 6223 |  | RGA -FINISHING | 8875154 |
| 6220 | 40200.40300.40700.52600.55400.59500.61300.278000.2754400 | CONCEALED ELEC CONDUITING & ITS FINISHING | 5d | 2027-01-30 | 2027-02-03 | 6040FS-7d |  | RGA -FINISHING | 8875164 |
| 6221 | 40200.40300.40700.52600.55400.59500.61300.278000.2754500 | PLASTER APPLICATION | 15d | 2027-04-08 | 2027-04-22 | 6519 |  | RGA -FINISHING | 8875174 |
| 6222 | 40200.40300.40700.52600.55400.59500.61300.278000.2754600 | CONCEALED PLUMBING | 9d | 2027-04-23 | 2027-05-01 | 6221 |  | RGA -FINISHING | 8875184 |
| 6223 | 40200.40300.40700.52600.55400.59500.61300.278000.2754700 | WATERPROOFING WORK FOR TOILETS, KITCHEN SUNK & PLANTERS | 12d | 2027-05-02 | 2027-05-13 | 6222 |  | RGA -FINISHING | 8875194 |

Notes:
- 6205: Last floor BW completion 2 months post Last RCC
- 6212: Last floor BW completion 2 months post Last RCC
- 6219: Last floor BW completion 2 months post Last RCC

| ID | WBS | Task | Duration | Start | Finish | Predecessors | Constraint | Calendar | Unique_Task_ID |
| --- | --- | --- | --- | --- | --- | --- | --- | --- | --- |
| 6224 | 40200.40300.40700.52600.55400.59500.61300.278100 | **21th FLOOR** | 112d | 2027-02-16 | 2027-06-07 |  | start no earlier than 2027-02-16 | RGA -FINISHING | 8866664 |
| 6225 | 40200.40300.40700.52600.55400.59500.61300.278100.2754800 | BALCONY RAILING FIXING | 9d | 2027-04-25 | 2027-05-03 | 6056FS+10d |  | RGA -FINISHING | 8875204 |
| 6226 | 40200.40300.40700.52600.55400.59500.61300.278100.2754900 | Block work | 8d | 2027-05-31 | 2027-06-07 | 6230 |  | RGA -FINISHING | 8875214 |
| 6227 | 40200.40300.40700.52600.55400.59500.61300.278100.2755000 | CONCEALED ELEC CONDUITING & ITS FINISHING | 5d | 2027-02-16 | 2027-02-20 | 6044FS-7d |  | RGA -FINISHING | 8875224 |
| 6228 | 40200.40300.40700.52600.55400.59500.61300.278100.2755100 | PLASTER APPLICATION | 15d | 2027-04-25 | 2027-05-09 | 6532 |  | RGA -FINISHING | 8875234 |
| 6229 | 40200.40300.40700.52600.55400.59500.61300.278100.2755200 | CONCEALED PLUMBING | 9d | 2027-05-10 | 2027-05-18 | 6228 |  | RGA -FINISHING | 8875244 |
| 6230 | 40200.40300.40700.52600.55400.59500.61300.278100.2755300 | WATERPROOFING WORK FOR TOILETS, KITCHEN SUNK & PLANTERS | 12d | 2027-05-19 | 2027-05-30 | 6229 |  | RGA -FINISHING | 8875254 |
| 6231 | 40200.40300.40700.52600.55400.59500.61300.278200 | **22th FLOOR** | 112d | 2027-03-05 | 2027-06-24 |  | start no earlier than 2027-03-05 | RGA -FINISHING | 8866674 |
| 6232 | 40200.40300.40700.52600.55400.59500.61300.278200.2755400 | BALCONY RAILING FIXING | 9d | 2027-05-12 | 2027-05-20 | 6060FS+10d |  | RGA -FINISHING | 8875264 |
| 6233 | 40200.40300.40700.52600.55400.59500.61300.278200.2755500 | Block work | 8d | 2027-06-17 | 2027-06-24 | 6237 |  | RGA -FINISHING | 8875274 |
| 6234 | 40200.40300.40700.52600.55400.59500.61300.278200.2755600 | CONCEALED ELEC CONDUITING & ITS FINISHING | 5d | 2027-03-05 | 2027-03-09 | 6048FS-7d |  | RGA -FINISHING | 8875284 |
| 6235 | 40200.40300.40700.52600.55400.59500.61300.278200.2755700 | PLASTER APPLICATION | 15d | 2027-05-12 | 2027-05-26 | 6545 |  | RGA -FINISHING | 8875294 |
| 6236 | 40200.40300.40700.52600.55400.59500.61300.278200.2755800 | CONCEALED PLUMBING | 9d | 2027-05-27 | 2027-06-04 | 6235 |  | RGA -FINISHING | 8875304 |
| 6237 | 40200.40300.40700.52600.55400.59500.61300.278200.2755900 | WATERPROOFING WORK FOR TOILETS, KITCHEN SUNK & PLANTERS | 12d | 2027-06-05 | 2027-06-16 | 6236 |  | RGA -FINISHING | 8875314 |
| 6238 | 40200.40300.40700.52600.55400.59500.61300.278300 | **23th FLOOR** | 142d | 2027-03-22 | 2027-08-10 |  | start no earlier than 2027-03-22 | RGA -FINISHING | 8866684 |
| 6239 | 40200.40300.40700.52600.55400.59500.61300.278300.2756000 | BALCONY RAILING FIXING | 9d | 2027-05-31 | 2027-06-08 | 6232FS+10d |  | RGA -FINISHING | 8875324 |
| 6240 | 40200.40300.40700.52600.55400.59500.61300.278300.2756100 | Block work | 8d | 2027-08-03 | 2027-08-10 | 6244 |  | RGA -FINISHING | 8875334 |
| 6241 | 40200.40300.40700.52600.55400.59500.61300.278300.2756200 | CONCEALED ELEC CONDUITING & ITS FINISHING | 5d | 2027-03-22 | 2027-03-26 | 6052FS-7d |  | RGA -FINISHING | 8875344 |
| 6242 | 40200.40300.40700.52600.55400.59500.61300.278300.2756300 | PLASTER APPLICATION | 15d | 2027-06-28 | 2027-07-12 | 6558FS+30d |  | RGA -FINISHING | 8875354 |
| 6243 | 40200.40300.40700.52600.55400.59500.61300.278300.2756400 | CONCEALED PLUMBING | 9d | 2027-07-13 | 2027-07-21 | 6242 |  | RGA -FINISHING | 8875364 |
| 6244 | 40200.40300.40700.52600.55400.59500.61300.278300.2756500 | WATERPROOFING WORK FOR TOILETS, KITCHEN SUNK & PLANTERS | 12d | 2027-07-22 | 2027-08-02 | 6243 |  | RGA -FINISHING | 8875374 |
| 6245 | 40200.40300.40700.52600.55400.59500.61300.278400 | **24th FLOOR** | 144d | 2027-04-08 | 2027-08-29 |  | start no earlier than 2027-04-08 | RGA -FINISHING | 8866704 |
| 6246 | 40200.40300.40700.52600.55400.59500.61300.278400.2756600 | BALCONY RAILING FIXING | 9d | 2027-06-30 | 2027-07-08 | 6239FS+21d |  | RGA -FINISHING | 8875384 |
| 6247 | 40200.40300.40700.52600.55400.59500.61300.278400.2756700 | Block work | 8d | 2027-08-22 | 2027-08-29 | 6251 |  | RGA -FINISHING | 8875394 |
| 6248 | 40200.40300.40700.52600.55400.59500.61300.278400.2756800 | CONCEALED ELEC CONDUITING & ITS FINISHING | 5d | 2027-04-08 | 2027-04-12 | 6056FS-7d |  | RGA -FINISHING | 8875404 |
| 6249 | 40200.40300.40700.52600.55400.59500.61300.278400.2756900 | PLASTER APPLICATION | 15d | 2027-07-17 | 2027-07-31 | 6571FS+30d |  | RGA -FINISHING | 8875414 |
| 6250 | 40200.40300.40700.52600.55400.59500.61300.278400.2757000 | CONCEALED PLUMBING | 9d | 2027-08-01 | 2027-08-09 | 6249 |  | RGA -FINISHING | 8875424 |
| 6251 | 40200.40300.40700.52600.55400.59500.61300.278400.2757100 | WATERPROOFING WORK FOR TOILETS, KITCHEN SUNK & PLANTERS | 12d | 2027-08-10 | 2027-08-21 | 6250 |  | RGA -FINISHING | 8875434 |

Notes:
- 6226: Last floor BW completion 2 months post Last RCC
- 6233: Last floor BW completion 2 months post Last RCC
- 6240: Last floor BW completion 2 months post Last RCC
- 6247: Last floor BW completion 2 months post Last RCC

| ID | WBS | Task | Duration | Start | Finish | Predecessors | Constraint | Calendar | Unique_Task_ID |
| --- | --- | --- | --- | --- | --- | --- | --- | --- | --- |
| 6252 | 40200.40300.40700.52600.55400.59500.61300.278500 | **25thFLOOR** | 145d | 2027-04-25 | 2027-09-16 |  | start no earlier than 2027-04-25 | RGA -FINISHING | 8866714 |
| 6253 | 40200.40300.40700.52600.55400.59500.61300.278500.2757200 | BALCONY RAILING FIXING | 9d | 2027-07-09 | 2027-07-17 | 6246 |  | RGA -FINISHING | 8875444 |
| 6254 | 40200.40300.40700.52600.55400.59500.61300.278500.2757300 | Block work | 8d | 2027-09-09 | 2027-09-16 | 6258 |  | RGA -FINISHING | 8875454 |
| 6255 | 40200.40300.40700.52600.55400.59500.61300.278500.2757400 | CONCEALED ELEC CONDUITING & ITS FINISHING | 5d | 2027-04-25 | 2027-04-29 | 6060FS-7d |  | RGA -FINISHING | 8875464 |
| 6256 | 40200.40300.40700.52600.55400.59500.61300.278500.2757500 | PLASTER APPLICATION | 15d | 2027-08-04 | 2027-08-18 | 6584FS+18d |  | RGA -FINISHING | 8875474 |
| 6257 | 40200.40300.40700.52600.55400.59500.61300.278500.2757600 | CONCEALED PLUMBING | 9d | 2027-08-19 | 2027-08-27 | 6256 |  | RGA -FINISHING | 8875484 |
| 6258 | 40200.40300.40700.52600.55400.59500.61300.278500.2757700 | WATERPROOFING WORK FOR TOILETS, KITCHEN SUNK & PLANTERS | 12d | 2027-08-28 | 2027-09-08 | 6257 |  | RGA -FINISHING | 8875494 |
| 6259 | 40200.40300.40700.52600.55400.59500.61300.373300 | **LMR(To be deleted)** | 15d | 2025-11-30 | 2025-12-14 |  | start no earlier than 2025-11-30 | RGA -FINISHING | 8866754 |
| 6260 | 40200.40300.40700.52600.55400.59500.61300.373300.2757800 | Block work | 8d | 2025-11-30 | 2025-12-07 |  | start no earlier than 2025-11-30 | RGA -FINISHING | 8875504 |
| 6261 | 40200.40300.40700.52600.55400.59500.61300.373300.2757900 | CONCEALED ELEC CONDUITING & ITS FINISHING | 7d | 2025-11-30 | 2025-12-06 |  | start no earlier than 2025-11-30 | RGA -FINISHING | 8875514 |
| 6262 | 40200.40300.40700.52600.55400.59500.61300.373300.2758000 | PLASTER APPLICATION | 15d | 2025-11-30 | 2025-12-14 |  | start no earlier than 2025-11-30 | RGA -FINISHING | 8875524 |
| 6263 | 40200.40300.40700.52600.55400.59500.61300.373300.2758100 | DOOR FRAME FIXING | 3d | 2025-11-30 | 2025-12-02 |  | start no earlier than 2025-11-30 | RGA -FINISHING | 8875534 |
| 6264 | 40200.40300.40700.52600.55400.59500.508100 | **Terrace Finishing works** | 30d | 2028-01-06 | 2028-02-04 |  | start no earlier than 2028-01-06 | RGA -FINISHING | 8867214 |
| 6265 | 40200.40300.40700.52600.55400.59500.508100.2424100 | Terrace Waterproofing work | 30d | 2028-01-06 | 2028-02-04 | 6267FS+7d |  | RGA -FINISHING | 8867984 |
| 6266 | 40200.40300.40700.52600.55400.59500.508200 | **EXTERNAL Painting** | 215d | 2027-05-29 | 2027-12-29 |  | start no earlier than 2027-05-29 | RGA -FINISHING | 8867224 |
| 6267 | 40200.40300.40700.52600.55400.59500.508200.2424200 | 2nd coat | 215d | 2027-05-29 | 2027-12-29 | 6064FS+10d |  | RGA -FINISHING | 8867994 |
| 6268 | 40200.40300.40700.52600.55400.58300 | **Flat internal finishing & services works** | 765d | 2026-02-15 | 2028-03-20 |  | start no earlier than 2026-02-15 | RGA -FINISHING | 8865824 |
| 6269 | 40200.40300.40700.52600.55400.58300.147000 | **GROUND FLOOR** | 627d | 2026-02-15 | 2027-11-03 |  | start no earlier than 2026-02-15 | RGA -FINISHING | 8865894 |
| 6270 | 40200.40300.40700.52600.55400.58300.147000.2424300 | TOILET DADO TILE FIXING | 10d | 2026-02-15 | 2026-02-24 | 6079 |  | RGA -FINISHING | 8868004 |
| 6271 | 40200.40300.40700.52600.55400.58300.147000.2424400 | TOILET FLOORING WORK | 7d | 2026-02-25 | 2026-03-03 | 6270 |  | RGA -FINISHING | 8868014 |
| 6272 | 40200.40300.40700.52600.55400.58300.147000.2424500 | FIRE FIGHTING | 15d | 2026-04-05 | 2026-04-19 | 6078 |  | RGA -FINISHING | 8868024 |
| 6273 | 40200.40300.40700.52600.55400.58300.147000.2424600 | INTERNAL PAINTING - PUTTY / PRIMER APPLICATION | 15d | 2026-03-27 | 2026-04-10 | 6275 |  | RGA -FINISHING | 8868034 |
| 6274 | 40200.40300.40700.52600.55400.58300.147000.2424700 | FLAT FLOORING | 11d | 2026-03-04 | 2026-03-14 | 6271 |  | RGA -FINISHING | 8868044 |
| 6275 | 40200.40300.40700.52600.55400.58300.147000.2424800 | WINDOW FIXING | 12d | 2026-03-15 | 2026-03-26 | 6274 |  | RGA -FINISHING | 8868054 |
| 6276 | 40200.40300.40700.52600.55400.58300.147000.2424900 | INTERNAL PAINTING - 1ST COAT | 12d | 2026-04-11 | 2026-04-22 | 6273 |  | RGA -FINISHING | 8868064 |
| 6277 | 40200.40300.40700.52600.55400.58300.147000.2425000 | INTERNAL DOOR FIXING | 15d | 2026-04-23 | 2026-05-07 | 6276 |  | RGA -FINISHING | 8868074 |
| 6278 | 40200.40300.40700.52600.55400.58300.147000.2425100 | WIRING & SWITCH PLATE FIXING | 8d | 2026-05-08 | 2026-05-15 | 6277 |  | RGA -FINISHING | 8868084 |
| 6279 | 40200.40300.40700.52600.55400.58300.147000.2425200 | TOILET FALSE CEILING | 7d | 2026-05-16 | 2026-05-22 | 6278 |  | RGA -FINISHING | 8868094 |
| 6280 | 40200.40300.40700.52600.55400.58300.147000.2425300 | MAIN DOOR FRAME SHUTTER FIXING | 6d | 2027-10-21 | 2027-10-26 | 6612 |  | RGA -FINISHING | 8868104 |
| 6281 | 40200.40300.40700.52600.55400.58300.147000.2425400 | FINAL COAT PAINT | 8d | 2027-10-27 | 2027-11-03 | 6280 |  | RGA -FINISHING | 8868114 |

Notes:
- 6266: Ext Plaster (in 2 phases) completion 3.5 months post last BW
- 6268: Completion in 12 months post last RCC

| ID | WBS | Task | Duration | Start | Finish | Predecessors | Constraint | Calendar | Unique_Task_ID |
| --- | --- | --- | --- | --- | --- | --- | --- | --- | --- |
| 6282 | 40200.40300.40700.52600.55400.58300.147100 | **1ST FLOOR** | 569d | 2026-04-26 | 2027-11-15 |  | start no earlier than 2026-04-26 | RGA -FINISHING | 8865904 |
| 6283 | 40200.40300.40700.52600.55400.58300.147100.2425500 | TOILET DADO TILE FIXING | 7d | 2026-06-19 | 2026-06-25 | 6086 |  | RGA -FINISHING | 8868124 |
| 6284 | 40200.40300.40700.52600.55400.58300.147100.2425600 | TOILET FLOORING WORK | 7d | 2026-06-19 | 2026-06-25 | 6283FF |  | RGA -FINISHING | 8868134 |
| 6285 | 40200.40300.40700.52600.55400.58300.147100.2425700 | FIRE FIGHTING | 6d | 2026-04-26 | 2026-05-01 | 6085 |  | RGA -FINISHING | 8868144 |
| 6286 | 40200.40300.40700.52600.55400.58300.147100.2425800 | INTERNAL PAINTING - PUTTY / PRIMER APPLICATION | 6d | 2026-07-13 | 2026-07-18 | 6288 |  | RGA -FINISHING | 8868154 |
| 6287 | 40200.40300.40700.52600.55400.58300.147100.2425900 | FLAT FLOORING | 5d | 2026-06-26 | 2026-06-30 | 6284 |  | RGA -FINISHING | 8868164 |
| 6288 | 40200.40300.40700.52600.55400.58300.147100.2426000 | WINDOW FIXING | 12d | 2026-07-01 | 2026-07-12 | 6287 |  | RGA -FINISHING | 8868174 |
| 6289 | 40200.40300.40700.52600.55400.58300.147100.2426100 | INTERNAL PAINTING - 1ST COAT | 12d | 2026-07-19 | 2026-07-30 | 6286 |  | RGA -FINISHING | 8868184 |
| 6290 | 40200.40300.40700.52600.55400.58300.147100.2426200 | INTERNAL DOOR FIXING | 15d | 2026-07-29 | 2026-08-12 | 6289FS-2d |  | RGA -FINISHING | 8868194 |
| 6291 | 40200.40300.40700.52600.55400.58300.147100.2426300 | WIRING & SWITCH PLATE FIXING | 8d | 2026-08-09 | 2026-08-16 | 6290FS-4d |  | RGA -FINISHING | 8868204 |
| 6292 | 40200.40300.40700.52600.55400.58300.147100.2426400 | TOILET FALSE CEILING | 7d | 2026-08-17 | 2026-08-23 | 6291 |  | RGA -FINISHING | 8868214 |
| 6293 | 40200.40300.40700.52600.55400.58300.147100.2426500 | MAIN DOOR FRAME SHUTTER FIXING | 6d | 2027-11-02 | 2027-11-07 | 6620 |  | RGA -FINISHING | 8868224 |
| 6294 | 40200.40300.40700.52600.55400.58300.147100.2426600 | FINAL COAT PAINT | 8d | 2027-11-08 | 2027-11-15 | 6293 |  | RGA -FINISHING | 8868234 |
| 6295 | 40200.40300.40700.52600.55400.58300.147200 | **2ND FLOOR** | 551d | 2026-05-14 | 2027-11-15 |  | start no earlier than 2026-05-14 | RGA -FINISHING | 8865914 |
| 6296 | 40200.40300.40700.52600.55400.58300.147200.2426700 | TOILET DADO TILE FIXING | 7d | 2026-07-01 | 2026-07-07 | 6093 |  | RGA -FINISHING | 8868244 |
| 6297 | 40200.40300.40700.52600.55400.58300.147200.2426800 | TOILET FLOORING WORK | 7d | 2026-07-08 | 2026-07-14 | 6296 |  | RGA -FINISHING | 8868254 |
| 6298 | 40200.40300.40700.52600.55400.58300.147200.2426900 | FIRE FIGHTING | 6d | 2026-05-14 | 2026-05-19 | 6092 |  | RGA -FINISHING | 8868264 |
| 6299 | 40200.40300.40700.52600.55400.58300.147200.2427000 | INTERNAL PAINTING - PUTTY / PRIMER APPLICATION | 6d | 2026-08-01 | 2026-08-06 | 6301 |  | RGA -FINISHING | 8868274 |
| 6300 | 40200.40300.40700.52600.55400.58300.147200.2427100 | FLAT FLOORING | 5d | 2026-07-15 | 2026-07-19 | 6297 |  | RGA -FINISHING | 8868284 |
| 6301 | 40200.40300.40700.52600.55400.58300.147200.2427200 | WINDOW FIXING | 12d | 2026-07-20 | 2026-07-31 | 6300 |  | RGA -FINISHING | 8868294 |
| 6302 | 40200.40300.40700.52600.55400.58300.147200.2427300 | INTERNAL PAINTING - 1ST COAT | 12d | 2026-08-07 | 2026-08-18 | 6299 |  | RGA -FINISHING | 8868304 |
| 6303 | 40200.40300.40700.52600.55400.58300.147200.2427400 | INTERNAL DOOR FIXING | 15d | 2026-08-17 | 2026-08-31 | 6302FS-2d |  | RGA -FINISHING | 8868314 |
| 6304 | 40200.40300.40700.52600.55400.58300.147200.2427500 | WIRING & SWITCH PLATE FIXING | 8d | 2026-08-28 | 2026-09-04 | 6303FS-4d |  | RGA -FINISHING | 8868324 |
| 6305 | 40200.40300.40700.52600.55400.58300.147200.2427600 | TOILET FALSE CEILING | 7d | 2026-09-05 | 2026-09-11 | 6304 |  | RGA -FINISHING | 8868334 |
| 6306 | 40200.40300.40700.52600.55400.58300.147200.2427700 | MAIN DOOR FRAME SHUTTER FIXING | 6d | 2027-11-02 | 2027-11-07 | 6628 |  | RGA -FINISHING | 8868344 |
| 6307 | 40200.40300.40700.52600.55400.58300.147200.2427800 | FINAL COAT PAINT | 8d | 2027-11-08 | 2027-11-15 | 6306 |  | RGA -FINISHING | 8868354 |

| ID | WBS | Task | Duration | Start | Finish | Predecessors | Constraint | Calendar | Unique_Task_ID |
| --- | --- | --- | --- | --- | --- | --- | --- | --- | --- |
| 6308 | 40200.40300.40700.52600.55400.58300.147300 | **3RD FLOOR** | 534d | 2026-05-31 | 2027-11-15 |  | start no earlier than 2026-05-31 | RGA -FINISHING | 8865924 |
| 6309 | 40200.40300.40700.52600.55400.58300.147300.2427900 | TOILET DADO TILE FIXING | 7d | 2026-07-19 | 2026-07-25 | 6100 |  | RGA -FINISHING | 8868364 |
| 6310 | 40200.40300.40700.52600.55400.58300.147300.2428000 | TOILET FLOORING WORK | 7d | 2026-07-26 | 2026-08-01 | 6309 |  | RGA -FINISHING | 8868374 |
| 6311 | 40200.40300.40700.52600.55400.58300.147300.2428100 | FIRE FIGHTING | 6d | 2026-05-31 | 2026-06-05 | 6099 |  | RGA -FINISHING | 8868384 |
| 6312 | 40200.40300.40700.52600.55400.58300.147300.2428200 | INTERNAL PAINTING - PUTTY / PRIMER APPLICATION | 6d | 2026-08-14 | 2026-08-19 | 6314 |  | RGA -FINISHING | 8868394 |
| 6313 | 40200.40300.40700.52600.55400.58300.147300.2428300 | FLAT FLOORING | 5d | 2026-08-02 | 2026-08-06 | 6310 |  | RGA -FINISHING | 8868404 |
| 6314 | 40200.40300.40700.52600.55400.58300.147300.2428400 | WINDOW FIXING | 7d | 2026-08-07 | 2026-08-13 | 6313 |  | RGA -FINISHING | 8868414 |
| 6315 | 40200.40300.40700.52600.55400.58300.147300.2428500 | INTERNAL PAINTING - 1ST COAT | 7d | 2026-08-20 | 2026-08-26 | 6312 |  | RGA -FINISHING | 8868424 |
| 6316 | 40200.40300.40700.52600.55400.58300.147300.2428600 | INTERNAL DOOR FIXING | 15d | 2026-08-25 | 2026-09-08 | 6315FS-2d |  | RGA -FINISHING | 8868434 |
| 6317 | 40200.40300.40700.52600.55400.58300.147300.2428700 | WIRING & SWITCH PLATE FIXING | 8d | 2026-09-05 | 2026-09-12 | 6316FS-4d |  | RGA -FINISHING | 8868444 |
| 6318 | 40200.40300.40700.52600.55400.58300.147300.2428800 | TOILET FALSE CEILING | 7d | 2026-09-13 | 2026-09-19 | 6317 |  | RGA -FINISHING | 8868454 |
| 6319 | 40200.40300.40700.52600.55400.58300.147300.2428900 | MAIN DOOR FRAME SHUTTER FIXING | 6d | 2027-11-02 | 2027-11-07 | 6636 |  | RGA -FINISHING | 8868464 |
| 6320 | 40200.40300.40700.52600.55400.58300.147300.2429000 | FINAL COAT PAINT | 8d | 2027-11-08 | 2027-11-15 | 6319 |  | RGA -FINISHING | 8868474 |
| 6321 | 40200.40300.40700.52600.55400.58300.147400 | **4TH FLOOR** | 527d | 2026-06-17 | 2027-11-25 |  | start no earlier than 2026-06-17 | RGA -FINISHING | 8865934 |
| 6322 | 40200.40300.40700.52600.55400.58300.147400.2429100 | TOILET DADO TILE FIXING | 7d | 2026-08-05 | 2026-08-11 | 6107 |  | RGA -FINISHING | 8868484 |
| 6323 | 40200.40300.40700.52600.55400.58300.147400.2429200 | TOILET FLOORING WORK | 7d | 2026-08-12 | 2026-08-18 | 6322 |  | RGA -FINISHING | 8868494 |
| 6324 | 40200.40300.40700.52600.55400.58300.147400.2429300 | FIRE FIGHTING | 6d | 2026-06-17 | 2026-06-22 | 6106 |  | RGA -FINISHING | 8868504 |
| 6325 | 40200.40300.40700.52600.55400.58300.147400.2429400 | INTERNAL PAINTING - PUTTY / PRIMER APPLICATION | 6d | 2026-08-31 | 2026-09-05 | 6327 |  | RGA -FINISHING | 8868514 |
| 6326 | 40200.40300.40700.52600.55400.58300.147400.2429500 | FLAT FLOORING | 5d | 2026-08-19 | 2026-08-23 | 6323 |  | RGA -FINISHING | 8868524 |
| 6327 | 40200.40300.40700.52600.55400.58300.147400.2429600 | WINDOW FIXING | 7d | 2026-08-24 | 2026-08-30 | 6326 |  | RGA -FINISHING | 8868534 |
| 6328 | 40200.40300.40700.52600.55400.58300.147400.2429700 | INTERNAL PAINTING - 1ST COAT | 7d | 2026-09-06 | 2026-09-12 | 6325 |  | RGA -FINISHING | 8868544 |
| 6329 | 40200.40300.40700.52600.55400.58300.147400.2429800 | INTERNAL DOOR FIXING | 15d | 2026-09-11 | 2026-09-25 | 6328FS-2d |  | RGA -FINISHING | 8868554 |
| 6330 | 40200.40300.40700.52600.55400.58300.147400.2429900 | WIRING & SWITCH PLATE FIXING | 8d | 2026-09-22 | 2026-09-29 | 6329FS-4d |  | RGA -FINISHING | 8868564 |
| 6331 | 40200.40300.40700.52600.55400.58300.147400.2430000 | TOILET FALSE CEILING | 7d | 2026-09-30 | 2026-10-06 | 6330 |  | RGA -FINISHING | 8868574 |
| 6332 | 40200.40300.40700.52600.55400.58300.147400.2430100 | MAIN DOOR FRAME SHUTTER FIXING | 6d | 2027-11-12 | 2027-11-17 | 6644 |  | RGA -FINISHING | 8868584 |
| 6333 | 40200.40300.40700.52600.55400.58300.147400.2430200 | FINAL COAT PAINT | 8d | 2027-11-18 | 2027-11-25 | 6332 |  | RGA -FINISHING | 8868594 |

| ID | WBS | Task | Duration | Start | Finish | Predecessors | Constraint | Calendar | Unique_Task_ID |
| --- | --- | --- | --- | --- | --- | --- | --- | --- | --- |
| 6334 | 40200.40300.40700.52600.55400.58300.147500 | **5TH FLOOR** | 501.5d | 2026-07-12 | 2027-11-25 |  | start no earlier than 2026-07-12 | RGA -FINISHING | 8865944 |
| 6335 | 40200.40300.40700.52600.55400.58300.147500.2430300 | TOILET DADO TILE FIXING | 7d | 2026-08-07 | 2026-08-13 | 6114 |  | RGA -FINISHING | 8868604 |
| 6336 | 40200.40300.40700.52600.55400.58300.147500.2430400 | TOILET FLOORING WORK | 7d | 2026-08-14 | 2026-08-20 | 6335 |  | RGA -FINISHING | 8868614 |
| 6337 | 40200.40300.40700.52600.55400.58300.147500.2430500 | FIRE FIGHTING | 6d | 2026-07-12 | 2026-07-18 | 6113 |  | RGA -FINISHING | 8868624 |
| 6338 | 40200.40300.40700.52600.55400.58300.147500.2430600 | INTERNAL PAINTING - PUTTY / PRIMER APPLICATION | 6d | 2026-09-02 | 2026-09-07 | 6340 |  | RGA -FINISHING | 8868634 |
| 6339 | 40200.40300.40700.52600.55400.58300.147500.2430700 | FLAT FLOORING | 5d | 2026-08-21 | 2026-08-25 | 6336 |  | RGA -FINISHING | 8868644 |
| 6340 | 40200.40300.40700.52600.55400.58300.147500.2430800 | WINDOW FIXING | 7d | 2026-08-26 | 2026-09-01 | 6339 |  | RGA -FINISHING | 8868654 |
| 6341 | 40200.40300.40700.52600.55400.58300.147500.2430900 | INTERNAL PAINTING - 1ST COAT | 7d | 2026-09-08 | 2026-09-14 | 6338 |  | RGA -FINISHING | 8868664 |
| 6342 | 40200.40300.40700.52600.55400.58300.147500.2431000 | INTERNAL DOOR FIXING | 15d | 2026-09-13 | 2026-09-27 | 6341FS-2d |  | RGA -FINISHING | 8868674 |
| 6343 | 40200.40300.40700.52600.55400.58300.147500.2431100 | WIRING & SWITCH PLATE FIXING | 8d | 2026-09-24 | 2026-10-01 | 6342FS-4d |  | RGA -FINISHING | 8868684 |
| 6344 | 40200.40300.40700.52600.55400.58300.147500.2431200 | TOILET FALSE CEILING | 7d | 2026-10-02 | 2026-10-08 | 6343 |  | RGA -FINISHING | 8868694 |
| 6345 | 40200.40300.40700.52600.55400.58300.147500.2431300 | MAIN DOOR FRAME SHUTTER FIXING | 6d | 2027-11-12 | 2027-11-17 | 6652 |  | RGA -FINISHING | 8868704 |
| 6346 | 40200.40300.40700.52600.55400.58300.147500.2431400 | FINAL COAT PAINT | 8d | 2027-11-18 | 2027-11-25 | 6345 |  | RGA -FINISHING | 8868714 |
| 6347 | 40200.40300.40700.52600.55400.58300.147600 | **6TH FLOOR** | 478d | 2026-08-05 | 2027-11-25 |  | start no earlier than 2026-08-05 | RGA -FINISHING | 8865954 |
| 6348 | 40200.40300.40700.52600.55400.58300.147600.2431500 | TOILET DADO TILE FIXING | 7d | 2026-09-01 | 2026-09-08 | 6121 |  | RGA -FINISHING | 8868724 |
| 6349 | 40200.40300.40700.52600.55400.58300.147600.2431600 | TOILET FLOORING WORK | 7d | 2026-09-01 | 2026-09-08 | 6348FF |  | RGA -FINISHING | 8868734 |
| 6350 | 40200.40300.40700.52600.55400.58300.147600.2431700 | FIRE FIGHTING | 6d | 2026-08-05 | 2026-08-10 | 6120 |  | RGA -FINISHING | 8868744 |
| 6351 | 40200.40300.40700.52600.55400.58300.147600.2431800 | INTERNAL PAINTING - PUTTY / PRIMER APPLICATION | 6d | 2026-09-25 | 2026-10-01 | 6353 |  | RGA -FINISHING | 8868754 |
| 6352 | 40200.40300.40700.52600.55400.58300.147600.2431900 | FLAT FLOORING | 5d | 2026-09-08 | 2026-09-13 | 6349 |  | RGA -FINISHING | 8868764 |
| 6353 | 40200.40300.40700.52600.55400.58300.147600.2432000 | WINDOW FIXING | 12d | 2026-09-13 | 2026-09-25 | 6352 |  | RGA -FINISHING | 8868774 |
| 6354 | 40200.40300.40700.52600.55400.58300.147600.2432100 | INTERNAL PAINTING - 1ST COAT | 12d | 2026-10-01 | 2026-10-13 | 6351 |  | RGA -FINISHING | 8868784 |
| 6355 | 40200.40300.40700.52600.55400.58300.147600.2432200 | INTERNAL DOOR FIXING | 15d | 2026-10-11 | 2026-10-26 | 6354FS-2d |  | RGA -FINISHING | 8868794 |
| 6356 | 40200.40300.40700.52600.55400.58300.147600.2432300 | WIRING & SWITCH PLATE FIXING | 8d | 2026-10-22 | 2026-10-30 | 6355FS-4d |  | RGA -FINISHING | 8868804 |
| 6357 | 40200.40300.40700.52600.55400.58300.147600.2432400 | TOILET FALSE CEILING | 7d | 2026-10-30 | 2026-11-06 | 6356 |  | RGA -FINISHING | 8868814 |
| 6358 | 40200.40300.40700.52600.55400.58300.147600.2432500 | MAIN DOOR FRAME SHUTTER FIXING | 6d | 2027-11-12 | 2027-11-17 | 6660 |  | RGA -FINISHING | 8868824 |
| 6359 | 40200.40300.40700.52600.55400.58300.147600.2432600 | FINAL COAT PAINT | 8d | 2027-11-18 | 2027-11-25 | 6358 |  | RGA -FINISHING | 8868834 |

| ID | WBS | Task | Duration | Start | Finish | Predecessors | Constraint | Calendar | Unique_Task_ID |
| --- | --- | --- | --- | --- | --- | --- | --- | --- | --- |
| 6360 | 40200.40300.40700.52600.55400.58300.147700 | **7TH FLOOR** | 548d | 2026-05-27 | 2027-11-25 |  | start no earlier than 2026-05-27 | RGA -FINISHING | 8865964 |
| 6361 | 40200.40300.40700.52600.55400.58300.147700.2432700 | TOILET DADO TILE FIXING | 7d | 2026-05-27 | 2026-06-02 | 6129 |  | RGA -FINISHING | 8868844 |
| 6362 | 40200.40300.40700.52600.55400.58300.147700.2432800 | TOILET FLOORING WORK | 7d | 2026-06-03 | 2026-06-09 | 6361 |  | RGA -FINISHING | 8868854 |
| 6363 | 40200.40300.40700.52600.55400.58300.147700.2432900 | FIRE FIGHTING | 6d | 2026-09-25 | 2026-09-30 | 6128 |  | RGA -FINISHING | 8868864 |
| 6364 | 40200.40300.40700.52600.55400.58300.147700.2433000 | INTERNAL PAINTING - PUTTY / PRIMER APPLICATION | 6d | 2026-06-27 | 2026-07-02 | 6366 |  | RGA -FINISHING | 8868874 |
| 6365 | 40200.40300.40700.52600.55400.58300.147700.2433100 | FLAT FLOORING | 5d | 2026-06-10 | 2026-06-14 | 6362 |  | RGA -FINISHING | 8868884 |
| 6366 | 40200.40300.40700.52600.55400.58300.147700.2433200 | WINDOW FIXING | 12d | 2026-06-15 | 2026-06-26 | 6365 |  | RGA -FINISHING | 8868894 |
| 6367 | 40200.40300.40700.52600.55400.58300.147700.2433300 | INTERNAL PAINTING - 1ST COAT | 5d | 2026-07-03 | 2026-07-07 | 6364 |  | RGA -FINISHING | 8868904 |
| 6368 | 40200.40300.40700.52600.55400.58300.147700.2433400 | INTERNAL DOOR FIXING | 15d | 2026-07-06 | 2026-07-20 | 6367FS-2d |  | RGA -FINISHING | 8868914 |
| 6369 | 40200.40300.40700.52600.55400.58300.147700.2433500 | WIRING & SWITCH PLATE FIXING | 8d | 2026-07-17 | 2026-07-24 | 6368FS-4d |  | RGA -FINISHING | 8868924 |
| 6370 | 40200.40300.40700.52600.55400.58300.147700.2433600 | TOILET FALSE CEILING | 7d | 2026-07-25 | 2026-07-31 | 6369 |  | RGA -FINISHING | 8868934 |
| 6371 | 40200.40300.40700.52600.55400.58300.147700.2433700 | MAIN DOOR FRAME SHUTTER FIXING | 6d | 2027-11-12 | 2027-11-17 | 6668 |  | RGA -FINISHING | 8868944 |
| 6372 | 40200.40300.40700.52600.55400.58300.147700.2433800 | FINAL COAT PAINT | 8d | 2027-11-18 | 2027-11-25 | 6371 |  | RGA -FINISHING | 8868954 |
| 6373 | 40200.40300.40700.52600.55400.58300.147800 | **8TH FLOOR** | 559d | 2026-09-09 | 2028-03-20 |  | start no earlier than 2026-09-09 | RGA -FINISHING | 8865974 |
| 6374 | 40200.40300.40700.52600.55400.58300.147800.2433900 | TOILET DADO TILE FIXING | 7d | 2028-01-10 | 2028-01-16 | 6135 |  | RGA -FINISHING | 8868964 |
| 6375 | 40200.40300.40700.52600.55400.58300.147800.2434000 | TOILET FLOORING WORK | 7d | 2028-01-17 | 2028-01-23 | 6374 |  | RGA -FINISHING | 8868974 |
| 6376 | 40200.40300.40700.52600.55400.58300.147800.2434100 | FIRE FIGHTING | 6d | 2026-09-09 | 2026-09-14 | 6134 |  | RGA -FINISHING | 8868984 |
| 6377 | 40200.40300.40700.52600.55400.58300.147800.2434200 | INTERNAL PAINTING - PUTTY / PRIMER APPLICATION | 6d | 2028-02-10 | 2028-02-15 | 6379 |  | RGA -FINISHING | 8868994 |
| 6378 | 40200.40300.40700.52600.55400.58300.147800.2434300 | FLAT FLOORING | 5d | 2028-01-24 | 2028-01-28 | 6375 |  | RGA -FINISHING | 8869004 |
| 6379 | 40200.40300.40700.52600.55400.58300.147800.2434400 | WINDOW FIXING | 12d | 2028-01-29 | 2028-02-09 | 6378 |  | RGA -FINISHING | 8869014 |
| 6380 | 40200.40300.40700.52600.55400.58300.147800.2434500 | INTERNAL PAINTING - 1ST COAT | 10d | 2028-02-16 | 2028-02-25 | 6377 |  | RGA -FINISHING | 8869024 |
| 6381 | 40200.40300.40700.52600.55400.58300.147800.2434600 | INTERNAL DOOR FIXING | 15d | 2028-02-24 | 2028-03-09 | 6380FS-2d |  | RGA -FINISHING | 8869034 |
| 6382 | 40200.40300.40700.52600.55400.58300.147800.2434700 | WIRING & SWITCH PLATE FIXING | 8d | 2028-03-06 | 2028-03-13 | 6381FS-4d |  | RGA -FINISHING | 8869044 |
| 6383 | 40200.40300.40700.52600.55400.58300.147800.2434800 | TOILET FALSE CEILING | 7d | 2028-03-14 | 2028-03-20 | 6382 |  | RGA -FINISHING | 8869054 |
| 6384 | 40200.40300.40700.52600.55400.58300.147800.2434900 | MAIN DOOR FRAME SHUTTER FIXING | 6d | 2027-11-22 | 2027-11-27 | 6676 |  | RGA -FINISHING | 8869064 |
| 6385 | 40200.40300.40700.52600.55400.58300.147800.2435000 | FINAL COAT PAINT | 8d | 2027-11-28 | 2027-12-05 | 6384 |  | RGA -FINISHING | 8869074 |

| ID | WBS | Task | Duration | Start | Finish | Predecessors | Constraint | Calendar | Unique_Task_ID |
| --- | --- | --- | --- | --- | --- | --- | --- | --- | --- |
| 6386 | 40200.40300.40700.52600.55400.58300.147900 | **9TH FLOOR** | 440d | 2026-09-26 | 2027-12-09 |  | start no earlier than 2026-09-26 | RGA -FINISHING | 8865984 |
| 6387 | 40200.40300.40700.52600.55400.58300.147900.2435100 | TOILET DADO TILE FIXING | 7d | 2026-10-09 | 2026-10-15 | 6142 |  | RGA -FINISHING | 8869084 |
| 6388 | 40200.40300.40700.52600.55400.58300.147900.2435200 | TOILET FLOORING WORK | 7d | 2026-10-16 | 2026-10-22 | 6387 |  | RGA -FINISHING | 8869094 |
| 6389 | 40200.40300.40700.52600.55400.58300.147900.2435300 | FIRE FIGHTING | 6d | 2026-09-26 | 2026-10-01 | 6141 |  | RGA -FINISHING | 8869104 |
| 6390 | 40200.40300.40700.52600.55400.58300.147900.2435400 | INTERNAL PAINTING - PUTTY / PRIMER APPLICATION | 6d | 2026-11-09 | 2026-11-14 | 6392 |  | RGA -FINISHING | 8869114 |
| 6391 | 40200.40300.40700.52600.55400.58300.147900.2435500 | FLAT FLOORING | 5d | 2026-10-23 | 2026-10-27 | 6388 |  | RGA -FINISHING | 8869124 |
| 6392 | 40200.40300.40700.52600.55400.58300.147900.2435600 | WINDOW FIXING | 12d | 2026-10-28 | 2026-11-08 | 6391 |  | RGA -FINISHING | 8869134 |
| 6393 | 40200.40300.40700.52600.55400.58300.147900.2435700 | INTERNAL PAINTING - 1ST COAT | 2d | 2026-11-15 | 2026-11-16 | 6390 |  | RGA -FINISHING | 8869144 |
| 6394 | 40200.40300.40700.52600.55400.58300.147900.2435800 | INTERNAL DOOR FIXING | 15d | 2026-11-15 | 2026-11-29 | 6393FS-2d |  | RGA -FINISHING | 8869154 |
| 6395 | 40200.40300.40700.52600.55400.58300.147900.2435900 | WIRING & SWITCH PLATE FIXING | 8d | 2026-11-26 | 2026-12-03 | 6394FS-4d |  | RGA -FINISHING | 8869164 |
| 6396 | 40200.40300.40700.52600.55400.58300.147900.2436000 | TOILET FALSE CEILING | 7d | 2026-12-04 | 2026-12-10 | 6395 |  | RGA -FINISHING | 8869174 |
| 6397 | 40200.40300.40700.52600.55400.58300.147900.2436100 | MAIN DOOR FRAME SHUTTER FIXING | 6d | 2027-11-22 | 2027-11-27 | 6684 |  | RGA -FINISHING | 8869184 |
| 6398 | 40200.40300.40700.52600.55400.58300.147900.2436200 | FINAL COAT PAINT | 8d | 2027-12-02 | 2027-12-09 | 6397FS+4d |  | RGA -FINISHING | 8869194 |
| 6399 | 40200.40300.40700.52600.55400.58300.148000 | **10TH FLOOR** | 418d | 2026-10-14 | 2027-12-05 |  | start no earlier than 2026-10-14 | RGA -FINISHING | 8865994 |
| 6400 | 40200.40300.40700.52600.55400.58300.148000.2436300 | TOILET DADO TILE FIXING | 7d | 2026-11-16 | 2026-11-22 | 6149 |  | RGA -FINISHING | 8869204 |
| 6401 | 40200.40300.40700.52600.55400.58300.148000.2436400 | TOILET FLOORING WORK | 7d | 2026-11-23 | 2026-11-29 | 6400 |  | RGA -FINISHING | 8869214 |
| 6402 | 40200.40300.40700.52600.55400.58300.148000.2436500 | FIRE FIGHTING | 6d | 2026-10-14 | 2026-10-19 | 6148 |  | RGA -FINISHING | 8869224 |
| 6403 | 40200.40300.40700.52600.55400.58300.148000.2436600 | INTERNAL PAINTING - PUTTY / PRIMER APPLICATION | 6d | 2026-12-17 | 2026-12-22 | 6405 |  | RGA -FINISHING | 8869234 |
| 6404 | 40200.40300.40700.52600.55400.58300.148000.2436700 | FLAT FLOORING | 5d | 2026-11-30 | 2026-12-04 | 6401 |  | RGA -FINISHING | 8869244 |
| 6405 | 40200.40300.40700.52600.55400.58300.148000.2436800 | WINDOW FIXING | 12d | 2026-12-05 | 2026-12-16 | 6404 |  | RGA -FINISHING | 8869254 |
| 6406 | 40200.40300.40700.52600.55400.58300.148000.2436900 | INTERNAL PAINTING - 1ST COAT | 12d | 2026-12-23 | 2027-01-03 | 6403 |  | RGA -FINISHING | 8869264 |
| 6407 | 40200.40300.40700.52600.55400.58300.148000.2437000 | INTERNAL DOOR FIXING | 15d | 2027-01-02 | 2027-01-16 | 6406FS-2d |  | RGA -FINISHING | 8869274 |
| 6408 | 40200.40300.40700.52600.55400.58300.148000.2437100 | WIRING & SWITCH PLATE FIXING | 8d | 2027-01-13 | 2027-01-20 | 6407FS-4d |  | RGA -FINISHING | 8869284 |
| 6409 | 40200.40300.40700.52600.55400.58300.148000.2437200 | TOILET FALSE CEILING | 7d | 2027-01-21 | 2027-01-27 | 6408 |  | RGA -FINISHING | 8869294 |
| 6410 | 40200.40300.40700.52600.55400.58300.148000.2437300 | MAIN DOOR FRAME SHUTTER FIXING | 6d | 2027-11-22 | 2027-11-27 | 6692 |  | RGA -FINISHING | 8869304 |
| 6411 | 40200.40300.40700.52600.55400.58300.148000.2437400 | FINAL COAT PAINT | 8d | 2027-11-28 | 2027-12-05 | 6410 |  | RGA -FINISHING | 8869314 |

| ID | WBS | Task | Duration | Start | Finish | Predecessors | Constraint | Calendar | Unique_Task_ID |
| --- | --- | --- | --- | --- | --- | --- | --- | --- | --- |
| 6412 | 40200.40300.40700.52600.55400.58300.148100 | **11TH FLOOR** | 401d | 2026-10-31 | 2027-12-05 |  | start no earlier than 2026-10-31 | RGA -FINISHING | 8866004 |
| 6413 | 40200.40300.40700.52600.55400.58300.148100.2437500 | TOILET DADO TILE FIXING | 7d | 2026-12-04 | 2026-12-10 | 6156 |  | RGA -FINISHING | 8869324 |
| 6414 | 40200.40300.40700.52600.55400.58300.148100.2437600 | TOILET FLOORING WORK | 7d | 2026-12-11 | 2026-12-17 | 6413 |  | RGA -FINISHING | 8869334 |
| 6415 | 40200.40300.40700.52600.55400.58300.148100.2437700 | FIRE FIGHTING | 6d | 2026-10-31 | 2026-11-05 | 6155 |  | RGA -FINISHING | 8869344 |
| 6416 | 40200.40300.40700.52600.55400.58300.148100.2437800 | INTERNAL PAINTING - PUTTY / PRIMER APPLICATION | 6d | 2027-01-04 | 2027-01-09 | 6418 |  | RGA -FINISHING | 8869354 |
| 6417 | 40200.40300.40700.52600.55400.58300.148100.2437900 | FLAT FLOORING | 5d | 2026-12-18 | 2026-12-22 | 6414 |  | RGA -FINISHING | 8869364 |
| 6418 | 40200.40300.40700.52600.55400.58300.148100.2438000 | WINDOW FIXING | 12d | 2026-12-23 | 2027-01-03 | 6417 |  | RGA -FINISHING | 8869374 |
| 6419 | 40200.40300.40700.52600.55400.58300.148100.2438100 | INTERNAL PAINTING - 1ST COAT | 12d | 2027-01-10 | 2027-01-21 | 6416 |  | RGA -FINISHING | 8869384 |
| 6420 | 40200.40300.40700.52600.55400.58300.148100.2438200 | INTERNAL DOOR FIXING | 15d | 2027-01-20 | 2027-02-03 | 6419FS-2d |  | RGA -FINISHING | 8869394 |
| 6421 | 40200.40300.40700.52600.55400.58300.148100.2438300 | WIRING & SWITCH PLATE FIXING | 8d | 2027-01-31 | 2027-02-07 | 6420FS-4d |  | RGA -FINISHING | 8869404 |
| 6422 | 40200.40300.40700.52600.55400.58300.148100.2438400 | TOILET FALSE CEILING | 7d | 2027-02-08 | 2027-02-14 | 6421 |  | RGA -FINISHING | 8869414 |
| 6423 | 40200.40300.40700.52600.55400.58300.148100.2438500 | MAIN DOOR FRAME SHUTTER FIXING | 6d | 2027-11-22 | 2027-11-27 | 6700 |  | RGA -FINISHING | 8869424 |
| 6424 | 40200.40300.40700.52600.55400.58300.148100.2438600 | FINAL COAT PAINT | 8d | 2027-11-28 | 2027-12-05 | 6423 |  | RGA -FINISHING | 8869434 |
| 6425 | 40200.40300.40700.52600.55400.58300.148200 | **12TH FLOOR** | 394d | 2026-11-17 | 2027-12-15 |  | start no earlier than 2026-11-17 | RGA -FINISHING | 8866014 |
| 6426 | 40200.40300.40700.52600.55400.58300.148200.2438700 | TOILET DADO TILE FIXING | 7d | 2026-11-28 | 2026-12-04 | 6163 |  | RGA -FINISHING | 8869444 |
| 6427 | 40200.40300.40700.52600.55400.58300.148200.2438800 | TOILET FLOORING WORK | 7d | 2026-11-28 | 2026-12-04 | 6426FF |  | RGA -FINISHING | 8869454 |
| 6428 | 40200.40300.40700.52600.55400.58300.148200.2438900 | FIRE FIGHTING | 6d | 2026-11-17 | 2026-11-22 | 6162 |  | RGA -FINISHING | 8869464 |
| 6429 | 40200.40300.40700.52600.55400.58300.148200.2439000 | INTERNAL PAINTING - PUTTY / PRIMER APPLICATION | 6d | 2026-12-22 | 2026-12-27 | 6431 |  | RGA -FINISHING | 8869474 |
| 6430 | 40200.40300.40700.52600.55400.58300.148200.2439100 | FLAT FLOORING | 5d | 2026-12-05 | 2026-12-09 | 6427 |  | RGA -FINISHING | 8869484 |
| 6431 | 40200.40300.40700.52600.55400.58300.148200.2439200 | WINDOW FIXING | 12d | 2026-12-10 | 2026-12-21 | 6430 |  | RGA -FINISHING | 8869494 |
| 6432 | 40200.40300.40700.52600.55400.58300.148200.2439300 | INTERNAL PAINTING - 1ST COAT | 12d | 2026-12-28 | 2027-01-08 | 6429 |  | RGA -FINISHING | 8869504 |
| 6433 | 40200.40300.40700.52600.55400.58300.148200.2439400 | INTERNAL DOOR FIXING | 15d | 2027-01-07 | 2027-01-21 | 6432FS-2d |  | RGA -FINISHING | 8869514 |
| 6434 | 40200.40300.40700.52600.55400.58300.148200.2439500 | WIRING & SWITCH PLATE FIXING | 8d | 2027-01-18 | 2027-01-25 | 6433FS-4d |  | RGA -FINISHING | 8869524 |
| 6435 | 40200.40300.40700.52600.55400.58300.148200.2439600 | TOILET FALSE CEILING | 7d | 2027-01-26 | 2027-02-01 | 6434 |  | RGA -FINISHING | 8869534 |
| 6436 | 40200.40300.40700.52600.55400.58300.148200.2439700 | MAIN DOOR FRAME SHUTTER FIXING | 6d | 2027-12-02 | 2027-12-07 | 6708 |  | RGA -FINISHING | 8869544 |
| 6437 | 40200.40300.40700.52600.55400.58300.148200.2439800 | FINAL COAT PAINT | 8d | 2027-12-08 | 2027-12-15 | 6436 |  | RGA -FINISHING | 8869554 |

| ID | WBS | Task | Duration | Start | Finish | Predecessors | Constraint | Calendar | Unique_Task_ID |
| --- | --- | --- | --- | --- | --- | --- | --- | --- | --- |
| 6438 | 40200.40300.40700.52600.55400.58300.148300 | **13TH FLOOR** | 368.5d | 2026-12-12 | 2027-12-15 |  | start no earlier than 2026-12-12 | RGA -FINISHING | 8866024 |
| 6439 | 40200.40300.40700.52600.55400.58300.148300.2439900 | TOILET DADO TILE FIXING | 10d | 2027-01-06 | 2027-01-15 | 6170 |  | RGA -FINISHING | 8869564 |
| 6440 | 40200.40300.40700.52600.55400.58300.148300.2440000 | TOILET FLOORING WORK | 7d | 2027-01-16 | 2027-01-22 | 6439 |  | RGA -FINISHING | 8869574 |
| 6441 | 40200.40300.40700.52600.55400.58300.148300.2440100 | FIRE FIGHTING | 8d | 2026-12-12 | 2026-12-20 | 6169 |  | RGA -FINISHING | 8869584 |
| 6442 | 40200.40300.40700.52600.55400.58300.148300.2440200 | INTERNAL PAINTING - PUTTY / PRIMER APPLICATION | 5d | 2027-02-04 | 2027-02-08 | 6444 |  | RGA -FINISHING | 8869594 |
| 6443 | 40200.40300.40700.52600.55400.58300.148300.2440300 | FLAT FLOORING | 7d | 2027-01-23 | 2027-01-29 | 6440 |  | RGA -FINISHING | 8869604 |
| 6444 | 40200.40300.40700.52600.55400.58300.148300.2440400 | WINDOW FIXING | 5d | 2027-01-30 | 2027-02-03 | 6443 |  | RGA -FINISHING | 8869614 |
| 6445 | 40200.40300.40700.52600.55400.58300.148300.2440500 | INTERNAL PAINTING - 1ST COAT | 4d | 2027-02-09 | 2027-02-12 | 6442 |  | RGA -FINISHING | 8869624 |
| 6446 | 40200.40300.40700.52600.55400.58300.148300.2440600 | INTERNAL DOOR FIXING | 15d | 2027-02-11 | 2027-02-25 | 6445FS-2d |  | RGA -FINISHING | 8869634 |
| 6447 | 40200.40300.40700.52600.55400.58300.148300.2440700 | WIRING & SWITCH PLATE FIXING | 8d | 2027-02-22 | 2027-03-01 | 6446FS-4d |  | RGA -FINISHING | 8869644 |
| 6448 | 40200.40300.40700.52600.55400.58300.148300.2440800 | TOILET FALSE CEILING | 7d | 2027-03-02 | 2027-03-08 | 6447 |  | RGA -FINISHING | 8869654 |
| 6449 | 40200.40300.40700.52600.55400.58300.148300.2440900 | MAIN DOOR FRAME SHUTTER FIXING | 6d | 2027-12-02 | 2027-12-07 | 6716 |  | RGA -FINISHING | 8869664 |
| 6450 | 40200.40300.40700.52600.55400.58300.148300.2441000 | FINAL COAT PAINT | 8d | 2027-12-08 | 2027-12-15 | 6449 |  | RGA -FINISHING | 8869674 |
| 6451 | 40200.40300.40700.52600.55400.58300.148400 | **14TH FLOOR** | 345d | 2027-01-05 | 2027-12-15 |  | start no earlier than 2027-01-05 | RGA -FINISHING | 8866034 |
| 6452 | 40200.40300.40700.52600.55400.58300.148400.2441100 | TOILET DADO TILE FIXING | 10d | 2027-02-02 | 2027-02-12 | 6177 |  | RGA -FINISHING | 8869684 |
| 6453 | 40200.40300.40700.52600.55400.58300.148400.2441200 | TOILET FLOORING WORK | 7d | 2027-02-12 | 2027-02-19 | 6452 |  | RGA -FINISHING | 8869694 |
| 6454 | 40200.40300.40700.52600.55400.58300.148400.2441300 | FIRE FIGHTING | 8d | 2027-01-05 | 2027-01-12 | 6176 |  | RGA -FINISHING | 8869704 |
| 6455 | 40200.40300.40700.52600.55400.58300.148400.2441400 | INTERNAL PAINTING - PUTTY / PRIMER APPLICATION | 5d | 2027-03-03 | 2027-03-08 | 6457 |  | RGA -FINISHING | 8869714 |
| 6456 | 40200.40300.40700.52600.55400.58300.148400.2441500 | FLAT FLOORING | 7d | 2027-02-19 | 2027-02-26 | 6453 |  | RGA -FINISHING | 8869724 |
| 6457 | 40200.40300.40700.52600.55400.58300.148400.2441600 | WINDOW FIXING | 5d | 2027-02-26 | 2027-03-03 | 6456 |  | RGA -FINISHING | 8869734 |
| 6458 | 40200.40300.40700.52600.55400.58300.148400.2441700 | INTERNAL PAINTING - 1ST COAT | 4d | 2027-03-08 | 2027-03-12 | 6455 |  | RGA -FINISHING | 8869744 |
| 6459 | 40200.40300.40700.52600.55400.58300.148400.2441800 | INTERNAL DOOR FIXING | 15d | 2027-03-10 | 2027-03-25 | 6458FS-2d |  | RGA -FINISHING | 8869754 |
| 6460 | 40200.40300.40700.52600.55400.58300.148400.2441900 | WIRING & SWITCH PLATE FIXING | 8d | 2027-03-21 | 2027-03-29 | 6459FS-4d |  | RGA -FINISHING | 8869764 |
| 6461 | 40200.40300.40700.52600.55400.58300.148400.2442000 | TOILET FALSE CEILING | 7d | 2027-03-29 | 2027-04-05 | 6460 |  | RGA -FINISHING | 8869774 |
| 6462 | 40200.40300.40700.52600.55400.58300.148400.2442100 | MAIN DOOR FRAME SHUTTER FIXING | 6d | 2027-12-02 | 2027-12-07 | 6724 |  | RGA -FINISHING | 8869784 |
| 6463 | 40200.40300.40700.52600.55400.58300.148400.2442200 | FINAL COAT PAINT | 8d | 2027-12-08 | 2027-12-15 | 6462 |  | RGA -FINISHING | 8869794 |

| ID | WBS | Task | Duration | Start | Finish | Predecessors | Constraint | Calendar | Unique_Task_ID |
| --- | --- | --- | --- | --- | --- | --- | --- | --- | --- |
| 6464 | 40200.40300.40700.52600.55400.58300.148500 | **15TH FLOOR** | 328d | 2027-01-22 | 2027-12-15 |  | start no earlier than 2027-01-22 | RGA -FINISHING | 8866044 |
| 6465 | 40200.40300.40700.52600.55400.58300.148500.2442300 | TOILET DADO TILE FIXING | 10d | 2027-02-26 | 2027-03-07 | 6184 |  | RGA -FINISHING | 8869804 |
| 6466 | 40200.40300.40700.52600.55400.58300.148500.2442400 | TOILET FLOORING WORK | 7d | 2027-03-08 | 2027-03-14 | 6465 |  | RGA -FINISHING | 8869814 |
| 6467 | 40200.40300.40700.52600.55400.58300.148500.2442500 | FIRE FIGHTING | 8d | 2027-01-22 | 2027-01-29 | 6183 |  | RGA -FINISHING | 8869824 |
| 6468 | 40200.40300.40700.52600.55400.58300.148500.2442600 | INTERNAL PAINTING - PUTTY / PRIMER APPLICATION | 5d | 2027-03-27 | 2027-03-31 | 6470 |  | RGA -FINISHING | 8869834 |
| 6469 | 40200.40300.40700.52600.55400.58300.148500.2442700 | FLAT FLOORING | 7d | 2027-03-15 | 2027-03-21 | 6466 |  | RGA -FINISHING | 8869844 |
| 6470 | 40200.40300.40700.52600.55400.58300.148500.2442800 | WINDOW FIXING | 5d | 2027-03-22 | 2027-03-26 | 6469 |  | RGA -FINISHING | 8869854 |
| 6471 | 40200.40300.40700.52600.55400.58300.148500.2442900 | INTERNAL PAINTING - 1ST COAT | 4d | 2027-04-01 | 2027-04-04 | 6468 |  | RGA -FINISHING | 8869864 |
| 6472 | 40200.40300.40700.52600.55400.58300.148500.2443000 | INTERNAL DOOR FIXING | 15d | 2027-04-03 | 2027-04-17 | 6471FS-2d |  | RGA -FINISHING | 8869874 |
| 6473 | 40200.40300.40700.52600.55400.58300.148500.2443100 | WIRING & SWITCH PLATE FIXING | 8d | 2027-04-14 | 2027-04-21 | 6472FS-4d |  | RGA -FINISHING | 8869884 |
| 6474 | 40200.40300.40700.52600.55400.58300.148500.2443200 | TOILET FALSE CEILING | 7d | 2027-04-22 | 2027-04-28 | 6473 |  | RGA -FINISHING | 8869894 |
| 6475 | 40200.40300.40700.52600.55400.58300.148500.2443300 | MAIN DOOR FRAME SHUTTER FIXING | 6d | 2027-12-02 | 2027-12-07 | 6732 |  | RGA -FINISHING | 8869904 |
| 6476 | 40200.40300.40700.52600.55400.58300.148500.2443400 | FINAL COAT PAINT | 8d | 2027-12-08 | 2027-12-15 | 6475 |  | RGA -FINISHING | 8869914 |
| 6477 | 40200.40300.40700.52600.55400.58300.148600 | **16TH FLOOR** | 321d | 2027-02-08 | 2027-12-25 |  | start no earlier than 2027-02-08 | RGA -FINISHING | 8866054 |
| 6478 | 40200.40300.40700.52600.55400.58300.148600.2443500 | TOILET DADO TILE FIXING | 10d | 2027-03-15 | 2027-03-24 | 6191 |  | RGA -FINISHING | 8869924 |
| 6479 | 40200.40300.40700.52600.55400.58300.148600.2443600 | TOILET FLOORING WORK | 7d | 2027-03-25 | 2027-03-31 | 6478 |  | RGA -FINISHING | 8869934 |
| 6480 | 40200.40300.40700.52600.55400.58300.148600.2443700 | FIRE FIGHTING | 8d | 2027-02-08 | 2027-02-15 | 6190 |  | RGA -FINISHING | 8869944 |
| 6481 | 40200.40300.40700.52600.55400.58300.148600.2443800 | INTERNAL PAINTING - PUTTY / PRIMER APPLICATION | 5d | 2027-04-13 | 2027-04-17 | 6483 |  | RGA -FINISHING | 8869954 |
| 6482 | 40200.40300.40700.52600.55400.58300.148600.2443900 | FLAT FLOORING | 7d | 2027-04-01 | 2027-04-07 | 6479 |  | RGA -FINISHING | 8869964 |
| 6483 | 40200.40300.40700.52600.55400.58300.148600.2444000 | WINDOW FIXING | 5d | 2027-04-08 | 2027-04-12 | 6482 |  | RGA -FINISHING | 8869974 |
| 6484 | 40200.40300.40700.52600.55400.58300.148600.2444100 | INTERNAL PAINTING - 1ST COAT | 4d | 2027-04-18 | 2027-04-21 | 6481 |  | RGA -FINISHING | 8869984 |
| 6485 | 40200.40300.40700.52600.55400.58300.148600.2444200 | INTERNAL DOOR FIXING | 15d | 2027-04-20 | 2027-05-04 | 6484FS-2d |  | RGA -FINISHING | 8869994 |
| 6486 | 40200.40300.40700.52600.55400.58300.148600.2444300 | WIRING & SWITCH PLATE FIXING | 8d | 2027-05-01 | 2027-05-08 | 6485FS-4d |  | RGA -FINISHING | 8870004 |
| 6487 | 40200.40300.40700.52600.55400.58300.148600.2444400 | TOILET FALSE CEILING | 7d | 2027-05-09 | 2027-05-15 | 6486 |  | RGA -FINISHING | 8870014 |
| 6488 | 40200.40300.40700.52600.55400.58300.148600.2444500 | MAIN DOOR FRAME SHUTTER FIXING | 6d | 2027-12-12 | 2027-12-17 | 6740 |  | RGA -FINISHING | 8870024 |
| 6489 | 40200.40300.40700.52600.55400.58300.148600.2444600 | FINAL COAT PAINT | 8d | 2027-12-18 | 2027-12-25 | 6488 |  | RGA -FINISHING | 8870034 |

| ID | WBS | Task | Duration | Start | Finish | Predecessors | Constraint | Calendar | Unique_Task_ID |
| --- | --- | --- | --- | --- | --- | --- | --- | --- | --- |
| 6490 | 40200.40300.40700.52600.55400.58300.148700 | **17TH FLOOR** | 304d | 2027-02-25 | 2027-12-25 |  | start no earlier than 2027-02-25 | RGA -FINISHING | 8866064 |
| 6491 | 40200.40300.40700.52600.55400.58300.148700.2444700 | TOILET DADO TILE FIXING | 10d | 2027-04-01 | 2027-04-10 | 6198 |  | RGA -FINISHING | 8870044 |
| 6492 | 40200.40300.40700.52600.55400.58300.148700.2444800 | TOILET FLOORING WORK | 7d | 2027-04-11 | 2027-04-17 | 6491 |  | RGA -FINISHING | 8870054 |
| 6493 | 40200.40300.40700.52600.55400.58300.148700.2444900 | FIRE FIGHTING | 8d | 2027-02-25 | 2027-03-04 | 6197 |  | RGA -FINISHING | 8870064 |
| 6494 | 40200.40300.40700.52600.55400.58300.148700.2445000 | INTERNAL PAINTING - PUTTY / PRIMER APPLICATION | 5d | 2027-04-30 | 2027-05-04 | 6496 |  | RGA -FINISHING | 8870074 |
| 6495 | 40200.40300.40700.52600.55400.58300.148700.2445100 | FLAT FLOORING | 7d | 2027-04-18 | 2027-04-24 | 6492 |  | RGA -FINISHING | 8870084 |
| 6496 | 40200.40300.40700.52600.55400.58300.148700.2445200 | WINDOW FIXING | 5d | 2027-04-25 | 2027-04-29 | 6495 |  | RGA -FINISHING | 8870094 |
| 6497 | 40200.40300.40700.52600.55400.58300.148700.2445300 | INTERNAL PAINTING - 1ST COAT | 4d | 2027-05-05 | 2027-05-08 | 6494 |  | RGA -FINISHING | 8870104 |
| 6498 | 40200.40300.40700.52600.55400.58300.148700.2445400 | INTERNAL DOOR FIXING | 15d | 2027-05-07 | 2027-05-21 | 6497FS-2d |  | RGA -FINISHING | 8870114 |
| 6499 | 40200.40300.40700.52600.55400.58300.148700.2445500 | WIRING & SWITCH PLATE FIXING | 8d | 2027-05-18 | 2027-05-25 | 6498FS-4d |  | RGA -FINISHING | 8870124 |
| 6500 | 40200.40300.40700.52600.55400.58300.148700.2445600 | TOILET FALSE CEILING | 7d | 2027-05-26 | 2027-06-01 | 6499 |  | RGA -FINISHING | 8870134 |
| 6501 | 40200.40300.40700.52600.55400.58300.148700.2445700 | MAIN DOOR FRAME SHUTTER FIXING | 6d | 2027-12-12 | 2027-12-17 | 6748 |  | RGA -FINISHING | 8870144 |
| 6502 | 40200.40300.40700.52600.55400.58300.148700.2445800 | FINAL COAT PAINT | 8d | 2027-12-18 | 2027-12-25 | 6501 |  | RGA -FINISHING | 8870154 |
| 6503 | 40200.40300.40700.52600.55400.58300.148800 | **18TH FLOOR** | 287d | 2027-03-14 | 2027-12-25 |  | start no earlier than 2027-03-14 | RGA -FINISHING | 8866074 |
| 6504 | 40200.40300.40700.52600.55400.58300.148800.2445900 | TOILET DADO TILE FIXING | 10d | 2027-04-18 | 2027-04-27 | 6205 |  | RGA -FINISHING | 8870164 |
| 6505 | 40200.40300.40700.52600.55400.58300.148800.2446000 | TOILET FLOORING WORK | 7d | 2027-04-28 | 2027-05-04 | 6504 |  | RGA -FINISHING | 8870174 |
| 6506 | 40200.40300.40700.52600.55400.58300.148800.2446100 | FIRE FIGHTING | 8d | 2027-03-14 | 2027-03-21 | 6204 |  | RGA -FINISHING | 8870184 |
| 6507 | 40200.40300.40700.52600.55400.58300.148800.2446200 | INTERNAL PAINTING - PUTTY / PRIMER APPLICATION | 5d | 2027-05-17 | 2027-05-21 | 6509 |  | RGA -FINISHING | 8870194 |
| 6508 | 40200.40300.40700.52600.55400.58300.148800.2446300 | FLAT FLOORING | 7d | 2027-05-05 | 2027-05-11 | 6505 |  | RGA -FINISHING | 8870204 |
| 6509 | 40200.40300.40700.52600.55400.58300.148800.2446400 | WINDOW FIXING | 5d | 2027-05-12 | 2027-05-16 | 6508 |  | RGA -FINISHING | 8870214 |
| 6510 | 40200.40300.40700.52600.55400.58300.148800.2446500 | INTERNAL PAINTING - 1ST COAT | 4d | 2027-05-22 | 2027-05-25 | 6507 |  | RGA -FINISHING | 8870224 |
| 6511 | 40200.40300.40700.52600.55400.58300.148800.2446600 | INTERNAL DOOR FIXING | 15d | 2027-05-24 | 2027-06-07 | 6510FS-2d |  | RGA -FINISHING | 8870234 |
| 6512 | 40200.40300.40700.52600.55400.58300.148800.2446700 | WIRING & SWITCH PLATE FIXING | 8d | 2027-06-04 | 2027-06-11 | 6511FS-4d |  | RGA -FINISHING | 8870244 |
| 6513 | 40200.40300.40700.52600.55400.58300.148800.2446800 | TOILET FALSE CEILING | 7d | 2027-06-12 | 2027-06-18 | 6512 |  | RGA -FINISHING | 8870254 |
| 6514 | 40200.40300.40700.52600.55400.58300.148800.2446900 | MAIN DOOR FRAME SHUTTER FIXING | 6d | 2027-12-12 | 2027-12-17 | 6756 |  | RGA -FINISHING | 8870264 |
| 6515 | 40200.40300.40700.52600.55400.58300.148800.2447000 | FINAL COAT PAINT | 8d | 2027-12-18 | 2027-12-25 | 6514 |  | RGA -FINISHING | 8870274 |

| ID | WBS | Task | Duration | Start | Finish | Predecessors | Constraint | Calendar | Unique_Task_ID |
| --- | --- | --- | --- | --- | --- | --- | --- | --- | --- |
| 6516 | 40200.40300.40700.52600.55400.58300.148900 | **19TH FLOOR** | 280d | 2027-03-31 | 2028-01-04 |  | start no earlier than 2027-03-31 | RGA -FINISHING | 8866084 |
| 6517 | 40200.40300.40700.52600.55400.58300.148900.2447100 | TOILET DADO TILE FIXING | 10d | 2027-05-05 | 2027-05-14 | 6212 |  | RGA -FINISHING | 8870284 |
| 6518 | 40200.40300.40700.52600.55400.58300.148900.2447200 | TOILET FLOORING WORK | 7d | 2027-05-15 | 2027-05-21 | 6517 |  | RGA -FINISHING | 8870294 |
| 6519 | 40200.40300.40700.52600.55400.58300.148900.2447300 | FIRE FIGHTING | 8d | 2027-03-31 | 2027-04-07 | 6211 |  | RGA -FINISHING | 8870304 |
| 6520 | 40200.40300.40700.52600.55400.58300.148900.2447400 | INTERNAL PAINTING - PUTTY / PRIMER APPLICATION | 5d | 2027-06-03 | 2027-06-07 | 6522 |  | RGA -FINISHING | 8870314 |
| 6521 | 40200.40300.40700.52600.55400.58300.148900.2447500 | FLAT FLOORING | 7d | 2027-05-22 | 2027-05-28 | 6518 |  | RGA -FINISHING | 8870324 |
| 6522 | 40200.40300.40700.52600.55400.58300.148900.2447600 | WINDOW FIXING | 5d | 2027-05-29 | 2027-06-02 | 6521 |  | RGA -FINISHING | 8870334 |
| 6523 | 40200.40300.40700.52600.55400.58300.148900.2447700 | INTERNAL PAINTING - 1ST COAT | 4d | 2027-06-08 | 2027-06-11 | 6520 |  | RGA -FINISHING | 8870344 |
| 6524 | 40200.40300.40700.52600.55400.58300.148900.2447800 | INTERNAL DOOR FIXING | 15d | 2027-06-10 | 2027-06-24 | 6523FS-2d |  | RGA -FINISHING | 8870354 |
| 6525 | 40200.40300.40700.52600.55400.58300.148900.2447900 | WIRING & SWITCH PLATE FIXING | 8d | 2027-06-21 | 2027-06-28 | 6524FS-4d |  | RGA -FINISHING | 8870364 |
| 6526 | 40200.40300.40700.52600.55400.58300.148900.2448000 | TOILET FALSE CEILING | 7d | 2027-06-29 | 2027-07-05 | 6525 |  | RGA -FINISHING | 8870374 |
| 6527 | 40200.40300.40700.52600.55400.58300.148900.2448100 | MAIN DOOR FRAME SHUTTER FIXING | 6d | 2027-12-22 | 2027-12-27 | 6764 |  | RGA -FINISHING | 8870384 |
| 6528 | 40200.40300.40700.52600.55400.58300.148900.2448200 | FINAL COAT PAINT | 8d | 2027-12-28 | 2028-01-04 | 6527 |  | RGA -FINISHING | 8870394 |
| 6529 | 40200.40300.40700.52600.55400.58300.149000 | **20TH FLOOR** | 263d | 2027-04-17 | 2028-01-04 |  | start no earlier than 2027-04-17 | RGA -FINISHING | 8866094 |
| 6530 | 40200.40300.40700.52600.55400.58300.149000.2448300 | TOILET DADO TILE FIXING | 10d | 2027-05-22 | 2027-05-31 | 6219 |  | RGA -FINISHING | 8870404 |
| 6531 | 40200.40300.40700.52600.55400.58300.149000.2448400 | TOILET FLOORING WORK | 7d | 2027-06-01 | 2027-06-07 | 6530 |  | RGA -FINISHING | 8870414 |
| 6532 | 40200.40300.40700.52600.55400.58300.149000.2448500 | FIRE FIGHTING | 8d | 2027-04-17 | 2027-04-24 | 6218 |  | RGA -FINISHING | 8870424 |
| 6533 | 40200.40300.40700.52600.55400.58300.149000.2448600 | INTERNAL PAINTING - PUTTY / PRIMER APPLICATION | 5d | 2027-06-20 | 2027-06-24 | 6535 |  | RGA -FINISHING | 8870434 |
| 6534 | 40200.40300.40700.52600.55400.58300.149000.2448700 | FLAT FLOORING | 7d | 2027-06-08 | 2027-06-14 | 6531 |  | RGA -FINISHING | 8870444 |
| 6535 | 40200.40300.40700.52600.55400.58300.149000.2448800 | WINDOW FIXING | 5d | 2027-06-15 | 2027-06-19 | 6534 |  | RGA -FINISHING | 8870454 |
| 6536 | 40200.40300.40700.52600.55400.58300.149000.2448900 | INTERNAL PAINTING - 1ST COAT | 4d | 2027-06-25 | 2027-06-28 | 6533 |  | RGA -FINISHING | 8870464 |
| 6537 | 40200.40300.40700.52600.55400.58300.149000.2449000 | INTERNAL DOOR FIXING | 15d | 2027-06-27 | 2027-07-11 | 6536FS-2d |  | RGA -FINISHING | 8870474 |
| 6538 | 40200.40300.40700.52600.55400.58300.149000.2449100 | WIRING & SWITCH PLATE FIXING | 8d | 2027-07-08 | 2027-07-15 | 6537FS-4d |  | RGA -FINISHING | 8870484 |
| 6539 | 40200.40300.40700.52600.55400.58300.149000.2449200 | TOILET FALSE CEILING | 7d | 2027-07-16 | 2027-07-22 | 6538 |  | RGA -FINISHING | 8870494 |
| 6540 | 40200.40300.40700.52600.55400.58300.149000.2449300 | MAIN DOOR FRAME SHUTTER FIXING | 6d | 2027-12-22 | 2027-12-27 | 6772 |  | RGA -FINISHING | 8870504 |
| 6541 | 40200.40300.40700.52600.55400.58300.149000.2449400 | FINAL COAT PAINT | 8d | 2027-12-28 | 2028-01-04 | 6540 |  | RGA -FINISHING | 8870514 |

| ID | WBS | Task | Duration | Start | Finish | Predecessors | Constraint | Calendar | Unique_Task_ID |
| --- | --- | --- | --- | --- | --- | --- | --- | --- | --- |
| 6542 | 40200.40300.40700.52600.55400.58300.149100 | **21st FLOOR** | 256d | 2027-05-04 | 2028-01-14 |  | start no earlier than 2027-05-04 | RGA -FINISHING | 8866104 |
| 6543 | 40200.40300.40700.52600.55400.58300.149100.2449500 | TOILET DADO TILE FIXING | 10d | 2027-06-08 | 2027-06-17 | 6226 |  | RGA -FINISHING | 8870524 |
| 6544 | 40200.40300.40700.52600.55400.58300.149100.2449600 | TOILET FLOORING WORK | 7d | 2027-06-18 | 2027-06-24 | 6543 |  | RGA -FINISHING | 8870534 |
| 6545 | 40200.40300.40700.52600.55400.58300.149100.2449700 | FIRE FIGHTING | 8d | 2027-05-04 | 2027-05-11 | 6225 |  | RGA -FINISHING | 8870544 |
| 6546 | 40200.40300.40700.52600.55400.58300.149100.2449800 | INTERNAL PAINTING - PUTTY / PRIMER APPLICATION | 15d | 2027-07-07 | 2027-07-21 | 6548 |  | RGA -FINISHING | 8870554 |
| 6547 | 40200.40300.40700.52600.55400.58300.149100.2449900 | FLAT FLOORING | 5d | 2027-06-25 | 2027-06-29 | 6544 |  | RGA -FINISHING | 8870564 |
| 6548 | 40200.40300.40700.52600.55400.58300.149100.2450000 | WINDOW FIXING | 7d | 2027-06-30 | 2027-07-06 | 6547 |  | RGA -FINISHING | 8870574 |
| 6549 | 40200.40300.40700.52600.55400.58300.149100.2450100 | INTERNAL PAINTING - 1ST COAT | 5d | 2027-07-22 | 2027-07-26 | 6546 |  | RGA -FINISHING | 8870584 |
| 6550 | 40200.40300.40700.52600.55400.58300.149100.2450200 | INTERNAL DOOR FIXING | 4d | 2027-07-25 | 2027-07-28 | 6549FS-2d |  | RGA -FINISHING | 8870594 |
| 6551 | 40200.40300.40700.52600.55400.58300.149100.2450300 | WIRING & SWITCH PLATE FIXING | 8d | 2027-07-25 | 2027-08-01 | 6550FS-4d |  | RGA -FINISHING | 8870604 |
| 6552 | 40200.40300.40700.52600.55400.58300.149100.2450400 | TOILET FALSE CEILING | 7d | 2027-08-02 | 2027-08-08 | 6551 |  | RGA -FINISHING | 8870614 |
| 6553 | 40200.40300.40700.52600.55400.58300.149100.2450500 | MAIN DOOR FRAME SHUTTER FIXING | 6d | 2028-01-01 | 2028-01-06 | 6780 |  | RGA -FINISHING | 8870624 |
| 6554 | 40200.40300.40700.52600.55400.58300.149100.2450600 | FINAL COAT PAINT | 8d | 2028-01-07 | 2028-01-14 | 6553 |  | RGA -FINISHING | 8870634 |
| 6555 | 40200.40300.40700.52600.55400.58300.149200 | **22nd FLOOR** | 239d | 2027-05-21 | 2028-01-14 |  | start no earlier than 2027-05-21 | RGA -FINISHING | 8866114 |
| 6556 | 40200.40300.40700.52600.55400.58300.149200.2450700 | TOILET DADO TILE FIXING | 10d | 2027-06-25 | 2027-07-04 | 6233 |  | RGA -FINISHING | 8870644 |
| 6557 | 40200.40300.40700.52600.55400.58300.149200.2450800 | TOILET FLOORING WORK | 7d | 2027-07-05 | 2027-07-11 | 6556 |  | RGA -FINISHING | 8870654 |
| 6558 | 40200.40300.40700.52600.55400.58300.149200.2450900 | FIRE FIGHTING | 8d | 2027-05-21 | 2027-05-28 | 6232 |  | RGA -FINISHING | 8870664 |
| 6559 | 40200.40300.40700.52600.55400.58300.149200.2451000 | INTERNAL PAINTING - PUTTY / PRIMER APPLICATION | 5d | 2027-07-12 | 2027-07-16 | 6561 |  | RGA -FINISHING | 8870674 |
| 6560 | 40200.40300.40700.52600.55400.58300.149200.2451100 | FLAT FLOORING | 7d | 2027-07-12 | 2027-07-18 | 6557 |  | RGA -FINISHING | 8870684 |
| 6561 | 40200.40300.40700.52600.55400.58300.149200.2451200 | WINDOW FIXING | 5d | 2027-07-07 | 2027-07-11 | 6548 |  | RGA -FINISHING | 8870694 |
| 6562 | 40200.40300.40700.52600.55400.58300.149200.2451300 | INTERNAL PAINTING - 1ST COAT | 4d | 2027-07-17 | 2027-07-20 | 6559 |  | RGA -FINISHING | 8870704 |
| 6563 | 40200.40300.40700.52600.55400.58300.149200.2451400 | INTERNAL DOOR FIXING | 15d | 2027-07-19 | 2027-08-02 | 6562FS-2d |  | RGA -FINISHING | 8870714 |
| 6564 | 40200.40300.40700.52600.55400.58300.149200.2451500 | WIRING & SWITCH PLATE FIXING | 8d | 2027-07-30 | 2027-08-06 | 6563FS-4d |  | RGA -FINISHING | 8870724 |
| 6565 | 40200.40300.40700.52600.55400.58300.149200.2451600 | TOILET FALSE CEILING | 7d | 2027-08-07 | 2027-08-13 | 6564 |  | RGA -FINISHING | 8870734 |
| 6566 | 40200.40300.40700.52600.55400.58300.149200.2451700 | MAIN DOOR FRAME SHUTTER FIXING | 6d | 2028-01-01 | 2028-01-06 | 6788 |  | RGA -FINISHING | 8870744 |
| 6567 | 40200.40300.40700.52600.55400.58300.149200.2451800 | FINAL COAT PAINT | 8d | 2028-01-07 | 2028-01-14 | 6566 |  | RGA -FINISHING | 8870754 |

| ID | WBS | Task | Duration | Start | Finish | Predecessors | Constraint | Calendar | Unique_Task_ID |
| --- | --- | --- | --- | --- | --- | --- | --- | --- | --- |
| 6568 | 40200.40300.40700.52600.55400.58300.149300 | **23TH FLOOR** | 220d | 2027-06-09 | 2028-01-14 |  | start no earlier than 2027-06-09 | RGA -FINISHING | 8866124 |
| 6569 | 40200.40300.40700.52600.55400.58300.149300.2451900 | TOILET DADO TILE FIXING | 10d | 2027-08-11 | 2027-08-20 | 6240 |  | RGA -FINISHING | 8870764 |
| 6570 | 40200.40300.40700.52600.55400.58300.149300.2452000 | TOILET FLOORING WORK | 7d | 2027-08-21 | 2027-08-27 | 6569 |  | RGA -FINISHING | 8870774 |
| 6571 | 40200.40300.40700.52600.55400.58300.149300.2452100 | FIRE FIGHTING | 8d | 2027-06-09 | 2027-06-16 | 6239 |  | RGA -FINISHING | 8870784 |
| 6572 | 40200.40300.40700.52600.55400.58300.149300.2452200 | INTERNAL PAINTING - PUTTY / PRIMER APPLICATION | 5d | 2027-09-19 | 2027-09-23 | 6574 |  | RGA -FINISHING | 8870794 |
| 6573 | 40200.40300.40700.52600.55400.58300.149300.2452300 | FLAT FLOORING | 7d | 2027-08-28 | 2027-09-03 | 6570 |  | RGA -FINISHING | 8870804 |
| 6574 | 40200.40300.40700.52600.55400.58300.149300.2452400 | WINDOW FIXING | 5d | 2027-09-14 | 2027-09-18 | 6573FS+10d |  | RGA -FINISHING | 8870814 |
| 6575 | 40200.40300.40700.52600.55400.58300.149300.2452500 | INTERNAL PAINTING - 1ST COAT | 4d | 2027-09-24 | 2027-09-27 | 6572 |  | RGA -FINISHING | 8870824 |
| 6576 | 40200.40300.40700.52600.55400.58300.149300.2452600 | INTERNAL DOOR FIXING | 15d | 2027-09-26 | 2027-10-10 | 6575FS-2d |  | RGA -FINISHING | 8870834 |
| 6577 | 40200.40300.40700.52600.55400.58300.149300.2452700 | WIRING & SWITCH PLATE FIXING | 8d | 2027-10-07 | 2027-10-14 | 6576FS-4d |  | RGA -FINISHING | 8870844 |
| 6578 | 40200.40300.40700.52600.55400.58300.149300.2452800 | TOILET FALSE CEILING | 7d | 2027-10-15 | 2027-10-21 | 6577 |  | RGA -FINISHING | 8870854 |
| 6579 | 40200.40300.40700.52600.55400.58300.149300.2452900 | MAIN DOOR FRAME SHUTTER FIXING | 6d | 2028-01-01 | 2028-01-06 | 6796 |  | RGA -FINISHING | 8870864 |
| 6580 | 40200.40300.40700.52600.55400.58300.149300.2453000 | FINAL COAT PAINT | 8d | 2028-01-07 | 2028-01-14 | 6579 |  | RGA -FINISHING | 8870874 |
| 6581 | 40200.40300.40700.52600.55400.58300.149400 | **24TH FLOOR** | 190d | 2027-07-09 | 2028-01-14 |  | start no earlier than 2027-07-09 | RGA -FINISHING | 8866134 |
| 6582 | 40200.40300.40700.52600.55400.58300.149400.2453100 | TOILET DADO TILE FIXING | 10d | 2027-08-30 | 2027-09-08 | 6247 |  | RGA -FINISHING | 8870884 |
| 6583 | 40200.40300.40700.52600.55400.58300.149400.2453200 | TOILET FLOORING WORK | 7d | 2027-09-09 | 2027-09-15 | 6582 |  | RGA -FINISHING | 8870894 |
| 6584 | 40200.40300.40700.52600.55400.58300.149400.2453300 | FIRE FIGHTING | 8d | 2027-07-09 | 2027-07-16 | 6246 |  | RGA -FINISHING | 8870904 |
| 6585 | 40200.40300.40700.52600.55400.58300.149400.2453400 | INTERNAL PAINTING - PUTTY / PRIMER APPLICATION | 5d | 2027-10-18 | 2027-10-22 | 6587 |  | RGA -FINISHING | 8870914 |
| 6586 | 40200.40300.40700.52600.55400.58300.149400.2453500 | FLAT FLOORING | 7d | 2027-09-16 | 2027-09-22 | 6583 |  | RGA -FINISHING | 8870924 |
| 6587 | 40200.40300.40700.52600.55400.58300.149400.2453600 | WINDOW FIXING | 5d | 2027-10-13 | 2027-10-17 | 6586FS+20d |  | RGA -FINISHING | 8870934 |
| 6588 | 40200.40300.40700.52600.55400.58300.149400.2453700 | INTERNAL PAINTING - 1ST COAT | 4d | 2027-10-23 | 2027-10-26 | 6585 |  | RGA -FINISHING | 8870944 |
| 6589 | 40200.40300.40700.52600.55400.58300.149400.2453800 | INTERNAL DOOR FIXING | 15d | 2027-10-25 | 2027-11-08 | 6588FS-2d |  | RGA -FINISHING | 8870954 |
| 6590 | 40200.40300.40700.52600.55400.58300.149400.2453900 | WIRING & SWITCH PLATE FIXING | 8d | 2027-11-05 | 2027-11-12 | 6589FS-4d |  | RGA -FINISHING | 8870964 |
| 6591 | 40200.40300.40700.52600.55400.58300.149400.2454000 | TOILET FALSE CEILING | 7d | 2027-11-13 | 2027-11-19 | 6590 |  | RGA -FINISHING | 8870974 |
| 6592 | 40200.40300.40700.52600.55400.58300.149400.2454100 | MAIN DOOR FRAME SHUTTER FIXING | 6d | 2028-01-01 | 2028-01-06 | 6804 |  | RGA -FINISHING | 8870984 |
| 6593 | 40200.40300.40700.52600.55400.58300.149400.2454200 | FINAL COAT PAINT | 8d | 2028-01-07 | 2028-01-14 | 6592 |  | RGA -FINISHING | 8870994 |

| ID | WBS | Task | Duration | Start | Finish | Predecessors | Constraint | Calendar | Unique_Task_ID |
| --- | --- | --- | --- | --- | --- | --- | --- | --- | --- |
| 6594 | 40200.40300.40700.52600.55400.58300.149500 | **25TH FLOOR** | 206d | 2027-07-18 | 2028-02-08 |  | start no earlier than 2027-07-18 | RGA -FINISHING | 8866144 |
| 6595 | 40200.40300.40700.52600.55400.58300.149500.2454300 | TOILET DADO TILE FIXING | 10d | 2027-09-17 | 2027-09-26 | 6254 |  | RGA -FINISHING | 8871004 |
| 6596 | 40200.40300.40700.52600.55400.58300.149500.2454400 | TOILET FLOORING WORK | 7d | 2027-09-27 | 2027-10-03 | 6595 |  | RGA -FINISHING | 8871014 |
| 6597 | 40200.40300.40700.52600.55400.58300.149500.2454500 | FIRE FIGHTING | 8d | 2027-07-18 | 2027-07-25 | 6253 |  | RGA -FINISHING | 8871024 |
| 6598 | 40200.40300.40700.52600.55400.58300.149500.2454600 | INTERNAL PAINTING - PUTTY / PRIMER APPLICATION | 5d | 2027-11-05 | 2027-11-09 | 6600 |  | RGA -FINISHING | 8871034 |
| 6599 | 40200.40300.40700.52600.55400.58300.149500.2454700 | FLAT FLOORING | 7d | 2027-10-04 | 2027-10-10 | 6596 |  | RGA -FINISHING | 8871044 |
| 6600 | 40200.40300.40700.52600.55400.58300.149500.2454800 | WINDOW FIXING | 5d | 2027-10-31 | 2027-11-04 | 6599FS+20d |  | RGA -FINISHING | 8871054 |
| 6601 | 40200.40300.40700.52600.55400.58300.149500.2454900 | INTERNAL PAINTING - 1ST COAT | 4d | 2027-11-10 | 2027-11-13 | 6598 |  | RGA -FINISHING | 8871064 |
| 6602 | 40200.40300.40700.52600.55400.58300.149500.2455000 | INTERNAL DOOR FIXING | 15d | 2027-11-12 | 2027-11-26 | 6601FS-2d |  | RGA -FINISHING | 8871074 |
| 6603 | 40200.40300.40700.52600.55400.58300.149500.2455100 | WIRING & SWITCH PLATE FIXING | 8d | 2027-11-23 | 2027-11-30 | 6602FS-4d |  | RGA -FINISHING | 8871084 |
| 6604 | 40200.40300.40700.52600.55400.58300.149500.2455200 | TOILET FALSE CEILING | 7d | 2027-12-01 | 2027-12-07 | 6603 |  | RGA -FINISHING | 8871094 |
| 6605 | 40200.40300.40700.52600.55400.58300.149500.2455300 | MAIN DOOR FRAME SHUTTER FIXING | 6d | 2028-01-26 | 2028-01-31 | 6812 |  | RGA -FINISHING | 8871104 |
| 6606 | 40200.40300.40700.52600.55400.58300.149500.2455400 | FINAL COAT PAINT | 8d | 2028-02-01 | 2028-02-08 | 6605 |  | RGA -FINISHING | 8871114 |
| 6607 | 40200.40300.40700.52600.55400.60400 | **LIFT LOBBY & STAIRCASE FINISHING WORK** | 663d | 2026-04-27 | 2028-02-18 |  | start no earlier than 2026-04-27 | RGA -FINISHING | 8865844 |
| 6608 | 40200.40300.40700.52600.55400.60400.245100 | **GROUND FLOOR** | 561d | 2026-04-27 | 2027-11-08 |  | start no earlier than 2026-04-27 | RGA -FINISHING | 8866194 |
| 6609 | 40200.40300.40700.52600.55400.60400.245100.2455500 | FIRE FIGHTING | 5d | 2026-04-27 | 2026-05-01 | 6285FS-5d |  | RGA -FINISHING | 8871124 |
| 6610 | 40200.40300.40700.52600.55400.60400.245100.2455600 | LIFT BLOCK WORK | 3d | 2027-05-19 | 2027-05-21 | 6064 |  | RGA -FINISHING | 8871134 |
| 6611 | 40200.40300.40700.52600.55400.60400.245100.2455700 | LIFT DADO WORK | 6d | 2027-10-07 | 2027-10-12 | 6819FS-20d |  | RGA -FINISHING | 8871144 |
| 6612 | 40200.40300.40700.52600.55400.60400.245100.2455800 | LOBBY FLOORING WORK | 8d | 2027-10-13 | 2027-10-20 | 6611 |  | RGA -FINISHING | 8871154 |
| 6613 | 40200.40300.40700.52600.55400.60400.245100.2455900 | ELECTRICAL WIRING & SWITCH PLATE FIXING WORK | 6d | 2027-10-21 | 2027-10-26 | 6612 |  | RGA -FINISHING | 8871164 |
| 6614 | 40200.40300.40700.52600.55400.60400.245100.2456000 | False ceiling & 1ST COAT PAINTING | 10d | 2027-10-27 | 2027-11-05 | 6613 |  | RGA -FINISHING | 8871174 |
| 6615 | 40200.40300.40700.52600.55400.60400.245100.2456100 | CLEANING | 3d | 2027-11-06 | 2027-11-08 | 6614 |  | RGA -FINISHING | 8871184 |
| 6616 | 40200.40300.40700.52600.55400.60400.245200 | **1ST FLOOR** | 578d | 2026-04-27 | 2027-11-25 |  | start no earlier than 2026-04-27 | RGA -FINISHING | 8866204 |
| 6617 | 40200.40300.40700.52600.55400.60400.245200.2456200 | FIRE FIGHTING | 10d | 2026-04-27 | 2026-05-06 | 6285FS-5d |  | RGA -FINISHING | 8871194 |
| 6618 | 40200.40300.40700.52600.55400.60400.245200.2456300 | LIFT BLOCK WORK | 3d | 2027-05-22 | 2027-05-24 | 6610 |  | RGA -FINISHING | 8871204 |
| 6619 | 40200.40300.40700.52600.55400.60400.245200.2456400 | LIFT DADO WORK | 10d | 2027-10-13 | 2027-10-22 | 6611 |  | RGA -FINISHING | 8871214 |
| 6620 | 40200.40300.40700.52600.55400.60400.245200.2456500 | LOBBY FLOORING WORK | 10d | 2027-10-23 | 2027-11-01 | 6619 |  | RGA -FINISHING | 8871224 |
| 6621 | 40200.40300.40700.52600.55400.60400.245200.2456600 | ELECTRICAL WIRING & SWITCH PLATE FIXING WORK | 6d | 2027-11-02 | 2027-11-07 | 6620 |  | RGA -FINISHING | 8871234 |
| 6622 | 40200.40300.40700.52600.55400.60400.245200.2456700 | False ceiling & 1ST COAT PAINTING | 15d | 2027-11-08 | 2027-11-22 | 6621 |  | RGA -FINISHING | 8871244 |
| 6623 | 40200.40300.40700.52600.55400.60400.245200.2456800 | CLEANING | 3d | 2027-11-23 | 2027-11-25 | 6622 |  | RGA -FINISHING | 8871254 |

Notes:
- 6607: Completion in 12 months post last RCC
- 6609: Assumed
- 6617: Assumed

| ID | WBS | Task | Duration | Start | Finish | Predecessors | Constraint | Calendar | Unique_Task_ID |
| --- | --- | --- | --- | --- | --- | --- | --- | --- | --- |
| 6624 | 40200.40300.40700.52600.55400.60400.245300 | **2nd FLOOR** | 560d | 2026-05-15 | 2027-11-25 |  | start no earlier than 2026-05-15 | RGA -FINISHING | 8866214 |
| 6625 | 40200.40300.40700.52600.55400.60400.245300.2456900 | FIRE FIGHTING | 10d | 2026-05-15 | 2026-05-24 | 6298FS-5d |  | RGA -FINISHING | 8871264 |
| 6626 | 40200.40300.40700.52600.55400.60400.245300.2457000 | LIFT BLOCK WORK | 3d | 2027-05-22 | 2027-05-24 | 6618SS |  | RGA -FINISHING | 8871274 |
| 6627 | 40200.40300.40700.52600.55400.60400.245300.2457100 | LIFT DADO WORK | 10d | 2027-10-13 | 2027-10-22 | 6619SS |  | RGA -FINISHING | 8871284 |
| 6628 | 40200.40300.40700.52600.55400.60400.245300.2457200 | LOBBY FLOORING WORK | 10d | 2027-10-23 | 2027-11-01 | 6627 |  | RGA -FINISHING | 8871294 |
| 6629 | 40200.40300.40700.52600.55400.60400.245300.2457300 | ELECTRICAL WIRING & SWITCH PLATE FIXING WORK | 6d | 2027-11-02 | 2027-11-07 | 6628 |  | RGA -FINISHING | 8871304 |
| 6630 | 40200.40300.40700.52600.55400.60400.245300.2457400 | False ceiling & 1ST COAT PAINTING | 15d | 2027-11-08 | 2027-11-22 | 6629 |  | RGA -FINISHING | 8871314 |
| 6631 | 40200.40300.40700.52600.55400.60400.245300.2457500 | CLEANING | 3d | 2027-11-23 | 2027-11-25 | 6630 |  | RGA -FINISHING | 8871324 |
| 6632 | 40200.40300.40700.52600.55400.60400.245400 | **3rd FLOOR** | 543d | 2026-06-01 | 2027-11-25 |  | start no earlier than 2026-06-01 | RGA -FINISHING | 8866224 |
| 6633 | 40200.40300.40700.52600.55400.60400.245400.2457600 | FIRE FIGHTING | 10d | 2026-06-01 | 2026-06-10 | 6311FS-5d |  | RGA -FINISHING | 8871334 |
| 6634 | 40200.40300.40700.52600.55400.60400.245400.2457700 | LIFT BLOCK WORK | 3d | 2027-05-22 | 2027-05-24 | 6626SS |  | RGA -FINISHING | 8871344 |
| 6635 | 40200.40300.40700.52600.55400.60400.245400.2457800 | LIFT DADO WORK | 10d | 2027-10-13 | 2027-10-22 | 6627SS |  | RGA -FINISHING | 8871354 |
| 6636 | 40200.40300.40700.52600.55400.60400.245400.2457900 | LOBBY FLOORING WORK | 10d | 2027-10-23 | 2027-11-01 | 6635 |  | RGA -FINISHING | 8871364 |
| 6637 | 40200.40300.40700.52600.55400.60400.245400.2458000 | ELECTRICAL WIRING & SWITCH PLATE FIXING WORK | 6d | 2027-11-02 | 2027-11-07 | 6636 |  | RGA -FINISHING | 8871374 |
| 6638 | 40200.40300.40700.52600.55400.60400.245400.2458100 | False ceiling & 1ST COAT PAINTING | 15d | 2027-11-08 | 2027-11-22 | 6637 |  | RGA -FINISHING | 8871384 |
| 6639 | 40200.40300.40700.52600.55400.60400.245400.2458200 | CLEANING | 3d | 2027-11-23 | 2027-11-25 | 6638 |  | RGA -FINISHING | 8871394 |
| 6640 | 40200.40300.40700.52600.55400.60400.245500 | **4th FLOOR** | 536d | 2026-06-18 | 2027-12-05 |  | start no earlier than 2026-06-18 | RGA -FINISHING | 8866234 |
| 6641 | 40200.40300.40700.52600.55400.60400.245500.2458300 | FIRE FIGHTING | 10d | 2026-06-18 | 2026-06-27 | 6324FS-5d |  | RGA -FINISHING | 8871404 |
| 6642 | 40200.40300.40700.52600.55400.60400.245500.2458400 | LIFT BLOCK WORK | 3d | 2027-05-25 | 2027-05-27 | 6634 |  | RGA -FINISHING | 8871414 |
| 6643 | 40200.40300.40700.52600.55400.60400.245500.2458500 | LIFT DADO WORK | 10d | 2027-10-23 | 2027-11-01 | 6635 |  | RGA -FINISHING | 8871424 |
| 6644 | 40200.40300.40700.52600.55400.60400.245500.2458600 | LOBBY FLOORING WORK | 10d | 2027-11-02 | 2027-11-11 | 6643 |  | RGA -FINISHING | 8871434 |
| 6645 | 40200.40300.40700.52600.55400.60400.245500.2458700 | ELECTRICAL WIRING & SWITCH PLATE FIXING WORK | 6d | 2027-11-12 | 2027-11-17 | 6644 |  | RGA -FINISHING | 8871444 |
| 6646 | 40200.40300.40700.52600.55400.60400.245500.2458800 | False ceiling & 1ST COAT PAINTING | 15d | 2027-11-18 | 2027-12-02 | 6645 |  | RGA -FINISHING | 8871454 |
| 6647 | 40200.40300.40700.52600.55400.60400.245500.2458900 | CLEANING | 3d | 2027-12-03 | 2027-12-05 | 6646 |  | RGA -FINISHING | 8871464 |

Notes:
- 6625: Assumed
- 6633: Assumed
- 6641: Assumed

| ID | WBS | Task | Duration | Start | Finish | Predecessors | Constraint | Calendar | Unique_Task_ID |
| --- | --- | --- | --- | --- | --- | --- | --- | --- | --- |
| 6648 | 40200.40300.40700.52600.55400.60400.245600 | **5th FLOOR** | 510.5d | 2026-07-13 | 2027-12-05 |  | start no earlier than 2026-07-13 | RGA -FINISHING | 8866244 |
| 6649 | 40200.40300.40700.52600.55400.60400.245600.2459000 | FIRE FIGHTING | 10d | 2026-07-13 | 2026-07-23 | 6337FS-5d |  | RGA -FINISHING | 8871474 |
| 6650 | 40200.40300.40700.52600.55400.60400.245600.2459100 | LIFT BLOCK WORK | 3d | 2027-05-25 | 2027-05-27 | 6642SS |  | RGA -FINISHING | 8871484 |
| 6651 | 40200.40300.40700.52600.55400.60400.245600.2459200 | LIFT DADO WORK | 10d | 2027-10-23 | 2027-11-01 | 6643SS |  | RGA -FINISHING | 8871494 |
| 6652 | 40200.40300.40700.52600.55400.60400.245600.2459300 | LOBBY FLOORING WORK | 10d | 2027-11-02 | 2027-11-11 | 6651 |  | RGA -FINISHING | 8871504 |
| 6653 | 40200.40300.40700.52600.55400.60400.245600.2459400 | ELECTRICAL WIRING & SWITCH PLATE FIXING WORK | 6d | 2027-11-12 | 2027-11-17 | 6652 |  | RGA -FINISHING | 8871514 |
| 6654 | 40200.40300.40700.52600.55400.60400.245600.2459500 | False ceiling & 1ST COAT PAINTING | 15d | 2027-11-18 | 2027-12-02 | 6653 |  | RGA -FINISHING | 8871524 |
| 6655 | 40200.40300.40700.52600.55400.60400.245600.2459600 | CLEANING | 3d | 2027-12-03 | 2027-12-05 | 6654 |  | RGA -FINISHING | 8871534 |
| 6656 | 40200.40300.40700.52600.55400.60400.245700 | **6th FLOOR** | 487d | 2026-08-06 | 2027-12-05 |  | start no earlier than 2026-08-06 | RGA -FINISHING | 8866254 |
| 6657 | 40200.40300.40700.52600.55400.60400.245700.2459700 | FIRE FIGHTING | 10d | 2026-08-06 | 2026-08-15 | 6350FS-5d |  | RGA -FINISHING | 8871544 |
| 6658 | 40200.40300.40700.52600.55400.60400.245700.2459800 | LIFT BLOCK WORK | 3d | 2027-05-25 | 2027-05-27 | 6650SS |  | RGA -FINISHING | 8871554 |
| 6659 | 40200.40300.40700.52600.55400.60400.245700.2459900 | LIFT DADO WORK | 10d | 2027-10-23 | 2027-11-01 | 6651SS |  | RGA -FINISHING | 8871564 |
| 6660 | 40200.40300.40700.52600.55400.60400.245700.2460000 | LOBBY FLOORING WORK | 10d | 2027-11-02 | 2027-11-11 | 6659 |  | RGA -FINISHING | 8871574 |
| 6661 | 40200.40300.40700.52600.55400.60400.245700.2460100 | ELECTRICAL WIRING & SWITCH PLATE FIXING WORK | 6d | 2027-11-12 | 2027-11-17 | 6660 |  | RGA -FINISHING | 8871584 |
| 6662 | 40200.40300.40700.52600.55400.60400.245700.2460200 | False ceiling & 1ST COAT PAINTING | 15d | 2027-11-18 | 2027-12-02 | 6661 |  | RGA -FINISHING | 8871594 |
| 6663 | 40200.40300.40700.52600.55400.60400.245700.2460300 | CLEANING | 3d | 2027-12-03 | 2027-12-05 | 6662 |  | RGA -FINISHING | 8871604 |
| 6664 | 40200.40300.40700.52600.55400.60400.245800 | **7th FLOOR** | 436d | 2026-09-26 | 2027-12-05 |  | start no earlier than 2026-09-26 | RGA -FINISHING | 8866264 |
| 6665 | 40200.40300.40700.52600.55400.60400.245800.2460400 | FIRE FIGHTING | 10d | 2026-09-26 | 2026-10-05 | 6363FS-5d |  | RGA -FINISHING | 8871614 |
| 6666 | 40200.40300.40700.52600.55400.60400.245800.2460500 | LIFT BLOCK WORK | 3d | 2027-05-25 | 2027-05-27 | 6658SS |  | RGA -FINISHING | 8871624 |
| 6667 | 40200.40300.40700.52600.55400.60400.245800.2460600 | LIFT DADO WORK | 10d | 2027-10-23 | 2027-11-01 | 6659SS |  | RGA -FINISHING | 8871634 |
| 6668 | 40200.40300.40700.52600.55400.60400.245800.2460700 | LOBBY FLOORING WORK | 10d | 2027-11-02 | 2027-11-11 | 6667 |  | RGA -FINISHING | 8871644 |
| 6669 | 40200.40300.40700.52600.55400.60400.245800.2460800 | ELECTRICAL WIRING & SWITCH PLATE FIXING WORK | 6d | 2027-11-12 | 2027-11-17 | 6668 |  | RGA -FINISHING | 8871654 |
| 6670 | 40200.40300.40700.52600.55400.60400.245800.2460900 | False ceiling & 1ST COAT PAINTING | 15d | 2027-11-18 | 2027-12-02 | 6669 |  | RGA -FINISHING | 8871664 |
| 6671 | 40200.40300.40700.52600.55400.60400.245800.2461000 | CLEANING | 3d | 2027-12-03 | 2027-12-05 | 6670 |  | RGA -FINISHING | 8871674 |

Notes:
- 6649: Assumed
- 6657: Assumed
- 6665: Assumed

| ID | WBS | Task | Duration | Start | Finish | Predecessors | Constraint | Calendar | Unique_Task_ID |
| --- | --- | --- | --- | --- | --- | --- | --- | --- | --- |
| 6672 | 40200.40300.40700.52600.55400.60400.245900 | **8th FLOOR** | 462d | 2026-09-10 | 2027-12-15 |  | start no earlier than 2026-09-10 | RGA -FINISHING | 8866274 |
| 6673 | 40200.40300.40700.52600.55400.60400.245900.2461100 | FIRE FIGHTING | 10d | 2026-09-10 | 2026-09-19 | 6376FS-5d |  | RGA -FINISHING | 8871684 |
| 6674 | 40200.40300.40700.52600.55400.60400.245900.2461200 | LIFT BLOCK WORK | 3d | 2027-05-28 | 2027-05-30 | 6666 |  | RGA -FINISHING | 8871694 |
| 6675 | 40200.40300.40700.52600.55400.60400.245900.2461300 | LIFT DADO WORK | 10d | 2027-11-02 | 2027-11-11 | 6667 |  | RGA -FINISHING | 8871704 |
| 6676 | 40200.40300.40700.52600.55400.60400.245900.2461400 | LOBBY FLOORING WORK | 10d | 2027-11-12 | 2027-11-21 | 6675 |  | RGA -FINISHING | 8871714 |
| 6677 | 40200.40300.40700.52600.55400.60400.245900.2461500 | ELECTRICAL WIRING & SWITCH PLATE FIXING WORK | 6d | 2027-11-22 | 2027-11-27 | 6676 |  | RGA -FINISHING | 8871724 |
| 6678 | 40200.40300.40700.52600.55400.60400.245900.2461600 | False ceiling & 1ST COAT PAINTING | 15d | 2027-11-28 | 2027-12-12 | 6677 |  | RGA -FINISHING | 8871734 |
| 6679 | 40200.40300.40700.52600.55400.60400.245900.2461700 | CLEANING | 3d | 2027-12-13 | 2027-12-15 | 6678 |  | RGA -FINISHING | 8871744 |
| 6680 | 40200.40300.40700.52600.55400.60400.246000 | **9th FLOOR** | 445d | 2026-09-27 | 2027-12-15 |  | start no earlier than 2026-09-27 | RGA -FINISHING | 8866284 |
| 6681 | 40200.40300.40700.52600.55400.60400.246000.2461800 | FIRE FIGHTING | 10d | 2026-09-27 | 2026-10-06 | 6389FS-5d |  | RGA -FINISHING | 8871754 |
| 6682 | 40200.40300.40700.52600.55400.60400.246000.2461900 | LIFT BLOCK WORK | 3d | 2027-05-28 | 2027-05-30 | 6674SS |  | RGA -FINISHING | 8871764 |
| 6683 | 40200.40300.40700.52600.55400.60400.246000.2462000 | LIFT DADO WORK | 10d | 2027-11-02 | 2027-11-11 | 6675SS |  | RGA -FINISHING | 8871774 |
| 6684 | 40200.40300.40700.52600.55400.60400.246000.2462100 | LOBBY FLOORING WORK | 10d | 2027-11-12 | 2027-11-21 | 6683 |  | RGA -FINISHING | 8871784 |
| 6685 | 40200.40300.40700.52600.55400.60400.246000.2462200 | ELECTRICAL WIRING & SWITCH PLATE FIXING WORK | 6d | 2027-11-22 | 2027-11-27 | 6684 |  | RGA -FINISHING | 8871794 |
| 6686 | 40200.40300.40700.52600.55400.60400.246000.2462300 | False ceiling & 1ST COAT PAINTING | 15d | 2027-11-28 | 2027-12-12 | 6685 |  | RGA -FINISHING | 8871804 |
| 6687 | 40200.40300.40700.52600.55400.60400.246000.2462400 | CLEANING | 3d | 2027-12-13 | 2027-12-15 | 6686 |  | RGA -FINISHING | 8871814 |
| 6688 | 40200.40300.40700.52600.55400.60400.246100 | **10th FLOOR** | 427d | 2026-10-15 | 2027-12-15 |  | start no earlier than 2026-10-15 | RGA -FINISHING | 8866294 |
| 6689 | 40200.40300.40700.52600.55400.60400.246100.2462500 | FIRE FIGHTING | 10d | 2026-10-15 | 2026-10-24 | 6402FS-5d |  | RGA -FINISHING | 8871824 |
| 6690 | 40200.40300.40700.52600.55400.60400.246100.2462600 | LIFT BLOCK WORK | 3d | 2027-05-28 | 2027-05-30 | 6682SS |  | RGA -FINISHING | 8871834 |
| 6691 | 40200.40300.40700.52600.55400.60400.246100.2462700 | LIFT DADO WORK | 10d | 2027-11-02 | 2027-11-11 | 6683SS |  | RGA -FINISHING | 8871844 |
| 6692 | 40200.40300.40700.52600.55400.60400.246100.2462800 | LOBBY FLOORING WORK | 10d | 2027-11-12 | 2027-11-21 | 6691 |  | RGA -FINISHING | 8871854 |
| 6693 | 40200.40300.40700.52600.55400.60400.246100.2462900 | ELECTRICAL WIRING & SWITCH PLATE FIXING WORK | 6d | 2027-11-22 | 2027-11-27 | 6692 |  | RGA -FINISHING | 8871864 |
| 6694 | 40200.40300.40700.52600.55400.60400.246100.2463000 | False ceiling & 1ST COAT PAINTING | 15d | 2027-11-28 | 2027-12-12 | 6693 |  | RGA -FINISHING | 8871874 |
| 6695 | 40200.40300.40700.52600.55400.60400.246100.2463100 | CLEANING | 3d | 2027-12-13 | 2027-12-15 | 6694 |  | RGA -FINISHING | 8871884 |

Notes:
- 6673: Assumed
- 6681: Assumed
- 6689: Assumed

| ID | WBS | Task | Duration | Start | Finish | Predecessors | Constraint | Calendar | Unique_Task_ID |
| --- | --- | --- | --- | --- | --- | --- | --- | --- | --- |
| 6696 | 40200.40300.40700.52600.55400.60400.246200 | **11th FLOOR** | 410d | 2026-11-01 | 2027-12-15 |  | start no earlier than 2026-11-01 | RGA -FINISHING | 8866304 |
| 6697 | 40200.40300.40700.52600.55400.60400.246200.2463200 | FIRE FIGHTING | 10d | 2026-11-01 | 2026-11-10 | 6415FS-5d |  | RGA -FINISHING | 8871894 |
| 6698 | 40200.40300.40700.52600.55400.60400.246200.2463300 | LIFT BLOCK WORK | 3d | 2027-05-28 | 2027-05-30 | 6690SS |  | RGA -FINISHING | 8871904 |
| 6699 | 40200.40300.40700.52600.55400.60400.246200.2463400 | LIFT DADO WORK | 10d | 2027-11-02 | 2027-11-11 | 6691SS |  | RGA -FINISHING | 8871914 |
| 6700 | 40200.40300.40700.52600.55400.60400.246200.2463500 | LOBBY FLOORING WORK | 10d | 2027-11-12 | 2027-11-21 | 6699 |  | RGA -FINISHING | 8871924 |
| 6701 | 40200.40300.40700.52600.55400.60400.246200.2463600 | ELECTRICAL WIRING & SWITCH PLATE FIXING WORK | 6d | 2027-11-22 | 2027-11-27 | 6700 |  | RGA -FINISHING | 8871934 |
| 6702 | 40200.40300.40700.52600.55400.60400.246200.2463700 | False ceiling & 1ST COAT PAINTING | 15d | 2027-11-28 | 2027-12-12 | 6701 |  | RGA -FINISHING | 8871944 |
| 6703 | 40200.40300.40700.52600.55400.60400.246200.2463800 | CLEANING | 3d | 2027-12-13 | 2027-12-15 | 6702 |  | RGA -FINISHING | 8871954 |
| 6704 | 40200.40300.40700.52600.55400.60400.246300 | **12th FLOOR** | 403d | 2026-11-18 | 2027-12-25 |  | start no earlier than 2026-11-18 | RGA -FINISHING | 8866314 |
| 6705 | 40200.40300.40700.52600.55400.60400.246300.2463900 | FIRE FIGHTING | 10d | 2026-11-18 | 2026-11-27 | 6428FS-5d |  | RGA -FINISHING | 8871964 |
| 6706 | 40200.40300.40700.52600.55400.60400.246300.2464000 | LIFT BLOCK WORK | 3d | 2027-05-31 | 2027-06-02 | 6698 |  | RGA -FINISHING | 8871974 |
| 6707 | 40200.40300.40700.52600.55400.60400.246300.2464100 | LIFT DADO WORK | 10d | 2027-11-12 | 2027-11-21 | 6699 |  | RGA -FINISHING | 8871984 |
| 6708 | 40200.40300.40700.52600.55400.60400.246300.2464200 | LOBBY FLOORING WORK | 10d | 2027-11-22 | 2027-12-01 | 6707 |  | RGA -FINISHING | 8871994 |
| 6709 | 40200.40300.40700.52600.55400.60400.246300.2464300 | ELECTRICAL WIRING & SWITCH PLATE FIXING WORK | 6d | 2027-12-02 | 2027-12-07 | 6708 |  | RGA -FINISHING | 8872004 |
| 6710 | 40200.40300.40700.52600.55400.60400.246300.2464400 | False ceiling & 1ST COAT PAINTING | 15d | 2027-12-08 | 2027-12-22 | 6709 |  | RGA -FINISHING | 8872014 |
| 6711 | 40200.40300.40700.52600.55400.60400.246300.2464500 | CLEANING | 3d | 2027-12-23 | 2027-12-25 | 6710 |  | RGA -FINISHING | 8872024 |
| 6712 | 40200.40300.40700.52600.55400.60400.246400 | **13th FLOOR** | 375.5d | 2026-12-15 | 2027-12-25 |  | start no earlier than 2026-12-15 | RGA -FINISHING | 8866324 |
| 6713 | 40200.40300.40700.52600.55400.60400.246400.2464600 | FIRE FIGHTING | 10d | 2026-12-15 | 2026-12-25 | 6441FS-5d |  | RGA -FINISHING | 8872034 |
| 6714 | 40200.40300.40700.52600.55400.60400.246400.2464700 | LIFT BLOCK WORK | 3d | 2027-05-31 | 2027-06-02 | 6706SS |  | RGA -FINISHING | 8872044 |
| 6715 | 40200.40300.40700.52600.55400.60400.246400.2464800 | LIFT DADO WORK | 10d | 2027-11-12 | 2027-11-21 | 6707SS |  | RGA -FINISHING | 8872054 |
| 6716 | 40200.40300.40700.52600.55400.60400.246400.2464900 | LOBBY FLOORING WORK | 10d | 2027-11-22 | 2027-12-01 | 6715 |  | RGA -FINISHING | 8872064 |
| 6717 | 40200.40300.40700.52600.55400.60400.246400.2465000 | ELECTRICAL WIRING & SWITCH PLATE FIXING WORK | 6d | 2027-12-02 | 2027-12-07 | 6716 |  | RGA -FINISHING | 8872074 |
| 6718 | 40200.40300.40700.52600.55400.60400.246400.2465100 | False ceiling & 1ST COAT PAINTING | 15d | 2027-12-08 | 2027-12-22 | 6717 |  | RGA -FINISHING | 8872084 |
| 6719 | 40200.40300.40700.52600.55400.60400.246400.2465200 | CLEANING | 3d | 2027-12-23 | 2027-12-25 | 6718 |  | RGA -FINISHING | 8872094 |

Notes:
- 6697: Assumed
- 6705: Assumed
- 6713: Assumed

| ID | WBS | Task | Duration | Start | Finish | Predecessors | Constraint | Calendar | Unique_Task_ID |
| --- | --- | --- | --- | --- | --- | --- | --- | --- | --- |
| 6720 | 40200.40300.40700.52600.55400.60400.246500 | **14th FLOOR** | 352d | 2027-01-08 | 2027-12-25 |  | start no earlier than 2027-01-08 | RGA -FINISHING | 8866334 |
| 6721 | 40200.40300.40700.52600.55400.60400.246500.2465300 | FIRE FIGHTING | 10d | 2027-01-08 | 2027-01-17 | 6454FS-5d |  | RGA -FINISHING | 8872104 |
| 6722 | 40200.40300.40700.52600.55400.60400.246500.2465400 | LIFT BLOCK WORK | 3d | 2027-05-31 | 2027-06-02 | 6714SS |  | RGA -FINISHING | 8872114 |
| 6723 | 40200.40300.40700.52600.55400.60400.246500.2465500 | LIFT DADO WORK | 10d | 2027-11-12 | 2027-11-21 | 6715SS |  | RGA -FINISHING | 8872124 |
| 6724 | 40200.40300.40700.52600.55400.60400.246500.2465600 | LOBBY FLOORING WORK | 10d | 2027-11-22 | 2027-12-01 | 6723 |  | RGA -FINISHING | 8872134 |
| 6725 | 40200.40300.40700.52600.55400.60400.246500.2465700 | ELECTRICAL WIRING & SWITCH PLATE FIXING WORK | 6d | 2027-12-02 | 2027-12-07 | 6724 |  | RGA -FINISHING | 8872144 |
| 6726 | 40200.40300.40700.52600.55400.60400.246500.2465800 | False ceiling & 1ST COAT PAINTING | 15d | 2027-12-08 | 2027-12-22 | 6725 |  | RGA -FINISHING | 8872154 |
| 6727 | 40200.40300.40700.52600.55400.60400.246500.2465900 | CLEANING | 3d | 2027-12-23 | 2027-12-25 | 6726 |  | RGA -FINISHING | 8872164 |
| 6728 | 40200.40300.40700.52600.55400.60400.246600 | **15th FLOOR** | 335d | 2027-01-25 | 2027-12-25 |  | start no earlier than 2027-01-25 | RGA -FINISHING | 8866344 |
| 6729 | 40200.40300.40700.52600.55400.60400.246600.2466000 | FIRE FIGHTING | 10d | 2027-01-25 | 2027-02-03 | 6467FS-5d |  | RGA -FINISHING | 8872174 |
| 6730 | 40200.40300.40700.52600.55400.60400.246600.2466100 | LIFT BLOCK WORK | 3d | 2027-05-31 | 2027-06-02 | 6722SS |  | RGA -FINISHING | 8872184 |
| 6731 | 40200.40300.40700.52600.55400.60400.246600.2466200 | LIFT DADO WORK | 10d | 2027-11-12 | 2027-11-21 | 6723SS |  | RGA -FINISHING | 8872194 |
| 6732 | 40200.40300.40700.52600.55400.60400.246600.2466300 | LOBBY FLOORING WORK | 10d | 2027-11-22 | 2027-12-01 | 6731 |  | RGA -FINISHING | 8872204 |
| 6733 | 40200.40300.40700.52600.55400.60400.246600.2466400 | ELECTRICAL WIRING & SWITCH PLATE FIXING WORK | 6d | 2027-12-02 | 2027-12-07 | 6732 |  | RGA -FINISHING | 8872214 |
| 6734 | 40200.40300.40700.52600.55400.60400.246600.2466500 | False ceiling & 1ST COAT PAINTING | 15d | 2027-12-08 | 2027-12-22 | 6733 |  | RGA -FINISHING | 8872224 |
| 6735 | 40200.40300.40700.52600.55400.60400.246600.2466600 | CLEANING | 3d | 2027-12-23 | 2027-12-25 | 6734 |  | RGA -FINISHING | 8872234 |
| 6736 | 40200.40300.40700.52600.55400.60400.246700 | **16th FLOOR** | 328d | 2027-02-11 | 2028-01-04 |  | start no earlier than 2027-02-11 | RGA -FINISHING | 8866354 |
| 6737 | 40200.40300.40700.52600.55400.60400.246700.2466700 | FIRE FIGHTING | 10d | 2027-02-11 | 2027-02-20 | 6480FS-5d |  | RGA -FINISHING | 8872244 |
| 6738 | 40200.40300.40700.52600.55400.60400.246700.2466800 | LIFT BLOCK WORK | 3d | 2027-06-03 | 2027-06-05 | 6730 |  | RGA -FINISHING | 8872254 |
| 6739 | 40200.40300.40700.52600.55400.60400.246700.2466900 | LIFT DADO WORK | 10d | 2027-11-22 | 2027-12-01 | 6731 |  | RGA -FINISHING | 8872264 |
| 6740 | 40200.40300.40700.52600.55400.60400.246700.2467000 | LOBBY FLOORING WORK | 10d | 2027-12-02 | 2027-12-11 | 6739 |  | RGA -FINISHING | 8872274 |
| 6741 | 40200.40300.40700.52600.55400.60400.246700.2467100 | ELECTRICAL WIRING & SWITCH PLATE FIXING WORK | 6d | 2027-12-12 | 2027-12-17 | 6740 |  | RGA -FINISHING | 8872284 |
| 6742 | 40200.40300.40700.52600.55400.60400.246700.2467200 | False ceiling & 1ST COAT PAINTING | 15d | 2027-12-18 | 2028-01-01 | 6741 |  | RGA -FINISHING | 8872294 |
| 6743 | 40200.40300.40700.52600.55400.60400.246700.2467300 | CLEANING | 3d | 2028-01-02 | 2028-01-04 | 6742 |  | RGA -FINISHING | 8872304 |

Notes:
- 6721: Assumed
- 6729: Assumed
- 6737: Assumed

| ID | WBS | Task | Duration | Start | Finish | Predecessors | Constraint | Calendar | Unique_Task_ID |
| --- | --- | --- | --- | --- | --- | --- | --- | --- | --- |
| 6744 | 40200.40300.40700.52600.55400.60400.246800 | **17th FLOOR** | 311d | 2027-02-28 | 2028-01-04 |  | start no earlier than 2027-02-28 | RGA -FINISHING | 8866364 |
| 6745 | 40200.40300.40700.52600.55400.60400.246800.2467400 | FIRE FIGHTING | 10d | 2027-02-28 | 2027-03-09 | 6493FS-5d |  | RGA -FINISHING | 8872314 |
| 6746 | 40200.40300.40700.52600.55400.60400.246800.2467500 | LIFT BLOCK WORK | 3d | 2027-06-03 | 2027-06-05 | 6738SS |  | RGA -FINISHING | 8872324 |
| 6747 | 40200.40300.40700.52600.55400.60400.246800.2467600 | LIFT DADO WORK | 10d | 2027-11-22 | 2027-12-01 | 6739SS |  | RGA -FINISHING | 8872334 |
| 6748 | 40200.40300.40700.52600.55400.60400.246800.2467700 | LOBBY FLOORING WORK | 10d | 2027-12-02 | 2027-12-11 | 6747 |  | RGA -FINISHING | 8872344 |
| 6749 | 40200.40300.40700.52600.55400.60400.246800.2467800 | ELECTRICAL WIRING & SWITCH PLATE FIXING WORK | 6d | 2027-12-12 | 2027-12-17 | 6748 |  | RGA -FINISHING | 8872354 |
| 6750 | 40200.40300.40700.52600.55400.60400.246800.2467900 | False ceiling & 1ST COAT PAINTING | 15d | 2027-12-18 | 2028-01-01 | 6749 |  | RGA -FINISHING | 8872364 |
| 6751 | 40200.40300.40700.52600.55400.60400.246800.2468000 | CLEANING | 3d | 2028-01-02 | 2028-01-04 | 6750 |  | RGA -FINISHING | 8872374 |
| 6752 | 40200.40300.40700.52600.55400.60400.246900 | **18th FLOOR** | 294d | 2027-03-17 | 2028-01-04 |  | start no earlier than 2027-03-17 | RGA -FINISHING | 8866374 |
| 6753 | 40200.40300.40700.52600.55400.60400.246900.2468100 | FIRE FIGHTING | 10d | 2027-03-17 | 2027-03-26 | 6506FS-5d |  | RGA -FINISHING | 8872384 |
| 6754 | 40200.40300.40700.52600.55400.60400.246900.2468200 | LIFT BLOCK WORK | 3d | 2027-06-03 | 2027-06-05 | 6746SS |  | RGA -FINISHING | 8872394 |
| 6755 | 40200.40300.40700.52600.55400.60400.246900.2468300 | LIFT DADO WORK | 10d | 2027-11-22 | 2027-12-01 | 6747SS |  | RGA -FINISHING | 8872404 |
| 6756 | 40200.40300.40700.52600.55400.60400.246900.2468400 | LOBBY FLOORING WORK | 10d | 2027-12-02 | 2027-12-11 | 6755 |  | RGA -FINISHING | 8872414 |
| 6757 | 40200.40300.40700.52600.55400.60400.246900.2468500 | ELECTRICAL WIRING & SWITCH PLATE FIXING WORK | 6d | 2027-12-12 | 2027-12-17 | 6756 |  | RGA -FINISHING | 8872424 |
| 6758 | 40200.40300.40700.52600.55400.60400.246900.2468600 | False ceiling & 1ST COAT PAINTING | 15d | 2027-12-18 | 2028-01-01 | 6757 |  | RGA -FINISHING | 8872434 |
| 6759 | 40200.40300.40700.52600.55400.60400.246900.2468700 | CLEANING | 3d | 2028-01-02 | 2028-01-04 | 6758 |  | RGA -FINISHING | 8872444 |
| 6760 | 40200.40300.40700.52600.55400.60400.247000 | **19th FLOOR** | 287d | 2027-04-03 | 2028-01-14 |  | start no earlier than 2027-04-03 | RGA -FINISHING | 8866384 |
| 6761 | 40200.40300.40700.52600.55400.60400.247000.2468800 | FIRE FIGHTING | 10d | 2027-04-03 | 2027-04-12 | 6519FS-5d |  | RGA -FINISHING | 8872454 |
| 6762 | 40200.40300.40700.52600.55400.60400.247000.2468900 | LIFT BLOCK WORK | 3d | 2027-06-06 | 2027-06-08 | 6754 |  | RGA -FINISHING | 8872464 |
| 6763 | 40200.40300.40700.52600.55400.60400.247000.2469000 | LIFT DADO WORK | 10d | 2027-12-02 | 2027-12-11 | 6755 |  | RGA -FINISHING | 8872474 |
| 6764 | 40200.40300.40700.52600.55400.60400.247000.2469100 | LOBBY FLOORING WORK | 10d | 2027-12-12 | 2027-12-21 | 6763 |  | RGA -FINISHING | 8872484 |
| 6765 | 40200.40300.40700.52600.55400.60400.247000.2469200 | ELECTRICAL WIRING & SWITCH PLATE FIXING WORK | 6d | 2027-12-22 | 2027-12-27 | 6764 |  | RGA -FINISHING | 8872494 |
| 6766 | 40200.40300.40700.52600.55400.60400.247000.2469300 | False ceiling & 1ST COAT PAINTING | 15d | 2027-12-28 | 2028-01-11 | 6765 |  | RGA -FINISHING | 8872504 |
| 6767 | 40200.40300.40700.52600.55400.60400.247000.2469400 | CLEANING | 3d | 2028-01-12 | 2028-01-14 | 6766 |  | RGA -FINISHING | 8872514 |

Notes:
- 6745: Assumed
- 6753: Assumed
- 6761: Assumed

| ID | WBS | Task | Duration | Start | Finish | Predecessors | Constraint | Calendar | Unique_Task_ID |
| --- | --- | --- | --- | --- | --- | --- | --- | --- | --- |
| 6768 | 40200.40300.40700.52600.55400.60400.247100 | **20th FLOOR** | 270d | 2027-04-20 | 2028-01-14 |  | start no earlier than 2027-04-20 | RGA -FINISHING | 8866394 |
| 6769 | 40200.40300.40700.52600.55400.60400.247100.2469500 | FIRE FIGHTING | 10d | 2027-04-20 | 2027-04-29 | 6532FS-5d |  | RGA -FINISHING | 8872524 |
| 6770 | 40200.40300.40700.52600.55400.60400.247100.2469600 | LIFT BLOCK WORK | 3d | 2027-06-06 | 2027-06-08 | 6762SS |  | RGA -FINISHING | 8872534 |
| 6771 | 40200.40300.40700.52600.55400.60400.247100.2469700 | LIFT DADO WORK | 10d | 2027-12-02 | 2027-12-11 | 6763SS |  | RGA -FINISHING | 8872544 |
| 6772 | 40200.40300.40700.52600.55400.60400.247100.2469800 | LOBBY FLOORING WORK | 10d | 2027-12-12 | 2027-12-21 | 6771 |  | RGA -FINISHING | 8872554 |
| 6773 | 40200.40300.40700.52600.55400.60400.247100.2469900 | ELECTRICAL WIRING & SWITCH PLATE FIXING WORK | 6d | 2027-12-22 | 2027-12-27 | 6772 |  | RGA -FINISHING | 8872564 |
| 6774 | 40200.40300.40700.52600.55400.60400.247100.2470000 | False ceiling & 1ST COAT PAINTING | 15d | 2027-12-28 | 2028-01-11 | 6773 |  | RGA -FINISHING | 8872574 |
| 6775 | 40200.40300.40700.52600.55400.60400.247100.2470100 | CLEANING | 3d | 2028-01-12 | 2028-01-14 | 6774 |  | RGA -FINISHING | 8872584 |
| 6776 | 40200.40300.40700.52600.55400.60400.247200 | **21th FLOOR** | 263d | 2027-05-07 | 2028-01-24 |  | start no earlier than 2027-05-07 | RGA -FINISHING | 8866404 |
| 6777 | 40200.40300.40700.52600.55400.60400.247200.2470200 | FIRE FIGHTING | 10d | 2027-05-07 | 2027-05-16 | 6545FS-5d |  | RGA -FINISHING | 8872594 |
| 6778 | 40200.40300.40700.52600.55400.60400.247200.2470300 | LIFT BLOCK WORK | 3d | 2027-06-09 | 2027-06-11 | 6770 |  | RGA -FINISHING | 8872604 |
| 6779 | 40200.40300.40700.52600.55400.60400.247200.2470400 | LIFT DADO WORK | 10d | 2027-12-12 | 2027-12-21 | 6771 |  | RGA -FINISHING | 8872614 |
| 6780 | 40200.40300.40700.52600.55400.60400.247200.2470500 | LOBBY FLOORING WORK | 10d | 2027-12-22 | 2027-12-31 | 6779 |  | RGA -FINISHING | 8872624 |
| 6781 | 40200.40300.40700.52600.55400.60400.247200.2470600 | ELECTRICAL WIRING & SWITCH PLATE FIXING WORK | 6d | 2028-01-01 | 2028-01-06 | 6780 |  | RGA -FINISHING | 8872634 |
| 6782 | 40200.40300.40700.52600.55400.60400.247200.2470700 | False ceiling & 1ST COAT PAINTING | 15d | 2028-01-07 | 2028-01-21 | 6781 |  | RGA -FINISHING | 8872644 |
| 6783 | 40200.40300.40700.52600.55400.60400.247200.2470800 | CLEANING | 3d | 2028-01-22 | 2028-01-24 | 6782 |  | RGA -FINISHING | 8872654 |
| 6784 | 40200.40300.40700.52600.55400.60400.247300 | **22th FLOOR** | 246d | 2027-05-24 | 2028-01-24 |  | start no earlier than 2027-05-24 | RGA -FINISHING | 8866414 |
| 6785 | 40200.40300.40700.52600.55400.60400.247300.2470900 | FIRE FIGHTING | 10d | 2027-05-24 | 2027-06-02 | 6558FS-5d |  | RGA -FINISHING | 8872664 |
| 6786 | 40200.40300.40700.52600.55400.60400.247300.2471000 | LIFT BLOCK WORK | 3d | 2027-06-09 | 2027-06-11 | 6778SS |  | RGA -FINISHING | 8872674 |
| 6787 | 40200.40300.40700.52600.55400.60400.247300.2471100 | LIFT DADO WORK | 10d | 2027-12-12 | 2027-12-21 | 6779SS |  | RGA -FINISHING | 8872684 |
| 6788 | 40200.40300.40700.52600.55400.60400.247300.2471200 | LOBBY FLOORING WORK | 10d | 2027-12-22 | 2027-12-31 | 6787 |  | RGA -FINISHING | 8872694 |
| 6789 | 40200.40300.40700.52600.55400.60400.247300.2471300 | ELECTRICAL WIRING & SWITCH PLATE FIXING WORK | 6d | 2028-01-01 | 2028-01-06 | 6788 |  | RGA -FINISHING | 8872704 |
| 6790 | 40200.40300.40700.52600.55400.60400.247300.2471400 | False ceiling & 1ST COAT PAINTING | 15d | 2028-01-07 | 2028-01-21 | 6789 |  | RGA -FINISHING | 8872714 |
| 6791 | 40200.40300.40700.52600.55400.60400.247300.2471500 | CLEANING | 3d | 2028-01-22 | 2028-01-24 | 6790 |  | RGA -FINISHING | 8872724 |

Notes:
- 6769: Assumed
- 6777: Assumed
- 6785: Assumed

| ID | WBS | Task | Duration | Start | Finish | Predecessors | Constraint | Calendar | Unique_Task_ID |
| --- | --- | --- | --- | --- | --- | --- | --- | --- | --- |
| 6792 | 40200.40300.40700.52600.55400.60400.247400 | **23th FLOOR** | 230d | 2027-06-09 | 2028-01-24 |  | start no earlier than 2027-06-09 | RGA -FINISHING | 8866424 |
| 6793 | 40200.40300.40700.52600.55400.60400.247400.2471600 | FIRE FIGHTING | 10d | 2027-06-12 | 2027-06-21 | 6571FS-5d |  | RGA -FINISHING | 8872734 |
| 6794 | 40200.40300.40700.52600.55400.60400.247400.2471700 | LIFT BLOCK WORK | 3d | 2027-06-09 | 2027-06-11 | 6786SS |  | RGA -FINISHING | 8872744 |
| 6795 | 40200.40300.40700.52600.55400.60400.247400.2471800 | LIFT DADO WORK | 10d | 2027-12-12 | 2027-12-21 | 6787SS |  | RGA -FINISHING | 8872754 |
| 6796 | 40200.40300.40700.52600.55400.60400.247400.2471900 | LOBBY FLOORING WORK | 10d | 2027-12-22 | 2027-12-31 | 6795 |  | RGA -FINISHING | 8872764 |
| 6797 | 40200.40300.40700.52600.55400.60400.247400.2472000 | ELECTRICAL WIRING & SWITCH PLATE FIXING WORK | 6d | 2028-01-01 | 2028-01-06 | 6796 |  | RGA -FINISHING | 8872774 |
| 6798 | 40200.40300.40700.52600.55400.60400.247400.2472100 | False ceiling & 1ST COAT PAINTING | 15d | 2028-01-07 | 2028-01-21 | 6797 |  | RGA -FINISHING | 8872784 |
| 6799 | 40200.40300.40700.52600.55400.60400.247400.2472200 | CLEANING | 3d | 2028-01-22 | 2028-01-24 | 6798 |  | RGA -FINISHING | 8872794 |
| 6800 | 40200.40300.40700.52600.55400.60400.247500 | **24th FLOOR** | 230d | 2027-06-09 | 2028-01-24 |  | start no earlier than 2027-06-09 | RGA -FINISHING | 8866434 |
| 6801 | 40200.40300.40700.52600.55400.60400.247500.2472300 | FIRE FIGHTING | 10d | 2027-07-12 | 2027-07-21 | 6584FS-5d |  | RGA -FINISHING | 8872804 |
| 6802 | 40200.40300.40700.52600.55400.60400.247500.2472400 | LIFT BLOCK WORK | 3d | 2027-06-09 | 2027-06-11 | 6794SS |  | RGA -FINISHING | 8872814 |
| 6803 | 40200.40300.40700.52600.55400.60400.247500.2472500 | LIFT DADO WORK | 10d | 2027-12-12 | 2027-12-21 | 6795SS |  | RGA -FINISHING | 8872824 |
| 6804 | 40200.40300.40700.52600.55400.60400.247500.2472600 | LOBBY FLOORING WORK | 10d | 2027-12-22 | 2027-12-31 | 6803 |  | RGA -FINISHING | 8872834 |
| 6805 | 40200.40300.40700.52600.55400.60400.247500.2472700 | ELECTRICAL WIRING & SWITCH PLATE FIXING WORK | 6d | 2028-01-01 | 2028-01-06 | 6804 |  | RGA -FINISHING | 8872844 |
| 6806 | 40200.40300.40700.52600.55400.60400.247500.2472800 | False ceiling & 1ST COAT PAINTING | 15d | 2028-01-07 | 2028-01-21 | 6805 |  | RGA -FINISHING | 8872854 |
| 6807 | 40200.40300.40700.52600.55400.60400.247500.2472900 | CLEANING | 3d | 2028-01-22 | 2028-01-24 | 6806 |  | RGA -FINISHING | 8872864 |
| 6808 | 40200.40300.40700.52600.55400.60400.247600 | **25th FLOOR** | 252d | 2027-06-12 | 2028-02-18 |  | start no earlier than 2027-06-12 | RGA -FINISHING | 8866444 |
| 6809 | 40200.40300.40700.52600.55400.60400.247600.2473000 | FIRE FIGHTING | 10d | 2027-07-21 | 2027-07-30 | 6597FS-5d |  | RGA -FINISHING | 8872874 |
| 6810 | 40200.40300.40700.52600.55400.60400.247600.2473100 | LIFT BLOCK WORK | 3d | 2027-06-12 | 2027-06-14 | 6802 |  | RGA -FINISHING | 8872884 |
| 6811 | 40200.40300.40700.52600.55400.60400.247600.2473200 | LIFT DADO WORK | 10d | 2027-12-22 | 2027-12-31 | 6803 |  | RGA -FINISHING | 8872894 |
| 6812 | 40200.40300.40700.52600.55400.60400.247600.2473300 | LOBBY FLOORING WORK | 10d | 2028-01-16 | 2028-01-25 | 6811FS+15d |  | RGA -FINISHING | 8872904 |
| 6813 | 40200.40300.40700.52600.55400.60400.247600.2473400 | ELECTRICAL WIRING & SWITCH PLATE FIXING WORK | 6d | 2028-01-26 | 2028-01-31 | 6812 |  | RGA -FINISHING | 8872914 |
| 6814 | 40200.40300.40700.52600.55400.60400.247600.2473500 | False ceiling & 1ST COAT PAINTING | 15d | 2028-02-01 | 2028-02-15 | 6813 |  | RGA -FINISHING | 8872924 |
| 6815 | 40200.40300.40700.52600.55400.60400.247600.2473600 | CLEANING | 3d | 2028-02-16 | 2028-02-18 | 6814 |  | RGA -FINISHING | 8872934 |

Notes:
- 6793: Assumed
- 6801: Assumed
- 6809: Assumed

| ID | WBS | Task | Duration | Start | Finish | Predecessors | Constraint | Calendar | Unique_Task_ID |
| --- | --- | --- | --- | --- | --- | --- | --- | --- | --- |
| 6816 | 40200.40300.40700.52600.55400.161700 | **Common MEP Works** | 382d | 2027-05-19 | 2028-06-03 |  | start no earlier than 2027-05-19 | RGA -FINISHING | 8866154 |
| 6817 | 40200.40300.40700.52600.55400.161700.478900 | **Lift Works** | 161d | 2027-05-19 | 2027-10-26 |  | start no earlier than 2027-05-19 | RGA -FINISHING | 8867154 |
| 6818 | 40200.40300.40700.52600.55400.161700.478900.2473700 | Lift Shaft Handover | 30d | 2027-05-19 | 2027-06-17 | 6064 |  | RGA -FINISHING | 8872944 |
| 6819 | 40200.40300.40700.52600.55400.161700.478900.2473800 | Lift installation work | 130d | 2027-06-19 | 2027-10-26 | 6818FS+1d |  | RGA -FINISHING | 8872954 |
| 6820 | 40200.40300.40700.52600.55400.161700.479000 | **Plumbing works** | 117d | 2028-02-08 | 2028-06-03 |  | start no earlier than 2028-02-08 | RGA -FINISHING | 8867144 |
| 6821 | 40200.40300.40700.52600.55400.161700.479000.2473900 | Shaft Plumbing | 90d | 2028-02-08 | 2028-05-07 | 6267FS+40d |  | RGA -FINISHING | 8872964 |
| 6822 | 40200.40300.40700.52600.55400.161700.479000.2474000 | Terrace Looping | 90d | 2028-03-06 | 2028-06-03 | 6265FS+30d |  | RGA -FINISHING | 8872974 |
| 6823 | 40200.40300.40700.52600.55400.161700.479100 | **Fire Fighting works** | 76d | 2027-07-08 | 2027-09-21 |  | start no earlier than 2027-07-08 | RGA -FINISHING | 8867134 |
| 6824 | 40200.40300.40700.52600.55400.161700.479100.2474100 | Shaft Downtake works | 60d | 2027-07-08 | 2027-09-05 | 6069FF+100d |  | RGA -FINISHING | 8872984 |
| 6825 | 40200.40300.40700.52600.55400.161700.479100.2474200 | Connection to pump room | 15d | 2027-09-07 | 2027-09-21 | 6824FS+1d |  | RGA -FINISHING | 8872994 |
| 6826 | 40200.40300.40700.52600.55400.161700.342600 | **Electrical works** | 120d | 2027-12-28 | 2028-04-25 |  | start no earlier than 2027-12-28 | RGA -FINISHING | 8866734 |
| 6827 | 40200.40300.40700.52600.55400.161700.342600.2474300 | Shaft cabling | 45d | 2028-02-18 | 2028-04-02 | 6069FF+310d |  | RGA -FINISHING | 8873004 |
| 6828 | 40200.40300.40700.52600.55400.161700.342600.2474400 | Meter room erection | 15d | 2028-03-27 | 2028-04-10 | 5935FS+370d |  | RGA -FINISHING | 8873014 |
| 6829 | 40200.40300.40700.52600.55400.161700.342600.2474500 | Panel erection | 15d | 2028-04-11 | 2028-04-25 | 6828 |  | RGA -FINISHING | 8873024 |
| 6830 | 40200.40300.40700.52600.55400.161700.342600.2474600 | DG Installtion | 10d | 2027-12-28 | 2028-01-06 | 6828SS-90d |  | RGA -FINISHING | 8873034 |
| 6831 | 40200.40300.40700.52600.55400.161700.342600.2474700 | Transformer erection | 15d | 2027-12-28 | 2028-01-11 | 6830SS |  | RGA -FINISHING | 8873044 |
| 6832 | 40200.40300.40700.352700 | **Capex Item Procurment** | 223d | 2027-07-03 | 2028-02-10 |  | start no earlier than 2027-07-03 | RGA -FINISHING | 8866774 |
| 6833 | 40200.40300.40700.352700.587500 | Lift Procurement & delivery | 30d | 2027-07-03 | 2027-08-01 | 6818SS+45d |  | RGA -FINISHING | 8867314 |
| 6834 | 40200.40300.40700.352700.587600 | Panels | 30d | 2028-01-12 | 2028-02-10 | 6829SS-90d |  | RGA -FINISHING | 8867324 |
| 6835 | 40200.40300.40700.352700.587700 | DG procurement | 30d | 2027-09-29 | 2027-10-28 | 6830SS-90d |  | RGA -FINISHING | 8867334 |
| 6836 | 40200.40300.40700.352700.587800 | Transformer | 30d | 2027-09-29 | 2027-10-28 | 6831SS-90d |  | RGA -FINISHING | 8867344 |
| 6837 | 40200.40300.40700.43800 | **Handing Over Activities** | 56d | 2028-05-29 | 2028-07-23 |  | start no earlier than 2028-05-29 | RGA -FINISHING | 8865794 |
| 6838 | 40200.40300.40700.43800.587900 | SOAP WASHING GROUND FLOOR | 1d | 2028-05-29 | 2028-05-29 | 6815FS+100d |  | RGA -FINISHING | 8867354 |
| 6839 | 40200.40300.40700.43800.588000 | SOAP WASHING L1 | 1d | 2028-05-30 | 2028-05-30 | 6838 |  | RGA -FINISHING | 8867364 |
| 6840 | 40200.40300.40700.43800.588100 | SOAP WASHING L2 | 1d | 2028-05-31 | 2028-05-31 | 6839 |  | RGA -FINISHING | 8867374 |
| 6841 | 40200.40300.40700.43800.588200 | SOAP WASHING L3 | 1d | 2028-06-01 | 2028-06-01 | 6840 |  | RGA -FINISHING | 8867384 |
| 6842 | 40200.40300.40700.43800.588300 | SOAP WASHING L4 | 1d | 2028-06-02 | 2028-06-02 | 6841 |  | RGA -FINISHING | 8867394 |
| 6843 | 40200.40300.40700.43800.588400 | SOAP WASHING L5 | 1d | 2028-06-03 | 2028-06-03 | 6842 |  | RGA -FINISHING | 8867404 |
| 6844 | 40200.40300.40700.43800.588500 | SOAP WASHING L6 | 1d | 2028-06-04 | 2028-06-04 | 6843 |  | RGA -FINISHING | 8867414 |
| 6845 | 40200.40300.40700.43800.588600 | SOAP WASHING L7 | 1d | 2028-06-05 | 2028-06-05 | 6844 |  | RGA -FINISHING | 8867424 |
| 6846 | 40200.40300.40700.43800.588700 | SOAP WASHING L8 | 1d | 2028-06-06 | 2028-06-06 | 6845 |  | RGA -FINISHING | 8867434 |
| 6847 | 40200.40300.40700.43800.588800 | SOAP WASHING L9 | 1d | 2028-06-07 | 2028-06-07 | 6846 |  | RGA -FINISHING | 8867444 |
| 6848 | 40200.40300.40700.43800.588900 | SOAP WASHING L10 | 1d | 2028-06-08 | 2028-06-08 | 6847 |  | RGA -FINISHING | 8867454 |
| 6849 | 40200.40300.40700.43800.589000 | SOAP WASHING L11 | 1d | 2028-06-09 | 2028-06-09 | 6848 |  | RGA -FINISHING | 8867464 |
| 6850 | 40200.40300.40700.43800.589100 | SOAP WASHING L12 | 1d | 2028-06-10 | 2028-06-10 | 6849 |  | RGA -FINISHING | 8867474 |
| 6851 | 40200.40300.40700.43800.589200 | SOAP WASHING L13 | 1d | 2028-06-11 | 2028-06-11 | 6850 |  | RGA -FINISHING | 8867484 |
| 6852 | 40200.40300.40700.43800.589300 | SOAP WASHING L14 | 1d | 2028-06-12 | 2028-06-12 | 6851 |  | RGA -FINISHING | 8867494 |
| 6853 | 40200.40300.40700.43800.589400 | SOAP WASHING L15 | 1d | 2028-06-13 | 2028-06-13 | 6852 |  | RGA -FINISHING | 8867504 |
| 6854 | 40200.40300.40700.43800.589500 | SOAP WASHING L16 | 1d | 2028-06-14 | 2028-06-14 | 6853 |  | RGA -FINISHING | 8867514 |
| 6855 | 40200.40300.40700.43800.589600 | SOAP WASHING L17 | 1d | 2028-06-15 | 2028-06-15 | 6854 |  | RGA -FINISHING | 8867524 |
| 6856 | 40200.40300.40700.43800.589700 | SOAP WASHING L18 | 1d | 2028-06-16 | 2028-06-16 | 6855 |  | RGA -FINISHING | 8867534 |
| 6857 | 40200.40300.40700.43800.589800 | SOAP WASHING L19 | 1d | 2028-06-17 | 2028-06-17 | 6856 |  | RGA -FINISHING | 8867544 |
| 6858 | 40200.40300.40700.43800.589900 | SOAP WASHING L20 | 1d | 2028-06-18 | 2028-06-18 | 6857 |  | RGA -FINISHING | 8867554 |
| 6859 | 40200.40300.40700.43800.590000 | SOAP WASHING L21 | 1d | 2028-06-19 | 2028-06-19 | 6858 |  | RGA -FINISHING | 8867564 |
| 6860 | 40200.40300.40700.43800.590100 | SOAP WASHING L22 | 1d | 2028-06-20 | 2028-06-20 | 6859 |  | RGA -FINISHING | 8867574 |
| 6861 | 40200.40300.40700.43800.590200 | SOAP WASHING L23 | 1d | 2028-06-21 | 2028-06-21 | 6860 |  | RGA -FINISHING | 8867584 |
| 6862 | 40200.40300.40700.43800.590300 | SOAP WASHING L24 | 1d | 2028-06-22 | 2028-06-22 | 6861 |  | RGA -FINISHING | 8867594 |
| 6863 | 40200.40300.40700.43800.590400 | SOAP WASHING L25 | 1d | 2028-06-23 | 2028-06-23 | 6862 |  | RGA -FINISHING | 8867604 |
| 6864 | 40200.40300.40700.43800.590500 | CP & SANITARYWARE FIXING Ground | 2d | 2028-05-31 | 2028-06-01 | 6839 |  | RGA -FINISHING | 8867614 |
| 6865 | 40200.40300.40700.43800.590600 | CP & SANITARYWARE FIXING L1 | 2d | 2028-06-02 | 2028-06-03 | 6864 |  | RGA -FINISHING | 8867624 |
| 6866 | 40200.40300.40700.43800.590700 | CP & SANITARYWARE FIXING L2 | 2d | 2028-06-04 | 2028-06-05 | 6865 |  | RGA -FINISHING | 8867634 |
| 6867 | 40200.40300.40700.43800.590800 | CP & SANITARYWARE FIXING L3 | 2d | 2028-06-06 | 2028-06-07 | 6866 |  | RGA -FINISHING | 8867644 |
| 6868 | 40200.40300.40700.43800.590900 | CP & SANITARYWARE FIXING L4 | 2d | 2028-06-08 | 2028-06-09 | 6867 |  | RGA -FINISHING | 8867654 |
| 6869 | 40200.40300.40700.43800.591000 | CP & SANITARYWARE FIXING L5 | 2d | 2028-06-10 | 2028-06-11 | 6868 |  | RGA -FINISHING | 8867664 |
| 6870 | 40200.40300.40700.43800.591100 | CP & SANITARYWARE FIXING L6 | 2d | 2028-06-12 | 2028-06-13 | 6869 |  | RGA -FINISHING | 8867674 |
| 6871 | 40200.40300.40700.43800.591200 | CP & SANITARYWARE FIXING L7 | 2d | 2028-06-14 | 2028-06-15 | 6870 |  | RGA -FINISHING | 8867684 |
| 6872 | 40200.40300.40700.43800.591300 | CP & SANITARYWARE FIXING L8 | 2d | 2028-06-16 | 2028-06-17 | 6871 |  | RGA -FINISHING | 8867694 |
| 6873 | 40200.40300.40700.43800.591400 | CP & SANITARYWARE FIXING L9 | 2d | 2028-06-18 | 2028-06-19 | 6872 |  | RGA -FINISHING | 8867704 |
| 6874 | 40200.40300.40700.43800.591500 | CP & SANITARYWARE FIXING L10 | 2d | 2028-06-20 | 2028-06-21 | 6873 |  | RGA -FINISHING | 8867714 |
| 6875 | 40200.40300.40700.43800.591600 | CP & SANITARYWARE FIXING L11 | 2d | 2028-06-22 | 2028-06-23 | 6874 |  | RGA -FINISHING | 8867724 |
| 6876 | 40200.40300.40700.43800.591700 | CP & SANITARYWARE FIXING L12 | 2d | 2028-06-24 | 2028-06-25 | 6875 |  | RGA -FINISHING | 8867734 |
| 6877 | 40200.40300.40700.43800.591800 | CP & SANITARYWARE FIXING L13 | 2d | 2028-06-26 | 2028-06-27 | 6876 |  | RGA -FINISHING | 8867744 |
| 6878 | 40200.40300.40700.43800.591900 | CP & SANITARYWARE FIXING L14 | 2d | 2028-06-28 | 2028-06-29 | 6877 |  | RGA -FINISHING | 8867754 |
| 6879 | 40200.40300.40700.43800.592000 | CP & SANITARYWARE FIXING L15 | 2d | 2028-06-30 | 2028-07-01 | 6878 |  | RGA -FINISHING | 8867764 |
| 6880 | 40200.40300.40700.43800.592100 | CP & SANITARYWARE FIXING L16 | 2d | 2028-07-02 | 2028-07-03 | 6879 |  | RGA -FINISHING | 8867774 |
| 6881 | 40200.40300.40700.43800.592200 | CP & SANITARYWARE FIXING L17 | 2d | 2028-07-04 | 2028-07-05 | 6880 |  | RGA -FINISHING | 8867784 |
| 6882 | 40200.40300.40700.43800.592300 | CP & SANITARYWARE FIXING L18 | 2d | 2028-07-06 | 2028-07-07 | 6881 |  | RGA -FINISHING | 8867794 |
| 6883 | 40200.40300.40700.43800.592400 | CP & SANITARYWARE FIXING L18 | 2d | 2028-07-08 | 2028-07-09 | 6882 |  | RGA -FINISHING | 8867804 |
| 6884 | 40200.40300.40700.43800.592500 | CP & SANITARYWARE FIXING L19 | 2d | 2028-07-10 | 2028-07-11 | 6883 |  | RGA -FINISHING | 8867814 |
| 6885 | 40200.40300.40700.43800.592600 | CP & SANITARYWARE FIXING L20 | 2d | 2028-07-12 | 2028-07-13 | 6884 |  | RGA -FINISHING | 8867824 |

Notes:
- 6816: Completion in 12 months post last RCC

| ID | WBS | Task | Type | Duration | Start | Finish | Predecessors | Complete | Constraint | Calendar | Unique_Task_ID |
| --- | --- | --- | --- | --- | --- | --- | --- | --- | --- | --- | --- |
| 6886 | 40200.40300.40700.43800.592700 | CP & SANITARYWARE FIXING L21 |  | 2d | 2028-07-14 | 2028-07-15 | 6885 |  |  | RGA -FINISHING | 8867834 |
| 6887 | 40200.40300.40700.43800.592800 | CP & SANITARYWARE FIXING L22 |  | 2d | 2028-07-16 | 2028-07-17 | 6886 |  |  | RGA -FINISHING | 8867844 |
| 6888 | 40200.40300.40700.43800.592900 | CP & SANITARYWARE FIXING L23 |  | 2d | 2028-07-18 | 2028-07-19 | 6887 |  |  | RGA -FINISHING | 8867854 |
| 6889 | 40200.40300.40700.43800.593000 | CP & SANITARYWARE FIXING L24 |  | 2d | 2028-07-20 | 2028-07-21 | 6888 |  |  | RGA -FINISHING | 8867864 |
| 6890 | 40200.40300.40700.43800.593100 | CP & SANITARYWARE FIXING L25 |  | 2d | 2028-07-22 | 2028-07-23 | 6889 |  |  | RGA -FINISHING | 8867874 |
| 6891 | 40200.40300.40700.534500 | MIscellaneous (Aluform Supply) |  | 73d | 2025-08-12 | 2025-11-19 | 5968FS-129d | 100% | start no earlier than 2025-08-12 | RGA -FINISHING | 8867274 |
| 6892 | 40200.40300.40700.534400 | Miscellaneous |  | 290.62d | 2025-08-08 | 2028-01-25 | 6891FS-88.62d | 27% |  | Indian Calendar | 8867284 |
| 6893 | 40200.40300.40700.546100 | Miscellaneous |  | 570d | 2027-03-08 | 2028-12-30 | 6891FS+405d |  |  | Indian Calendar | 10722978 |
| 6894 | 40200.40300.40600 | **TOWER 1 - (B+G+25 Floors+Terrace)** |  | 1405d | 2025-02-10 | 2029-01-23 |  | 4% | start no earlier than 2025-02-10 | RGA - STRUCTURE | 7803142 |
| 6895 | 40200.40300.40600.1170700 | Start date for Tower 1 | milestone | 0d | 2025-11-30 | 2025-11-30 | 3SS |  |  | RGA - STRUCTURE | 7847622 |
| 6896 | 40200.40300.40600.462200 | **Earth work** |  | 91d | 2025-02-10 | 2025-05-13 |  | 100% | start no earlier than 2025-02-10 | RGA - STRUCTURE | 7811792 |
| 6897 | 40200.40300.40600.462200.520600 | EXCAVATION - Tower Area |  | 4d | 2025-02-10 | 2025-02-13 | 6895SS-2.8d | 100% | start no earlier than 2025-02-10 | RGA - STRUCTURE | 7816392 |
| 6898 | 40200.40300.40600.462200.520500 | Excavation - Non Tower Area |  | 33d | 2025-03-18 | 2025-05-13 | 6897FS-36d | 100% | start no earlier than 2025-03-18 | 5 day week, Bank Hols Xmas | 7433515 |
| 6899 | 40200.40300.40600.70700 | **Substructure works (Works up to plinth)** |  | 939.99d | 2025-06-02 | 2028-02-03 |  | 7% | start no earlier than 2025-06-02 | RGA - STRUCTURE | 7803932 |
| 6900 | 40200.40300.40600.70700.162200 | **Civil works (Shell & Core basement)** |  | 188d | 2025-06-02 | 2025-12-09 |  | 84% | start no earlier than 2025-06-02 | RGA - STRUCTURE | 7805332 |
| 6901 | 40200.40300.40600.70700.162200.167900 | **1st Basement** |  | 188d | 2025-06-02 | 2025-12-09 |  | 84% | start no earlier than 2025-06-02 | RGA - STRUCTURE | 7805402 |
| 6902 | 40200.40300.40600.70700.162200.167900.254200 | **RCC Works - Tower area** |  | 133d | 2025-06-02 | 2025-10-14 |  | 100% | start no earlier than 2025-06-02 | RGA - STRUCTURE | 7808212 |
| 6903 | 40200.40300.40600.70700.162200.167900.254200.373400 | **Foundation** |  | 31d | 2025-06-02 | 2025-07-02 |  | 100% | start no earlier than 2025-06-02 | RGA - STRUCTURE | 7810992 |
| 6904 | 40200.40300.40600.70700.162200.167900.254200.373400.532200 | Pocket Excavation |  | 1d | 2025-06-02 | 2025-06-02 | 6897FS+88d | 100% | start no earlier than 2025-06-02 | RGA - STRUCTURE | 7860152 |
| 6905 | 40200.40300.40600.70700.162200.167900.254200.373400.532100 | Footing PCC |  | 4d | 2025-06-03 | 2025-06-17 | 6904 | 100% | start no earlier than 2025-06-03 | RGA - STRUCTURE | 7860162 |
| 6906 | 40200.40300.40600.70700.162200.167900.254200.373400.532000 | Footing / Raft works |  | 10d | 2025-06-18 | 2025-07-02 | 6905 | 100% | start no earlier than 2025-06-18 | RGA - STRUCTURE | 7860172 |
| 6907 | 40200.40300.40600.70700.162200.167900.254200.455600 | **GF Slab** |  | 110d | 2025-06-25 | 2025-10-14 |  | 100% | start no earlier than 2025-06-25 | RGA - STRUCTURE | 7811532 |
| 6908 | 40200.40300.40600.70700.162200.167900.254200.455600.531700 | Columns in Upper basement |  | 25d | 2025-06-25 | 2025-10-14 | 6906 | 100% | start no earlier than 2025-06-25 | RGA - STRUCTURE | 7860182 |
| 6909 | 40200.40300.40600.70700.162200.167900.254200.455600.531600 | Upper Basement slab |  | 13d | 2025-09-02 | 2025-10-14 | 6908FS-41d | 100% | start no earlier than 2025-09-02 | RGA - STRUCTURE | 7860192 |
| 6910 | 40200.40300.40600.70700.162200.167900.990400 | Backfilling |  | 10d | 2025-11-30 | 2025-12-09 |  |  | start no earlier than 2025-11-30 | RGA - STRUCTURE | 7832052 |

Notes:
- 6896: 2 Months for Excavation

| ID | WBS | Task | Duration | Start | Finish | Predecessors | Constraint | Calendar | Unique_Task_ID |
| --- | --- | --- | --- | --- | --- | --- | --- | --- | --- |
| 6911 | 40200.40300.40600.70700.510900 | **Basement Block work and Plaster finishing** | 45d | 2026-10-26 | 2026-12-25 |  | start no earlier than 2026-10-26 | RGA - STRUCTURE | 7812222 |
| 6912 | 40200.40300.40600.70700.510900.854500 | Upper basement | 45d | 2026-10-26 | 2026-12-25 | 7018 |  | RGA - STRUCTURE | 7820222 |
| 6913 | 40200.40300.40600.70700.165900 | **Services** | 405d | 2026-12-25 | 2028-02-03 |  | start no earlier than 2026-12-25 | RGA -FINISHING | 7805322 |
| 6914 | 40200.40300.40600.70700.165900.439000 | **Plumbing** | 90d | 2026-12-25 | 2027-03-25 |  | start no earlier than 2026-12-25 | RGA -FINISHING | 7809242 |
| 6915 | 40200.40300.40600.70700.165900.439000.508300 | **Upper Basement Plumbing** | 90d | 2026-12-25 | 2027-03-25 |  | start no earlier than 2026-12-25 | RGA -FINISHING | 7811912 |
| 6916 | 40200.40300.40600.70700.165900.439000.508300.2474800 | Upper Basement Plumbing | 90d | 2026-12-25 | 2027-03-25 | 6912 |  | RGA -FINISHING | 7848162 |
| 6917 | 40200.40300.40600.70700.165900.439100 | **Fire fighting** | 90d | 2027-03-25 | 2027-06-23 |  | start no earlier than 2027-03-25 | RGA -FINISHING | 7809252 |
| 6918 | 40200.40300.40600.70700.165900.439100.508400 | **Upper Basement Fire fighting** | 90d | 2027-03-25 | 2027-06-23 |  | start no earlier than 2027-03-25 | RGA -FINISHING | 7811902 |
| 6919 | 40200.40300.40600.70700.165900.439100.508400.2474900 | Upper Basement Fire fighting | 90d | 2027-03-25 | 2027-06-23 | 6916 |  | RGA -FINISHING | 7848172 |
| 6920 | 40200.40300.40600.70700.165900.439300 | **Ventilation** | 90d | 2027-06-23 | 2027-09-21 |  | start no earlier than 2027-06-23 | RGA -FINISHING | 7809262 |
| 6921 | 40200.40300.40600.70700.165900.439300.508500 | **Upper Basement ventilation** | 90d | 2027-06-23 | 2027-09-21 |  | start no earlier than 2027-06-23 | RGA -FINISHING | 7811892 |
| 6922 | 40200.40300.40600.70700.165900.439300.508500.2475000 | Upper Basement ventilation | 90d | 2027-06-23 | 2027-09-21 | 6919 |  | RGA -FINISHING | 7848182 |
| 6923 | 40200.40300.40600.70700.165900.441000 | **Electrification** | 90d | 2027-09-21 | 2027-12-20 |  | start no earlier than 2027-09-21 | RGA -FINISHING | 7809272 |
| 6924 | 40200.40300.40600.70700.165900.441000.508600 | **Upper Basement Electrification** | 90d | 2027-09-21 | 2027-12-20 |  | start no earlier than 2027-09-21 | RGA -FINISHING | 7811882 |
| 6925 | 40200.40300.40600.70700.165900.441000.508600.2475100 | Upper Basement Electrification | 90d | 2027-09-21 | 2027-12-20 | 6922 |  | RGA -FINISHING | 7848192 |
| 6926 | 40200.40300.40600.70700.165900.441700 | **Security installations** | 45d | 2027-12-20 | 2028-02-03 |  | start no earlier than 2027-12-20 | RGA -FINISHING | 7809282 |
| 6927 | 40200.40300.40600.70700.165900.441700.508700 | **Upper Basement Security installations** | 45d | 2027-12-20 | 2028-02-03 |  | start no earlier than 2027-12-20 | RGA -FINISHING | 7811872 |
| 6928 | 40200.40300.40600.70700.165900.441700.508700.2475200 | Upper Basement Security installations | 45d | 2027-12-20 | 2028-02-03 | 6925 |  | RGA -FINISHING | 7848202 |
| 6929 | 40200.40300.40600.70700.364200 | **Finishing work** | 135d | 2026-12-25 | 2027-05-09 |  | start no earlier than 2026-12-25 | RGA -FINISHING | 7808672 |
| 6930 | 40200.40300.40600.70700.364200.511900 | **Basement Flooring** | 90d | 2026-12-25 | 2027-03-25 |  | start no earlier than 2026-12-25 | RGA -FINISHING | 7812462 |
| 6931 | 40200.40300.40600.70700.364200.511900.990500 | 1st Basement ventilation | 90d | 2026-12-25 | 2027-03-25 | 6912 |  | RGA -FINISHING | 7832062 |
| 6932 | 40200.40300.40600.70700.364200.511800 | **Basement Painting (1st Coat)** | 45d | 2027-03-25 | 2027-05-09 |  | start no earlier than 2027-03-25 | RGA -FINISHING | 7812472 |
| 6933 | 40200.40300.40600.70700.364200.511800.990600 | 2nd Basement ventilation | 45d | 2027-03-25 | 2027-05-09 | 6931 |  | RGA -FINISHING | 7832072 |
| 6934 | 40200.40300.40600.70700.510800 | **Water Proofing work** | 45d | 2026-12-25 | 2027-02-08 |  | start no earlier than 2026-12-25 | RGA -FINISHING | 7812232 |
| 6935 | 40200.40300.40600.70700.510800.854600 | GF/Stilt Floor | 45d | 2026-12-25 | 2027-02-08 | 6912 |  | RGA -FINISHING | 7820232 |

| ID | WBS | Task | Duration | Start | Finish | Predecessors | Complete | Constraint | Calendar | Unique_Task_ID |
| --- | --- | --- | --- | --- | --- | --- | --- | --- | --- | --- |
| 6936 | 40200.40300.40600.54000 | **Superstructure works** | 906.99d | 2025-09-23 | 2028-04-22 |  | 1% | start no earlier than 2025-09-23 | RGA - STRUCTURE | 7803282 |
| 6937 | 40200.40300.40600.54000.56400 | **Civil works** | 906.99d | 2025-09-23 | 2028-04-22 |  | 1% | start no earlier than 2025-09-23 | RGA - STRUCTURE | 7803322 |
| 6938 | 40200.40300.40600.54000.56400.62200 | **Superstructure RCC Work** | 522.99d | 2025-09-23 | 2027-04-04 |  | 13% | start no earlier than 2025-09-23 | RGA - STRUCTURE | 7803512 |
| 6939 | 40200.40300.40600.54000.56400.62200.63500 | **Slab RCC works** | 479.99d | 2025-09-23 | 2027-02-20 |  | 15% | start no earlier than 2025-09-23 | RGA - STRUCTURE | 7803632 |
| 6940 | 40200.40300.40600.54000.56400.62200.63500.455400 | **1st Floor slab (Height More)** | 56d | 2025-09-23 | 2025-11-19 |  | 100% | start no earlier than 2025-09-23 | RGA - STRUCTURE | 7811542 |
| 6941 | 40200.40300.40600.54000.56400.62200.63500.455400.531500 | Columns | 21d | 2025-09-23 | 2025-11-18 | 6909FS-25d | 100% | start no earlier than 2025-09-23 | RGA - STRUCTURE | 7860202 |
| 6942 | 40200.40300.40600.54000.56400.62200.63500.455400.531400 | Slab Work | 21d | 2025-10-20 | 2025-11-19 | 6941FS-18d | 100% | start no earlier than 2025-10-20 | RGA - STRUCTURE | 7860212 |
| 6943 | 40200.40300.40600.54000.56400.62200.63500.373500 | **2nd Floor slab (Combo Height More)** | 40.99d | 2025-11-03 | 2025-12-13 |  | 72% | start no earlier than 2025-11-03 | RGA - STRUCTURE | 7811002 |
| 6944 | 40200.40300.40600.54000.56400.62200.63500.373500.531300 | Wall rebar & Form work | 15d | 2025-11-03 | 2025-11-18 | 6942FS+2d | 100% | start no earlier than 2025-11-03 | RGA - STRUCTURE | 7860222 |
| 6945 | 40200.40300.40600.54000.56400.62200.63500.373500.531200 | Slab form work & Rebar. | 9d | 2025-11-04 | 2025-11-19 | 6944FS-13d | 100% | start no earlier than 2025-11-04 | RGA - STRUCTURE | 7860232 |
| 6946 | 40200.40300.40600.54000.56400.62200.63500.373500.531100 | Concreting | 26d | 2025-11-05 | 2025-12-13 | 6945FS-13d | 46% | start no earlier than 2025-11-05 | RGA - STRUCTURE | 7860242 |
| 6947 | 40200.40300.40600.54000.56400.62200.63500.455300 | **3rd Floor slab (1stSet Up)** | 30d | 2025-12-13 | 2026-01-12 |  |  | start no earlier than 2025-12-13 | RGA - STRUCTURE | 7811012 |
| 6948 | 40200.40300.40600.54000.56400.62200.63500.455300.2758200 | Wall rebar & Form work | 15d | 2025-12-13 | 2025-12-28 | 6946 |  |  | RGA - STRUCTURE | 7860252 |
| 6949 | 40200.40300.40600.54000.56400.62200.63500.455300.2758300 | Slab form work & Rebar. | 14d | 2025-12-28 | 2026-01-11 | 6948 |  |  | RGA - STRUCTURE | 7860262 |
| 6950 | 40200.40300.40600.54000.56400.62200.63500.455300.2758400 | Concreting | 1d | 2026-01-11 | 2026-01-12 | 6949 |  |  | RGA - STRUCTURE | 7860272 |
| 6951 | 40200.40300.40600.54000.56400.62200.63500.455200 | **4th Floor slab (2nd Set Up)** | 21d | 2026-01-12 | 2026-02-03 |  |  | start no earlier than 2026-01-12 | RGA - STRUCTURE | 7811022 |
| 6952 | 40200.40300.40600.54000.56400.62200.63500.455200.2758500 | Wall rebar & Form work | 10d | 2026-01-12 | 2026-01-22 | 6950 |  |  | RGA - STRUCTURE | 7860282 |
| 6953 | 40200.40300.40600.54000.56400.62200.63500.455200.2758600 | Slab form work & Rebar. | 10d | 2026-01-22 | 2026-02-02 | 6952 |  |  | RGA - STRUCTURE | 7860292 |
| 6954 | 40200.40300.40600.54000.56400.62200.63500.455200.2758700 | Concreting | 1d | 2026-02-02 | 2026-02-03 | 6953 |  |  | RGA - STRUCTURE | 7860302 |
| 6955 | 40200.40300.40600.54000.56400.62200.63500.455100 | **5th Floor slab** | 13d | 2026-02-03 | 2026-02-16 |  |  | start no earlier than 2026-02-03 | RGA - STRUCTURE | 7811032 |
| 6956 | 40200.40300.40600.54000.56400.62200.63500.455100.2758800 | Wall rebar & Form work | 6d | 2026-02-03 | 2026-02-09 | 6954 |  |  | RGA - STRUCTURE | 7860312 |
| 6957 | 40200.40300.40600.54000.56400.62200.63500.455100.2758900 | Slab form work & Rebar. | 6d | 2026-02-09 | 2026-02-15 | 6956 |  |  | RGA -FINISHING | 7860322 |
| 6958 | 40200.40300.40600.54000.56400.62200.63500.455100.2759000 | Concreting | 1d | 2026-02-15 | 2026-02-16 | 6957 |  |  | RGA - STRUCTURE | 7860332 |
| 6959 | 40200.40300.40600.54000.56400.62200.63500.455000 | **6th Floor slab** | 13d | 2026-02-16 | 2026-03-01 |  |  | start no earlier than 2026-02-16 | RGA - STRUCTURE | 7811042 |
| 6960 | 40200.40300.40600.54000.56400.62200.63500.455000.2759100 | Wall rebar & Form work | 6d | 2026-02-16 | 2026-02-22 | 6958 |  |  | RGA - STRUCTURE | 7860342 |
| 6961 | 40200.40300.40600.54000.56400.62200.63500.455000.2759200 | Slab form work & Rebar. | 6d | 2026-02-22 | 2026-02-28 | 6960 |  |  | RGA - STRUCTURE | 7860352 |
| 6962 | 40200.40300.40600.54000.56400.62200.63500.455000.2759300 | Concreting | 1d | 2026-02-28 | 2026-03-01 | 6961 |  |  | RGA - STRUCTURE | 7860362 |

Notes:
- 6943: AVg Slab Cycle of 21 days
- 6947: AVg Slab Cycle of 21 days
- 6951: AVg Slab Cycle of 21 days

| ID | WBS | Task | Duration | Start | Finish | Predecessors | Constraint | Calendar | Unique_Task_ID |
| --- | --- | --- | --- | --- | --- | --- | --- | --- | --- |
| 6963 | 40200.40300.40600.54000.56400.62200.63500.454900 | **7th Floor slab** | 13d | 2026-03-01 | 2026-03-14 |  | start no earlier than 2026-03-01 | RGA - STRUCTURE | 7811052 |
| 6964 | 40200.40300.40600.54000.56400.62200.63500.454900.2759400 | Wall rebar & Form work | 6d | 2026-03-01 | 2026-03-07 | 6962 |  | RGA - STRUCTURE | 7860372 |
| 6965 | 40200.40300.40600.54000.56400.62200.63500.454900.2759500 | Slab form work & Rebar. | 6d | 2026-03-07 | 2026-03-13 | 6964 |  | RGA - STRUCTURE | 7860382 |
| 6966 | 40200.40300.40600.54000.56400.62200.63500.454900.2759600 | Concreting | 1d | 2026-03-13 | 2026-03-14 | 6965 |  | RGA - STRUCTURE | 7860392 |
| 6967 | 40200.40300.40600.54000.56400.62200.63500.454800 | **8th Floor slab** | 13d | 2026-03-14 | 2026-03-27 |  | start no earlier than 2026-03-14 | RGA - STRUCTURE | 7811062 |
| 6968 | 40200.40300.40600.54000.56400.62200.63500.454800.2759700 | Wall rebar & Form work | 6d | 2026-03-14 | 2026-03-20 | 6966 |  | RGA - STRUCTURE | 7860402 |
| 6969 | 40200.40300.40600.54000.56400.62200.63500.454800.2759800 | Slab form work & Rebar. | 6d | 2026-03-20 | 2026-03-26 | 6968 |  | RGA - STRUCTURE | 7860412 |
| 6970 | 40200.40300.40600.54000.56400.62200.63500.454800.2759900 | Concreting | 1d | 2026-03-26 | 2026-03-27 | 6969 |  | RGA - STRUCTURE | 7860422 |
| 6971 | 40200.40300.40600.54000.56400.62200.63500.454700 | **9th Floor slab** | 13d | 2026-03-27 | 2026-04-09 |  | start no earlier than 2026-03-27 | RGA - STRUCTURE | 7811072 |
| 6972 | 40200.40300.40600.54000.56400.62200.63500.454700.2760000 | Wall rebar & Form work | 6d | 2026-03-27 | 2026-04-02 | 6970 |  | RGA - STRUCTURE | 7860432 |
| 6973 | 40200.40300.40600.54000.56400.62200.63500.454700.2760100 | Slab form work & Rebar. | 6d | 2026-04-02 | 2026-04-08 | 6972 |  | RGA - STRUCTURE | 7860442 |
| 6974 | 40200.40300.40600.54000.56400.62200.63500.454700.2760200 | Concreting | 1d | 2026-04-08 | 2026-04-09 | 6973 |  | RGA - STRUCTURE | 7860452 |
| 6975 | 40200.40300.40600.54000.56400.62200.63500.454600 | **10th Floor slab** | 13d | 2026-04-09 | 2026-04-22 |  | start no earlier than 2026-04-09 | RGA - STRUCTURE | 7811082 |
| 6976 | 40200.40300.40600.54000.56400.62200.63500.454600.2760300 | Wall rebar & Form work | 6d | 2026-04-09 | 2026-04-15 | 6974 |  | RGA - STRUCTURE | 7860462 |
| 6977 | 40200.40300.40600.54000.56400.62200.63500.454600.2760400 | Slab form work & Rebar. | 6d | 2026-04-15 | 2026-04-21 | 6976 |  | RGA - STRUCTURE | 7860472 |
| 6978 | 40200.40300.40600.54000.56400.62200.63500.454600.2760500 | Concreting | 1d | 2026-04-21 | 2026-04-22 | 6977 |  | RGA - STRUCTURE | 7860482 |
| 6979 | 40200.40300.40600.54000.56400.62200.63500.454500 | **11th Floor slab** | 17d | 2026-04-22 | 2026-05-10 |  | start no earlier than 2026-04-22 | RGA - STRUCTURE | 7811092 |
| 6980 | 40200.40300.40600.54000.56400.62200.63500.454500.2760600 | Wall rebar & Form work | 8d | 2026-04-22 | 2026-04-30 | 6978 |  | RGA - STRUCTURE | 7860492 |
| 6981 | 40200.40300.40600.54000.56400.62200.63500.454500.2760700 | Slab form work & Rebar. | 8d | 2026-04-30 | 2026-05-09 | 6980 |  | RGA - STRUCTURE | 7860502 |
| 6982 | 40200.40300.40600.54000.56400.62200.63500.454500.2760800 | Concreting | 1d | 2026-05-09 | 2026-05-10 | 6981 |  | RGA - STRUCTURE | 7860512 |
| 6983 | 40200.40300.40600.54000.56400.62200.63500.454400 | **12th Floor slab** | 17d | 2026-05-10 | 2026-05-27 |  | start no earlier than 2026-05-10 | RGA - STRUCTURE | 7811102 |
| 6984 | 40200.40300.40600.54000.56400.62200.63500.454400.2760900 | Wall rebar & Form work | 8d | 2026-05-10 | 2026-05-18 | 6982 |  | RGA - STRUCTURE | 7860522 |
| 6985 | 40200.40300.40600.54000.56400.62200.63500.454400.2761000 | Slab form work & Rebar. | 8d | 2026-05-18 | 2026-05-26 | 6984 |  | RGA - STRUCTURE | 7860532 |
| 6986 | 40200.40300.40600.54000.56400.62200.63500.454400.2761100 | Concreting | 1d | 2026-05-26 | 2026-05-27 | 6985 |  | RGA - STRUCTURE | 7860542 |

Notes:
- 6983: AVg Slab Cycle of 21 days

| ID | WBS | Task | Duration | Start | Finish | Predecessors | Constraint | Calendar | Unique_Task_ID |
| --- | --- | --- | --- | --- | --- | --- | --- | --- | --- |
| 6987 | 40200.40300.40600.54000.56400.62200.63500.454300 | **13th Floor slab** | 17d | 2026-05-27 | 2026-06-13 |  | start no earlier than 2026-05-27 | RGA - STRUCTURE | 7811112 |
| 6988 | 40200.40300.40600.54000.56400.62200.63500.454300.2761200 | Wall rebar & Form work | 8d | 2026-05-27 | 2026-06-04 | 6986 |  | RGA - STRUCTURE | 7860552 |
| 6989 | 40200.40300.40600.54000.56400.62200.63500.454300.2761300 | Slab form work & Rebar. | 8d | 2026-06-04 | 2026-06-12 | 6988 |  | RGA - STRUCTURE | 7860562 |
| 6990 | 40200.40300.40600.54000.56400.62200.63500.454300.2761400 | Concreting | 1d | 2026-06-12 | 2026-06-13 | 6989 |  | RGA - STRUCTURE | 7860572 |
| 6991 | 40200.40300.40600.54000.56400.62200.63500.454200 | **14th Floor slab** | 17d | 2026-06-13 | 2026-07-15 |  | start no earlier than 2026-06-13 | RGA - STRUCTURE | 7811122 |
| 6992 | 40200.40300.40600.54000.56400.62200.63500.454200.2761500 | Wall rebar & Form work | 8d | 2026-06-13 | 2026-06-27 | 6990 |  | RGA - STRUCTURE | 7860582 |
| 6993 | 40200.40300.40600.54000.56400.62200.63500.454200.2761600 | Slab form work & Rebar. | 8d | 2026-06-27 | 2026-07-13 | 6992 |  | RGA - STRUCTURE | 7860592 |
| 6994 | 40200.40300.40600.54000.56400.62200.63500.454200.2761700 | Concreting | 1d | 2026-07-13 | 2026-07-15 | 6993 |  | RGA - STRUCTURE | 7860602 |
| 6995 | 40200.40300.40600.54000.56400.62200.63500.454100 | **15th Floor slab** | 17d | 2026-07-15 | 2026-08-01 |  | start no earlier than 2026-07-15 | RGA - STRUCTURE | 7811132 |
| 6996 | 40200.40300.40600.54000.56400.62200.63500.454100.2761800 | Wall rebar & Form work | 8d | 2026-07-15 | 2026-07-23 | 6994 |  | RGA - STRUCTURE | 7860612 |
| 6997 | 40200.40300.40600.54000.56400.62200.63500.454100.2761900 | Slab form work & Rebar. | 8d | 2026-07-23 | 2026-07-31 | 6996 |  | RGA - STRUCTURE | 7860622 |
| 6998 | 40200.40300.40600.54000.56400.62200.63500.454100.2762000 | Concreting | 1d | 2026-07-31 | 2026-08-01 | 6997 |  | RGA - STRUCTURE | 7860632 |
| 6999 | 40200.40300.40600.54000.56400.62200.63500.454000 | **16th Floor slab** | 17d | 2026-08-01 | 2026-08-19 |  | start no earlier than 2026-08-01 | RGA - STRUCTURE | 7811142 |
| 7000 | 40200.40300.40600.54000.56400.62200.63500.454000.2762100 | Wall rebar & Form work | 8d | 2026-08-01 | 2026-08-09 | 6998 |  | RGA - STRUCTURE | 7860642 |
| 7001 | 40200.40300.40600.54000.56400.62200.63500.454000.2762200 | Slab form work & Rebar. | 8d | 2026-08-09 | 2026-08-18 | 7000 |  | RGA - STRUCTURE | 7860652 |
| 7002 | 40200.40300.40600.54000.56400.62200.63500.454000.2762300 | Concreting | 1d | 2026-08-18 | 2026-08-19 | 7001 |  | RGA - STRUCTURE | 7860662 |
| 7003 | 40200.40300.40600.54000.56400.62200.63500.453900 | **17th Floor slab** | 17d | 2026-08-19 | 2026-09-05 |  | start no earlier than 2026-08-19 | RGA - STRUCTURE | 7811152 |
| 7004 | 40200.40300.40600.54000.56400.62200.63500.453900.2762400 | Wall rebar & Form work | 8d | 2026-08-19 | 2026-08-27 | 7002 |  | RGA - STRUCTURE | 7860672 |
| 7005 | 40200.40300.40600.54000.56400.62200.63500.453900.2762500 | Slab form work & Rebar. | 8d | 2026-08-27 | 2026-09-04 | 7004 |  | RGA - STRUCTURE | 7860682 |
| 7006 | 40200.40300.40600.54000.56400.62200.63500.453900.2762600 | Concreting | 1d | 2026-09-04 | 2026-09-05 | 7005 |  | RGA - STRUCTURE | 7860692 |
| 7007 | 40200.40300.40600.54000.56400.62200.63500.453800 | **18th Floor slab** | 17d | 2026-09-04 | 2026-09-21 |  | start no earlier than 2026-09-04 | RGA - STRUCTURE | 7811162 |
| 7008 | 40200.40300.40600.54000.56400.62200.63500.453800.2762700 | Wall rebar & Form work | 8d | 2026-09-04 | 2026-09-12 | 7005 |  | RGA - STRUCTURE | 7860702 |
| 7009 | 40200.40300.40600.54000.56400.62200.63500.453800.2762800 | Slab form work & Rebar. | 8d | 2026-09-12 | 2026-09-20 | 7008 |  | RGA - STRUCTURE | 7860712 |
| 7010 | 40200.40300.40600.54000.56400.62200.63500.453800.2762900 | Concreting | 1d | 2026-09-20 | 2026-09-21 | 7009 |  | RGA - STRUCTURE | 7860722 |

Notes:
- 6987: AVg Slab Cycle of 21 days
- 6991: AVg Slab Cycle of 21 days

| ID | WBS | Task | Duration | Start | Finish | Predecessors | Constraint | Calendar | Unique_Task_ID |
| --- | --- | --- | --- | --- | --- | --- | --- | --- | --- |
| 7011 | 40200.40300.40600.54000.56400.62200.63500.453700 | **19th Floor slab** | 17d | 2026-09-21 | 2026-10-09 |  | start no earlier than 2026-09-21 | RGA - STRUCTURE | 7811172 |
| 7012 | 40200.40300.40600.54000.56400.62200.63500.453700.2763000 | Wall rebar & Form work | 8d | 2026-09-21 | 2026-09-29 | 7010 |  | RGA - STRUCTURE | 7860732 |
| 7013 | 40200.40300.40600.54000.56400.62200.63500.453700.2763100 | Slab form work & Rebar. | 8d | 2026-09-29 | 2026-10-08 | 7012 |  | RGA - STRUCTURE | 7860742 |
| 7014 | 40200.40300.40600.54000.56400.62200.63500.453700.2763200 | Concreting | 1d | 2026-10-08 | 2026-10-09 | 7013 |  | RGA - STRUCTURE | 7860752 |
| 7015 | 40200.40300.40600.54000.56400.62200.63500.453600 | **20th Floor slab ( Refuge Floor )** | 17d | 2026-10-09 | 2026-10-26 |  | start no earlier than 2026-10-09 | RGA - STRUCTURE | 7811182 |
| 7016 | 40200.40300.40600.54000.56400.62200.63500.453600.2763300 | Wall rebar & Form work | 8d | 2026-10-09 | 2026-10-17 | 7014 |  | RGA - STRUCTURE | 7860762 |
| 7017 | 40200.40300.40600.54000.56400.62200.63500.453600.2763400 | Slab form work & Rebar. | 8d | 2026-10-17 | 2026-10-25 | 7016 |  | RGA - STRUCTURE | 7860772 |
| 7018 | 40200.40300.40600.54000.56400.62200.63500.453600.2763500 | Concreting | 1d | 2026-10-25 | 2026-10-26 | 7017 |  | RGA - STRUCTURE | 7860782 |
| 7019 | 40200.40300.40600.54000.56400.62200.63500.453500 | **21st Floor slab** | 17d | 2026-10-26 | 2026-11-12 |  | start no earlier than 2026-10-26 | RGA - STRUCTURE | 7811192 |
| 7020 | 40200.40300.40600.54000.56400.62200.63500.453500.2763600 | Wall rebar & Form work | 8d | 2026-10-26 | 2026-11-03 | 7018 |  | RGA - STRUCTURE | 7860792 |
| 7021 | 40200.40300.40600.54000.56400.62200.63500.453500.2763700 | Slab form work & Rebar. | 8d | 2026-11-03 | 2026-11-11 | 7020 |  | RGA - STRUCTURE | 7860802 |
| 7022 | 40200.40300.40600.54000.56400.62200.63500.453500.2763800 | Concreting | 1d | 2026-11-11 | 2026-11-12 | 7021 |  | RGA - STRUCTURE | 7860812 |
| 7023 | 40200.40300.40600.54000.56400.62200.63500.453400 | **22nd Floor slab** | 17d | 2026-11-12 | 2026-12-13 |  | start no earlier than 2026-11-12 | RGA - STRUCTURE | 7811202 |
| 7024 | 40200.40300.40600.54000.56400.62200.63500.453400.2763900 | Wall rebar & Form work | 8d | 2026-11-12 | 2026-11-25 | 7022 |  | RGA - STRUCTURE | 7860822 |
| 7025 | 40200.40300.40600.54000.56400.62200.63500.453400.2764000 | Slab form work & Rebar. | 8d | 2026-11-25 | 2026-12-11 | 7024 |  | RGA - STRUCTURE | 7860832 |
| 7026 | 40200.40300.40600.54000.56400.62200.63500.453400.2764100 | Concreting | 1d | 2026-12-11 | 2026-12-13 | 7025 |  | RGA - STRUCTURE | 7860842 |
| 7027 | 40200.40300.40600.54000.56400.62200.63500.453300 | **23rd Floor slab** | 17d | 2026-12-13 | 2026-12-31 |  | start no earlier than 2026-12-13 | RGA - STRUCTURE | 7811212 |
| 7028 | 40200.40300.40600.54000.56400.62200.63500.453300.2764200 | Wall rebar & Form work | 8d | 2026-12-13 | 2026-12-22 | 7026 |  | RGA - STRUCTURE | 7860852 |
| 7029 | 40200.40300.40600.54000.56400.62200.63500.453300.2764300 | Slab form work & Rebar. | 8d | 2026-12-22 | 2026-12-30 | 7028 |  | RGA - STRUCTURE | 7860862 |
| 7030 | 40200.40300.40600.54000.56400.62200.63500.453300.2764400 | Concreting | 1d | 2026-12-30 | 2026-12-31 | 7029 |  | RGA - STRUCTURE | 7860872 |
| 7031 | 40200.40300.40600.54000.56400.62200.63500.453200 | **24th Floor slab** | 17d | 2026-12-31 | 2027-01-17 |  | start no earlier than 2026-12-31 | RGA - STRUCTURE | 7811222 |
| 7032 | 40200.40300.40600.54000.56400.62200.63500.453200.2764500 | Wall rebar & Form work | 8d | 2026-12-31 | 2027-01-08 | 7030 |  | RGA - STRUCTURE | 7860882 |
| 7033 | 40200.40300.40600.54000.56400.62200.63500.453200.2764600 | Slab form work & Rebar. | 8d | 2027-01-08 | 2027-01-16 | 7032 |  | RGA - STRUCTURE | 7860892 |
| 7034 | 40200.40300.40600.54000.56400.62200.63500.453200.2764700 | Concreting | 1d | 2027-01-16 | 2027-01-17 | 7033 |  | RGA - STRUCTURE | 7860902 |

| ID | WBS | Task | Duration | Start | Finish | Predecessors | Constraint | Calendar | Unique_Task_ID |
| --- | --- | --- | --- | --- | --- | --- | --- | --- | --- |
| 7035 | 40200.40300.40600.54000.56400.62200.63500.453100 | **25th Floor slab** | 17d | 2027-01-17 | 2027-02-03 |  | start no earlier than 2027-01-17 | RGA - STRUCTURE | 7811232 |
| 7036 | 40200.40300.40600.54000.56400.62200.63500.453100.2764800 | Wall rebar & Form work | 8d | 2027-01-17 | 2027-01-25 | 7034 |  | RGA - STRUCTURE | 7860912 |
| 7037 | 40200.40300.40600.54000.56400.62200.63500.453100.2764900 | Slab form work & Rebar. | 8d | 2027-01-25 | 2027-02-02 | 7036 |  | RGA - STRUCTURE | 7860922 |
| 7038 | 40200.40300.40600.54000.56400.62200.63500.453100.2765000 | Concreting | 1d | 2027-02-02 | 2027-02-03 | 7037 |  | RGA - STRUCTURE | 7860932 |
| 7039 | 40200.40300.40600.54000.56400.62200.63500.453000 | **Terrace Floor slab work** | 17d | 2027-02-03 | 2027-02-20 |  | start no earlier than 2027-02-03 | RGA - STRUCTURE | 7811262 |
| 7040 | 40200.40300.40600.54000.56400.62200.63500.453000.2765100 | Wall rebar & Form work | 8d | 2027-02-03 | 2027-02-11 | 7038 |  | RGA - STRUCTURE | 7861002 |
| 7041 | 40200.40300.40600.54000.56400.62200.63500.453000.2765200 | Slab form work & Rebar. | 8d | 2027-02-11 | 2027-02-19 | 7040 |  | RGA - STRUCTURE | 7861012 |
| 7042 | 40200.40300.40600.54000.56400.62200.63500.453000.2765300 | Concreting | 1d | 2027-02-19 | 2027-02-20 | 7041 |  | RGA - STRUCTURE | 7861022 |
| 7043 | 40200.40300.40600.54000.56400.62200.254300 | **RCC work above Terrace** | 43d | 2027-02-20 | 2027-04-04 |  | start no earlier than 2027-02-20 | RGA - STRUCTURE | 7807002 |
| 7044 | 40200.40300.40600.54000.56400.62200.254300.373600 | **STAIRCASE & OHT CORE** | 39d | 2027-02-20 | 2027-03-31 |  | start no earlier than 2027-02-20 | RGA - STRUCTURE | 7808472 |
| 7045 | 40200.40300.40600.54000.56400.62200.254300.373600.2765400 | STAIRCASE HEAD ROOM | 10d | 2027-02-20 | 2027-03-02 | 7042 |  | RGA - STRUCTURE | 7861032 |
| 7046 | 40200.40300.40600.54000.56400.62200.254300.373600.2765500 | OHT | 15d | 2027-03-02 | 2027-03-17 | 7045 |  | RGA - STRUCTURE | 7861042 |
| 7047 | 40200.40300.40600.54000.56400.62200.254300.373600.2765600 | SHAFT COVERING SLAB | 10d | 2027-02-20 | 2027-03-02 | 7042 |  | RGA - STRUCTURE | 7861052 |
| 7048 | 40200.40300.40600.54000.56400.62200.254300.373600.2765700 | DESHUTTERING OF OHT TOP SLAB | 7d | 2027-03-24 | 2027-03-31 | 7046FS+7d |  | RGA - STRUCTURE | 7861062 |
| 7049 | 40200.40300.40600.54000.56400.62200.254300.452900 | **LMR BOTTOM & TOP SLAB** | 43d | 2027-02-20 | 2027-04-04 |  | start no earlier than 2027-02-20 | RGA - STRUCTURE | 7811272 |
| 7050 | 40200.40300.40600.54000.56400.62200.254300.452900.2765800 | LMR COLUMNS / WALLS | 15d | 2027-02-20 | 2027-03-07 | 7042 |  | RGA - STRUCTURE | 7861072 |
| 7051 | 40200.40300.40600.54000.56400.62200.254300.452900.2765900 | LMR TOP SLAB | 20d | 2027-03-07 | 2027-03-27 | 7050 |  | RGA - STRUCTURE | 7861082 |
| 7052 | 40200.40300.40600.54000.56400.62200.254300.452900.2766000 | DESHUTTERING | 8d | 2027-03-27 | 2027-04-04 | 7051 |  | RGA - STRUCTURE | 7861092 |
| 7053 | 40200.40300.40600.54000.56400.59600 | **Civil Finishing works (Brick work, Plaster,conduiting, concled plumbing, waterproofing)** | 709.99d | 2025-11-30 | 2027-11-09 |  | start no earlier than 2025-11-30 | RGA -FINISHING | 7421275 |
| 7054 | 40200.40300.40600.54000.56400.59600.61400 | **Flat finishing works** | 584.99d | 2025-11-30 | 2027-07-07 |  | start no earlier than 2025-11-30 | RGA -FINISHING | 7421295 |
| 7055 | 40200.40300.40600.54000.56400.59600.61400.278600 | **Ground FLOOR** | 487.99d | 2025-11-30 | 2027-04-01 |  | start no earlier than 2025-11-30 | RGA -FINISHING | 7422335 |
| 7056 | 40200.40300.40600.54000.56400.59600.61400.278600.2766100 | BALCONY RAILING FIXING | 9d | 2025-11-30 | 2025-12-08 | 6946FS-28.98d |  | RGA -FINISHING | 7429135 |
| 7057 | 40200.40300.40600.54000.56400.59600.61400.278600.2766200 | Block work | 8d | 2026-03-17 | 2026-03-24 | 7061 |  | RGA -FINISHING | 7429145 |
| 7058 | 40200.40300.40600.54000.56400.59600.61400.278600.2766300 | CONCEALED ELEC CONDUITING & ITS FINISHING | 5d | 2027-03-27 | 2027-04-01 | 6938FS-8d |  | RGA -FINISHING | 7429155 |
| 7059 | 40200.40300.40600.54000.56400.59600.61400.278600.2766400 | PLASTER APPLICATION | 6d | 2026-02-23 | 2026-02-28 | 7237FS+70d |  | RGA -FINISHING | 7429165 |
| 7060 | 40200.40300.40600.54000.56400.59600.61400.278600.2766500 | CONCEALED PLUMBING | 8d | 2026-03-01 | 2026-03-08 | 7059 |  | RGA -FINISHING | 7429175 |
| 7061 | 40200.40300.40600.54000.56400.59600.61400.278600.2766600 | WATERPROOFING WORK FOR TOILETS, KITCHEN SUNK & PLANTERS | 8d | 2026-03-09 | 2026-03-16 | 7060 |  | RGA -FINISHING | 7429185 |

Notes:
- 7039: AVg Slab Cycle of 21 days

| ID | WBS | Task | Duration | Start | Finish | Predecessors | Constraint | Calendar | Unique_Task_ID |
| --- | --- | --- | --- | --- | --- | --- | --- | --- | --- |
| 7062 | 40200.40300.40600.54000.56400.59600.61400.278700 | **1ST FLOOR** | 168.99d | 2025-11-30 | 2026-05-17 |  | start no earlier than 2025-11-30 | RGA -FINISHING | 7422325 |
| 7063 | 40200.40300.40600.54000.56400.59600.61400.278700.2766700 | BALCONY RAILING FIXING | 9d | 2026-01-22 | 2026-01-31 | 6950FS+10d |  | RGA -FINISHING | 7429195 |
| 7064 | 40200.40300.40600.54000.56400.59600.61400.278700.2766800 | Block work | 8d | 2026-05-09 | 2026-05-17 | 7068 |  | RGA -FINISHING | 7429205 |
| 7065 | 40200.40300.40600.54000.56400.59600.61400.278700.2766900 | CONCEALED ELEC CONDUITING & ITS FINISHING | 5d | 2025-11-30 | 2025-12-04 | 6942FS-7d |  | RGA -FINISHING | 7429215 |
| 7066 | 40200.40300.40600.54000.56400.59600.61400.278700.2767000 | PLASTER APPLICATION | 6d | 2026-04-17 | 2026-04-23 | 7250FS+70d |  | RGA -FINISHING | 7429225 |
| 7067 | 40200.40300.40600.54000.56400.59600.61400.278700.2767100 | CONCEALED PLUMBING | 8d | 2026-04-23 | 2026-05-01 | 7066 |  | RGA -FINISHING | 7429235 |
| 7068 | 40200.40300.40600.54000.56400.59600.61400.278700.2767200 | WATERPROOFING WORK FOR TOILETS, KITCHEN SUNK & PLANTERS | 8d | 2026-05-01 | 2026-05-09 | 7067 |  | RGA -FINISHING | 7429245 |
| 7069 | 40200.40300.40600.54000.56400.59600.61400.278800 | **2nd FLOOR** | 140.99d | 2025-11-30 | 2026-04-19 |  | start no earlier than 2025-11-30 | RGA -FINISHING | 7422315 |
| 7070 | 40200.40300.40600.54000.56400.59600.61400.278800.2767300 | BALCONY RAILING FIXING | 9d | 2026-02-13 | 2026-02-22 | 6954FS+10d |  | RGA -FINISHING | 7429255 |
| 7071 | 40200.40300.40600.54000.56400.59600.61400.278800.2767400 | Block work | 8d | 2026-04-11 | 2026-04-19 | 7075 |  | RGA -FINISHING | 7429265 |
| 7072 | 40200.40300.40600.54000.56400.59600.61400.278800.2767500 | CONCEALED ELEC CONDUITING & ITS FINISHING | 5d | 2025-11-30 | 2025-12-04 | 6946FS-44.99d |  | RGA -FINISHING | 7429275 |
| 7073 | 40200.40300.40600.54000.56400.59600.61400.278800.2767600 | PLASTER APPLICATION | 6d | 2026-03-20 | 2026-03-26 | 7263FS+20d |  | RGA -FINISHING | 7429285 |
| 7074 | 40200.40300.40600.54000.56400.59600.61400.278800.2767700 | CONCEALED PLUMBING | 8d | 2026-03-26 | 2026-04-03 | 7073 |  | RGA -FINISHING | 7429295 |
| 7075 | 40200.40300.40600.54000.56400.59600.61400.278800.2767800 | WATERPROOFING WORK FOR TOILETS, KITCHEN SUNK & PLANTERS | 8d | 2026-04-03 | 2026-04-11 | 7074 |  | RGA -FINISHING | 7429305 |
| 7076 | 40200.40300.40600.54000.56400.59600.61400.278900 | **3rd FLOOR** | 117d | 2026-01-05 | 2026-05-02 |  | start no earlier than 2026-01-05 | RGA -FINISHING | 7422305 |
| 7077 | 40200.40300.40600.54000.56400.59600.61400.278900.2767900 | BALCONY RAILING FIXING | 9d | 2026-02-26 | 2026-03-07 | 6958FS+10d |  | RGA -FINISHING | 7429315 |
| 7078 | 40200.40300.40600.54000.56400.59600.61400.278900.2768000 | Block work | 8d | 2026-04-24 | 2026-05-02 | 7082 |  | RGA -FINISHING | 7429325 |
| 7079 | 40200.40300.40600.54000.56400.59600.61400.278900.2768100 | CONCEALED ELEC CONDUITING & ITS FINISHING | 5d | 2026-01-05 | 2026-01-10 | 6950FS-7d |  | RGA -FINISHING | 7429335 |
| 7080 | 40200.40300.40600.54000.56400.59600.61400.278900.2768200 | PLASTER APPLICATION | 6d | 2026-04-02 | 2026-04-08 | 7276FS+20d |  | RGA -FINISHING | 7429345 |
| 7081 | 40200.40300.40600.54000.56400.59600.61400.278900.2768300 | CONCEALED PLUMBING | 8d | 2026-04-08 | 2026-04-16 | 7080 |  | RGA -FINISHING | 7429355 |
| 7082 | 40200.40300.40600.54000.56400.59600.61400.278900.2768400 | WATERPROOFING WORK FOR TOILETS, KITCHEN SUNK & PLANTERS | 8d | 2026-04-16 | 2026-04-24 | 7081 |  | RGA -FINISHING | 7429365 |
| 7083 | 40200.40300.40600.54000.56400.59600.61400.279000 | **4th FLOOR** | 108d | 2026-01-27 | 2026-05-15 |  | start no earlier than 2026-01-27 | RGA -FINISHING | 7422295 |
| 7084 | 40200.40300.40600.54000.56400.59600.61400.279000.2768500 | BALCONY RAILING FIXING | 9d | 2026-03-11 | 2026-03-20 | 6962FS+10d |  | RGA -FINISHING | 7429375 |
| 7085 | 40200.40300.40600.54000.56400.59600.61400.279000.2768600 | Block work | 8d | 2026-05-07 | 2026-05-15 | 7089 |  | RGA -FINISHING | 7429385 |
| 7086 | 40200.40300.40600.54000.56400.59600.61400.279000.2768700 | CONCEALED ELEC CONDUITING & ITS FINISHING | 5d | 2026-01-27 | 2026-02-01 | 6954FS-7d |  | RGA -FINISHING | 7429395 |
| 7087 | 40200.40300.40600.54000.56400.59600.61400.279000.2768800 | PLASTER APPLICATION | 6d | 2026-04-15 | 2026-04-21 | 7289FS+20d |  | RGA -FINISHING | 7429405 |
| 7088 | 40200.40300.40600.54000.56400.59600.61400.279000.2768900 | CONCEALED PLUMBING | 8d | 2026-04-21 | 2026-04-29 | 7087 |  | RGA -FINISHING | 7429415 |
| 7089 | 40200.40300.40600.54000.56400.59600.61400.279000.2769000 | WATERPROOFING WORK FOR TOILETS, KITCHEN SUNK & PLANTERS | 8d | 2026-04-29 | 2026-05-07 | 7088 |  | RGA -FINISHING | 7429425 |

| ID | WBS | Task | Duration | Start | Finish | Predecessors | Constraint | Calendar | Unique_Task_ID |
| --- | --- | --- | --- | --- | --- | --- | --- | --- | --- |
| 7090 | 40200.40300.40600.54000.56400.59600.61400.279100 | **5th FLOOR** | 95d | 2026-02-09 | 2026-05-15 |  | start no earlier than 2026-02-09 | RGA -FINISHING | 7422285 |
| 7091 | 40200.40300.40600.54000.56400.59600.61400.279100.2769100 | BALCONY RAILING FIXING | 9d | 2026-03-24 | 2026-04-02 | 6966FS+10d |  | RGA -FINISHING | 7429435 |
| 7092 | 40200.40300.40600.54000.56400.59600.61400.279100.2769200 | Block work | 8d | 2026-05-07 | 2026-05-15 | 7096 |  | RGA -FINISHING | 7429445 |
| 7093 | 40200.40300.40600.54000.56400.59600.61400.279100.2769300 | CONCEALED ELEC CONDUITING & ITS FINISHING | 5d | 2026-02-09 | 2026-02-14 | 6958FS-7d |  | RGA -FINISHING | 7429455 |
| 7094 | 40200.40300.40600.54000.56400.59600.61400.279100.2769400 | PLASTER APPLICATION | 6d | 2026-04-15 | 2026-04-21 | 7289FS+20d |  | RGA -FINISHING | 7429465 |
| 7095 | 40200.40300.40600.54000.56400.59600.61400.279100.2769500 | CONCEALED PLUMBING | 8d | 2026-04-21 | 2026-04-29 | 7094 |  | RGA -FINISHING | 7429475 |
| 7096 | 40200.40300.40600.54000.56400.59600.61400.279100.2769600 | WATERPROOFING WORK FOR TOILETS, KITCHEN SUNK & PLANTERS | 8d | 2026-04-29 | 2026-05-07 | 7095 |  | RGA -FINISHING | 7429485 |
| 7097 | 40200.40300.40600.54000.56400.59600.61400.279200 | **6th FLOOR** | 95d | 2026-02-22 | 2026-05-28 |  | start no earlier than 2026-02-22 | RGA -FINISHING | 7422275 |
| 7098 | 40200.40300.40600.54000.56400.59600.61400.279200.2769700 | BALCONY RAILING FIXING | 9d | 2026-04-06 | 2026-04-15 | 6970FS+10d |  | RGA -FINISHING | 7429495 |
| 7099 | 40200.40300.40600.54000.56400.59600.61400.279200.2769800 | Block work | 8d | 2026-05-20 | 2026-05-28 | 7103 |  | RGA -FINISHING | 7429505 |
| 7100 | 40200.40300.40600.54000.56400.59600.61400.279200.2769900 | CONCEALED ELEC CONDUITING & ITS FINISHING | 5d | 2026-02-22 | 2026-02-27 | 6962FS-7d |  | RGA -FINISHING | 7429515 |
| 7101 | 40200.40300.40600.54000.56400.59600.61400.279200.2770000 | PLASTER APPLICATION | 6d | 2026-04-28 | 2026-05-04 | 7302FS+20d |  | RGA -FINISHING | 7429525 |
| 7102 | 40200.40300.40600.54000.56400.59600.61400.279200.2770100 | CONCEALED PLUMBING | 8d | 2026-05-04 | 2026-05-12 | 7101 |  | RGA -FINISHING | 7429535 |
| 7103 | 40200.40300.40600.54000.56400.59600.61400.279200.2770200 | WATERPROOFING WORK FOR TOILETS, KITCHEN SUNK & PLANTERS | 8d | 2026-05-12 | 2026-05-20 | 7102 |  | RGA -FINISHING | 7429545 |
| 7104 | 40200.40300.40600.54000.56400.59600.61400.279300 | **7th FLOOR** | 95d | 2026-03-07 | 2026-06-10 |  | start no earlier than 2026-03-07 | RGA -FINISHING | 7422265 |
| 7105 | 40200.40300.40600.54000.56400.59600.61400.279300.2770300 | BALCONY RAILING FIXING | 9d | 2026-04-19 | 2026-04-28 | 6974FS+10d |  | RGA -FINISHING | 7429555 |
| 7106 | 40200.40300.40600.54000.56400.59600.61400.279300.2770400 | Block work | 8d | 2026-06-02 | 2026-06-10 | 7110 |  | RGA -FINISHING | 7429565 |
| 7107 | 40200.40300.40600.54000.56400.59600.61400.279300.2770500 | CONCEALED ELEC CONDUITING & ITS FINISHING | 5d | 2026-03-07 | 2026-03-12 | 6966FS-7d |  | RGA -FINISHING | 7429575 |
| 7108 | 40200.40300.40600.54000.56400.59600.61400.279300.2770600 | PLASTER APPLICATION | 6d | 2026-05-11 | 2026-05-17 | 7315FS+20d |  | RGA -FINISHING | 7429585 |
| 7109 | 40200.40300.40600.54000.56400.59600.61400.279300.2770700 | CONCEALED PLUMBING | 8d | 2026-05-17 | 2026-05-25 | 7108 |  | RGA -FINISHING | 7429595 |
| 7110 | 40200.40300.40600.54000.56400.59600.61400.279300.2770800 | WATERPROOFING WORK FOR TOILETS, KITCHEN SUNK & PLANTERS | 8d | 2026-05-25 | 2026-06-02 | 7109 |  | RGA -FINISHING | 7429605 |
| 7111 | 40200.40300.40600.54000.56400.59600.61400.279400 | **8th FLOOR** | 95d | 2026-03-20 | 2026-06-23 |  | start no earlier than 2026-03-20 | RGA -FINISHING | 7422255 |
| 7112 | 40200.40300.40600.54000.56400.59600.61400.279400.2770900 | BALCONY RAILING FIXING | 9d | 2026-05-03 | 2026-05-12 | 6978FS+11d |  | RGA -FINISHING | 7429615 |
| 7113 | 40200.40300.40600.54000.56400.59600.61400.279400.2771000 | Block work | 8d | 2026-06-15 | 2026-06-23 | 7117 |  | RGA -FINISHING | 7429625 |
| 7114 | 40200.40300.40600.54000.56400.59600.61400.279400.2771100 | CONCEALED ELEC CONDUITING & ITS FINISHING | 5d | 2026-03-20 | 2026-03-25 | 6970FS-7d |  | RGA -FINISHING | 7429635 |
| 7115 | 40200.40300.40600.54000.56400.59600.61400.279400.2771200 | PLASTER APPLICATION | 6d | 2026-05-24 | 2026-05-30 | 7328FS+20d |  | RGA -FINISHING | 7429645 |
| 7116 | 40200.40300.40600.54000.56400.59600.61400.279400.2771300 | CONCEALED PLUMBING | 8d | 2026-05-30 | 2026-06-07 | 7115 |  | RGA -FINISHING | 7429655 |
| 7117 | 40200.40300.40600.54000.56400.59600.61400.279400.2771400 | WATERPROOFING WORK FOR TOILETS, KITCHEN SUNK & PLANTERS | 8d | 2026-06-07 | 2026-06-15 | 7116 |  | RGA -FINISHING | 7429665 |

| ID | WBS | Task | Duration | Start | Finish | Predecessors | Constraint | Calendar | Unique_Task_ID |
| --- | --- | --- | --- | --- | --- | --- | --- | --- | --- |
| 7118 | 40200.40300.40600.54000.56400.59600.61400.279500 | **9th FLOOR** | 96d | 2026-04-02 | 2026-07-07 |  | start no earlier than 2026-04-02 | RGA -FINISHING | 7422245 |
| 7119 | 40200.40300.40600.54000.56400.59600.61400.279500.2771500 | BALCONY RAILING FIXING | 9d | 2026-05-20 | 2026-05-29 | 6982FS+10d |  | RGA -FINISHING | 7429675 |
| 7120 | 40200.40300.40600.54000.56400.59600.61400.279500.2771600 | Block work | 8d | 2026-06-29 | 2026-07-07 | 7124 |  | RGA -FINISHING | 7429685 |
| 7121 | 40200.40300.40600.54000.56400.59600.61400.279500.2771700 | CONCEALED ELEC CONDUITING & ITS FINISHING | 5d | 2026-04-02 | 2026-04-07 | 6974FS-7d |  | RGA -FINISHING | 7429695 |
| 7122 | 40200.40300.40600.54000.56400.59600.61400.279500.2771800 | PLASTER APPLICATION | 6d | 2026-06-07 | 2026-06-13 | 7341FS+20d |  | RGA -FINISHING | 7429705 |
| 7123 | 40200.40300.40600.54000.56400.59600.61400.279500.2771900 | CONCEALED PLUMBING | 8d | 2026-06-13 | 2026-06-21 | 7122 |  | RGA -FINISHING | 7429715 |
| 7124 | 40200.40300.40600.54000.56400.59600.61400.279500.2772000 | WATERPROOFING WORK FOR TOILETS, KITCHEN SUNK & PLANTERS | 8d | 2026-06-21 | 2026-06-29 | 7123 |  | RGA -FINISHING | 7429725 |
| 7125 | 40200.40300.40600.54000.56400.59600.61400.279600 | **10th FLOOR** | 100d | 2026-04-15 | 2026-07-24 |  | start no earlier than 2026-04-15 | RGA -FINISHING | 7422235 |
| 7126 | 40200.40300.40600.54000.56400.59600.61400.279600.2772100 | BALCONY RAILING FIXING | 9d | 2026-06-06 | 2026-06-15 | 6986FS+10d |  | RGA -FINISHING | 7429735 |
| 7127 | 40200.40300.40600.54000.56400.59600.61400.279600.2772200 | Block work | 8d | 2026-07-16 | 2026-07-24 | 7131 |  | RGA -FINISHING | 7429745 |
| 7128 | 40200.40300.40600.54000.56400.59600.61400.279600.2772300 | CONCEALED ELEC CONDUITING & ITS FINISHING | 5d | 2026-04-15 | 2026-04-20 | 6978FS-7d |  | RGA -FINISHING | 7429755 |
| 7129 | 40200.40300.40600.54000.56400.59600.61400.279600.2772400 | PLASTER APPLICATION | 6d | 2026-06-24 | 2026-06-30 | 7354FS+20d |  | RGA -FINISHING | 7429765 |
| 7130 | 40200.40300.40600.54000.56400.59600.61400.279600.2772500 | CONCEALED PLUMBING | 8d | 2026-06-30 | 2026-07-08 | 7129 |  | RGA -FINISHING | 7429775 |
| 7131 | 40200.40300.40600.54000.56400.59600.61400.279600.2772600 | WATERPROOFING WORK FOR TOILETS, KITCHEN SUNK & PLANTERS | 8d | 2026-07-08 | 2026-07-16 | 7130 |  | RGA -FINISHING | 7429785 |
| 7132 | 40200.40300.40600.54000.56400.59600.61400.279700 | **11th FLOOR** | 138d | 2026-05-03 | 2026-09-18 |  | start no earlier than 2026-05-03 | RGA -FINISHING | 7422225 |
| 7133 | 40200.40300.40600.54000.56400.59600.61400.279700.2772700 | BALCONY RAILING FIXING | 9d | 2026-07-01 | 2026-07-10 | 6990FS+17.5d |  | RGA -FINISHING | 7429795 |
| 7134 | 40200.40300.40600.54000.56400.59600.61400.279700.2772800 | Block work | 8d | 2026-09-10 | 2026-09-18 | 7138 |  | RGA -FINISHING | 7429805 |
| 7135 | 40200.40300.40600.54000.56400.59600.61400.279700.2772900 | CONCEALED ELEC CONDUITING & ITS FINISHING | 5d | 2026-05-03 | 2026-05-08 | 6982FS-7d |  | RGA -FINISHING | 7429815 |
| 7136 | 40200.40300.40600.54000.56400.59600.61400.279700.2773000 | PLASTER APPLICATION | 6d | 2026-08-19 | 2026-08-25 | 7367FS+20d |  | RGA -FINISHING | 7429825 |
| 7137 | 40200.40300.40600.54000.56400.59600.61400.279700.2773100 | CONCEALED PLUMBING | 8d | 2026-08-25 | 2026-09-02 | 7136 |  | RGA -FINISHING | 7429835 |
| 7138 | 40200.40300.40600.54000.56400.59600.61400.279700.2773200 | WATERPROOFING WORK FOR TOILETS, KITCHEN SUNK & PLANTERS | 8d | 2026-09-02 | 2026-09-10 | 7137 |  | RGA -FINISHING | 7429845 |
| 7139 | 40200.40300.40600.54000.56400.59600.61400.279800 | **12th FLOOR** | 98.5d | 2026-05-20 | 2026-08-27 |  | start no earlier than 2026-05-20 | RGA -FINISHING | 7422215 |
| 7140 | 40200.40300.40600.54000.56400.59600.61400.279800.2773300 | BALCONY RAILING FIXING | 9d | 2026-07-25 | 2026-08-03 | 6994FS+10.5d |  | RGA -FINISHING | 7429855 |
| 7141 | 40200.40300.40600.54000.56400.59600.61400.279800.2773400 | Block work | 8d | 2026-08-19 | 2026-08-27 | 7144 |  | RGA -FINISHING | 7429865 |
| 7142 | 40200.40300.40600.54000.56400.59600.61400.279800.2773500 | CONCEALED ELEC CONDUITING & ITS FINISHING | 5d | 2026-05-20 | 2026-05-25 | 6986FS-7d |  | RGA -FINISHING | 7429875 |
| 7143 | 40200.40300.40600.54000.56400.59600.61400.279800.2773600 | PLASTER APPLICATION | 6d | 2026-08-05 | 2026-08-11 | 7380FS+20d |  | RGA -FINISHING | 7429885 |
| 7144 | 40200.40300.40600.54000.56400.59600.61400.279800.2773700 | CONCEALED PLUMBING | 8d | 2026-08-11 | 2026-08-19 | 7143 |  | RGA -FINISHING | 7429895 |
| 7145 | 40200.40300.40600.54000.56400.59600.61400.279800.2773800 | WATERPROOFING WORK FOR TOILETS, KITCHEN SUNK & PLANTERS | 8d | 2026-08-19 | 2026-08-27 | 7144 |  | RGA -FINISHING | 7429905 |

| ID | WBS | Task | Duration | Start | Finish | Predecessors | Constraint | Calendar | Unique_Task_ID |
| --- | --- | --- | --- | --- | --- | --- | --- | --- | --- |
| 7146 | 40200.40300.40600.54000.56400.59600.61400.279900 | **13th FLOOR** | 128d | 2026-06-06 | 2026-10-12 |  | start no earlier than 2026-06-06 | RGA -FINISHING | 7422205 |
| 7147 | 40200.40300.40600.54000.56400.59600.61400.279900.2773900 | BALCONY RAILING FIXING | 9d | 2026-08-11 | 2026-08-20 | 6998FS+10d |  | RGA -FINISHING | 7429915 |
| 7148 | 40200.40300.40600.54000.56400.59600.61400.279900.2774000 | Block work | 8d | 2026-10-04 | 2026-10-12 | 7152 |  | RGA -FINISHING | 7429925 |
| 7149 | 40200.40300.40600.54000.56400.59600.61400.279900.2774100 | CONCEALED ELEC CONDUITING & ITS FINISHING | 5d | 2026-06-06 | 2026-06-11 | 6990FS-7d |  | RGA -FINISHING | 7429935 |
| 7150 | 40200.40300.40600.54000.56400.59600.61400.279900.2774200 | PLASTER APPLICATION | 15d | 2026-08-29 | 2026-09-13 | 7393FS+20d |  | RGA -FINISHING | 7429945 |
| 7151 | 40200.40300.40600.54000.56400.59600.61400.279900.2774300 | CONCEALED PLUMBING | 9d | 2026-09-13 | 2026-09-22 | 7150 |  | RGA -FINISHING | 7429955 |
| 7152 | 40200.40300.40600.54000.56400.59600.61400.279900.2774400 | WATERPROOFING WORK FOR TOILETS, KITCHEN SUNK & PLANTERS | 12d | 2026-09-22 | 2026-10-04 | 7151 |  | RGA -FINISHING | 7429965 |
| 7153 | 40200.40300.40600.54000.56400.59600.61400.280000 | **14th FLOOR** | 122.5d | 2026-07-01 | 2026-10-31 |  | start no earlier than 2026-07-01 | RGA -FINISHING | 7422195 |
| 7154 | 40200.40300.40600.54000.56400.59600.61400.280000.2774500 | BALCONY RAILING FIXING | 9d | 2026-08-29 | 2026-09-07 | 7002FS+10d |  | RGA -FINISHING | 7429975 |
| 7155 | 40200.40300.40600.54000.56400.59600.61400.280000.2774600 | Block work | 8d | 2026-10-23 | 2026-10-31 | 7159 |  | RGA -FINISHING | 7429985 |
| 7156 | 40200.40300.40600.54000.56400.59600.61400.280000.2774700 | CONCEALED ELEC CONDUITING & ITS FINISHING | 5d | 2026-07-01 | 2026-07-06 | 6994FS-14d |  | RGA -FINISHING | 7429995 |
| 7157 | 40200.40300.40600.54000.56400.59600.61400.280000.2774800 | PLASTER APPLICATION | 15d | 2026-09-17 | 2026-10-02 | 7406FS+20d |  | RGA -FINISHING | 7430005 |
| 7158 | 40200.40300.40600.54000.56400.59600.61400.280000.2774900 | CONCEALED PLUMBING | 9d | 2026-10-02 | 2026-10-11 | 7157 |  | RGA -FINISHING | 7430015 |
| 7159 | 40200.40300.40600.54000.56400.59600.61400.280000.2775000 | WATERPROOFING WORK FOR TOILETS, KITCHEN SUNK & PLANTERS | 12d | 2026-10-11 | 2026-10-23 | 7158 |  | RGA -FINISHING | 7430025 |
| 7160 | 40200.40300.40600.54000.56400.59600.61400.280100 | **15th FLOOR** | 116d | 2026-07-25 | 2026-11-18 |  | start no earlier than 2026-07-25 | RGA -FINISHING | 7422185 |
| 7161 | 40200.40300.40600.54000.56400.59600.61400.280100.2775100 | BALCONY RAILING FIXING | 9d | 2026-09-15 | 2026-09-24 | 7006FS+10d |  | RGA -FINISHING | 7430035 |
| 7162 | 40200.40300.40600.54000.56400.59600.61400.280100.2775200 | Block work | 8d | 2026-11-10 | 2026-11-18 | 7166 |  | RGA -FINISHING | 7430045 |
| 7163 | 40200.40300.40600.54000.56400.59600.61400.280100.2775300 | CONCEALED ELEC CONDUITING & ITS FINISHING | 5d | 2026-07-25 | 2026-07-30 | 6998FS-7d |  | RGA -FINISHING | 7430055 |
| 7164 | 40200.40300.40600.54000.56400.59600.61400.280100.2775400 | PLASTER APPLICATION | 15d | 2026-10-05 | 2026-10-20 | 7419FS+20d |  | RGA -FINISHING | 7430065 |
| 7165 | 40200.40300.40600.54000.56400.59600.61400.280100.2775500 | CONCEALED PLUMBING | 9d | 2026-10-20 | 2026-10-29 | 7164 |  | RGA -FINISHING | 7430075 |
| 7166 | 40200.40300.40600.54000.56400.59600.61400.280100.2775600 | WATERPROOFING WORK FOR TOILETS, KITCHEN SUNK & PLANTERS | 12d | 2026-10-29 | 2026-11-10 | 7165 |  | RGA -FINISHING | 7430085 |
| 7167 | 40200.40300.40600.54000.56400.59600.61400.280200 | **16th FLOOR** | 116d | 2026-08-11 | 2026-12-05 |  | start no earlier than 2026-08-11 | RGA -FINISHING | 7422175 |
| 7168 | 40200.40300.40600.54000.56400.59600.61400.280200.2775700 | BALCONY RAILING FIXING | 9d | 2026-10-01 | 2026-10-10 | 7010FS+10d |  | RGA -FINISHING | 7430095 |
| 7169 | 40200.40300.40600.54000.56400.59600.61400.280200.2775800 | Block work | 8d | 2026-11-27 | 2026-12-05 | 7173 |  | RGA -FINISHING | 7430105 |
| 7170 | 40200.40300.40600.54000.56400.59600.61400.280200.2775900 | CONCEALED ELEC CONDUITING & ITS FINISHING | 5d | 2026-08-11 | 2026-08-16 | 7002FS-8d |  | RGA -FINISHING | 7430115 |
| 7171 | 40200.40300.40600.54000.56400.59600.61400.280200.2776000 | PLASTER APPLICATION | 15d | 2026-10-22 | 2026-11-06 | 7432FS+20d |  | RGA -FINISHING | 7430125 |
| 7172 | 40200.40300.40600.54000.56400.59600.61400.280200.2776100 | CONCEALED PLUMBING | 9d | 2026-11-06 | 2026-11-15 | 7171 |  | RGA -FINISHING | 7430135 |
| 7173 | 40200.40300.40600.54000.56400.59600.61400.280200.2776200 | WATERPROOFING WORK FOR TOILETS, KITCHEN SUNK & PLANTERS | 12d | 2026-11-15 | 2026-11-27 | 7172 |  | RGA -FINISHING | 7430145 |

| ID | WBS | Task | Duration | Start | Finish | Predecessors | Constraint | Calendar | Unique_Task_ID |
| --- | --- | --- | --- | --- | --- | --- | --- | --- | --- |
| 7174 | 40200.40300.40600.54000.56400.59600.61400.280300 | **17th FLOOR** | 114d | 2026-08-29 | 2026-12-21 |  | start no earlier than 2026-08-29 | RGA -FINISHING | 7422165 |
| 7175 | 40200.40300.40600.54000.56400.59600.61400.280300.2776300 | BALCONY RAILING FIXING | 9d | 2026-10-19 | 2026-10-28 | 7014FS+10d |  | RGA -FINISHING | 7430155 |
| 7176 | 40200.40300.40600.54000.56400.59600.61400.280300.2776400 | Block work | 8d | 2026-12-13 | 2026-12-21 | 7180 |  | RGA -FINISHING | 7430165 |
| 7177 | 40200.40300.40600.54000.56400.59600.61400.280300.2776500 | CONCEALED ELEC CONDUITING & ITS FINISHING | 5d | 2026-08-29 | 2026-09-03 | 7006FS-7d |  | RGA -FINISHING | 7430175 |
| 7178 | 40200.40300.40600.54000.56400.59600.61400.280300.2776600 | PLASTER APPLICATION | 15d | 2026-11-07 | 2026-11-22 | 7445FS+20d |  | RGA -FINISHING | 7430185 |
| 7179 | 40200.40300.40600.54000.56400.59600.61400.280300.2776700 | CONCEALED PLUMBING | 9d | 2026-11-22 | 2026-12-01 | 7178 |  | RGA -FINISHING | 7430195 |
| 7180 | 40200.40300.40600.54000.56400.59600.61400.280300.2776800 | WATERPROOFING WORK FOR TOILETS, KITCHEN SUNK & PLANTERS | 12d | 2026-12-01 | 2026-12-13 | 7179 |  | RGA -FINISHING | 7430205 |
| 7181 | 40200.40300.40600.54000.56400.59600.61400.280400 | **18th FLOOR** | 98d | 2026-09-14 | 2026-12-21 |  | start no earlier than 2026-09-14 | RGA -FINISHING | 7422155 |
| 7182 | 40200.40300.40600.54000.56400.59600.61400.280400.2776900 | BALCONY RAILING FIXING | 9d | 2026-11-05 | 2026-11-14 | 7018FS+10d |  | RGA -FINISHING | 7430215 |
| 7183 | 40200.40300.40600.54000.56400.59600.61400.280400.2777000 | Block work | 8d | 2026-12-13 | 2026-12-21 | 7187 |  | RGA -FINISHING | 7430225 |
| 7184 | 40200.40300.40600.54000.56400.59600.61400.280400.2777100 | CONCEALED ELEC CONDUITING & ITS FINISHING | 5d | 2026-09-14 | 2026-09-19 | 7010FS-7d |  | RGA -FINISHING | 7430235 |
| 7185 | 40200.40300.40600.54000.56400.59600.61400.280400.2777200 | PLASTER APPLICATION | 15d | 2026-11-07 | 2026-11-22 | 7445FS+20d |  | RGA -FINISHING | 7430245 |
| 7186 | 40200.40300.40600.54000.56400.59600.61400.280400.2777300 | CONCEALED PLUMBING | 9d | 2026-11-22 | 2026-12-01 | 7185 |  | RGA -FINISHING | 7430255 |
| 7187 | 40200.40300.40600.54000.56400.59600.61400.280400.2777400 | WATERPROOFING WORK FOR TOILETS, KITCHEN SUNK & PLANTERS | 12d | 2026-12-01 | 2026-12-13 | 7186 |  | RGA -FINISHING | 7430265 |
| 7188 | 40200.40300.40600.54000.56400.59600.61400.280500 | **19th FLOOR** | 99d | 2026-10-01 | 2027-01-08 |  | start no earlier than 2026-10-01 | RGA -FINISHING | 7422145 |
| 7189 | 40200.40300.40600.54000.56400.59600.61400.280500.2777500 | BALCONY RAILING FIXING | 9d | 2026-11-29 | 2026-12-08 | 7022FS+16.5d |  | RGA -FINISHING | 7430275 |
| 7190 | 40200.40300.40600.54000.56400.59600.61400.280500.2777600 | Block work | 8d | 2026-12-31 | 2027-01-08 | 7194 |  | RGA -FINISHING | 7430285 |
| 7191 | 40200.40300.40600.54000.56400.59600.61400.280500.2777700 | CONCEALED ELEC CONDUITING & ITS FINISHING | 5d | 2026-10-01 | 2026-10-06 | 7014FS-8d |  | RGA -FINISHING | 7430295 |
| 7192 | 40200.40300.40600.54000.56400.59600.61400.280500.2777800 | PLASTER APPLICATION | 15d | 2026-11-25 | 2026-12-10 | 7458FS+20d |  | RGA -FINISHING | 7430305 |
| 7193 | 40200.40300.40600.54000.56400.59600.61400.280500.2777900 | CONCEALED PLUMBING | 9d | 2026-12-10 | 2026-12-19 | 7192 |  | RGA -FINISHING | 7430315 |
| 7194 | 40200.40300.40600.54000.56400.59600.61400.280500.2778000 | WATERPROOFING WORK FOR TOILETS, KITCHEN SUNK & PLANTERS | 12d | 2026-12-19 | 2026-12-31 | 7193 |  | RGA -FINISHING | 7430325 |
| 7195 | 40200.40300.40600.54000.56400.59600.61400.280600 | **20th FLOOR** | 98d | 2026-10-19 | 2027-01-25 |  | start no earlier than 2026-10-19 | RGA -FINISHING | 7422135 |
| 7196 | 40200.40300.40600.54000.56400.59600.61400.280600.2778100 | BALCONY RAILING FIXING | 9d | 2026-12-24 | 2027-01-02 | 7026FS+11.5d |  | RGA -FINISHING | 7430335 |
| 7197 | 40200.40300.40600.54000.56400.59600.61400.280600.2778200 | Block work | 8d | 2027-01-17 | 2027-01-25 | 7201 |  | RGA -FINISHING | 7430345 |
| 7198 | 40200.40300.40600.54000.56400.59600.61400.280600.2778300 | CONCEALED ELEC CONDUITING & ITS FINISHING | 5d | 2026-10-19 | 2026-10-24 | 7018FS-7d |  | RGA -FINISHING | 7430355 |
| 7199 | 40200.40300.40600.54000.56400.59600.61400.280600.2778400 | PLASTER APPLICATION | 15d | 2026-12-12 | 2026-12-27 | 7471FS+20d |  | RGA -FINISHING | 7430365 |
| 7200 | 40200.40300.40600.54000.56400.59600.61400.280600.2778500 | CONCEALED PLUMBING | 9d | 2026-12-27 | 2027-01-05 | 7199 |  | RGA -FINISHING | 7430375 |
| 7201 | 40200.40300.40600.54000.56400.59600.61400.280600.2778600 | WATERPROOFING WORK FOR TOILETS, KITCHEN SUNK & PLANTERS | 12d | 2027-01-05 | 2027-01-17 | 7200 |  | RGA -FINISHING | 7430385 |

Notes:
- 7183: Last floor BW completion 2 months post Last RCC
- 7190: Last floor BW completion 2 months post Last RCC
- 7197: Last floor BW completion 2 months post Last RCC

| ID | WBS | Task | Duration | Start | Finish | Predecessors | Constraint | Calendar | Unique_Task_ID |
| --- | --- | --- | --- | --- | --- | --- | --- | --- | --- |
| 7202 | 40200.40300.40600.54000.56400.59600.61400.280700 | **21th FLOOR** | 104.5d | 2026-11-05 | 2027-02-18 |  | start no earlier than 2026-11-05 | RGA -FINISHING | 7422125 |
| 7203 | 40200.40300.40600.54000.56400.59600.61400.280700.2778700 | BALCONY RAILING FIXING | 9d | 2027-01-10 | 2027-01-19 | 7030FS+10d |  | RGA -FINISHING | 7430395 |
| 7204 | 40200.40300.40600.54000.56400.59600.61400.280700.2778800 | Block work | 8d | 2027-02-10 | 2027-02-18 | 7208 |  | RGA -FINISHING | 7430405 |
| 7205 | 40200.40300.40600.54000.56400.59600.61400.280700.2778900 | CONCEALED ELEC CONDUITING & ITS FINISHING | 5d | 2026-11-05 | 2026-11-10 | 7022FS-7d |  | RGA -FINISHING | 7430415 |
| 7206 | 40200.40300.40600.54000.56400.59600.61400.280700.2779000 | PLASTER APPLICATION | 15d | 2027-01-05 | 2027-01-20 | 7484FS+20d |  | RGA -FINISHING | 7430425 |
| 7207 | 40200.40300.40600.54000.56400.59600.61400.280700.2779100 | CONCEALED PLUMBING | 9d | 2027-01-20 | 2027-01-29 | 7206 |  | RGA -FINISHING | 7430435 |
| 7208 | 40200.40300.40600.54000.56400.59600.61400.280700.2779200 | WATERPROOFING WORK FOR TOILETS, KITCHEN SUNK & PLANTERS | 12d | 2027-01-29 | 2027-02-10 | 7207 |  | RGA -FINISHING | 7430445 |
| 7209 | 40200.40300.40600.54000.56400.59600.61400.280800 | **22th FLOOR** | 126.5d | 2026-11-29 | 2027-04-04 |  | start no earlier than 2026-11-29 | RGA -FINISHING | 7422115 |
| 7210 | 40200.40300.40600.54000.56400.59600.61400.280800.2779300 | BALCONY RAILING FIXING | 9d | 2027-02-06 | 2027-02-15 | 7034FS+20d |  | RGA -FINISHING | 7430455 |
| 7211 | 40200.40300.40600.54000.56400.59600.61400.280800.2779400 | Block work | 8d | 2027-03-27 | 2027-04-04 | 7215 |  | RGA -FINISHING | 7430465 |
| 7212 | 40200.40300.40600.54000.56400.59600.61400.280800.2779500 | CONCEALED ELEC CONDUITING & ITS FINISHING | 5d | 2026-11-29 | 2026-12-04 | 7026FS-14d |  | RGA -FINISHING | 7430475 |
| 7213 | 40200.40300.40600.54000.56400.59600.61400.280800.2779600 | PLASTER APPLICATION | 15d | 2027-02-19 | 2027-03-06 | 7497FS+40d |  | RGA -FINISHING | 7430485 |
| 7214 | 40200.40300.40600.54000.56400.59600.61400.280800.2779700 | CONCEALED PLUMBING | 9d | 2027-03-06 | 2027-03-15 | 7213 |  | RGA -FINISHING | 7430495 |
| 7215 | 40200.40300.40600.54000.56400.59600.61400.280800.2779800 | WATERPROOFING WORK FOR TOILETS, KITCHEN SUNK & PLANTERS | 12d | 2027-03-15 | 2027-03-27 | 7214 |  | RGA -FINISHING | 7430505 |
| 7216 | 40200.40300.40600.54000.56400.59600.61400.280900 | **23th FLOOR** | 128d | 2026-12-24 | 2027-05-01 |  | start no earlier than 2026-12-24 | RGA -FINISHING | 7422105 |
| 7217 | 40200.40300.40600.54000.56400.59600.61400.280900.2779900 | BALCONY RAILING FIXING | 9d | 2027-02-23 | 2027-03-04 | 7038FS+20d |  | RGA -FINISHING | 7430515 |
| 7218 | 40200.40300.40600.54000.56400.59600.61400.280900.2780000 | Block work | 8d | 2027-04-23 | 2027-05-01 | 7222 |  | RGA -FINISHING | 7430525 |
| 7219 | 40200.40300.40600.54000.56400.59600.61400.280900.2780100 | CONCEALED ELEC CONDUITING & ITS FINISHING | 5d | 2026-12-24 | 2026-12-29 | 7030FS-7d |  | RGA -FINISHING | 7430535 |
| 7220 | 40200.40300.40600.54000.56400.59600.61400.280900.2780200 | PLASTER APPLICATION | 15d | 2027-03-18 | 2027-04-02 | 7510FS+50d |  | RGA -FINISHING | 7430545 |
| 7221 | 40200.40300.40600.54000.56400.59600.61400.280900.2780300 | CONCEALED PLUMBING | 9d | 2027-04-02 | 2027-04-11 | 7220 |  | RGA -FINISHING | 7430555 |
| 7222 | 40200.40300.40600.54000.56400.59600.61400.280900.2780400 | WATERPROOFING WORK FOR TOILETS, KITCHEN SUNK & PLANTERS | 12d | 2027-04-11 | 2027-04-23 | 7221 |  | RGA -FINISHING | 7430565 |
| 7223 | 40200.40300.40600.54000.56400.59600.61400.281000 | **24th FLOOR** | 178d | 2027-01-10 | 2027-07-07 |  | start no earlier than 2027-01-10 | RGA -FINISHING | 7422095 |
| 7224 | 40200.40300.40600.54000.56400.59600.61400.281000.2780500 | BALCONY RAILING FIXING | 9d | 2027-03-24 | 2027-04-02 | 7217FS+20d |  | RGA -FINISHING | 7430575 |
| 7225 | 40200.40300.40600.54000.56400.59600.61400.281000.2780600 | Block work | 8d | 2027-06-29 | 2027-07-07 | 7229 |  | RGA -FINISHING | 7430585 |
| 7226 | 40200.40300.40600.54000.56400.59600.61400.281000.2780700 | CONCEALED ELEC CONDUITING & ITS FINISHING | 5d | 2027-01-10 | 2027-01-15 | 7034FS-7d |  | RGA -FINISHING | 7430595 |
| 7227 | 40200.40300.40600.54000.56400.59600.61400.281000.2780800 | PLASTER APPLICATION | 15d | 2027-05-24 | 2027-06-08 | 7523FS+90d |  | RGA -FINISHING | 7430605 |
| 7228 | 40200.40300.40600.54000.56400.59600.61400.281000.2780900 | CONCEALED PLUMBING | 9d | 2027-06-08 | 2027-06-17 | 7227 |  | RGA -FINISHING | 7430615 |
| 7229 | 40200.40300.40600.54000.56400.59600.61400.281000.2781000 | WATERPROOFING WORK FOR TOILETS, KITCHEN SUNK & PLANTERS | 12d | 2027-06-17 | 2027-06-29 | 7228 |  | RGA -FINISHING | 7430625 |

Notes:
- 7204: Last floor BW completion 2 months post Last RCC
- 7211: Last floor BW completion 2 months post Last RCC
- 7218: Last floor BW completion 2 months post Last RCC
- 7225: Last floor BW completion 2 months post Last RCC

| ID | WBS | Task | Duration | Start | Finish | Predecessors | Constraint | Calendar | Unique_Task_ID |
| --- | --- | --- | --- | --- | --- | --- | --- | --- | --- |
| 7230 | 40200.40300.40600.54000.56400.59600.61400.281100 | **25thFLOOR** | 143d | 2027-01-27 | 2027-06-19 |  | start no earlier than 2027-01-27 | RGA -FINISHING | 7422085 |
| 7231 | 40200.40300.40600.54000.56400.59600.61400.281100.2781100 | BALCONY RAILING FIXING | 9d | 2027-04-12 | 2027-04-21 | 7224FS+10d |  | RGA -FINISHING | 7430635 |
| 7232 | 40200.40300.40600.54000.56400.59600.61400.281100.2781200 | Block work | 8d | 2027-06-11 | 2027-06-19 | 7236 |  | RGA -FINISHING | 7430645 |
| 7233 | 40200.40300.40600.54000.56400.59600.61400.281100.2781300 | CONCEALED ELEC CONDUITING & ITS FINISHING | 5d | 2027-01-27 | 2027-02-01 | 7038FS-7d |  | RGA -FINISHING | 7430655 |
| 7234 | 40200.40300.40600.54000.56400.59600.61400.281100.2781400 | PLASTER APPLICATION | 15d | 2027-05-06 | 2027-05-21 | 7536FS+55d |  | RGA -FINISHING | 7430665 |
| 7235 | 40200.40300.40600.54000.56400.59600.61400.281100.2781500 | CONCEALED PLUMBING | 9d | 2027-05-21 | 2027-05-30 | 7234 |  | RGA -FINISHING | 7430675 |
| 7236 | 40200.40300.40600.54000.56400.59600.61400.281100.2781600 | WATERPROOFING WORK FOR TOILETS, KITCHEN SUNK & PLANTERS | 12d | 2027-05-30 | 2027-06-11 | 7235 |  | RGA -FINISHING | 7430685 |
| 7237 | 40200.40300.40600.54000.56400.59600.61400.373700 | **LMR(To be deleted)** | 15d | 2025-11-30 | 2025-12-14 |  | start no earlier than 2025-11-30 | RGA -FINISHING | 7422355 |
| 7238 | 40200.40300.40600.54000.56400.59600.61400.373700.2781700 | Block work | 8d | 2025-11-30 | 2025-12-07 |  | start no earlier than 2025-11-30 | RGA -FINISHING | 7431175 |
| 7239 | 40200.40300.40600.54000.56400.59600.61400.373700.2781800 | CONCEALED ELEC CONDUITING & ITS FINISHING | 7d | 2025-11-30 | 2025-12-06 |  | start no earlier than 2025-11-30 | RGA -FINISHING | 7431185 |
| 7240 | 40200.40300.40600.54000.56400.59600.61400.373700.2781900 | PLASTER APPLICATION | 15d | 2025-11-30 | 2025-12-14 |  | start no earlier than 2025-11-30 | RGA -FINISHING | 7431195 |
| 7241 | 40200.40300.40600.54000.56400.59600.61400.373700.2782000 | DOOR FRAME FIXING | 3d | 2025-11-30 | 2025-12-02 |  | start no earlier than 2025-11-30 | RGA -FINISHING | 7431205 |
| 7242 | 40200.40300.40600.54000.56400.59600.508800 | **Terrace Finishing works** | 30d | 2027-10-10 | 2027-11-09 |  | start no earlier than 2027-10-10 | RGA -FINISHING | 7422395 |
| 7243 | 40200.40300.40600.54000.56400.59600.508800.2475300 | Terrace Waterproofing work | 30d | 2027-10-10 | 2027-11-09 | 7245FS+7d |  | RGA -FINISHING | 7422425 |
| 7244 | 40200.40300.40600.54000.56400.59600.508900 | **EXTERNAL Painting** | 215d | 2027-03-02 | 2027-10-03 |  | start no earlier than 2027-03-02 | RGA -FINISHING | 7422405 |
| 7245 | 40200.40300.40600.54000.56400.59600.508900.2475400 | 2nd coat | 215d | 2027-03-02 | 2027-10-03 | 7042FS+10d |  | RGA -FINISHING | 7422435 |
| 7246 | 40200.40300.40600.54000.56400.58900 | **Flat internal finishing & services works** | 650d | 2026-01-31 | 2027-11-12 |  | start no earlier than 2026-01-31 | RGA -FINISHING | 7421265 |
| 7247 | 40200.40300.40600.54000.56400.58900.149600 | **1ST FLOOR** | 600d | 2026-01-31 | 2027-09-23 |  | start no earlier than 2026-01-31 | RGA -FINISHING | 7421325 |
| 7248 | 40200.40300.40600.54000.56400.58900.149600.2475500 | TOILET DADO TILE FIXING | 7d | 2026-05-17 | 2026-05-24 | 7064 |  | RGA -FINISHING | 7422685 |
| 7249 | 40200.40300.40600.54000.56400.58900.149600.2475600 | TOILET FLOORING WORK | 7d | 2026-05-17 | 2026-05-24 | 7248FF |  | RGA -FINISHING | 7422695 |
| 7250 | 40200.40300.40600.54000.56400.58900.149600.2475700 | FIRE FIGHTING | 6d | 2026-01-31 | 2026-02-06 | 7063 |  | RGA -FINISHING | 7422705 |
| 7251 | 40200.40300.40600.54000.56400.58900.149600.2475800 | INTERNAL PAINTING - PUTTY / PRIMER APPLICATION | 6d | 2026-06-10 | 2026-06-16 | 7253 |  | RGA -FINISHING | 7422715 |
| 7252 | 40200.40300.40600.54000.56400.58900.149600.2475900 | FLAT FLOORING | 5d | 2026-05-24 | 2026-05-29 | 7249 |  | RGA -FINISHING | 7422725 |
| 7253 | 40200.40300.40600.54000.56400.58900.149600.2476000 | WINDOW FIXING | 12d | 2026-05-29 | 2026-06-10 | 7252 |  | RGA -FINISHING | 7422735 |
| 7254 | 40200.40300.40600.54000.56400.58900.149600.2476100 | INTERNAL PAINTING - 1ST COAT | 12d | 2026-06-16 | 2026-06-28 | 7251 |  | RGA -FINISHING | 7422745 |
| 7255 | 40200.40300.40600.54000.56400.58900.149600.2476200 | INTERNAL DOOR FIXING | 15d | 2026-06-26 | 2026-07-11 | 7254FS-2d |  | RGA -FINISHING | 7422755 |
| 7256 | 40200.40300.40600.54000.56400.58900.149600.2476300 | WIRING & SWITCH PLATE FIXING | 8d | 2026-07-07 | 2026-07-15 | 7255FS-4d |  | RGA -FINISHING | 7422765 |
| 7257 | 40200.40300.40600.54000.56400.58900.149600.2476400 | TOILET FALSE CEILING | 7d | 2026-07-15 | 2026-07-22 | 7256 |  | RGA -FINISHING | 7422775 |
| 7258 | 40200.40300.40600.54000.56400.58900.149600.2476500 | MAIN DOOR FRAME SHUTTER FIXING | 6d | 2027-09-09 | 2027-09-15 | 7585 |  | RGA -FINISHING | 7422785 |
| 7259 | 40200.40300.40600.54000.56400.58900.149600.2476600 | FINAL COAT PAINT | 8d | 2027-09-15 | 2027-09-23 | 7258 |  | RGA -FINISHING | 7422795 |

Notes:
- 7244: Ext Plaster (in 2 phases) completion 3.5 months post last BW
- 7246: Completion in 12 months post last RCC

| ID | WBS | Task | Duration | Start | Finish | Predecessors | Constraint | Calendar | Unique_Task_ID |
| --- | --- | --- | --- | --- | --- | --- | --- | --- | --- |
| 7260 | 40200.40300.40600.54000.56400.58900.149700 | **2ND FLOOR** | 578d | 2026-02-22 | 2027-09-23 |  | start no earlier than 2026-02-22 | RGA -FINISHING | 7421335 |
| 7261 | 40200.40300.40600.54000.56400.58900.149700.2476700 | TOILET DADO TILE FIXING | 7d | 2026-04-19 | 2026-04-26 | 7071 |  | RGA -FINISHING | 7422805 |
| 7262 | 40200.40300.40600.54000.56400.58900.149700.2476800 | TOILET FLOORING WORK | 7d | 2026-04-26 | 2026-05-03 | 7261 |  | RGA -FINISHING | 7422815 |
| 7263 | 40200.40300.40600.54000.56400.58900.149700.2476900 | FIRE FIGHTING | 6d | 2026-02-22 | 2026-02-28 | 7070 |  | RGA -FINISHING | 7422825 |
| 7264 | 40200.40300.40600.54000.56400.58900.149700.2477000 | INTERNAL PAINTING - PUTTY / PRIMER APPLICATION | 6d | 2026-05-20 | 2026-05-26 | 7266 |  | RGA -FINISHING | 7422835 |
| 7265 | 40200.40300.40600.54000.56400.58900.149700.2477100 | FLAT FLOORING | 5d | 2026-05-03 | 2026-05-08 | 7262 |  | RGA -FINISHING | 7422845 |
| 7266 | 40200.40300.40600.54000.56400.58900.149700.2477200 | WINDOW FIXING | 12d | 2026-05-08 | 2026-05-20 | 7265 |  | RGA -FINISHING | 7422855 |
| 7267 | 40200.40300.40600.54000.56400.58900.149700.2477300 | INTERNAL PAINTING - 1ST COAT | 12d | 2026-05-26 | 2026-06-07 | 7264 |  | RGA -FINISHING | 7422865 |
| 7268 | 40200.40300.40600.54000.56400.58900.149700.2477400 | INTERNAL DOOR FIXING | 15d | 2026-06-05 | 2026-06-20 | 7267FS-2d |  | RGA -FINISHING | 7422875 |
| 7269 | 40200.40300.40600.54000.56400.58900.149700.2477500 | WIRING & SWITCH PLATE FIXING | 8d | 2026-06-16 | 2026-06-24 | 7268FS-4d |  | RGA -FINISHING | 7422885 |
| 7270 | 40200.40300.40600.54000.56400.58900.149700.2477600 | TOILET FALSE CEILING | 7d | 2026-06-24 | 2026-07-01 | 7269 |  | RGA -FINISHING | 7422895 |
| 7271 | 40200.40300.40600.54000.56400.58900.149700.2477700 | MAIN DOOR FRAME SHUTTER FIXING | 6d | 2027-09-09 | 2027-09-15 | 7593 |  | RGA -FINISHING | 7422905 |
| 7272 | 40200.40300.40600.54000.56400.58900.149700.2477800 | FINAL COAT PAINT | 8d | 2027-09-15 | 2027-09-23 | 7271 |  | RGA -FINISHING | 7422915 |
| 7273 | 40200.40300.40600.54000.56400.58900.149800 | **3RD FLOOR** | 565d | 2026-03-07 | 2027-09-23 |  | start no earlier than 2026-03-07 | RGA -FINISHING | 7421345 |
| 7274 | 40200.40300.40600.54000.56400.58900.149800.2477900 | TOILET DADO TILE FIXING | 7d | 2026-05-02 | 2026-05-09 | 7078 |  | RGA -FINISHING | 7422925 |
| 7275 | 40200.40300.40600.54000.56400.58900.149800.2478000 | TOILET FLOORING WORK | 7d | 2026-05-09 | 2026-05-16 | 7274 |  | RGA -FINISHING | 7422935 |
| 7276 | 40200.40300.40600.54000.56400.58900.149800.2478100 | FIRE FIGHTING | 6d | 2026-03-07 | 2026-03-13 | 7077 |  | RGA -FINISHING | 7422945 |
| 7277 | 40200.40300.40600.54000.56400.58900.149800.2478200 | INTERNAL PAINTING - PUTTY / PRIMER APPLICATION | 6d | 2026-05-28 | 2026-06-03 | 7279 |  | RGA -FINISHING | 7422955 |
| 7278 | 40200.40300.40600.54000.56400.58900.149800.2478300 | FLAT FLOORING | 5d | 2026-05-16 | 2026-05-21 | 7275 |  | RGA -FINISHING | 7422965 |
| 7279 | 40200.40300.40600.54000.56400.58900.149800.2478400 | WINDOW FIXING | 7d | 2026-05-21 | 2026-05-28 | 7278 |  | RGA -FINISHING | 7422975 |
| 7280 | 40200.40300.40600.54000.56400.58900.149800.2478500 | INTERNAL PAINTING - 1ST COAT | 7d | 2026-06-03 | 2026-06-10 | 7277 |  | RGA -FINISHING | 7422985 |
| 7281 | 40200.40300.40600.54000.56400.58900.149800.2478600 | INTERNAL DOOR FIXING | 15d | 2026-06-08 | 2026-06-23 | 7280FS-2d |  | RGA -FINISHING | 7422995 |
| 7282 | 40200.40300.40600.54000.56400.58900.149800.2478700 | WIRING & SWITCH PLATE FIXING | 8d | 2026-06-19 | 2026-06-27 | 7281FS-4d |  | RGA -FINISHING | 7423005 |
| 7283 | 40200.40300.40600.54000.56400.58900.149800.2478800 | TOILET FALSE CEILING | 7d | 2026-06-27 | 2026-07-04 | 7282 |  | RGA -FINISHING | 7423015 |
| 7284 | 40200.40300.40600.54000.56400.58900.149800.2478900 | MAIN DOOR FRAME SHUTTER FIXING | 6d | 2027-09-09 | 2027-09-15 | 7601 |  | RGA -FINISHING | 7423025 |
| 7285 | 40200.40300.40600.54000.56400.58900.149800.2479000 | FINAL COAT PAINT | 8d | 2027-09-15 | 2027-09-23 | 7284 |  | RGA -FINISHING | 7423035 |

| ID | WBS | Task | Duration | Start | Finish | Predecessors | Constraint | Calendar | Unique_Task_ID |
| --- | --- | --- | --- | --- | --- | --- | --- | --- | --- |
| 7286 | 40200.40300.40600.54000.56400.58900.149900 | **4TH FLOOR** | 599d | 2026-02-01 | 2027-09-23 |  | start no earlier than 2026-02-01 | RGA -FINISHING | 7421355 |
| 7287 | 40200.40300.40600.54000.56400.58900.149900.2479100 | TOILET DADO TILE FIXING | 7d | 2026-02-01 | 2026-02-08 | 7086 |  | RGA -FINISHING | 7423045 |
| 7288 | 40200.40300.40600.54000.56400.58900.149900.2479200 | TOILET FLOORING WORK | 7d | 2026-02-08 | 2026-02-15 | 7287 |  | RGA -FINISHING | 7423055 |
| 7289 | 40200.40300.40600.54000.56400.58900.149900.2479300 | FIRE FIGHTING | 6d | 2026-03-20 | 2026-03-26 | 7084 |  | RGA -FINISHING | 7423065 |
| 7290 | 40200.40300.40600.54000.56400.58900.149900.2479400 | INTERNAL PAINTING - PUTTY / PRIMER APPLICATION | 6d | 2026-02-27 | 2026-03-05 | 7292 |  | RGA -FINISHING | 7423075 |
| 7291 | 40200.40300.40600.54000.56400.58900.149900.2479500 | FLAT FLOORING | 5d | 2026-02-15 | 2026-02-20 | 7288 |  | RGA -FINISHING | 7423085 |
| 7292 | 40200.40300.40600.54000.56400.58900.149900.2479600 | WINDOW FIXING | 7d | 2026-02-20 | 2026-02-27 | 7291 |  | RGA -FINISHING | 7423095 |
| 7293 | 40200.40300.40600.54000.56400.58900.149900.2479700 | INTERNAL PAINTING - 1ST COAT | 7d | 2026-03-05 | 2026-03-12 | 7290 |  | RGA -FINISHING | 7423105 |
| 7294 | 40200.40300.40600.54000.56400.58900.149900.2479800 | INTERNAL DOOR FIXING | 15d | 2026-03-10 | 2026-03-25 | 7293FS-2d |  | RGA -FINISHING | 7423115 |
| 7295 | 40200.40300.40600.54000.56400.58900.149900.2479900 | WIRING & SWITCH PLATE FIXING | 8d | 2026-03-21 | 2026-03-29 | 7294FS-4d |  | RGA -FINISHING | 7423125 |
| 7296 | 40200.40300.40600.54000.56400.58900.149900.2480000 | TOILET FALSE CEILING | 7d | 2026-03-29 | 2026-04-05 | 7295 |  | RGA -FINISHING | 7423135 |
| 7297 | 40200.40300.40600.54000.56400.58900.149900.2480100 | MAIN DOOR FRAME SHUTTER FIXING | 6d | 2027-09-09 | 2027-09-15 | 7609 |  | RGA -FINISHING | 7423145 |
| 7298 | 40200.40300.40600.54000.56400.58900.149900.2480200 | FINAL COAT PAINT | 8d | 2027-09-15 | 2027-09-23 | 7297 |  | RGA -FINISHING | 7423155 |
| 7299 | 40200.40300.40600.54000.56400.58900.150000 | **5TH FLOOR** | 539d | 2026-04-02 | 2027-09-23 |  | start no earlier than 2026-04-02 | RGA -FINISHING | 7421365 |
| 7300 | 40200.40300.40600.54000.56400.58900.150000.2480300 | TOILET DADO TILE FIXING | 7d | 2026-05-15 | 2026-05-22 | 7092 |  | RGA -FINISHING | 7423165 |
| 7301 | 40200.40300.40600.54000.56400.58900.150000.2480400 | TOILET FLOORING WORK | 7d | 2026-05-22 | 2026-05-29 | 7300 |  | RGA -FINISHING | 7423175 |
| 7302 | 40200.40300.40600.54000.56400.58900.150000.2480500 | FIRE FIGHTING | 6d | 2026-04-02 | 2026-04-08 | 7091 |  | RGA -FINISHING | 7423185 |
| 7303 | 40200.40300.40600.54000.56400.58900.150000.2480600 | INTERNAL PAINTING - PUTTY / PRIMER APPLICATION | 6d | 2026-06-10 | 2026-06-16 | 7305 |  | RGA -FINISHING | 7423195 |
| 7304 | 40200.40300.40600.54000.56400.58900.150000.2480700 | FLAT FLOORING | 5d | 2026-05-29 | 2026-06-03 | 7301 |  | RGA -FINISHING | 7423205 |
| 7305 | 40200.40300.40600.54000.56400.58900.150000.2480800 | WINDOW FIXING | 7d | 2026-06-03 | 2026-06-10 | 7304 |  | RGA -FINISHING | 7423215 |
| 7306 | 40200.40300.40600.54000.56400.58900.150000.2480900 | INTERNAL PAINTING - 1ST COAT | 7d | 2026-06-16 | 2026-06-23 | 7303 |  | RGA -FINISHING | 7423225 |
| 7307 | 40200.40300.40600.54000.56400.58900.150000.2481000 | INTERNAL DOOR FIXING | 15d | 2026-06-21 | 2026-07-06 | 7306FS-2d |  | RGA -FINISHING | 7423235 |
| 7308 | 40200.40300.40600.54000.56400.58900.150000.2481100 | WIRING & SWITCH PLATE FIXING | 8d | 2026-07-02 | 2026-07-10 | 7307FS-4d |  | RGA -FINISHING | 7423245 |
| 7309 | 40200.40300.40600.54000.56400.58900.150000.2481200 | TOILET FALSE CEILING | 7d | 2026-07-10 | 2026-07-17 | 7308 |  | RGA -FINISHING | 7423255 |
| 7310 | 40200.40300.40600.54000.56400.58900.150000.2481300 | MAIN DOOR FRAME SHUTTER FIXING | 6d | 2027-09-09 | 2027-09-15 | 7617 |  | RGA -FINISHING | 7423265 |
| 7311 | 40200.40300.40600.54000.56400.58900.150000.2481400 | FINAL COAT PAINT | 8d | 2027-09-15 | 2027-09-23 | 7310 |  | RGA -FINISHING | 7423275 |

| ID | WBS | Task | Duration | Start | Finish | Predecessors | Constraint | Calendar | Unique_Task_ID |
| --- | --- | --- | --- | --- | --- | --- | --- | --- | --- |
| 7312 | 40200.40300.40600.54000.56400.58900.150100 | **6TH FLOOR** | 536d | 2026-04-15 | 2027-10-03 |  | start no earlier than 2026-04-15 | RGA -FINISHING | 7421375 |
| 7313 | 40200.40300.40600.54000.56400.58900.150100.2481500 | TOILET DADO TILE FIXING | 7d | 2026-05-28 | 2026-06-04 | 7099 |  | RGA -FINISHING | 7423285 |
| 7314 | 40200.40300.40600.54000.56400.58900.150100.2481600 | TOILET FLOORING WORK | 7d | 2026-05-28 | 2026-06-04 | 7313FF |  | RGA -FINISHING | 7423295 |
| 7315 | 40200.40300.40600.54000.56400.58900.150100.2481700 | FIRE FIGHTING | 6d | 2026-04-15 | 2026-04-21 | 7098 |  | RGA -FINISHING | 7423305 |
| 7316 | 40200.40300.40600.54000.56400.58900.150100.2481800 | INTERNAL PAINTING - PUTTY / PRIMER APPLICATION | 6d | 2026-06-21 | 2026-06-27 | 7318 |  | RGA -FINISHING | 7423315 |
| 7317 | 40200.40300.40600.54000.56400.58900.150100.2481900 | FLAT FLOORING | 5d | 2026-06-04 | 2026-06-09 | 7314 |  | RGA -FINISHING | 7423325 |
| 7318 | 40200.40300.40600.54000.56400.58900.150100.2482000 | WINDOW FIXING | 12d | 2026-06-09 | 2026-06-21 | 7317 |  | RGA -FINISHING | 7423335 |
| 7319 | 40200.40300.40600.54000.56400.58900.150100.2482100 | INTERNAL PAINTING - 1ST COAT | 12d | 2026-06-27 | 2026-07-09 | 7316 |  | RGA -FINISHING | 7423345 |
| 7320 | 40200.40300.40600.54000.56400.58900.150100.2482200 | INTERNAL DOOR FIXING | 15d | 2026-07-07 | 2026-07-22 | 7319FS-2d |  | RGA -FINISHING | 7423355 |
| 7321 | 40200.40300.40600.54000.56400.58900.150100.2482300 | WIRING & SWITCH PLATE FIXING | 8d | 2026-07-18 | 2026-07-26 | 7320FS-4d |  | RGA -FINISHING | 7423365 |
| 7322 | 40200.40300.40600.54000.56400.58900.150100.2482400 | TOILET FALSE CEILING | 7d | 2026-07-26 | 2026-08-02 | 7321 |  | RGA -FINISHING | 7423375 |
| 7323 | 40200.40300.40600.54000.56400.58900.150100.2482500 | MAIN DOOR FRAME SHUTTER FIXING | 6d | 2027-09-19 | 2027-09-25 | 7625 |  | RGA -FINISHING | 7423385 |
| 7324 | 40200.40300.40600.54000.56400.58900.150100.2482600 | FINAL COAT PAINT | 8d | 2027-09-25 | 2027-10-03 | 7323 |  | RGA -FINISHING | 7423395 |
| 7325 | 40200.40300.40600.54000.56400.58900.150200 | **7TH FLOOR** | 523d | 2026-04-28 | 2027-10-03 |  | start no earlier than 2026-04-28 | RGA -FINISHING | 7421385 |
| 7326 | 40200.40300.40600.54000.56400.58900.150200.2482700 | TOILET DADO TILE FIXING | 7d | 2026-06-10 | 2026-06-17 | 7106 |  | RGA -FINISHING | 7423405 |
| 7327 | 40200.40300.40600.54000.56400.58900.150200.2482800 | TOILET FLOORING WORK | 7d | 2026-06-17 | 2026-06-24 | 7326 |  | RGA -FINISHING | 7423415 |
| 7328 | 40200.40300.40600.54000.56400.58900.150200.2482900 | FIRE FIGHTING | 6d | 2026-04-28 | 2026-05-04 | 7105 |  | RGA -FINISHING | 7423425 |
| 7329 | 40200.40300.40600.54000.56400.58900.150200.2483000 | INTERNAL PAINTING - PUTTY / PRIMER APPLICATION | 6d | 2026-07-11 | 2026-07-17 | 7331 |  | RGA -FINISHING | 7423435 |
| 7330 | 40200.40300.40600.54000.56400.58900.150200.2483100 | FLAT FLOORING | 5d | 2026-06-24 | 2026-06-29 | 7327 |  | RGA -FINISHING | 7423445 |
| 7331 | 40200.40300.40600.54000.56400.58900.150200.2483200 | WINDOW FIXING | 12d | 2026-06-29 | 2026-07-11 | 7330 |  | RGA -FINISHING | 7423455 |
| 7332 | 40200.40300.40600.54000.56400.58900.150200.2483300 | INTERNAL PAINTING - 1ST COAT | 5d | 2026-07-17 | 2026-07-22 | 7329 |  | RGA -FINISHING | 7423465 |
| 7333 | 40200.40300.40600.54000.56400.58900.150200.2483400 | INTERNAL DOOR FIXING | 15d | 2026-07-20 | 2026-08-04 | 7332FS-2d |  | RGA -FINISHING | 7423475 |
| 7334 | 40200.40300.40600.54000.56400.58900.150200.2483500 | WIRING & SWITCH PLATE FIXING | 8d | 2026-07-31 | 2026-08-08 | 7333FS-4d |  | RGA -FINISHING | 7423485 |
| 7335 | 40200.40300.40600.54000.56400.58900.150200.2483600 | TOILET FALSE CEILING | 7d | 2026-08-08 | 2026-08-15 | 7334 |  | RGA -FINISHING | 7423495 |
| 7336 | 40200.40300.40600.54000.56400.58900.150200.2483700 | MAIN DOOR FRAME SHUTTER FIXING | 6d | 2027-09-19 | 2027-09-25 | 7633 |  | RGA -FINISHING | 7423505 |
| 7337 | 40200.40300.40600.54000.56400.58900.150200.2483800 | FINAL COAT PAINT | 8d | 2027-09-25 | 2027-10-03 | 7336 |  | RGA -FINISHING | 7423515 |

| ID | WBS | Task | Duration | Start | Finish | Predecessors | Constraint | Calendar | Unique_Task_ID |
| --- | --- | --- | --- | --- | --- | --- | --- | --- | --- |
| 7338 | 40200.40300.40600.54000.56400.58900.150300 | **8TH FLOOR** | 509d | 2026-05-12 | 2027-10-03 |  | start no earlier than 2026-05-12 | RGA -FINISHING | 7421395 |
| 7339 | 40200.40300.40600.54000.56400.58900.150300.2483900 | TOILET DADO TILE FIXING | 7d | 2026-06-23 | 2026-06-30 | 7113 |  | RGA -FINISHING | 7423525 |
| 7340 | 40200.40300.40600.54000.56400.58900.150300.2484000 | TOILET FLOORING WORK | 7d | 2026-06-30 | 2026-07-07 | 7339 |  | RGA -FINISHING | 7423535 |
| 7341 | 40200.40300.40600.54000.56400.58900.150300.2484100 | FIRE FIGHTING | 6d | 2026-05-12 | 2026-05-18 | 7112 |  | RGA -FINISHING | 7423545 |
| 7342 | 40200.40300.40600.54000.56400.58900.150300.2484200 | INTERNAL PAINTING - PUTTY / PRIMER APPLICATION | 6d | 2026-07-24 | 2026-07-30 | 7344 |  | RGA -FINISHING | 7423555 |
| 7343 | 40200.40300.40600.54000.56400.58900.150300.2484300 | FLAT FLOORING | 5d | 2026-07-07 | 2026-07-12 | 7340 |  | RGA -FINISHING | 7423565 |
| 7344 | 40200.40300.40600.54000.56400.58900.150300.2484400 | WINDOW FIXING | 12d | 2026-07-12 | 2026-07-24 | 7343 |  | RGA -FINISHING | 7423575 |
| 7345 | 40200.40300.40600.54000.56400.58900.150300.2484500 | INTERNAL PAINTING - 1ST COAT | 10d | 2026-07-30 | 2026-08-09 | 7342 |  | RGA -FINISHING | 7423585 |
| 7346 | 40200.40300.40600.54000.56400.58900.150300.2484600 | INTERNAL DOOR FIXING | 15d | 2026-08-07 | 2026-08-22 | 7345FS-2d |  | RGA -FINISHING | 7423595 |
| 7347 | 40200.40300.40600.54000.56400.58900.150300.2484700 | WIRING & SWITCH PLATE FIXING | 8d | 2026-08-18 | 2026-08-26 | 7346FS-4d |  | RGA -FINISHING | 7423605 |
| 7348 | 40200.40300.40600.54000.56400.58900.150300.2484800 | TOILET FALSE CEILING | 7d | 2026-08-26 | 2026-09-02 | 7347 |  | RGA -FINISHING | 7423615 |
| 7349 | 40200.40300.40600.54000.56400.58900.150300.2484900 | MAIN DOOR FRAME SHUTTER FIXING | 6d | 2027-09-19 | 2027-09-25 | 7641 |  | RGA -FINISHING | 7423625 |
| 7350 | 40200.40300.40600.54000.56400.58900.150300.2485000 | FINAL COAT PAINT | 8d | 2027-09-25 | 2027-10-03 | 7349 |  | RGA -FINISHING | 7423635 |
| 7351 | 40200.40300.40600.54000.56400.58900.150400 | **9TH FLOOR** | 496d | 2026-05-29 | 2027-10-07 |  | start no earlier than 2026-05-29 | RGA -FINISHING | 7421405 |
| 7352 | 40200.40300.40600.54000.56400.58900.150400.2485100 | TOILET DADO TILE FIXING | 7d | 2026-07-07 | 2026-07-14 | 7120 |  | RGA -FINISHING | 7423645 |
| 7353 | 40200.40300.40600.54000.56400.58900.150400.2485200 | TOILET FLOORING WORK | 7d | 2026-07-14 | 2026-07-21 | 7352 |  | RGA -FINISHING | 7423655 |
| 7354 | 40200.40300.40600.54000.56400.58900.150400.2485300 | FIRE FIGHTING | 6d | 2026-05-29 | 2026-06-04 | 7119 |  | RGA -FINISHING | 7423665 |
| 7355 | 40200.40300.40600.54000.56400.58900.150400.2485400 | INTERNAL PAINTING - PUTTY / PRIMER APPLICATION | 6d | 2026-08-07 | 2026-08-13 | 7357 |  | RGA -FINISHING | 7423675 |
| 7356 | 40200.40300.40600.54000.56400.58900.150400.2485500 | FLAT FLOORING | 5d | 2026-07-21 | 2026-07-26 | 7353 |  | RGA -FINISHING | 7423685 |
| 7357 | 40200.40300.40600.54000.56400.58900.150400.2485600 | WINDOW FIXING | 12d | 2026-07-26 | 2026-08-07 | 7356 |  | RGA -FINISHING | 7423695 |
| 7358 | 40200.40300.40600.54000.56400.58900.150400.2485700 | INTERNAL PAINTING - 1ST COAT | 2d | 2026-08-13 | 2026-08-15 | 7355 |  | RGA -FINISHING | 7423705 |
| 7359 | 40200.40300.40600.54000.56400.58900.150400.2485800 | INTERNAL DOOR FIXING | 15d | 2026-08-13 | 2026-08-28 | 7358FS-2d |  | RGA -FINISHING | 7423715 |
| 7360 | 40200.40300.40600.54000.56400.58900.150400.2485900 | WIRING & SWITCH PLATE FIXING | 8d | 2026-08-24 | 2026-09-01 | 7359FS-4d |  | RGA -FINISHING | 7423725 |
| 7361 | 40200.40300.40600.54000.56400.58900.150400.2486000 | TOILET FALSE CEILING | 7d | 2026-09-01 | 2026-09-08 | 7360 |  | RGA -FINISHING | 7423735 |
| 7362 | 40200.40300.40600.54000.56400.58900.150400.2486100 | MAIN DOOR FRAME SHUTTER FIXING | 6d | 2027-09-19 | 2027-09-25 | 7649 |  | RGA -FINISHING | 7423745 |
| 7363 | 40200.40300.40600.54000.56400.58900.150400.2486200 | FINAL COAT PAINT | 8d | 2027-09-29 | 2027-10-07 | 7362FS+4d |  | RGA -FINISHING | 7423755 |

| ID | WBS | Task | Duration | Start | Finish | Predecessors | Constraint | Calendar | Unique_Task_ID |
| --- | --- | --- | --- | --- | --- | --- | --- | --- | --- |
| 7364 | 40200.40300.40600.54000.56400.58900.150500 | **10TH FLOOR** | 436d | 2026-07-24 | 2027-10-03 |  | start no earlier than 2026-07-24 | RGA -FINISHING | 7421415 |
| 7365 | 40200.40300.40600.54000.56400.58900.150500.2486300 | TOILET DADO TILE FIXING | 7d | 2026-07-24 | 2026-07-31 | 7127 |  | RGA -FINISHING | 7423765 |
| 7366 | 40200.40300.40600.54000.56400.58900.150500.2486400 | TOILET FLOORING WORK | 7d | 2026-07-31 | 2026-08-07 | 7365 |  | RGA -FINISHING | 7423775 |
| 7367 | 40200.40300.40600.54000.56400.58900.150500.2486500 | FIRE FIGHTING | 6d | 2026-07-24 | 2026-07-30 | 7125 |  | RGA -FINISHING | 7423785 |
| 7368 | 40200.40300.40600.54000.56400.58900.150500.2486600 | INTERNAL PAINTING - PUTTY / PRIMER APPLICATION | 6d | 2026-08-24 | 2026-08-30 | 7370 |  | RGA -FINISHING | 7423795 |
| 7369 | 40200.40300.40600.54000.56400.58900.150500.2486700 | FLAT FLOORING | 5d | 2026-08-07 | 2026-08-12 | 7366 |  | RGA -FINISHING | 7423805 |
| 7370 | 40200.40300.40600.54000.56400.58900.150500.2486800 | WINDOW FIXING | 12d | 2026-08-12 | 2026-08-24 | 7369 |  | RGA -FINISHING | 7423815 |
| 7371 | 40200.40300.40600.54000.56400.58900.150500.2486900 | INTERNAL PAINTING - 1ST COAT | 12d | 2026-08-30 | 2026-09-11 | 7368 |  | RGA -FINISHING | 7423825 |
| 7372 | 40200.40300.40600.54000.56400.58900.150500.2487000 | INTERNAL DOOR FIXING | 15d | 2026-09-09 | 2026-09-24 | 7371FS-2d |  | RGA -FINISHING | 7423835 |
| 7373 | 40200.40300.40600.54000.56400.58900.150500.2487100 | WIRING & SWITCH PLATE FIXING | 8d | 2026-09-20 | 2026-09-28 | 7372FS-4d |  | RGA -FINISHING | 7423845 |
| 7374 | 40200.40300.40600.54000.56400.58900.150500.2487200 | TOILET FALSE CEILING | 7d | 2026-09-28 | 2026-10-05 | 7373 |  | RGA -FINISHING | 7423855 |
| 7375 | 40200.40300.40600.54000.56400.58900.150500.2487300 | MAIN DOOR FRAME SHUTTER FIXING | 6d | 2027-09-19 | 2027-09-25 | 7657 |  | RGA -FINISHING | 7423865 |
| 7376 | 40200.40300.40600.54000.56400.58900.150500.2487400 | FINAL COAT PAINT | 8d | 2027-09-25 | 2027-10-03 | 7375 |  | RGA -FINISHING | 7423875 |
| 7377 | 40200.40300.40600.54000.56400.58900.150600 | **11TH FLOOR** | 460.5d | 2026-07-10 | 2027-10-13 |  | start no earlier than 2026-07-10 | RGA -FINISHING | 7421425 |
| 7378 | 40200.40300.40600.54000.56400.58900.150600.2487500 | TOILET DADO TILE FIXING | 7d | 2026-09-18 | 2026-09-25 | 7134 |  | RGA -FINISHING | 7423885 |
| 7379 | 40200.40300.40600.54000.56400.58900.150600.2487600 | TOILET FLOORING WORK | 7d | 2026-09-25 | 2026-10-02 | 7378 |  | RGA -FINISHING | 7423895 |
| 7380 | 40200.40300.40600.54000.56400.58900.150600.2487700 | FIRE FIGHTING | 6d | 2026-07-10 | 2026-07-16 | 7133 |  | RGA -FINISHING | 7423905 |
| 7381 | 40200.40300.40600.54000.56400.58900.150600.2487800 | INTERNAL PAINTING - PUTTY / PRIMER APPLICATION | 6d | 2026-10-19 | 2026-10-25 | 7383 |  | RGA -FINISHING | 7423915 |
| 7382 | 40200.40300.40600.54000.56400.58900.150600.2487900 | FLAT FLOORING | 5d | 2026-10-02 | 2026-10-07 | 7379 |  | RGA -FINISHING | 7423925 |
| 7383 | 40200.40300.40600.54000.56400.58900.150600.2488000 | WINDOW FIXING | 12d | 2026-10-07 | 2026-10-19 | 7382 |  | RGA -FINISHING | 7423935 |
| 7384 | 40200.40300.40600.54000.56400.58900.150600.2488100 | INTERNAL PAINTING - 1ST COAT | 12d | 2026-10-25 | 2026-11-06 | 7381 |  | RGA -FINISHING | 7423945 |
| 7385 | 40200.40300.40600.54000.56400.58900.150600.2488200 | INTERNAL DOOR FIXING | 15d | 2026-11-04 | 2026-11-19 | 7384FS-2d |  | RGA -FINISHING | 7423955 |
| 7386 | 40200.40300.40600.54000.56400.58900.150600.2488300 | WIRING & SWITCH PLATE FIXING | 8d | 2026-11-15 | 2026-11-23 | 7385FS-4d |  | RGA -FINISHING | 7423965 |
| 7387 | 40200.40300.40600.54000.56400.58900.150600.2488400 | TOILET FALSE CEILING | 7d | 2026-11-23 | 2026-11-30 | 7386 |  | RGA -FINISHING | 7423975 |
| 7388 | 40200.40300.40600.54000.56400.58900.150600.2488500 | MAIN DOOR FRAME SHUTTER FIXING | 6d | 2027-09-29 | 2027-10-05 | 7665 |  | RGA -FINISHING | 7423985 |
| 7389 | 40200.40300.40600.54000.56400.58900.150600.2488600 | FINAL COAT PAINT | 8d | 2027-10-05 | 2027-10-13 | 7388 |  | RGA -FINISHING | 7423995 |

| ID | WBS | Task | Duration | Start | Finish | Predecessors | Constraint | Calendar | Unique_Task_ID |
| --- | --- | --- | --- | --- | --- | --- | --- | --- | --- |
| 7390 | 40200.40300.40600.54000.56400.58900.150700 | **12TH FLOOR** | 436d | 2026-08-03 | 2027-10-13 |  | start no earlier than 2026-08-03 | RGA -FINISHING | 7421435 |
| 7391 | 40200.40300.40600.54000.56400.58900.150700.2488700 | TOILET DADO TILE FIXING | 7d | 2026-08-27 | 2026-09-03 | 7141 |  | RGA -FINISHING | 7424005 |
| 7392 | 40200.40300.40600.54000.56400.58900.150700.2488800 | TOILET FLOORING WORK | 7d | 2026-08-27 | 2026-09-03 | 7391FF |  | RGA -FINISHING | 7424015 |
| 7393 | 40200.40300.40600.54000.56400.58900.150700.2488900 | FIRE FIGHTING | 6d | 2026-08-03 | 2026-08-09 | 7140 |  | RGA -FINISHING | 7424025 |
| 7394 | 40200.40300.40600.54000.56400.58900.150700.2489000 | INTERNAL PAINTING - PUTTY / PRIMER APPLICATION | 6d | 2026-09-20 | 2026-09-26 | 7396 |  | RGA -FINISHING | 7424035 |
| 7395 | 40200.40300.40600.54000.56400.58900.150700.2489100 | FLAT FLOORING | 5d | 2026-09-03 | 2026-09-08 | 7392 |  | RGA -FINISHING | 7424045 |
| 7396 | 40200.40300.40600.54000.56400.58900.150700.2489200 | WINDOW FIXING | 12d | 2026-09-08 | 2026-09-20 | 7395 |  | RGA -FINISHING | 7424055 |
| 7397 | 40200.40300.40600.54000.56400.58900.150700.2489300 | INTERNAL PAINTING - 1ST COAT | 12d | 2026-09-26 | 2026-10-08 | 7394 |  | RGA -FINISHING | 7424065 |
| 7398 | 40200.40300.40600.54000.56400.58900.150700.2489400 | INTERNAL DOOR FIXING | 15d | 2026-10-06 | 2026-10-21 | 7397FS-2d |  | RGA -FINISHING | 7424075 |
| 7399 | 40200.40300.40600.54000.56400.58900.150700.2489500 | WIRING & SWITCH PLATE FIXING | 8d | 2026-10-17 | 2026-10-25 | 7398FS-4d |  | RGA -FINISHING | 7424085 |
| 7400 | 40200.40300.40600.54000.56400.58900.150700.2489600 | TOILET FALSE CEILING | 7d | 2026-10-25 | 2026-11-01 | 7399 |  | RGA -FINISHING | 7424095 |
| 7401 | 40200.40300.40600.54000.56400.58900.150700.2489700 | MAIN DOOR FRAME SHUTTER FIXING | 6d | 2027-09-29 | 2027-10-05 | 7673 |  | RGA -FINISHING | 7424105 |
| 7402 | 40200.40300.40600.54000.56400.58900.150700.2489800 | FINAL COAT PAINT | 8d | 2027-10-05 | 2027-10-13 | 7401 |  | RGA -FINISHING | 7424115 |
| 7403 | 40200.40300.40600.54000.56400.58900.150800 | **13TH FLOOR** | 419d | 2026-08-20 | 2027-10-13 |  | start no earlier than 2026-08-20 | RGA -FINISHING | 7421445 |
| 7404 | 40200.40300.40600.54000.56400.58900.150800.2489900 | TOILET DADO TILE FIXING | 10d | 2026-10-12 | 2026-10-22 | 7148 |  | RGA -FINISHING | 7424125 |
| 7405 | 40200.40300.40600.54000.56400.58900.150800.2490000 | TOILET FLOORING WORK | 7d | 2026-10-22 | 2026-10-29 | 7404 |  | RGA -FINISHING | 7424135 |
| 7406 | 40200.40300.40600.54000.56400.58900.150800.2490100 | FIRE FIGHTING | 8d | 2026-08-20 | 2026-08-28 | 7147 |  | RGA -FINISHING | 7424145 |
| 7407 | 40200.40300.40600.54000.56400.58900.150800.2490200 | INTERNAL PAINTING - PUTTY / PRIMER APPLICATION | 5d | 2026-11-10 | 2026-11-15 | 7409 |  | RGA -FINISHING | 7424155 |
| 7408 | 40200.40300.40600.54000.56400.58900.150800.2490300 | FLAT FLOORING | 7d | 2026-10-29 | 2026-11-05 | 7405 |  | RGA -FINISHING | 7424165 |
| 7409 | 40200.40300.40600.54000.56400.58900.150800.2490400 | WINDOW FIXING | 5d | 2026-11-05 | 2026-11-10 | 7408 |  | RGA -FINISHING | 7424175 |
| 7410 | 40200.40300.40600.54000.56400.58900.150800.2490500 | INTERNAL PAINTING - 1ST COAT | 4d | 2026-11-15 | 2026-11-19 | 7407 |  | RGA -FINISHING | 7424185 |
| 7411 | 40200.40300.40600.54000.56400.58900.150800.2490600 | INTERNAL DOOR FIXING | 15d | 2026-11-17 | 2026-12-02 | 7410FS-2d |  | RGA -FINISHING | 7424195 |
| 7412 | 40200.40300.40600.54000.56400.58900.150800.2490700 | WIRING & SWITCH PLATE FIXING | 8d | 2026-11-28 | 2026-12-06 | 7411FS-4d |  | RGA -FINISHING | 7424205 |
| 7413 | 40200.40300.40600.54000.56400.58900.150800.2490800 | TOILET FALSE CEILING | 7d | 2026-12-06 | 2026-12-13 | 7412 |  | RGA -FINISHING | 7424215 |
| 7414 | 40200.40300.40600.54000.56400.58900.150800.2490900 | MAIN DOOR FRAME SHUTTER FIXING | 6d | 2027-09-29 | 2027-10-05 | 7681 |  | RGA -FINISHING | 7424225 |
| 7415 | 40200.40300.40600.54000.56400.58900.150800.2491000 | FINAL COAT PAINT | 8d | 2027-10-05 | 2027-10-13 | 7414 |  | RGA -FINISHING | 7424235 |

| ID | WBS | Task | Duration | Start | Finish | Predecessors | Constraint | Calendar | Unique_Task_ID |
| --- | --- | --- | --- | --- | --- | --- | --- | --- | --- |
| 7416 | 40200.40300.40600.54000.56400.58900.150900 | **14TH FLOOR** | 401d | 2026-09-07 | 2027-10-13 |  | start no earlier than 2026-09-07 | RGA -FINISHING | 7421455 |
| 7417 | 40200.40300.40600.54000.56400.58900.150900.2491100 | TOILET DADO TILE FIXING | 10d | 2026-10-31 | 2026-11-10 | 7155 |  | RGA -FINISHING | 7424245 |
| 7418 | 40200.40300.40600.54000.56400.58900.150900.2491200 | TOILET FLOORING WORK | 7d | 2026-11-10 | 2026-11-17 | 7417 |  | RGA -FINISHING | 7424255 |
| 7419 | 40200.40300.40600.54000.56400.58900.150900.2491300 | FIRE FIGHTING | 8d | 2026-09-07 | 2026-09-15 | 7154 |  | RGA -FINISHING | 7424265 |
| 7420 | 40200.40300.40600.54000.56400.58900.150900.2491400 | INTERNAL PAINTING - PUTTY / PRIMER APPLICATION | 5d | 2026-11-29 | 2026-12-04 | 7422 |  | RGA -FINISHING | 7424275 |
| 7421 | 40200.40300.40600.54000.56400.58900.150900.2491500 | FLAT FLOORING | 7d | 2026-11-17 | 2026-11-24 | 7418 |  | RGA -FINISHING | 7424285 |
| 7422 | 40200.40300.40600.54000.56400.58900.150900.2491600 | WINDOW FIXING | 5d | 2026-11-24 | 2026-11-29 | 7421 |  | RGA -FINISHING | 7424295 |
| 7423 | 40200.40300.40600.54000.56400.58900.150900.2491700 | INTERNAL PAINTING - 1ST COAT | 4d | 2026-12-04 | 2026-12-08 | 7420 |  | RGA -FINISHING | 7424305 |
| 7424 | 40200.40300.40600.54000.56400.58900.150900.2491800 | INTERNAL DOOR FIXING | 15d | 2026-12-06 | 2026-12-21 | 7423FS-2d |  | RGA -FINISHING | 7424315 |
| 7425 | 40200.40300.40600.54000.56400.58900.150900.2491900 | WIRING & SWITCH PLATE FIXING | 8d | 2026-12-17 | 2026-12-25 | 7424FS-4d |  | RGA -FINISHING | 7424325 |
| 7426 | 40200.40300.40600.54000.56400.58900.150900.2492000 | TOILET FALSE CEILING | 7d | 2026-12-25 | 2027-01-01 | 7425 |  | RGA -FINISHING | 7424335 |
| 7427 | 40200.40300.40600.54000.56400.58900.150900.2492100 | MAIN DOOR FRAME SHUTTER FIXING | 6d | 2027-09-29 | 2027-10-05 | 7689 |  | RGA -FINISHING | 7424345 |
| 7428 | 40200.40300.40600.54000.56400.58900.150900.2492200 | FINAL COAT PAINT | 8d | 2027-10-05 | 2027-10-13 | 7427 |  | RGA -FINISHING | 7424355 |
| 7429 | 40200.40300.40600.54000.56400.58900.151000 | **15TH FLOOR** | 394d | 2026-09-24 | 2027-10-23 |  | start no earlier than 2026-09-24 | RGA -FINISHING | 7421465 |
| 7430 | 40200.40300.40600.54000.56400.58900.151000.2492300 | TOILET DADO TILE FIXING | 10d | 2026-11-18 | 2026-11-28 | 7162 |  | RGA -FINISHING | 7424365 |
| 7431 | 40200.40300.40600.54000.56400.58900.151000.2492400 | TOILET FLOORING WORK | 7d | 2026-11-28 | 2026-12-05 | 7430 |  | RGA -FINISHING | 7424375 |
| 7432 | 40200.40300.40600.54000.56400.58900.151000.2492500 | FIRE FIGHTING | 8d | 2026-09-24 | 2026-10-02 | 7161 |  | RGA -FINISHING | 7424385 |
| 7433 | 40200.40300.40600.54000.56400.58900.151000.2492600 | INTERNAL PAINTING - PUTTY / PRIMER APPLICATION | 5d | 2026-12-17 | 2026-12-22 | 7435 |  | RGA -FINISHING | 7424395 |
| 7434 | 40200.40300.40600.54000.56400.58900.151000.2492700 | FLAT FLOORING | 7d | 2026-12-05 | 2026-12-12 | 7431 |  | RGA -FINISHING | 7424405 |
| 7435 | 40200.40300.40600.54000.56400.58900.151000.2492800 | WINDOW FIXING | 5d | 2026-12-12 | 2026-12-17 | 7434 |  | RGA -FINISHING | 7424415 |
| 7436 | 40200.40300.40600.54000.56400.58900.151000.2492900 | INTERNAL PAINTING - 1ST COAT | 4d | 2026-12-22 | 2026-12-26 | 7433 |  | RGA -FINISHING | 7424425 |
| 7437 | 40200.40300.40600.54000.56400.58900.151000.2493000 | INTERNAL DOOR FIXING | 15d | 2026-12-24 | 2027-01-08 | 7436FS-2d |  | RGA -FINISHING | 7424435 |
| 7438 | 40200.40300.40600.54000.56400.58900.151000.2493100 | WIRING & SWITCH PLATE FIXING | 8d | 2027-01-04 | 2027-01-12 | 7437FS-4d |  | RGA -FINISHING | 7424445 |
| 7439 | 40200.40300.40600.54000.56400.58900.151000.2493200 | TOILET FALSE CEILING | 7d | 2027-01-12 | 2027-01-19 | 7438 |  | RGA -FINISHING | 7424455 |
| 7440 | 40200.40300.40600.54000.56400.58900.151000.2493300 | MAIN DOOR FRAME SHUTTER FIXING | 6d | 2027-10-09 | 2027-10-15 | 7697 |  | RGA -FINISHING | 7424465 |
| 7441 | 40200.40300.40600.54000.56400.58900.151000.2493400 | FINAL COAT PAINT | 8d | 2027-10-15 | 2027-10-23 | 7440 |  | RGA -FINISHING | 7424475 |

| ID | WBS | Task | Duration | Start | Finish | Predecessors | Constraint | Calendar | Unique_Task_ID |
| --- | --- | --- | --- | --- | --- | --- | --- | --- | --- |
| 7442 | 40200.40300.40600.54000.56400.58900.151100 | **16TH FLOOR** | 378d | 2026-10-10 | 2027-10-23 |  | start no earlier than 2026-10-10 | RGA -FINISHING | 7421475 |
| 7443 | 40200.40300.40600.54000.56400.58900.151100.2493500 | TOILET DADO TILE FIXING | 10d | 2026-12-05 | 2026-12-15 | 7169 |  | RGA -FINISHING | 7424485 |
| 7444 | 40200.40300.40600.54000.56400.58900.151100.2493600 | TOILET FLOORING WORK | 7d | 2026-12-15 | 2026-12-22 | 7443 |  | RGA -FINISHING | 7424495 |
| 7445 | 40200.40300.40600.54000.56400.58900.151100.2493700 | FIRE FIGHTING | 8d | 2026-10-10 | 2026-10-18 | 7168 |  | RGA -FINISHING | 7424505 |
| 7446 | 40200.40300.40600.54000.56400.58900.151100.2493800 | INTERNAL PAINTING - PUTTY / PRIMER APPLICATION | 5d | 2027-01-03 | 2027-01-08 | 7448 |  | RGA -FINISHING | 7424515 |
| 7447 | 40200.40300.40600.54000.56400.58900.151100.2493900 | FLAT FLOORING | 7d | 2026-12-22 | 2026-12-29 | 7444 |  | RGA -FINISHING | 7424525 |
| 7448 | 40200.40300.40600.54000.56400.58900.151100.2494000 | WINDOW FIXING | 5d | 2026-12-29 | 2027-01-03 | 7447 |  | RGA -FINISHING | 7424535 |
| 7449 | 40200.40300.40600.54000.56400.58900.151100.2494100 | INTERNAL PAINTING - 1ST COAT | 4d | 2027-01-08 | 2027-01-12 | 7446 |  | RGA -FINISHING | 7424545 |
| 7450 | 40200.40300.40600.54000.56400.58900.151100.2494200 | INTERNAL DOOR FIXING | 15d | 2027-01-10 | 2027-01-25 | 7449FS-2d |  | RGA -FINISHING | 7424555 |
| 7451 | 40200.40300.40600.54000.56400.58900.151100.2494300 | WIRING & SWITCH PLATE FIXING | 8d | 2027-01-21 | 2027-01-29 | 7450FS-4d |  | RGA -FINISHING | 7424565 |
| 7452 | 40200.40300.40600.54000.56400.58900.151100.2494400 | TOILET FALSE CEILING | 7d | 2027-01-29 | 2027-02-05 | 7451 |  | RGA -FINISHING | 7424575 |
| 7453 | 40200.40300.40600.54000.56400.58900.151100.2494500 | MAIN DOOR FRAME SHUTTER FIXING | 6d | 2027-10-09 | 2027-10-15 | 7705 |  | RGA -FINISHING | 7424585 |
| 7454 | 40200.40300.40600.54000.56400.58900.151100.2494600 | FINAL COAT PAINT | 8d | 2027-10-15 | 2027-10-23 | 7453 |  | RGA -FINISHING | 7424595 |
| 7455 | 40200.40300.40600.54000.56400.58900.151200 | **17TH FLOOR** | 360d | 2026-10-28 | 2027-10-23 |  | start no earlier than 2026-10-28 | RGA -FINISHING | 7421485 |
| 7456 | 40200.40300.40600.54000.56400.58900.151200.2494700 | TOILET DADO TILE FIXING | 10d | 2026-12-21 | 2026-12-31 | 7176 |  | RGA -FINISHING | 7424605 |
| 7457 | 40200.40300.40600.54000.56400.58900.151200.2494800 | TOILET FLOORING WORK | 7d | 2026-12-31 | 2027-01-07 | 7456 |  | RGA -FINISHING | 7424615 |
| 7458 | 40200.40300.40600.54000.56400.58900.151200.2494900 | FIRE FIGHTING | 8d | 2026-10-28 | 2026-11-05 | 7175 |  | RGA -FINISHING | 7424625 |
| 7459 | 40200.40300.40600.54000.56400.58900.151200.2495000 | INTERNAL PAINTING - PUTTY / PRIMER APPLICATION | 5d | 2027-01-19 | 2027-01-24 | 7461 |  | RGA -FINISHING | 7424635 |
| 7460 | 40200.40300.40600.54000.56400.58900.151200.2495100 | FLAT FLOORING | 7d | 2027-01-07 | 2027-01-14 | 7457 |  | RGA -FINISHING | 7424645 |
| 7461 | 40200.40300.40600.54000.56400.58900.151200.2495200 | WINDOW FIXING | 5d | 2027-01-14 | 2027-01-19 | 7460 |  | RGA -FINISHING | 7424655 |
| 7462 | 40200.40300.40600.54000.56400.58900.151200.2495300 | INTERNAL PAINTING - 1ST COAT | 4d | 2027-01-24 | 2027-01-28 | 7459 |  | RGA -FINISHING | 7424665 |
| 7463 | 40200.40300.40600.54000.56400.58900.151200.2495400 | INTERNAL DOOR FIXING | 15d | 2027-01-26 | 2027-02-10 | 7462FS-2d |  | RGA -FINISHING | 7424675 |
| 7464 | 40200.40300.40600.54000.56400.58900.151200.2495500 | WIRING & SWITCH PLATE FIXING | 8d | 2027-02-06 | 2027-02-14 | 7463FS-4d |  | RGA -FINISHING | 7424685 |
| 7465 | 40200.40300.40600.54000.56400.58900.151200.2495600 | TOILET FALSE CEILING | 7d | 2027-02-14 | 2027-02-21 | 7464 |  | RGA -FINISHING | 7424695 |
| 7466 | 40200.40300.40600.54000.56400.58900.151200.2495700 | MAIN DOOR FRAME SHUTTER FIXING | 6d | 2027-10-09 | 2027-10-15 | 7713 |  | RGA -FINISHING | 7424705 |
| 7467 | 40200.40300.40600.54000.56400.58900.151200.2495800 | FINAL COAT PAINT | 8d | 2027-10-15 | 2027-10-23 | 7466 |  | RGA -FINISHING | 7424715 |

| ID | WBS | Task | Duration | Start | Finish | Predecessors | Constraint | Calendar | Unique_Task_ID |
| --- | --- | --- | --- | --- | --- | --- | --- | --- | --- |
| 7468 | 40200.40300.40600.54000.56400.58900.151300 | **18TH FLOOR** | 343d | 2026-11-14 | 2027-10-23 |  | start no earlier than 2026-11-14 | RGA -FINISHING | 7421495 |
| 7469 | 40200.40300.40600.54000.56400.58900.151300.2495900 | TOILET DADO TILE FIXING | 10d | 2026-12-21 | 2026-12-31 | 7183 |  | RGA -FINISHING | 7424725 |
| 7470 | 40200.40300.40600.54000.56400.58900.151300.2496000 | TOILET FLOORING WORK | 7d | 2026-12-31 | 2027-01-07 | 7469 |  | RGA -FINISHING | 7424735 |
| 7471 | 40200.40300.40600.54000.56400.58900.151300.2496100 | FIRE FIGHTING | 8d | 2026-11-14 | 2026-11-22 | 7182 |  | RGA -FINISHING | 7424745 |
| 7472 | 40200.40300.40600.54000.56400.58900.151300.2496200 | INTERNAL PAINTING - PUTTY / PRIMER APPLICATION | 5d | 2027-01-19 | 2027-01-24 | 7474 |  | RGA -FINISHING | 7424755 |
| 7473 | 40200.40300.40600.54000.56400.58900.151300.2496300 | FLAT FLOORING | 7d | 2027-01-07 | 2027-01-14 | 7470 |  | RGA -FINISHING | 7424765 |
| 7474 | 40200.40300.40600.54000.56400.58900.151300.2496400 | WINDOW FIXING | 5d | 2027-01-14 | 2027-01-19 | 7473 |  | RGA -FINISHING | 7424775 |
| 7475 | 40200.40300.40600.54000.56400.58900.151300.2496500 | INTERNAL PAINTING - 1ST COAT | 4d | 2027-01-24 | 2027-01-28 | 7472 |  | RGA -FINISHING | 7424785 |
| 7476 | 40200.40300.40600.54000.56400.58900.151300.2496600 | INTERNAL DOOR FIXING | 15d | 2027-01-26 | 2027-02-10 | 7475FS-2d |  | RGA -FINISHING | 7424795 |
| 7477 | 40200.40300.40600.54000.56400.58900.151300.2496700 | WIRING & SWITCH PLATE FIXING | 8d | 2027-02-06 | 2027-02-14 | 7476FS-4d |  | RGA -FINISHING | 7424805 |
| 7478 | 40200.40300.40600.54000.56400.58900.151300.2496800 | TOILET FALSE CEILING | 7d | 2027-02-14 | 2027-02-21 | 7477 |  | RGA -FINISHING | 7424815 |
| 7479 | 40200.40300.40600.54000.56400.58900.151300.2496900 | MAIN DOOR FRAME SHUTTER FIXING | 6d | 2027-10-09 | 2027-10-15 | 7721 |  | RGA -FINISHING | 7424825 |
| 7480 | 40200.40300.40600.54000.56400.58900.151300.2497000 | FINAL COAT PAINT | 8d | 2027-10-15 | 2027-10-23 | 7479 |  | RGA -FINISHING | 7424835 |
| 7481 | 40200.40300.40600.54000.56400.58900.151400 | **19TH FLOOR** | 329.5d | 2026-12-08 | 2027-11-02 |  | start no earlier than 2026-12-08 | RGA -FINISHING | 7421505 |
| 7482 | 40200.40300.40600.54000.56400.58900.151400.2497100 | TOILET DADO TILE FIXING | 10d | 2027-01-08 | 2027-01-18 | 7190 |  | RGA -FINISHING | 7424845 |
| 7483 | 40200.40300.40600.54000.56400.58900.151400.2497200 | TOILET FLOORING WORK | 7d | 2027-01-18 | 2027-01-25 | 7482 |  | RGA -FINISHING | 7424855 |
| 7484 | 40200.40300.40600.54000.56400.58900.151400.2497300 | FIRE FIGHTING | 8d | 2026-12-08 | 2026-12-16 | 7189 |  | RGA -FINISHING | 7424865 |
| 7485 | 40200.40300.40600.54000.56400.58900.151400.2497400 | INTERNAL PAINTING - PUTTY / PRIMER APPLICATION | 5d | 2027-02-06 | 2027-02-11 | 7487 |  | RGA -FINISHING | 7424875 |
| 7486 | 40200.40300.40600.54000.56400.58900.151400.2497500 | FLAT FLOORING | 7d | 2027-01-25 | 2027-02-01 | 7483 |  | RGA -FINISHING | 7424885 |
| 7487 | 40200.40300.40600.54000.56400.58900.151400.2497600 | WINDOW FIXING | 5d | 2027-02-01 | 2027-02-06 | 7486 |  | RGA -FINISHING | 7424895 |
| 7488 | 40200.40300.40600.54000.56400.58900.151400.2497700 | INTERNAL PAINTING - 1ST COAT | 4d | 2027-02-11 | 2027-02-15 | 7485 |  | RGA -FINISHING | 7424905 |
| 7489 | 40200.40300.40600.54000.56400.58900.151400.2497800 | INTERNAL DOOR FIXING | 15d | 2027-02-13 | 2027-02-28 | 7488FS-2d |  | RGA -FINISHING | 7424915 |
| 7490 | 40200.40300.40600.54000.56400.58900.151400.2497900 | WIRING & SWITCH PLATE FIXING | 8d | 2027-02-24 | 2027-03-04 | 7489FS-4d |  | RGA -FINISHING | 7424925 |
| 7491 | 40200.40300.40600.54000.56400.58900.151400.2498000 | TOILET FALSE CEILING | 7d | 2027-03-04 | 2027-03-11 | 7490 |  | RGA -FINISHING | 7424935 |
| 7492 | 40200.40300.40600.54000.56400.58900.151400.2498100 | MAIN DOOR FRAME SHUTTER FIXING | 6d | 2027-10-19 | 2027-10-25 | 7729 |  | RGA -FINISHING | 7424945 |
| 7493 | 40200.40300.40600.54000.56400.58900.151400.2498200 | FINAL COAT PAINT | 8d | 2027-10-25 | 2027-11-02 | 7492 |  | RGA -FINISHING | 7424955 |

| ID | WBS | Task | Duration | Start | Finish | Predecessors | Constraint | Calendar | Unique_Task_ID |
| --- | --- | --- | --- | --- | --- | --- | --- | --- | --- |
| 7494 | 40200.40300.40600.54000.56400.58900.151500 | **20TH FLOOR** | 304d | 2027-01-02 | 2027-11-02 |  | start no earlier than 2027-01-02 | RGA -FINISHING | 7421515 |
| 7495 | 40200.40300.40600.54000.56400.58900.151500.2498300 | TOILET DADO TILE FIXING | 10d | 2027-01-25 | 2027-02-04 | 7197 |  | RGA -FINISHING | 7424965 |
| 7496 | 40200.40300.40600.54000.56400.58900.151500.2498400 | TOILET FLOORING WORK | 7d | 2027-02-04 | 2027-02-11 | 7495 |  | RGA -FINISHING | 7424975 |
| 7497 | 40200.40300.40600.54000.56400.58900.151500.2498500 | FIRE FIGHTING | 8d | 2027-01-02 | 2027-01-10 | 7196 |  | RGA -FINISHING | 7424985 |
| 7498 | 40200.40300.40600.54000.56400.58900.151500.2498600 | INTERNAL PAINTING - PUTTY / PRIMER APPLICATION | 5d | 2027-02-23 | 2027-02-28 | 7500 |  | RGA -FINISHING | 7424995 |
| 7499 | 40200.40300.40600.54000.56400.58900.151500.2498700 | FLAT FLOORING | 7d | 2027-02-11 | 2027-02-18 | 7496 |  | RGA -FINISHING | 7425005 |
| 7500 | 40200.40300.40600.54000.56400.58900.151500.2498800 | WINDOW FIXING | 5d | 2027-02-18 | 2027-02-23 | 7499 |  | RGA -FINISHING | 7425015 |
| 7501 | 40200.40300.40600.54000.56400.58900.151500.2498900 | INTERNAL PAINTING - 1ST COAT | 4d | 2027-02-28 | 2027-03-04 | 7498 |  | RGA -FINISHING | 7425025 |
| 7502 | 40200.40300.40600.54000.56400.58900.151500.2499000 | INTERNAL DOOR FIXING | 15d | 2027-03-02 | 2027-03-17 | 7501FS-2d |  | RGA -FINISHING | 7425035 |
| 7503 | 40200.40300.40600.54000.56400.58900.151500.2499100 | WIRING & SWITCH PLATE FIXING | 8d | 2027-03-13 | 2027-03-21 | 7502FS-4d |  | RGA -FINISHING | 7425045 |
| 7504 | 40200.40300.40600.54000.56400.58900.151500.2499200 | TOILET FALSE CEILING | 7d | 2027-03-21 | 2027-03-28 | 7503 |  | RGA -FINISHING | 7425055 |
| 7505 | 40200.40300.40600.54000.56400.58900.151500.2499300 | MAIN DOOR FRAME SHUTTER FIXING | 6d | 2027-10-19 | 2027-10-25 | 7737 |  | RGA -FINISHING | 7425065 |
| 7506 | 40200.40300.40600.54000.56400.58900.151500.2499400 | FINAL COAT PAINT | 8d | 2027-10-25 | 2027-11-02 | 7505 |  | RGA -FINISHING | 7425075 |
| 7507 | 40200.40300.40600.54000.56400.58900.151600 | **21st FLOOR** | 287d | 2027-01-19 | 2027-11-02 |  | start no earlier than 2027-01-19 | RGA -FINISHING | 7421525 |
| 7508 | 40200.40300.40600.54000.56400.58900.151600.2499500 | TOILET DADO TILE FIXING | 10d | 2027-02-18 | 2027-02-28 | 7204 |  | RGA -FINISHING | 7425085 |
| 7509 | 40200.40300.40600.54000.56400.58900.151600.2499600 | TOILET FLOORING WORK | 7d | 2027-02-28 | 2027-03-07 | 7508 |  | RGA -FINISHING | 7425095 |
| 7510 | 40200.40300.40600.54000.56400.58900.151600.2499700 | FIRE FIGHTING | 8d | 2027-01-19 | 2027-01-27 | 7203 |  | RGA -FINISHING | 7425105 |
| 7511 | 40200.40300.40600.54000.56400.58900.151600.2499800 | INTERNAL PAINTING - PUTTY / PRIMER APPLICATION | 15d | 2027-03-19 | 2027-04-03 | 7513 |  | RGA -FINISHING | 7425115 |
| 7512 | 40200.40300.40600.54000.56400.58900.151600.2499900 | FLAT FLOORING | 5d | 2027-03-07 | 2027-03-12 | 7509 |  | RGA -FINISHING | 7425125 |
| 7513 | 40200.40300.40600.54000.56400.58900.151600.2500000 | WINDOW FIXING | 7d | 2027-03-12 | 2027-03-19 | 7512 |  | RGA -FINISHING | 7425135 |
| 7514 | 40200.40300.40600.54000.56400.58900.151600.2500100 | INTERNAL PAINTING - 1ST COAT | 5d | 2027-04-03 | 2027-04-08 | 7511 |  | RGA -FINISHING | 7425145 |
| 7515 | 40200.40300.40600.54000.56400.58900.151600.2500200 | INTERNAL DOOR FIXING | 4d | 2027-04-06 | 2027-04-10 | 7514FS-2d |  | RGA -FINISHING | 7425155 |
| 7516 | 40200.40300.40600.54000.56400.58900.151600.2500300 | WIRING & SWITCH PLATE FIXING | 8d | 2027-04-06 | 2027-04-14 | 7515FS-4d |  | RGA -FINISHING | 7425165 |
| 7517 | 40200.40300.40600.54000.56400.58900.151600.2500400 | TOILET FALSE CEILING | 7d | 2027-04-14 | 2027-04-21 | 7516 |  | RGA -FINISHING | 7425175 |
| 7518 | 40200.40300.40600.54000.56400.58900.151600.2500500 | MAIN DOOR FRAME SHUTTER FIXING | 6d | 2027-10-19 | 2027-10-25 | 7745 |  | RGA -FINISHING | 7425185 |
| 7519 | 40200.40300.40600.54000.56400.58900.151600.2500600 | FINAL COAT PAINT | 8d | 2027-10-25 | 2027-11-02 | 7518 |  | RGA -FINISHING | 7425195 |

| ID | WBS | Task | Duration | Start | Finish | Predecessors | Constraint | Calendar | Unique_Task_ID |
| --- | --- | --- | --- | --- | --- | --- | --- | --- | --- |
| 7520 | 40200.40300.40600.54000.56400.58900.151700 | **22nd FLOOR** | 260d | 2027-02-15 | 2027-11-02 |  | start no earlier than 2027-02-15 | RGA -FINISHING | 7421535 |
| 7521 | 40200.40300.40600.54000.56400.58900.151700.2500700 | TOILET DADO TILE FIXING | 10d | 2027-04-04 | 2027-04-14 | 7211 |  | RGA -FINISHING | 7425205 |
| 7522 | 40200.40300.40600.54000.56400.58900.151700.2500800 | TOILET FLOORING WORK | 7d | 2027-04-14 | 2027-04-21 | 7521 |  | RGA -FINISHING | 7425215 |
| 7523 | 40200.40300.40600.54000.56400.58900.151700.2500900 | FIRE FIGHTING | 8d | 2027-02-15 | 2027-02-23 | 7210 |  | RGA -FINISHING | 7425225 |
| 7524 | 40200.40300.40600.54000.56400.58900.151700.2501000 | INTERNAL PAINTING - PUTTY / PRIMER APPLICATION | 5d | 2027-05-03 | 2027-05-08 | 7526 |  | RGA -FINISHING | 7425235 |
| 7525 | 40200.40300.40600.54000.56400.58900.151700.2501100 | FLAT FLOORING | 7d | 2027-04-21 | 2027-04-28 | 7522 |  | RGA -FINISHING | 7425245 |
| 7526 | 40200.40300.40600.54000.56400.58900.151700.2501200 | WINDOW FIXING | 5d | 2027-04-28 | 2027-05-03 | 7525 |  | RGA -FINISHING | 7425255 |
| 7527 | 40200.40300.40600.54000.56400.58900.151700.2501300 | INTERNAL PAINTING - 1ST COAT | 4d | 2027-05-08 | 2027-05-12 | 7524 |  | RGA -FINISHING | 7425265 |
| 7528 | 40200.40300.40600.54000.56400.58900.151700.2501400 | INTERNAL DOOR FIXING | 15d | 2027-05-10 | 2027-05-25 | 7527FS-2d |  | RGA -FINISHING | 7425275 |
| 7529 | 40200.40300.40600.54000.56400.58900.151700.2501500 | WIRING & SWITCH PLATE FIXING | 8d | 2027-05-21 | 2027-05-29 | 7528FS-4d |  | RGA -FINISHING | 7425285 |
| 7530 | 40200.40300.40600.54000.56400.58900.151700.2501600 | TOILET FALSE CEILING | 7d | 2027-05-29 | 2027-06-05 | 7529 |  | RGA -FINISHING | 7425295 |
| 7531 | 40200.40300.40600.54000.56400.58900.151700.2501700 | MAIN DOOR FRAME SHUTTER FIXING | 6d | 2027-10-19 | 2027-10-25 | 7753 |  | RGA -FINISHING | 7425305 |
| 7532 | 40200.40300.40600.54000.56400.58900.151700.2501800 | FINAL COAT PAINT | 8d | 2027-10-25 | 2027-11-02 | 7531 |  | RGA -FINISHING | 7425315 |
| 7533 | 40200.40300.40600.54000.56400.58900.151800 | **23TH FLOOR** | 253d | 2027-03-04 | 2027-11-12 |  | start no earlier than 2027-03-04 | RGA -FINISHING | 7421545 |
| 7534 | 40200.40300.40600.54000.56400.58900.151800.2501900 | TOILET DADO TILE FIXING | 10d | 2027-05-01 | 2027-05-11 | 7218 |  | RGA -FINISHING | 7425325 |
| 7535 | 40200.40300.40600.54000.56400.58900.151800.2502000 | TOILET FLOORING WORK | 7d | 2027-05-11 | 2027-05-18 | 7534 |  | RGA -FINISHING | 7425335 |
| 7536 | 40200.40300.40600.54000.56400.58900.151800.2502100 | FIRE FIGHTING | 8d | 2027-03-04 | 2027-03-12 | 7217 |  | RGA -FINISHING | 7425345 |
| 7537 | 40200.40300.40600.54000.56400.58900.151800.2502200 | INTERNAL PAINTING - PUTTY / PRIMER APPLICATION | 5d | 2027-05-30 | 2027-06-04 | 7539 |  | RGA -FINISHING | 7425355 |
| 7538 | 40200.40300.40600.54000.56400.58900.151800.2502300 | FLAT FLOORING | 7d | 2027-05-18 | 2027-05-25 | 7535 |  | RGA -FINISHING | 7425365 |
| 7539 | 40200.40300.40600.54000.56400.58900.151800.2502400 | WINDOW FIXING | 5d | 2027-05-25 | 2027-05-30 | 7538 |  | RGA -FINISHING | 7425375 |
| 7540 | 40200.40300.40600.54000.56400.58900.151800.2502500 | INTERNAL PAINTING - 1ST COAT | 4d | 2027-06-04 | 2027-06-08 | 7537 |  | RGA -FINISHING | 7425385 |
| 7541 | 40200.40300.40600.54000.56400.58900.151800.2502600 | INTERNAL DOOR FIXING | 15d | 2027-06-06 | 2027-06-21 | 7540FS-2d |  | RGA -FINISHING | 7425395 |
| 7542 | 40200.40300.40600.54000.56400.58900.151800.2502700 | WIRING & SWITCH PLATE FIXING | 8d | 2027-06-17 | 2027-06-25 | 7541FS-4d |  | RGA -FINISHING | 7425405 |
| 7543 | 40200.40300.40600.54000.56400.58900.151800.2502800 | TOILET FALSE CEILING | 7d | 2027-06-25 | 2027-07-02 | 7542 |  | RGA -FINISHING | 7425415 |
| 7544 | 40200.40300.40600.54000.56400.58900.151800.2502900 | MAIN DOOR FRAME SHUTTER FIXING | 6d | 2027-10-29 | 2027-11-04 | 7761 |  | RGA -FINISHING | 7425425 |
| 7545 | 40200.40300.40600.54000.56400.58900.151800.2503000 | FINAL COAT PAINT | 8d | 2027-11-04 | 2027-11-12 | 7544 |  | RGA -FINISHING | 7425435 |

| ID | WBS | Task | Duration | Start | Finish | Predecessors | Constraint | Calendar | Unique_Task_ID |
| --- | --- | --- | --- | --- | --- | --- | --- | --- | --- |
| 7546 | 40200.40300.40600.54000.56400.58900.151900 | **24TH FLOOR** | 157d | 2027-06-08 | 2027-11-12 |  | start no earlier than 2027-06-08 | RGA -FINISHING | 7421555 |
| 7547 | 40200.40300.40600.54000.56400.58900.151900.2503100 | TOILET DADO TILE FIXING | 10d | 2027-06-08 | 2027-06-18 | 7227 |  | RGA -FINISHING | 7425445 |
| 7548 | 40200.40300.40600.54000.56400.58900.151900.2503200 | TOILET FLOORING WORK | 7d | 2027-06-18 | 2027-06-25 | 7547 |  | RGA -FINISHING | 7425455 |
| 7549 | 40200.40300.40600.54000.56400.58900.151900.2503300 | FIRE FIGHTING | 8d | 2027-07-07 | 2027-07-15 | 7225 |  | RGA -FINISHING | 7425465 |
| 7550 | 40200.40300.40600.54000.56400.58900.151900.2503400 | INTERNAL PAINTING - PUTTY / PRIMER APPLICATION | 5d | 2027-07-27 | 2027-08-01 | 7552 |  | RGA -FINISHING | 7425475 |
| 7551 | 40200.40300.40600.54000.56400.58900.151900.2503500 | FLAT FLOORING | 7d | 2027-06-25 | 2027-07-02 | 7548 |  | RGA -FINISHING | 7425485 |
| 7552 | 40200.40300.40600.54000.56400.58900.151900.2503600 | WINDOW FIXING | 5d | 2027-07-22 | 2027-07-27 | 7551FS+20d |  | RGA -FINISHING | 7425495 |
| 7553 | 40200.40300.40600.54000.56400.58900.151900.2503700 | INTERNAL PAINTING - 1ST COAT | 4d | 2027-08-01 | 2027-08-05 | 7550 |  | RGA -FINISHING | 7425505 |
| 7554 | 40200.40300.40600.54000.56400.58900.151900.2503800 | INTERNAL DOOR FIXING | 15d | 2027-08-03 | 2027-08-18 | 7553FS-2d |  | RGA -FINISHING | 7425515 |
| 7555 | 40200.40300.40600.54000.56400.58900.151900.2503900 | WIRING & SWITCH PLATE FIXING | 8d | 2027-08-14 | 2027-08-22 | 7554FS-4d |  | RGA -FINISHING | 7425525 |
| 7556 | 40200.40300.40600.54000.56400.58900.151900.2504000 | TOILET FALSE CEILING | 7d | 2027-08-22 | 2027-08-29 | 7555 |  | RGA -FINISHING | 7425535 |
| 7557 | 40200.40300.40600.54000.56400.58900.151900.2504100 | MAIN DOOR FRAME SHUTTER FIXING | 6d | 2027-10-29 | 2027-11-04 | 7769 |  | RGA -FINISHING | 7425545 |
| 7558 | 40200.40300.40600.54000.56400.58900.151900.2504200 | FINAL COAT PAINT | 8d | 2027-11-04 | 2027-11-12 | 7557 |  | RGA -FINISHING | 7425555 |
| 7559 | 40200.40300.40600.54000.56400.58900.152000 | **25TH FLOOR** | 205d | 2027-04-21 | 2027-11-12 |  | start no earlier than 2027-04-21 | RGA -FINISHING | 7421565 |
| 7560 | 40200.40300.40600.54000.56400.58900.152000.2504300 | TOILET DADO TILE FIXING | 10d | 2027-06-19 | 2027-06-29 | 7232 |  | RGA -FINISHING | 7425565 |
| 7561 | 40200.40300.40600.54000.56400.58900.152000.2504400 | TOILET FLOORING WORK | 7d | 2027-06-29 | 2027-07-06 | 7560 |  | RGA -FINISHING | 7425575 |
| 7562 | 40200.40300.40600.54000.56400.58900.152000.2504500 | FIRE FIGHTING | 8d | 2027-04-21 | 2027-04-29 | 7231 |  | RGA -FINISHING | 7425585 |
| 7563 | 40200.40300.40600.54000.56400.58900.152000.2504600 | INTERNAL PAINTING - PUTTY / PRIMER APPLICATION | 5d | 2027-08-07 | 2027-08-12 | 7565 |  | RGA -FINISHING | 7425595 |
| 7564 | 40200.40300.40600.54000.56400.58900.152000.2504700 | FLAT FLOORING | 7d | 2027-07-06 | 2027-07-13 | 7561 |  | RGA -FINISHING | 7425605 |
| 7565 | 40200.40300.40600.54000.56400.58900.152000.2504800 | WINDOW FIXING | 5d | 2027-08-02 | 2027-08-07 | 7564FS+20d |  | RGA -FINISHING | 7425615 |
| 7566 | 40200.40300.40600.54000.56400.58900.152000.2504900 | INTERNAL PAINTING - 1ST COAT | 4d | 2027-08-12 | 2027-08-16 | 7563 |  | RGA -FINISHING | 7425625 |
| 7567 | 40200.40300.40600.54000.56400.58900.152000.2505000 | INTERNAL DOOR FIXING | 15d | 2027-08-14 | 2027-08-29 | 7566FS-2d |  | RGA -FINISHING | 7425635 |
| 7568 | 40200.40300.40600.54000.56400.58900.152000.2505100 | WIRING & SWITCH PLATE FIXING | 8d | 2027-08-25 | 2027-09-02 | 7567FS-4d |  | RGA -FINISHING | 7425645 |
| 7569 | 40200.40300.40600.54000.56400.58900.152000.2505200 | TOILET FALSE CEILING | 7d | 2027-09-02 | 2027-09-09 | 7568 |  | RGA -FINISHING | 7425655 |
| 7570 | 40200.40300.40600.54000.56400.58900.152000.2505300 | MAIN DOOR FRAME SHUTTER FIXING | 6d | 2027-10-29 | 2027-11-04 | 7777 |  | RGA -FINISHING | 7425665 |
| 7571 | 40200.40300.40600.54000.56400.58900.152000.2505400 | FINAL COAT PAINT | 8d | 2027-11-04 | 2027-11-12 | 7570 |  | RGA -FINISHING | 7425675 |

| ID | WBS | Task | Duration | Start | Finish | Predecessors | Constraint | Calendar | Unique_Task_ID |
| --- | --- | --- | --- | --- | --- | --- | --- | --- | --- |
| 7572 | 40200.40300.40600.54000.56400.60600 | **LIFT LOBBY & STAIRCASE FINISHING WORK** | 659d | 2026-02-01 | 2027-11-22 |  | start no earlier than 2026-02-01 | RGA -FINISHING | 7421285 |
| 7573 | 40200.40300.40600.54000.56400.60600.247700 | **GROUND FLOOR** | 609d | 2026-02-01 | 2027-10-03 |  | start no earlier than 2026-02-01 | RGA -FINISHING | 7421665 |
| 7574 | 40200.40300.40600.54000.56400.60600.247700.2505500 | FIRE FIGHTING | 10d | 2026-02-01 | 2026-02-11 | 7250FS-5d |  | RGA -FINISHING | 7426645 |
| 7575 | 40200.40300.40600.54000.56400.60600.247700.2505600 | LIFT BLOCK WORK | 3d | 2027-02-20 | 2027-02-23 | 7042 |  | RGA -FINISHING | 7426655 |
| 7576 | 40200.40300.40600.54000.56400.60600.247700.2505700 | LIFT DADO WORK | 10d | 2027-08-20 | 2027-08-30 | 7784FS+20d |  | RGA -FINISHING | 7426665 |
| 7577 | 40200.40300.40600.54000.56400.60600.247700.2505800 | LOBBY FLOORING WORK | 10d | 2027-08-30 | 2027-09-09 | 7576 |  | RGA -FINISHING | 7426675 |
| 7578 | 40200.40300.40600.54000.56400.60600.247700.2505900 | ELECTRICAL WIRING & SWITCH PLATE FIXING WORK | 6d | 2027-09-09 | 2027-09-15 | 7577 |  | RGA -FINISHING | 7426685 |
| 7579 | 40200.40300.40600.54000.56400.60600.247700.2506000 | False ceiling & 1ST COAT PAINTING | 15d | 2027-09-15 | 2027-09-30 | 7578 |  | RGA -FINISHING | 7426695 |
| 7580 | 40200.40300.40600.54000.56400.60600.247700.2506100 | CLEANING | 3d | 2027-09-30 | 2027-10-03 | 7579 |  | RGA -FINISHING | 7426705 |
| 7581 | 40200.40300.40600.54000.56400.60600.247800 | **1ST FLOOR** | 609d | 2026-02-01 | 2027-10-03 |  | start no earlier than 2026-02-01 | RGA -FINISHING | 7421675 |
| 7582 | 40200.40300.40600.54000.56400.60600.247800.2506200 | FIRE FIGHTING | 10d | 2026-02-01 | 2026-02-11 | 7250FS-5d |  | RGA -FINISHING | 7426715 |
| 7583 | 40200.40300.40600.54000.56400.60600.247800.2506300 | LIFT BLOCK WORK | 3d | 2027-02-20 | 2027-02-23 | 7575SS |  | RGA -FINISHING | 7426725 |
| 7584 | 40200.40300.40600.54000.56400.60600.247800.2506400 | LIFT DADO WORK | 10d | 2027-08-20 | 2027-08-30 | 7576SS |  | RGA -FINISHING | 7426735 |
| 7585 | 40200.40300.40600.54000.56400.60600.247800.2506500 | LOBBY FLOORING WORK | 10d | 2027-08-30 | 2027-09-09 | 7584 |  | RGA -FINISHING | 7426745 |
| 7586 | 40200.40300.40600.54000.56400.60600.247800.2506600 | ELECTRICAL WIRING & SWITCH PLATE FIXING WORK | 6d | 2027-09-09 | 2027-09-15 | 7585 |  | RGA -FINISHING | 7426755 |
| 7587 | 40200.40300.40600.54000.56400.60600.247800.2506700 | False ceiling & 1ST COAT PAINTING | 15d | 2027-09-15 | 2027-09-30 | 7586 |  | RGA -FINISHING | 7426765 |
| 7588 | 40200.40300.40600.54000.56400.60600.247800.2506800 | CLEANING | 3d | 2027-09-30 | 2027-10-03 | 7587 |  | RGA -FINISHING | 7426775 |
| 7589 | 40200.40300.40600.54000.56400.60600.247900 | **2nd FLOOR** | 587d | 2026-02-23 | 2027-10-03 |  | start no earlier than 2026-02-23 | RGA -FINISHING | 7421685 |
| 7590 | 40200.40300.40600.54000.56400.60600.247900.2506900 | FIRE FIGHTING | 10d | 2026-02-23 | 2026-03-05 | 7263FS-5d |  | RGA -FINISHING | 7426785 |
| 7591 | 40200.40300.40600.54000.56400.60600.247900.2507000 | LIFT BLOCK WORK | 3d | 2027-02-20 | 2027-02-23 | 7583SS |  | RGA -FINISHING | 7426795 |
| 7592 | 40200.40300.40600.54000.56400.60600.247900.2507100 | LIFT DADO WORK | 10d | 2027-08-20 | 2027-08-30 | 7584SS |  | RGA -FINISHING | 7426805 |
| 7593 | 40200.40300.40600.54000.56400.60600.247900.2507200 | LOBBY FLOORING WORK | 10d | 2027-08-30 | 2027-09-09 | 7592 |  | RGA -FINISHING | 7426815 |
| 7594 | 40200.40300.40600.54000.56400.60600.247900.2507300 | ELECTRICAL WIRING & SWITCH PLATE FIXING WORK | 6d | 2027-09-09 | 2027-09-15 | 7593 |  | RGA -FINISHING | 7426825 |
| 7595 | 40200.40300.40600.54000.56400.60600.247900.2507400 | False ceiling & 1ST COAT PAINTING | 15d | 2027-09-15 | 2027-09-30 | 7594 |  | RGA -FINISHING | 7426835 |
| 7596 | 40200.40300.40600.54000.56400.60600.247900.2507500 | CLEANING | 3d | 2027-09-30 | 2027-10-03 | 7595 |  | RGA -FINISHING | 7426845 |

Notes:
- 7572: Completion in 12 months post last RCC
- 7574: Assumed
- 7582: Assumed
- 7590: Assumed

| ID | WBS | Task | Duration | Start | Finish | Predecessors | Constraint | Calendar | Unique_Task_ID |
| --- | --- | --- | --- | --- | --- | --- | --- | --- | --- |
| 7597 | 40200.40300.40600.54000.56400.60600.248000 | **3rd FLOOR** | 574d | 2026-03-08 | 2027-10-03 |  | start no earlier than 2026-03-08 | RGA -FINISHING | 7421695 |
| 7598 | 40200.40300.40600.54000.56400.60600.248000.2507600 | FIRE FIGHTING | 10d | 2026-03-08 | 2026-03-18 | 7276FS-5d |  | RGA -FINISHING | 7426855 |
| 7599 | 40200.40300.40600.54000.56400.60600.248000.2507700 | LIFT BLOCK WORK | 3d | 2027-02-20 | 2027-02-23 | 7591SS |  | RGA -FINISHING | 7426865 |
| 7600 | 40200.40300.40600.54000.56400.60600.248000.2507800 | LIFT DADO WORK | 10d | 2027-08-20 | 2027-08-30 | 7592SS |  | RGA -FINISHING | 7426875 |
| 7601 | 40200.40300.40600.54000.56400.60600.248000.2507900 | LOBBY FLOORING WORK | 10d | 2027-08-30 | 2027-09-09 | 7600 |  | RGA -FINISHING | 7426885 |
| 7602 | 40200.40300.40600.54000.56400.60600.248000.2508000 | ELECTRICAL WIRING & SWITCH PLATE FIXING WORK | 6d | 2027-09-09 | 2027-09-15 | 7601 |  | RGA -FINISHING | 7426895 |
| 7603 | 40200.40300.40600.54000.56400.60600.248000.2508100 | False ceiling & 1ST COAT PAINTING | 15d | 2027-09-15 | 2027-09-30 | 7602 |  | RGA -FINISHING | 7426905 |
| 7604 | 40200.40300.40600.54000.56400.60600.248000.2508200 | CLEANING | 3d | 2027-09-30 | 2027-10-03 | 7603 |  | RGA -FINISHING | 7426915 |
| 7605 | 40200.40300.40600.54000.56400.60600.248100 | **4th FLOOR** | 561d | 2026-03-21 | 2027-10-03 |  | start no earlier than 2026-03-21 | RGA -FINISHING | 7421705 |
| 7606 | 40200.40300.40600.54000.56400.60600.248100.2508300 | FIRE FIGHTING | 10d | 2026-03-21 | 2026-03-31 | 7289FS-5d |  | RGA -FINISHING | 7426925 |
| 7607 | 40200.40300.40600.54000.56400.60600.248100.2508400 | LIFT BLOCK WORK | 3d | 2027-02-20 | 2027-02-23 | 7599SS |  | RGA -FINISHING | 7426935 |
| 7608 | 40200.40300.40600.54000.56400.60600.248100.2508500 | LIFT DADO WORK | 10d | 2027-08-20 | 2027-08-30 | 7600SS |  | RGA -FINISHING | 7426945 |
| 7609 | 40200.40300.40600.54000.56400.60600.248100.2508600 | LOBBY FLOORING WORK | 10d | 2027-08-30 | 2027-09-09 | 7608 |  | RGA -FINISHING | 7426955 |
| 7610 | 40200.40300.40600.54000.56400.60600.248100.2508700 | ELECTRICAL WIRING & SWITCH PLATE FIXING WORK | 6d | 2027-09-09 | 2027-09-15 | 7609 |  | RGA -FINISHING | 7426965 |
| 7611 | 40200.40300.40600.54000.56400.60600.248100.2508800 | False ceiling & 1ST COAT PAINTING | 15d | 2027-09-15 | 2027-09-30 | 7610 |  | RGA -FINISHING | 7426975 |
| 7612 | 40200.40300.40600.54000.56400.60600.248100.2508900 | CLEANING | 3d | 2027-09-30 | 2027-10-03 | 7611 |  | RGA -FINISHING | 7426985 |
| 7613 | 40200.40300.40600.54000.56400.60600.248200 | **5th FLOOR** | 548d | 2026-04-03 | 2027-10-03 |  | start no earlier than 2026-04-03 | RGA -FINISHING | 7421715 |
| 7614 | 40200.40300.40600.54000.56400.60600.248200.2509000 | FIRE FIGHTING | 10d | 2026-04-03 | 2026-04-13 | 7302FS-5d |  | RGA -FINISHING | 7426995 |
| 7615 | 40200.40300.40600.54000.56400.60600.248200.2509100 | LIFT BLOCK WORK | 3d | 2027-02-20 | 2027-02-23 | 7607SS |  | RGA -FINISHING | 7427005 |
| 7616 | 40200.40300.40600.54000.56400.60600.248200.2509200 | LIFT DADO WORK | 10d | 2027-08-20 | 2027-08-30 | 7608SS |  | RGA -FINISHING | 7427015 |
| 7617 | 40200.40300.40600.54000.56400.60600.248200.2509300 | LOBBY FLOORING WORK | 10d | 2027-08-30 | 2027-09-09 | 7616 |  | RGA -FINISHING | 7427025 |
| 7618 | 40200.40300.40600.54000.56400.60600.248200.2509400 | ELECTRICAL WIRING & SWITCH PLATE FIXING WORK | 6d | 2027-09-09 | 2027-09-15 | 7617 |  | RGA -FINISHING | 7427035 |
| 7619 | 40200.40300.40600.54000.56400.60600.248200.2509500 | False ceiling & 1ST COAT PAINTING | 15d | 2027-09-15 | 2027-09-30 | 7618 |  | RGA -FINISHING | 7427045 |
| 7620 | 40200.40300.40600.54000.56400.60600.248200.2509600 | CLEANING | 3d | 2027-09-30 | 2027-10-03 | 7619 |  | RGA -FINISHING | 7427055 |

Notes:
- 7598: Assumed
- 7606: Assumed
- 7614: Assumed

| ID | WBS | Task | Duration | Start | Finish | Predecessors | Constraint | Calendar | Unique_Task_ID |
| --- | --- | --- | --- | --- | --- | --- | --- | --- | --- |
| 7621 | 40200.40300.40600.54000.56400.60600.248300 | **6th FLOOR** | 545d | 2026-04-16 | 2027-10-13 |  | start no earlier than 2026-04-16 | RGA -FINISHING | 7421725 |
| 7622 | 40200.40300.40600.54000.56400.60600.248300.2509700 | FIRE FIGHTING | 10d | 2026-04-16 | 2026-04-26 | 7315FS-5d |  | RGA -FINISHING | 7427065 |
| 7623 | 40200.40300.40600.54000.56400.60600.248300.2509800 | LIFT BLOCK WORK | 3d | 2027-02-23 | 2027-02-26 | 7615 |  | RGA -FINISHING | 7427075 |
| 7624 | 40200.40300.40600.54000.56400.60600.248300.2509900 | LIFT DADO WORK | 10d | 2027-08-30 | 2027-09-09 | 7616 |  | RGA -FINISHING | 7427085 |
| 7625 | 40200.40300.40600.54000.56400.60600.248300.2510000 | LOBBY FLOORING WORK | 10d | 2027-09-09 | 2027-09-19 | 7624 |  | RGA -FINISHING | 7427095 |
| 7626 | 40200.40300.40600.54000.56400.60600.248300.2510100 | ELECTRICAL WIRING & SWITCH PLATE FIXING WORK | 6d | 2027-09-19 | 2027-09-25 | 7625 |  | RGA -FINISHING | 7427105 |
| 7627 | 40200.40300.40600.54000.56400.60600.248300.2510200 | False ceiling & 1ST COAT PAINTING | 15d | 2027-09-25 | 2027-10-10 | 7626 |  | RGA -FINISHING | 7427115 |
| 7628 | 40200.40300.40600.54000.56400.60600.248300.2510300 | CLEANING | 3d | 2027-10-10 | 2027-10-13 | 7627 |  | RGA -FINISHING | 7427125 |
| 7629 | 40200.40300.40600.54000.56400.60600.248400 | **7th FLOOR** | 532d | 2026-04-29 | 2027-10-13 |  | start no earlier than 2026-04-29 | RGA -FINISHING | 7421735 |
| 7630 | 40200.40300.40600.54000.56400.60600.248400.2510400 | FIRE FIGHTING | 10d | 2026-04-29 | 2026-05-09 | 7328FS-5d |  | RGA -FINISHING | 7427135 |
| 7631 | 40200.40300.40600.54000.56400.60600.248400.2510500 | LIFT BLOCK WORK | 3d | 2027-02-23 | 2027-02-26 | 7623SS |  | RGA -FINISHING | 7427145 |
| 7632 | 40200.40300.40600.54000.56400.60600.248400.2510600 | LIFT DADO WORK | 10d | 2027-08-30 | 2027-09-09 | 7624SS |  | RGA -FINISHING | 7427155 |
| 7633 | 40200.40300.40600.54000.56400.60600.248400.2510700 | LOBBY FLOORING WORK | 10d | 2027-09-09 | 2027-09-19 | 7632 |  | RGA -FINISHING | 7427165 |
| 7634 | 40200.40300.40600.54000.56400.60600.248400.2510800 | ELECTRICAL WIRING & SWITCH PLATE FIXING WORK | 6d | 2027-09-19 | 2027-09-25 | 7633 |  | RGA -FINISHING | 7427175 |
| 7635 | 40200.40300.40600.54000.56400.60600.248400.2510900 | False ceiling & 1ST COAT PAINTING | 15d | 2027-09-25 | 2027-10-10 | 7634 |  | RGA -FINISHING | 7427185 |
| 7636 | 40200.40300.40600.54000.56400.60600.248400.2511000 | CLEANING | 3d | 2027-10-10 | 2027-10-13 | 7635 |  | RGA -FINISHING | 7427195 |
| 7637 | 40200.40300.40600.54000.56400.60600.248500 | **8th FLOOR** | 518d | 2026-05-13 | 2027-10-13 |  | start no earlier than 2026-05-13 | RGA -FINISHING | 7421745 |
| 7638 | 40200.40300.40600.54000.56400.60600.248500.2511100 | FIRE FIGHTING | 10d | 2026-05-13 | 2026-05-23 | 7341FS-5d |  | RGA -FINISHING | 7427205 |
| 7639 | 40200.40300.40600.54000.56400.60600.248500.2511200 | LIFT BLOCK WORK | 3d | 2027-02-23 | 2027-02-26 | 7631SS |  | RGA -FINISHING | 7427215 |
| 7640 | 40200.40300.40600.54000.56400.60600.248500.2511300 | LIFT DADO WORK | 10d | 2027-08-30 | 2027-09-09 | 7632SS |  | RGA -FINISHING | 7427225 |
| 7641 | 40200.40300.40600.54000.56400.60600.248500.2511400 | LOBBY FLOORING WORK | 10d | 2027-09-09 | 2027-09-19 | 7640 |  | RGA -FINISHING | 7427235 |
| 7642 | 40200.40300.40600.54000.56400.60600.248500.2511500 | ELECTRICAL WIRING & SWITCH PLATE FIXING WORK | 6d | 2027-09-19 | 2027-09-25 | 7641 |  | RGA -FINISHING | 7427245 |
| 7643 | 40200.40300.40600.54000.56400.60600.248500.2511600 | False ceiling & 1ST COAT PAINTING | 15d | 2027-09-25 | 2027-10-10 | 7642 |  | RGA -FINISHING | 7427255 |
| 7644 | 40200.40300.40600.54000.56400.60600.248500.2511700 | CLEANING | 3d | 2027-10-10 | 2027-10-13 | 7643 |  | RGA -FINISHING | 7427265 |

Notes:
- 7622: Assumed
- 7630: Assumed
- 7638: Assumed

| ID | WBS | Task | Duration | Start | Finish | Predecessors | Constraint | Calendar | Unique_Task_ID |
| --- | --- | --- | --- | --- | --- | --- | --- | --- | --- |
| 7645 | 40200.40300.40600.54000.56400.60600.248600 | **9th FLOOR** | 501d | 2026-05-30 | 2027-10-13 |  | start no earlier than 2026-05-30 | RGA -FINISHING | 7421755 |
| 7646 | 40200.40300.40600.54000.56400.60600.248600.2511800 | FIRE FIGHTING | 10d | 2026-05-30 | 2026-06-09 | 7354FS-5d |  | RGA -FINISHING | 7427275 |
| 7647 | 40200.40300.40600.54000.56400.60600.248600.2511900 | LIFT BLOCK WORK | 3d | 2027-02-23 | 2027-02-26 | 7639SS |  | RGA -FINISHING | 7427285 |
| 7648 | 40200.40300.40600.54000.56400.60600.248600.2512000 | LIFT DADO WORK | 10d | 2027-08-30 | 2027-09-09 | 7640SS |  | RGA -FINISHING | 7427295 |
| 7649 | 40200.40300.40600.54000.56400.60600.248600.2512100 | LOBBY FLOORING WORK | 10d | 2027-09-09 | 2027-09-19 | 7648 |  | RGA -FINISHING | 7427305 |
| 7650 | 40200.40300.40600.54000.56400.60600.248600.2512200 | ELECTRICAL WIRING & SWITCH PLATE FIXING WORK | 6d | 2027-09-19 | 2027-09-25 | 7649 |  | RGA -FINISHING | 7427315 |
| 7651 | 40200.40300.40600.54000.56400.60600.248600.2512300 | False ceiling & 1ST COAT PAINTING | 15d | 2027-09-25 | 2027-10-10 | 7650 |  | RGA -FINISHING | 7427325 |
| 7652 | 40200.40300.40600.54000.56400.60600.248600.2512400 | CLEANING | 3d | 2027-10-10 | 2027-10-13 | 7651 |  | RGA -FINISHING | 7427335 |
| 7653 | 40200.40300.40600.54000.56400.60600.248700 | **10th FLOOR** | 445d | 2026-07-25 | 2027-10-13 |  | start no earlier than 2026-07-25 | RGA -FINISHING | 7421765 |
| 7654 | 40200.40300.40600.54000.56400.60600.248700.2512500 | FIRE FIGHTING | 10d | 2026-07-25 | 2026-08-04 | 7367FS-5d |  | RGA -FINISHING | 7427345 |
| 7655 | 40200.40300.40600.54000.56400.60600.248700.2512600 | LIFT BLOCK WORK | 3d | 2027-02-23 | 2027-02-26 | 7647SS |  | RGA -FINISHING | 7427355 |
| 7656 | 40200.40300.40600.54000.56400.60600.248700.2512700 | LIFT DADO WORK | 10d | 2027-08-30 | 2027-09-09 | 7648SS |  | RGA -FINISHING | 7427365 |
| 7657 | 40200.40300.40600.54000.56400.60600.248700.2512800 | LOBBY FLOORING WORK | 10d | 2027-09-09 | 2027-09-19 | 7656 |  | RGA -FINISHING | 7427375 |
| 7658 | 40200.40300.40600.54000.56400.60600.248700.2512900 | ELECTRICAL WIRING & SWITCH PLATE FIXING WORK | 6d | 2027-09-19 | 2027-09-25 | 7657 |  | RGA -FINISHING | 7427385 |
| 7659 | 40200.40300.40600.54000.56400.60600.248700.2513000 | False ceiling & 1ST COAT PAINTING | 15d | 2027-09-25 | 2027-10-10 | 7658 |  | RGA -FINISHING | 7427395 |
| 7660 | 40200.40300.40600.54000.56400.60600.248700.2513100 | CLEANING | 3d | 2027-10-10 | 2027-10-13 | 7659 |  | RGA -FINISHING | 7427405 |
| 7661 | 40200.40300.40600.54000.56400.60600.248800 | **11th FLOOR** | 469.5d | 2026-07-11 | 2027-10-23 |  | start no earlier than 2026-07-11 | RGA -FINISHING | 7421775 |
| 7662 | 40200.40300.40600.54000.56400.60600.248800.2513200 | FIRE FIGHTING | 10d | 2026-07-11 | 2026-07-21 | 7380FS-5d |  | RGA -FINISHING | 7427415 |
| 7663 | 40200.40300.40600.54000.56400.60600.248800.2513300 | LIFT BLOCK WORK | 3d | 2027-02-26 | 2027-03-01 | 7655 |  | RGA -FINISHING | 7427425 |
| 7664 | 40200.40300.40600.54000.56400.60600.248800.2513400 | LIFT DADO WORK | 10d | 2027-09-09 | 2027-09-19 | 7656 |  | RGA -FINISHING | 7427435 |
| 7665 | 40200.40300.40600.54000.56400.60600.248800.2513500 | LOBBY FLOORING WORK | 10d | 2027-09-19 | 2027-09-29 | 7664 |  | RGA -FINISHING | 7427445 |
| 7666 | 40200.40300.40600.54000.56400.60600.248800.2513600 | ELECTRICAL WIRING & SWITCH PLATE FIXING WORK | 6d | 2027-09-29 | 2027-10-05 | 7665 |  | RGA -FINISHING | 7427455 |
| 7667 | 40200.40300.40600.54000.56400.60600.248800.2513700 | False ceiling & 1ST COAT PAINTING | 15d | 2027-10-05 | 2027-10-20 | 7666 |  | RGA -FINISHING | 7427465 |
| 7668 | 40200.40300.40600.54000.56400.60600.248800.2513800 | CLEANING | 3d | 2027-10-20 | 2027-10-23 | 7667 |  | RGA -FINISHING | 7427475 |

Notes:
- 7646: Assumed
- 7654: Assumed
- 7662: Assumed

| ID | WBS | Task | Duration | Start | Finish | Predecessors | Constraint | Calendar | Unique_Task_ID |
| --- | --- | --- | --- | --- | --- | --- | --- | --- | --- |
| 7669 | 40200.40300.40600.54000.56400.60600.248900 | **12th FLOOR** | 445d | 2026-08-04 | 2027-10-23 |  | start no earlier than 2026-08-04 | RGA -FINISHING | 7421785 |
| 7670 | 40200.40300.40600.54000.56400.60600.248900.2513900 | FIRE FIGHTING | 10d | 2026-08-04 | 2026-08-14 | 7393FS-5d |  | RGA -FINISHING | 7427485 |
| 7671 | 40200.40300.40600.54000.56400.60600.248900.2514000 | LIFT BLOCK WORK | 3d | 2027-02-26 | 2027-03-01 | 7663SS |  | RGA -FINISHING | 7427495 |
| 7672 | 40200.40300.40600.54000.56400.60600.248900.2514100 | LIFT DADO WORK | 10d | 2027-09-09 | 2027-09-19 | 7664SS |  | RGA -FINISHING | 7427505 |
| 7673 | 40200.40300.40600.54000.56400.60600.248900.2514200 | LOBBY FLOORING WORK | 10d | 2027-09-19 | 2027-09-29 | 7672 |  | RGA -FINISHING | 7427515 |
| 7674 | 40200.40300.40600.54000.56400.60600.248900.2514300 | ELECTRICAL WIRING & SWITCH PLATE FIXING WORK | 6d | 2027-09-29 | 2027-10-05 | 7673 |  | RGA -FINISHING | 7427525 |
| 7675 | 40200.40300.40600.54000.56400.60600.248900.2514400 | False ceiling & 1ST COAT PAINTING | 15d | 2027-10-05 | 2027-10-20 | 7674 |  | RGA -FINISHING | 7427535 |
| 7676 | 40200.40300.40600.54000.56400.60600.248900.2514500 | CLEANING | 3d | 2027-10-20 | 2027-10-23 | 7675 |  | RGA -FINISHING | 7427545 |
| 7677 | 40200.40300.40600.54000.56400.60600.249000 | **13th FLOOR** | 426d | 2026-08-23 | 2027-10-23 |  | start no earlier than 2026-08-23 | RGA -FINISHING | 7421795 |
| 7678 | 40200.40300.40600.54000.56400.60600.249000.2514600 | FIRE FIGHTING | 10d | 2026-08-23 | 2026-09-02 | 7406FS-5d |  | RGA -FINISHING | 7427555 |
| 7679 | 40200.40300.40600.54000.56400.60600.249000.2514700 | LIFT BLOCK WORK | 3d | 2027-02-26 | 2027-03-01 | 7671SS |  | RGA -FINISHING | 7427565 |
| 7680 | 40200.40300.40600.54000.56400.60600.249000.2514800 | LIFT DADO WORK | 10d | 2027-09-09 | 2027-09-19 | 7672SS |  | RGA -FINISHING | 7427575 |
| 7681 | 40200.40300.40600.54000.56400.60600.249000.2514900 | LOBBY FLOORING WORK | 10d | 2027-09-19 | 2027-09-29 | 7680 |  | RGA -FINISHING | 7427585 |
| 7682 | 40200.40300.40600.54000.56400.60600.249000.2515000 | ELECTRICAL WIRING & SWITCH PLATE FIXING WORK | 6d | 2027-09-29 | 2027-10-05 | 7681 |  | RGA -FINISHING | 7427595 |
| 7683 | 40200.40300.40600.54000.56400.60600.249000.2515100 | False ceiling & 1ST COAT PAINTING | 15d | 2027-10-05 | 2027-10-20 | 7682 |  | RGA -FINISHING | 7427605 |
| 7684 | 40200.40300.40600.54000.56400.60600.249000.2515200 | CLEANING | 3d | 2027-10-20 | 2027-10-23 | 7683 |  | RGA -FINISHING | 7427615 |
| 7685 | 40200.40300.40600.54000.56400.60600.249100 | **14th FLOOR** | 408d | 2026-09-10 | 2027-10-23 |  | start no earlier than 2026-09-10 | RGA -FINISHING | 7421805 |
| 7686 | 40200.40300.40600.54000.56400.60600.249100.2515300 | FIRE FIGHTING | 10d | 2026-09-10 | 2026-09-20 | 7419FS-5d |  | RGA -FINISHING | 7427625 |
| 7687 | 40200.40300.40600.54000.56400.60600.249100.2515400 | LIFT BLOCK WORK | 3d | 2027-02-26 | 2027-03-01 | 7679SS |  | RGA -FINISHING | 7427635 |
| 7688 | 40200.40300.40600.54000.56400.60600.249100.2515500 | LIFT DADO WORK | 10d | 2027-09-09 | 2027-09-19 | 7680SS |  | RGA -FINISHING | 7427645 |
| 7689 | 40200.40300.40600.54000.56400.60600.249100.2515600 | LOBBY FLOORING WORK | 10d | 2027-09-19 | 2027-09-29 | 7688 |  | RGA -FINISHING | 7427655 |
| 7690 | 40200.40300.40600.54000.56400.60600.249100.2515700 | ELECTRICAL WIRING & SWITCH PLATE FIXING WORK | 6d | 2027-09-29 | 2027-10-05 | 7689 |  | RGA -FINISHING | 7427665 |
| 7691 | 40200.40300.40600.54000.56400.60600.249100.2515800 | False ceiling & 1ST COAT PAINTING | 15d | 2027-10-05 | 2027-10-20 | 7690 |  | RGA -FINISHING | 7427675 |
| 7692 | 40200.40300.40600.54000.56400.60600.249100.2515900 | CLEANING | 3d | 2027-10-20 | 2027-10-23 | 7691 |  | RGA -FINISHING | 7427685 |

Notes:
- 7670: Assumed
- 7678: Assumed
- 7686: Assumed

| ID | WBS | Task | Duration | Start | Finish | Predecessors | Constraint | Calendar | Unique_Task_ID |
| --- | --- | --- | --- | --- | --- | --- | --- | --- | --- |
| 7693 | 40200.40300.40600.54000.56400.60600.249200 | **15th FLOOR** | 401d | 2026-09-27 | 2027-11-02 |  | start no earlier than 2026-09-27 | RGA -FINISHING | 7421815 |
| 7694 | 40200.40300.40600.54000.56400.60600.249200.2516000 | FIRE FIGHTING | 10d | 2026-09-27 | 2026-10-07 | 7432FS-5d |  | RGA -FINISHING | 7427695 |
| 7695 | 40200.40300.40600.54000.56400.60600.249200.2516100 | LIFT BLOCK WORK | 3d | 2027-03-01 | 2027-03-04 | 7687 |  | RGA -FINISHING | 7427705 |
| 7696 | 40200.40300.40600.54000.56400.60600.249200.2516200 | LIFT DADO WORK | 10d | 2027-09-19 | 2027-09-29 | 7688 |  | RGA -FINISHING | 7427715 |
| 7697 | 40200.40300.40600.54000.56400.60600.249200.2516300 | LOBBY FLOORING WORK | 10d | 2027-09-29 | 2027-10-09 | 7696 |  | RGA -FINISHING | 7427725 |
| 7698 | 40200.40300.40600.54000.56400.60600.249200.2516400 | ELECTRICAL WIRING & SWITCH PLATE FIXING WORK | 6d | 2027-10-09 | 2027-10-15 | 7697 |  | RGA -FINISHING | 7427735 |
| 7699 | 40200.40300.40600.54000.56400.60600.249200.2516500 | False ceiling & 1ST COAT PAINTING | 15d | 2027-10-15 | 2027-10-30 | 7698 |  | RGA -FINISHING | 7427745 |
| 7700 | 40200.40300.40600.54000.56400.60600.249200.2516600 | CLEANING | 3d | 2027-10-30 | 2027-11-02 | 7699 |  | RGA -FINISHING | 7427755 |
| 7701 | 40200.40300.40600.54000.56400.60600.249300 | **16th FLOOR** | 385d | 2026-10-13 | 2027-11-02 |  | start no earlier than 2026-10-13 | RGA -FINISHING | 7421825 |
| 7702 | 40200.40300.40600.54000.56400.60600.249300.2516700 | FIRE FIGHTING | 10d | 2026-10-13 | 2026-10-23 | 7445FS-5d |  | RGA -FINISHING | 7427765 |
| 7703 | 40200.40300.40600.54000.56400.60600.249300.2516800 | LIFT BLOCK WORK | 3d | 2027-03-01 | 2027-03-04 | 7695SS |  | RGA -FINISHING | 7427775 |
| 7704 | 40200.40300.40600.54000.56400.60600.249300.2516900 | LIFT DADO WORK | 10d | 2027-09-19 | 2027-09-29 | 7696SS |  | RGA -FINISHING | 7427785 |
| 7705 | 40200.40300.40600.54000.56400.60600.249300.2517000 | LOBBY FLOORING WORK | 10d | 2027-09-29 | 2027-10-09 | 7704 |  | RGA -FINISHING | 7427795 |
| 7706 | 40200.40300.40600.54000.56400.60600.249300.2517100 | ELECTRICAL WIRING & SWITCH PLATE FIXING WORK | 6d | 2027-10-09 | 2027-10-15 | 7705 |  | RGA -FINISHING | 7427805 |
| 7707 | 40200.40300.40600.54000.56400.60600.249300.2517200 | False ceiling & 1ST COAT PAINTING | 15d | 2027-10-15 | 2027-10-30 | 7706 |  | RGA -FINISHING | 7427815 |
| 7708 | 40200.40300.40600.54000.56400.60600.249300.2517300 | CLEANING | 3d | 2027-10-30 | 2027-11-02 | 7707 |  | RGA -FINISHING | 7427825 |
| 7709 | 40200.40300.40600.54000.56400.60600.249400 | **17th FLOOR** | 367d | 2026-10-31 | 2027-11-02 |  | start no earlier than 2026-10-31 | RGA -FINISHING | 7421835 |
| 7710 | 40200.40300.40600.54000.56400.60600.249400.2517400 | FIRE FIGHTING | 10d | 2026-10-31 | 2026-11-10 | 7458FS-5d |  | RGA -FINISHING | 7427835 |
| 7711 | 40200.40300.40600.54000.56400.60600.249400.2517500 | LIFT BLOCK WORK | 3d | 2027-03-01 | 2027-03-04 | 7703SS |  | RGA -FINISHING | 7427845 |
| 7712 | 40200.40300.40600.54000.56400.60600.249400.2517600 | LIFT DADO WORK | 10d | 2027-09-19 | 2027-09-29 | 7704SS |  | RGA -FINISHING | 7427855 |
| 7713 | 40200.40300.40600.54000.56400.60600.249400.2517700 | LOBBY FLOORING WORK | 10d | 2027-09-29 | 2027-10-09 | 7712 |  | RGA -FINISHING | 7427865 |
| 7714 | 40200.40300.40600.54000.56400.60600.249400.2517800 | ELECTRICAL WIRING & SWITCH PLATE FIXING WORK | 6d | 2027-10-09 | 2027-10-15 | 7713 |  | RGA -FINISHING | 7427875 |
| 7715 | 40200.40300.40600.54000.56400.60600.249400.2517900 | False ceiling & 1ST COAT PAINTING | 15d | 2027-10-15 | 2027-10-30 | 7714 |  | RGA -FINISHING | 7427885 |
| 7716 | 40200.40300.40600.54000.56400.60600.249400.2518000 | CLEANING | 3d | 2027-10-30 | 2027-11-02 | 7715 |  | RGA -FINISHING | 7427895 |

Notes:
- 7694: Assumed
- 7702: Assumed
- 7710: Assumed

| ID | WBS | Task | Duration | Start | Finish | Predecessors | Constraint | Calendar | Unique_Task_ID |
| --- | --- | --- | --- | --- | --- | --- | --- | --- | --- |
| 7717 | 40200.40300.40600.54000.56400.60600.249500 | **18th FLOOR** | 350d | 2026-11-17 | 2027-11-02 |  | start no earlier than 2026-11-17 | RGA -FINISHING | 7421845 |
| 7718 | 40200.40300.40600.54000.56400.60600.249500.2518100 | FIRE FIGHTING | 10d | 2026-11-17 | 2026-11-27 | 7471FS-5d |  | RGA -FINISHING | 7427905 |
| 7719 | 40200.40300.40600.54000.56400.60600.249500.2518200 | LIFT BLOCK WORK | 3d | 2027-03-01 | 2027-03-04 | 7711SS |  | RGA -FINISHING | 7427915 |
| 7720 | 40200.40300.40600.54000.56400.60600.249500.2518300 | LIFT DADO WORK | 10d | 2027-09-19 | 2027-09-29 | 7712SS |  | RGA -FINISHING | 7427925 |
| 7721 | 40200.40300.40600.54000.56400.60600.249500.2518400 | LOBBY FLOORING WORK | 10d | 2027-09-29 | 2027-10-09 | 7720 |  | RGA -FINISHING | 7427935 |
| 7722 | 40200.40300.40600.54000.56400.60600.249500.2518500 | ELECTRICAL WIRING & SWITCH PLATE FIXING WORK | 6d | 2027-10-09 | 2027-10-15 | 7721 |  | RGA -FINISHING | 7427945 |
| 7723 | 40200.40300.40600.54000.56400.60600.249500.2518600 | False ceiling & 1ST COAT PAINTING | 15d | 2027-10-15 | 2027-10-30 | 7722 |  | RGA -FINISHING | 7427955 |
| 7724 | 40200.40300.40600.54000.56400.60600.249500.2518700 | CLEANING | 3d | 2027-10-30 | 2027-11-02 | 7723 |  | RGA -FINISHING | 7427965 |
| 7725 | 40200.40300.40600.54000.56400.60600.249600 | **19th FLOOR** | 336.5d | 2026-12-11 | 2027-11-12 |  | start no earlier than 2026-12-11 | RGA -FINISHING | 7421855 |
| 7726 | 40200.40300.40600.54000.56400.60600.249600.2518800 | FIRE FIGHTING | 10d | 2026-12-11 | 2026-12-21 | 7484FS-5d |  | RGA -FINISHING | 7427975 |
| 7727 | 40200.40300.40600.54000.56400.60600.249600.2518900 | LIFT BLOCK WORK | 3d | 2027-03-04 | 2027-03-07 | 7719 |  | RGA -FINISHING | 7427985 |
| 7728 | 40200.40300.40600.54000.56400.60600.249600.2519000 | LIFT DADO WORK | 10d | 2027-09-29 | 2027-10-09 | 7720 |  | RGA -FINISHING | 7427995 |
| 7729 | 40200.40300.40600.54000.56400.60600.249600.2519100 | LOBBY FLOORING WORK | 10d | 2027-10-09 | 2027-10-19 | 7728 |  | RGA -FINISHING | 7428005 |
| 7730 | 40200.40300.40600.54000.56400.60600.249600.2519200 | ELECTRICAL WIRING & SWITCH PLATE FIXING WORK | 6d | 2027-10-19 | 2027-10-25 | 7729 |  | RGA -FINISHING | 7428015 |
| 7731 | 40200.40300.40600.54000.56400.60600.249600.2519300 | False ceiling & 1ST COAT PAINTING | 15d | 2027-10-25 | 2027-11-09 | 7730 |  | RGA -FINISHING | 7428025 |
| 7732 | 40200.40300.40600.54000.56400.60600.249600.2519400 | CLEANING | 3d | 2027-11-09 | 2027-11-12 | 7731 |  | RGA -FINISHING | 7428035 |
| 7733 | 40200.40300.40600.54000.56400.60600.249700 | **20th FLOOR** | 311d | 2027-01-05 | 2027-11-12 |  | start no earlier than 2027-01-05 | RGA -FINISHING | 7421865 |
| 7734 | 40200.40300.40600.54000.56400.60600.249700.2519500 | FIRE FIGHTING | 10d | 2027-01-05 | 2027-01-15 | 7497FS-5d |  | RGA -FINISHING | 7428045 |
| 7735 | 40200.40300.40600.54000.56400.60600.249700.2519600 | LIFT BLOCK WORK | 3d | 2027-03-04 | 2027-03-07 | 7727SS |  | RGA -FINISHING | 7428055 |
| 7736 | 40200.40300.40600.54000.56400.60600.249700.2519700 | LIFT DADO WORK | 10d | 2027-09-29 | 2027-10-09 | 7728SS |  | RGA -FINISHING | 7428065 |
| 7737 | 40200.40300.40600.54000.56400.60600.249700.2519800 | LOBBY FLOORING WORK | 10d | 2027-10-09 | 2027-10-19 | 7736 |  | RGA -FINISHING | 7428075 |
| 7738 | 40200.40300.40600.54000.56400.60600.249700.2519900 | ELECTRICAL WIRING & SWITCH PLATE FIXING WORK | 6d | 2027-10-19 | 2027-10-25 | 7737 |  | RGA -FINISHING | 7428085 |
| 7739 | 40200.40300.40600.54000.56400.60600.249700.2520000 | False ceiling & 1ST COAT PAINTING | 15d | 2027-10-25 | 2027-11-09 | 7738 |  | RGA -FINISHING | 7428095 |
| 7740 | 40200.40300.40600.54000.56400.60600.249700.2520100 | CLEANING | 3d | 2027-11-09 | 2027-11-12 | 7739 |  | RGA -FINISHING | 7428105 |

Notes:
- 7718: Assumed
- 7726: Assumed
- 7734: Assumed

| ID | WBS | Task | Duration | Start | Finish | Predecessors | Constraint | Calendar | Unique_Task_ID |
| --- | --- | --- | --- | --- | --- | --- | --- | --- | --- |
| 7741 | 40200.40300.40600.54000.56400.60600.249800 | **21th FLOOR** | 294d | 2027-01-22 | 2027-11-12 |  | start no earlier than 2027-01-22 | RGA -FINISHING | 7421875 |
| 7742 | 40200.40300.40600.54000.56400.60600.249800.2520200 | FIRE FIGHTING | 10d | 2027-01-22 | 2027-02-01 | 7510FS-5d |  | RGA -FINISHING | 7428115 |
| 7743 | 40200.40300.40600.54000.56400.60600.249800.2520300 | LIFT BLOCK WORK | 3d | 2027-03-04 | 2027-03-07 | 7735SS |  | RGA -FINISHING | 7428125 |
| 7744 | 40200.40300.40600.54000.56400.60600.249800.2520400 | LIFT DADO WORK | 10d | 2027-09-29 | 2027-10-09 | 7736SS |  | RGA -FINISHING | 7428135 |
| 7745 | 40200.40300.40600.54000.56400.60600.249800.2520500 | LOBBY FLOORING WORK | 10d | 2027-10-09 | 2027-10-19 | 7744 |  | RGA -FINISHING | 7428145 |
| 7746 | 40200.40300.40600.54000.56400.60600.249800.2520600 | ELECTRICAL WIRING & SWITCH PLATE FIXING WORK | 6d | 2027-10-19 | 2027-10-25 | 7745 |  | RGA -FINISHING | 7428155 |
| 7747 | 40200.40300.40600.54000.56400.60600.249800.2520700 | False ceiling & 1ST COAT PAINTING | 15d | 2027-10-25 | 2027-11-09 | 7746 |  | RGA -FINISHING | 7428165 |
| 7748 | 40200.40300.40600.54000.56400.60600.249800.2520800 | CLEANING | 3d | 2027-11-09 | 2027-11-12 | 7747 |  | RGA -FINISHING | 7428175 |
| 7749 | 40200.40300.40600.54000.56400.60600.249900 | **22th FLOOR** | 267d | 2027-02-18 | 2027-11-12 |  | start no earlier than 2027-02-18 | RGA -FINISHING | 7421885 |
| 7750 | 40200.40300.40600.54000.56400.60600.249900.2520900 | FIRE FIGHTING | 10d | 2027-02-18 | 2027-02-28 | 7523FS-5d |  | RGA -FINISHING | 7428185 |
| 7751 | 40200.40300.40600.54000.56400.60600.249900.2521000 | LIFT BLOCK WORK | 3d | 2027-03-04 | 2027-03-07 | 7743SS |  | RGA -FINISHING | 7428195 |
| 7752 | 40200.40300.40600.54000.56400.60600.249900.2521100 | LIFT DADO WORK | 10d | 2027-09-29 | 2027-10-09 | 7744SS |  | RGA -FINISHING | 7428205 |
| 7753 | 40200.40300.40600.54000.56400.60600.249900.2521200 | LOBBY FLOORING WORK | 10d | 2027-10-09 | 2027-10-19 | 7752 |  | RGA -FINISHING | 7428215 |
| 7754 | 40200.40300.40600.54000.56400.60600.249900.2521300 | ELECTRICAL WIRING & SWITCH PLATE FIXING WORK | 6d | 2027-10-19 | 2027-10-25 | 7753 |  | RGA -FINISHING | 7428225 |
| 7755 | 40200.40300.40600.54000.56400.60600.249900.2521400 | False ceiling & 1ST COAT PAINTING | 15d | 2027-10-25 | 2027-11-09 | 7754 |  | RGA -FINISHING | 7428235 |
| 7756 | 40200.40300.40600.54000.56400.60600.249900.2521500 | CLEANING | 3d | 2027-11-09 | 2027-11-12 | 7755 |  | RGA -FINISHING | 7428245 |
| 7757 | 40200.40300.40600.54000.56400.60600.250000 | **23th FLOOR** | 260d | 2027-03-07 | 2027-11-22 |  | start no earlier than 2027-03-07 | RGA -FINISHING | 7421895 |
| 7758 | 40200.40300.40600.54000.56400.60600.250000.2521600 | FIRE FIGHTING | 10d | 2027-03-07 | 2027-03-17 | 7536FS-5d |  | RGA -FINISHING | 7428255 |
| 7759 | 40200.40300.40600.54000.56400.60600.250000.2521700 | LIFT BLOCK WORK | 3d | 2027-03-07 | 2027-03-10 | 7751 |  | RGA -FINISHING | 7428265 |
| 7760 | 40200.40300.40600.54000.56400.60600.250000.2521800 | LIFT DADO WORK | 10d | 2027-10-09 | 2027-10-19 | 7752 |  | RGA -FINISHING | 7428275 |
| 7761 | 40200.40300.40600.54000.56400.60600.250000.2521900 | LOBBY FLOORING WORK | 10d | 2027-10-19 | 2027-10-29 | 7760 |  | RGA -FINISHING | 7428285 |
| 7762 | 40200.40300.40600.54000.56400.60600.250000.2522000 | ELECTRICAL WIRING & SWITCH PLATE FIXING WORK | 6d | 2027-10-29 | 2027-11-04 | 7761 |  | RGA -FINISHING | 7428295 |
| 7763 | 40200.40300.40600.54000.56400.60600.250000.2522100 | False ceiling & 1ST COAT PAINTING | 15d | 2027-11-04 | 2027-11-19 | 7762 |  | RGA -FINISHING | 7428305 |
| 7764 | 40200.40300.40600.54000.56400.60600.250000.2522200 | CLEANING | 3d | 2027-11-19 | 2027-11-22 | 7763 |  | RGA -FINISHING | 7428315 |

Notes:
- 7742: Assumed
- 7750: Assumed
- 7758: Assumed

| ID | WBS | Task | Duration | Start | Finish | Predecessors | Constraint | Calendar | Unique_Task_ID |
| --- | --- | --- | --- | --- | --- | --- | --- | --- | --- |
| 7765 | 40200.40300.40600.54000.56400.60600.250100 | **24th FLOOR** | 260d | 2027-03-07 | 2027-11-22 |  | start no earlier than 2027-03-07 | RGA -FINISHING | 7421905 |
| 7766 | 40200.40300.40600.54000.56400.60600.250100.2522300 | FIRE FIGHTING | 10d | 2027-07-10 | 2027-07-20 | 7549FS-5d |  | RGA -FINISHING | 7428325 |
| 7767 | 40200.40300.40600.54000.56400.60600.250100.2522400 | LIFT BLOCK WORK | 3d | 2027-03-07 | 2027-03-10 | 7759SS |  | RGA -FINISHING | 7428335 |
| 7768 | 40200.40300.40600.54000.56400.60600.250100.2522500 | LIFT DADO WORK | 10d | 2027-10-09 | 2027-10-19 | 7760SS |  | RGA -FINISHING | 7428345 |
| 7769 | 40200.40300.40600.54000.56400.60600.250100.2522600 | LOBBY FLOORING WORK | 10d | 2027-10-19 | 2027-10-29 | 7768 |  | RGA -FINISHING | 7428355 |
| 7770 | 40200.40300.40600.54000.56400.60600.250100.2522700 | ELECTRICAL WIRING & SWITCH PLATE FIXING WORK | 6d | 2027-10-29 | 2027-11-04 | 7769 |  | RGA -FINISHING | 7428365 |
| 7771 | 40200.40300.40600.54000.56400.60600.250100.2522800 | False ceiling & 1ST COAT PAINTING | 15d | 2027-11-04 | 2027-11-19 | 7770 |  | RGA -FINISHING | 7428375 |
| 7772 | 40200.40300.40600.54000.56400.60600.250100.2522900 | CLEANING | 3d | 2027-11-19 | 2027-11-22 | 7771 |  | RGA -FINISHING | 7428385 |
| 7773 | 40200.40300.40600.54000.56400.60600.250200 | **25th FLOOR** | 260d | 2027-03-07 | 2027-11-22 |  | start no earlier than 2027-03-07 | RGA -FINISHING | 7421915 |
| 7774 | 40200.40300.40600.54000.56400.60600.250200.2523000 | FIRE FIGHTING | 10d | 2027-04-24 | 2027-05-04 | 7562FS-5d |  | RGA -FINISHING | 7428395 |
| 7775 | 40200.40300.40600.54000.56400.60600.250200.2523100 | LIFT BLOCK WORK | 3d | 2027-03-07 | 2027-03-10 | 7767SS |  | RGA -FINISHING | 7428405 |
| 7776 | 40200.40300.40600.54000.56400.60600.250200.2523200 | LIFT DADO WORK | 10d | 2027-10-09 | 2027-10-19 | 7768SS |  | RGA -FINISHING | 7428415 |
| 7777 | 40200.40300.40600.54000.56400.60600.250200.2523300 | LOBBY FLOORING WORK | 10d | 2027-10-19 | 2027-10-29 | 7776 |  | RGA -FINISHING | 7428425 |
| 7778 | 40200.40300.40600.54000.56400.60600.250200.2523400 | ELECTRICAL WIRING & SWITCH PLATE FIXING WORK | 6d | 2027-10-29 | 2027-11-04 | 7777 |  | RGA -FINISHING | 7428435 |
| 7779 | 40200.40300.40600.54000.56400.60600.250200.2523500 | False ceiling & 1ST COAT PAINTING | 15d | 2027-11-04 | 2027-11-19 | 7778 |  | RGA -FINISHING | 7428445 |
| 7780 | 40200.40300.40600.54000.56400.60600.250200.2523600 | CLEANING | 3d | 2027-11-19 | 2027-11-22 | 7779 |  | RGA -FINISHING | 7428455 |
| 7781 | 40200.40300.40600.54000.56400.162300 | **Common MEP Works** | 387d | 2027-04-01 | 2028-04-22 |  | start no earlier than 2027-04-01 | RGA -FINISHING | 7421655 |
| 7782 | 40200.40300.40600.54000.56400.162300.480000 | **Lift Works** | 121d | 2027-04-01 | 2027-07-31 |  | start no earlier than 2027-04-01 | RGA -FINISHING | 7422365 |
| 7783 | 40200.40300.40600.54000.56400.162300.480000.2523700 | Lift Shaft Handover | 30d | 2027-04-01 | 2027-05-01 | 7042FS+40d |  | RGA -FINISHING | 7429025 |
| 7784 | 40200.40300.40600.54000.56400.162300.480000.2523800 | Lift installation work | 90d | 2027-05-02 | 2027-07-31 | 7783FS+1d |  | RGA -FINISHING | 7429035 |
| 7785 | 40200.40300.40600.54000.56400.162300.480100 | **Plumbing works** | 102d | 2028-01-11 | 2028-04-22 |  | start no earlier than 2028-01-11 | RGA -FINISHING | 7422375 |
| 7786 | 40200.40300.40600.54000.56400.162300.480100.2523900 | Shaft Plumbing | 90d | 2028-01-11 | 2028-04-10 | 7245FS+100d |  | RGA -FINISHING | 7429045 |
| 7787 | 40200.40300.40600.54000.56400.162300.480100.2524000 | Terrace Looping | 90d | 2028-01-23 | 2028-04-22 | 7243FF+165d |  | RGA -FINISHING | 7429055 |
| 7788 | 40200.40300.40600.54000.56400.162300.480300 | **Fire Fighting works** | 75d | 2027-05-31 | 2027-08-14 |  | start no earlier than 2027-05-31 | RGA -FINISHING | 7422385 |
| 7789 | 40200.40300.40600.54000.56400.162300.480300.2524100 | Shaft Downtake works | 60d | 2027-05-31 | 2027-07-30 | 7047FF+150d |  | RGA -FINISHING | 7429065 |
| 7790 | 40200.40300.40600.54000.56400.162300.480300.2524200 | Connection to pump room | 15d | 2027-07-30 | 2027-08-14 | 7789 |  | RGA -FINISHING | 7429075 |

Notes:
- 7766: Assumed
- 7774: Assumed
- 7781: Completion in 12 months post last RCC

| ID | WBS | Task | Duration | Start | Finish | Predecessors | Complete | Constraint | Calendar | Unique_Task_ID |
| --- | --- | --- | --- | --- | --- | --- | --- | --- | --- | --- |
| 7791 | 40200.40300.40600.54000.56400.162300.342500 | **Electrical works** | 120d | 2027-11-20 | 2028-03-19 |  |  | start no earlier than 2027-11-20 | RGA -FINISHING | 7422345 |
| 7792 | 40200.40300.40600.54000.56400.162300.342500.2524300 | Shaft cabling | 45d | 2028-01-09 | 2028-02-23 | 7047FF+358d |  |  | RGA -FINISHING | 7429085 |
| 7793 | 40200.40300.40600.54000.56400.162300.342500.2524400 | Meter room erection | 15d | 2028-02-18 | 2028-03-04 | 6912FS+420d |  |  | RGA -FINISHING | 7429095 |
| 7794 | 40200.40300.40600.54000.56400.162300.342500.2524500 | Panel erection | 15d | 2028-03-04 | 2028-03-19 | 7793 |  |  | RGA -FINISHING | 7429105 |
| 7795 | 40200.40300.40600.54000.56400.162300.342500.2524600 | DG Installtion | 10d | 2027-11-20 | 2027-11-30 | 7793SS-90d |  |  | RGA -FINISHING | 7429115 |
| 7796 | 40200.40300.40600.54000.56400.162300.342500.2524700 | Transformer erection | 15d | 2027-11-20 | 2027-12-05 | 7795SS |  |  | RGA -FINISHING | 7429125 |
| 7797 | 40200.40300.40600.352800 | **Capex Item Procurment** | 278d | 2027-04-01 | 2028-01-04 |  |  | start no earlier than 2027-04-01 | RGA -FINISHING | 7808682 |
| 7798 | 40200.40300.40600.352800.593200 | Lift Procurement & delivery | 30d | 2027-04-01 | 2027-05-01 | 7783SS |  |  | RGA -FINISHING | 7816402 |
| 7799 | 40200.40300.40600.352800.593300 | Panels | 30d | 2027-12-05 | 2028-01-04 | 7794SS-90d |  |  | RGA -FINISHING | 7816412 |
| 7800 | 40200.40300.40600.352800.593400 | DG procurement | 30d | 2027-08-22 | 2027-09-21 | 7795SS-90d |  |  | RGA -FINISHING | 7816422 |
| 7801 | 40200.40300.40600.352800.593500 | Transformer | 30d | 2027-08-22 | 2027-09-21 | 7796SS-90d |  |  | RGA -FINISHING | 7816432 |
| 7802 | 40200.40300.40600.44300 | **Handing Over Activities** | 56d | 2028-03-01 | 2028-04-26 |  |  | start no earlier than 2028-03-01 | RGA -FINISHING | 7803192 |
| 7803 | 40200.40300.40600.44300.593600 | SOAP WASHING GROUND FLOOR | 1d | 2028-03-01 | 2028-03-02 | 7780FS+100d |  |  | RGA -FINISHING | 7816442 |
| 7804 | 40200.40300.40600.44300.593700 | SOAP WASHING L1 | 1d | 2028-03-02 | 2028-03-03 | 7803 |  |  | RGA -FINISHING | 7816452 |
| 7805 | 40200.40300.40600.44300.593800 | SOAP WASHING L2 | 1d | 2028-03-03 | 2028-03-04 | 7804 |  |  | RGA -FINISHING | 7816462 |
| 7806 | 40200.40300.40600.44300.593900 | SOAP WASHING L3 | 1d | 2028-03-04 | 2028-03-05 | 7805 |  |  | RGA -FINISHING | 7816472 |
| 7807 | 40200.40300.40600.44300.594000 | SOAP WASHING L4 | 1d | 2028-03-05 | 2028-03-06 | 7806 |  |  | RGA -FINISHING | 7816482 |
| 7808 | 40200.40300.40600.44300.594100 | SOAP WASHING L5 | 1d | 2028-03-06 | 2028-03-07 | 7807 |  |  | RGA -FINISHING | 7816492 |
| 7809 | 40200.40300.40600.44300.594200 | SOAP WASHING L6 | 1d | 2028-03-07 | 2028-03-08 | 7808 |  |  | RGA -FINISHING | 7816502 |
| 7810 | 40200.40300.40600.44300.594300 | SOAP WASHING L7 | 1d | 2028-03-08 | 2028-03-09 | 7809 |  |  | RGA -FINISHING | 7816512 |
| 7811 | 40200.40300.40600.44300.594400 | SOAP WASHING L8 | 1d | 2028-03-09 | 2028-03-10 | 7810 |  |  | RGA -FINISHING | 7816522 |
| 7812 | 40200.40300.40600.44300.594500 | SOAP WASHING L9 | 1d | 2028-03-10 | 2028-03-11 | 7811 |  |  | RGA -FINISHING | 7816532 |
| 7813 | 40200.40300.40600.44300.594600 | SOAP WASHING L10 | 1d | 2028-03-11 | 2028-03-12 | 7812 |  |  | RGA -FINISHING | 7816542 |
| 7814 | 40200.40300.40600.44300.594700 | SOAP WASHING L11 | 1d | 2028-03-12 | 2028-03-13 | 7813 |  |  | RGA -FINISHING | 7816552 |
| 7815 | 40200.40300.40600.44300.594800 | SOAP WASHING L12 | 1d | 2028-03-13 | 2028-03-14 | 7814 |  |  | RGA -FINISHING | 7816562 |
| 7816 | 40200.40300.40600.44300.594900 | SOAP WASHING L13 | 1d | 2028-03-14 | 2028-03-15 | 7815 |  |  | RGA -FINISHING | 7816572 |
| 7817 | 40200.40300.40600.44300.595000 | SOAP WASHING L14 | 1d | 2028-03-15 | 2028-03-16 | 7816 |  |  | RGA -FINISHING | 7816582 |
| 7818 | 40200.40300.40600.44300.595100 | SOAP WASHING L15 | 1d | 2028-03-16 | 2028-03-17 | 7817 |  |  | RGA -FINISHING | 7816592 |
| 7819 | 40200.40300.40600.44300.595200 | SOAP WASHING L16 | 1d | 2028-03-17 | 2028-03-18 | 7818 |  |  | RGA -FINISHING | 7816602 |
| 7820 | 40200.40300.40600.44300.595300 | SOAP WASHING L17 | 1d | 2028-03-18 | 2028-03-19 | 7819 |  |  | RGA -FINISHING | 7816612 |
| 7821 | 40200.40300.40600.44300.595400 | SOAP WASHING L18 | 1d | 2028-03-19 | 2028-03-20 | 7820 |  |  | RGA -FINISHING | 7816622 |
| 7822 | 40200.40300.40600.44300.595500 | SOAP WASHING L19 | 1d | 2028-03-20 | 2028-03-21 | 7821 |  |  | RGA -FINISHING | 7816632 |
| 7823 | 40200.40300.40600.44300.595600 | SOAP WASHING L20 | 1d | 2028-03-21 | 2028-03-22 | 7822 |  |  | RGA -FINISHING | 7816642 |
| 7824 | 40200.40300.40600.44300.595700 | SOAP WASHING L21 | 1d | 2028-03-22 | 2028-03-23 | 7823 |  |  | RGA -FINISHING | 7816652 |
| 7825 | 40200.40300.40600.44300.595800 | SOAP WASHING L22 | 1d | 2028-03-23 | 2028-03-24 | 7824 |  |  | RGA -FINISHING | 7816662 |
| 7826 | 40200.40300.40600.44300.595900 | SOAP WASHING L23 | 1d | 2028-03-24 | 2028-03-25 | 7825 |  |  | RGA -FINISHING | 7816672 |
| 7827 | 40200.40300.40600.44300.596000 | SOAP WASHING L24 | 1d | 2028-03-25 | 2028-03-26 | 7826 |  |  | RGA -FINISHING | 7816682 |
| 7828 | 40200.40300.40600.44300.596100 | SOAP WASHING L25 | 1d | 2028-03-26 | 2028-03-27 | 7827 |  |  | RGA -FINISHING | 7816692 |
| 7829 | 40200.40300.40600.44300.596200 | CP & SANITARYWARE FIXING Ground | 2d | 2028-03-03 | 2028-03-05 | 7804 |  |  | RGA -FINISHING | 7816732 |
| 7830 | 40200.40300.40600.44300.596300 | CP & SANITARYWARE FIXING L1 | 2d | 2028-03-05 | 2028-03-07 | 7829 |  |  | RGA -FINISHING | 7816742 |
| 7831 | 40200.40300.40600.44300.596400 | CP & SANITARYWARE FIXING L2 | 2d | 2028-03-07 | 2028-03-09 | 7830 |  |  | RGA -FINISHING | 7816752 |
| 7832 | 40200.40300.40600.44300.596500 | CP & SANITARYWARE FIXING L3 | 2d | 2028-03-09 | 2028-03-11 | 7831 |  |  | RGA -FINISHING | 7816762 |
| 7833 | 40200.40300.40600.44300.596600 | CP & SANITARYWARE FIXING L4 | 2d | 2028-03-11 | 2028-03-13 | 7832 |  |  | RGA -FINISHING | 7816772 |
| 7834 | 40200.40300.40600.44300.596700 | CP & SANITARYWARE FIXING L5 | 2d | 2028-03-13 | 2028-03-15 | 7833 |  |  | RGA -FINISHING | 7816782 |
| 7835 | 40200.40300.40600.44300.596800 | CP & SANITARYWARE FIXING L6 | 2d | 2028-03-15 | 2028-03-17 | 7834 |  |  | RGA -FINISHING | 7816792 |
| 7836 | 40200.40300.40600.44300.596900 | CP & SANITARYWARE FIXING L7 | 2d | 2028-03-17 | 2028-03-19 | 7835 |  |  | RGA -FINISHING | 7816802 |
| 7837 | 40200.40300.40600.44300.597000 | CP & SANITARYWARE FIXING L8 | 2d | 2028-03-19 | 2028-03-21 | 7836 |  |  | RGA -FINISHING | 7816812 |
| 7838 | 40200.40300.40600.44300.597100 | CP & SANITARYWARE FIXING L9 | 2d | 2028-03-21 | 2028-03-23 | 7837 |  |  | RGA -FINISHING | 7816822 |
| 7839 | 40200.40300.40600.44300.597200 | CP & SANITARYWARE FIXING L10 | 2d | 2028-03-23 | 2028-03-25 | 7838 |  |  | RGA -FINISHING | 7816832 |
| 7840 | 40200.40300.40600.44300.597300 | CP & SANITARYWARE FIXING L11 | 2d | 2028-03-25 | 2028-03-27 | 7839 |  |  | RGA -FINISHING | 7816842 |
| 7841 | 40200.40300.40600.44300.597400 | CP & SANITARYWARE FIXING L12 | 2d | 2028-03-27 | 2028-03-29 | 7840 |  |  | RGA -FINISHING | 7816852 |
| 7842 | 40200.40300.40600.44300.597500 | CP & SANITARYWARE FIXING L13 | 2d | 2028-03-29 | 2028-03-31 | 7841 |  |  | RGA -FINISHING | 7816862 |
| 7843 | 40200.40300.40600.44300.597600 | CP & SANITARYWARE FIXING L14 | 2d | 2028-03-31 | 2028-04-02 | 7842 |  |  | RGA -FINISHING | 7816872 |
| 7844 | 40200.40300.40600.44300.597700 | CP & SANITARYWARE FIXING L15 | 2d | 2028-04-02 | 2028-04-04 | 7843 |  |  | RGA -FINISHING | 7816882 |
| 7845 | 40200.40300.40600.44300.597800 | CP & SANITARYWARE FIXING L16 | 2d | 2028-04-04 | 2028-04-06 | 7844 |  |  | RGA -FINISHING | 7816892 |
| 7846 | 40200.40300.40600.44300.597900 | CP & SANITARYWARE FIXING L17 | 2d | 2028-04-06 | 2028-04-08 | 7845 |  |  | RGA -FINISHING | 7816902 |
| 7847 | 40200.40300.40600.44300.598000 | CP & SANITARYWARE FIXING L18 | 2d | 2028-04-08 | 2028-04-10 | 7846 |  |  | RGA -FINISHING | 7816912 |
| 7848 | 40200.40300.40600.44300.598100 | CP & SANITARYWARE FIXING L18 | 2d | 2028-04-10 | 2028-04-12 | 7847 |  |  | RGA -FINISHING | 7816922 |
| 7849 | 40200.40300.40600.44300.598200 | CP & SANITARYWARE FIXING L19 | 2d | 2028-04-12 | 2028-04-14 | 7848 |  |  | RGA -FINISHING | 7816932 |
| 7850 | 40200.40300.40600.44300.598300 | CP & SANITARYWARE FIXING L20 | 2d | 2028-04-14 | 2028-04-16 | 7849 |  |  | RGA -FINISHING | 7816942 |
| 7851 | 40200.40300.40600.44300.598400 | CP & SANITARYWARE FIXING L21 | 2d | 2028-04-16 | 2028-04-18 | 7850 |  |  | RGA -FINISHING | 7816952 |
| 7852 | 40200.40300.40600.44300.598500 | CP & SANITARYWARE FIXING L22 | 2d | 2028-04-18 | 2028-04-20 | 7851 |  |  | RGA -FINISHING | 7816962 |
| 7853 | 40200.40300.40600.44300.598600 | CP & SANITARYWARE FIXING L23 | 2d | 2028-04-20 | 2028-04-22 | 7852 |  |  | RGA -FINISHING | 7816972 |
| 7854 | 40200.40300.40600.44300.598700 | CP & SANITARYWARE FIXING L24 | 2d | 2028-04-22 | 2028-04-24 | 7853 |  |  | RGA -FINISHING | 7816982 |
| 7855 | 40200.40300.40600.44300.598800 | CP & SANITARYWARE FIXING L25 | 2d | 2028-04-24 | 2028-04-26 | 7854 |  |  | RGA -FINISHING | 7816992 |
| 7856 | 40200.40300.40600.533900 | MIscellaneous (Aluform Supply) | 77d | 2025-07-15 | 2025-10-08 | 6946FS-170.99d | 100% | start no earlier than 2025-07-15 | RGA -FINISHING | 7812632 |
| 7857 | 40200.40300.40600.533800 | Miscellaneous | 375d | 2025-04-16 | 2027-10-20 | 7856FS-151d | 33% |  | Indian Calendar | 7812642 |
| 7858 | 40200.40300.40600.546200 | Miscellaneous | 505d | 2027-06-15 | 2029-01-23 | 7856FS+526d |  |  | Indian Calendar | 10722988 |

| ID | WBS | Task | Duration | Start | Finish | Predecessors | Complete | Constraint | Calendar | Unique_Task_ID |
| --- | --- | --- | --- | --- | --- | --- | --- | --- | --- | --- |
| 7859 | 40200.40300.63900 | **Non Tower Area** | 1239d | 2025-04-22 | 2029-04-05 |  | 19% | start no earlier than 2025-04-22 | Indian Calendar | 7803782 |
| 7860 | 40200.40300.63900.69600 | **Non Tower Structure** | 751d | 2025-04-22 | 2027-09-14 |  | 46% | start no earlier than 2025-04-22 | Indian Calendar | 7803922 |
| 7861 | 40200.40300.63900.69600.340900 | **RCC Works - Nontower area- 1st Basement-Tower 7** | 165d | 2026-06-14 | 2026-12-27 |  |  | start no earlier than 2026-06-14 | RGA - STRUCTURE | 7808282 |
| 7862 | 40200.40300.63900.69600.340900.854700 | Pocket Excavation | 5d | 2026-06-14 | 2026-06-21 | 15FS+300d |  |  | RGA - STRUCTURE | 7820242 |
| 7863 | 40200.40300.63900.69600.340900.854800 | Raft / Footing PCC | 10d | 2026-06-22 | 2026-07-11 | 7862 |  |  | RGA - STRUCTURE | 7820252 |
| 7864 | 40200.40300.63900.69600.340900.854900 | Raft / Footing works | 30d | 2026-07-12 | 2026-08-12 | 7863 |  |  | RGA - STRUCTURE | 7820262 |
| 7865 | 40200.40300.63900.69600.340900.855000 | Columns in Upper basement | 60d | 2026-08-13 | 2026-10-13 | 7864 |  |  | RGA - STRUCTURE | 7820272 |
| 7866 | 40200.40300.63900.69600.340900.855100 | Upper Basement slab - Plinth slab | 60d | 2026-10-14 | 2026-12-27 | 7865 |  |  | RGA - STRUCTURE | 7820282 |
| 7867 | 40200.40300.63900.69600.341000 | **RCC Works - Nontower area 1st Basement-Tower 6** | 165d | 2025-12-10 | 2026-05-25 |  |  | start no earlier than 2025-12-10 | RGA - STRUCTURE | 7808312 |
| 7868 | 40200.40300.63900.69600.341000.855200 | Pocket Excavation | 5d | 2025-12-10 | 2025-12-14 | 1002FS+100d |  |  | RGA - STRUCTURE | 7820292 |
| 7869 | 40200.40300.63900.69600.341000.855300 | Raft / Footing PCC | 10d | 2025-12-15 | 2025-12-24 | 7868 |  |  | RGA - STRUCTURE | 7820302 |
| 7870 | 40200.40300.63900.69600.341000.855400 | Raft / Footing works | 30d | 2025-12-25 | 2026-01-23 | 7869 |  |  | RGA - STRUCTURE | 7820312 |
| 7871 | 40200.40300.63900.69600.341000.855500 | Columns in Upper basement | 60d | 2026-01-24 | 2026-03-25 | 7870 |  |  | RGA - STRUCTURE | 7820322 |
| 7872 | 40200.40300.63900.69600.341000.855600 | Upper Basement slab - Plinth slab | 60d | 2026-03-26 | 2026-05-25 | 7871 |  |  | RGA - STRUCTURE | 7820332 |
| 7873 | 40200.40300.63900.69600.341100 | **RCC Works - Nontower area- 1st Basement- Tower-5** | 165d | 2026-05-21 | 2026-11-21 |  |  | start no earlier than 2026-05-21 | RGA - STRUCTURE | 7808322 |
| 7874 | 40200.40300.63900.69600.341100.855700 | Pocket Excavation | 5d | 2026-05-21 | 2026-05-25 | 1988FS+200d |  |  | RGA - STRUCTURE | 7820342 |
| 7875 | 40200.40300.63900.69600.341100.855800 | Raft / Footing PCC | 10d | 2026-05-26 | 2026-06-04 | 7874 |  |  | RGA - STRUCTURE | 7820352 |
| 7876 | 40200.40300.63900.69600.341100.855900 | Raft / Footing works | 30d | 2026-06-05 | 2026-07-19 | 7875 |  |  | RGA - STRUCTURE | 7820362 |
| 7877 | 40200.40300.63900.69600.341100.856000 | Columns in Upper basement | 60d | 2026-07-20 | 2026-09-18 | 7876 |  |  | RGA - STRUCTURE | 7820372 |
| 7878 | 40200.40300.63900.69600.341100.856100 | Upper Basement slab - Plinth slab | 60d | 2026-09-19 | 2026-11-21 | 7877 |  |  | RGA - STRUCTURE | 7820382 |
| 7879 | 40200.40300.63900.69600.341200 | **RCC Works - Nontower area - 1st basement- Tower-4** | 165d | 2027-03-31 | 2027-09-11 |  |  | start no earlier than 2027-03-31 | RGA - STRUCTURE | 7808332 |
| 7880 | 40200.40300.63900.69600.341200.856200 | Pocket Excavation | 5d | 2027-03-31 | 2027-04-04 | 2975FS+452d |  |  | RGA - STRUCTURE | 7820392 |
| 7881 | 40200.40300.63900.69600.341200.856300 | Raft / Footing PCC | 10d | 2027-04-05 | 2027-04-14 | 7880 |  |  | RGA - STRUCTURE | 7820402 |
| 7882 | 40200.40300.63900.69600.341200.856400 | Raft / Footing works | 30d | 2027-04-15 | 2027-05-14 | 7881 |  |  | RGA - STRUCTURE | 7820412 |
| 7883 | 40200.40300.63900.69600.341200.856500 | Columns in Upper basement | 60d | 2027-05-15 | 2027-07-13 | 7882 |  |  | RGA - STRUCTURE | 7820422 |
| 7884 | 40200.40300.63900.69600.341200.856600 | Upper Basement slab - Plinth slab | 60d | 2027-07-14 | 2027-09-11 | 7883 |  |  | RGA - STRUCTURE | 7820432 |

| ID | WBS | Task | Duration | Start | Finish | Predecessors | Complete | Constraint | Calendar | Unique_Task_ID |
| --- | --- | --- | --- | --- | --- | --- | --- | --- | --- | --- |
| 7885 | 40200.40300.63900.69600.341300 | **RCC Works - Nontower area- 1st basement- Tower-3** | 165d | 2027-04-03 | 2027-09-14 |  |  | start no earlier than 2027-04-03 | RGA - STRUCTURE | 7808342 |
| 7886 | 40200.40300.63900.69600.341300.856700 | Pocket Excavation | 5d | 2027-04-03 | 2027-04-07 | 3962FS+460d |  |  | RGA - STRUCTURE | 7820442 |
| 7887 | 40200.40300.63900.69600.341300.856800 | Raft / Footing PCC | 10d | 2027-04-08 | 2027-04-17 | 7886 |  |  | RGA - STRUCTURE | 7820452 |
| 7888 | 40200.40300.63900.69600.341300.856900 | Raft / Footing works | 30d | 2027-04-18 | 2027-05-17 | 7887 |  |  | RGA - STRUCTURE | 7820462 |
| 7889 | 40200.40300.63900.69600.341300.857000 | Columns in Upper basement | 60d | 2027-05-18 | 2027-07-16 | 7888 |  |  | RGA - STRUCTURE | 7820472 |
| 7890 | 40200.40300.63900.69600.341300.857100 | Upper Basement slab - Plinth slab | 60d | 2027-07-17 | 2027-09-14 | 7889 |  |  | RGA - STRUCTURE | 7820482 |
| 7891 | 40200.40300.63900.69600.341400 | **RCC Works - Nontower area- Tower- 2A** | 402d | 2025-06-22 | 2026-08-18 |  | 57% | start no earlier than 2025-06-22 | RGA - STRUCTURE | 7808352 |
| 7892 | 40200.40300.63900.69600.341400.523400 | Pocket Excavation | 5d | 2025-11-10 | 2025-11-19 | 4951FS+100d | 100% | start no earlier than 2025-11-10 | RGA - STRUCTURE | 7820492 |
| 7893 | 40200.40300.63900.69600.341400.523300 | Raft / Footing PCC | 100d | 2025-08-07 | 2026-01-12 | 7892FS-102d | 56% | start no earlier than 2025-08-07 | RGA - STRUCTURE | 7820502 |
| 7894 | 40200.40300.63900.69600.341400.523200 | Raft / Footing works | 100d | 2025-07-23 | 2026-02-04 | 7893FS-171d | 78% |  | RGA - STRUCTURE | 7820512 |
| 7895 | 40200.40300.63900.69600.341400.523100 | Columns in Upper basement | 200d | 2025-06-22 | 2026-03-24 | 7894FS-224d | 76% |  | RGA - STRUCTURE | 7820522 |
| 7896 | 40200.40300.63900.69600.341400.857200 | Upper Basement slab - Plinth slab | 100d | 2026-04-24 | 2026-08-18 | 7895FS+30d |  |  | RGA - STRUCTURE | 7820532 |
| 7897 | 40200.40300.63900.69600.250300 | **RCC Works - Nontower area- Tower- 2** | 529d | 2025-04-22 | 2026-10-25 |  | 61% | start no earlier than 2025-04-22 | RGA - STRUCTURE | 8875544 |
| 7898 | 40200.40300.63900.69600.250300.523000 | Pocket Excavation | 4d | 2025-11-11 | 2025-12-01 | 4951FS+100d | 50% | start no earlier than 2025-11-11 | RGA - STRUCTURE | 8875554 |
| 7899 | 40200.40300.63900.69600.250300.522900 | Raft / Footing PCC | 200d | 2025-08-07 | 2026-04-24 | 7898FS-114d | 28% |  | RGA - STRUCTURE | 8875564 |
| 7900 | 40200.40300.63900.69600.250300.522800 | Raft / Footing works | 100d | 2025-07-23 | 2026-05-17 | 7899FS-272d | 78% |  | RGA - STRUCTURE | 8875574 |
| 7901 | 40200.40300.63900.69600.250300.522700 | Columns in Upper basement | 250d | 2025-06-23 | 2026-09-16 | 7900FS-324d | 57% |  | RGA - STRUCTURE | 8875584 |
| 7902 | 40200.40300.63900.69600.250300.522600 | Upper Basement slab - Plinth slab | 250d | 2025-04-22 | 2026-10-25 | 7901FS-491d | 84% |  | RGA - STRUCTURE | 8875594 |
| 7903 | 40200.40300.63900.69600.250400 | **RCC Works - Nontower area- Tower- 1** | 400d | 2025-05-16 | 2026-07-03 |  | 73% | start no earlier than 2025-05-16 | RGA - STRUCTURE | 7808362 |
| 7904 | 40200.40300.63900.69600.250400.522500 | Pocket Excavation | 49d | 2025-08-11 | 2025-11-19 | 4951FS+100d | 100% | start no earlier than 2025-08-11 | RGA - STRUCTURE | 7820542 |
| 7905 | 40200.40300.63900.69600.250400.522400 | Raft / Footing PCC | 17d | 2025-09-18 | 2025-11-19 | 7904FS-58d | 100% | start no earlier than 2025-09-18 | RGA - STRUCTURE | 7820552 |
| 7906 | 40200.40300.63900.69600.250400.522300 | Raft / Footing works | 200d | 2025-07-29 | 2026-02-17 | 7905FS-36d | 60% | start no earlier than 2025-07-29 | RGA - STRUCTURE | 7820562 |
| 7907 | 40200.40300.63900.69600.250400.522200 | Columns in Upper basement | 200d | 2025-06-01 | 2026-03-10 | 7906FS-258d | 89% |  | RGA - STRUCTURE | 7820572 |
| 7908 | 40200.40300.63900.69600.250400.522100 | Upper Basement slab - Plinth slab | 300d | 2025-05-16 | 2026-07-03 | 7907FS-295d | 65% |  | RGA - STRUCTURE | 7820582 |

| ID | WBS | Task | Duration | Start | Finish | Predecessors | Constraint | Calendar | Unique_Task_ID |
| --- | --- | --- | --- | --- | --- | --- | --- | --- | --- |
| 7909 | 40200.40300.63900.67900 | **Supporting structures** | 1129d | 2025-11-30 | 2029-01-01 |  | start no earlier than 2025-11-30 | RGA -FINISHING | 7803842 |
| 7910 | 40200.40300.63900.67900.168700 | **Compound Wall** | 90d | 2028-07-27 | 2028-10-24 |  | start no earlier than 2028-07-27 | RGA -FINISHING | 7806882 |
| 7911 | 40200.40300.63900.67900.168700.342400 | **Compound Wall** | 90d | 2028-07-27 | 2028-10-24 |  | start no earlier than 2028-07-27 | RGA -FINISHING | 7808202 |
| 7912 | 40200.40300.63900.67900.168700.342400.990700 | Excavation | 90d | 2028-07-27 | 2028-10-24 | 7924FS+90d, 7939FS+90d |  | RGA -FINISHING | 7832082 |
| 7913 | 40200.40300.63900.67900.168700.342400.990800 | Footing / Raft PCC | 90d | 2028-07-27 | 2028-10-24 | 7912SS |  | RGA -FINISHING | 7832092 |
| 7914 | 40200.40300.63900.67900.168700.342400.990900 | Raft RCC work | 90d | 2028-07-27 | 2028-10-24 | 7913SS |  | RGA -FINISHING | 7832102 |
| 7915 | 40200.40300.63900.67900.168700.342400.991000 | Retaining wall / Compound wall | 90d | 2028-07-27 | 2028-10-24 | 7914SS |  | RGA -FINISHING | 7832112 |
| 7916 | 40200.40300.63900.67900.168700.342400.991100 | Paint - Two coats of ACE - Cement paint (Asian) | 90d | 2028-07-27 | 2028-10-24 | 7915FF |  | RGA -FINISHING | 7832122 |
| 7917 | 40200.40300.63900.67900.70800 | **UGWT with WTP** | 414d | 2026-10-14 | 2027-12-01 |  | start no earlier than 2026-10-14 | RGA -FINISHING | 7803902 |
| 7918 | 40200.40300.63900.67900.70800.857300 | Excavation | 10d | 2026-10-14 | 2026-10-23 | 7908FS+102.5d |  | RGA -FINISHING | 7820592 |
| 7919 | 40200.40300.63900.67900.70800.857400 | PCC | 2d | 2026-10-15 | 2026-10-16 | 7918FS-9d |  | RGA -FINISHING | 7820602 |
| 7920 | 40200.40300.63900.67900.70800.857500 | RCC Raft | 21d | 2027-02-14 | 2027-03-06 | 7919FS+120d |  | RGA -FINISHING | 7820612 |
| 7921 | 40200.40300.63900.67900.70800.857600 | Pump Foundation | 1d | 2027-03-28 | 2027-03-28 | 7920FS+21d |  | RGA -FINISHING | 7820622 |
| 7922 | 40200.40300.63900.67900.70800.857700 | Puddle Flange fixing | 3d | 2027-07-07 | 2027-07-09 | 7921FS+100d |  | RGA -FINISHING | 7820632 |
| 7923 | 40200.40300.63900.67900.70800.857800 | RCC Pardi | 18d | 2027-07-10 | 2027-07-27 | 7922 |  | RGA -FINISHING | 7820642 |
| 7924 | 40200.40300.63900.67900.70800.857900 | RCC Slab | 18d | 2027-08-16 | 2027-09-02 | 7923FS+19d |  | RGA -FINISHING | 7820652 |
| 7925 | 40200.40300.63900.67900.70800.858000 | Waterproofing | 30d | 2027-09-03 | 2027-10-02 | 7924 |  | RGA -FINISHING | 7820662 |
| 7926 | 40200.40300.63900.67900.70800.858100 | MS Structural Work | 30d | 2027-10-03 | 2027-11-01 | 7925 |  | RGA -FINISHING | 7820672 |
| 7927 | 40200.40300.63900.67900.70800.858200 | Delivery of Pumps & Panels at site | 30d | 2027-10-03 | 2027-11-01 | 7926FF |  | RGA -FINISHING | 7820682 |
| 7928 | 40200.40300.63900.67900.70800.858300 | Installation of pump & panels & WTP unit | 15d | 2027-11-02 | 2027-11-16 | 7927 |  | RGA -FINISHING | 7820692 |
| 7929 | 40200.40300.63900.67900.70800.858400 | Piping & Cabling work | 15d | 2027-11-12 | 2027-11-26 | 7928FF+10d |  | RGA -FINISHING | 7820702 |
| 7930 | 40200.40300.63900.67900.70800.858500 | Testing & Commissioning work | 5d | 2027-11-27 | 2027-12-01 | 7929 |  | RGA -FINISHING | 7820712 |
| 7931 | 40200.40300.63900.67900.157200 | **STP** | 980d | 2025-11-30 | 2028-08-05 |  | start no earlier than 2025-11-30 | RGA -FINISHING | 7805252 |
| 7932 | 40200.40300.63900.67900.157200.858600 | Excavation | 10d | 2025-11-30 | 2025-12-09 | 7908FS-379.5d |  | RGA -FINISHING | 7820722 |

Notes:
- 7910: Î
- 7911: Î
- 7912: Î
- 7914: Î
- 7917: Î
- 7918: Î
- 7919: Î
- 7920: Î
- 7921: Î
- 7922: Î
- 7923: Î
- 7924: Î
- 7925: Î
- 7926: Î
- 7927: Î
- 7928: Î
- 7929: Î
- 7930: Î
- 7931: Î
- 7932: Î

| ID | WBS | Task | Duration | Start | Finish | Predecessors | Constraint | Calendar | Unique_Task_ID |
| --- | --- | --- | --- | --- | --- | --- | --- | --- | --- |
| 7933 | 40200.40300.63900.67900.157200.174600 | **Waste Segregation Area** | 125d | 2028-01-19 | 2028-05-22 |  | start no earlier than 2028-01-19 | RGA -FINISHING | 7806912 |
| 7934 | 40200.40300.63900.67900.157200.174600.991200 | PCC | 7d | 2028-01-19 | 2028-01-25 | 7932FS+770d |  | RGA -FINISHING | 7832132 |
| 7935 | 40200.40300.63900.67900.157200.174600.991300 | RCC Raft | 25d | 2028-01-26 | 2028-02-19 | 7934 |  | RGA -FINISHING | 7832142 |
| 7936 | 40200.40300.63900.67900.157200.174600.991400 | Pump Foundation | 25d | 2028-02-20 | 2028-03-15 | 7935 |  | RGA -FINISHING | 7832152 |
| 7937 | 40200.40300.63900.67900.157200.174600.991500 | Puddle Flange fixing | 3d | 2028-03-16 | 2028-03-18 | 7936 |  | RGA -FINISHING | 7832162 |
| 7938 | 40200.40300.63900.67900.157200.174600.991600 | RCC Pardi | 30d | 2028-03-19 | 2028-04-17 | 7937 |  | RGA -FINISHING | 7832172 |
| 7939 | 40200.40300.63900.67900.157200.174600.991700 | RCC Slab | 21d | 2028-04-07 | 2028-04-27 | 7938FF+10d |  | RGA -FINISHING | 7832182 |
| 7940 | 40200.40300.63900.67900.157200.174600.991800 | Waterproofing | 25d | 2028-04-28 | 2028-05-22 | 7939 |  | RGA -FINISHING | 7832192 |
| 7941 | 40200.40300.63900.67900.157200.174700 | **Equipment & Treatment Plant above Ground** | 100d | 2028-04-28 | 2028-08-05 |  | start no earlier than 2028-04-28 | RGA -FINISHING | 7806902 |
| 7942 | 40200.40300.63900.67900.157200.174700.991900 | Masonary Work | 20d | 2028-04-28 | 2028-05-17 | 7939 |  | RGA -FINISHING | 7832202 |
| 7943 | 40200.40300.63900.67900.157200.174700.992000 | Plaster Work | 15d | 2028-05-18 | 2028-06-01 | 7942 |  | RGA -FINISHING | 7832212 |
| 7944 | 40200.40300.63900.67900.157200.174700.992100 | Painting Work | 15d | 2028-06-10 | 2028-06-24 | 7943FS+8d |  | RGA -FINISHING | 7832222 |
| 7945 | 40200.40300.63900.67900.157200.174700.992200 | Delivery of STP Equipment & Panels at site | 30d | 2028-06-02 | 2028-07-01 | 7943 |  | RGA -FINISHING | 7832232 |
| 7946 | 40200.40300.63900.67900.157200.174700.992300 | Installation of STP Equipment & Panels | 21d | 2028-07-02 | 2028-07-22 | 7944, 7945 |  | RGA -FINISHING | 7832242 |
| 7947 | 40200.40300.63900.67900.157200.174700.992400 | Piping & Cabeling Work | 7d | 2028-07-23 | 2028-07-29 | 7946 |  | RGA -FINISHING | 7832252 |
| 7948 | 40200.40300.63900.67900.157200.174700.992500 | Testing & Commissioning | 7d | 2028-07-30 | 2028-08-05 | 7947 |  | RGA -FINISHING | 7832262 |
| 7949 | 40200.40300.63900.67900.250500 | **Organic Waste Composter** | 69d | 2028-10-25 | 2029-01-01 |  | start no earlier than 2028-10-25 | RGA -FINISHING | 7806922 |
| 7950 | 40200.40300.63900.67900.250500.858700 | Foundation making | 7d | 2028-10-25 | 2028-10-31 | 7915 |  | RGA -FINISHING | 7820732 |
| 7951 | 40200.40300.63900.67900.250500.858800 | Floor PCC | 7d | 2028-11-01 | 2028-11-07 | 7950 |  | RGA -FINISHING | 7820742 |
| 7952 | 40200.40300.63900.67900.250500.858900 | Structural Roof | 15d | 2028-11-08 | 2028-11-22 | 7951 |  | RGA -FINISHING | 7820752 |
| 7953 | 40200.40300.63900.67900.250500.859000 | Delivery of OWC unit | 15d | 2028-11-26 | 2028-12-10 | 7952FS+3d |  | RGA -FINISHING | 7820762 |
| 7954 | 40200.40300.63900.67900.250500.859100 | Installation of OWC Unit | 15d | 2028-12-11 | 2028-12-25 | 7952, 7953 |  | RGA -FINISHING | 7820772 |
| 7955 | 40200.40300.63900.67900.250500.859200 | Electrical cabling work | 7d | 2028-12-26 | 2029-01-01 | 7952, 7953, 7954 |  | RGA -FINISHING | 7820782 |
| 7956 | 40200.40300.63900.67900.510700 | **Entrance Gate & Security Cabin** | 120d | 2028-07-07 | 2028-11-03 |  | start no earlier than 2028-07-07 | RGA -FINISHING | 7812242 |
| 7957 | 40200.40300.63900.67900.510700.859300 | Entrance Gate & Security Cabin | 120d | 2028-07-07 | 2028-11-03 | 7916FS-110d |  | RGA -FINISHING | 7820792 |

Notes:
- 7933: Î
- 7934: Î
- 7935: Î
- 7936: Î
- 7937: Î
- 7938: Î
- 7939: Î
- 7940: Î
- 7941: Î
- 7942: Î
- 7943: Î
- 7944: Î
- 7945: Î
- 7946: Î
- 7947: Î
- 7948: Î
- 7949: Î
- 7950: Î
- 7951: Î
- 7952: Î
- 7953: Î
- 7954: Î
- 7955: Î
- 7956: Î
- 7957: Î

| ID | WBS | Task | Duration | Start | Finish | Predecessors | Constraint | Calendar | Unique_Task_ID |
| --- | --- | --- | --- | --- | --- | --- | --- | --- | --- |
| 7958 | 40200.40300.63900.67900.510600 | **Signages** | 60d | 2028-11-03 | 2029-01-01 |  | start no earlier than 2028-11-03 | RGA -FINISHING | 7812252 |
| 7959 | 40200.40300.63900.67900.510600.859400 | Signages | 60d | 2028-11-03 | 2029-01-01 | 7955FF |  | RGA -FINISHING | 7820802 |
| 7960 | 40200.40300.63900.65600 | **External Infrastructure** | 544d | 2027-10-10 | 2029-04-05 |  | start no earlier than 2027-10-10 | RGA -FINISHING | 7803822 |
| 7961 | 40200.40300.63900.65600.510500 | **External Firefightning Work** | 150d | 2027-11-29 | 2028-04-26 |  | start no earlier than 2027-11-29 | RGA -FINISHING | 7812262 |
| 7962 | 40200.40300.63900.65600.510500.859500 | Excavation, Pipe Laying, Hyderent errection , Fitting , Testing & Commissioning | 150d | 2027-11-29 | 2028-04-26 | 919FS-180d |  | RGA -FINISHING | 7820812 |
| 7963 | 40200.40300.63900.65600.168800 | **External Plumbing** | 210d | 2027-10-10 | 2028-05-06 |  | start no earlier than 2027-10-10 | RGA -FINISHING | 7806892 |
| 7964 | 40200.40300.63900.65600.168800.511700 | **External Plumbing - Drainage** | 210d | 2027-10-10 | 2028-05-06 |  | start no earlier than 2027-10-10 | RGA -FINISHING | 7812502 |
| 7965 | 40200.40300.63900.65600.168800.511700.992600 | Excavation, Pipe Laying, Filling , Testing & Commissioning | 210d | 2027-10-10 | 2028-05-06 | 7962FF+10d |  | RGA -FINISHING | 7832272 |
| 7966 | 40200.40300.63900.65600.168800.511500 | **External Plumbing - Watersupply** | 210d | 2027-10-10 | 2028-05-06 |  | start no earlier than 2027-10-10 | RGA -FINISHING | 7812492 |
| 7967 | 40200.40300.63900.65600.168800.511500.992700 | Excavation, Pipe Laying, Filling , Testing & Commissioning | 210d | 2027-10-10 | 2028-05-06 | 7962FF+10d |  | RGA -FINISHING | 7832282 |
| 7968 | 40200.40300.63900.65600.168800.511400 | **External Plumbing - Storm Water** | 210d | 2027-10-10 | 2028-05-06 |  | start no earlier than 2027-10-10 | RGA -FINISHING | 7812482 |
| 7969 | 40200.40300.63900.65600.168800.511400.992800 | Excavation, PCC, BBM , IPS, Cover fixing, Curing | 210d | 2027-10-10 | 2028-05-06 | 7962FF+10d |  | RGA -FINISHING | 7832292 |
| 7970 | 40200.40300.63900.65600.168800.492600 | **Rain water Harvesting work** | 60d | 2028-03-08 | 2028-05-06 |  | start no earlier than 2028-03-08 | RGA -FINISHING | 7811822 |
| 7971 | 40200.40300.63900.65600.168800.492600.992900 | Bore Holes, Chamber, Finishing, | 60d | 2028-03-08 | 2028-05-06 | 7965FF |  | RGA -FINISHING | 7832302 |
| 7972 | 40200.40300.63900.65600.168800.492600.993000 | Roof Rain Water Collction Tank | 30d | 2028-04-07 | 2028-05-06 | 7971FF |  | RGA -FINISHING | 7832312 |
| 7973 | 40200.40300.63900.65600.66500 | **External Electrical Work** | 183d | 2028-09-12 | 2029-03-13 |  | start no earlier than 2028-09-12 | RGA -FINISHING | 7803832 |
| 7974 | 40200.40300.63900.65600.66500.343000 | **Receiving Station** | 180d | 2028-09-12 | 2029-03-10 |  | start no earlier than 2028-09-12 | RGA -FINISHING | 7808372 |
| 7975 | 40200.40300.63900.65600.66500.343000.993100 | Excavation | 30d | 2028-09-12 | 2028-10-11 | 924SS+180d |  | RGA -FINISHING | 7832322 |
| 7976 | 40200.40300.63900.65600.66500.343000.993200 | Substructure Work - Civil | 30d | 2028-10-12 | 2028-11-10 | 7975 |  | RGA -FINISHING | 7832332 |
| 7977 | 40200.40300.63900.65600.66500.343000.993300 | Superstructure Work - Civil | 60d | 2028-11-11 | 2029-01-09 | 7976 |  | RGA -FINISHING | 7832342 |
| 7978 | 40200.40300.63900.65600.66500.343000.993400 | Finishing Work | 30d | 2029-01-10 | 2029-02-08 | 7977 |  | RGA -FINISHING | 7832352 |
| 7979 | 40200.40300.63900.65600.66500.343000.993500 | MEP Work till TR | 30d | 2029-02-09 | 2029-03-10 | 7978 |  | RGA -FINISHING | 7832362 |
| 7980 | 40200.40300.63900.65600.66500.252500 | **External Electrical work** | 153d | 2028-10-12 | 2029-03-13 |  | start no earlier than 2028-10-12 | RGA -FINISHING | 7806932 |
| 7981 | 40200.40300.63900.65600.66500.252500.993600 | Laying of hume pipe with chambers for power cables & Data Cable | 90d | 2028-10-12 | 2029-01-09 | 7975 |  | RGA -FINISHING | 7832372 |
| 7982 | 40200.40300.63900.65600.66500.252500.993700 | Cable laying from Transformer room to bldg. | 21d | 2029-01-10 | 2029-01-30 | 7981 |  | RGA -FINISHING | 7832382 |
| 7983 | 40200.40300.63900.65600.66500.252500.993800 | Termination of LT cables | 20d | 2029-01-31 | 2029-02-19 | 7982 |  | RGA -FINISHING | 7832392 |
| 7984 | 40200.40300.63900.65600.66500.252500.993900 | cabling for Telephone / Internet / Intercon system | 45d | 2029-01-10 | 2029-02-23 | 7981 |  | RGA -FINISHING | 7832402 |
| 7985 | 40200.40300.63900.65600.66500.252500.994000 | Crone boxes fixing | 15d | 2029-02-24 | 2029-03-10 | 7984 |  | RGA -FINISHING | 7832412 |
| 7986 | 40200.40300.63900.65600.66500.252500.994100 | Building Earthing systeam common | 21d | 2029-02-21 | 2029-03-13 | 7987FF |  | RGA -FINISHING | 7832422 |

Notes:
- 7961: Î
- 7962: Î
- 7963: Î
- 7964: Î
- 7965: Î
- 7966: Î
- 7967: Î
- 7968: Î
- 7969: Î
- 7970: Î
- 7971: Î
- 7972: Î
- 7973: Î
- 7974: Î
- 7975: Î
- 7976: Î
- 7977: Î
- 7978: Î
- 7979: Î
- 7980: Î
- 7981: Î
- 7982: Î
- 7983: Î
- 7984: Î
- 7985: Î
- 7986: Î

| ID | WBS | Task | Duration | Start | Finish | Predecessors | Constraint | Calendar | Unique_Task_ID |
| --- | --- | --- | --- | --- | --- | --- | --- | --- | --- |
| 7987 | 40200.40300.63900.65600.66500.68600 | **Substation (Transformer & DG Room)** | 153d | 2028-10-12 | 2029-03-13 |  | start no earlier than 2028-10-12 | RGA -FINISHING | 7803852 |
| 7988 | 40200.40300.63900.65600.66500.68600.994200 | Excavation | 15d | 2028-10-12 | 2028-10-26 | 7975 |  | RGA -FINISHING | 7832432 |
| 7989 | 40200.40300.63900.65600.66500.68600.994300 | Substructure Work - Civil | 10d | 2028-10-27 | 2028-11-05 | 7988 |  | RGA -FINISHING | 7832442 |
| 7990 | 40200.40300.63900.65600.66500.68600.994400 | Superstructure Work - Civil | 20d | 2028-11-06 | 2028-11-25 | 7989 |  | RGA -FINISHING | 7832452 |
| 7991 | 40200.40300.63900.65600.66500.68600.994500 | Cabel Trenches / DG Foundation | 30d | 2028-11-06 | 2028-12-05 | 7990FF+10d |  | RGA -FINISHING | 7832462 |
| 7992 | 40200.40300.63900.65600.66500.68600.994600 | Roof Slab waterproofing | 15d | 2028-11-26 | 2028-12-10 | 7990 |  | RGA -FINISHING | 7832472 |
| 7993 | 40200.40300.63900.65600.66500.68600.994700 | Rolling Shutter & Window fixing | 15d | 2028-12-04 | 2028-12-18 | 7992FF+8d |  | RGA -FINISHING | 7832482 |
| 7994 | 40200.40300.63900.65600.66500.68600.994800 | Painting | 15d | 2028-12-19 | 2029-01-02 | 7993 |  | RGA -FINISHING | 7832492 |
| 7995 | 40200.40300.63900.65600.66500.68600.994900 | Delivery of DG / Transformer Room / Panels | 60d | 2028-11-11 | 2029-01-09 | 7994FF+7d |  | RGA -FINISHING | 7832502 |
| 7996 | 40200.40300.63900.65600.66500.68600.995000 | Installation of panels , DG & Transformer | 20d | 2029-01-10 | 2029-01-29 | 7994, 7995 |  | RGA -FINISHING | 7832512 |
| 7997 | 40200.40300.63900.65600.66500.68600.995100 | Laying & Termination of HT LT Cabels | 20d | 2029-01-30 | 2029-02-18 | 7996 |  | RGA -FINISHING | 7832522 |
| 7998 | 40200.40300.63900.65600.66500.68600.995200 | Installation of DG set | 20d | 2029-01-30 | 2029-02-18 | 7997FF |  | RGA -FINISHING | 7832532 |
| 7999 | 40200.40300.63900.65600.66500.68600.995300 | Cabeling work for DG set. | 20d | 2029-02-19 | 2029-03-10 | 7997 |  | RGA -FINISHING | 7832542 |
| 8000 | 40200.40300.63900.65600.66500.68600.995400 | Earthing systeam for DG & Transformer | 5d | 2029-03-06 | 2029-03-10 | 7999FF |  | RGA -FINISHING | 7832552 |
| 8001 | 40200.40300.63900.65600.66500.68600.995500 | Testing & Commissioning of Transformer | 5d | 2029-03-09 | 2029-03-13 | 8000FS-2d |  | RGA -FINISHING | 7832562 |
| 8002 | 40200.40300.63900.65600.66500.68600.995600 | Testing & Commissioning of DG | 4d | 2029-03-09 | 2029-03-12 | 8000FS-2d |  | RGA -FINISHING | 7832572 |
| 8003 | 40200.40300.63900.65600.66500.343100 | **Street Light Fixing** | 95d | 2028-10-27 | 2029-01-29 |  | start no earlier than 2028-10-27 | RGA -FINISHING | 7808382 |
| 8004 | 40200.40300.63900.65600.66500.343100.995700 | Pole Foundation | 45d | 2028-10-27 | 2028-12-10 | 7988 |  | RGA -FINISHING | 7832582 |
| 8005 | 40200.40300.63900.65600.66500.343100.995800 | Fixing of Pole | 15d | 2028-12-11 | 2028-12-25 | 8004 |  | RGA -FINISHING | 7832592 |
| 8006 | 40200.40300.63900.65600.66500.343100.995900 | Cabel Laying | 15d | 2028-12-26 | 2029-01-09 | 8005 |  | RGA -FINISHING | 7832602 |
| 8007 | 40200.40300.63900.65600.66500.343100.996000 | DB installation | 10d | 2029-01-10 | 2029-01-19 | 8006 |  | RGA -FINISHING | 7832612 |
| 8008 | 40200.40300.63900.65600.66500.343100.996100 | Termination of Cable | 10d | 2029-01-20 | 2029-01-29 | 8007 |  | RGA -FINISHING | 7832622 |
| 8009 | 40200.40300.63900.65600.364300 | **Hard Scape Work** | 130d | 2028-10-05 | 2029-02-11 |  | start no earlier than 2028-10-05 | RGA -FINISHING | 7808882 |
| 8010 | 40200.40300.63900.65600.364300.859600 | Excavation & Levelling | 40d | 2028-10-05 | 2028-11-13 | 7915FS-20d |  | RGA -FINISHING | 7820822 |
| 8011 | 40200.40300.63900.65600.364300.859700 | Civil Work | 40d | 2028-11-14 | 2028-12-23 | 8010 |  | RGA -FINISHING | 7820832 |
| 8012 | 40200.40300.63900.65600.364300.859800 | Base preparation for landscape | 40d | 2028-12-24 | 2029-02-01 | 8011 |  | RGA -FINISHING | 7820842 |
| 8013 | 40200.40300.63900.65600.364300.859900 | Tilling & Other finishing work | 40d | 2029-01-03 | 2029-02-11 | 8012FF+10d |  | RGA -FINISHING | 7820852 |

Notes:
- 7987: Î
- 7988: Î
- 7989: Î
- 7990: Î
- 7991: Î
- 7992: Î
- 7993: Î
- 7994: Î
- 7995: Î
- 7996: Î
- 7997: Î
- 7998: Î
- 7999: Î
- 8000: Î
- 8001: Î
- 8002: Î
- 8003: Î
- 8004: Î
- 8005: Î
- 8006: Î
- 8007: Î
- 8008: Î
- 8009: Î
- 8010: Î
- 8011: Î
- 8012: Î
- 8013: Î

| ID | WBS | Task | Duration | Start | Finish | Predecessors | Constraint | Calendar | Unique_Task_ID |
| --- | --- | --- | --- | --- | --- | --- | --- | --- | --- |
| 8014 | 40200.40300.63900.65600.459300 | **Soft Scape Work** | 48d | 2029-02-02 | 2029-03-21 |  | start no earlier than 2029-02-02 | RGA -FINISHING | 7808982 |
| 8015 | 40200.40300.63900.65600.459300.860000 | Soil & Manual filling | 30d | 2029-02-02 | 2029-03-03 | 8012 |  | RGA -FINISHING | 7820862 |
| 8016 | 40200.40300.63900.65600.459300.860100 | Plantation | 30d | 2029-02-17 | 2029-03-18 | 8015FS-15d |  | RGA -FINISHING | 7820872 |
| 8017 | 40200.40300.63900.65600.459300.860200 | Irrigation systeam | 20d | 2029-03-02 | 2029-03-21 | 8016FF+3d |  | RGA -FINISHING | 7820882 |
| 8018 | 40200.40300.63900.65600.157300 | **External Road (60M/24M/12M) (TBD)** | 63d | 2029-02-02 | 2029-04-05 |  | start no earlier than 2029-02-02 | RGA -FINISHING | 7805242 |
| 8019 | 40200.40300.63900.65600.157300.860300 | Levelling and removing loose soil | 30d | 2029-02-22 | 2029-03-23 | 8010FS+100d |  | RGA -FINISHING | 7820892 |
| 8020 | 40200.40300.63900.65600.157300.860400 | Excavation for all types of soft strata | 40d | 2029-02-02 | 2029-03-13 | 8019FS-50d |  | RGA -FINISHING | 7820902 |
| 8021 | 40200.40300.63900.65600.157300.860500 | Providing and laying Hume pipe of NP2 Grade of 300 mm dia | 20d | 2029-02-24 | 2029-03-15 | 8020FF+2d |  | RGA -FINISHING | 7820912 |
| 8022 | 40200.40300.63900.65600.157300.860600 | Filling and compacting with approved material avaialble within the site premises | 20d | 2029-02-26 | 2029-03-17 | 8021FF+2d |  | RGA -FINISHING | 7820922 |
| 8023 | 40200.40300.63900.65600.157300.860700 | Preparation of Sub Grade | 20d | 2029-02-28 | 2029-03-19 | 8022FF+2d |  | RGA -FINISHING | 7820932 |
| 8024 | 40200.40300.63900.65600.157300.860800 | WBM - thickness of 150mm of 75-90mm metal | 45d | 2029-02-05 | 2029-03-21 | 8023FF+2d |  | RGA -FINISHING | 7820942 |
| 8025 | 40200.40300.63900.65600.157300.860900 | WBM - thickness of 100mm of 50-60mm metal | 45d | 2029-02-05 | 2029-03-21 | 8024FF |  | RGA -FINISHING | 7820952 |
| 8026 | 40200.40300.63900.65600.157300.861000 | Providing & Applying 75mm thick semigrout using 40mm metal | 15d | 2029-03-22 | 2029-04-05 | 8025 |  | RGA -FINISHING | 7820962 |
| 8027 | 40200.40300.63900.65600.157300.861100 | Providing,laying and compacting 20-25mm thick carpet coat/Flagstones | 10d | 2029-03-22 | 2029-03-31 | 8026FF-5d |  | RGA -FINISHING | 7820972 |
| 8028 | 40200.40300.63900.65600.157300.861200 | Proving laying premix seal coat 10mm thick of ashpalt (type B)/Pavers | 10d | 2029-03-17 | 2029-03-26 | 8027FF-5d |  | RGA -FINISHING | 7820982 |
| 8029 | 40200.40300.63900.65600.157300.861300 | External Storm Water System | 30d | 2029-03-07 | 2029-04-05 | 8026FF |  | RGA -FINISHING | 7820992 |
| 8030 | 40200.40300.63900.65600.598900 | Club House land 2 | 210d | 2028-06-30 | 2029-03-01 | 8010FS-117d |  | Indian Calendar | 7817032 |
| 8031 | 40200.40300.63900.489900 | **Miscellaneous** | 1120d | 2025-11-28 | 2028-12-21 |  | start no earlier than 2025-11-28 | RGA -FINISHING | 7811802 |
| 8032 | 40200.40300.63900.489900.520400 | Miscellaneous | 300d | 2025-11-28 | 2028-07-29 | 97FS-271d |  | RGA -FINISHING | 7817042 |
| 8033 | 40200.40300.63900.489900.599000 | Miscellaneous Others | 330d | 2027-12-03 | 2028-12-21 | 8032SS+630d |  | Indian Calendar | 7817052 |
| 8034 | 40200.40300.71400 | **OC Activities** | 214d | 2028-02-16 | 2028-09-16 |  | start no earlier than 2028-02-16 | RGA -FINISHING | 7804532 |
| 8035 | 40200.40300.71400.352900 | **Tower 7** | 214d | 2028-02-16 | 2028-09-16 |  | start no earlier than 2028-02-16 | RGA -FINISHING | 7808642 |
| 8036 | 40200.40300.71400.352900.599100 | OC Application | 1d | 2028-02-16 | 2028-02-16 | 8071FF |  | RGA -FINISHING | 7817062 |
| 8037 | 40200.40300.71400.352900.599200 | OC receipt | 1d | 2028-03-18 | 2028-03-18 | 8072FF |  | RGA -FINISHING | 7817072 |
| 8038 | 40200.40300.71400.352900.599300 | Customer commitment | 1d | 2028-09-15 | 2028-09-15 | 8073FF |  | RGA -FINISHING | 7817082 |
| 8039 | 40200.40300.71400.352900.599400 | RERA Commitment | 1d | 2028-09-16 | 2028-09-16 | 8074FF |  | RGA -FINISHING | 7817092 |

Notes:
- 8014: Î
- 8015: Î
- 8016: Î
- 8017: Î

| ID | WBS | Task | Duration | Start | Finish | Predecessors | Constraint | Calendar | Unique_Task_ID |
| --- | --- | --- | --- | --- | --- | --- | --- | --- | --- |
| 8040 | 40200.40300.71400.353000 | **Tower 6** | 214d | 2028-02-16 | 2028-09-16 |  | start no earlier than 2028-02-16 | RGA -FINISHING | 7808632 |
| 8041 | 40200.40300.71400.353000.599500 | OC Application | 1d | 2028-02-16 | 2028-02-16 | 8071FF |  | RGA -FINISHING | 7817102 |
| 8042 | 40200.40300.71400.353000.599600 | OC receipt | 1d | 2028-03-18 | 2028-03-18 | 8072FF |  | RGA -FINISHING | 7817112 |
| 8043 | 40200.40300.71400.353000.599700 | Customer commitment | 1d | 2028-09-15 | 2028-09-15 | 8073FF |  | RGA -FINISHING | 7817122 |
| 8044 | 40200.40300.71400.353000.599800 | RERA Commitment | 1d | 2028-09-16 | 2028-09-16 | 8074FF |  | RGA -FINISHING | 7817132 |
| 8045 | 40200.40300.71400.353100 | **Tower 5** | 214d | 2028-02-16 | 2028-09-16 |  | start no earlier than 2028-02-16 | RGA -FINISHING | 7808622 |
| 8046 | 40200.40300.71400.353100.599900 | OC Application | 1d | 2028-02-16 | 2028-02-16 | 8071FF |  | RGA -FINISHING | 7817142 |
| 8047 | 40200.40300.71400.353100.600000 | OC receipt | 1d | 2028-03-18 | 2028-03-18 | 8072FF |  | RGA -FINISHING | 7817152 |
| 8048 | 40200.40300.71400.353100.600100 | Customer commitment | 1d | 2028-09-15 | 2028-09-15 | 8073FF |  | RGA -FINISHING | 7817162 |
| 8049 | 40200.40300.71400.353100.600200 | RERA Commitment | 1d | 2028-09-16 | 2028-09-16 | 8074FF |  | RGA -FINISHING | 7817172 |
| 8050 | 40200.40300.71400.353200 | **Tower 4** | 214d | 2028-02-16 | 2028-09-16 |  | start no earlier than 2028-02-16 | RGA -FINISHING | 7808612 |
| 8051 | 40200.40300.71400.353200.600300 | OC Application | 1d | 2028-02-16 | 2028-02-16 | 8071FF |  | RGA -FINISHING | 7817182 |
| 8052 | 40200.40300.71400.353200.600400 | OC receipt | 1d | 2028-03-18 | 2028-03-18 | 8072FF |  | RGA -FINISHING | 7817192 |
| 8053 | 40200.40300.71400.353200.600500 | Customer commitment | 1d | 2028-09-15 | 2028-09-15 | 8073FF |  | RGA -FINISHING | 7817202 |
| 8054 | 40200.40300.71400.353200.600600 | RERA Commitment | 1d | 2028-09-16 | 2028-09-16 | 8074FF |  | RGA -FINISHING | 7817212 |
| 8055 | 40200.40300.71400.353300 | **Tower 3** | 214d | 2028-02-16 | 2028-09-16 |  | start no earlier than 2028-02-16 | RGA -FINISHING | 7808602 |
| 8056 | 40200.40300.71400.353300.600700 | OC Application | 1d | 2028-02-16 | 2028-02-16 | 8071FF |  | RGA -FINISHING | 7817222 |
| 8057 | 40200.40300.71400.353300.600800 | OC receipt | 1d | 2028-03-18 | 2028-03-18 | 8072FF |  | RGA -FINISHING | 7817232 |
| 8058 | 40200.40300.71400.353300.600900 | Customer commitment | 1d | 2028-09-15 | 2028-09-15 | 8073FF |  | RGA -FINISHING | 7817242 |
| 8059 | 40200.40300.71400.353300.601000 | RERA Commitment | 1d | 2028-09-16 | 2028-09-16 | 8074FF |  | RGA -FINISHING | 7817252 |
| 8060 | 40200.40300.71400.353400 | **Tower 2A** | 214d | 2028-02-16 | 2028-09-16 |  | start no earlier than 2028-02-16 | RGA -FINISHING | 7804542 |
| 8061 | 40200.40300.71400.353400.601100 | OC Application | 1d | 2028-02-16 | 2028-02-16 | 8071FF |  | RGA -FINISHING | 8875604 |
| 8062 | 40200.40300.71400.353400.601200 | OC receipt | 1d | 2028-03-18 | 2028-03-18 | 8072FF |  | RGA -FINISHING | 8875614 |
| 8063 | 40200.40300.71400.353400.601300 | Customer commitment | 1d | 2028-09-15 | 2028-09-15 | 8073FF |  | RGA -FINISHING | 8875624 |
| 8064 | 40200.40300.71400.353400.601400 | RERA Commitment | 1d | 2028-09-16 | 2028-09-16 | 8074FF |  | RGA -FINISHING | 8875634 |

| ID | WBS | Task | Duration | Start | Finish | Predecessors | Constraint | Calendar | Unique_Task_ID |
| --- | --- | --- | --- | --- | --- | --- | --- | --- | --- |
| 8065 | 40200.40300.71400.353500 | **Tower 2** | 214d | 2028-02-16 | 2028-09-16 |  | start no earlier than 2028-02-16 | RGA -FINISHING | 7808592 |
| 8066 | 40200.40300.71400.353500.601500 | OC Application | 1d | 2028-02-16 | 2028-02-16 | 8071FF |  | RGA -FINISHING | 7817262 |
| 8067 | 40200.40300.71400.353500.601600 | OC receipt | 1d | 2028-03-18 | 2028-03-18 | 8072FF |  | RGA -FINISHING | 7817272 |
| 8068 | 40200.40300.71400.353500.601700 | Customer commitment | 1d | 2028-09-15 | 2028-09-15 | 8073FF |  | RGA -FINISHING | 7817282 |
| 8069 | 40200.40300.71400.353500.601800 | RERA Commitment | 1d | 2028-09-16 | 2028-09-16 | 8074FF |  | RGA -FINISHING | 7817292 |
| 8070 | 40200.40300.71400.353600 | **Tower 1** | 214d | 2028-02-16 | 2028-09-16 |  | start no earlier than 2028-02-16 | RGA -FINISHING | 7808582 |
| 8071 | 40200.40300.71400.353600.601900 | OC Application | 1d | 2028-02-16 | 2028-02-16 | 934FS-182d, 1921FS-182d, 2907FS-182d, 3895FS-182d, 4882FS-182d, 5859FS-182d, 6837FS-182d, 7802FS-182d |  | RGA -FINISHING | 7817302 |
| 8072 | 40200.40300.71400.353600.602000 | OC receipt | 1d | 2028-03-18 | 2028-03-18 | 8071FS+30d |  | RGA -FINISHING | 7817312 |
| 8073 | 40200.40300.71400.353600.602100 | Customer commitment | 1d | 2028-09-15 | 2028-09-15 | 8072FS+180d |  | RGA -FINISHING | 7817322 |
| 8074 | 40200.40300.71400.353600.602200 | RERA Commitment | 1d | 2028-09-16 | 2028-09-16 | 8073 |  | RGA -FINISHING | 7817332 |
| 8075 | 40200.40300.63700 | **Aluform, Windows & Lift Order, Shop Drawing, Supply Tracker** | 779d | 2025-11-30 | 2028-01-17 |  | start no earlier than 2025-11-30 | RGA -FINISHING | 7803792 |
| 8076 | 40200.40300.63700.353700 | **ALUFORM Tower 7** | 52d | 2025-11-30 | 2026-01-20 |  | start no earlier than 2025-11-30 | RGA - STRUCTURE | 7808572 |
| 8077 | 40200.40300.63700.353700.602300 | Aluform-Order Date | 1d | 2025-11-30 | 2025-11-30 | 8078SS-7d |  | RGA - STRUCTURE | 7817342 |
| 8078 | 40200.40300.63700.353700.602400 | Aluform-Shop Drawing Approval Date | 1d | 2025-11-30 | 2025-11-30 | 8079SS-60d |  | RGA - STRUCTURE | 7817352 |
| 8079 | 40200.40300.63700.353700.602500 | Aluform-Start of supply for first lot date | 1d | 2025-11-30 | 2025-11-30 | 64SS-110d |  | RGA - STRUCTURE | 7817362 |
| 8080 | 40200.40300.63700.353700.602600 | Aluform-Start of supply for last lot date | 1d | 2026-01-20 | 2026-01-20 | 64SS-6d |  | RGA - STRUCTURE | 7817372 |
| 8081 | 40200.40300.63700.353800 | **ALUFORM Tower 6** | 100.5d | 2025-11-30 | 2026-03-11 |  | start no earlier than 2025-11-30 | RGA - STRUCTURE | 7808562 |
| 8082 | 40200.40300.63700.353800.602700 | Aluform-Order Date | 1d | 2025-11-30 | 2025-11-30 | 8083SS-7d |  | RGA - STRUCTURE | 7817382 |
| 8083 | 40200.40300.63700.353800.602800 | Aluform-Shop Drawing Approval Date | 1d | 2025-11-30 | 2025-11-30 | 8084SS-60d |  | RGA - STRUCTURE | 7817392 |
| 8084 | 40200.40300.63700.353800.602900 | Aluform-Start of supply for first lot date | 1d | 2025-11-30 | 2025-11-30 | 1051SS-109.5d |  | RGA - STRUCTURE | 7817402 |
| 8085 | 40200.40300.63700.353800.603000 | Aluform-Start of supply for last lot date | 1d | 2026-03-10 | 2026-03-11 | 1051SS+26.5d |  | RGA - STRUCTURE | 7817412 |
| 8086 | 40200.40300.63700.353900 | **ALUFORM Tower 5** | 90d | 2025-11-30 | 2026-02-28 |  | start no earlier than 2025-11-30 | RGA - STRUCTURE | 7808552 |
| 8087 | 40200.40300.63700.353900.603100 | Aluform-Order Date | 1d | 2025-11-30 | 2025-11-30 | 8088SS-7d |  | RGA - STRUCTURE | 7817422 |
| 8088 | 40200.40300.63700.353900.603200 | Aluform-Shop Drawing Approval Date | 1d | 2025-11-30 | 2025-11-30 | 8089SS-60d |  | RGA - STRUCTURE | 7817432 |
| 8089 | 40200.40300.63700.353900.603300 | Aluform-Start of supply for first lot date | 1d | 2025-11-30 | 2025-11-30 | 2038SS-110d |  | RGA - STRUCTURE | 7817442 |
| 8090 | 40200.40300.63700.353900.603400 | Aluform-Start of supply for last lot date | 1d | 2026-02-28 | 2026-02-28 | 2038SS-6d |  | RGA - STRUCTURE | 7817452 |

| ID | WBS | Task | Duration | Start | Finish | Predecessors | Constraint | Calendar | Unique_Task_ID |
| --- | --- | --- | --- | --- | --- | --- | --- | --- | --- |
| 8091 | 40200.40300.63700.354000 | **ALUFORM Tower 4** | 101d | 2025-11-30 | 2026-03-11 |  | start no earlier than 2025-11-30 | RGA - STRUCTURE | 7808542 |
| 8092 | 40200.40300.63700.354000.603500 | Aluform-Order Date | 1d | 2025-11-30 | 2025-11-30 | 8093SS-7d |  | RGA - STRUCTURE | 7817462 |
| 8093 | 40200.40300.63700.354000.603600 | Aluform-Shop Drawing Approval Date | 1d | 2025-11-30 | 2025-11-30 | 8094SS-60d |  | RGA - STRUCTURE | 7817472 |
| 8094 | 40200.40300.63700.354000.603700 | Aluform-Start of supply for first lot date | 1d | 2025-11-30 | 2025-11-30 | 3025SS-109d |  | RGA - STRUCTURE | 7817482 |
| 8095 | 40200.40300.63700.354000.603800 | Aluform-Start of supply for last lot date | 1d | 2026-03-11 | 2026-03-11 | 3025SS-5d |  | RGA - STRUCTURE | 7817492 |
| 8096 | 40200.40300.63700.354100 | **ALUFORM Tower 3** | 86d | 2025-11-30 | 2026-02-24 |  | start no earlier than 2025-11-30 | RGA - STRUCTURE | 7808532 |
| 8097 | 40200.40300.63700.354100.603900 | Aluform-Order Date | 1d | 2025-11-30 | 2025-11-30 | 8098SS-7d |  | RGA - STRUCTURE | 7817502 |
| 8098 | 40200.40300.63700.354100.604000 | Aluform-Shop Drawing Approval Date | 1d | 2025-11-30 | 2025-11-30 | 8099SS-60d |  | RGA - STRUCTURE | 7817512 |
| 8099 | 40200.40300.63700.354100.604100 | Aluform-Start of supply for first lot date | 1d | 2025-11-30 | 2025-11-30 | 4012SS-110d |  | RGA - STRUCTURE | 7817522 |
| 8100 | 40200.40300.63700.354100.604200 | Aluform-Start of supply for last lot date | 1d | 2026-02-24 | 2026-02-24 | 4012SS-6d |  | RGA - STRUCTURE | 7817532 |
| 8101 | 40200.40300.63700.354200 | **ALUFORM Tower 2A** | 47d | 2025-11-30 | 2026-01-15 |  | start no earlier than 2025-11-30 | RGA - STRUCTURE | 7808522 |
| 8102 | 40200.40300.63700.354200.604300 | Aluform-Order Date | 1d | 2025-11-30 | 2025-11-30 | 8103SS-7d |  | RGA - STRUCTURE | 7817542 |
| 8103 | 40200.40300.63700.354200.604400 | Aluform-Shop Drawing Approval Date | 1d | 2025-11-30 | 2025-11-30 | 8104SS-60d |  | RGA - STRUCTURE | 7817552 |
| 8104 | 40200.40300.63700.354200.604500 | Aluform-Start of supply for first lot date | 1d | 2025-11-30 | 2025-11-30 | 4989SS-114d |  | RGA - STRUCTURE | 7817562 |
| 8105 | 40200.40300.63700.354200.604600 | Aluform-Start of supply for last lot date | 1d | 2026-01-15 | 2026-01-15 | 4989SS-10d |  | RGA - STRUCTURE | 7817572 |
| 8106 | 40200.40300.63700.354300 | **ALUFORM Tower 2** | 52d | 2025-11-30 | 2026-01-20 |  | start no earlier than 2025-11-30 | RGA - STRUCTURE | 8875644 |
| 8107 | 40200.40300.63700.354300.604700 | Aluform-Order Date | 1d | 2025-11-30 | 2025-11-30 | 8108SS-7d |  | RGA - STRUCTURE | 8875654 |
| 8108 | 40200.40300.63700.354300.604800 | Aluform-Shop Drawing Approval Date | 1d | 2025-11-30 | 2025-11-30 | 8109SS-60d |  | RGA - STRUCTURE | 8875664 |
| 8109 | 40200.40300.63700.354300.604900 | Aluform-Start of supply for first lot date | 1d | 2025-11-30 | 2025-11-30 | 5967FS-114d |  | RGA - STRUCTURE | 8875674 |
| 8110 | 40200.40300.63700.354300.605000 | Aluform-Start of supply for last lot date | 1d | 2026-01-20 | 2026-01-20 | 5967FS-10d |  | RGA - STRUCTURE | 8875684 |
| 8111 | 40200.40300.63700.354400 | **ALUFORM Tower 1** | 1d | 2025-11-30 | 2025-11-30 |  | start no earlier than 2025-11-30 | RGA - STRUCTURE | 7808902 |
| 8112 | 40200.40300.63700.354400.605100 | Aluform-Order Date | 1d | 2025-11-30 | 2025-11-30 | 8113SS-7d |  | RGA - STRUCTURE | 7817582 |
| 8113 | 40200.40300.63700.354400.605200 | Aluform-Shop Drawing Approval Date | 1d | 2025-11-30 | 2025-11-30 | 8114SS-60d |  | RGA - STRUCTURE | 7817592 |
| 8114 | 40200.40300.63700.354400.605300 | Aluform-Start of supply for first lot date | 1d | 2025-11-30 | 2025-11-30 | 6942SS-114d |  | RGA - STRUCTURE | 7817602 |
| 8115 | 40200.40300.63700.354400.605400 | Aluform-Start of supply for last lot date | 1d | 2025-11-30 | 2025-11-30 | 6942SS-10d |  | RGA - STRUCTURE | 7861172 |

| ID | WBS | Task | Duration | Start | Finish | Predecessors | Constraint | Calendar | Unique_Task_ID |
| --- | --- | --- | --- | --- | --- | --- | --- | --- | --- |
| 8116 | 40200.40300.63700.354500 | **UPVC WINDOWS Tower 7** | 494d | 2026-06-19 | 2027-10-25 |  | start no earlier than 2026-06-19 | RGA -FINISHING | 7808912 |
| 8117 | 40200.40300.63700.354500.605500 | Aluminium Windows-Order Date | 1d | 2026-06-19 | 2026-06-19 | 8118SS-7d |  | RGA -FINISHING | 7817612 |
| 8118 | 40200.40300.63700.354500.605600 | Aluminium Windows-Shop Drawing Approval Date | 1d | 2026-06-26 | 2026-06-26 | 8119SS-35d |  | RGA -FINISHING | 7817622 |
| 8119 | 40200.40300.63700.354500.605700 | Aluminium Windows-Start of supply for first lot date | 1d | 2026-07-31 | 2026-07-31 | 385SS-14d |  | Indian Calendar | 7817632 |
| 8120 | 40200.40300.63700.354500.605800 | Aluminium Windows-Start of supply for last lot date | 1d | 2027-10-25 | 2027-10-25 | 697SS-12d |  | Indian Calendar | 7861162 |
| 8121 | 40200.40300.63700.354600 | **UPVC WINDOWS Tower 6** | 499d | 2026-06-24 | 2027-11-04 |  | start no earlier than 2026-06-24 | RGA -FINISHING | 7808922 |
| 8122 | 40200.40300.63700.354600.605900 | Aluminium Windows-Order Date | 1d | 2026-06-24 | 2026-06-24 | 8123SS-7d |  | RGA -FINISHING | 7817642 |
| 8123 | 40200.40300.63700.354600.606000 | Aluminium Windows-Shop Drawing Approval Date | 1d | 2026-07-01 | 2026-07-01 | 8124SS-35d |  | RGA -FINISHING | 7817652 |
| 8124 | 40200.40300.63700.354600.606100 | Aluminium Windows-Start of supply for first lot date | 1d | 2026-08-05 | 2026-08-05 | 1370SS-16d |  | Indian Calendar | 7817662 |
| 8125 | 40200.40300.63700.354600.606200 | Aluminium Windows-Start of supply for last lot date | 1d | 2027-11-04 | 2027-11-04 | 1684SS-13d |  | Indian Calendar | 7861152 |
| 8126 | 40200.40300.63700.354700 | **UPVC WINDOWS Tower 5** | 515d | 2026-08-03 | 2027-12-30 |  | start no earlier than 2026-08-03 | RGA -FINISHING | 7808932 |
| 8127 | 40200.40300.63700.354700.606300 | Aluminium Windows-Order Date | 1d | 2026-08-03 | 2026-08-03 | 8128SS-7d |  | RGA -FINISHING | 7817672 |
| 8128 | 40200.40300.63700.354700.606400 | Aluminium Windows-Shop Drawing Approval Date | 1d | 2026-08-10 | 2026-08-10 | 8129SS-35d |  | RGA -FINISHING | 7817682 |
| 8129 | 40200.40300.63700.354700.606500 | Aluminium Windows-Start of supply for first lot date | 1d | 2026-09-14 | 2026-09-14 | 2345SS-13d |  | Indian Calendar | 7817692 |
| 8130 | 40200.40300.63700.354700.606600 | Aluminium Windows-Start of supply for last lot date | 1d | 2027-12-30 | 2027-12-30 | 2670SS-13d |  | Indian Calendar | 7861142 |
| 8131 | 40200.40300.63700.354800 | **UPVC WINDOWS Tower 4** | 586d | 2026-05-19 | 2027-12-25 |  | start no earlier than 2026-05-19 | RGA -FINISHING | 7808942 |
| 8132 | 40200.40300.63700.354800.606700 | Aluminium Windows-Order Date | 1d | 2026-05-19 | 2026-05-19 | 8133SS-7d |  | RGA -FINISHING | 7817702 |
| 8133 | 40200.40300.63700.354800.606800 | Aluminium Windows-Shop Drawing Approval Date | 1d | 2026-05-26 | 2026-05-26 | 8134SS-35d |  | RGA -FINISHING | 7817712 |
| 8134 | 40200.40300.63700.354800.606900 | Aluminium Windows-Start of supply for first lot date | 1d | 2026-06-30 | 2026-06-30 | 3333SS-13d |  | Indian Calendar | 7817722 |
| 8135 | 40200.40300.63700.354800.607000 | Aluminium Windows-Start of supply for last lot date | 1d | 2027-12-25 | 2027-12-25 | 3658SS-13d |  | Indian Calendar | 7861132 |
| 8136 | 40200.40300.63700.354900 | **UPVC WINDOWS Tower 3** | 531d | 2026-07-16 | 2027-12-28 |  | start no earlier than 2026-07-16 | RGA -FINISHING | 7808952 |
| 8137 | 40200.40300.63700.354900.607100 | Aluminium Windows-Order Date | 1d | 2026-07-16 | 2026-07-16 | 8138SS-7d |  | RGA -FINISHING | 7817732 |
| 8138 | 40200.40300.63700.354900.607200 | Aluminium Windows-Shop Drawing Approval Date | 1d | 2026-07-23 | 2026-07-23 | 8139SS-35d |  | RGA -FINISHING | 7817742 |
| 8139 | 40200.40300.63700.354900.607300 | Aluminium Windows-Start of supply for first lot date | 1d | 2026-08-27 | 2026-08-27 | 4320SS-13d |  | Indian Calendar | 7817752 |
| 8140 | 40200.40300.63700.354900.607400 | Aluminium Windows-Start of supply for last lot date | 1d | 2027-12-28 | 2027-12-28 | 4645SS-13d |  | Indian Calendar | 7861122 |

| ID | WBS | Task | Duration | Start | Finish | Predecessors | Constraint | Calendar | Unique_Task_ID |
| --- | --- | --- | --- | --- | --- | --- | --- | --- | --- |
| 8141 | 40200.40300.63700.355000 | **UPVC WINDOWS Tower 2A** | 671d | 2025-12-26 | 2027-10-27 |  | start no earlier than 2025-12-26 | RGA -FINISHING | 7808962 |
| 8142 | 40200.40300.63700.355000.607500 | Aluminium Windows-Order Date | 1d | 2025-12-26 | 2025-12-26 | 8143SS-7d |  | RGA -FINISHING | 7817762 |
| 8143 | 40200.40300.63700.355000.607600 | Aluminium Windows-Shop Drawing Approval Date | 1d | 2026-01-02 | 2026-01-02 | 8144SS-35d |  | RGA -FINISHING | 7817772 |
| 8144 | 40200.40300.63700.355000.607700 | Aluminium Windows-Start of supply for first lot date | 1d | 2026-02-06 | 2026-02-06 | 5297SS-13d |  | Indian Calendar | 7817782 |
| 8145 | 40200.40300.63700.355000.607800 | Aluminium Windows-Start of supply for last lot date | 1d | 2027-10-27 | 2027-10-27 | 5622SS-13d |  | Indian Calendar | 7861112 |
| 8146 | 40200.40300.63700.355100 | **UPVC WINDOWS Tower 2** | 731d | 2026-01-17 | 2028-01-17 |  | start no earlier than 2026-01-17 | RGA -FINISHING | 8875694 |
| 8147 | 40200.40300.63700.355100.607900 | Aluminium Windows-Order Date | 1d | 2026-01-17 | 2026-01-17 | 8148SS-7d |  | RGA -FINISHING | 8875704 |
| 8148 | 40200.40300.63700.355100.608000 | Aluminium Windows-Shop Drawing Approval Date | 1d | 2026-01-24 | 2026-01-24 | 8149SS-35d |  | RGA -FINISHING | 8875714 |
| 8149 | 40200.40300.63700.355100.608100 | Aluminium Windows-Start of supply for first lot date | 1d | 2026-02-28 | 2026-02-28 | 6275SS-13d |  | Indian Calendar | 8875724 |
| 8150 | 40200.40300.63700.355100.608200 | Aluminium Windows-Start of supply for last lot date | 1d | 2028-01-17 | 2028-01-17 | 6606SS-13d |  | Indian Calendar | 8875734 |
| 8151 | 40200.40300.63700.355200 | **UPVC WINDOWS Tower 1** | 473.01d | 2026-04-02 | 2027-07-19 |  | start no earlier than 2026-04-02 | RGA -FINISHING | 7808972 |
| 8152 | 40200.40300.63700.355200.608300 | Aluminium Windows-Order Date | 1d | 2026-04-02 | 2026-04-03 | 8153SS-7d |  | RGA -FINISHING | 7817792 |
| 8153 | 40200.40300.63700.355200.608400 | Aluminium Windows-Shop Drawing Approval Date | 1d | 2026-04-09 | 2026-04-10 | 8154SS-35d |  | RGA -FINISHING | 7817802 |
| 8154 | 40200.40300.63700.355200.608500 | Aluminium Windows-Start of supply for first lot date | 1d | 2026-05-14 | 2026-05-15 | 7253SS-13d |  | Indian Calendar | 7817812 |
| 8155 | 40200.40300.63700.355200.608600 | Aluminium Windows-Start of supply for last lot date | 1d | 2027-07-19 | 2027-07-19 | 7565SS-12.99d |  | Indian Calendar | 7861102 |
| 8156 | 40200.40300.63700.355300 | **LIFT WORKS Tower 7** | 186d | 2026-11-25 | 2027-05-29 |  | start no earlier than 2026-11-25 | RGA -FINISHING | 7808482 |
| 8157 | 40200.40300.63700.355300.608700 | Lift-Order Date | 1d | 2026-11-25 | 2026-11-25 | 8158FS-7d |  | RGA -FINISHING | 7817822 |
| 8158 | 40200.40300.63700.355300.608800 | Lift-Shop Drawing Approval Date | 1d | 2026-12-01 | 2026-12-01 | 8159FS-90d |  | RGA -FINISHING | 7817832 |
| 8159 | 40200.40300.63700.355300.608900 | Lift-Start of supply for first lot date | 1d | 2027-02-28 | 2027-02-28 | 930SS-120d |  | RGA -FINISHING | 7817842 |
| 8160 | 40200.40300.63700.355300.609000 | Lift-Start of supply for last lot date | 1d | 2027-05-29 | 2027-05-29 | 930SS-30d |  | RGA -FINISHING | 7817852 |
| 8161 | 40200.40300.63700.355400 | **LIFT WORKS Tower 6** | 186d | 2027-01-01 | 2027-07-05 |  | start no earlier than 2027-01-01 | RGA -FINISHING | 7808462 |
| 8162 | 40200.40300.63700.355400.609100 | Lift-Order Date | 1d | 2027-01-01 | 2027-01-01 | 8163FS-7d |  | RGA -FINISHING | 7817862 |
| 8163 | 40200.40300.63700.355400.609200 | Lift-Shop Drawing Approval Date | 1d | 2027-01-07 | 2027-01-07 | 8164FS-90d |  | RGA -FINISHING | 7817872 |
| 8164 | 40200.40300.63700.355400.609300 | Lift-Start of supply for first lot date | 1d | 2027-04-06 | 2027-04-06 | 1917SS-120d |  | RGA -FINISHING | 7817882 |
| 8165 | 40200.40300.63700.355400.609400 | Lift-Start of supply for last lot date | 1d | 2027-07-05 | 2027-07-05 | 1917SS-30d |  | RGA -FINISHING | 7817892 |

| ID | WBS | Task | Duration | Start | Finish | Predecessors | Constraint | Calendar | Unique_Task_ID |
| --- | --- | --- | --- | --- | --- | --- | --- | --- | --- |
| 8166 | 40200.40300.63700.355500 | **LIFT WORKS Tower 5** | 186d | 2027-04-02 | 2027-10-04 |  | start no earlier than 2027-04-02 | RGA -FINISHING | 7808452 |
| 8167 | 40200.40300.63700.355500.609500 | Lift-Order Date | 1d | 2027-04-02 | 2027-04-02 | 8168FS-7d |  | RGA -FINISHING | 7817902 |
| 8168 | 40200.40300.63700.355500.609600 | Lift-Shop Drawing Approval Date | 1d | 2027-04-08 | 2027-04-08 | 8169FS-90d |  | RGA -FINISHING | 7817912 |
| 8169 | 40200.40300.63700.355500.609700 | Lift-Start of supply for first lot date | 1d | 2027-07-06 | 2027-07-06 | 2903SS-120d |  | RGA -FINISHING | 7817922 |
| 8170 | 40200.40300.63700.355500.609800 | Lift-Start of supply for last lot date | 1d | 2027-10-04 | 2027-10-04 | 2903SS-30d |  | RGA -FINISHING | 7817932 |
| 8171 | 40200.40300.63700.355600 | **LIFT WORKS Tower 4** | 186d | 2027-03-26 | 2027-09-27 |  | start no earlier than 2027-03-26 | RGA -FINISHING | 7808442 |
| 8172 | 40200.40300.63700.355600.609900 | Lift-Order Date | 1d | 2027-03-26 | 2027-03-26 | 8173FS-7d |  | RGA -FINISHING | 7817942 |
| 8173 | 40200.40300.63700.355600.610000 | Lift-Shop Drawing Approval Date | 1d | 2027-04-01 | 2027-04-01 | 8174FS-90d |  | RGA -FINISHING | 7817952 |
| 8174 | 40200.40300.63700.355600.610100 | Lift-Start of supply for first lot date | 1d | 2027-06-29 | 2027-06-29 | 3891SS-120d |  | RGA -FINISHING | 7817962 |
| 8175 | 40200.40300.63700.355600.610200 | Lift-Start of supply for last lot date | 1d | 2027-09-27 | 2027-09-27 | 3891SS-30d |  | RGA -FINISHING | 7817972 |
| 8176 | 40200.40300.63700.355700 | **LIFT WORKS Tower 3** | 186d | 2027-03-16 | 2027-09-17 |  | start no earlier than 2027-03-16 | RGA -FINISHING | 7808432 |
| 8177 | 40200.40300.63700.355700.610300 | Lift-Order Date | 1d | 2027-03-16 | 2027-03-16 | 8178FS-7d |  | RGA -FINISHING | 7817982 |
| 8178 | 40200.40300.63700.355700.610400 | Lift-Shop Drawing Approval Date | 1d | 2027-03-22 | 2027-03-22 | 8179FS-90d |  | RGA -FINISHING | 7817992 |
| 8179 | 40200.40300.63700.355700.610500 | Lift-Start of supply for first lot date | 1d | 2027-06-19 | 2027-06-19 | 4878SS-120d |  | RGA -FINISHING | 7818002 |
| 8180 | 40200.40300.63700.355700.610600 | Lift-Start of supply for last lot date | 1d | 2027-09-17 | 2027-09-17 | 4878SS-30d |  | RGA -FINISHING | 7818012 |
| 8181 | 40200.40300.63700.355800 | **LIFT WORKS Tower 2A** | 186d | 2026-12-25 | 2027-06-28 |  | start no earlier than 2026-12-25 | RGA -FINISHING | 7808422 |
| 8182 | 40200.40300.63700.355800.610700 | Lift-Order Date | 1d | 2026-12-25 | 2026-12-25 | 8183FS-7d |  | RGA -FINISHING | 7818022 |
| 8183 | 40200.40300.63700.355800.610800 | Lift-Shop Drawing Approval Date | 1d | 2026-12-31 | 2026-12-31 | 8184FS-90d |  | RGA -FINISHING | 7818032 |
| 8184 | 40200.40300.63700.355800.610900 | Lift-Start of supply for first lot date | 1d | 2027-03-30 | 2027-03-30 | 5855SS-120d |  | RGA -FINISHING | 7818042 |
| 8185 | 40200.40300.63700.355800.611000 | Lift-Start of supply for last lot date | 1d | 2027-06-28 | 2027-06-28 | 5855SS-30d |  | RGA -FINISHING | 7818052 |
| 8186 | 40200.40300.63700.355900 | **LIFT WORKS Tower 2** | 186d | 2026-11-30 | 2027-06-03 |  | start no earlier than 2026-11-30 | RGA -FINISHING | 8875744 |
| 8187 | 40200.40300.63700.355900.611100 | Lift-Order Date | 1d | 2026-11-30 | 2026-11-30 | 8188FS-7d |  | RGA -FINISHING | 8875754 |
| 8188 | 40200.40300.63700.355900.611200 | Lift-Shop Drawing Approval Date | 1d | 2026-12-06 | 2026-12-06 | 8189FS-90d |  | RGA -FINISHING | 8875764 |
| 8189 | 40200.40300.63700.355900.611300 | Lift-Start of supply for first lot date | 1d | 2027-03-05 | 2027-03-05 | 6833SS-120d |  | RGA -FINISHING | 8875774 |
| 8190 | 40200.40300.63700.355900.611400 | Lift-Start of supply for last lot date | 1d | 2027-06-03 | 2027-06-03 | 6833SS-30d |  | RGA -FINISHING | 8875784 |

| ID | WBS | Task | Duration | Start | Finish | Predecessors | Constraint | Calendar | Unique_Task_ID |
| --- | --- | --- | --- | --- | --- | --- | --- | --- | --- |
| 8191 | 40200.40300.63700.356000 | **LIFT WORKS Tower 1** | 186d | 2026-08-29 | 2027-03-03 |  | start no earlier than 2026-08-29 | RGA -FINISHING | 7808412 |
| 8192 | 40200.40300.63700.356000.611500 | Lift-Order Date | 1d | 2026-08-29 | 2026-08-30 | 8193FS-7d |  | RGA -FINISHING | 7818062 |
| 8193 | 40200.40300.63700.356000.611600 | Lift-Shop Drawing Approval Date | 1d | 2026-09-04 | 2026-09-05 | 8194FS-90d |  | RGA -FINISHING | 7818072 |
| 8194 | 40200.40300.63700.356000.611700 | Lift-Start of supply for first lot date | 1d | 2026-12-02 | 2026-12-03 | 7798SS-120d |  | RGA -FINISHING | 7818082 |
| 8195 | 40200.40300.63700.356000.611800 | Lift-Start of supply for last lot date | 1d | 2027-03-02 | 2027-03-03 | 7798SS-30d |  | RGA -FINISHING | 7818092 |
| 8196 | 40200.40300.60000 | **Post Pour Tracker** | 566d | 2025-12-01 | 2027-09-21 |  | start no earlier than 2025-12-01 | Indian Calendar | 7803712 |
| 8197 | 40200.40300.60000.64000 | **Tower 7** | 478d | 2025-12-01 | 2027-06-10 |  | start no earlier than 2025-12-01 | Indian Calendar | 7803732 |
| 8198 | 40200.40300.60000.64000.611900 | UB Floor | 1d | 2026-03-03 | 2026-03-03 | 65 |  | Indian Calendar | 7818102 |
| 8199 | 40200.40300.60000.64000.612000 | Ground Floor | 1d | 2026-04-02 | 2026-04-02 | 69 |  | Indian Calendar | 7818112 |
| 8200 | 40200.40300.60000.64000.612100 | 1st Floor | 1d | 2026-04-30 | 2026-04-30 | 73 |  | Indian Calendar | 7818122 |
| 8201 | 40200.40300.60000.64000.612200 | 2nd Floor | 1d | 2026-05-18 | 2026-05-18 | 77 |  | Indian Calendar | 7818132 |
| 8202 | 40200.40300.60000.64000.612300 | 3rd Floor | 1d | 2026-06-03 | 2026-06-03 | 81 |  | Indian Calendar | 7818142 |
| 8203 | 40200.40300.60000.64000.612400 | 4th Floor | 1d | 2026-06-23 | 2026-06-24 | 85 |  | Indian Calendar | 7818152 |
| 8204 | 40200.40300.60000.64000.612500 | 5th Floor | 1d | 2026-07-22 | 2026-07-22 | 89 |  | Indian Calendar | 7818162 |
| 8205 | 40200.40300.60000.64000.612600 | 6th Floor | 1d | 2026-08-08 | 2026-08-08 | 93 |  | Indian Calendar | 7818172 |
| 8206 | 40200.40300.60000.64000.612700 | 7th Floor | 1d | 2026-08-26 | 2026-08-26 | 97 |  | Indian Calendar | 7818182 |
| 8207 | 40200.40300.60000.64000.612800 | 8th Floor | 1d | 2026-09-12 | 2026-09-12 | 101 |  | Indian Calendar | 7818192 |
| 8208 | 40200.40300.60000.64000.612900 | 9th Floor | 1d | 2026-09-29 | 2026-09-29 | 105 |  | Indian Calendar | 7818202 |
| 8209 | 40200.40300.60000.64000.613000 | 10th Floor | 1d | 2026-10-17 | 2026-10-17 | 109 |  | Indian Calendar | 7818212 |
| 8210 | 40200.40300.60000.64000.613100 | 11th Floor | 1d | 2026-11-03 | 2026-11-03 | 113 |  | Indian Calendar | 7818222 |
| 8211 | 40200.40300.60000.64000.613200 | 12th Floor | 1d | 2026-11-23 | 2026-11-24 | 117 |  | Indian Calendar | 7818232 |
| 8212 | 40200.40300.60000.64000.613300 | 13th Floor | 1d | 2026-12-22 | 2026-12-22 | 121 |  | Indian Calendar | 7818242 |
| 8213 | 40200.40300.60000.64000.613400 | 14th Floor | 1d | 2027-01-08 | 2027-01-08 | 125 |  | Indian Calendar | 7818252 |
| 8214 | 40200.40300.60000.64000.613500 | 15th Floor | 1d | 2027-01-25 | 2027-01-25 | 129 |  | Indian Calendar | 7818262 |
| 8215 | 40200.40300.60000.64000.613600 | 16th Floor | 1d | 2027-02-11 | 2027-02-11 | 133 |  | Indian Calendar | 7818272 |
| 8216 | 40200.40300.60000.64000.613700 | 17th Floor | 1d | 2027-03-01 | 2027-03-01 | 137 |  | Indian Calendar | 7818282 |
| 8217 | 40200.40300.60000.64000.613800 | 18th Floor | 1d | 2027-03-17 | 2027-03-17 | 141 |  | Indian Calendar | 7818292 |
| 8218 | 40200.40300.60000.64000.613900 | 19th Floor | 1d | 2027-04-03 | 2027-04-03 | 145 |  | Indian Calendar | 7818302 |
| 8219 | 40200.40300.60000.64000.614000 | 20th Floor | 1d | 2027-04-20 | 2027-04-20 | 149 |  | Indian Calendar | 7818312 |
| 8220 | 40200.40300.60000.64000.614100 | 21st Floor | 1d | 2027-05-07 | 2027-05-07 | 153 |  | Indian Calendar | 7818322 |
| 8221 | 40200.40300.60000.64000.3351800 | 22nd Floor | 1d | 2025-12-01 | 2025-12-01 |  | start no earlier than 2025-12-01 | Indian Calendar | 7818332 |
| 8222 | 40200.40300.60000.64000.3351700 | 23rd Floor | 1d | 2025-12-01 | 2025-12-01 |  | start no earlier than 2025-12-01 | Indian Calendar | 7818342 |
| 8223 | 40200.40300.60000.64000.3351600 | 24th Floor | 1d | 2025-12-01 | 2025-12-01 |  | start no earlier than 2025-12-01 | Indian Calendar | 7818352 |
| 8224 | 40200.40300.60000.64000.614200 | 25th Floor | 1d | 2027-06-10 | 2027-06-10 | 161 |  | Indian Calendar | 7818362 |

| ID | WBS | Task | Duration | Start | Finish | Predecessors | Constraint | Calendar | Unique_Task_ID |
| --- | --- | --- | --- | --- | --- | --- | --- | --- | --- |
| 8225 | 40200.40300.60000.64200 | **Tower 6** | 488d | 2025-12-01 | 2027-06-22 |  | start no earlier than 2025-12-01 | Indian Calendar | 7803742 |
| 8226 | 40200.40300.60000.64200.614300 | UB Floor | 1d | 2026-02-12 | 2026-02-12 | 1049 |  | Indian Calendar | 7818392 |
| 8227 | 40200.40300.60000.64200.614400 | Ground Floor | 1d | 2026-03-14 | 2026-03-14 | 1052 |  | Indian Calendar | 7818402 |
| 8228 | 40200.40300.60000.64200.614500 | 1st Floor | 1d | 2026-04-13 | 2026-04-13 | 1056 |  | Indian Calendar | 7818412 |
| 8229 | 40200.40300.60000.64200.614600 | 2nd Floor | 1d | 2026-05-12 | 2026-05-12 | 1060 |  | Indian Calendar | 7818422 |
| 8230 | 40200.40300.60000.64200.614700 | 3rd Floor | 1d | 2026-05-29 | 2026-05-29 | 1064 |  | Indian Calendar | 7818432 |
| 8231 | 40200.40300.60000.64200.614800 | 4th Floor | 1d | 2026-06-15 | 2026-06-15 | 1068 |  | Indian Calendar | 7818442 |
| 8232 | 40200.40300.60000.64200.614900 | 5th Floor | 1d | 2026-07-17 | 2026-07-17 | 1072 |  | Indian Calendar | 7818452 |
| 8233 | 40200.40300.60000.64200.615000 | 6th Floor | 1d | 2026-08-03 | 2026-08-03 | 1076 |  | Indian Calendar | 7818462 |
| 8234 | 40200.40300.60000.64200.615100 | 7th Floor | 1d | 2026-08-21 | 2026-08-21 | 1080 |  | Indian Calendar | 7818472 |
| 8235 | 40200.40300.60000.64200.615200 | 8th Floor | 1d | 2026-09-07 | 2026-09-07 | 1084 |  | Indian Calendar | 7818482 |
| 8236 | 40200.40300.60000.64200.615300 | 9th Floor | 1d | 2026-09-24 | 2026-09-24 | 1088 |  | Indian Calendar | 7818492 |
| 8237 | 40200.40300.60000.64200.615400 | 10th Floor | 1d | 2026-10-12 | 2026-10-12 | 1092 |  | Indian Calendar | 7818502 |
| 8238 | 40200.40300.60000.64200.615500 | 11th Floor | 1d | 2026-10-29 | 2026-10-29 | 1096 |  | Indian Calendar | 7818512 |
| 8239 | 40200.40300.60000.64200.615600 | 12th Floor | 1d | 2026-11-16 | 2026-11-16 | 1100 |  | Indian Calendar | 7818522 |
| 8240 | 40200.40300.60000.64200.615700 | 13th Floor | 1d | 2026-12-17 | 2026-12-17 | 1104 |  | Indian Calendar | 7818532 |
| 8241 | 40200.40300.60000.64200.615800 | 14th Floor | 1d | 2027-01-04 | 2027-01-04 | 1108 |  | Indian Calendar | 7818542 |
| 8242 | 40200.40300.60000.64200.615900 | 15th Floor | 1d | 2027-01-20 | 2027-01-20 | 1112 |  | Indian Calendar | 7818552 |
| 8243 | 40200.40300.60000.64200.616000 | 16th Floor | 1d | 2027-02-06 | 2027-02-06 | 1116 |  | Indian Calendar | 7818562 |
| 8244 | 40200.40300.60000.64200.616100 | 17th Floor | 1d | 2027-02-23 | 2027-02-23 | 1120 |  | Indian Calendar | 7818572 |
| 8245 | 40200.40300.60000.64200.616200 | 18th Floor | 1d | 2027-03-12 | 2027-03-12 | 1124 |  | Indian Calendar | 7818582 |
| 8246 | 40200.40300.60000.64200.616300 | 19th Floor | 1d | 2027-03-29 | 2027-03-29 | 1128 |  | Indian Calendar | 7818592 |
| 8247 | 40200.40300.60000.64200.616400 | 20th Floor | 1d | 2027-04-15 | 2027-04-15 | 1132 |  | Indian Calendar | 7818602 |
| 8248 | 40200.40300.60000.64200.616500 | 21st Floor | 1d | 2027-05-03 | 2027-05-03 | 1136 |  | Indian Calendar | 7818612 |
| 8249 | 40200.40300.60000.64200.616600 | 22nd Floor | 1d | 2027-05-19 | 2027-05-19 | 1140 |  | Indian Calendar | 7818622 |
| 8250 | 40200.40300.60000.64200.616700 | 23rd Floor | 1d | 2027-06-05 | 2027-06-05 | 1144 |  | Indian Calendar | 7818632 |
| 8251 | 40200.40300.60000.64200.3351500 | 24th Floor | 1d | 2025-12-01 | 2025-12-01 |  | start no earlier than 2025-12-01 | Indian Calendar | 7818642 |
| 8252 | 40200.40300.60000.64200.616800 | 25th Floor | 1d | 2027-06-22 | 2027-06-22 | 1148 |  | Indian Calendar | 7818652 |

| ID | WBS | Task | Duration | Start | Finish | Predecessors | Constraint | Calendar | Unique_Task_ID |
| --- | --- | --- | --- | --- | --- | --- | --- | --- | --- |
| 8253 | 40200.40300.60000.64300 | **Tower 5** | 566d | 2025-12-01 | 2027-09-21 |  | start no earlier than 2025-12-01 | Indian Calendar | 7803772 |
| 8254 | 40200.40300.60000.64300.616900 | UB Floor | 1d | 2026-04-06 | 2026-04-06 | 2039 |  | Indian Calendar | 7818682 |
| 8255 | 40200.40300.60000.64300.617000 | Ground Floor | 1d | 2026-05-20 | 2026-05-20 | 2042 |  | Indian Calendar | 7818692 |
| 8256 | 40200.40300.60000.64300.617100 | 1st Floor | 1d | 2026-07-11 | 2026-07-13 | 2046 |  | Indian Calendar | 7818702 |
| 8257 | 40200.40300.60000.64300.617200 | 2nd Floor | 1d | 2026-08-24 | 2026-08-24 | 2050 |  | Indian Calendar | 7818712 |
| 8258 | 40200.40300.60000.64300.617300 | 3rd Floor | 1d | 2026-10-05 | 2026-10-05 | 2054 |  | Indian Calendar | 7818722 |
| 8259 | 40200.40300.60000.64300.617400 | 4th Floor | 1d | 2026-11-02 | 2026-11-02 | 2058 |  | Indian Calendar | 7818732 |
| 8260 | 40200.40300.60000.64300.617500 | 5th Floor | 1d | 2026-11-19 | 2026-11-20 | 2062 |  | Indian Calendar | 7818742 |
| 8261 | 40200.40300.60000.64300.617600 | 6th Floor | 1d | 2026-12-18 | 2026-12-18 | 2066 |  | Indian Calendar | 7818752 |
| 8262 | 40200.40300.60000.64300.617700 | 7th Floor | 1d | 2027-01-02 | 2027-01-02 | 2070 |  | Indian Calendar | 7818762 |
| 8263 | 40200.40300.60000.64300.617800 | 8th Floor | 1d | 2027-01-18 | 2027-01-18 | 2074 |  | Indian Calendar | 7818772 |
| 8264 | 40200.40300.60000.64300.617900 | 9th Floor | 1d | 2027-02-01 | 2027-02-01 | 2078 |  | Indian Calendar | 7818782 |
| 8265 | 40200.40300.60000.64300.618000 | 10th Floor | 1d | 2027-02-16 | 2027-02-16 | 2082 |  | Indian Calendar | 7818792 |
| 8266 | 40200.40300.60000.64300.618100 | 11th Floor | 1d | 2027-03-03 | 2027-03-03 | 2086 |  | Indian Calendar | 7818802 |
| 8267 | 40200.40300.60000.64300.618200 | 12th Floor | 1d | 2027-03-18 | 2027-03-18 | 2090 |  | Indian Calendar | 7818812 |
| 8268 | 40200.40300.60000.64300.618300 | 13th Floor | 1d | 2027-04-05 | 2027-04-05 | 2094 |  | Indian Calendar | 7818822 |
| 8269 | 40200.40300.60000.64300.618400 | 14th Floor | 1d | 2027-04-21 | 2027-04-21 | 2098 |  | Indian Calendar | 7818832 |
| 8270 | 40200.40300.60000.64300.618500 | 15th Floor | 1d | 2027-05-08 | 2027-05-08 | 2102 |  | Indian Calendar | 7818842 |
| 8271 | 40200.40300.60000.64300.618600 | 16th Floor | 1d | 2027-05-25 | 2027-05-25 | 2106 |  | Indian Calendar | 7818852 |
| 8272 | 40200.40300.60000.64300.618700 | 17th Floor | 1d | 2027-06-11 | 2027-06-11 | 2110 |  | Indian Calendar | 7818862 |
| 8273 | 40200.40300.60000.64300.618800 | 18th Floor | 1d | 2027-06-28 | 2027-06-28 | 2114 |  | Indian Calendar | 7818872 |
| 8274 | 40200.40300.60000.64300.618900 | 19th Floor | 1d | 2027-07-15 | 2027-07-15 | 2118 |  | Indian Calendar | 7818882 |
| 8275 | 40200.40300.60000.64300.619000 | 20th Floor | 1d | 2027-08-02 | 2027-08-02 | 2122 |  | Indian Calendar | 7818892 |
| 8276 | 40200.40300.60000.64300.619100 | 21st Floor | 1d | 2027-08-18 | 2027-08-18 | 2126 |  | Indian Calendar | 7818902 |
| 8277 | 40200.40300.60000.64300.619200 | 22nd Floor | 1d | 2027-09-04 | 2027-09-04 | 2130 |  | Indian Calendar | 7818912 |
| 8278 | 40200.40300.60000.64300.3351400 | 23rd Floor | 1d | 2025-12-01 | 2025-12-01 |  | start no earlier than 2025-12-01 | Indian Calendar | 7818922 |
| 8279 | 40200.40300.60000.64300.3351300 | 24th Floor | 1d | 2025-12-01 | 2025-12-01 |  | start no earlier than 2025-12-01 | Indian Calendar | 7818932 |
| 8280 | 40200.40300.60000.64300.619300 | 25th Floor | 1d | 2027-09-21 | 2027-09-21 | 2134 |  | Indian Calendar | 7818942 |

| ID | WBS | Task | Duration | Start | Finish | Predecessors | Constraint | Calendar | Unique_Task_ID |
| --- | --- | --- | --- | --- | --- | --- | --- | --- | --- |
| 8281 | 40200.40300.60000.64400 | **Tower 4** | 560d | 2025-12-01 | 2027-09-14 |  | start no earlier than 2025-12-01 | Indian Calendar | 7803762 |
| 8282 | 40200.40300.60000.64400.619400 | UB Floor | 1d | 2026-04-25 | 2026-04-25 | 3026 |  | Indian Calendar | 7818972 |
| 8283 | 40200.40300.60000.64400.619500 | Ground Floor | 1d | 2026-06-05 | 2026-06-05 | 3030 |  | Indian Calendar | 7818982 |
| 8284 | 40200.40300.60000.64400.619600 | 1st Floor | 1d | 2026-07-30 | 2026-07-30 | 3034 |  | Indian Calendar | 7818992 |
| 8285 | 40200.40300.60000.64400.619700 | 2nd Floor | 1d | 2026-09-09 | 2026-09-09 | 3038 |  | Indian Calendar | 7819002 |
| 8286 | 40200.40300.60000.64400.619800 | 3rd Floor | 1d | 2026-10-08 | 2026-10-08 | 3042 |  | Indian Calendar | 7819012 |
| 8287 | 40200.40300.60000.64400.619900 | 4th Floor | 1d | 2026-10-21 | 2026-10-21 | 3046 |  | Indian Calendar | 7819022 |
| 8288 | 40200.40300.60000.64400.620000 | 5th Floor | 1d | 2026-11-07 | 2026-11-07 | 3050 |  | Indian Calendar | 7819032 |
| 8289 | 40200.40300.60000.64400.620100 | 6th Floor | 1d | 2026-12-01 | 2026-12-02 | 3054 |  | Indian Calendar | 7819042 |
| 8290 | 40200.40300.60000.64400.620200 | 7th Floor | 1d | 2026-12-26 | 2026-12-26 | 3058 |  | Indian Calendar | 7819052 |
| 8291 | 40200.40300.60000.64400.620300 | 8th Floor | 1d | 2027-01-12 | 2027-01-12 | 3062 |  | Indian Calendar | 7819062 |
| 8292 | 40200.40300.60000.64400.620400 | 9th Floor | 1d | 2027-01-29 | 2027-01-29 | 3066 |  | Indian Calendar | 7819072 |
| 8293 | 40200.40300.60000.64400.620500 | 10th Floor | 1d | 2027-02-15 | 2027-02-15 | 3070 |  | Indian Calendar | 7819082 |
| 8294 | 40200.40300.60000.64400.620600 | 11th Floor | 1d | 2027-03-04 | 2027-03-04 | 3074 |  | Indian Calendar | 7819092 |
| 8295 | 40200.40300.60000.64400.620700 | 12th Floor | 1d | 2027-03-22 | 2027-03-22 | 3078 |  | Indian Calendar | 7819102 |
| 8296 | 40200.40300.60000.64400.620800 | 13th Floor | 1d | 2027-04-07 | 2027-04-07 | 3082 |  | Indian Calendar | 7819112 |
| 8297 | 40200.40300.60000.64400.620900 | 14th Floor | 1d | 2027-04-24 | 2027-04-24 | 3086 |  | Indian Calendar | 7819122 |
| 8298 | 40200.40300.60000.64400.621000 | 15th Floor | 1d | 2027-05-11 | 2027-05-11 | 3090 |  | Indian Calendar | 7819132 |
| 8299 | 40200.40300.60000.64400.621100 | 16th Floor | 1d | 2027-05-28 | 2027-05-28 | 3094 |  | Indian Calendar | 7819142 |
| 8300 | 40200.40300.60000.64400.621200 | 17th Floor | 1d | 2027-06-14 | 2027-06-14 | 3098 |  | Indian Calendar | 7819152 |
| 8301 | 40200.40300.60000.64400.621300 | 18th Floor | 1d | 2027-07-01 | 2027-07-01 | 3102 |  | Indian Calendar | 7819162 |
| 8302 | 40200.40300.60000.64400.621400 | 19th Floor | 1d | 2027-07-16 | 2027-07-16 | 3106 |  | Indian Calendar | 7819172 |
| 8303 | 40200.40300.60000.64400.621500 | 20th Floor | 1d | 2027-07-31 | 2027-07-31 | 3110 |  | Indian Calendar | 7819182 |
| 8304 | 40200.40300.60000.64400.621600 | 21st Floor | 1d | 2027-08-16 | 2027-08-16 | 3114 |  | Indian Calendar | 7819192 |
| 8305 | 40200.40300.60000.64400.621700 | 22nd Floor | 1d | 2027-08-30 | 2027-08-30 | 3118 |  | Indian Calendar | 7819202 |
| 8306 | 40200.40300.60000.64400.3351200 | 23rd Floor | 1d | 2025-12-01 | 2025-12-01 |  | start no earlier than 2025-12-01 | Indian Calendar | 7819212 |
| 8307 | 40200.40300.60000.64400.3351100 | 24th Floor | 1d | 2025-12-01 | 2025-12-01 |  | start no earlier than 2025-12-01 | Indian Calendar | 7819222 |
| 8308 | 40200.40300.60000.64400.621800 | 25th Floor | 1d | 2027-09-14 | 2027-09-14 | 3122 |  | Indian Calendar | 7819232 |

| ID | WBS | Task | Duration | Start | Finish | Predecessors | Constraint | Calendar | Unique_Task_ID |
| --- | --- | --- | --- | --- | --- | --- | --- | --- | --- |
| 8309 | 40200.40300.60000.64500 | **Tower 3** | 552d | 2025-12-01 | 2027-09-04 |  | start no earlier than 2025-12-01 | Indian Calendar | 7803752 |
| 8310 | 40200.40300.60000.64500.621900 | UB Floor | 1d | 2026-04-01 | 2026-04-01 | 4013 |  | Indian Calendar | 7819262 |
| 8311 | 40200.40300.60000.64500.622000 | Ground Floor | 1d | 2026-05-12 | 2026-05-12 | 4017 |  | Indian Calendar | 7819272 |
| 8312 | 40200.40300.60000.64500.622100 | 1st Floor | 1d | 2026-06-25 | 2026-06-26 | 4021 |  | Indian Calendar | 7819282 |
| 8313 | 40200.40300.60000.64500.622200 | 2nd Floor | 1d | 2026-08-15 | 2026-08-15 | 4025 |  | Indian Calendar | 7819292 |
| 8314 | 40200.40300.60000.64500.622300 | 3rd Floor | 1d | 2026-09-14 | 2026-09-14 | 4029 |  | Indian Calendar | 7819302 |
| 8315 | 40200.40300.60000.64500.622400 | 4th Floor | 1d | 2026-09-30 | 2026-09-30 | 4033 |  | Indian Calendar | 7819312 |
| 8316 | 40200.40300.60000.64500.622500 | 5th Floor | 1d | 2026-10-19 | 2026-10-19 | 4037 |  | Indian Calendar | 7819322 |
| 8317 | 40200.40300.60000.64500.622600 | 6th Floor | 1d | 2026-11-04 | 2026-11-04 | 4041 |  | Indian Calendar | 7819332 |
| 8318 | 40200.40300.60000.64500.622700 | 7th Floor | 1d | 2026-11-25 | 2026-11-26 | 4045 |  | Indian Calendar | 7819342 |
| 8319 | 40200.40300.60000.64500.622800 | 8th Floor | 1d | 2026-12-23 | 2026-12-23 | 4049 |  | Indian Calendar | 7819352 |
| 8320 | 40200.40300.60000.64500.622900 | 9th Floor | 1d | 2027-01-09 | 2027-01-09 | 4053 |  | Indian Calendar | 7819362 |
| 8321 | 40200.40300.60000.64500.623000 | 10th Floor | 1d | 2027-01-26 | 2027-01-26 | 4057 |  | Indian Calendar | 7819372 |
| 8322 | 40200.40300.60000.64500.623100 | 11th Floor | 1d | 2027-02-12 | 2027-02-12 | 4061 |  | Indian Calendar | 7819382 |
| 8323 | 40200.40300.60000.64500.623200 | 12th Floor | 1d | 2027-03-01 | 2027-03-01 | 4065 |  | Indian Calendar | 7819392 |
| 8324 | 40200.40300.60000.64500.623300 | 13th Floor | 1d | 2027-03-18 | 2027-03-18 | 4069 |  | Indian Calendar | 7819402 |
| 8325 | 40200.40300.60000.64500.623400 | 14th Floor | 1d | 2027-04-05 | 2027-04-05 | 4073 |  | Indian Calendar | 7819412 |
| 8326 | 40200.40300.60000.64500.623500 | 15th Floor | 1d | 2027-04-21 | 2027-04-21 | 4077 |  | Indian Calendar | 7819422 |
| 8327 | 40200.40300.60000.64500.623600 | 16th Floor | 1d | 2027-05-08 | 2027-05-08 | 4081 |  | Indian Calendar | 7819432 |
| 8328 | 40200.40300.60000.64500.623700 | 17th Floor | 1d | 2027-05-25 | 2027-05-25 | 4085 |  | Indian Calendar | 7819442 |
| 8329 | 40200.40300.60000.64500.623800 | 18th Floor | 1d | 2027-06-11 | 2027-06-11 | 4089 |  | Indian Calendar | 7819452 |
| 8330 | 40200.40300.60000.64500.623900 | 19th Floor | 1d | 2027-06-28 | 2027-06-28 | 4093 |  | Indian Calendar | 7819462 |
| 8331 | 40200.40300.60000.64500.624000 | 20th Floor | 1d | 2027-07-15 | 2027-07-15 | 4097 |  | Indian Calendar | 7819472 |
| 8332 | 40200.40300.60000.64500.624100 | 21st Floor | 1d | 2027-08-02 | 2027-08-02 | 4101 |  | Indian Calendar | 7819482 |
| 8333 | 40200.40300.60000.64500.624200 | 22nd Floor | 1d | 2027-08-18 | 2027-08-18 | 4105 |  | Indian Calendar | 7819492 |
| 8334 | 40200.40300.60000.64500.3351000 | 23rd Floor | 1d | 2025-12-01 | 2025-12-01 |  | start no earlier than 2025-12-01 | Indian Calendar | 7819502 |
| 8335 | 40200.40300.60000.64500.3350900 | 24th Floor | 1d | 2025-12-01 | 2025-12-01 |  | start no earlier than 2025-12-01 | Indian Calendar | 7819512 |
| 8336 | 40200.40300.60000.64500.624300 | 25th Floor | 1d | 2027-09-04 | 2027-09-04 | 4109 |  | Indian Calendar | 7819522 |

| ID | WBS | Task | Duration | Start | Finish | Predecessors | Constraint | Calendar | Unique_Task_ID |
| --- | --- | --- | --- | --- | --- | --- | --- | --- | --- |
| 8337 | 40200.40300.60000.64900 | **Tower 2A** | 484d | 2025-12-01 | 2027-06-17 |  | start no earlier than 2025-12-01 | Indian Calendar | 7803812 |
| 8338 | 40200.40300.60000.64900.624400 | Ground Floor | 1d | 2026-02-25 | 2026-02-25 | 4990 |  | Indian Calendar | 7819552 |
| 8339 | 40200.40300.60000.64900.624500 | 1st Floor | 1d | 2026-03-27 | 2026-03-27 | 4994 |  | Indian Calendar | 7819562 |
| 8340 | 40200.40300.60000.64900.624600 | 2nd Floor | 1d | 2026-04-17 | 2026-04-17 | 4998 |  | Indian Calendar | 7819572 |
| 8341 | 40200.40300.60000.64900.624700 | 3rd Floor | 1d | 2026-05-05 | 2026-05-05 | 5002 |  | Indian Calendar | 7819582 |
| 8342 | 40200.40300.60000.64900.624800 | 4th Floor | 1d | 2026-05-22 | 2026-05-22 | 5006 |  | Indian Calendar | 7819592 |
| 8343 | 40200.40300.60000.64900.624900 | 5th Floor | 1d | 2026-06-08 | 2026-06-08 | 5010 |  | Indian Calendar | 7819602 |
| 8344 | 40200.40300.60000.64900.625000 | 6th Floor | 1d | 2026-07-03 | 2026-07-04 | 5014 |  | Indian Calendar | 7819612 |
| 8345 | 40200.40300.60000.64900.625100 | 7th Floor | 1d | 2026-07-27 | 2026-07-27 | 5018 |  | Indian Calendar | 7819622 |
| 8346 | 40200.40300.60000.64900.625200 | 8th Floor | 1d | 2026-08-13 | 2026-08-13 | 5022 |  | Indian Calendar | 7819632 |
| 8347 | 40200.40300.60000.64900.625300 | 9th Floor | 1d | 2026-08-31 | 2026-08-31 | 5026 |  | Indian Calendar | 7819642 |
| 8348 | 40200.40300.60000.64900.625400 | 10th Floor | 1d | 2026-09-17 | 2026-09-17 | 5030 |  | Indian Calendar | 7819652 |
| 8349 | 40200.40300.60000.64900.625500 | 11th Floor | 1d | 2026-10-05 | 2026-10-05 | 5034 |  | Indian Calendar | 7819662 |
| 8350 | 40200.40300.60000.64900.625600 | 12th Floor | 1d | 2026-10-22 | 2026-10-22 | 5038 |  | Indian Calendar | 7819672 |
| 8351 | 40200.40300.60000.64900.625700 | 13th Floor | 1d | 2026-11-09 | 2026-11-09 | 5042 |  | Indian Calendar | 7819682 |
| 8352 | 40200.40300.60000.64900.625800 | 14th Floor | 1d | 2026-12-03 | 2026-12-04 | 5046 |  | Indian Calendar | 7819692 |
| 8353 | 40200.40300.60000.64900.625900 | 15th Floor | 1d | 2026-12-28 | 2026-12-28 | 5050 |  | Indian Calendar | 7819702 |
| 8354 | 40200.40300.60000.64900.626000 | 16th Floor | 1d | 2027-01-13 | 2027-01-13 | 5054 |  | Indian Calendar | 7819712 |
| 8355 | 40200.40300.60000.64900.626100 | 17th Floor | 1d | 2027-01-30 | 2027-01-30 | 5058 |  | Indian Calendar | 7819722 |
| 8356 | 40200.40300.60000.64900.626200 | 18th Floor | 1d | 2027-02-16 | 2027-02-16 | 5062 |  | Indian Calendar | 7819732 |
| 8357 | 40200.40300.60000.64900.626300 | 19th Floor | 1d | 2027-03-05 | 2027-03-05 | 5066 |  | Indian Calendar | 7819742 |
| 8358 | 40200.40300.60000.64900.626400 | 20th Floor | 1d | 2027-03-22 | 2027-03-22 | 5070 |  | Indian Calendar | 7819752 |
| 8359 | 40200.40300.60000.64900.626500 | 21st Floor | 1d | 2027-04-08 | 2027-04-08 | 5074 |  | Indian Calendar | 7819762 |
| 8360 | 40200.40300.60000.64900.626600 | 22nd Floor | 1d | 2027-04-26 | 2027-04-26 | 5078 |  | Indian Calendar | 7819772 |
| 8361 | 40200.40300.60000.64900.626700 | 23rd Floor | 1d | 2027-05-29 | 2027-05-29 | 5086 |  | Indian Calendar | 7819782 |
| 8362 | 40200.40300.60000.64900.626800 | 24th Floor | 1d | 2027-06-17 | 2027-06-17 | 8361FS+15d |  | Indian Calendar | 7819792 |
| 8363 | 40200.40300.60000.64900.3350800 | 25th Floor | 1d | 2025-12-01 | 2025-12-01 |  | start no earlier than 2025-12-01 | Indian Calendar | 8875794 |

| ID | WBS | Task | Duration | Start | Finish | Predecessors | Constraint | Calendar | Unique_Task_ID |
| --- | --- | --- | --- | --- | --- | --- | --- | --- | --- |
| 8364 | 40200.40300.60000.65000 | **Tower 2** | 17d | 2025-12-01 | 2025-12-19 |  | start no earlier than 2025-12-01 | Indian Calendar | 8875804 |
| 8365 | 40200.40300.60000.65000.3350700 | Ground Floor | 1d | 2025-12-01 | 2025-12-01 |  | start no earlier than 2025-12-01 | Indian Calendar | 8875834 |
| 8366 | 40200.40300.60000.65000.3350600 | 1st Floor | 1d | 2025-12-01 | 2025-12-01 |  | start no earlier than 2025-12-01 | Indian Calendar | 8875844 |
| 8367 | 40200.40300.60000.65000.3350500 | 2nd Floor | 1d | 2025-12-01 | 2025-12-01 |  | start no earlier than 2025-12-01 | Indian Calendar | 8875854 |
| 8368 | 40200.40300.60000.65000.3350400 | 3rd Floor | 1d | 2025-12-01 | 2025-12-01 |  | start no earlier than 2025-12-01 | Indian Calendar | 8875864 |
| 8369 | 40200.40300.60000.65000.3350300 | 4th Floor | 1d | 2025-12-01 | 2025-12-01 |  | start no earlier than 2025-12-01 | Indian Calendar | 8875874 |
| 8370 | 40200.40300.60000.65000.3350200 | 5th Floor | 1d | 2025-12-01 | 2025-12-01 |  | start no earlier than 2025-12-01 | Indian Calendar | 8875884 |
| 8371 | 40200.40300.60000.65000.3350100 | 6th Floor | 1d | 2025-12-01 | 2025-12-01 |  | start no earlier than 2025-12-01 | Indian Calendar | 8875894 |
| 8372 | 40200.40300.60000.65000.3350000 | 7th Floor | 1d | 2025-12-01 | 2025-12-01 |  | start no earlier than 2025-12-01 | Indian Calendar | 8875904 |
| 8373 | 40200.40300.60000.65000.3349900 | 8th Floor | 1d | 2025-12-01 | 2025-12-01 |  | start no earlier than 2025-12-01 | Indian Calendar | 8875914 |
| 8374 | 40200.40300.60000.65000.3349800 | 9th Floor | 1d | 2025-12-01 | 2025-12-01 |  | start no earlier than 2025-12-01 | Indian Calendar | 8875924 |
| 8375 | 40200.40300.60000.65000.3349700 | 10th Floor | 1d | 2025-12-01 | 2025-12-01 |  | start no earlier than 2025-12-01 | Indian Calendar | 8875934 |
| 8376 | 40200.40300.60000.65000.3349600 | 11th Floor | 1d | 2025-12-01 | 2025-12-01 |  | start no earlier than 2025-12-01 | Indian Calendar | 8875944 |
| 8377 | 40200.40300.60000.65000.3349500 | 12th Floor | 1d | 2025-12-01 | 2025-12-01 |  | start no earlier than 2025-12-01 | Indian Calendar | 8875954 |
| 8378 | 40200.40300.60000.65000.3349400 | 13th Floor | 1d | 2025-12-01 | 2025-12-01 |  | start no earlier than 2025-12-01 | Indian Calendar | 8875964 |
| 8379 | 40200.40300.60000.65000.3349300 | 14th Floor | 1d | 2025-12-01 | 2025-12-01 |  | start no earlier than 2025-12-01 | Indian Calendar | 8875974 |
| 8380 | 40200.40300.60000.65000.3349200 | 15th Floor | 1d | 2025-12-01 | 2025-12-01 |  | start no earlier than 2025-12-01 | Indian Calendar | 8875984 |
| 8381 | 40200.40300.60000.65000.3349100 | 16th Floor | 1d | 2025-12-01 | 2025-12-01 |  | start no earlier than 2025-12-01 | Indian Calendar | 8875994 |
| 8382 | 40200.40300.60000.65000.3349000 | 17th Floor | 1d | 2025-12-01 | 2025-12-01 |  | start no earlier than 2025-12-01 | Indian Calendar | 8876004 |
| 8383 | 40200.40300.60000.65000.3348900 | 18th Floor | 1d | 2025-12-01 | 2025-12-01 |  | start no earlier than 2025-12-01 | Indian Calendar | 8876014 |
| 8384 | 40200.40300.60000.65000.3348800 | 19th Floor | 1d | 2025-12-01 | 2025-12-01 |  | start no earlier than 2025-12-01 | Indian Calendar | 8876024 |
| 8385 | 40200.40300.60000.65000.3348700 | 20th Floor | 1d | 2025-12-01 | 2025-12-01 |  | start no earlier than 2025-12-01 | Indian Calendar | 8876034 |
| 8386 | 40200.40300.60000.65000.3348600 | 21st Floor | 1d | 2025-12-01 | 2025-12-01 |  | start no earlier than 2025-12-01 | Indian Calendar | 8876044 |
| 8387 | 40200.40300.60000.65000.3348500 | 22nd Floor | 1d | 2025-12-01 | 2025-12-01 |  | start no earlier than 2025-12-01 | Indian Calendar | 8876054 |
| 8388 | 40200.40300.60000.65000.626900 | 23rd Floor | 1d | 2025-12-01 | 2025-12-01 |  | start no earlier than 2025-12-01 | Indian Calendar | 8875814 |
| 8389 | 40200.40300.60000.65000.627000 | 24th Floor | 1d | 2025-12-19 | 2025-12-19 | 8388FS+15d |  | Indian Calendar | 8875824 |
| 8390 | 40200.40300.60000.65000.3348400 | 25th Floor | 1d | 2025-12-01 | 2025-12-01 |  | start no earlier than 2025-12-01 | Indian Calendar | 8876064 |

| ID | WBS | Task | Duration | Start | Finish | Predecessors | Constraint | Calendar | Unique_Task_ID |
| --- | --- | --- | --- | --- | --- | --- | --- | --- | --- |
| 8391 | 40200.40300.60000.65100 | **Tower 1** | 400.99d | 2025-12-01 | 2027-03-12 |  | start no earlier than 2025-12-01 | Indian Calendar | 7803802 |
| 8392 | 40200.40300.60000.65100.627100 | Ground Floor | 1d | 2025-12-13 | 2025-12-15 | 6946 |  | Indian Calendar | 7819802 |
| 8393 | 40200.40300.60000.65100.627200 | 1st Floor | 1d | 2026-01-12 | 2026-01-13 | 6950 |  | Indian Calendar | 7819812 |
| 8394 | 40200.40300.60000.65100.627300 | 2nd Floor | 1d | 2026-02-03 | 2026-02-04 | 6954 |  | Indian Calendar | 7819822 |
| 8395 | 40200.40300.60000.65100.627400 | 3rd Floor | 1d | 2026-02-16 | 2026-02-17 | 6958 |  | Indian Calendar | 7819832 |
| 8396 | 40200.40300.60000.65100.627500 | 4th Floor | 1d | 2026-03-02 | 2026-03-02 | 6962 |  | Indian Calendar | 7819842 |
| 8397 | 40200.40300.60000.65100.627600 | 5th Floor | 1d | 2026-03-14 | 2026-03-16 | 6966 |  | Indian Calendar | 7819852 |
| 8398 | 40200.40300.60000.65100.627700 | 6th Floor | 1d | 2026-03-27 | 2026-03-28 | 6970 |  | Indian Calendar | 7819862 |
| 8399 | 40200.40300.60000.65100.627800 | 7th Floor | 1d | 2026-04-09 | 2026-04-10 | 6974 |  | Indian Calendar | 7819872 |
| 8400 | 40200.40300.60000.65100.627900 | 8th Floor | 1d | 2026-04-22 | 2026-04-23 | 6978 |  | Indian Calendar | 7819882 |
| 8401 | 40200.40300.60000.65100.628000 | 9th Floor | 1d | 2026-05-11 | 2026-05-11 | 6982 |  | Indian Calendar | 7819892 |
| 8402 | 40200.40300.60000.65100.628100 | 10th Floor | 1d | 2026-05-27 | 2026-05-28 | 6986 |  | Indian Calendar | 7819902 |
| 8403 | 40200.40300.60000.65100.628200 | 11th Floor | 1d | 2026-06-13 | 2026-06-15 | 6990 |  | Indian Calendar | 7819912 |
| 8404 | 40200.40300.60000.65100.628300 | 12th Floor | 1d | 2026-07-15 | 2026-07-16 | 6994 |  | Indian Calendar | 7819922 |
| 8405 | 40200.40300.60000.65100.628400 | 13th Floor | 1d | 2026-08-01 | 2026-08-03 | 6998 |  | Indian Calendar | 7819932 |
| 8406 | 40200.40300.60000.65100.628500 | 14th Floor | 1d | 2026-08-19 | 2026-08-20 | 7002 |  | Indian Calendar | 7819942 |
| 8407 | 40200.40300.60000.65100.628600 | 15th Floor | 1d | 2026-09-05 | 2026-09-07 | 7006 |  | Indian Calendar | 7819952 |
| 8408 | 40200.40300.60000.65100.628700 | 16th Floor | 1d | 2026-09-21 | 2026-09-22 | 7010 |  | Indian Calendar | 7819962 |
| 8409 | 40200.40300.60000.65100.628800 | 17th Floor | 1d | 2026-10-09 | 2026-10-10 | 7014 |  | Indian Calendar | 7819972 |
| 8410 | 40200.40300.60000.65100.628900 | 18th Floor | 1d | 2026-10-26 | 2026-10-27 | 7018 |  | Indian Calendar | 7819982 |
| 8411 | 40200.40300.60000.65100.629000 | 19th Floor | 1d | 2026-11-12 | 2026-11-13 | 7022 |  | Indian Calendar | 7819992 |
| 8412 | 40200.40300.60000.65100.629100 | 20th Floor | 1d | 2026-12-14 | 2026-12-14 | 7026 |  | Indian Calendar | 7820002 |
| 8413 | 40200.40300.60000.65100.629200 | 21st Floor | 1d | 2026-12-31 | 2027-01-01 | 7030 |  | Indian Calendar | 7820012 |
| 8414 | 40200.40300.60000.65100.629300 | 22nd Floor | 1d | 2027-01-18 | 2027-01-18 | 7034 |  | Indian Calendar | 7820022 |
| 8415 | 40200.40300.60000.65100.629400 | 23rd Floor | 1d | 2027-02-20 | 2027-02-22 | 7042 |  | Indian Calendar | 7820032 |
| 8416 | 40200.40300.60000.65100.629500 | 24th Floor | 1d | 2027-03-11 | 2027-03-12 | 8415FS+15d |  | Indian Calendar | 7820042 |
| 8417 | 40200.40300.60000.65100.3348300 | 25th Floor | 1d | 2025-12-01 | 2025-12-01 |  | start no earlier than 2025-12-01 | Indian Calendar | 8876074 |

| ID | WBS | Task | Duration | Start | Finish | Complete | Constraint | Calendar | Unique_Task_ID |
| --- | --- | --- | --- | --- | --- | --- | --- | --- | --- |
| 8418 | 40200.40300.63600 | **Customer Milestone Summary** | 233d | 2025-03-10 | 2025-12-05 | 8% | start no earlier than 2025-03-10 | Indian Calendar | 8876075 |
| 8419 | 40200.40300.63600.356100 | **Tower 7** | 96d | 2025-08-12 | 2025-12-01 | 20% | start no earlier than 2025-08-12 | Indian Calendar | 8876084 |
| 8420 | 40200.40300.63600.356100.629600 | On Completion of Foundation | 1d | 2025-08-12 | 2025-08-12 | 100% | start no earlier than 2025-08-12 | Indian Calendar | 8876085 |
| 8421 | 40200.40300.63600.356100.3348200 | On Completion of 2nd Floor Slab | 1d | 2025-12-01 | 2025-12-01 |  | start no earlier than 2025-12-01 | Indian Calendar | 8876086 |
| 8422 | 40200.40300.63600.356100.3348100 | On Completion of 7th Floor Slab | 1d | 2025-12-01 | 2025-12-01 |  | start no earlier than 2025-12-01 | Indian Calendar | 8876087 |
| 8423 | 40200.40300.63600.356100.3348000 | On Completion of 17th Floor Slab | 1d | 2025-12-01 | 2025-12-01 |  | start no earlier than 2025-12-01 | Indian Calendar | 8876088 |
| 8424 | 40200.40300.63600.356100.3347900 | On Completion of Flooring of the unit - 17th Floor | 1d | 2025-12-01 | 2025-12-01 |  | start no earlier than 2025-12-01 | Indian Calendar | 8876089 |
| 8425 | 40200.40300.63600.349800 | **Tower 6** | 229d | 2025-03-10 | 2025-12-01 | 16% | start no earlier than 2025-03-10 | Indian Calendar | 8876094 |
| 8426 | 40200.40300.63600.349800.629700 | Mass Excavation Completion | 1d | 2025-03-10 | 2025-03-10 | 100% | start no earlier than 2025-03-10 | Indian Calendar | 9636626 |
| 8427 | 40200.40300.63600.349800.3347800 | Commencement of 2nd Floor | 1d | 2025-12-01 | 2025-12-01 |  | start no earlier than 2025-12-01 | Indian Calendar | 9636636 |
| 8428 | 40200.40300.63600.349800.3347700 | Commencement of 8th Floor | 1d | 2025-12-01 | 2025-12-01 |  | start no earlier than 2025-12-01 | Indian Calendar | 9636646 |
| 8429 | 40200.40300.63600.349800.3347600 | Commencement of 16th Floor | 1d | 2025-12-01 | 2025-12-01 |  | start no earlier than 2025-12-01 | Indian Calendar | 9636656 |
| 8430 | 40200.40300.63600.349800.3347500 | Commencement of 25th Floor | 1d | 2025-12-01 | 2025-12-01 |  | start no earlier than 2025-12-01 | Indian Calendar | 9636666 |
| 8431 | 40200.40300.63600.349800.3347400 | Commencement of External Painting | 1d | 2025-12-01 | 2025-12-01 |  | start no earlier than 2025-12-01 | Indian Calendar | 9636676 |
| 8432 | 40200.40300.63600.349700 | **Tower 5** | 223d | 2025-03-17 | 2025-12-01 | 16% | start no earlier than 2025-03-17 | Indian Calendar | 8876104 |
| 8433 | 40200.40300.63600.349700.629800 | Mass Excavation Completion | 1d | 2025-03-17 | 2025-03-17 | 100% | start no earlier than 2025-03-17 | Indian Calendar | 9636686 |
| 8434 | 40200.40300.63600.349700.3347300 | Commencement of 2nd Floor | 1d | 2025-12-01 | 2025-12-01 |  | start no earlier than 2025-12-01 | Indian Calendar | 9636696 |
| 8435 | 40200.40300.63600.349700.3347200 | Commencement of 8th Floor | 1d | 2025-12-01 | 2025-12-01 |  | start no earlier than 2025-12-01 | Indian Calendar | 9636706 |
| 8436 | 40200.40300.63600.349700.3347100 | Commencement of 16th Floor | 1d | 2025-12-01 | 2025-12-01 |  | start no earlier than 2025-12-01 | Indian Calendar | 9636716 |
| 8437 | 40200.40300.63600.349700.3347000 | Commencement of 25th Floor | 1d | 2025-12-01 | 2025-12-01 |  | start no earlier than 2025-12-01 | Indian Calendar | 9636726 |
| 8438 | 40200.40300.63600.349700.3346900 | Commencement of External Painting | 1d | 2025-12-01 | 2025-12-01 |  | start no earlier than 2025-12-01 | Indian Calendar | 9636736 |
| 8439 | 40200.40300.63600.65400 | **Tower 4** | 69d | 2025-09-12 | 2025-12-01 | 4% | start no earlier than 2025-09-12 | Indian Calendar | 8876114 |
| 8440 | 40200.40300.63600.65400.629900 | Mass Excavation Completion | 1d | 2025-09-12 | 2025-09-12 | 100% | start no earlier than 2025-09-12 | Indian Calendar | 9636746 |
| 8441 | 40200.40300.63600.65400.3346800 | Commencement of 2nd Floor | 1d | 2025-12-01 | 2025-12-01 |  | start no earlier than 2025-12-01 | Indian Calendar | 9636756 |
| 8442 | 40200.40300.63600.65400.3346700 | Commencement of 8th Floor | 1d | 2025-12-01 | 2025-12-01 |  | start no earlier than 2025-12-01 | Indian Calendar | 9636766 |
| 8443 | 40200.40300.63600.65400.3346600 | Commencement of 16th Floor | 1d | 2025-12-01 | 2025-12-01 |  | start no earlier than 2025-12-01 | Indian Calendar | 9636776 |
| 8444 | 40200.40300.63600.65400.3346500 | Commencement of 25th Floor | 1d | 2025-12-01 | 2025-12-01 |  | start no earlier than 2025-12-01 | Indian Calendar | 9636786 |
| 8445 | 40200.40300.63600.65400.3346400 | Commencement of External Painting | 1d | 2025-12-01 | 2025-12-01 |  | start no earlier than 2025-12-01 | Indian Calendar | 9636796 |
| 8446 | 40200.40300.63600.65400.3346300 | On Completion of Foundation | 1d | 2025-12-01 | 2025-12-01 |  | start no earlier than 2025-12-01 | Indian Calendar | 8876115 |
| 8447 | 40200.40300.63600.65400.3346200 | On Completion of Basement Slab | 1d | 2025-12-01 | 2025-12-01 |  | start no earlier than 2025-12-01 | Indian Calendar | 8876116 |
| 8448 | 40200.40300.63600.65400.3346100 | On Completion of Ground Floor Slab | 1d | 2025-12-01 | 2025-12-01 |  | start no earlier than 2025-12-01 | Indian Calendar | 8876117 |
| 8449 | 40200.40300.63600.65400.3346000 | On Completion of 2nd Floor slab | 1d | 2025-12-01 | 2025-12-01 |  | start no earlier than 2025-12-01 | Indian Calendar | 8876118 |
| 8450 | 40200.40300.63600.65400.3345900 | On Completion of 4th Floor Slab | 1d | 2025-12-01 | 2025-12-01 |  | start no earlier than 2025-12-01 | Indian Calendar | 8876119 |
| 8451 | 40200.40300.63600.65400.3345800 | On Completion of 5th floor slab | 1d | 2025-12-01 | 2025-12-01 |  | start no earlier than 2025-12-01 | Indian Calendar | 8876120 |
| 8452 | 40200.40300.63600.65400.3345700 | On Completion of 6th Floor Slab | 1d | 2025-12-01 | 2025-12-01 |  | start no earlier than 2025-12-01 | Indian Calendar | 8876121 |
| 8453 | 40200.40300.63600.65400.3345600 | On Completion of 8th Floor slab | 1d | 2025-12-01 | 2025-12-01 |  | start no earlier than 2025-12-01 | Indian Calendar | 8876122 |
| 8454 | 40200.40300.63600.65400.3345500 | On Completion of 10th floor slab | 1d | 2025-12-01 | 2025-12-01 |  | start no earlier than 2025-12-01 | Indian Calendar | 8876123 |
| 8455 | 40200.40300.63600.65400.3345400 | On Completion of 12th Floor Slab | 1d | 2025-12-01 | 2025-12-01 |  | start no earlier than 2025-12-01 | Indian Calendar | 8876133 |
| 8456 | 40200.40300.63600.65400.3345300 | On Completion of 14th Floor Slab | 1d | 2025-12-01 | 2025-12-01 |  | start no earlier than 2025-12-01 | Indian Calendar | 8876143 |
| 8457 | 40200.40300.63600.65400.3345200 | On Completion of 16th Floor Slab | 1d | 2025-12-01 | 2025-12-01 |  | start no earlier than 2025-12-01 | Indian Calendar | 8876153 |
| 8458 | 40200.40300.63600.65400.3345100 | On Completion of 18th Floor Slab | 1d | 2025-12-01 | 2025-12-01 |  | start no earlier than 2025-12-01 | Indian Calendar | 8876163 |
| 8459 | 40200.40300.63600.65400.3345000 | On Completion of 20th Floor Slab | 1d | 2025-12-01 | 2025-12-01 |  | start no earlier than 2025-12-01 | Indian Calendar | 8876173 |
| 8460 | 40200.40300.63600.65400.3344900 | On Completion of 22nd Floor Slab | 1d | 2025-12-01 | 2025-12-01 |  | start no earlier than 2025-12-01 | Indian Calendar | 8876183 |
| 8461 | 40200.40300.63600.65400.3344800 | On Completion of 24th Floor Slab | 1d | 2025-12-01 | 2025-12-01 |  | start no earlier than 2025-12-01 | Indian Calendar | 8876193 |
| 8462 | 40200.40300.63600.65400.3344700 | On Completion of Terrace Floor Slab | 1d | 2025-12-01 | 2025-12-01 |  | start no earlier than 2025-12-01 | Indian Calendar | 8876203 |
| 8463 | 40200.40300.63600.65400.3344600 | On Completion of Flooring of the unit - 20th Floor | 1d | 2025-12-01 | 2025-12-01 |  | start no earlier than 2025-12-01 | Indian Calendar | 8876213 |
| 8464 | 40200.40300.63600.65400.3344500 | On Completion of Internal painting of the unit - 20th Floor | 1d | 2025-12-01 | 2025-12-01 |  | start no earlier than 2025-12-01 | Indian Calendar | 8876223 |

| ID | WBS | Task | Duration | Start | Finish | Complete | Constraint | Calendar | Unique_Task_ID |
| --- | --- | --- | --- | --- | --- | --- | --- | --- | --- |
| 8465 | 40200.40300.63600.349600 | **Tower 3** | 150d | 2025-06-10 | 2025-12-01 | 16% | start no earlier than 2025-06-10 | Indian Calendar | 8876124 |
| 8466 | 40200.40300.63600.349600.630000 | Mass Excavation Completion | 1d | 2025-06-10 | 2025-06-10 | 100% | start no earlier than 2025-06-10 | Indian Calendar | 9636806 |
| 8467 | 40200.40300.63600.349600.3344400 | Commencement of 2nd Floor | 1d | 2025-12-01 | 2025-12-01 |  | start no earlier than 2025-12-01 | Indian Calendar | 9636816 |
| 8468 | 40200.40300.63600.349600.3344300 | Commencement of 8th Floor | 1d | 2025-12-01 | 2025-12-01 |  | start no earlier than 2025-12-01 | Indian Calendar | 9636826 |
| 8469 | 40200.40300.63600.349600.3344200 | Commencement of 16th Floor | 1d | 2025-12-01 | 2025-12-01 |  | start no earlier than 2025-12-01 | Indian Calendar | 9636836 |
| 8470 | 40200.40300.63600.349600.3344100 | Commencement of 25th Floor | 1d | 2025-12-01 | 2025-12-01 |  | start no earlier than 2025-12-01 | Indian Calendar | 9636846 |
| 8471 | 40200.40300.63600.349600.3344000 | Commencement of External Painting | 1d | 2025-12-01 | 2025-12-01 |  | start no earlier than 2025-12-01 | Indian Calendar | 9636856 |
| 8472 | 40200.40300.63600.356200 | **Tower 2A** | 108d | 2025-07-29 | 2025-12-01 | 20% | start no earlier than 2025-07-29 | Indian Calendar | 8876134 |
| 8473 | 40200.40300.63600.356200.630100 | On Completion of Foundation | 1d | 2025-07-29 | 2025-07-29 | 100% | start no earlier than 2025-07-29 | Indian Calendar | 9636866 |
| 8474 | 40200.40300.63600.356200.3343900 | On Completion of 2nd Floor Slab | 1d | 2025-12-01 | 2025-12-01 |  | start no earlier than 2025-12-01 | Indian Calendar | 9636876 |
| 8475 | 40200.40300.63600.356200.3343800 | On Completion of 7th Floor Slab | 1d | 2025-12-01 | 2025-12-01 |  | start no earlier than 2025-12-01 | Indian Calendar | 9636886 |
| 8476 | 40200.40300.63600.356200.3343700 | On Completion of 17th Floor Slab | 1d | 2025-12-01 | 2025-12-01 |  | start no earlier than 2025-12-01 | Indian Calendar | 9636896 |
| 8477 | 40200.40300.63600.356200.3343600 | On Completion of Flooring of the unit - 17th Floor | 1d | 2025-12-01 | 2025-12-01 |  | start no earlier than 2025-12-01 | Indian Calendar | 9636906 |
| 8478 | 40200.40300.63600.356300 | **Tower 2** | 1d | 2025-12-01 | 2025-12-01 |  | start no earlier than 2025-12-01 | Indian Calendar | 8876144 |
| 8479 | 40200.40300.63600.356300.3343500 | Commencement of 2nd Floor | 1d | 2025-12-01 | 2025-12-01 |  | start no earlier than 2025-12-01 | Indian Calendar | 9636936 |
| 8480 | 40200.40300.63600.356300.3343400 | Commencement of 8th Floor | 1d | 2025-12-01 | 2025-12-01 |  | start no earlier than 2025-12-01 | Indian Calendar | 9636946 |
| 8481 | 40200.40300.63600.356300.3343300 | Commencement of 16th Floor | 1d | 2025-12-01 | 2025-12-01 |  | start no earlier than 2025-12-01 | Indian Calendar | 9636956 |
| 8482 | 40200.40300.63600.356300.3343200 | Commencement of 25th Floor | 1d | 2025-12-01 | 2025-12-01 |  | start no earlier than 2025-12-01 | Indian Calendar | 9636966 |
| 8483 | 40200.40300.63600.356300.3343100 | Commencement of External Painting | 1d | 2025-12-01 | 2025-12-01 |  | start no earlier than 2025-12-01 | Indian Calendar | 9636976 |
| 8484 | 40200.40300.63600.356400 | **Tower 1** | 1d | 2025-12-01 | 2025-12-01 |  | start no earlier than 2025-12-01 | Indian Calendar | 8876154 |
| 8485 | 40200.40300.63600.356400.3343000 | Commencement of 2nd Floor | 1d | 2025-12-01 | 2025-12-01 |  | start no earlier than 2025-12-01 | Indian Calendar | 8876174 |
| 8486 | 40200.40300.63600.356400.3342900 | Commencement of 8th Floor | 1d | 2025-12-01 | 2025-12-01 |  | start no earlier than 2025-12-01 | Indian Calendar | 8876184 |
| 8487 | 40200.40300.63600.356400.3342800 | Commencement of 16th Floor | 1d | 2025-12-01 | 2025-12-01 |  | start no earlier than 2025-12-01 | Indian Calendar | 8876194 |
| 8488 | 40200.40300.63600.356400.3342700 | Commencement of 25th Floor | 1d | 2025-12-01 | 2025-12-01 |  | start no earlier than 2025-12-01 | Indian Calendar | 8876204 |
| 8489 | 40200.40300.63600.356400.3342600 | Commencement of External Painting | 1d | 2025-12-01 | 2025-12-01 |  | start no earlier than 2025-12-01 | Indian Calendar | 8876214 |
| 8490 | 40200.40300.63600.3376200 | OCA | 1d | 2025-12-01 | 2025-12-01 |  | start no earlier than 2025-12-01 | Indian Calendar | 8876224 |
| 8491 | 40200.40300.63600.3376100 | OCR | 5d | 2025-12-01 | 2025-12-05 |  | start no earlier than 2025-12-01 | Indian Calendar | 8876234 |
| 8492 | 40200.40300.63600.3376000 | PIL | 5d | 2025-12-01 | 2025-12-05 |  | start no earlier than 2025-12-01 | Indian Calendar | 8876244 |
