Schedule from MS Project XML, 2022-04-30 to 2031-04-19, A marks actual dates.

## Calendars

- Standard: Mon-Fri 08:00-12:00, 13:00-17:00; Sat-Sun off. Exceptions (off unless hours are given): 2022-05-02, 2022-06-02 to 2022-06-03, 2022-08-29, 2022-12-25 to 2023-01-08, 2023-04-07 to 2023-04-10, 2023-05-01, 2023-05-29, 2023-08-28, 2023-12-25 to 2024-01-07, 2024-03-29 to 2024-04-01, 2024-05-06, 2024-05-27, 2024-08-26, 2024-12-23 to 2025-01-05, 2025-04-18 to 2025-04-21, 2025-05-05, 2025-05-26, 2025-08-25, 2025-12-22 to 2026-01-04, 2026-03-27 to 2026-03-30, 2026-05-04, 2026-05-23 to 2026-05-25, 2026-08-29 to 2026-08-31, 2026-12-21 to 2027-01-03, 2027-04-16 to 2027-04-19, 2027-05-01 to 2027-05-03, 2027-05-29 to 2027-05-31, 2027-08-30, 2027-12-25 to 2028-01-09, 2028-03-31 to 2028-04-03, 2028-04-29 to 2028-05-01, 2028-05-27 to 2028-05-29, 2028-08-26 to 2028-08-28, 2028-12-23 to 2029-01-07, 2029-03-23 to 2029-03-26, 2029-05-07, 2029-05-28, 2029-08-27, 2029-12-24 to 2030-01-06, 2030-04-12 to 2030-04-15, 2030-05-06, 2030-05-27, 2030-08-26, 2030-12-23 to 2031-01-05, 2031-03-28 to 2031-03-31.
- Indian Calendar: Mon-Sat 08:00-12:00, 13:00-17:00; Sun off. Exceptions (off unless hours are given): 2023-11-15 to 2023-12-15, 2024-07-01 to 2024-07-06 08:00-10:00, 14:00-17:00, 2024-07-07, 2024-07-08 to 2024-07-13 08:00-10:00, 14:00-17:00, 2024-07-14, 2024-07-15 to 2024-07-20 08:00-10:00, 14:00-17:00, 2024-07-21, 2024-07-22 to 2024-07-27 08:00-10:00, 14:00-17:00, 2024-07-28, 2024-07-29 to 2024-07-31 08:00-10:00, 14:00-17:00, 2024-08-01 to 2024-08-03 08:00-10:00, 11:00-12:00, 13:00-17:00, 2024-08-04, 2024-08-05 to 2024-08-10 08:00-10:00, 11:00-12:00, 13:00-17:00, 2024-08-11, 2024-08-12 to 2024-08-17 08:00-10:00, 11:00-12:00, 13:00-17:00, 2024-08-18, 2024-08-19 to 2024-08-24 08:00-10:00, 11:00-12:00, 13:00-17:00, 2024-08-25, 2024-08-26 to 2024-08-31 08:00-10:00, 11:00-12:00, 13:00-17:00, 2024-09-01, 2024-09-02 to 2024-09-07 08:00-10:00, 11:00-12:00, 13:00-17:00, 2024-09-08, 2024-09-09 to 2024-09-14 08:00-10:00, 11:00-12:00, 13:00-17:00, 2024-09-15, 2024-09-16 to 2024-09-21 08:00-10:00, 11:00-12:00, 13:00-17:00, 2024-09-22, 2024-09-23 to 2024-09-28 08:00-10:00, 11:00-12:00, 13:00-17:00, 2024-09-29, 2024-09-30 08:00-10:00, 11:00-12:00, 13:00-17:00.
- Sector-44 Noida: Mon-Sun 08:00-12:00, 13:00-17:00. Exceptions (off unless hours are given): 2025-11-01 to 2025-12-15, 2026-11-01 to 2026-12-15, 2027-11-01 to 2027-12-15, 2028-11-01 to 2028-12-15.
- GC1: Mon-Sun 08:30-13:00, 14:00-18:30. Exceptions (off unless hours are given): 2025-11-12 to 2025-11-26, 2025-12-01 to 2025-12-26, 2026-11-01 to 2026-12-15, 2027-11-01 to 2027-12-15.
- Yashwantpur Finshing: Mon-Fri 08:00-12:00, 13:00-17:00; Sat-Sun off.
- Sector-44 Noida(2): Mon-Sun 08:00-12:00, 13:00-17:00. Exceptions (off unless hours are given): 2025-11-01 to 2025-12-15, 2026-11-01 to 2026-12-15, 2027-11-01 to 2027-12-15, 2028-11-01 to 2028-12-15.

## Resources

| Resource |
| --- |
| GPL Revenue |
| Riverine |
| GPL Costs & Revenue |
| GPL cost & revenue |

## Schedule

| ID | WBS | Task | Type | Duration | Start | Finish | Predecessors | Complete | Constraint | Calendar | Unique_Task_ID |
| --- | --- | --- | --- | --- | --- | --- | --- | --- | --- | --- | --- |
| 1 | 36900 | **Riverine** |  | 2340d | 2022-04-30 | 2031-04-19 |  | 8% | start no earlier than 2022-04-30 | Yashwantpur Finshing | 9146084 |
| 2 | 36900.37000 | **Riverine, Sector-44 Noida** |  | 3096.53d | 2022-04-30 | 2031-04-19 |  | 8% | start no earlier than 2022-04-30 | Sector-44 Noida | 9146094 |
| 3 | 36900.37000.44300 | **Project Snapshot** |  | 1645d | 2025-01-18 | 2030-01-17 |  | 2% | start no earlier than 2025-01-18 | Sector-44 Noida | 9362344 |
| 4 | 36900.37000.44300.44800 | **Intermediate milestones** |  | 1279d | 2025-12-01 | 2029-10-30 |  |  | start no earlier than 2025-12-01 | Sector-44 Noida | 9362584 |
| 5 | 36900.37000.44300.44800.459900 | Removal of soldier piles | milestone | 0d | 2028-02-03 | 2028-02-03 | 3406FS-1d |  |  | Sector-44 Noida(2) | 9375514 |
| 6 | 36900.37000.44300.44800.460000 | Tower-1 -Completion of Raft | milestone | 0d | 2025-12-01 | 2025-12-01 | 69FS-19.04d |  |  | Indian Calendar | 9781436 |
| 7 | 36900.37000.44300.44800.460100 | Tower-1 -Completion of 12th Floor Slab | milestone | 0d | 2026-09-11 | 2026-09-11 | 183FS-1d |  |  | Indian Calendar | 9781446 |
| 8 | 36900.37000.44300.44800.460200 | Tower-1 -Completion of 20th Floor Slab | milestone | 0d | 2027-02-05 | 2027-02-05 | 231FS-1d |  |  | Indian Calendar | 9781447 |
| 9 | 36900.37000.44300.44800.460300 | Tower-1 -Terrace Completion | milestone | 0d | 2027-04-07 | 2027-04-07 | 255FS-1d |  |  | Indian Calendar | 9781456 |
| 10 | 36900.37000.44300.44800.460400 | Tower-1 -Plaster Completion | milestone | 0d | 2027-07-27 | 2027-07-27 | 681FS-1d |  |  | Indian Calendar | 9781466 |
| 11 | 36900.37000.44300.44800.460500 | Tower-1 -Flooring Completion | milestone | 0d | 2027-10-14 | 2027-10-14 | 703FS-1d |  |  | Indian Calendar | 9781476 |
| 12 | 36900.37000.44300.44800.460600 | Tower-1 -Lift Installation | milestone | 0d | 2027-07-23 | 2027-07-23 | 764FS-1d |  |  | Indian Calendar | 9781486 |
| 13 | 36900.37000.44300.44800.460700 | Tower-1 -OC Application | milestone | 0d | 2028-01-06 | 2028-01-06 | 770FS-1d |  |  | Indian Calendar | 9781496 |
| 14 | 36900.37000.44300.44800.460800 | Tower -1 - Intimation of Possession | milestone | 0d | 2028-07-05 | 2028-07-05 | 778SS |  |  | Sector-44 Noida(2) | 9375504 |
| 15 | 36900.37000.44300.44800.460900 | Tower-2 -Completion of Raft | milestone | 0d | 2025-12-01 | 2025-12-01 | 801FS-1d |  |  | Indian Calendar | 9781516 |
| 16 | 36900.37000.44300.44800.461000 | Tower-2 -Completion of 12th Floor Slab | milestone | 0d | 2026-09-02 | 2026-09-02 | 916FS-2d |  |  | Indian Calendar | 9781526 |
| 17 | 36900.37000.44300.44800.461100 | Tower-2 -Terrace Completion | milestone | 0d | 2027-03-29 | 2027-03-29 | 988FS-2d |  |  | Indian Calendar | 9781536 |
| 18 | 36900.37000.44300.44800.461200 | Tower-2 -Plaster Completion | milestone | 0d | 2027-08-09 | 2027-08-09 | 1414 |  |  | Indian Calendar | 9781546 |
| 19 | 36900.37000.44300.44800.461300 | Tower-2 -Flooring Completion | milestone | 0d | 2027-10-06 | 2027-10-06 | 1436FS-1d |  |  | Indian Calendar | 9781556 |
| 20 | 36900.37000.44300.44800.461400 | Tower-2 -Lift Installation | milestone | 0d | 2027-07-15 | 2027-07-15 | 1497FS-1d |  |  | Indian Calendar | 9781566 |
| 21 | 36900.37000.44300.44800.461500 | Tower-2 -OC Application | milestone | 0d | 2028-01-13 | 2028-01-13 | 1503FS-1d |  |  | Indian Calendar | 9781576 |
| 22 | 36900.37000.44300.44800.461600 | Tower -2 - Intimation of Possession | milestone | 0d | 2028-07-12 | 2028-07-12 | 1511SS |  |  | Sector-44 Noida(2) | 9375494 |
| 23 | 36900.37000.44300.44800.461700 | Tower-3 -Completion of Raft | milestone | 0d | 2025-12-01 | 2025-12-01 | 1534FS-25d |  |  | Indian Calendar | 9781606 |
| 24 | 36900.37000.44300.44800.461800 | Tower-3 -Completion of 12th Floor Slab | milestone | 0d | 2026-10-03 | 2026-10-03 | 1650FS-1d |  |  | Indian Calendar | 9781616 |
| 25 | 36900.37000.44300.44800.461900 | Tower-3 -Completion of 20th Floor Slab | milestone | 0d | 2027-02-24 | 2027-02-24 | 1698FS-1d |  |  | Indian Calendar | 10723328 |
| 26 | 36900.37000.44300.44800.462000 | Tower-3 -Terrace Completion | milestone | 0d | 2027-04-16 | 2027-04-16 | 1722FS-1d |  |  | Indian Calendar | 9781617 |
| 27 | 36900.37000.44300.44800.462100 | Tower-3 -Plaster Completion | milestone | 0d | 2027-08-31 | 2027-08-31 | 2148FS-1d |  |  | Indian Calendar | 9781626 |
| 28 | 36900.37000.44300.44800.462200 | Tower-3 -Flooring Completion | milestone | 0d | 2027-10-23 | 2027-10-23 | 2170FS-1d |  |  | Indian Calendar | 9781636 |
| 29 | 36900.37000.44300.44800.462300 | Tower-3 -Lift Installation | milestone | 0d | 2027-08-11 | 2027-08-11 | 2231FS-1d |  |  | Indian Calendar | 9781646 |
| 30 | 36900.37000.44300.44800.462400 | Tower-3 -OC Application | milestone | 0d | 2028-01-20 | 2028-01-20 | 2237FS-1d |  |  | Indian Calendar | 9781656 |
| 31 | 36900.37000.44300.44800.462500 | Tower -3 - Intimation of Possession | milestone | 0d | 2028-07-19 | 2028-07-19 | 2245SS |  |  | Sector-44 Noida(2) | 9375484 |
| 32 | 36900.37000.44300.44800.462600 | Tower-4 -Completion of Raft | milestone | 0d | 2026-03-04 | 2026-03-04 | 2271FS-1d |  |  | Indian Calendar | 9781666 |
| 33 | 36900.37000.44300.44800.462700 | Tower-4 -Completion of 12th Floor Slab | milestone | 0d | 2027-04-08 | 2027-04-08 | 2388FS-1d |  |  | Indian Calendar | 9781676 |
| 34 | 36900.37000.44300.44800.462800 | Tower-4 -Completion of 18th Floor Slab | milestone | 0d | 2027-06-22 | 2027-06-22 | 2424FS-1d |  |  | Indian Calendar | 9781677 |
| 35 | 36900.37000.44300.44800.462900 | Tower-4 -Terrace Completion | milestone | 0d | 2028-04-24 | 2028-04-24 | 2550 |  |  | Indian Calendar | 9781686 |
| 36 | 36900.37000.44300.44800.463000 | Tower-4 -Plaster Completion | milestone | 0d | 2028-07-03 | 2028-07-03 | 3247 |  |  | Indian Calendar | 9781696 |
| 37 | 36900.37000.44300.44800.463100 | Tower-4 -Flooring Completion | milestone | 0d | 2028-10-30 | 2028-10-30 | 3269FS-1d |  |  | Indian Calendar | 9781706 |
| 38 | 36900.37000.44300.44800.463200 | Tower-4 -Lift Installation | milestone | 0d | 2028-08-25 | 2028-08-25 | 3344FS-1d |  |  | Indian Calendar | 9781716 |
| 39 | 36900.37000.44300.44800.463300 | Tower-4 -OC Application | milestone | 0d | 2029-04-23 | 2029-04-23 | 3350 |  |  | Indian Calendar | 9781726 |
| 40 | 36900.37000.44300.44800.463400 | Tower -4 - Intimation of Possession | milestone | 0d | 2029-10-30 | 2029-10-30 | 3358SS |  |  | Sector-44 Noida(2) | 9375474 |
| 41 | 36900.37000.44300.44800.463500 | OC receipt of Club Area | milestone | 0d | 2028-09-28 | 2028-09-28 | 3623FS-1d |  |  | Sector-44 Noida(2) | 9375464 |
| 42 | 36900.37000.44300.44800.463600 | Completion of Landscape works | milestone | 0d | 2028-05-21 | 2028-05-21 | 3472FS-1d |  |  | Sector-44 Noida(2) | 9375454 |

| ID | WBS | Task | Type | Duration | Start | Finish | Predecessors | Complete | Constraint | Calendar | Unique_Task_ID |
| --- | --- | --- | --- | --- | --- | --- | --- | --- | --- | --- | --- |
| 43 | 36900.37000.44300.191900 | **Project Data** |  | 1645d | 2025-01-18 | 2030-01-17 |  | 50% | start no earlier than 2025-01-18 | Sector-44 Noida | 9366054 |
| 44 | 36900.37000.44300.191900.463700 | Start of Project | milestone | 0d | 2025-01-18 A | 2025-01-18 A |  | 100% | start no earlier than 2025-01-01 | Sector-44 Noida(2) | 9375534 |
| 45 | 36900.37000.44300.191900.463800 | Completion of project | milestone | 0d | 2030-01-17 | 2030-01-17 | 3630FS-1d, 778FS-1d, 1511FS-1d, 2245FS-1d, 3358FS-1d |  |  | Sector-44 Noida(2) | 9375524 |
| 46 | 36900.37000.1343700 | Project Snapshot |  | 3d | 2031-04-16 | 2031-04-19 | 3 |  |  | Sector-44 Noida(2) | 9396494 |
| 47 | 36900.37000.42300 | **Tower-1 (2B+S+P+23)** |  | 1584d | 2024-01-18 | 2028-10-02 |  | 10% | start no earlier than 2024-01-18 | Sector-44 Noida(2) | 9356624 |
| 48 | 36900.37000.42300.105600 | **Soldier Piling & Excavation work** |  | 542d | 2024-01-18 | 2025-07-13 |  | 100% | start no earlier than 2024-01-18 | Sector-44 Noida(2) | 9362624 |
| 49 | 36900.37000.42300.105600.185000 | **Till 2.5 Mtr** |  | 433d | 2024-01-18 | 2025-03-26 |  | 100% | start no earlier than 2024-01-18 | Sector-44 Noida(2) | 9365664 |
| 50 | 36900.37000.42300.105600.185000.222100 | H beam pile driving - 12m |  | 391d | 2024-01-18 | 2025-03-02 | 44 | 100% | start no earlier than 2024-01-18 | Sector-44 Noida(2) | 9366514 |
| 51 | 36900.37000.42300.105600.185000.222000 | Excavation from NGL to 2.5m |  | 30d | 2025-01-18 | 2025-03-11 | 50FS-44d | 100% | start no earlier than 2025-01-18 | Sector-44 Noida(2) | 9366524 |
| 52 | 36900.37000.42300.105600.185000.221900 | Plank installation & anchoring till 2.5m |  | 35d | 2025-02-20 | 2025-03-26 | 51FF | 100% | start no earlier than 2025-02-20 | Sector-44 Noida(2) | 9366534 |
| 53 | 36900.37000.42300.105600.188900 | **2.5 mtrs till 5 mtrs** |  | 66d | 2025-01-25 | 2025-03-31 |  | 100% | start no earlier than 2025-01-25 | Sector-44 Noida(2) | 9366074 |
| 54 | 36900.37000.42300.105600.188900.221800 | Excavation from 2.5m till 5m |  | 65d | 2025-01-26 | 2025-03-31 | 52FS-37d | 100% | start no earlier than 2025-01-26 | Sector-44 Noida(2) | 9366544 |
| 55 | 36900.37000.42300.105600.188900.221700 | Plank installation & anchoring till 2.5m till 5m |  | 66d | 2025-01-25 | 2025-03-31 | 54FF | 100% | start no earlier than 2025-01-25 | Sector-44 Noida(2) | 9366554 |
| 56 | 36900.37000.42300.105600.189000 | **12 mts till NTA fotting bottom** |  | 72d | 2025-05-03 | 2025-07-13 |  | 100% | start no earlier than 2025-05-03 | Sector-44 Noida(2) | 9366024 |
| 57 | 36900.37000.42300.105600.189000.221600 | Excavation from 5m to fotting PCC bottom |  | 29d | 2025-05-03 | 2025-06-23 | 55 | 100% | start no earlier than 2025-05-03 | Sector-44 Noida(2) | 9366564 |
| 58 | 36900.37000.42300.105600.189000.215900 | Plank installation & anchoring from 5m to footing PCC bottom |  | 53d | 2025-05-22 | 2025-07-13 | 57FS-22d | 100% | start no earlier than 2025-05-22 | Sector-44 Noida(2) | 9366574 |
| 59 | 36900.37000.42300.94500 | **Sub-Structure works** |  | 637.3d | 2025-05-30 | 2027-05-27 |  | 29% | start no earlier than 2025-05-30 | Sector-44 Noida(2) | 9362094 |
| 60 | 36900.37000.42300.94500.125700 | **Soil bed preparation** |  | 47.97d | 2025-05-30 | 2025-07-17 |  | 100% | start no earlier than 2025-05-30 | Sector-44 Noida(2) | 9364254 |
| 61 | 36900.37000.42300.94500.125700.215800 | Excavation completion |  | 18.47d | 2025-05-30 | 2025-07-14 | 58FS-75.3d | 100% | start no earlier than 2025-05-30 | Sector-44 Noida(2) | 9366584 |
| 62 | 36900.37000.42300.94500.125700.215700 | Surface dressing |  | 5.18d | 2025-06-04 | 2025-07-16 | 61FS-12.16d | 100% | start no earlier than 2025-06-04 | Sector-44 Noida(2) | 9366594 |
| 63 | 36900.37000.42300.94500.125700.215600 | ATT |  | 1.9d | 2025-06-06 | 2025-07-16 | 62FS-23.92d | 100% | start no earlier than 2025-06-06 | Sector-44 Noida(2) | 9366604 |
| 64 | 36900.37000.42300.94500.125700.209200 | PCC |  | 8.5d | 2025-06-07 | 2025-07-17 | 61FF+28.88d, 62SF-1.62d, 63FF+13.13d | 100% | start no earlier than 2025-06-07 | Sector-44 Noida(2) | 9366614 |
| 65 | 36900.37000.42300.94500.101700 | **RCC Works** |  | 128d | 2025-07-14 | 2026-01-02 |  | 90% | start no earlier than 2025-07-14 | Sector-44 Noida(2) | 9362404 |
| 66 | 36900.37000.42300.94500.101700.131800 | **Raft** |  | 40.52d | 2025-07-14 | 2025-08-23 |  | 100% | start no earlier than 2025-07-14 | Sector-44 Noida(2) | 9365684 |
| 67 | 36900.37000.42300.94500.101700.131800.206500 | Reinforcement Work |  | 21d | 2025-07-14 | 2025-08-21 | 64FS-18.68d | 100% | start no earlier than 2025-07-14 | Sector-44 Noida(2) | 9369534 |
| 68 | 36900.37000.42300.94500.101700.131800.206400 | Shuttering work |  | 13d | 2025-07-22 | 2025-08-21 | 67FS-31d | 100% | start no earlier than 2025-07-22 | Sector-44 Noida(2) | 9369544 |
| 69 | 36900.37000.42300.94500.101700.131800.206100 | Concreteing work |  | 6d | 2025-08-07 | 2025-08-23 | 67FF, 68FF | 100% | start no earlier than 2025-08-07 | Sector-44 Noida(2) | 9369554 |

| ID | WBS | Task | Duration | Start | Finish | Predecessors | Complete | Constraint | Calendar | Unique_Task_ID |
| --- | --- | --- | --- | --- | --- | --- | --- | --- | --- | --- |
| 70 | 36900.37000.42300.94500.101700.109200 | **Basement-2 Roof Slab** | 59.7d | 2025-08-08 | 2025-10-06 |  | 100% | start no earlier than 2025-08-08 | Sector-44 Noida(2) | 9364174 |
| 71 | 36900.37000.42300.94500.101700.109200.146400 | **B2 Roof Slab** | 59.7d | 2025-08-08 | 2025-10-06 |  | 100% | start no earlier than 2025-08-08 | Sector-44 Noida(2) | 9365844 |
| 72 | 36900.37000.42300.94500.101700.109200.146400.246400 | Shuttering Work | 31d | 2025-08-17 | 2025-10-05 | 69FS+5d | 100% | start no earlier than 2025-08-17 | Sector-44 Noida(2) | 9373544 |
| 73 | 36900.37000.42300.94500.101700.109200.146400.246300 | Reinforcement Work | 40d | 2025-08-08 | 2025-10-05 | 72FS-59d | 100% | start no earlier than 2025-08-08 | Sector-44 Noida(2) | 9373554 |
| 74 | 36900.37000.42300.94500.101700.109200.146400.246200 | Concreteing work | 31d | 2025-08-20 | 2025-10-06 | 72FF, 73FF | 100% | start no earlier than 2025-08-20 | Sector-44 Noida(2) | 9373564 |
| 75 | 36900.37000.42300.94500.101700.109300 | **Basement-1 Roof Slab** | 75d | 2025-09-05 | 2026-01-02 |  | 79% | start no earlier than 2025-09-05 | Sector-44 Noida(2) | 9364184 |
| 76 | 36900.37000.42300.94500.101700.109300.146300 | **B1 Roof Slab** | 75d | 2025-09-05 | 2026-01-02 |  | 79% | start no earlier than 2025-09-05 | Sector-44 Noida(2) | 9365834 |
| 77 | 36900.37000.42300.94500.101700.109300.146300.246100 | Shuttering Work | 33d | 2025-09-27 | 2025-12-31 | 74FS-11.7d | 51% | start no earlier than 2025-09-27 | Sector-44 Noida(2) | 9373574 |
| 78 | 36900.37000.42300.94500.101700.109300.146300.246000 | Reinforcement Work | 40d | 2025-09-06 | 2026-01-01 | 77FS-72d | 85% |  | Sector-44 Noida(2) | 9373584 |
| 79 | 36900.37000.42300.94500.101700.109300.146300.245900 | Concreteing work | 40d | 2025-09-05 | 2026-01-02 | 77FF, 78FS-74d | 97% |  | Sector-44 Noida(2) | 9373594 |
| 80 | 36900.37000.42300.94500.99600 | **Sub structure finishing works** | 215d | 2026-09-10 | 2027-05-27 |  |  | start no earlier than 2026-09-10 | Sector-44 Noida(2) | 9362324 |
| 81 | 36900.37000.42300.94500.99600.103900 | **Basement-2** | 185d | 2026-09-10 | 2027-04-27 |  |  | start no earlier than 2026-09-10 | Sector-44 Noida(2) | 9362504 |
| 82 | 36900.37000.42300.94500.99600.103900.368800 | Masonary | 30d | 2026-09-10 | 2026-10-09 | 79FS+250d |  |  | Sector-44 Noida(2) | 9369564 |
| 83 | 36900.37000.42300.94500.99600.103900.368900 | Structural Steel | 30d | 2026-09-10 | 2026-10-09 | 79FS+250d |  |  | Sector-44 Noida(2) | 9369574 |
| 84 | 36900.37000.42300.94500.99600.103900.369000 | Plaster | 30d | 2026-10-10 | 2026-12-23 | 82, 83 |  |  | Sector-44 Noida(2) | 9369584 |
| 85 | 36900.37000.42300.94500.99600.103900.369100 | White Wash | 30d | 2026-12-24 | 2027-01-22 | 84 |  |  | Sector-44 Noida(2) | 9369594 |
| 86 | 36900.37000.42300.94500.99600.103900.369200 | VDF | 60d | 2026-09-25 | 2027-01-07 | 84FS-45d |  |  | Sector-44 Noida(2) | 9369604 |
| 87 | 36900.37000.42300.94500.99600.103900.369300 | Drain & Sump (incl. gratings) | 60d | 2026-10-25 | 2027-02-06 | 86FS-30d |  |  | Sector-44 Noida(2) | 9369614 |
| 88 | 36900.37000.42300.94500.99600.103900.369400 | Car parking marking | 30d | 2027-03-29 | 2027-04-27 | 85FS+65d |  |  | Sector-44 Noida(2) | 9369624 |
| 89 | 36900.37000.42300.94500.99600.103900.369500 | Signages | 30d | 2027-03-29 | 2027-04-27 | 82FF, 83FF, 84FF, 85FS-10d, 86FF, 87FF, 88FF |  |  | Sector-44 Noida(2) | 9369634 |
| 90 | 36900.37000.42300.94500.99600.104000 | **Basement-1** | 185d | 2026-10-10 | 2027-05-27 |  |  | start no earlier than 2026-10-10 | Sector-44 Noida(2) | 9362564 |
| 91 | 36900.37000.42300.94500.99600.104000.369600 | Masonary | 30d | 2026-10-10 | 2026-12-23 | 82 |  |  | Sector-44 Noida(2) | 9369644 |
| 92 | 36900.37000.42300.94500.99600.104000.369700 | Structural Steel | 30d | 2026-10-10 | 2026-12-23 | 82 |  |  | Sector-44 Noida(2) | 9369654 |
| 93 | 36900.37000.42300.94500.99600.104000.369800 | Plaster | 30d | 2026-12-24 | 2027-01-22 | 91, 92 |  |  | Sector-44 Noida(2) | 9369664 |
| 94 | 36900.37000.42300.94500.99600.104000.369900 | White Wash | 30d | 2027-01-23 | 2027-02-21 | 93 |  |  | Sector-44 Noida(2) | 9369674 |
| 95 | 36900.37000.42300.94500.99600.104000.370000 | VDF | 60d | 2026-10-25 | 2027-02-06 | 93FS-45d |  |  | Sector-44 Noida(2) | 9369684 |
| 96 | 36900.37000.42300.94500.99600.104000.370100 | Drain & Sump (incl. gratings) | 60d | 2027-01-08 | 2027-03-08 | 95FS-30d |  |  | Sector-44 Noida(2) | 9369694 |
| 97 | 36900.37000.42300.94500.99600.104000.370200 | Car parking marking | 30d | 2027-04-28 | 2027-05-27 | 94FS+65d |  |  | Sector-44 Noida(2) | 9369704 |
| 98 | 36900.37000.42300.94500.99600.104000.370300 | Signages | 30d | 2027-04-28 | 2027-05-27 | 91FF, 92FF, 93FF, 94FS-10d, 95FF, 96FF, 97FF |  |  | Sector-44 Noida(2) | 9369714 |

| ID | WBS | Task | Duration | Start | Finish | Predecessors | Complete | Constraint | Calendar | Unique_Task_ID |
| --- | --- | --- | --- | --- | --- | --- | --- | --- | --- | --- |
| 99 | 36900.37000.42300.42700 | **Super structure works** | 937d | 2025-10-27 | 2028-10-02 |  |  | start no earlier than 2025-10-27 | Sector-44 Noida(2) | 9360714 |
| 100 | 36900.37000.42300.42700.46000 | **RCC Works** | 478d | 2025-10-27 | 2027-05-17 |  |  | start no earlier than 2025-10-27 | Sector-44 Noida(2) | 9360824 |
| 101 | 36900.37000.42300.42700.46000.129900 | **Stilt/GF Slab** | 37d | 2025-10-27 | 2026-01-16 |  | 18% | start no earlier than 2025-10-27 | Sector-44 Noida(2) | 9364234 |
| 102 | 36900.37000.42300.42700.46000.129900.186400 | **Stilt/GF Slab** | 37d | 2025-10-27 | 2026-01-16 |  | 18% | start no earlier than 2025-10-27 | Sector-44 Noida(2) | 9365794 |
| 103 | 36900.37000.42300.42700.46000.129900.186400.586200 | Shuttering Work | 14d | 2026-01-03 | 2026-01-16 | 79 |  |  | Sector-44 Noida(2) | 9373604 |
| 104 | 36900.37000.42300.42700.46000.129900.186400.245800 | Reinforcement Work | 12d | 2025-10-27 | 2026-01-13 | 103FS-37d | 41% |  | Sector-44 Noida(2) | 9373614 |
| 105 | 36900.37000.42300.42700.46000.129900.186400.586300 | Concreteing work | 1d | 2026-01-16 | 2026-01-16 | 103FF, 104 |  |  | Sector-44 Noida(2) | 9373624 |
| 106 | 36900.37000.42300.42700.46000.109400 | **Podium-1 Slab** | 18d | 2026-01-17 | 2026-02-03 |  |  | start no earlier than 2026-01-17 | Sector-44 Noida(2) | 9362684 |
| 107 | 36900.37000.42300.42700.46000.109400.146200 | **Podium-1 Slab** | 18d | 2026-01-17 | 2026-02-03 |  |  | start no earlier than 2026-01-17 | Sector-44 Noida(2) | 9364354 |
| 108 | 36900.37000.42300.42700.46000.109400.146200.586400 | Shuttering Work | 15d | 2026-01-17 | 2026-01-31 | 105 |  |  | Sector-44 Noida(2) | 9373634 |
| 109 | 36900.37000.42300.42700.46000.109400.146200.586500 | Reinforcement Work | 12d | 2026-01-22 | 2026-02-02 | 108FS-10d |  |  | Sector-44 Noida(2) | 9373644 |
| 110 | 36900.37000.42300.42700.46000.109400.146200.586600 | Conduiting work | 1d | 2026-02-02 | 2026-02-02 | 109FS-1d |  |  | Sector-44 Noida(2) | 9373654 |
| 111 | 36900.37000.42300.42700.46000.109400.146200.586700 | Concreteing work | 1d | 2026-02-03 | 2026-02-03 | 108FF, 109FF, 110 |  |  | Sector-44 Noida(2) | 9373664 |
| 112 | 36900.37000.42300.42700.46000.109500 | **1st Floor Slab** | 43d | 2026-02-04 | 2026-03-18 |  |  | start no earlier than 2026-02-04 | Sector-44 Noida(2) | 9362694 |
| 113 | 36900.37000.42300.42700.46000.109500.146100 | **1st Floor Slab** | 43d | 2026-02-04 | 2026-03-18 |  |  | start no earlier than 2026-02-04 | Sector-44 Noida(2) | 9364364 |
| 114 | 36900.37000.42300.42700.46000.109500.146100.586800 | Shuttering Work | 30d | 2026-02-04 | 2026-03-05 | 111 |  |  | Sector-44 Noida(2) | 9373674 |
| 115 | 36900.37000.42300.42700.46000.109500.146100.586900 | Reinforcement Work | 17d | 2026-03-01 | 2026-03-17 | 114FS-5d |  |  | Sector-44 Noida(2) | 9373684 |
| 116 | 36900.37000.42300.42700.46000.109500.146100.587000 | Conduiting work | 1d | 2026-03-17 | 2026-03-17 | 115FS-1d |  |  | Sector-44 Noida(2) | 9373694 |
| 117 | 36900.37000.42300.42700.46000.109500.146100.587100 | Concreteing work | 1d | 2026-03-18 | 2026-03-18 | 114FF, 115FF, 116 |  |  | Sector-44 Noida(2) | 9373704 |
| 118 | 36900.37000.42300.42700.46000.109600 | **2nd Floor Slab** | 30d | 2026-03-19 | 2026-04-17 |  |  | start no earlier than 2026-03-19 | Sector-44 Noida(2) | 9362704 |
| 119 | 36900.37000.42300.42700.46000.109600.146000 | **2nd Floor Slab** | 30d | 2026-03-19 | 2026-04-17 |  |  | start no earlier than 2026-03-19 | Sector-44 Noida(2) | 9364374 |
| 120 | 36900.37000.42300.42700.46000.109600.146000.587200 | Shuttering Work | 17d | 2026-03-19 | 2026-04-04 | 117 |  |  | Sector-44 Noida(2) | 9373714 |
| 121 | 36900.37000.42300.42700.46000.109600.146000.587300 | Reinforcement Work | 15d | 2026-04-02 | 2026-04-16 | 120FS-3d |  |  | Sector-44 Noida(2) | 9373724 |
| 122 | 36900.37000.42300.42700.46000.109600.146000.587400 | Conduiting work | 1d | 2026-04-16 | 2026-04-16 | 121FS-1d |  |  | Sector-44 Noida(2) | 9373734 |
| 123 | 36900.37000.42300.42700.46000.109600.146000.587500 | Concreteing work | 1d | 2026-04-17 | 2026-04-17 | 120FF, 121FF, 122 |  |  | Sector-44 Noida(2) | 9373744 |

| ID | WBS | Task | Duration | Start | Finish | Predecessors | Constraint | Calendar | Unique_Task_ID |
| --- | --- | --- | --- | --- | --- | --- | --- | --- | --- |
| 124 | 36900.37000.42300.42700.46000.109700 | **3rd Floor Slab (1st MIVAN Setup)** | 30d | 2026-04-18 | 2026-05-17 |  | start no earlier than 2026-04-18 | Sector-44 Noida(2) | 9362714 |
| 125 | 36900.37000.42300.42700.46000.109700.145900 | **3rd Floor Slab** | 30d | 2026-04-18 | 2026-05-17 |  | start no earlier than 2026-04-18 | Sector-44 Noida(2) | 9364384 |
| 126 | 36900.37000.42300.42700.46000.109700.145900.587600 | Shuttering Work | 17d | 2026-04-18 | 2026-05-04 | 123 |  | Sector-44 Noida(2) | 9373754 |
| 127 | 36900.37000.42300.42700.46000.109700.145900.587700 | Reinforcement Work | 15d | 2026-05-02 | 2026-05-16 | 126FS-3d |  | Sector-44 Noida(2) | 9373764 |
| 128 | 36900.37000.42300.42700.46000.109700.145900.587800 | Conduiting work | 1d | 2026-05-16 | 2026-05-16 | 127FS-1d |  | Sector-44 Noida(2) | 9373774 |
| 129 | 36900.37000.42300.42700.46000.109700.145900.587900 | Concreteing work | 1d | 2026-05-17 | 2026-05-17 | 126FF, 127FF, 128 |  | Sector-44 Noida(2) | 9373784 |
| 130 | 36900.37000.42300.42700.46000.109800 | **4th Floor Slab** | 21d | 2026-05-18 | 2026-06-07 |  | start no earlier than 2026-05-18 | Sector-44 Noida(2) | 9362724 |
| 131 | 36900.37000.42300.42700.46000.109800.145800 | **4th Floor Slab** | 21d | 2026-05-18 | 2026-06-07 |  | start no earlier than 2026-05-18 | Sector-44 Noida(2) | 9364394 |
| 132 | 36900.37000.42300.42700.46000.109800.145800.588000 | Shuttering Work | 13d | 2026-05-18 | 2026-05-30 | 129 |  | Sector-44 Noida(2) | 9373794 |
| 133 | 36900.37000.42300.42700.46000.109800.145800.588100 | Reinforcement Work | 10d | 2026-05-28 | 2026-06-06 | 132FS-3d |  | Sector-44 Noida(2) | 9373804 |
| 134 | 36900.37000.42300.42700.46000.109800.145800.588200 | Conduiting work | 1d | 2026-06-06 | 2026-06-06 | 133FS-1d |  | Sector-44 Noida(2) | 9373814 |
| 135 | 36900.37000.42300.42700.46000.109800.145800.588300 | Concreteing work | 1d | 2026-06-07 | 2026-06-07 | 132FF, 133FF, 134 |  | Sector-44 Noida(2) | 9373824 |
| 136 | 36900.37000.42300.42700.46000.109900 | **5th Floor Slab** | 12d | 2026-06-08 | 2026-06-19 |  | start no earlier than 2026-06-08 | Sector-44 Noida(2) | 9362734 |
| 137 | 36900.37000.42300.42700.46000.109900.145700 | **5th Floor Slab** | 12d | 2026-06-08 | 2026-06-19 |  | start no earlier than 2026-06-08 | Sector-44 Noida(2) | 9364404 |
| 138 | 36900.37000.42300.42700.46000.109900.145700.588400 | Shuttering Work | 9d | 2026-06-08 | 2026-06-16 | 135 |  | Sector-44 Noida(2) | 9373834 |
| 139 | 36900.37000.42300.42700.46000.109900.145700.588500 | Reinforcement Work | 5d | 2026-06-14 | 2026-06-18 | 138FS-3d |  | Sector-44 Noida(2) | 9373844 |
| 140 | 36900.37000.42300.42700.46000.109900.145700.588600 | Conduiting work | 1d | 2026-06-18 | 2026-06-18 | 139FS-1d |  | Sector-44 Noida(2) | 9373854 |
| 141 | 36900.37000.42300.42700.46000.109900.145700.588700 | Concreteing work | 1d | 2026-06-19 | 2026-06-19 | 138FF, 139FF, 140 |  | Sector-44 Noida(2) | 9373864 |
| 142 | 36900.37000.42300.42700.46000.110000 | **6th Floor Slab** | 12d | 2026-06-20 | 2026-07-01 |  | start no earlier than 2026-06-20 | Sector-44 Noida(2) | 9362744 |
| 143 | 36900.37000.42300.42700.46000.110000.145600 | **6th Floor Slab** | 12d | 2026-06-20 | 2026-07-01 |  | start no earlier than 2026-06-20 | Sector-44 Noida(2) | 9364414 |
| 144 | 36900.37000.42300.42700.46000.110000.145600.588800 | Shuttering Work | 9d | 2026-06-20 | 2026-06-28 | 141 |  | Sector-44 Noida(2) | 9373874 |
| 145 | 36900.37000.42300.42700.46000.110000.145600.588900 | Reinforcement Work | 5d | 2026-06-26 | 2026-06-30 | 144FS-3d |  | Sector-44 Noida(2) | 9373884 |
| 146 | 36900.37000.42300.42700.46000.110000.145600.589000 | Conduiting work | 1d | 2026-06-30 | 2026-06-30 | 145FS-1d |  | Sector-44 Noida(2) | 9373894 |
| 147 | 36900.37000.42300.42700.46000.110000.145600.589100 | Concreteing work | 1d | 2026-07-01 | 2026-07-01 | 144FF, 145FF, 146 |  | Sector-44 Noida(2) | 9373904 |

| ID | WBS | Task | Duration | Start | Finish | Predecessors | Constraint | Calendar | Unique_Task_ID |
| --- | --- | --- | --- | --- | --- | --- | --- | --- | --- |
| 148 | 36900.37000.42300.42700.46000.110100 | **7th Floor Slab** | 12d | 2026-07-02 | 2026-07-13 |  | start no earlier than 2026-07-02 | Sector-44 Noida(2) | 9362754 |
| 149 | 36900.37000.42300.42700.46000.110100.145500 | **7th Floor Slab** | 12d | 2026-07-02 | 2026-07-13 |  | start no earlier than 2026-07-02 | Sector-44 Noida(2) | 9364424 |
| 150 | 36900.37000.42300.42700.46000.110100.145500.589200 | Shuttering Work | 9d | 2026-07-02 | 2026-07-10 | 147 |  | Sector-44 Noida(2) | 9373914 |
| 151 | 36900.37000.42300.42700.46000.110100.145500.589300 | Reinforcement Work | 5d | 2026-07-08 | 2026-07-12 | 150FS-3d |  | Sector-44 Noida(2) | 9373924 |
| 152 | 36900.37000.42300.42700.46000.110100.145500.589400 | Conduiting work | 1d | 2026-07-12 | 2026-07-12 | 151FS-1d |  | Sector-44 Noida(2) | 9373934 |
| 153 | 36900.37000.42300.42700.46000.110100.145500.589500 | Concreteing work | 1d | 2026-07-13 | 2026-07-13 | 150FF, 151FF, 152 |  | Sector-44 Noida(2) | 9373944 |
| 154 | 36900.37000.42300.42700.46000.110200 | **8th Floor Slab** | 12d | 2026-07-14 | 2026-07-25 |  | start no earlier than 2026-07-14 | Sector-44 Noida(2) | 9362764 |
| 155 | 36900.37000.42300.42700.46000.110200.145400 | **8th Floor Slab** | 12d | 2026-07-14 | 2026-07-25 |  | start no earlier than 2026-07-14 | Sector-44 Noida(2) | 9364434 |
| 156 | 36900.37000.42300.42700.46000.110200.145400.589600 | Shuttering Work | 9d | 2026-07-14 | 2026-07-22 | 153 |  | Sector-44 Noida(2) | 9373954 |
| 157 | 36900.37000.42300.42700.46000.110200.145400.589700 | Reinforcement Work | 5d | 2026-07-20 | 2026-07-24 | 156FS-3d |  | Sector-44 Noida(2) | 9373964 |
| 158 | 36900.37000.42300.42700.46000.110200.145400.589800 | Conduiting work | 1d | 2026-07-24 | 2026-07-24 | 157FS-1d |  | Sector-44 Noida(2) | 9373974 |
| 159 | 36900.37000.42300.42700.46000.110200.145400.589900 | Concreteing work | 1d | 2026-07-25 | 2026-07-25 | 156FF, 157FF, 158 |  | Sector-44 Noida(2) | 9373984 |
| 160 | 36900.37000.42300.42700.46000.110300 | **9th Floor Slab** | 12d | 2026-07-26 | 2026-08-06 |  | start no earlier than 2026-07-26 | Sector-44 Noida(2) | 9362774 |
| 161 | 36900.37000.42300.42700.46000.110300.145300 | **9th Floor Slab** | 12d | 2026-07-26 | 2026-08-06 |  | start no earlier than 2026-07-26 | Sector-44 Noida(2) | 9364444 |
| 162 | 36900.37000.42300.42700.46000.110300.145300.590000 | Shuttering Work | 9d | 2026-07-26 | 2026-08-03 | 159 |  | Sector-44 Noida(2) | 9373994 |
| 163 | 36900.37000.42300.42700.46000.110300.145300.590100 | Reinforcement Work | 5d | 2026-08-01 | 2026-08-05 | 162FS-3d |  | Sector-44 Noida(2) | 9374004 |
| 164 | 36900.37000.42300.42700.46000.110300.145300.590200 | Conduiting work | 1d | 2026-08-05 | 2026-08-05 | 163FS-1d |  | Sector-44 Noida(2) | 9374014 |
| 165 | 36900.37000.42300.42700.46000.110300.145300.590300 | Concreteing work | 1d | 2026-08-06 | 2026-08-06 | 162FF, 163FF, 164 |  | Sector-44 Noida(2) | 9374024 |
| 166 | 36900.37000.42300.42700.46000.110400 | **10th Floor Slab** | 12d | 2026-08-07 | 2026-08-18 |  | start no earlier than 2026-08-07 | Sector-44 Noida(2) | 9362784 |
| 167 | 36900.37000.42300.42700.46000.110400.145200 | **10th Floor Slab** | 12d | 2026-08-07 | 2026-08-18 |  | start no earlier than 2026-08-07 | Sector-44 Noida(2) | 9364454 |
| 168 | 36900.37000.42300.42700.46000.110400.145200.590400 | Shuttering Work | 9d | 2026-08-07 | 2026-08-15 | 165 |  | Sector-44 Noida(2) | 9374034 |
| 169 | 36900.37000.42300.42700.46000.110400.145200.590500 | Reinforcement Work | 5d | 2026-08-13 | 2026-08-17 | 168FS-3d |  | Sector-44 Noida(2) | 9374044 |
| 170 | 36900.37000.42300.42700.46000.110400.145200.590600 | Conduiting work | 1d | 2026-08-17 | 2026-08-17 | 169FS-1d |  | Sector-44 Noida(2) | 9374054 |
| 171 | 36900.37000.42300.42700.46000.110400.145200.590700 | Concreteing work | 1d | 2026-08-18 | 2026-08-18 | 168FF, 169FF, 170 |  | Sector-44 Noida(2) | 9374064 |

| ID | WBS | Task | Duration | Start | Finish | Predecessors | Constraint | Calendar | Unique_Task_ID |
| --- | --- | --- | --- | --- | --- | --- | --- | --- | --- |
| 172 | 36900.37000.42300.42700.46000.110500 | **11th Floor Slab** | 12d | 2026-08-19 | 2026-08-30 |  | start no earlier than 2026-08-19 | Sector-44 Noida(2) | 9362794 |
| 173 | 36900.37000.42300.42700.46000.110500.145100 | **11th Floor Slab** | 12d | 2026-08-19 | 2026-08-30 |  | start no earlier than 2026-08-19 | Sector-44 Noida(2) | 9364464 |
| 174 | 36900.37000.42300.42700.46000.110500.145100.590800 | Shuttering Work | 9d | 2026-08-19 | 2026-08-27 | 171 |  | Sector-44 Noida(2) | 9374074 |
| 175 | 36900.37000.42300.42700.46000.110500.145100.590900 | Reinforcement Work | 5d | 2026-08-25 | 2026-08-29 | 174FS-3d |  | Sector-44 Noida(2) | 9374084 |
| 176 | 36900.37000.42300.42700.46000.110500.145100.591000 | Conduiting work | 1d | 2026-08-29 | 2026-08-29 | 175FS-1d |  | Sector-44 Noida(2) | 9374094 |
| 177 | 36900.37000.42300.42700.46000.110500.145100.591100 | Concreteing work | 1d | 2026-08-30 | 2026-08-30 | 174FF, 175FF, 176 |  | Sector-44 Noida(2) | 9374104 |
| 178 | 36900.37000.42300.42700.46000.110600 | **12th Floor Slab** | 12d | 2026-08-31 | 2026-09-11 |  | start no earlier than 2026-08-31 | Sector-44 Noida(2) | 9362804 |
| 179 | 36900.37000.42300.42700.46000.110600.145000 | **12th Floor Slab** | 12d | 2026-08-31 | 2026-09-11 |  | start no earlier than 2026-08-31 | Sector-44 Noida(2) | 9364474 |
| 180 | 36900.37000.42300.42700.46000.110600.145000.591200 | Shuttering Work | 9d | 2026-08-31 | 2026-09-08 | 177 |  | Sector-44 Noida(2) | 9374114 |
| 181 | 36900.37000.42300.42700.46000.110600.145000.591300 | Reinforcement Work | 5d | 2026-09-06 | 2026-09-10 | 180FS-3d |  | Sector-44 Noida(2) | 9374124 |
| 182 | 36900.37000.42300.42700.46000.110600.145000.591400 | Conduiting work | 1d | 2026-09-10 | 2026-09-10 | 181FS-1d |  | Sector-44 Noida(2) | 9374134 |
| 183 | 36900.37000.42300.42700.46000.110600.145000.591500 | Concreteing work | 1d | 2026-09-11 | 2026-09-11 | 180FF, 181FF, 182 |  | Sector-44 Noida(2) | 9374144 |
| 184 | 36900.37000.42300.42700.46000.110700 | **13th Floor Slab** | 12d | 2026-09-12 | 2026-09-23 |  | start no earlier than 2026-09-12 | Sector-44 Noida(2) | 9362814 |
| 185 | 36900.37000.42300.42700.46000.110700.144900 | **13th Floor Slab** | 12d | 2026-09-12 | 2026-09-23 |  | start no earlier than 2026-09-12 | Sector-44 Noida(2) | 9364484 |
| 186 | 36900.37000.42300.42700.46000.110700.144900.591600 | Shuttering Work | 9d | 2026-09-12 | 2026-09-20 | 183 |  | Sector-44 Noida(2) | 9374154 |
| 187 | 36900.37000.42300.42700.46000.110700.144900.591700 | Reinforcement Work | 5d | 2026-09-18 | 2026-09-22 | 186FS-3d |  | Sector-44 Noida(2) | 9374164 |
| 188 | 36900.37000.42300.42700.46000.110700.144900.591800 | Conduiting work | 1d | 2026-09-22 | 2026-09-22 | 187FS-1d |  | Sector-44 Noida(2) | 9374174 |
| 189 | 36900.37000.42300.42700.46000.110700.144900.591900 | Concreteing work | 1d | 2026-09-23 | 2026-09-23 | 186FF, 187FF, 188 |  | Sector-44 Noida(2) | 9374184 |
| 190 | 36900.37000.42300.42700.46000.110800 | **14th Floor Slab** | 12d | 2026-09-24 | 2026-10-05 |  | start no earlier than 2026-09-24 | Sector-44 Noida(2) | 9362824 |
| 191 | 36900.37000.42300.42700.46000.110800.144800 | **14th Floor Slab** | 12d | 2026-09-24 | 2026-10-05 |  | start no earlier than 2026-09-24 | Sector-44 Noida(2) | 9364494 |
| 192 | 36900.37000.42300.42700.46000.110800.144800.592000 | Shuttering Work | 9d | 2026-09-24 | 2026-10-02 | 189 |  | Sector-44 Noida(2) | 9374194 |
| 193 | 36900.37000.42300.42700.46000.110800.144800.592100 | Reinforcement Work | 5d | 2026-09-30 | 2026-10-04 | 192FS-3d |  | Sector-44 Noida(2) | 9374204 |
| 194 | 36900.37000.42300.42700.46000.110800.144800.592200 | Conduiting work | 1d | 2026-10-04 | 2026-10-04 | 193FS-1d |  | Sector-44 Noida(2) | 9374214 |
| 195 | 36900.37000.42300.42700.46000.110800.144800.592300 | Concreteing work | 1d | 2026-10-05 | 2026-10-05 | 192FF, 193FF, 194 |  | Sector-44 Noida(2) | 9374224 |

| ID | WBS | Task | Duration | Start | Finish | Predecessors | Constraint | Calendar | Unique_Task_ID |
| --- | --- | --- | --- | --- | --- | --- | --- | --- | --- |
| 196 | 36900.37000.42300.42700.46000.110900 | **15th Floor Slab** | 12d | 2026-10-06 | 2026-10-17 |  | start no earlier than 2026-10-06 | Sector-44 Noida(2) | 9362834 |
| 197 | 36900.37000.42300.42700.46000.110900.144700 | **15th Floor Slab** | 12d | 2026-10-06 | 2026-10-17 |  | start no earlier than 2026-10-06 | Sector-44 Noida(2) | 9364504 |
| 198 | 36900.37000.42300.42700.46000.110900.144700.592400 | Shuttering Work | 9d | 2026-10-06 | 2026-10-14 | 195 |  | Sector-44 Noida(2) | 9374234 |
| 199 | 36900.37000.42300.42700.46000.110900.144700.592500 | Reinforcement Work | 5d | 2026-10-12 | 2026-10-16 | 198FS-3d |  | Sector-44 Noida(2) | 9374244 |
| 200 | 36900.37000.42300.42700.46000.110900.144700.592600 | Conduiting work | 1d | 2026-10-16 | 2026-10-16 | 199FS-1d |  | Sector-44 Noida(2) | 9374254 |
| 201 | 36900.37000.42300.42700.46000.110900.144700.592700 | Concreteing work | 1d | 2026-10-17 | 2026-10-17 | 198FF, 199FF, 200 |  | Sector-44 Noida(2) | 9374264 |
| 202 | 36900.37000.42300.42700.46000.111000 | **16th Floor Slab** | 12d | 2026-10-18 | 2026-10-29 |  | start no earlier than 2026-10-18 | Sector-44 Noida(2) | 9362844 |
| 203 | 36900.37000.42300.42700.46000.111000.144600 | **16th Floor Slab** | 12d | 2026-10-18 | 2026-10-29 |  | start no earlier than 2026-10-18 | Sector-44 Noida(2) | 9364514 |
| 204 | 36900.37000.42300.42700.46000.111000.144600.592800 | Shuttering Work | 9d | 2026-10-18 | 2026-10-26 | 201 |  | Sector-44 Noida(2) | 9374274 |
| 205 | 36900.37000.42300.42700.46000.111000.144600.592900 | Reinforcement Work | 5d | 2026-10-24 | 2026-10-28 | 204FS-3d |  | Sector-44 Noida(2) | 9374284 |
| 206 | 36900.37000.42300.42700.46000.111000.144600.593000 | Conduiting work | 1d | 2026-10-28 | 2026-10-28 | 205FS-1d |  | Sector-44 Noida(2) | 9374294 |
| 207 | 36900.37000.42300.42700.46000.111000.144600.593100 | Concreteing work | 1d | 2026-10-29 | 2026-10-29 | 204FF, 205FF, 206 |  | Sector-44 Noida(2) | 9374304 |
| 208 | 36900.37000.42300.42700.46000.111100 | **17th Floor Slab** | 18d | 2026-10-30 | 2026-12-31 |  | start no earlier than 2026-10-30 | Sector-44 Noida(2) | 9362854 |
| 209 | 36900.37000.42300.42700.46000.111100.144500 | **17th Floor Slab** | 18d | 2026-10-30 | 2026-12-31 |  | start no earlier than 2026-10-30 | Sector-44 Noida(2) | 9364524 |
| 210 | 36900.37000.42300.42700.46000.111100.144500.593200 | Shuttering Work | 11d | 2026-10-30 | 2026-12-24 | 207 |  | Sector-44 Noida(2) | 9374314 |
| 211 | 36900.37000.42300.42700.46000.111100.144500.593300 | Reinforcement Work | 9d | 2026-12-22 | 2026-12-30 | 210FS-3d |  | Sector-44 Noida(2) | 9374324 |
| 212 | 36900.37000.42300.42700.46000.111100.144500.593400 | Conduiting work | 1d | 2026-12-30 | 2026-12-30 | 211FS-1d |  | Sector-44 Noida(2) | 9374334 |
| 213 | 36900.37000.42300.42700.46000.111100.144500.593500 | Concreteing work | 1d | 2026-12-31 | 2026-12-31 | 210FF, 211FF, 212 |  | Sector-44 Noida(2) | 9374344 |
| 214 | 36900.37000.42300.42700.46000.111200 | **18th Floor Slab** | 12d | 2027-01-01 | 2027-01-12 |  | start no earlier than 2027-01-01 | Sector-44 Noida(2) | 9362864 |
| 215 | 36900.37000.42300.42700.46000.111200.144400 | **18th Floor Slab** | 12d | 2027-01-01 | 2027-01-12 |  | start no earlier than 2027-01-01 | Sector-44 Noida(2) | 9364534 |
| 216 | 36900.37000.42300.42700.46000.111200.144400.593600 | Shuttering Work | 9d | 2027-01-01 | 2027-01-09 | 213 |  | Sector-44 Noida(2) | 9374354 |
| 217 | 36900.37000.42300.42700.46000.111200.144400.593700 | Reinforcement Work | 5d | 2027-01-07 | 2027-01-11 | 216FS-3d |  | Sector-44 Noida(2) | 9374364 |
| 218 | 36900.37000.42300.42700.46000.111200.144400.593800 | Conduiting work | 1d | 2027-01-11 | 2027-01-11 | 217FS-1d |  | Sector-44 Noida(2) | 9374374 |
| 219 | 36900.37000.42300.42700.46000.111200.144400.593900 | Concreteing work | 1d | 2027-01-12 | 2027-01-12 | 216FF, 217FF, 218 |  | Sector-44 Noida(2) | 9374384 |

| ID | WBS | Task | Duration | Start | Finish | Predecessors | Constraint | Calendar | Unique_Task_ID |
| --- | --- | --- | --- | --- | --- | --- | --- | --- | --- |
| 220 | 36900.37000.42300.42700.46000.111300 | **19th Floor Slab** | 12d | 2027-01-13 | 2027-01-24 |  | start no earlier than 2027-01-13 | Sector-44 Noida(2) | 9362874 |
| 221 | 36900.37000.42300.42700.46000.111300.144300 | **19th Floor Slab** | 12d | 2027-01-13 | 2027-01-24 |  | start no earlier than 2027-01-13 | Sector-44 Noida(2) | 9364544 |
| 222 | 36900.37000.42300.42700.46000.111300.144300.594000 | Shuttering Work | 9d | 2027-01-13 | 2027-01-21 | 219 |  | Sector-44 Noida(2) | 9374394 |
| 223 | 36900.37000.42300.42700.46000.111300.144300.594100 | Reinforcement Work | 5d | 2027-01-19 | 2027-01-23 | 222FS-3d |  | Sector-44 Noida(2) | 9374404 |
| 224 | 36900.37000.42300.42700.46000.111300.144300.594200 | Conduiting work | 1d | 2027-01-23 | 2027-01-23 | 223FS-1d |  | Sector-44 Noida(2) | 9374414 |
| 225 | 36900.37000.42300.42700.46000.111300.144300.594300 | Concreteing work | 1d | 2027-01-24 | 2027-01-24 | 222FF, 223FF, 224 |  | Sector-44 Noida(2) | 9374424 |
| 226 | 36900.37000.42300.42700.46000.111400 | **20th Floor Slab** | 12d | 2027-01-25 | 2027-02-05 |  | start no earlier than 2027-01-25 | Sector-44 Noida(2) | 9362884 |
| 227 | 36900.37000.42300.42700.46000.111400.144200 | **20th Floor Slab** | 12d | 2027-01-25 | 2027-02-05 |  | start no earlier than 2027-01-25 | Sector-44 Noida(2) | 9364554 |
| 228 | 36900.37000.42300.42700.46000.111400.144200.594400 | Shuttering Work | 9d | 2027-01-25 | 2027-02-02 | 225 |  | Sector-44 Noida(2) | 9374434 |
| 229 | 36900.37000.42300.42700.46000.111400.144200.594500 | Reinforcement Work | 5d | 2027-01-31 | 2027-02-04 | 228FS-3d |  | Sector-44 Noida(2) | 9374444 |
| 230 | 36900.37000.42300.42700.46000.111400.144200.594600 | Conduiting work | 1d | 2027-02-04 | 2027-02-04 | 229FS-1d |  | Sector-44 Noida(2) | 9374454 |
| 231 | 36900.37000.42300.42700.46000.111400.144200.594700 | Concreteing work | 1d | 2027-02-05 | 2027-02-05 | 228FF, 229FF, 230 |  | Sector-44 Noida(2) | 9374464 |
| 232 | 36900.37000.42300.42700.46000.111500 | **21st Floor Slab** | 12d | 2027-02-06 | 2027-02-17 |  | start no earlier than 2027-02-06 | Sector-44 Noida(2) | 9362894 |
| 233 | 36900.37000.42300.42700.46000.111500.144100 | **21st Floor Slab** | 12d | 2027-02-06 | 2027-02-17 |  | start no earlier than 2027-02-06 | Sector-44 Noida(2) | 9364564 |
| 234 | 36900.37000.42300.42700.46000.111500.144100.594800 | Shuttering Work | 9d | 2027-02-06 | 2027-02-14 | 231 |  | Sector-44 Noida(2) | 9374474 |
| 235 | 36900.37000.42300.42700.46000.111500.144100.594900 | Reinforcement Work | 5d | 2027-02-12 | 2027-02-16 | 234FS-3d |  | Sector-44 Noida(2) | 9374484 |
| 236 | 36900.37000.42300.42700.46000.111500.144100.595000 | Conduiting work | 1d | 2027-02-16 | 2027-02-16 | 235FS-1d |  | Sector-44 Noida(2) | 9374494 |
| 237 | 36900.37000.42300.42700.46000.111500.144100.595100 | Concreteing work | 1d | 2027-02-17 | 2027-02-17 | 234FF, 235FF, 236 |  | Sector-44 Noida(2) | 9374504 |
| 238 | 36900.37000.42300.42700.46000.111600 | **22nd Floor Slab** | 12d | 2027-02-18 | 2027-03-01 |  | start no earlier than 2027-02-18 | Sector-44 Noida(2) | 9362904 |
| 239 | 36900.37000.42300.42700.46000.111600.144000 | **22nd Floor Slab** | 12d | 2027-02-18 | 2027-03-01 |  | start no earlier than 2027-02-18 | Sector-44 Noida(2) | 9364574 |
| 240 | 36900.37000.42300.42700.46000.111600.144000.595200 | Shuttering Work | 9d | 2027-02-18 | 2027-02-26 | 237 |  | Sector-44 Noida(2) | 9374514 |
| 241 | 36900.37000.42300.42700.46000.111600.144000.595300 | Reinforcement Work | 5d | 2027-02-24 | 2027-02-28 | 240FS-3d |  | Sector-44 Noida(2) | 9374524 |
| 242 | 36900.37000.42300.42700.46000.111600.144000.595400 | Conduiting work | 1d | 2027-02-28 | 2027-02-28 | 241FS-1d |  | Sector-44 Noida(2) | 9374534 |
| 243 | 36900.37000.42300.42700.46000.111600.144000.595500 | Concreteing work | 1d | 2027-03-01 | 2027-03-01 | 240FF, 241FF, 242 |  | Sector-44 Noida(2) | 9374544 |

| ID | WBS | Task | Duration | Start | Finish | Predecessors | Constraint | Calendar | Unique_Task_ID |
| --- | --- | --- | --- | --- | --- | --- | --- | --- | --- |
| 244 | 36900.37000.42300.42700.46000.111700 | **23rd Floor Slab** | 12d | 2027-03-02 | 2027-03-13 |  | start no earlier than 2027-03-02 | Sector-44 Noida(2) | 9362914 |
| 245 | 36900.37000.42300.42700.46000.111700.143900 | **23rd Floor Slab** | 12d | 2027-03-02 | 2027-03-13 |  | start no earlier than 2027-03-02 | Sector-44 Noida(2) | 9364584 |
| 246 | 36900.37000.42300.42700.46000.111700.143900.595600 | Shuttering Work | 9d | 2027-03-02 | 2027-03-10 | 243 |  | Sector-44 Noida(2) | 9374554 |
| 247 | 36900.37000.42300.42700.46000.111700.143900.595700 | Reinforcement Work | 5d | 2027-03-08 | 2027-03-12 | 246FS-3d |  | Sector-44 Noida(2) | 9374564 |
| 248 | 36900.37000.42300.42700.46000.111700.143900.595800 | Conduiting work | 1d | 2027-03-12 | 2027-03-12 | 247FS-1d |  | Sector-44 Noida(2) | 9374574 |
| 249 | 36900.37000.42300.42700.46000.111700.143900.595900 | Concreteing work | 1d | 2027-03-13 | 2027-03-13 | 246FF, 247FF, 248 |  | Sector-44 Noida(2) | 9374584 |
| 250 | 36900.37000.42300.42700.46000.111800 | **Terrace Slab** | 25d | 2027-03-14 | 2027-04-07 |  | start no earlier than 2027-03-14 | Sector-44 Noida(2) | 9362924 |
| 251 | 36900.37000.42300.42700.46000.111800.143800 | **Terrace Slab** | 25d | 2027-03-14 | 2027-04-07 |  | start no earlier than 2027-03-14 | Sector-44 Noida(2) | 9364594 |
| 252 | 36900.37000.42300.42700.46000.111800.143800.596000 | Shuttering Work | 17d | 2027-03-14 | 2027-03-30 | 249 |  | Sector-44 Noida(2) | 9374594 |
| 253 | 36900.37000.42300.42700.46000.111800.143800.596100 | Reinforcement Work | 11d | 2027-03-27 | 2027-04-06 | 252FS-4d |  | Sector-44 Noida(2) | 9374604 |
| 254 | 36900.37000.42300.42700.46000.111800.143800.596200 | Conduiting work | 1d | 2027-04-06 | 2027-04-06 | 253FS-1d |  | Sector-44 Noida(2) | 9374614 |
| 255 | 36900.37000.42300.42700.46000.111800.143800.596300 | Concreteing work | 1d | 2027-04-07 | 2027-04-07 | 252FF, 253FF, 254 |  | Sector-44 Noida(2) | 9374624 |
| 256 | 36900.37000.42300.42700.46000.111900 | **Terrace to LMR Floor** | 11d | 2027-04-08 | 2027-04-18 |  | start no earlier than 2027-04-08 | Sector-44 Noida(2) | 9362934 |
| 257 | 36900.37000.42300.42700.46000.111900.143700 | **LMR Floor Slab** | 11d | 2027-04-08 | 2027-04-18 |  | start no earlier than 2027-04-08 | Sector-44 Noida(2) | 9364604 |
| 258 | 36900.37000.42300.42700.46000.111900.143700.596400 | Shuttering Work | 8d | 2027-04-08 | 2027-04-15 | 255 |  | Sector-44 Noida(2) | 9374634 |
| 259 | 36900.37000.42300.42700.46000.111900.143700.596500 | Reinforcement Work | 4d | 2027-04-14 | 2027-04-17 | 258FS-2d |  | Sector-44 Noida(2) | 9374644 |
| 260 | 36900.37000.42300.42700.46000.111900.143700.596600 | Conduiting work | 1d | 2027-04-17 | 2027-04-17 | 259FS-1d |  | Sector-44 Noida(2) | 9374654 |
| 261 | 36900.37000.42300.42700.46000.111900.143700.596700 | Concreteing work | 1d | 2027-04-18 | 2027-04-18 | 258FF, 259FF, 260 |  | Sector-44 Noida(2) | 9374664 |
| 262 | 36900.37000.42300.42700.46000.112000 | **LMR Floor to LMR Roof** | 11d | 2027-04-19 | 2027-04-29 |  | start no earlier than 2027-04-19 | Sector-44 Noida(2) | 9362944 |
| 263 | 36900.37000.42300.42700.46000.112000.143600 | **LMR Roof Slab** | 11d | 2027-04-19 | 2027-04-29 |  | start no earlier than 2027-04-19 | Sector-44 Noida(2) | 9364614 |
| 264 | 36900.37000.42300.42700.46000.112000.143600.596800 | Shuttering Work | 8d | 2027-04-19 | 2027-04-26 | 261 |  | Sector-44 Noida(2) | 9374674 |
| 265 | 36900.37000.42300.42700.46000.112000.143600.596900 | Reinforcement Work | 4d | 2027-04-25 | 2027-04-28 | 264FS-2d |  | Sector-44 Noida(2) | 9374684 |
| 266 | 36900.37000.42300.42700.46000.112000.143600.597000 | Conduiting work | 1d | 2027-04-28 | 2027-04-28 | 265FS-1d |  | Sector-44 Noida(2) | 9374694 |
| 267 | 36900.37000.42300.42700.46000.112000.143600.597100 | Concreteing work | 1d | 2027-04-29 | 2027-04-29 | 264FF, 265FF, 266 |  | Sector-44 Noida(2) | 9374704 |

| ID | WBS | Task | Duration | Start | Finish | Predecessors | Constraint | Calendar | Unique_Task_ID |
| --- | --- | --- | --- | --- | --- | --- | --- | --- | --- |
| 268 | 36900.37000.42300.42700.46000.129800 | **OHT & Roof Features** | 18d | 2027-04-30 | 2027-05-17 |  | start no earlier than 2027-04-30 | Sector-44 Noida(2) | 9364194 |
| 269 | 36900.37000.42300.42700.46000.129800.186100 | **OHT & Roof Features** | 18d | 2027-04-30 | 2027-05-17 |  | start no earlier than 2027-04-30 | Sector-44 Noida(2) | 9365784 |
| 270 | 36900.37000.42300.42700.46000.129800.186100.597200 | Reinforcement Work | 11d | 2027-04-30 | 2027-05-10 | 267 |  | Sector-44 Noida(2) | 9374714 |
| 271 | 36900.37000.42300.42700.46000.129800.186100.597300 | Shuttering work | 9d | 2027-05-09 | 2027-05-17 | 270FS-2d |  | Sector-44 Noida(2) | 9374724 |
| 272 | 36900.37000.42300.42700.46000.129800.186100.597400 | Concreteing work | 7d | 2027-05-11 | 2027-05-17 | 270FF, 271FF |  | Sector-44 Noida(2) | 9374734 |
| 273 | 36900.37000.42300.42700.47500 | **Post Pour Works** | 303d | 2026-05-18 | 2027-04-30 |  | start no earlier than 2026-05-18 | Sector-44 Noida(2) | 9360864 |
| 274 | 36900.37000.42300.42700.47500.277500 | 1st Floor | 8d | 2026-05-18 | 2026-05-25 | 129 |  | Sector-44 Noida(2) | 9366624 |
| 275 | 36900.37000.42300.42700.47500.277600 | 2nd Floor | 8d | 2026-06-08 | 2026-06-15 | 274, 135 |  | Sector-44 Noida(2) | 9366634 |
| 276 | 36900.37000.42300.42700.47500.277700 | 3rd Floor | 8d | 2026-06-20 | 2026-06-27 | 275, 141 |  | Sector-44 Noida(2) | 9366644 |
| 277 | 36900.37000.42300.42700.47500.277800 | 4th Floor | 8d | 2026-07-02 | 2026-07-09 | 276, 147 |  | Sector-44 Noida(2) | 9366654 |
| 278 | 36900.37000.42300.42700.47500.277900 | 5th Floor | 8d | 2026-07-14 | 2026-07-21 | 277, 153 |  | Sector-44 Noida(2) | 9366664 |
| 279 | 36900.37000.42300.42700.47500.278000 | 6th Floor | 8d | 2026-07-26 | 2026-08-02 | 278, 159 |  | Sector-44 Noida(2) | 9366674 |
| 280 | 36900.37000.42300.42700.47500.278100 | 7th Floor | 8d | 2026-08-03 | 2026-08-10 | 279 |  | Sector-44 Noida(2) | 9366684 |
| 281 | 36900.37000.42300.42700.47500.278200 | 8th Floor | 8d | 2026-08-31 | 2026-09-07 | 280, 177 |  | Sector-44 Noida(2) | 9366694 |
| 282 | 36900.37000.42300.42700.47500.278300 | 9th Floor | 8d | 2026-09-12 | 2026-09-19 | 281, 183 |  | Sector-44 Noida(2) | 9366704 |
| 283 | 36900.37000.42300.42700.47500.278400 | 10th Floor | 8d | 2026-09-24 | 2026-10-01 | 282, 189 |  | Sector-44 Noida(2) | 9366714 |
| 284 | 36900.37000.42300.42700.47500.278500 | 11th Floor | 8d | 2026-10-06 | 2026-10-13 | 283, 195 |  | Sector-44 Noida(2) | 9366724 |
| 285 | 36900.37000.42300.42700.47500.278600 | 12th Floor | 8d | 2026-10-18 | 2026-10-25 | 284, 201 |  | Sector-44 Noida(2) | 9366734 |
| 286 | 36900.37000.42300.42700.47500.278700 | 13th Floor | 8d | 2026-10-30 | 2026-12-21 | 285, 207 |  | Sector-44 Noida(2) | 9366744 |
| 287 | 36900.37000.42300.42700.47500.278800 | 14th Floor | 8d | 2027-01-01 | 2027-01-08 | 286, 213 |  | Sector-44 Noida(2) | 9366754 |
| 288 | 36900.37000.42300.42700.47500.278900 | 15th Floor | 8d | 2027-01-13 | 2027-01-20 | 287, 219 |  | Sector-44 Noida(2) | 9366764 |
| 289 | 36900.37000.42300.42700.47500.279000 | 16th Floor | 8d | 2027-01-25 | 2027-02-01 | 288, 225 |  | Sector-44 Noida(2) | 9366774 |
| 290 | 36900.37000.42300.42700.47500.279100 | 17th Floor | 8d | 2027-02-06 | 2027-02-13 | 289, 231 |  | Sector-44 Noida(2) | 9366784 |
| 291 | 36900.37000.42300.42700.47500.279200 | 18th Floor | 8d | 2027-02-18 | 2027-02-25 | 290, 237 |  | Sector-44 Noida(2) | 9366794 |
| 292 | 36900.37000.42300.42700.47500.279300 | 19th Floor | 8d | 2027-03-02 | 2027-03-09 | 291, 243 |  | Sector-44 Noida(2) | 9366804 |
| 293 | 36900.37000.42300.42700.47500.279400 | 20th Floor | 7d | 2027-03-14 | 2027-03-20 | 292, 249 |  | Sector-44 Noida(2) | 9366814 |
| 294 | 36900.37000.42300.42700.47500.279500 | 21st Floor | 7d | 2027-03-21 | 2027-03-27 | 293 |  | Sector-44 Noida(2) | 9366824 |
| 295 | 36900.37000.42300.42700.47500.279600 | 22nd Floor | 7d | 2027-03-28 | 2027-04-03 | 294 |  | Sector-44 Noida(2) | 9366834 |
| 296 | 36900.37000.42300.42700.47500.279700 | 23rd Floor | 7d | 2027-04-04 | 2027-04-10 | 295 |  | Sector-44 Noida(2) | 9366844 |
| 297 | 36900.37000.42300.42700.47500.279800 | Terrace Floor | 10d | 2027-04-11 | 2027-04-20 | 296 |  | Sector-44 Noida(2) | 9366854 |
| 298 | 36900.37000.42300.42700.47500.279900 | LMR, OHT & Roof Feauters | 10d | 2027-04-21 | 2027-04-30 | 297 |  | Sector-44 Noida(2) | 9366864 |

| ID | WBS | Task | Duration | Start | Finish | Predecessors | Constraint | Calendar | Unique_Task_ID |
| --- | --- | --- | --- | --- | --- | --- | --- | --- | --- |
| 299 | 36900.37000.42300.42700.43000 | **Finishing works** | 408d | 2026-07-25 | 2027-10-20 |  | start no earlier than 2026-07-25 | Sector-44 Noida(2) | 9360744 |
| 300 | 36900.37000.42300.42700.43000.44500 | **Flat finishings** | 408d | 2026-07-25 | 2027-10-20 |  | start no earlier than 2026-07-25 | Sector-44 Noida(2) | 9360794 |
| 301 | 36900.37000.42300.42700.43000.44500.48600 | **1st Floor** | 107d | 2026-07-25 | 2026-12-23 |  | start no earlier than 2026-07-25 | Sector-44 Noida(2) | 9361164 |
| 302 | 36900.37000.42300.42700.43000.44500.48600.597500 | Block Work | 15d | 2026-07-25 | 2026-08-08 | 274FS+60d |  | Sector-44 Noida(2) | 9374744 |
| 303 | 36900.37000.42300.42700.43000.44500.48600.597600 | Installation of temporary Main door | 5d | 2026-08-09 | 2026-08-13 | 302 |  | Sector-44 Noida(2) | 9374754 |
| 304 | 36900.37000.42300.42700.43000.44500.48600.597700 | Fire sprinkler pipe fixing | 5d | 2026-08-09 | 2026-08-13 | 302 |  | Sector-44 Noida(2) | 9374764 |
| 305 | 36900.37000.42300.42700.43000.44500.48600.597800 | Internal Plumbing Works | 9d | 2026-08-09 | 2026-08-17 | 302 |  | Sector-44 Noida(2) | 9374774 |
| 306 | 36900.37000.42300.42700.43000.44500.48600.597900 | Waterproofing | 10d | 2026-08-14 | 2026-08-23 | 305SS+5d |  | Sector-44 Noida(2) | 9374784 |
| 307 | 36900.37000.42300.42700.43000.44500.48600.598000 | Internal Plaster | 14d | 2026-07-30 | 2026-08-12 | 302SS+5d |  | Sector-44 Noida(2) | 9374794 |
| 308 | 36900.37000.42300.42700.43000.44500.48600.598100 | IPS flooring work | 13d | 2026-08-09 | 2026-08-21 | 302 |  | Sector-44 Noida(2) | 9374804 |
| 309 | 36900.37000.42300.42700.43000.44500.48600.598200 | Toilet dado work | 12d | 2026-08-24 | 2026-09-04 | 305, 306, 307 |  | Sector-44 Noida(2) | 9374814 |
| 310 | 36900.37000.42300.42700.43000.44500.48600.598300 | Toilet flooring work | 12d | 2026-08-29 | 2026-09-09 | 309SS+5d |  | Sector-44 Noida(2) | 9374824 |
| 311 | 36900.37000.42300.42700.43000.44500.48600.598400 | Living dinning flooring | 18d | 2026-09-10 | 2026-09-27 | 308, 310 |  | Sector-44 Noida(2) | 9374834 |
| 312 | 36900.37000.42300.42700.43000.44500.48600.598500 | Electrical wiring work | 12d | 2026-09-18 | 2026-09-29 | 311FS-10d |  | Sector-44 Noida(2) | 9374844 |
| 313 | 36900.37000.42300.42700.43000.44500.48600.598600 | Aluminium door-window fixing | 8d | 2026-09-30 | 2026-10-07 | 303, 312 |  | Sector-44 Noida(2) | 9374854 |
| 314 | 36900.37000.42300.42700.43000.44500.48600.598700 | Putty primer coat | 12d | 2026-09-30 | 2026-10-11 | 313FS-8d |  | Sector-44 Noida(2) | 9374864 |
| 315 | 36900.37000.42300.42700.43000.44500.48600.598800 | Prehung door fixing | 10d | 2026-10-07 | 2026-10-16 | 314FS-5d |  | Sector-44 Noida(2) | 9374874 |
| 316 | 36900.37000.42300.42700.43000.44500.48600.598900 | Painting 1st coat | 13d | 2026-10-17 | 2026-10-29 | 315 |  | Sector-44 Noida(2) | 9374884 |
| 317 | 36900.37000.42300.42700.43000.44500.48600.599000 | False Ceiling panel fixing | 10d | 2026-10-30 | 2026-12-23 | 316 |  | Sector-44 Noida(2) | 9374894 |
| 318 | 36900.37000.42300.42700.43000.44500.48700 | **2nd Floor** | 118d | 2026-08-15 | 2027-01-24 |  | start no earlier than 2026-08-15 | Sector-44 Noida(2) | 9361134 |
| 319 | 36900.37000.42300.42700.43000.44500.48700.599100 | Block Work | 15d | 2026-08-15 | 2026-08-29 | 275FS+60d |  | Sector-44 Noida(2) | 9374904 |
| 320 | 36900.37000.42300.42700.43000.44500.48700.599200 | Installation of temporary Main door | 5d | 2026-08-30 | 2026-09-03 | 319 |  | Sector-44 Noida(2) | 9374914 |
| 321 | 36900.37000.42300.42700.43000.44500.48700.599300 | Fire sprinkler pipe fixing | 5d | 2026-08-30 | 2026-09-03 | 304, 319 |  | Sector-44 Noida(2) | 9374924 |
| 322 | 36900.37000.42300.42700.43000.44500.48700.599400 | Internal Plumbing Works | 9d | 2026-08-30 | 2026-09-07 | 319 |  | Sector-44 Noida(2) | 9374934 |
| 323 | 36900.37000.42300.42700.43000.44500.48700.599500 | Waterproofing | 10d | 2026-09-08 | 2026-09-17 | 322 |  | Sector-44 Noida(2) | 9374944 |
| 324 | 36900.37000.42300.42700.43000.44500.48700.599600 | Internal Plaster | 14d | 2026-08-20 | 2026-09-02 | 319SS+5d |  | Sector-44 Noida(2) | 9374954 |
| 325 | 36900.37000.42300.42700.43000.44500.48700.599700 | IPS flooring work | 13d | 2026-08-30 | 2026-09-11 | 319 |  | Sector-44 Noida(2) | 9374964 |
| 326 | 36900.37000.42300.42700.43000.44500.48700.599800 | Toilet dado work | 12d | 2026-09-18 | 2026-09-29 | 322, 323, 324 |  | Sector-44 Noida(2) | 9374974 |
| 327 | 36900.37000.42300.42700.43000.44500.48700.599900 | Toilet flooring work | 12d | 2026-09-30 | 2026-10-11 | 326 |  | Sector-44 Noida(2) | 9374984 |
| 328 | 36900.37000.42300.42700.43000.44500.48700.600000 | Living dinning flooring | 18d | 2026-10-12 | 2026-10-29 | 325, 327 |  | Sector-44 Noida(2) | 9374994 |
| 329 | 36900.37000.42300.42700.43000.44500.48700.600100 | Electrical wiring work | 12d | 2026-10-20 | 2026-10-31 | 328FS-10d |  | Sector-44 Noida(2) | 9375004 |
| 330 | 36900.37000.42300.42700.43000.44500.48700.600200 | Aluminium door-window fixing | 8d | 2026-12-16 | 2026-12-23 | 314, 320, 329 |  | Sector-44 Noida(2) | 9375014 |
| 331 | 36900.37000.42300.42700.43000.44500.48700.600300 | Putty primer coat | 12d | 2026-12-16 | 2026-12-27 | 330FS-8d |  | Sector-44 Noida(2) | 9375024 |
| 332 | 36900.37000.42300.42700.43000.44500.48700.600400 | Prehung door fixing | 10d | 2026-12-23 | 2027-01-01 | 331FS-5d |  | Sector-44 Noida(2) | 9375034 |
| 333 | 36900.37000.42300.42700.43000.44500.48700.600500 | Painting 1st coat | 13d | 2027-01-02 | 2027-01-14 | 332 |  | Sector-44 Noida(2) | 9375044 |
| 334 | 36900.37000.42300.42700.43000.44500.48700.600600 | False Ceiling panel fixing | 10d | 2027-01-15 | 2027-01-24 | 317, 333 |  | Sector-44 Noida(2) | 9375054 |

| ID | WBS | Task | Duration | Start | Finish | Predecessors | Constraint | Calendar | Unique_Task_ID |
| --- | --- | --- | --- | --- | --- | --- | --- | --- | --- |
| 335 | 36900.37000.42300.42700.43000.44500.48800 | **3rd Floor** | 118d | 2026-08-27 | 2027-02-05 |  | start no earlier than 2026-08-27 | Sector-44 Noida(2) | 9361124 |
| 336 | 36900.37000.42300.42700.43000.44500.48800.600700 | Block Work | 15d | 2026-08-27 | 2026-09-10 | 276FS+60d |  | Sector-44 Noida(2) | 9375064 |
| 337 | 36900.37000.42300.42700.43000.44500.48800.600800 | Installation of temporary Main door | 5d | 2026-09-11 | 2026-09-15 | 336 |  | Sector-44 Noida(2) | 9375074 |
| 338 | 36900.37000.42300.42700.43000.44500.48800.600900 | Fire sprinkler pipe fixing | 5d | 2026-09-11 | 2026-09-15 | 321, 336 |  | Sector-44 Noida(2) | 9375084 |
| 339 | 36900.37000.42300.42700.43000.44500.48800.601000 | Internal Plumbing Works | 9d | 2026-09-11 | 2026-09-19 | 336 |  | Sector-44 Noida(2) | 9375094 |
| 340 | 36900.37000.42300.42700.43000.44500.48800.601100 | Waterproofing | 10d | 2026-09-20 | 2026-09-29 | 339 |  | Sector-44 Noida(2) | 9375104 |
| 341 | 36900.37000.42300.42700.43000.44500.48800.601200 | Internal Plaster | 14d | 2026-09-01 | 2026-09-14 | 336SS+5d |  | Sector-44 Noida(2) | 9375114 |
| 342 | 36900.37000.42300.42700.43000.44500.48800.601300 | IPS flooring work | 13d | 2026-09-11 | 2026-09-23 | 336 |  | Sector-44 Noida(2) | 9375124 |
| 343 | 36900.37000.42300.42700.43000.44500.48800.601400 | Toilet dado work | 12d | 2026-09-30 | 2026-10-11 | 339, 340, 341 |  | Sector-44 Noida(2) | 9375134 |
| 344 | 36900.37000.42300.42700.43000.44500.48800.601500 | Toilet flooring work | 12d | 2026-10-12 | 2026-10-23 | 343 |  | Sector-44 Noida(2) | 9375144 |
| 345 | 36900.37000.42300.42700.43000.44500.48800.601600 | Living dinning flooring | 18d | 2026-10-24 | 2026-12-25 | 342, 344 |  | Sector-44 Noida(2) | 9375154 |
| 346 | 36900.37000.42300.42700.43000.44500.48800.601700 | Electrical wiring work | 12d | 2026-12-16 | 2026-12-27 | 345FS-10d |  | Sector-44 Noida(2) | 9375164 |
| 347 | 36900.37000.42300.42700.43000.44500.48800.601800 | Aluminium door-window fixing | 8d | 2026-12-28 | 2027-01-04 | 330, 337, 346 |  | Sector-44 Noida(2) | 9375174 |
| 348 | 36900.37000.42300.42700.43000.44500.48800.601900 | Putty primer coat | 12d | 2026-12-28 | 2027-01-08 | 347FS-8d |  | Sector-44 Noida(2) | 9375184 |
| 349 | 36900.37000.42300.42700.43000.44500.48800.602000 | Prehung door fixing | 10d | 2027-01-04 | 2027-01-13 | 348FS-5d |  | Sector-44 Noida(2) | 9375194 |
| 350 | 36900.37000.42300.42700.43000.44500.48800.602100 | Painting 1st coat | 13d | 2027-01-14 | 2027-01-26 | 349 |  | Sector-44 Noida(2) | 9375204 |
| 351 | 36900.37000.42300.42700.43000.44500.48800.602200 | False Ceiling panel fixing | 10d | 2027-01-27 | 2027-02-05 | 334, 350 |  | Sector-44 Noida(2) | 9375214 |
| 352 | 36900.37000.42300.42700.43000.44500.48900 | **4th Floor** | 124d | 2026-09-08 | 2027-02-23 |  | start no earlier than 2026-09-08 | Sector-44 Noida(2) | 9361084 |
| 353 | 36900.37000.42300.42700.43000.44500.48900.602300 | Block Work | 15d | 2026-09-08 | 2026-09-22 | 277FS+60d |  | Sector-44 Noida(2) | 9375224 |
| 354 | 36900.37000.42300.42700.43000.44500.48900.602400 | Installation of temporary Main door | 5d | 2026-09-23 | 2026-09-27 | 353 |  | Sector-44 Noida(2) | 9375234 |
| 355 | 36900.37000.42300.42700.43000.44500.48900.602500 | Fire sprinkler pipe fixing | 5d | 2026-09-23 | 2026-09-27 | 338, 353 |  | Sector-44 Noida(2) | 9375244 |
| 356 | 36900.37000.42300.42700.43000.44500.48900.602600 | Internal Plumbing Works | 9d | 2026-09-23 | 2026-10-01 | 353 |  | Sector-44 Noida(2) | 9375254 |
| 357 | 36900.37000.42300.42700.43000.44500.48900.602700 | Waterproofing | 10d | 2026-10-02 | 2026-10-11 | 356 |  | Sector-44 Noida(2) | 9375264 |
| 358 | 36900.37000.42300.42700.43000.44500.48900.602800 | Internal Plaster | 14d | 2026-10-12 | 2026-10-25 | 356, 357 |  | Sector-44 Noida(2) | 9375274 |
| 359 | 36900.37000.42300.42700.43000.44500.48900.602900 | IPS flooring work | 13d | 2026-09-23 | 2026-10-05 | 353 |  | Sector-44 Noida(2) | 9375284 |
| 360 | 36900.37000.42300.42700.43000.44500.48900.603000 | Toilet dado work | 12d | 2026-10-26 | 2026-12-21 | 356, 357, 358 |  | Sector-44 Noida(2) | 9375294 |
| 361 | 36900.37000.42300.42700.43000.44500.48900.603100 | Toilet flooring work | 12d | 2026-12-22 | 2027-01-02 | 360 |  | Sector-44 Noida(2) | 9375304 |
| 362 | 36900.37000.42300.42700.43000.44500.48900.603200 | Living dinning flooring | 18d | 2027-01-03 | 2027-01-20 | 359, 361 |  | Sector-44 Noida(2) | 9375314 |
| 363 | 36900.37000.42300.42700.43000.44500.48900.603300 | Electrical wiring work | 12d | 2027-01-11 | 2027-01-22 | 362FS-10d |  | Sector-44 Noida(2) | 9375324 |
| 364 | 36900.37000.42300.42700.43000.44500.48900.603400 | Aluminium door-window fixing | 8d | 2027-01-15 | 2027-01-22 | 354, 363FS-8d |  | Sector-44 Noida(2) | 9375334 |
| 365 | 36900.37000.42300.42700.43000.44500.48900.603500 | Putty primer coat | 12d | 2027-01-15 | 2027-01-26 | 364FS-8d |  | Sector-44 Noida(2) | 9375344 |
| 366 | 36900.37000.42300.42700.43000.44500.48900.603600 | Prehung door fixing | 10d | 2027-01-22 | 2027-01-31 | 365FS-5d |  | Sector-44 Noida(2) | 9375354 |
| 367 | 36900.37000.42300.42700.43000.44500.48900.603700 | Painting 1st coat | 13d | 2027-02-01 | 2027-02-13 | 366 |  | Sector-44 Noida(2) | 9375364 |
| 368 | 36900.37000.42300.42700.43000.44500.48900.603800 | False Ceiling panel fixing | 10d | 2027-02-14 | 2027-02-23 | 351, 367 |  | Sector-44 Noida(2) | 9375374 |

| ID | WBS | Task | Duration | Start | Finish | Predecessors | Constraint | Calendar | Unique_Task_ID |
| --- | --- | --- | --- | --- | --- | --- | --- | --- | --- |
| 369 | 36900.37000.42300.42700.43000.44500.49000 | **5th Floor** | 124d | 2026-09-20 | 2027-03-07 |  | start no earlier than 2026-09-20 | Sector-44 Noida(2) | 9361074 |
| 370 | 36900.37000.42300.42700.43000.44500.49000.603900 | Block Work | 15d | 2026-09-20 | 2026-10-04 | 278FS+60d |  | Sector-44 Noida(2) | 9375384 |
| 371 | 36900.37000.42300.42700.43000.44500.49000.604000 | Installation of temporary Main door | 5d | 2026-10-05 | 2026-10-09 | 370 |  | Sector-44 Noida(2) | 9375394 |
| 372 | 36900.37000.42300.42700.43000.44500.49000.604100 | Fire sprinkler pipe fixing | 5d | 2026-10-05 | 2026-10-09 | 355, 370 |  | Sector-44 Noida(2) | 9375404 |
| 373 | 36900.37000.42300.42700.43000.44500.49000.604200 | Internal Plumbing Works | 9d | 2026-10-05 | 2026-10-13 | 370 |  | Sector-44 Noida(2) | 9375414 |
| 374 | 36900.37000.42300.42700.43000.44500.49000.604300 | Waterproofing | 10d | 2026-10-14 | 2026-10-23 | 373 |  | Sector-44 Noida(2) | 9375424 |
| 375 | 36900.37000.42300.42700.43000.44500.49000.604400 | Internal Plaster | 14d | 2026-10-24 | 2026-12-21 | 373, 374 |  | Sector-44 Noida(2) | 9375434 |
| 376 | 36900.37000.42300.42700.43000.44500.49000.604500 | IPS flooring work | 13d | 2026-10-05 | 2026-10-17 | 370 |  | Sector-44 Noida(2) | 9375444 |
| 377 | 36900.37000.42300.42700.43000.44500.49000.604600 | Toilet dado work | 12d | 2026-12-22 | 2027-01-02 | 373, 374, 375 |  | Sector-44 Noida(2) | 9375544 |
| 378 | 36900.37000.42300.42700.43000.44500.49000.604700 | Toilet flooring work | 12d | 2027-01-03 | 2027-01-14 | 377 |  | Sector-44 Noida(2) | 9375554 |
| 379 | 36900.37000.42300.42700.43000.44500.49000.604800 | Living dinning flooring | 18d | 2027-01-15 | 2027-02-01 | 376, 378 |  | Sector-44 Noida(2) | 9375564 |
| 380 | 36900.37000.42300.42700.43000.44500.49000.604900 | Electrical wiring work | 12d | 2027-01-23 | 2027-02-03 | 379FS-10d |  | Sector-44 Noida(2) | 9375574 |
| 381 | 36900.37000.42300.42700.43000.44500.49000.605000 | Aluminium door-window fixing | 8d | 2027-01-27 | 2027-02-03 | 371, 380FS-8d |  | Sector-44 Noida(2) | 9375584 |
| 382 | 36900.37000.42300.42700.43000.44500.49000.605100 | Putty primer coat | 12d | 2027-01-27 | 2027-02-07 | 381FS-8d |  | Sector-44 Noida(2) | 9375594 |
| 383 | 36900.37000.42300.42700.43000.44500.49000.605200 | Prehung door fixing | 10d | 2027-02-03 | 2027-02-12 | 382FS-5d |  | Sector-44 Noida(2) | 9375604 |
| 384 | 36900.37000.42300.42700.43000.44500.49000.605300 | Painting 1st coat | 13d | 2027-02-13 | 2027-02-25 | 383 |  | Sector-44 Noida(2) | 9375614 |
| 385 | 36900.37000.42300.42700.43000.44500.49000.605400 | False Ceiling panel fixing | 10d | 2027-02-26 | 2027-03-07 | 368, 384 |  | Sector-44 Noida(2) | 9375624 |
| 386 | 36900.37000.42300.42700.43000.44500.49100 | **6th Floor** | 124d | 2026-10-02 | 2027-03-19 |  | start no earlier than 2026-10-02 | Sector-44 Noida(2) | 9361064 |
| 387 | 36900.37000.42300.42700.43000.44500.49100.605500 | Block Work | 15d | 2026-10-02 | 2026-10-16 | 279FS+60d |  | Sector-44 Noida(2) | 9375634 |
| 388 | 36900.37000.42300.42700.43000.44500.49100.605600 | Installation of temporary Main door | 5d | 2026-10-17 | 2026-10-21 | 387 |  | Sector-44 Noida(2) | 9375644 |
| 389 | 36900.37000.42300.42700.43000.44500.49100.605700 | Fire sprinkler pipe fixing | 5d | 2026-10-17 | 2026-10-21 | 372, 387 |  | Sector-44 Noida(2) | 9375654 |
| 390 | 36900.37000.42300.42700.43000.44500.49100.605800 | Internal Plumbing Works | 9d | 2026-10-17 | 2026-10-25 | 387 |  | Sector-44 Noida(2) | 9375664 |
| 391 | 36900.37000.42300.42700.43000.44500.49100.605900 | Waterproofing | 10d | 2026-10-26 | 2026-12-19 | 390 |  | Sector-44 Noida(2) | 9375674 |
| 392 | 36900.37000.42300.42700.43000.44500.49100.606000 | Internal Plaster | 14d | 2026-12-20 | 2027-01-02 | 390, 391 |  | Sector-44 Noida(2) | 9375684 |
| 393 | 36900.37000.42300.42700.43000.44500.49100.606100 | IPS flooring work | 13d | 2026-10-17 | 2026-10-29 | 387 |  | Sector-44 Noida(2) | 9375694 |
| 394 | 36900.37000.42300.42700.43000.44500.49100.606200 | Toilet dado work | 12d | 2027-01-03 | 2027-01-14 | 390, 391, 392 |  | Sector-44 Noida(2) | 9375704 |
| 395 | 36900.37000.42300.42700.43000.44500.49100.606300 | Toilet flooring work | 12d | 2027-01-15 | 2027-01-26 | 394 |  | Sector-44 Noida(2) | 9375714 |
| 396 | 36900.37000.42300.42700.43000.44500.49100.606400 | Living dinning flooring | 18d | 2027-01-27 | 2027-02-13 | 393, 395 |  | Sector-44 Noida(2) | 9375724 |
| 397 | 36900.37000.42300.42700.43000.44500.49100.606500 | Electrical wiring work | 12d | 2027-02-04 | 2027-02-15 | 396FS-10d |  | Sector-44 Noida(2) | 9375734 |
| 398 | 36900.37000.42300.42700.43000.44500.49100.606600 | Aluminium door-window fixing | 8d | 2027-02-08 | 2027-02-15 | 388, 397FS-8d |  | Sector-44 Noida(2) | 9375744 |
| 399 | 36900.37000.42300.42700.43000.44500.49100.606700 | Putty primer coat | 12d | 2027-02-08 | 2027-02-19 | 398FS-8d |  | Sector-44 Noida(2) | 9375754 |
| 400 | 36900.37000.42300.42700.43000.44500.49100.606800 | Prehung door fixing | 10d | 2027-02-15 | 2027-02-24 | 399FS-5d |  | Sector-44 Noida(2) | 9375764 |
| 401 | 36900.37000.42300.42700.43000.44500.49100.606900 | Painting 1st coat | 13d | 2027-02-25 | 2027-03-09 | 400 |  | Sector-44 Noida(2) | 9375774 |
| 402 | 36900.37000.42300.42700.43000.44500.49100.607000 | False Ceiling panel fixing | 10d | 2027-03-10 | 2027-03-19 | 385, 401 |  | Sector-44 Noida(2) | 9375784 |

| ID | WBS | Task | Duration | Start | Finish | Predecessors | Constraint | Calendar | Unique_Task_ID |
| --- | --- | --- | --- | --- | --- | --- | --- | --- | --- |
| 403 | 36900.37000.42300.42700.43000.44500.49200 | **7th Floor** | 126d | 2026-10-10 | 2027-03-29 |  | start no earlier than 2026-10-10 | Sector-44 Noida(2) | 9361414 |
| 404 | 36900.37000.42300.42700.43000.44500.49200.607100 | Block Work | 15d | 2026-10-10 | 2026-10-24 | 280FS+60d |  | Sector-44 Noida(2) | 9375794 |
| 405 | 36900.37000.42300.42700.43000.44500.49200.607200 | Installation of temporary Main door | 5d | 2026-10-25 | 2026-10-29 | 404 |  | Sector-44 Noida(2) | 9375804 |
| 406 | 36900.37000.42300.42700.43000.44500.49200.607300 | Fire sprinkler pipe fixing | 5d | 2026-10-25 | 2026-10-29 | 389, 404 |  | Sector-44 Noida(2) | 9375814 |
| 407 | 36900.37000.42300.42700.43000.44500.49200.607400 | Internal Plumbing Works | 9d | 2026-10-25 | 2026-12-17 | 404 |  | Sector-44 Noida(2) | 9375824 |
| 408 | 36900.37000.42300.42700.43000.44500.49200.607500 | Waterproofing | 10d | 2026-12-18 | 2026-12-27 | 407 |  | Sector-44 Noida(2) | 9375834 |
| 409 | 36900.37000.42300.42700.43000.44500.49200.607600 | Internal Plaster | 14d | 2026-12-28 | 2027-01-10 | 407, 408 |  | Sector-44 Noida(2) | 9375844 |
| 410 | 36900.37000.42300.42700.43000.44500.49200.607700 | IPS flooring work | 13d | 2026-10-25 | 2026-12-21 | 404 |  | Sector-44 Noida(2) | 9375854 |
| 411 | 36900.37000.42300.42700.43000.44500.49200.607800 | Toilet dado work | 12d | 2027-01-11 | 2027-01-22 | 407, 408, 409 |  | Sector-44 Noida(2) | 9375864 |
| 412 | 36900.37000.42300.42700.43000.44500.49200.607900 | Toilet flooring work | 12d | 2027-01-23 | 2027-02-03 | 411 |  | Sector-44 Noida(2) | 9375874 |
| 413 | 36900.37000.42300.42700.43000.44500.49200.608000 | Living dinning flooring | 18d | 2027-02-04 | 2027-02-21 | 410, 412 |  | Sector-44 Noida(2) | 9375884 |
| 414 | 36900.37000.42300.42700.43000.44500.49200.608100 | Electrical wiring work | 12d | 2027-02-12 | 2027-02-23 | 413FS-10d |  | Sector-44 Noida(2) | 9375894 |
| 415 | 36900.37000.42300.42700.43000.44500.49200.608200 | Aluminium door-window fixing | 8d | 2027-02-16 | 2027-02-23 | 405, 414FS-8d |  | Sector-44 Noida(2) | 9375904 |
| 416 | 36900.37000.42300.42700.43000.44500.49200.608300 | Putty primer coat | 12d | 2027-02-16 | 2027-02-27 | 415FS-8d |  | Sector-44 Noida(2) | 9375914 |
| 417 | 36900.37000.42300.42700.43000.44500.49200.608400 | Prehung door fixing | 10d | 2027-02-23 | 2027-03-04 | 416FS-5d |  | Sector-44 Noida(2) | 9375924 |
| 418 | 36900.37000.42300.42700.43000.44500.49200.608500 | Painting 1st coat | 13d | 2027-03-05 | 2027-03-17 | 417 |  | Sector-44 Noida(2) | 9375934 |
| 419 | 36900.37000.42300.42700.43000.44500.49200.608600 | False Ceiling panel fixing | 10d | 2027-03-20 | 2027-03-29 | 402, 418 |  | Sector-44 Noida(2) | 9375944 |
| 420 | 36900.37000.42300.42700.43000.44500.49300 | **8th Floor** | 124d | 2026-12-22 | 2027-04-24 |  | start no earlier than 2026-12-22 | Sector-44 Noida(2) | 9361494 |
| 421 | 36900.37000.42300.42700.43000.44500.49300.608700 | Block Work | 15d | 2026-12-22 | 2027-01-05 | 281FS+60d |  | Sector-44 Noida(2) | 9375954 |
| 422 | 36900.37000.42300.42700.43000.44500.49300.608800 | Installation of temporary Main door | 5d | 2027-01-06 | 2027-01-10 | 421 |  | Sector-44 Noida(2) | 9375964 |
| 423 | 36900.37000.42300.42700.43000.44500.49300.608900 | Fire sprinkler pipe fixing | 5d | 2027-01-06 | 2027-01-10 | 406, 421 |  | Sector-44 Noida(2) | 9375974 |
| 424 | 36900.37000.42300.42700.43000.44500.49300.609000 | Internal Plumbing Works | 9d | 2027-01-06 | 2027-01-14 | 421 |  | Sector-44 Noida(2) | 9375984 |
| 425 | 36900.37000.42300.42700.43000.44500.49300.609100 | Waterproofing | 10d | 2027-01-15 | 2027-01-24 | 424 |  | Sector-44 Noida(2) | 9375994 |
| 426 | 36900.37000.42300.42700.43000.44500.49300.609200 | Internal Plaster | 14d | 2027-01-25 | 2027-02-07 | 424, 425 |  | Sector-44 Noida(2) | 9376004 |
| 427 | 36900.37000.42300.42700.43000.44500.49300.609300 | IPS flooring work | 13d | 2027-01-06 | 2027-01-18 | 421 |  | Sector-44 Noida(2) | 9376014 |
| 428 | 36900.37000.42300.42700.43000.44500.49300.609400 | Toilet dado work | 12d | 2027-02-08 | 2027-02-19 | 424, 425, 426 |  | Sector-44 Noida(2) | 9376024 |
| 429 | 36900.37000.42300.42700.43000.44500.49300.609500 | Toilet flooring work | 12d | 2027-02-20 | 2027-03-03 | 428 |  | Sector-44 Noida(2) | 9376034 |
| 430 | 36900.37000.42300.42700.43000.44500.49300.609600 | Living dinning flooring | 18d | 2027-03-04 | 2027-03-21 | 427, 429 |  | Sector-44 Noida(2) | 9376044 |
| 431 | 36900.37000.42300.42700.43000.44500.49300.609700 | Electrical wiring work | 12d | 2027-03-12 | 2027-03-23 | 430FS-10d |  | Sector-44 Noida(2) | 9376054 |
| 432 | 36900.37000.42300.42700.43000.44500.49300.609800 | Aluminium door-window fixing | 8d | 2027-03-16 | 2027-03-23 | 422, 431FS-8d |  | Sector-44 Noida(2) | 9376064 |
| 433 | 36900.37000.42300.42700.43000.44500.49300.609900 | Putty primer coat | 12d | 2027-03-16 | 2027-03-27 | 432FS-8d |  | Sector-44 Noida(2) | 9376074 |
| 434 | 36900.37000.42300.42700.43000.44500.49300.610000 | Prehung door fixing | 10d | 2027-03-23 | 2027-04-01 | 433FS-5d |  | Sector-44 Noida(2) | 9376084 |
| 435 | 36900.37000.42300.42700.43000.44500.49300.610100 | Painting 1st coat | 13d | 2027-04-02 | 2027-04-14 | 434 |  | Sector-44 Noida(2) | 9376094 |
| 436 | 36900.37000.42300.42700.43000.44500.49300.610200 | False Ceiling panel fixing | 10d | 2027-04-15 | 2027-04-24 | 419, 435 |  | Sector-44 Noida(2) | 9376104 |

| ID | WBS | Task | Duration | Start | Finish | Predecessors | Constraint | Calendar | Unique_Task_ID |
| --- | --- | --- | --- | --- | --- | --- | --- | --- | --- |
| 437 | 36900.37000.42300.42700.43000.44500.49400 | **9th Floor** | 124d | 2027-01-03 | 2027-05-06 |  | start no earlier than 2027-01-03 | Sector-44 Noida(2) | 9361544 |
| 438 | 36900.37000.42300.42700.43000.44500.49400.610300 | Block Work | 15d | 2027-01-03 | 2027-01-17 | 282FS+60d |  | Sector-44 Noida(2) | 9376114 |
| 439 | 36900.37000.42300.42700.43000.44500.49400.610400 | Installation of temporary Main door | 5d | 2027-01-18 | 2027-01-22 | 438 |  | Sector-44 Noida(2) | 9376124 |
| 440 | 36900.37000.42300.42700.43000.44500.49400.610500 | Fire sprinkler pipe fixing | 5d | 2027-01-18 | 2027-01-22 | 423, 438 |  | Sector-44 Noida(2) | 9376134 |
| 441 | 36900.37000.42300.42700.43000.44500.49400.610600 | Internal Plumbing Works | 9d | 2027-01-18 | 2027-01-26 | 438 |  | Sector-44 Noida(2) | 9376144 |
| 442 | 36900.37000.42300.42700.43000.44500.49400.610700 | Waterproofing | 10d | 2027-01-27 | 2027-02-05 | 441 |  | Sector-44 Noida(2) | 9376154 |
| 443 | 36900.37000.42300.42700.43000.44500.49400.610800 | Internal Plaster | 14d | 2027-02-06 | 2027-02-19 | 441, 442 |  | Sector-44 Noida(2) | 9376164 |
| 444 | 36900.37000.42300.42700.43000.44500.49400.610900 | IPS flooring work | 13d | 2027-01-18 | 2027-01-30 | 438 |  | Sector-44 Noida(2) | 9376174 |
| 445 | 36900.37000.42300.42700.43000.44500.49400.611000 | Toilet dado work | 12d | 2027-02-20 | 2027-03-03 | 441, 442, 443 |  | Sector-44 Noida(2) | 9376184 |
| 446 | 36900.37000.42300.42700.43000.44500.49400.611100 | Toilet flooring work | 12d | 2027-03-04 | 2027-03-15 | 445 |  | Sector-44 Noida(2) | 9376194 |
| 447 | 36900.37000.42300.42700.43000.44500.49400.611200 | Living dinning flooring | 18d | 2027-03-16 | 2027-04-02 | 444, 446 |  | Sector-44 Noida(2) | 9376204 |
| 448 | 36900.37000.42300.42700.43000.44500.49400.611300 | Electrical wiring work | 12d | 2027-03-24 | 2027-04-04 | 447FS-10d |  | Sector-44 Noida(2) | 9376214 |
| 449 | 36900.37000.42300.42700.43000.44500.49400.611400 | Aluminium door-window fixing | 8d | 2027-03-28 | 2027-04-04 | 439, 448FS-8d |  | Sector-44 Noida(2) | 9376224 |
| 450 | 36900.37000.42300.42700.43000.44500.49400.611500 | Putty primer coat | 12d | 2027-03-28 | 2027-04-08 | 449FS-8d |  | Sector-44 Noida(2) | 9376234 |
| 451 | 36900.37000.42300.42700.43000.44500.49400.611600 | Prehung door fixing | 10d | 2027-04-04 | 2027-04-13 | 450FS-5d |  | Sector-44 Noida(2) | 9376244 |
| 452 | 36900.37000.42300.42700.43000.44500.49400.611700 | Painting 1st coat | 13d | 2027-04-14 | 2027-04-26 | 451 |  | Sector-44 Noida(2) | 9376254 |
| 453 | 36900.37000.42300.42700.43000.44500.49400.611800 | False Ceiling panel fixing | 10d | 2027-04-27 | 2027-05-06 | 436, 452 |  | Sector-44 Noida(2) | 9376264 |
| 454 | 36900.37000.42300.42700.43000.44500.49500 | **10th Floor** | 124d | 2027-01-15 | 2027-05-18 |  | start no earlier than 2027-01-15 | Sector-44 Noida(2) | 9361554 |
| 455 | 36900.37000.42300.42700.43000.44500.49500.611900 | Block Work | 15d | 2027-01-15 | 2027-01-29 | 283FS+60d |  | Sector-44 Noida(2) | 9376274 |
| 456 | 36900.37000.42300.42700.43000.44500.49500.612000 | Installation of temporary Main door | 5d | 2027-01-30 | 2027-02-03 | 455 |  | Sector-44 Noida(2) | 9376284 |
| 457 | 36900.37000.42300.42700.43000.44500.49500.612100 | Fire sprinkler pipe fixing | 5d | 2027-01-30 | 2027-02-03 | 440, 455 |  | Sector-44 Noida(2) | 9376294 |
| 458 | 36900.37000.42300.42700.43000.44500.49500.612200 | Internal Plumbing Works | 9d | 2027-01-30 | 2027-02-07 | 455 |  | Sector-44 Noida(2) | 9376304 |
| 459 | 36900.37000.42300.42700.43000.44500.49500.612300 | Waterproofing | 10d | 2027-02-08 | 2027-02-17 | 458 |  | Sector-44 Noida(2) | 9376314 |
| 460 | 36900.37000.42300.42700.43000.44500.49500.612400 | Internal Plaster | 14d | 2027-02-18 | 2027-03-03 | 458, 459 |  | Sector-44 Noida(2) | 9376324 |
| 461 | 36900.37000.42300.42700.43000.44500.49500.612500 | IPS flooring work | 13d | 2027-01-30 | 2027-02-11 | 455 |  | Sector-44 Noida(2) | 9376334 |
| 462 | 36900.37000.42300.42700.43000.44500.49500.612600 | Toilet dado work | 12d | 2027-03-04 | 2027-03-15 | 458, 459, 460 |  | Sector-44 Noida(2) | 9376344 |
| 463 | 36900.37000.42300.42700.43000.44500.49500.612700 | Toilet flooring work | 12d | 2027-03-16 | 2027-03-27 | 462 |  | Sector-44 Noida(2) | 9376354 |
| 464 | 36900.37000.42300.42700.43000.44500.49500.612800 | Living dinning flooring | 18d | 2027-03-28 | 2027-04-14 | 461, 463 |  | Sector-44 Noida(2) | 9376364 |
| 465 | 36900.37000.42300.42700.43000.44500.49500.612900 | Electrical wiring work | 12d | 2027-04-05 | 2027-04-16 | 464FS-10d |  | Sector-44 Noida(2) | 9376374 |
| 466 | 36900.37000.42300.42700.43000.44500.49500.613000 | Aluminium door-window fixing | 8d | 2027-04-09 | 2027-04-16 | 456, 465FS-8d |  | Sector-44 Noida(2) | 9376384 |
| 467 | 36900.37000.42300.42700.43000.44500.49500.613100 | Putty primer coat | 12d | 2027-04-09 | 2027-04-20 | 466FS-8d |  | Sector-44 Noida(2) | 9376394 |
| 468 | 36900.37000.42300.42700.43000.44500.49500.613200 | Prehung door fixing | 10d | 2027-04-16 | 2027-04-25 | 467FS-5d |  | Sector-44 Noida(2) | 9376404 |
| 469 | 36900.37000.42300.42700.43000.44500.49500.613300 | Painting 1st coat | 13d | 2027-04-26 | 2027-05-08 | 468 |  | Sector-44 Noida(2) | 9376414 |
| 470 | 36900.37000.42300.42700.43000.44500.49500.613400 | False Ceiling panel fixing | 10d | 2027-05-09 | 2027-05-18 | 453, 469 |  | Sector-44 Noida(2) | 9376424 |

| ID | WBS | Task | Duration | Start | Finish | Predecessors | Constraint | Calendar | Unique_Task_ID |
| --- | --- | --- | --- | --- | --- | --- | --- | --- | --- |
| 471 | 36900.37000.42300.42700.43000.44500.49600 | **11th Floor** | 124d | 2027-01-27 | 2027-05-30 |  | start no earlier than 2027-01-27 | Sector-44 Noida(2) | 9361624 |
| 472 | 36900.37000.42300.42700.43000.44500.49600.613500 | Block Work | 15d | 2027-01-27 | 2027-02-10 | 284FS+60d |  | Sector-44 Noida(2) | 9376434 |
| 473 | 36900.37000.42300.42700.43000.44500.49600.613600 | Installation of temporary Main door | 5d | 2027-02-11 | 2027-02-15 | 472 |  | Sector-44 Noida(2) | 9376444 |
| 474 | 36900.37000.42300.42700.43000.44500.49600.613700 | Fire sprinkler pipe fixing | 5d | 2027-02-11 | 2027-02-15 | 457, 472 |  | Sector-44 Noida(2) | 9376454 |
| 475 | 36900.37000.42300.42700.43000.44500.49600.613800 | Internal Plumbing Works | 9d | 2027-02-11 | 2027-02-19 | 472 |  | Sector-44 Noida(2) | 9376464 |
| 476 | 36900.37000.42300.42700.43000.44500.49600.613900 | Waterproofing | 10d | 2027-02-20 | 2027-03-01 | 475 |  | Sector-44 Noida(2) | 9376474 |
| 477 | 36900.37000.42300.42700.43000.44500.49600.614000 | Internal Plaster | 14d | 2027-03-02 | 2027-03-15 | 475, 476 |  | Sector-44 Noida(2) | 9376484 |
| 478 | 36900.37000.42300.42700.43000.44500.49600.614100 | IPS flooring work | 13d | 2027-02-11 | 2027-02-23 | 472 |  | Sector-44 Noida(2) | 9376494 |
| 479 | 36900.37000.42300.42700.43000.44500.49600.614200 | Toilet dado work | 12d | 2027-03-16 | 2027-03-27 | 475, 476, 477 |  | Sector-44 Noida(2) | 9376504 |
| 480 | 36900.37000.42300.42700.43000.44500.49600.614300 | Toilet flooring work | 12d | 2027-03-28 | 2027-04-08 | 479 |  | Sector-44 Noida(2) | 9376514 |
| 481 | 36900.37000.42300.42700.43000.44500.49600.614400 | Living dinning flooring | 18d | 2027-04-09 | 2027-04-26 | 478, 480 |  | Sector-44 Noida(2) | 9376524 |
| 482 | 36900.37000.42300.42700.43000.44500.49600.614500 | Electrical wiring work | 12d | 2027-04-17 | 2027-04-28 | 481FS-10d |  | Sector-44 Noida(2) | 9376534 |
| 483 | 36900.37000.42300.42700.43000.44500.49600.614600 | Aluminium door-window fixing | 8d | 2027-04-21 | 2027-04-28 | 473, 482FS-8d |  | Sector-44 Noida(2) | 9376544 |
| 484 | 36900.37000.42300.42700.43000.44500.49600.614700 | Putty primer coat | 12d | 2027-04-21 | 2027-05-02 | 483FS-8d |  | Sector-44 Noida(2) | 9376554 |
| 485 | 36900.37000.42300.42700.43000.44500.49600.614800 | Prehung door fixing | 10d | 2027-04-28 | 2027-05-07 | 484FS-5d |  | Sector-44 Noida(2) | 9376564 |
| 486 | 36900.37000.42300.42700.43000.44500.49600.614900 | Painting 1st coat | 13d | 2027-05-08 | 2027-05-20 | 485 |  | Sector-44 Noida(2) | 9376574 |
| 487 | 36900.37000.42300.42700.43000.44500.49600.615000 | False Ceiling panel fixing | 10d | 2027-05-21 | 2027-05-30 | 470, 486 |  | Sector-44 Noida(2) | 9376584 |
| 488 | 36900.37000.42300.42700.43000.44500.49700 | **12th Floor** | 124d | 2027-02-08 | 2027-06-11 |  | start no earlier than 2027-02-08 | Sector-44 Noida(2) | 9361634 |
| 489 | 36900.37000.42300.42700.43000.44500.49700.615100 | Block Work | 15d | 2027-02-08 | 2027-02-22 | 285FS+60d |  | Sector-44 Noida(2) | 9376594 |
| 490 | 36900.37000.42300.42700.43000.44500.49700.615200 | Installation of temporary Main door | 5d | 2027-02-23 | 2027-02-27 | 489 |  | Sector-44 Noida(2) | 9376604 |
| 491 | 36900.37000.42300.42700.43000.44500.49700.615300 | Fire sprinkler pipe fixing | 5d | 2027-02-23 | 2027-02-27 | 474, 489 |  | Sector-44 Noida(2) | 9376614 |
| 492 | 36900.37000.42300.42700.43000.44500.49700.615400 | Internal Plumbing Works | 9d | 2027-02-23 | 2027-03-03 | 489 |  | Sector-44 Noida(2) | 9376624 |
| 493 | 36900.37000.42300.42700.43000.44500.49700.615500 | Waterproofing | 10d | 2027-03-04 | 2027-03-13 | 492 |  | Sector-44 Noida(2) | 9376634 |
| 494 | 36900.37000.42300.42700.43000.44500.49700.615600 | Internal Plaster | 14d | 2027-03-14 | 2027-03-27 | 492, 493 |  | Sector-44 Noida(2) | 9376644 |
| 495 | 36900.37000.42300.42700.43000.44500.49700.615700 | IPS flooring work | 13d | 2027-02-23 | 2027-03-07 | 489 |  | Sector-44 Noida(2) | 9376654 |
| 496 | 36900.37000.42300.42700.43000.44500.49700.615800 | Toilet dado work | 12d | 2027-03-28 | 2027-04-08 | 492, 493, 494 |  | Sector-44 Noida(2) | 9376664 |
| 497 | 36900.37000.42300.42700.43000.44500.49700.615900 | Toilet flooring work | 12d | 2027-04-09 | 2027-04-20 | 496 |  | Sector-44 Noida(2) | 9376674 |
| 498 | 36900.37000.42300.42700.43000.44500.49700.616000 | Living dinning flooring | 18d | 2027-04-21 | 2027-05-08 | 495, 497 |  | Sector-44 Noida(2) | 9376684 |
| 499 | 36900.37000.42300.42700.43000.44500.49700.616100 | Electrical wiring work | 12d | 2027-04-29 | 2027-05-10 | 498FS-10d |  | Sector-44 Noida(2) | 9376694 |
| 500 | 36900.37000.42300.42700.43000.44500.49700.616200 | Aluminium door-window fixing | 8d | 2027-05-03 | 2027-05-10 | 490, 499FS-8d |  | Sector-44 Noida(2) | 9376704 |
| 501 | 36900.37000.42300.42700.43000.44500.49700.616300 | Putty primer coat | 12d | 2027-05-03 | 2027-05-14 | 500FS-8d |  | Sector-44 Noida(2) | 9376714 |
| 502 | 36900.37000.42300.42700.43000.44500.49700.616400 | Prehung door fixing | 10d | 2027-05-10 | 2027-05-19 | 501FS-5d |  | Sector-44 Noida(2) | 9376724 |
| 503 | 36900.37000.42300.42700.43000.44500.49700.616500 | Painting 1st coat | 13d | 2027-05-20 | 2027-06-01 | 502 |  | Sector-44 Noida(2) | 9376734 |
| 504 | 36900.37000.42300.42700.43000.44500.49700.616600 | False Ceiling panel fixing | 10d | 2027-06-02 | 2027-06-11 | 487, 503 |  | Sector-44 Noida(2) | 9376744 |

| ID | WBS | Task | Duration | Start | Finish | Predecessors | Constraint | Calendar | Unique_Task_ID |
| --- | --- | --- | --- | --- | --- | --- | --- | --- | --- |
| 505 | 36900.37000.42300.42700.43000.44500.49800 | **13th Floor** | 124d | 2027-02-20 | 2027-06-23 |  | start no earlier than 2027-02-20 | Sector-44 Noida(2) | 9361684 |
| 506 | 36900.37000.42300.42700.43000.44500.49800.616700 | Block Work | 15d | 2027-02-20 | 2027-03-06 | 286FS+60d |  | Sector-44 Noida(2) | 9376754 |
| 507 | 36900.37000.42300.42700.43000.44500.49800.616800 | Installation of temporary Main door | 5d | 2027-03-07 | 2027-03-11 | 506 |  | Sector-44 Noida(2) | 9376764 |
| 508 | 36900.37000.42300.42700.43000.44500.49800.616900 | Fire sprinkler pipe fixing | 5d | 2027-03-07 | 2027-03-11 | 491, 506 |  | Sector-44 Noida(2) | 9376774 |
| 509 | 36900.37000.42300.42700.43000.44500.49800.617000 | Internal Plumbing Works | 9d | 2027-03-07 | 2027-03-15 | 506 |  | Sector-44 Noida(2) | 9376784 |
| 510 | 36900.37000.42300.42700.43000.44500.49800.617100 | Waterproofing | 10d | 2027-03-16 | 2027-03-25 | 509 |  | Sector-44 Noida(2) | 9376794 |
| 511 | 36900.37000.42300.42700.43000.44500.49800.617200 | Internal Plaster | 14d | 2027-03-26 | 2027-04-08 | 509, 510 |  | Sector-44 Noida(2) | 9376804 |
| 512 | 36900.37000.42300.42700.43000.44500.49800.617300 | IPS flooring work | 13d | 2027-03-07 | 2027-03-19 | 506 |  | Sector-44 Noida(2) | 9376814 |
| 513 | 36900.37000.42300.42700.43000.44500.49800.617400 | Toilet dado work | 12d | 2027-04-09 | 2027-04-20 | 509, 510, 511 |  | Sector-44 Noida(2) | 9376824 |
| 514 | 36900.37000.42300.42700.43000.44500.49800.617500 | Toilet flooring work | 12d | 2027-04-21 | 2027-05-02 | 513 |  | Sector-44 Noida(2) | 9376834 |
| 515 | 36900.37000.42300.42700.43000.44500.49800.617600 | Living dinning flooring | 18d | 2027-05-03 | 2027-05-20 | 512, 514 |  | Sector-44 Noida(2) | 9376844 |
| 516 | 36900.37000.42300.42700.43000.44500.49800.617700 | Electrical wiring work | 12d | 2027-05-11 | 2027-05-22 | 515FS-10d |  | Sector-44 Noida(2) | 9376854 |
| 517 | 36900.37000.42300.42700.43000.44500.49800.617800 | Aluminium door-window fixing | 8d | 2027-05-15 | 2027-05-22 | 507, 516FS-8d |  | Sector-44 Noida(2) | 9376864 |
| 518 | 36900.37000.42300.42700.43000.44500.49800.617900 | Putty primer coat | 12d | 2027-05-15 | 2027-05-26 | 517FS-8d |  | Sector-44 Noida(2) | 9376874 |
| 519 | 36900.37000.42300.42700.43000.44500.49800.618000 | Prehung door fixing | 10d | 2027-05-22 | 2027-05-31 | 518FS-5d |  | Sector-44 Noida(2) | 9376884 |
| 520 | 36900.37000.42300.42700.43000.44500.49800.618100 | Painting 1st coat | 13d | 2027-06-01 | 2027-06-13 | 519 |  | Sector-44 Noida(2) | 9376894 |
| 521 | 36900.37000.42300.42700.43000.44500.49800.618200 | False Ceiling panel fixing | 10d | 2027-06-14 | 2027-06-23 | 504, 520 |  | Sector-44 Noida(2) | 9376904 |
| 522 | 36900.37000.42300.42700.43000.44500.49900 | **14th Floor** | 124d | 2027-03-10 | 2027-07-11 |  | start no earlier than 2027-03-10 | Sector-44 Noida(2) | 9361724 |
| 523 | 36900.37000.42300.42700.43000.44500.49900.618300 | Block Work | 15d | 2027-03-10 | 2027-03-24 | 287FS+60d |  | Sector-44 Noida(2) | 9376914 |
| 524 | 36900.37000.42300.42700.43000.44500.49900.618400 | Installation of temporary Main door | 5d | 2027-03-25 | 2027-03-29 | 523 |  | Sector-44 Noida(2) | 9376924 |
| 525 | 36900.37000.42300.42700.43000.44500.49900.618500 | Fire sprinkler pipe fixing | 5d | 2027-03-25 | 2027-03-29 | 508, 523 |  | Sector-44 Noida(2) | 9376934 |
| 526 | 36900.37000.42300.42700.43000.44500.49900.618600 | Internal Plumbing Works | 9d | 2027-03-25 | 2027-04-02 | 523 |  | Sector-44 Noida(2) | 9376944 |
| 527 | 36900.37000.42300.42700.43000.44500.49900.618700 | Waterproofing | 10d | 2027-04-03 | 2027-04-12 | 526 |  | Sector-44 Noida(2) | 9376954 |
| 528 | 36900.37000.42300.42700.43000.44500.49900.618800 | Internal Plaster | 14d | 2027-04-13 | 2027-04-26 | 526, 527 |  | Sector-44 Noida(2) | 9376964 |
| 529 | 36900.37000.42300.42700.43000.44500.49900.618900 | IPS flooring work | 13d | 2027-03-25 | 2027-04-06 | 523 |  | Sector-44 Noida(2) | 9376974 |
| 530 | 36900.37000.42300.42700.43000.44500.49900.619000 | Toilet dado work | 12d | 2027-04-27 | 2027-05-08 | 526, 527, 528 |  | Sector-44 Noida(2) | 9376984 |
| 531 | 36900.37000.42300.42700.43000.44500.49900.619100 | Toilet flooring work | 12d | 2027-05-09 | 2027-05-20 | 530 |  | Sector-44 Noida(2) | 9376994 |
| 532 | 36900.37000.42300.42700.43000.44500.49900.619200 | Living dinning flooring | 18d | 2027-05-21 | 2027-06-07 | 529, 531 |  | Sector-44 Noida(2) | 9377004 |
| 533 | 36900.37000.42300.42700.43000.44500.49900.619300 | Electrical wiring work | 12d | 2027-05-29 | 2027-06-09 | 532FS-10d |  | Sector-44 Noida(2) | 9377014 |
| 534 | 36900.37000.42300.42700.43000.44500.49900.619400 | Aluminium door-window fixing | 8d | 2027-06-02 | 2027-06-09 | 524, 533FS-8d |  | Sector-44 Noida(2) | 9377024 |
| 535 | 36900.37000.42300.42700.43000.44500.49900.619500 | Putty primer coat | 12d | 2027-06-02 | 2027-06-13 | 534FS-8d |  | Sector-44 Noida(2) | 9377034 |
| 536 | 36900.37000.42300.42700.43000.44500.49900.619600 | Prehung door fixing | 10d | 2027-06-09 | 2027-06-18 | 535FS-5d |  | Sector-44 Noida(2) | 9377044 |
| 537 | 36900.37000.42300.42700.43000.44500.49900.619700 | Painting 1st coat | 13d | 2027-06-19 | 2027-07-01 | 536 |  | Sector-44 Noida(2) | 9377054 |
| 538 | 36900.37000.42300.42700.43000.44500.49900.619800 | False Ceiling panel fixing | 10d | 2027-07-02 | 2027-07-11 | 521, 537 |  | Sector-44 Noida(2) | 9377064 |

| ID | WBS | Task | Duration | Start | Finish | Predecessors | Constraint | Calendar | Unique_Task_ID |
| --- | --- | --- | --- | --- | --- | --- | --- | --- | --- |
| 539 | 36900.37000.42300.42700.43000.44500.50000 | **15th Floor** | 124d | 2027-03-22 | 2027-07-23 |  | start no earlier than 2027-03-22 | Sector-44 Noida(2) | 9361754 |
| 540 | 36900.37000.42300.42700.43000.44500.50000.619900 | Block Work | 15d | 2027-03-22 | 2027-04-05 | 288FS+60d |  | Sector-44 Noida(2) | 9377074 |
| 541 | 36900.37000.42300.42700.43000.44500.50000.620000 | Installation of temporary Main door | 5d | 2027-04-06 | 2027-04-10 | 540 |  | Sector-44 Noida(2) | 9377084 |
| 542 | 36900.37000.42300.42700.43000.44500.50000.620100 | Fire sprinkler pipe fixing | 5d | 2027-04-06 | 2027-04-10 | 525, 540 |  | Sector-44 Noida(2) | 9377094 |
| 543 | 36900.37000.42300.42700.43000.44500.50000.620200 | Internal Plumbing Works | 9d | 2027-04-06 | 2027-04-14 | 540 |  | Sector-44 Noida(2) | 9377104 |
| 544 | 36900.37000.42300.42700.43000.44500.50000.620300 | Waterproofing | 10d | 2027-04-15 | 2027-04-24 | 543 |  | Sector-44 Noida(2) | 9377114 |
| 545 | 36900.37000.42300.42700.43000.44500.50000.620400 | Internal Plaster | 14d | 2027-04-25 | 2027-05-08 | 543, 544 |  | Sector-44 Noida(2) | 9377124 |
| 546 | 36900.37000.42300.42700.43000.44500.50000.620500 | IPS flooring work | 13d | 2027-04-06 | 2027-04-18 | 540 |  | Sector-44 Noida(2) | 9377134 |
| 547 | 36900.37000.42300.42700.43000.44500.50000.620600 | Toilet dado work | 12d | 2027-05-09 | 2027-05-20 | 543, 544, 545 |  | Sector-44 Noida(2) | 9377144 |
| 548 | 36900.37000.42300.42700.43000.44500.50000.620700 | Toilet flooring work | 12d | 2027-05-21 | 2027-06-01 | 547 |  | Sector-44 Noida(2) | 9377154 |
| 549 | 36900.37000.42300.42700.43000.44500.50000.620800 | Living dinning flooring | 18d | 2027-06-02 | 2027-06-19 | 546, 548 |  | Sector-44 Noida(2) | 9377164 |
| 550 | 36900.37000.42300.42700.43000.44500.50000.620900 | Electrical wiring work | 12d | 2027-06-10 | 2027-06-21 | 549FS-10d |  | Sector-44 Noida(2) | 9377174 |
| 551 | 36900.37000.42300.42700.43000.44500.50000.621000 | Aluminium door-window fixing | 8d | 2027-06-14 | 2027-06-21 | 541, 550FS-8d |  | Sector-44 Noida(2) | 9377184 |
| 552 | 36900.37000.42300.42700.43000.44500.50000.621100 | Putty primer coat | 12d | 2027-06-14 | 2027-06-25 | 551FS-8d |  | Sector-44 Noida(2) | 9377194 |
| 553 | 36900.37000.42300.42700.43000.44500.50000.621200 | Prehung door fixing | 10d | 2027-06-21 | 2027-06-30 | 552FS-5d |  | Sector-44 Noida(2) | 9377204 |
| 554 | 36900.37000.42300.42700.43000.44500.50000.621300 | Painting 1st coat | 13d | 2027-07-01 | 2027-07-13 | 553 |  | Sector-44 Noida(2) | 9377214 |
| 555 | 36900.37000.42300.42700.43000.44500.50000.621400 | False Ceiling panel fixing | 10d | 2027-07-14 | 2027-07-23 | 538, 554 |  | Sector-44 Noida(2) | 9377224 |
| 556 | 36900.37000.42300.42700.43000.44500.50100 | **16th Floor** | 124d | 2027-04-03 | 2027-08-04 |  | start no earlier than 2027-04-03 | Sector-44 Noida(2) | 9361844 |
| 557 | 36900.37000.42300.42700.43000.44500.50100.621500 | Block Work | 15d | 2027-04-03 | 2027-04-17 | 289FS+60d |  | Sector-44 Noida(2) | 9377234 |
| 558 | 36900.37000.42300.42700.43000.44500.50100.621600 | Installation of temporary Main door | 5d | 2027-04-18 | 2027-04-22 | 557 |  | Sector-44 Noida(2) | 9377244 |
| 559 | 36900.37000.42300.42700.43000.44500.50100.621700 | Fire sprinkler pipe fixing | 5d | 2027-04-18 | 2027-04-22 | 542, 557 |  | Sector-44 Noida(2) | 9377254 |
| 560 | 36900.37000.42300.42700.43000.44500.50100.621800 | Internal Plumbing Works | 9d | 2027-04-18 | 2027-04-26 | 557 |  | Sector-44 Noida(2) | 9377264 |
| 561 | 36900.37000.42300.42700.43000.44500.50100.621900 | Waterproofing | 10d | 2027-04-27 | 2027-05-06 | 560 |  | Sector-44 Noida(2) | 9377274 |
| 562 | 36900.37000.42300.42700.43000.44500.50100.622000 | Internal Plaster | 14d | 2027-05-07 | 2027-05-20 | 560, 561 |  | Sector-44 Noida(2) | 9377284 |
| 563 | 36900.37000.42300.42700.43000.44500.50100.622100 | IPS flooring work | 13d | 2027-04-18 | 2027-04-30 | 557 |  | Sector-44 Noida(2) | 9377294 |
| 564 | 36900.37000.42300.42700.43000.44500.50100.622200 | Toilet dado work | 12d | 2027-05-21 | 2027-06-01 | 560, 561, 562 |  | Sector-44 Noida(2) | 9377304 |
| 565 | 36900.37000.42300.42700.43000.44500.50100.622300 | Toilet flooring work | 12d | 2027-06-02 | 2027-06-13 | 564 |  | Sector-44 Noida(2) | 9377314 |
| 566 | 36900.37000.42300.42700.43000.44500.50100.622400 | Living dinning flooring | 18d | 2027-06-14 | 2027-07-01 | 563, 565 |  | Sector-44 Noida(2) | 9377324 |
| 567 | 36900.37000.42300.42700.43000.44500.50100.622500 | Electrical wiring work | 12d | 2027-06-22 | 2027-07-03 | 566FS-10d |  | Sector-44 Noida(2) | 9377334 |
| 568 | 36900.37000.42300.42700.43000.44500.50100.622600 | Aluminium door-window fixing | 8d | 2027-06-26 | 2027-07-03 | 558, 567FS-8d |  | Sector-44 Noida(2) | 9377344 |
| 569 | 36900.37000.42300.42700.43000.44500.50100.622700 | Putty primer coat | 12d | 2027-06-26 | 2027-07-07 | 568FS-8d |  | Sector-44 Noida(2) | 9377354 |
| 570 | 36900.37000.42300.42700.43000.44500.50100.622800 | Prehung door fixing | 10d | 2027-07-03 | 2027-07-12 | 569FS-5d |  | Sector-44 Noida(2) | 9377364 |
| 571 | 36900.37000.42300.42700.43000.44500.50100.622900 | Painting 1st coat | 13d | 2027-07-13 | 2027-07-25 | 570 |  | Sector-44 Noida(2) | 9377374 |
| 572 | 36900.37000.42300.42700.43000.44500.50100.623000 | False Ceiling panel fixing | 10d | 2027-07-26 | 2027-08-04 | 555, 571 |  | Sector-44 Noida(2) | 9377384 |

| ID | WBS | Task | Duration | Start | Finish | Predecessors | Constraint | Calendar | Unique_Task_ID |
| --- | --- | --- | --- | --- | --- | --- | --- | --- | --- |
| 573 | 36900.37000.42300.42700.43000.44500.50200 | **17th Floor** | 124d | 2027-04-15 | 2027-08-16 |  | start no earlier than 2027-04-15 | Sector-44 Noida(2) | 9361904 |
| 574 | 36900.37000.42300.42700.43000.44500.50200.623100 | Block Work | 15d | 2027-04-15 | 2027-04-29 | 290FS+60d |  | Sector-44 Noida(2) | 9377394 |
| 575 | 36900.37000.42300.42700.43000.44500.50200.623200 | Installation of temporary Main door | 5d | 2027-04-30 | 2027-05-04 | 574 |  | Sector-44 Noida(2) | 9377404 |
| 576 | 36900.37000.42300.42700.43000.44500.50200.623300 | Fire sprinkler pipe fixing | 5d | 2027-04-30 | 2027-05-04 | 559, 574 |  | Sector-44 Noida(2) | 9377414 |
| 577 | 36900.37000.42300.42700.43000.44500.50200.623400 | Internal Plumbing Works | 9d | 2027-04-30 | 2027-05-08 | 574 |  | Sector-44 Noida(2) | 9377424 |
| 578 | 36900.37000.42300.42700.43000.44500.50200.623500 | Waterproofing | 10d | 2027-05-09 | 2027-05-18 | 577 |  | Sector-44 Noida(2) | 9377434 |
| 579 | 36900.37000.42300.42700.43000.44500.50200.623600 | Internal Plaster | 14d | 2027-05-19 | 2027-06-01 | 577, 578 |  | Sector-44 Noida(2) | 9377444 |
| 580 | 36900.37000.42300.42700.43000.44500.50200.623700 | IPS flooring work | 13d | 2027-04-30 | 2027-05-12 | 574 |  | Sector-44 Noida(2) | 9377454 |
| 581 | 36900.37000.42300.42700.43000.44500.50200.623800 | Toilet dado work | 12d | 2027-06-02 | 2027-06-13 | 577, 578, 579 |  | Sector-44 Noida(2) | 9377464 |
| 582 | 36900.37000.42300.42700.43000.44500.50200.623900 | Toilet flooring work | 12d | 2027-06-14 | 2027-06-25 | 581 |  | Sector-44 Noida(2) | 9377474 |
| 583 | 36900.37000.42300.42700.43000.44500.50200.624000 | Living dinning flooring | 18d | 2027-06-26 | 2027-07-13 | 580, 582 |  | Sector-44 Noida(2) | 9377484 |
| 584 | 36900.37000.42300.42700.43000.44500.50200.624100 | Electrical wiring work | 12d | 2027-07-04 | 2027-07-15 | 583FS-10d |  | Sector-44 Noida(2) | 9377494 |
| 585 | 36900.37000.42300.42700.43000.44500.50200.624200 | Aluminium door-window fixing | 8d | 2027-07-08 | 2027-07-15 | 575, 584FS-8d |  | Sector-44 Noida(2) | 9377504 |
| 586 | 36900.37000.42300.42700.43000.44500.50200.624300 | Putty primer coat | 12d | 2027-07-08 | 2027-07-19 | 585FS-8d |  | Sector-44 Noida(2) | 9377514 |
| 587 | 36900.37000.42300.42700.43000.44500.50200.624400 | Prehung door fixing | 10d | 2027-07-15 | 2027-07-24 | 586FS-5d |  | Sector-44 Noida(2) | 9377524 |
| 588 | 36900.37000.42300.42700.43000.44500.50200.624500 | Painting 1st coat | 13d | 2027-07-25 | 2027-08-06 | 587 |  | Sector-44 Noida(2) | 9377534 |
| 589 | 36900.37000.42300.42700.43000.44500.50200.624600 | False Ceiling panel fixing | 10d | 2027-08-07 | 2027-08-16 | 572, 588 |  | Sector-44 Noida(2) | 9377544 |
| 590 | 36900.37000.42300.42700.43000.44500.50300 | **18th Floor** | 124d | 2027-04-27 | 2027-08-28 |  | start no earlier than 2027-04-27 | Sector-44 Noida(2) | 9361914 |
| 591 | 36900.37000.42300.42700.43000.44500.50300.624700 | Block Work | 15d | 2027-04-27 | 2027-05-11 | 291FS+60d |  | Sector-44 Noida(2) | 9377554 |
| 592 | 36900.37000.42300.42700.43000.44500.50300.624800 | Installation of temporary Main door | 5d | 2027-05-12 | 2027-05-16 | 591 |  | Sector-44 Noida(2) | 9377564 |
| 593 | 36900.37000.42300.42700.43000.44500.50300.624900 | Fire sprinkler pipe fixing | 5d | 2027-05-12 | 2027-05-16 | 576, 591 |  | Sector-44 Noida(2) | 9377574 |
| 594 | 36900.37000.42300.42700.43000.44500.50300.625000 | Internal Plumbing Works | 9d | 2027-05-12 | 2027-05-20 | 591 |  | Sector-44 Noida(2) | 9377584 |
| 595 | 36900.37000.42300.42700.43000.44500.50300.625100 | Waterproofing | 10d | 2027-05-21 | 2027-05-30 | 594 |  | Sector-44 Noida(2) | 9377594 |
| 596 | 36900.37000.42300.42700.43000.44500.50300.625200 | Internal Plaster | 14d | 2027-05-31 | 2027-06-13 | 594, 595 |  | Sector-44 Noida(2) | 9377604 |
| 597 | 36900.37000.42300.42700.43000.44500.50300.625300 | IPS flooring work | 13d | 2027-05-12 | 2027-05-24 | 591 |  | Sector-44 Noida(2) | 9377614 |
| 598 | 36900.37000.42300.42700.43000.44500.50300.625400 | Toilet dado work | 12d | 2027-06-14 | 2027-06-25 | 594, 595, 596 |  | Sector-44 Noida(2) | 9377624 |
| 599 | 36900.37000.42300.42700.43000.44500.50300.625500 | Toilet flooring work | 12d | 2027-06-26 | 2027-07-07 | 598 |  | Sector-44 Noida(2) | 9377634 |
| 600 | 36900.37000.42300.42700.43000.44500.50300.625600 | Living dinning flooring | 18d | 2027-07-08 | 2027-07-25 | 597, 599 |  | Sector-44 Noida(2) | 9377644 |
| 601 | 36900.37000.42300.42700.43000.44500.50300.625700 | Electrical wiring work | 12d | 2027-07-16 | 2027-07-27 | 600FS-10d |  | Sector-44 Noida(2) | 9377654 |
| 602 | 36900.37000.42300.42700.43000.44500.50300.625800 | Aluminium door-window fixing | 8d | 2027-07-20 | 2027-07-27 | 592, 601FS-8d |  | Sector-44 Noida(2) | 9377664 |
| 603 | 36900.37000.42300.42700.43000.44500.50300.625900 | Putty primer coat | 12d | 2027-07-20 | 2027-07-31 | 602FS-8d |  | Sector-44 Noida(2) | 9377674 |
| 604 | 36900.37000.42300.42700.43000.44500.50300.626000 | Prehung door fixing | 10d | 2027-07-27 | 2027-08-05 | 603FS-5d |  | Sector-44 Noida(2) | 9377684 |
| 605 | 36900.37000.42300.42700.43000.44500.50300.626100 | Painting 1st coat | 13d | 2027-08-06 | 2027-08-18 | 604 |  | Sector-44 Noida(2) | 9377694 |
| 606 | 36900.37000.42300.42700.43000.44500.50300.626200 | False Ceiling panel fixing | 10d | 2027-08-19 | 2027-08-28 | 589, 605 |  | Sector-44 Noida(2) | 9377704 |

| ID | WBS | Task | Duration | Start | Finish | Predecessors | Constraint | Calendar | Unique_Task_ID |
| --- | --- | --- | --- | --- | --- | --- | --- | --- | --- |
| 607 | 36900.37000.42300.42700.43000.44500.50400 | **19th Floor** | 124d | 2027-05-09 | 2027-09-09 |  | start no earlier than 2027-05-09 | Sector-44 Noida(2) | 9361944 |
| 608 | 36900.37000.42300.42700.43000.44500.50400.626300 | Block Work | 15d | 2027-05-09 | 2027-05-23 | 292FS+60d |  | Sector-44 Noida(2) | 9377714 |
| 609 | 36900.37000.42300.42700.43000.44500.50400.626400 | Installation of temporary Main door | 5d | 2027-05-24 | 2027-05-28 | 608 |  | Sector-44 Noida(2) | 9377724 |
| 610 | 36900.37000.42300.42700.43000.44500.50400.626500 | Fire sprinkler pipe fixing | 5d | 2027-05-24 | 2027-05-28 | 593, 608 |  | Sector-44 Noida(2) | 9377734 |
| 611 | 36900.37000.42300.42700.43000.44500.50400.626600 | Internal Plumbing Works | 9d | 2027-05-24 | 2027-06-01 | 608 |  | Sector-44 Noida(2) | 9377744 |
| 612 | 36900.37000.42300.42700.43000.44500.50400.626700 | Waterproofing | 10d | 2027-06-02 | 2027-06-11 | 611 |  | Sector-44 Noida(2) | 9377754 |
| 613 | 36900.37000.42300.42700.43000.44500.50400.626800 | Internal Plaster | 14d | 2027-06-12 | 2027-06-25 | 611, 612 |  | Sector-44 Noida(2) | 9377764 |
| 614 | 36900.37000.42300.42700.43000.44500.50400.626900 | IPS flooring work | 13d | 2027-05-24 | 2027-06-05 | 608 |  | Sector-44 Noida(2) | 9377774 |
| 615 | 36900.37000.42300.42700.43000.44500.50400.627000 | Toilet dado work | 12d | 2027-06-26 | 2027-07-07 | 611, 612, 613 |  | Sector-44 Noida(2) | 9377784 |
| 616 | 36900.37000.42300.42700.43000.44500.50400.627100 | Toilet flooring work | 12d | 2027-07-08 | 2027-07-19 | 615 |  | Sector-44 Noida(2) | 9377794 |
| 617 | 36900.37000.42300.42700.43000.44500.50400.627200 | Living dinning flooring | 18d | 2027-07-20 | 2027-08-06 | 614, 616 |  | Sector-44 Noida(2) | 9377804 |
| 618 | 36900.37000.42300.42700.43000.44500.50400.627300 | Electrical wiring work | 12d | 2027-07-28 | 2027-08-08 | 617FS-10d |  | Sector-44 Noida(2) | 9377814 |
| 619 | 36900.37000.42300.42700.43000.44500.50400.627400 | Aluminium door-window fixing | 8d | 2027-08-01 | 2027-08-08 | 609, 618FS-8d |  | Sector-44 Noida(2) | 9377824 |
| 620 | 36900.37000.42300.42700.43000.44500.50400.627500 | Putty primer coat | 12d | 2027-08-01 | 2027-08-12 | 619FS-8d |  | Sector-44 Noida(2) | 9377834 |
| 621 | 36900.37000.42300.42700.43000.44500.50400.627600 | Prehung door fixing | 10d | 2027-08-08 | 2027-08-17 | 620FS-5d |  | Sector-44 Noida(2) | 9377844 |
| 622 | 36900.37000.42300.42700.43000.44500.50400.627700 | Painting 1st coat | 13d | 2027-08-18 | 2027-08-30 | 621 |  | Sector-44 Noida(2) | 9377854 |
| 623 | 36900.37000.42300.42700.43000.44500.50400.627800 | False Ceiling panel fixing | 10d | 2027-08-31 | 2027-09-09 | 606, 622 |  | Sector-44 Noida(2) | 9377864 |
| 624 | 36900.37000.42300.42700.43000.44500.50500 | **20th Floor** | 124d | 2027-05-20 | 2027-09-20 |  | start no earlier than 2027-05-20 | Sector-44 Noida(2) | 9361984 |
| 625 | 36900.37000.42300.42700.43000.44500.50500.627900 | Block Work | 15d | 2027-05-20 | 2027-06-03 | 293FS+60d |  | Sector-44 Noida(2) | 9377874 |
| 626 | 36900.37000.42300.42700.43000.44500.50500.628000 | Installation of temporary Main door | 5d | 2027-06-04 | 2027-06-08 | 625 |  | Sector-44 Noida(2) | 9377884 |
| 627 | 36900.37000.42300.42700.43000.44500.50500.628100 | Fire sprinkler pipe fixing | 5d | 2027-06-04 | 2027-06-08 | 610, 625 |  | Sector-44 Noida(2) | 9377894 |
| 628 | 36900.37000.42300.42700.43000.44500.50500.628200 | Internal Plumbing Works | 9d | 2027-06-04 | 2027-06-12 | 625 |  | Sector-44 Noida(2) | 9377904 |
| 629 | 36900.37000.42300.42700.43000.44500.50500.628300 | Waterproofing | 10d | 2027-06-13 | 2027-06-22 | 628 |  | Sector-44 Noida(2) | 9377914 |
| 630 | 36900.37000.42300.42700.43000.44500.50500.628400 | Internal Plaster | 14d | 2027-06-23 | 2027-07-06 | 628, 629 |  | Sector-44 Noida(2) | 9377924 |
| 631 | 36900.37000.42300.42700.43000.44500.50500.628500 | IPS flooring work | 13d | 2027-06-04 | 2027-06-16 | 625 |  | Sector-44 Noida(2) | 9377934 |
| 632 | 36900.37000.42300.42700.43000.44500.50500.628600 | Toilet dado work | 12d | 2027-07-07 | 2027-07-18 | 628, 629, 630 |  | Sector-44 Noida(2) | 9377944 |
| 633 | 36900.37000.42300.42700.43000.44500.50500.628700 | Toilet flooring work | 12d | 2027-07-19 | 2027-07-30 | 632 |  | Sector-44 Noida(2) | 9377954 |
| 634 | 36900.37000.42300.42700.43000.44500.50500.628800 | Living dinning flooring | 18d | 2027-07-31 | 2027-08-17 | 631, 633 |  | Sector-44 Noida(2) | 9377964 |
| 635 | 36900.37000.42300.42700.43000.44500.50500.628900 | Electrical wiring work | 12d | 2027-08-08 | 2027-08-19 | 634FS-10d |  | Sector-44 Noida(2) | 9377974 |
| 636 | 36900.37000.42300.42700.43000.44500.50500.629000 | Aluminium door-window fixing | 8d | 2027-08-12 | 2027-08-19 | 626, 635FS-8d |  | Sector-44 Noida(2) | 9377984 |
| 637 | 36900.37000.42300.42700.43000.44500.50500.629100 | Putty primer coat | 12d | 2027-08-12 | 2027-08-23 | 636FS-8d |  | Sector-44 Noida(2) | 9377994 |
| 638 | 36900.37000.42300.42700.43000.44500.50500.629200 | Prehung door fixing | 10d | 2027-08-19 | 2027-08-28 | 637FS-5d |  | Sector-44 Noida(2) | 9378004 |
| 639 | 36900.37000.42300.42700.43000.44500.50500.629300 | Painting 1st coat | 13d | 2027-08-29 | 2027-09-10 | 638 |  | Sector-44 Noida(2) | 9378014 |
| 640 | 36900.37000.42300.42700.43000.44500.50500.629400 | False Ceiling panel fixing | 10d | 2027-09-11 | 2027-09-20 | 623, 639 |  | Sector-44 Noida(2) | 9378024 |

| ID | WBS | Task | Duration | Start | Finish | Predecessors | Constraint | Calendar | Unique_Task_ID |
| --- | --- | --- | --- | --- | --- | --- | --- | --- | --- |
| 641 | 36900.37000.42300.42700.43000.44500.50600 | **21st Floor** | 127d | 2027-05-27 | 2027-09-30 |  | start no earlier than 2027-05-27 | Sector-44 Noida(2) | 9362044 |
| 642 | 36900.37000.42300.42700.43000.44500.50600.629500 | Block Work | 15d | 2027-05-27 | 2027-06-10 | 294FS+60d |  | Sector-44 Noida(2) | 9378034 |
| 643 | 36900.37000.42300.42700.43000.44500.50600.629600 | Installation of temporary Main door | 5d | 2027-06-11 | 2027-06-15 | 642 |  | Sector-44 Noida(2) | 9378044 |
| 644 | 36900.37000.42300.42700.43000.44500.50600.629700 | Fire sprinkler pipe fixing | 5d | 2027-06-11 | 2027-06-15 | 627, 642 |  | Sector-44 Noida(2) | 9378054 |
| 645 | 36900.37000.42300.42700.43000.44500.50600.629800 | Internal Plumbing Works | 9d | 2027-06-11 | 2027-06-19 | 642 |  | Sector-44 Noida(2) | 9378064 |
| 646 | 36900.37000.42300.42700.43000.44500.50600.629900 | Waterproofing | 10d | 2027-06-20 | 2027-06-29 | 645 |  | Sector-44 Noida(2) | 9378074 |
| 647 | 36900.37000.42300.42700.43000.44500.50600.630000 | Internal Plaster | 14d | 2027-06-30 | 2027-07-13 | 645, 646 |  | Sector-44 Noida(2) | 9378084 |
| 648 | 36900.37000.42300.42700.43000.44500.50600.630100 | IPS flooring work | 13d | 2027-06-11 | 2027-06-23 | 642 |  | Sector-44 Noida(2) | 9378094 |
| 649 | 36900.37000.42300.42700.43000.44500.50600.630200 | Toilet dado work | 12d | 2027-07-14 | 2027-07-25 | 645, 646, 647 |  | Sector-44 Noida(2) | 9378104 |
| 650 | 36900.37000.42300.42700.43000.44500.50600.630300 | Toilet flooring work | 12d | 2027-07-26 | 2027-08-06 | 649 |  | Sector-44 Noida(2) | 9378114 |
| 651 | 36900.37000.42300.42700.43000.44500.50600.630400 | Living dinning flooring | 18d | 2027-08-07 | 2027-08-24 | 648, 650 |  | Sector-44 Noida(2) | 9378124 |
| 652 | 36900.37000.42300.42700.43000.44500.50600.630500 | Electrical wiring work | 12d | 2027-08-15 | 2027-08-26 | 651FS-10d |  | Sector-44 Noida(2) | 9378134 |
| 653 | 36900.37000.42300.42700.43000.44500.50600.630600 | Aluminium door-window fixing | 8d | 2027-08-19 | 2027-08-26 | 643, 652FS-8d |  | Sector-44 Noida(2) | 9378144 |
| 654 | 36900.37000.42300.42700.43000.44500.50600.630700 | Putty primer coat | 12d | 2027-08-19 | 2027-08-30 | 653FS-8d |  | Sector-44 Noida(2) | 9378154 |
| 655 | 36900.37000.42300.42700.43000.44500.50600.630800 | Prehung door fixing | 10d | 2027-08-26 | 2027-09-04 | 654FS-5d |  | Sector-44 Noida(2) | 9378164 |
| 656 | 36900.37000.42300.42700.43000.44500.50600.630900 | Painting 1st coat | 13d | 2027-09-05 | 2027-09-17 | 655 |  | Sector-44 Noida(2) | 9378174 |
| 657 | 36900.37000.42300.42700.43000.44500.50600.631000 | False Ceiling panel fixing | 10d | 2027-09-21 | 2027-09-30 | 640, 656 |  | Sector-44 Noida(2) | 9378184 |
| 658 | 36900.37000.42300.42700.43000.44500.50700 | **22nd Floor** | 130d | 2027-06-03 | 2027-10-10 |  | start no earlier than 2027-06-03 | Sector-44 Noida(2) | 9362034 |
| 659 | 36900.37000.42300.42700.43000.44500.50700.631100 | Block Work | 15d | 2027-06-03 | 2027-06-17 | 295FS+60d |  | Sector-44 Noida(2) | 9378194 |
| 660 | 36900.37000.42300.42700.43000.44500.50700.631200 | Installation of temporary Main door | 5d | 2027-06-18 | 2027-06-22 | 659 |  | Sector-44 Noida(2) | 9378204 |
| 661 | 36900.37000.42300.42700.43000.44500.50700.631300 | Fire sprinkler pipe fixing | 5d | 2027-06-18 | 2027-06-22 | 644, 659 |  | Sector-44 Noida(2) | 9378214 |
| 662 | 36900.37000.42300.42700.43000.44500.50700.631400 | Internal Plumbing Works | 9d | 2027-06-18 | 2027-06-26 | 659 |  | Sector-44 Noida(2) | 9378224 |
| 663 | 36900.37000.42300.42700.43000.44500.50700.631500 | Waterproofing | 10d | 2027-06-27 | 2027-07-06 | 662 |  | Sector-44 Noida(2) | 9378234 |
| 664 | 36900.37000.42300.42700.43000.44500.50700.631600 | Internal Plaster | 14d | 2027-07-07 | 2027-07-20 | 662, 663 |  | Sector-44 Noida(2) | 9378244 |
| 665 | 36900.37000.42300.42700.43000.44500.50700.631700 | IPS flooring work | 13d | 2027-06-18 | 2027-06-30 | 659 |  | Sector-44 Noida(2) | 9378254 |
| 666 | 36900.37000.42300.42700.43000.44500.50700.631800 | Toilet dado work | 12d | 2027-07-21 | 2027-08-01 | 662, 663, 664 |  | Sector-44 Noida(2) | 9378264 |
| 667 | 36900.37000.42300.42700.43000.44500.50700.631900 | Toilet flooring work | 12d | 2027-08-02 | 2027-08-13 | 666 |  | Sector-44 Noida(2) | 9378274 |
| 668 | 36900.37000.42300.42700.43000.44500.50700.632000 | Living dinning flooring | 18d | 2027-08-14 | 2027-08-31 | 665, 667 |  | Sector-44 Noida(2) | 9378284 |
| 669 | 36900.37000.42300.42700.43000.44500.50700.632100 | Electrical wiring work | 12d | 2027-08-22 | 2027-09-02 | 668FS-10d |  | Sector-44 Noida(2) | 9378294 |
| 670 | 36900.37000.42300.42700.43000.44500.50700.632200 | Aluminium door-window fixing | 8d | 2027-08-26 | 2027-09-02 | 660, 669FS-8d |  | Sector-44 Noida(2) | 9378304 |
| 671 | 36900.37000.42300.42700.43000.44500.50700.632300 | Putty primer coat | 12d | 2027-08-26 | 2027-09-06 | 670FS-8d |  | Sector-44 Noida(2) | 9378314 |
| 672 | 36900.37000.42300.42700.43000.44500.50700.632400 | Prehung door fixing | 10d | 2027-09-02 | 2027-09-11 | 671FS-5d |  | Sector-44 Noida(2) | 9378324 |
| 673 | 36900.37000.42300.42700.43000.44500.50700.632500 | Painting 1st coat | 13d | 2027-09-12 | 2027-09-24 | 672 |  | Sector-44 Noida(2) | 9378334 |
| 674 | 36900.37000.42300.42700.43000.44500.50700.632600 | False Ceiling panel fixing | 10d | 2027-10-01 | 2027-10-10 | 657, 673 |  | Sector-44 Noida(2) | 9378344 |

| ID | WBS | Task | Duration | Start | Finish | Predecessors | Constraint | Calendar | Unique_Task_ID |
| --- | --- | --- | --- | --- | --- | --- | --- | --- | --- |
| 675 | 36900.37000.42300.42700.43000.44500.50800 | **23rd Floor** | 133d | 2027-06-10 | 2027-10-20 |  | start no earlier than 2027-06-10 | Sector-44 Noida(2) | 9362024 |
| 676 | 36900.37000.42300.42700.43000.44500.50800.632700 | Block Work | 15d | 2027-06-10 | 2027-06-24 | 296FS+60d |  | Sector-44 Noida(2) | 9378354 |
| 677 | 36900.37000.42300.42700.43000.44500.50800.632800 | Installation of temporary Main door | 5d | 2027-06-25 | 2027-06-29 | 676 |  | Sector-44 Noida(2) | 9378364 |
| 678 | 36900.37000.42300.42700.43000.44500.50800.632900 | Fire sprinkler pipe fixing | 5d | 2027-06-25 | 2027-06-29 | 661, 676 |  | Sector-44 Noida(2) | 9378374 |
| 679 | 36900.37000.42300.42700.43000.44500.50800.633000 | Internal Plumbing Works | 9d | 2027-06-25 | 2027-07-03 | 676 |  | Sector-44 Noida(2) | 9378384 |
| 680 | 36900.37000.42300.42700.43000.44500.50800.633100 | Waterproofing | 10d | 2027-07-04 | 2027-07-13 | 679 |  | Sector-44 Noida(2) | 9378394 |
| 681 | 36900.37000.42300.42700.43000.44500.50800.633200 | Internal Plaster | 14d | 2027-07-14 | 2027-07-27 | 679, 680 |  | Sector-44 Noida(2) | 9378404 |
| 682 | 36900.37000.42300.42700.43000.44500.50800.633300 | IPS flooring work | 13d | 2027-06-25 | 2027-07-07 | 676 |  | Sector-44 Noida(2) | 9378414 |
| 683 | 36900.37000.42300.42700.43000.44500.50800.633400 | Toilet dado work | 12d | 2027-07-28 | 2027-08-08 | 679, 680, 681 |  | Sector-44 Noida(2) | 9378424 |
| 684 | 36900.37000.42300.42700.43000.44500.50800.633500 | Toilet flooring work | 12d | 2027-08-09 | 2027-08-20 | 683 |  | Sector-44 Noida(2) | 9378434 |
| 685 | 36900.37000.42300.42700.43000.44500.50800.633600 | Living dinning flooring | 18d | 2027-08-21 | 2027-09-07 | 682, 684 |  | Sector-44 Noida(2) | 9378444 |
| 686 | 36900.37000.42300.42700.43000.44500.50800.633700 | Electrical wiring work | 12d | 2027-08-29 | 2027-09-09 | 685FS-10d |  | Sector-44 Noida(2) | 9378454 |
| 687 | 36900.37000.42300.42700.43000.44500.50800.633800 | Aluminium door-window fixing | 8d | 2027-09-02 | 2027-09-09 | 677, 686FS-8d |  | Sector-44 Noida(2) | 9378464 |
| 688 | 36900.37000.42300.42700.43000.44500.50800.633900 | Putty primer coat | 12d | 2027-09-02 | 2027-09-13 | 687FS-8d |  | Sector-44 Noida(2) | 9378474 |
| 689 | 36900.37000.42300.42700.43000.44500.50800.634000 | Prehung door fixing | 10d | 2027-09-09 | 2027-09-18 | 688FS-5d |  | Sector-44 Noida(2) | 9378484 |
| 690 | 36900.37000.42300.42700.43000.44500.50800.634100 | Painting 1st coat | 13d | 2027-09-19 | 2027-10-01 | 689 |  | Sector-44 Noida(2) | 9378494 |
| 691 | 36900.37000.42300.42700.43000.44500.50800.634200 | False Ceiling panel fixing | 10d | 2027-10-11 | 2027-10-20 | 674, 690 |  | Sector-44 Noida(2) | 9378504 |
| 692 | 36900.37000.42300.42700.43000.191300 | **Terrace finishing** | 70d | 2027-06-10 | 2027-08-18 |  | start no earlier than 2027-06-10 | Sector-44 Noida(2) | 9366114 |
| 693 | 36900.37000.42300.42700.43000.191300.370400 | Terrace waterproofing | 30d | 2027-06-10 | 2027-07-09 | 768FS+10d |  | Sector-44 Noida(2) | 9369724 |
| 694 | 36900.37000.42300.42700.43000.191300.370500 | Terrace Finishing | 40d | 2027-07-10 | 2027-08-18 | 693 |  | Sector-44 Noida(2) | 9369734 |
| 695 | 36900.37000.42300.42700.43000.96600 | **Common area finishing** | 190d | 2027-04-08 | 2027-10-14 |  | start no earlier than 2027-04-08 | Sector-44 Noida(2) | 9362164 |
| 696 | 36900.37000.42300.42700.43000.96600.370600 | Masonary Work | 40d | 2027-04-08 | 2027-05-17 | 255 |  | Sector-44 Noida(2) | 9369744 |
| 697 | 36900.37000.42300.42700.43000.96600.370700 | Fire sprinkler pipe fixing | 40d | 2027-04-13 | 2027-05-22 | 255FS+5d |  | Sector-44 Noida(2) | 9369754 |
| 698 | 36900.37000.42300.42700.43000.96600.370800 | Corridoor, staircase, shaft Plaster & whitewash | 80d | 2027-04-18 | 2027-07-06 | 696FS-30d |  | Sector-44 Noida(2) | 9369764 |
| 699 | 36900.37000.42300.42700.43000.96600.370900 | Staircase railing fixing | 80d | 2027-04-28 | 2027-07-16 | 696FS-20d |  | Sector-44 Noida(2) | 9369774 |
| 700 | 36900.37000.42300.42700.43000.96600.371000 | Fire staircase flooring | 100d | 2027-04-18 | 2027-07-26 | 699FS-90d |  | Sector-44 Noida(2) | 9369784 |
| 701 | 36900.37000.42300.42700.43000.96600.371100 | Main staircase flooring | 100d | 2027-04-18 | 2027-07-26 | 699FS-90d |  | Sector-44 Noida(2) | 9369794 |
| 702 | 36900.37000.42300.42700.43000.96600.371200 | Fire door work | 120d | 2027-05-28 | 2027-09-24 | 700FS-60d |  | Sector-44 Noida(2) | 9369804 |
| 703 | 36900.37000.42300.42700.43000.96600.371300 | Lobby flooring & Corridor | 170d | 2027-04-28 | 2027-10-14 | 701FS-90d |  | Sector-44 Noida(2) | 9369814 |
| 704 | 36900.37000.42300.42700.43000.96600.371400 | Ceiling & wall putty-primer | 80d | 2027-07-17 | 2027-10-04 | 703FS-90d |  | Sector-44 Noida(2) | 9369824 |
| 705 | 36900.37000.42300.42700.43000.96600.371500 | Ceiling & wall painting | 75d | 2027-06-27 | 2027-09-09 | 704FS-100d |  | Sector-44 Noida(2) | 9369834 |
| 706 | 36900.37000.42300.42700.43000.96600.371600 | Electrical wiring work | 70d | 2027-06-02 | 2027-08-10 | 705FS-100d |  | Sector-44 Noida(2) | 9369844 |
| 707 | 36900.37000.42300.42700.43000.96600.371700 | Light fixture supply & installation | 30d | 2027-06-27 | 2027-07-26 | 706FS-45d |  | Sector-44 Noida(2) | 9369854 |
| 708 | 36900.37000.42300.42700.43000.96600.371800 | Installation of fire signages including Basements | 20d | 2027-09-10 | 2027-09-29 | 705 |  | Sector-44 Noida(2) | 9369864 |

| ID | WBS | Task | Duration | Start | Finish | Predecessors | Constraint | Calendar | Unique_Task_ID |
| --- | --- | --- | --- | --- | --- | --- | --- | --- | --- |
| 709 | 36900.37000.42300.42700.43000.48100 | **Balcony Glass Railing** | 161d | 2027-02-20 | 2027-07-30 |  | start no earlier than 2027-02-20 | Sector-44 Noida(2) | 9360894 |
| 710 | 36900.37000.42300.42700.43000.48100.371900 | 1st Floor | 7d | 2027-02-20 | 2027-02-26 | 302FS+150d |  | Sector-44 Noida(2) | 9369874 |
| 711 | 36900.37000.42300.42700.43000.48100.372000 | 2nd Floor | 7d | 2027-02-27 | 2027-03-05 | 710 |  | Sector-44 Noida(2) | 9369884 |
| 712 | 36900.37000.42300.42700.43000.48100.372100 | 3rd Floor | 7d | 2027-03-06 | 2027-03-12 | 711 |  | Sector-44 Noida(2) | 9369894 |
| 713 | 36900.37000.42300.42700.43000.48100.372200 | 4th Floor | 7d | 2027-03-13 | 2027-03-19 | 712 |  | Sector-44 Noida(2) | 9369904 |
| 714 | 36900.37000.42300.42700.43000.48100.372300 | 5th Floor | 7d | 2027-03-20 | 2027-03-26 | 713 |  | Sector-44 Noida(2) | 9369914 |
| 715 | 36900.37000.42300.42700.43000.48100.372400 | 6th Floor | 7d | 2027-03-27 | 2027-04-02 | 714 |  | Sector-44 Noida(2) | 9369924 |
| 716 | 36900.37000.42300.42700.43000.48100.372500 | 7th Floor | 7d | 2027-04-03 | 2027-04-09 | 715 |  | Sector-44 Noida(2) | 9369934 |
| 717 | 36900.37000.42300.42700.43000.48100.372600 | 8th Floor | 7d | 2027-04-10 | 2027-04-16 | 716 |  | Sector-44 Noida(2) | 9369944 |
| 718 | 36900.37000.42300.42700.43000.48100.372700 | 9th Floor | 7d | 2027-04-17 | 2027-04-23 | 717 |  | Sector-44 Noida(2) | 9369954 |
| 719 | 36900.37000.42300.42700.43000.48100.372800 | 10th Floor | 7d | 2027-04-24 | 2027-04-30 | 718 |  | Sector-44 Noida(2) | 9369964 |
| 720 | 36900.37000.42300.42700.43000.48100.372900 | 11th Floor | 7d | 2027-05-01 | 2027-05-07 | 719 |  | Sector-44 Noida(2) | 9369974 |
| 721 | 36900.37000.42300.42700.43000.48100.373000 | 12th Floor | 7d | 2027-05-08 | 2027-05-14 | 720 |  | Sector-44 Noida(2) | 9369984 |
| 722 | 36900.37000.42300.42700.43000.48100.373100 | 13th Floor | 7d | 2027-05-15 | 2027-05-21 | 721 |  | Sector-44 Noida(2) | 9369994 |
| 723 | 36900.37000.42300.42700.43000.48100.373200 | 14th Floor | 7d | 2027-05-22 | 2027-05-28 | 722 |  | Sector-44 Noida(2) | 9370004 |
| 724 | 36900.37000.42300.42700.43000.48100.373300 | 15th Floor | 7d | 2027-05-29 | 2027-06-04 | 723 |  | Sector-44 Noida(2) | 9370014 |
| 725 | 36900.37000.42300.42700.43000.48100.373400 | 16th Floor | 7d | 2027-06-05 | 2027-06-11 | 724 |  | Sector-44 Noida(2) | 9370024 |
| 726 | 36900.37000.42300.42700.43000.48100.373500 | 17th Floor | 7d | 2027-06-12 | 2027-06-18 | 725 |  | Sector-44 Noida(2) | 9370034 |
| 727 | 36900.37000.42300.42700.43000.48100.373600 | 18th Floor | 7d | 2027-06-19 | 2027-06-25 | 726 |  | Sector-44 Noida(2) | 9370044 |
| 728 | 36900.37000.42300.42700.43000.48100.373700 | 19th Floor | 7d | 2027-06-26 | 2027-07-02 | 727 |  | Sector-44 Noida(2) | 9370054 |
| 729 | 36900.37000.42300.42700.43000.48100.373800 | 20th Floor | 7d | 2027-07-03 | 2027-07-09 | 728 |  | Sector-44 Noida(2) | 9370064 |
| 730 | 36900.37000.42300.42700.43000.48100.373900 | 21st Floor | 7d | 2027-07-10 | 2027-07-16 | 729 |  | Sector-44 Noida(2) | 9370074 |
| 731 | 36900.37000.42300.42700.43000.48100.374000 | 22nd Floor | 7d | 2027-07-17 | 2027-07-23 | 730 |  | Sector-44 Noida(2) | 9370084 |
| 732 | 36900.37000.42300.42700.43000.48100.374100 | 23rd Floor | 7d | 2027-07-24 | 2027-07-30 | 731 |  | Sector-44 Noida(2) | 9370094 |

| ID | WBS | Task | Duration | Start | Finish | Predecessors | Constraint | Calendar | Unique_Task_ID |
| --- | --- | --- | --- | --- | --- | --- | --- | --- | --- |
| 733 | 36900.37000.42300.42700.96300 | **MEP Work** | 228d | 2027-04-08 | 2028-01-05 |  | start no earlier than 2027-04-08 | Sector-44 Noida(2) | 9362114 |
| 734 | 36900.37000.42300.42700.96300.100200 | **Electrical Work** | 228d | 2027-04-08 | 2028-01-05 |  | start no earlier than 2027-04-08 | Sector-44 Noida(2) | 9362294 |
| 735 | 36900.37000.42300.42700.96300.100200.374200 | Cable Tray | 30d | 2027-05-18 | 2027-06-16 | 272 |  | Sector-44 Noida(2) | 9370104 |
| 736 | 36900.37000.42300.42700.96300.100200.374300 | Cable, main & sub main | 30d | 2027-04-08 | 2027-05-07 | 735FS-70d |  | Sector-44 Noida(2) | 9370114 |
| 737 | 36900.37000.42300.42700.96300.100200.374400 | LT panel & DB | 40d | 2027-04-18 | 2027-05-27 | 735FS-60d |  | Sector-44 Noida(2) | 9370124 |
| 738 | 36900.37000.42300.42700.96300.100200.374500 | Earthing Works | 15d | 2027-06-17 | 2027-07-01 | 735 |  | Sector-44 Noida(2) | 9370134 |
| 739 | 36900.37000.42300.42700.96300.100200.374600 | Advanced Lightening Protection system | 15d | 2027-06-07 | 2027-06-21 | 738FS-25d |  | Sector-44 Noida(2) | 9370144 |
| 740 | 36900.37000.42300.42700.96300.100200.374700 | Energy meter | 15d | 2027-05-08 | 2027-05-22 | 736 |  | Sector-44 Noida(2) | 9370154 |
| 741 | 36900.37000.42300.42700.96300.100200.374800 | Inverter / UPS | 10d | 2027-05-28 | 2027-06-06 | 736, 737, 740FS-5d |  | Sector-44 Noida(2) | 9370164 |
| 742 | 36900.37000.42300.42700.96300.100200.374900 | HVAC & Exhaust fan | 30d | 2027-05-18 | 2027-06-16 | 735FS-30d |  | Sector-44 Noida(2) | 9370174 |
| 743 | 36900.37000.42300.42700.96300.100200.375000 | FTTH | 10d | 2027-05-03 | 2027-05-12 | 737FS-25d |  | Sector-44 Noida(2) | 9370184 |
| 744 | 36900.37000.42300.42700.96300.100200.375100 | Security System - FA & PA | 10d | 2027-05-03 | 2027-05-12 | 737FS-25d |  | Sector-44 Noida(2) | 9370194 |
| 745 | 36900.37000.42300.42700.96300.100200.375200 | T&C of complete system | 43d | 2027-10-10 | 2028-01-05 | 707, 737, 739, 740, 741, 742, 743, 744, 3446FS-45d |  | Sector-44 Noida(2) | 9370204 |
| 746 | 36900.37000.42300.42700.96300.105500 | **Plumbing work** | 112d | 2027-04-21 | 2027-08-10 |  | start no earlier than 2027-04-21 | Sector-44 Noida(2) | 9362604 |
| 747 | 36900.37000.42300.42700.96300.105500.375300 | Terrace looping | 20d | 2027-04-21 | 2027-05-10 | 297 |  | Sector-44 Noida(2) | 9370214 |
| 748 | 36900.37000.42300.42700.96300.105500.375400 | Shaft Plumbing | 30d | 2027-06-07 | 2027-07-06 | 698FS-30d, 747 |  | Sector-44 Noida(2) | 9370224 |
| 749 | 36900.37000.42300.42700.96300.105500.375500 | CP sanitary fixture supply | 20d | 2027-07-07 | 2027-07-26 | 748 |  | Sector-44 Noida(2) | 9370234 |
| 750 | 36900.37000.42300.42700.96300.105500.375600 | Cold & flushing water supply | 20d | 2027-07-07 | 2027-07-26 | 748 |  | Sector-44 Noida(2) | 9370244 |
| 751 | 36900.37000.42300.42700.96300.105500.375700 | Misc work | 15d | 2027-07-12 | 2027-07-26 | 750FS-15d |  | Sector-44 Noida(2) | 9370254 |
| 752 | 36900.37000.42300.42700.96300.105500.375800 | Installation of PHE pumps | 25d | 2027-05-11 | 2027-06-04 | 747 |  | Sector-44 Noida(2) | 9370264 |
| 753 | 36900.37000.42300.42700.96300.105500.375900 | T&C of complete system | 15d | 2027-07-27 | 2027-08-10 | 3428, 3429, 3430, 747, 748, 750, 751, 752 |  | Sector-44 Noida(2) | 9370274 |
| 754 | 36900.37000.42300.42700.96300.112100 | **Fire fighting work** | 126d | 2027-06-07 | 2027-10-10 |  | start no earlier than 2027-06-07 | Sector-44 Noida(2) | 9362954 |
| 755 | 36900.37000.42300.42700.96300.112100.376000 | Fire hydrant work | 25d | 2027-06-07 | 2027-07-01 | 698FS-30d |  | Sector-44 Noida(2) | 9370284 |
| 756 | 36900.37000.42300.42700.96300.112100.376100 | Pipe connection & sprinkler installation | 15d | 2027-07-02 | 2027-07-16 | 755 |  | Sector-44 Noida(2) | 9370294 |
| 757 | 36900.37000.42300.42700.96300.112100.376200 | Shaft Downtake works | 25d | 2027-06-07 | 2027-07-01 | 297, 698FS-30d |  | Sector-44 Noida(2) | 9370304 |
| 758 | 36900.37000.42300.42700.96300.112100.376300 | Connection to pump room | 10d | 2027-07-02 | 2027-07-11 | 757 |  | Sector-44 Noida(2) | 9370314 |
| 759 | 36900.37000.42300.42700.96300.112100.376400 | Installation of FF pumps | 15d | 2027-07-02 | 2027-07-16 | 755, 757 |  | Sector-44 Noida(2) | 9370324 |
| 760 | 36900.37000.42300.42700.96300.112100.376500 | T&C of complete system | 16d | 2027-09-25 | 2027-10-10 | 3431, 697, 702, 708FS-21d, 756, 758, 759, 678 |  | Sector-44 Noida(2) | 9370334 |

| ID | WBS | Task | Duration | Start | Finish | Predecessors | Complete | Constraint | Calendar | Unique_Task_ID |
| --- | --- | --- | --- | --- | --- | --- | --- | --- | --- | --- |
| 761 | 36900.37000.42300.42700.96300.186200 | **Lift work** | 84d | 2027-05-01 | 2027-07-23 |  |  | start no earlier than 2027-05-01 | Sector-44 Noida(2) | 9365814 |
| 762 | 36900.37000.42300.42700.96300.186200.376600 | Lift Shaft/Pit Handover | 12d | 2027-05-01 | 2027-05-12 | 298 |  |  | Sector-44 Noida(2) | 9370344 |
| 763 | 36900.37000.42300.42700.96300.186200.376700 | Lift installation work | 55d | 2027-05-13 | 2027-07-06 | 762 |  |  | Sector-44 Noida(2) | 9370354 |
| 764 | 36900.37000.42300.42700.96300.186200.376800 | Lift testing and commissioning | 17d | 2027-07-07 | 2027-07-23 | 763 |  |  | Sector-44 Noida(2) | 9370364 |
| 765 | 36900.37000.42300.42700.185600 | **External Paint Works** | 80d | 2027-04-21 | 2027-07-09 |  |  | start no earlier than 2027-04-21 | Sector-44 Noida(2) | 9364264 |
| 766 | 36900.37000.42300.42700.185600.280000 | Surface prepration | 30d | 2027-04-21 | 2027-05-20 | 297 |  |  | Sector-44 Noida(2) | 9366874 |
| 767 | 36900.37000.42300.42700.185600.280100 | External Painting (Primer, texture & first coat) | 50d | 2027-05-21 | 2027-07-09 | 766 |  |  | Sector-44 Noida(2) | 9366884 |
| 768 | 36900.37000.42300.42700.185600.280200 | Final coat of painting | 30d | 2027-05-01 | 2027-05-30 | 767FS-70d |  |  | Sector-44 Noida(2) | 9366894 |
| 769 | 36900.37000.42300.42700.185600.280300 | Misc. work | 20d | 2027-05-21 | 2027-06-09 | 766 |  |  | Sector-44 Noida(2) | 9366904 |
| 770 | 36900.37000.42300.42700.259500 | OC Application/Readiness | 1d | 2028-01-06 | 2028-01-06 | 745, 753, 760, 764, 694, 732, 691, 700, 701, 703, 3432 |  |  | Sector-44 Noida(2) | 9366194 |
| 771 | 36900.37000.42300.42700.259600 | OC Receipt | 60d | 2028-01-07 | 2028-03-06 | 770, 88, 89, 97, 98 |  |  | Sector-44 Noida(2) | 9366204 |
| 772 | 36900.37000.42300.42700.106100 | **Post OC Activities** | 260d | 2028-01-17 | 2028-10-02 |  |  | start no earlier than 2028-01-17 | Sector-44 Noida(2) | 9364094 |
| 773 | 36900.37000.42300.42700.106100.280400 | CP & Sanitaryware installation | 120d | 2028-02-06 | 2028-06-04 | 771FS-30d, 749 |  |  | Sector-44 Noida(2) | 9366914 |
| 774 | 36900.37000.42300.42700.106100.280500 | Electrical Fixtures And Fittings installations | 120d | 2028-02-06 | 2028-06-04 | 771FS-30d |  |  | Sector-44 Noida(2) | 9366924 |
| 775 | 36900.37000.42300.42700.106100.280600 | Final Coat Paint Internal | 40d | 2028-02-06 | 2028-03-16 | 771FS-30d |  |  | Sector-44 Noida(2) | 9366934 |
| 776 | 36900.37000.42300.42700.106100.280700 | VRV Highwall (HVAC) installation | 60d | 2028-01-17 | 2028-03-16 | 775FS-60d |  |  | Sector-44 Noida(2) | 9366944 |
| 777 | 36900.37000.42300.42700.106100.280800 | Wooden Flooring | 100d | 2028-02-06 | 2028-05-15 | 771FS-30d |  |  | Sector-44 Noida(2) | 9366954 |
| 778 | 36900.37000.42300.42700.106100.280900 | Offer to possession | 90d | 2028-07-05 | 2028-10-02 | 771FS+120d, 769, 773, 774, 776, 777 |  |  | Sector-44 Noida(2) | 9366214 |
| 779 | 36900.37000.42400 | **Tower-2 (2B+S+P+23)** | 1226d | 2025-01-18 | 2028-10-09 |  | 5% | start no earlier than 2025-01-18 | Sector-44 Noida(2) | 9360664 |
| 780 | 36900.37000.42400.105700 | **Soldier Piling & Excavation work** | 126d | 2025-01-18 | 2025-05-23 |  | 100% | start no earlier than 2025-01-18 | Sector-44 Noida(2) | 9362634 |
| 781 | 36900.37000.42400.105700.185100 | **Till 2.5 Mtr** | 70d | 2025-01-18 | 2025-03-28 |  | 100% | start no earlier than 2025-01-18 | Sector-44 Noida(2) | 9365964 |
| 782 | 36900.37000.42400.105700.185100.239700 | H beam pile driving - 12m | 32d | 2025-01-18 | 2025-03-02 | 50SS+357d | 100% | start no earlier than 2025-01-18 | Sector-44 Noida(2) | 9366964 |
| 783 | 36900.37000.42400.105700.185100.239600 | Excavation from NGL to 2.5m | 34d | 2025-01-18 | 2025-03-11 | 782FS-44d | 100% | start no earlier than 2025-01-18 | Sector-44 Noida(2) | 9366974 |
| 784 | 36900.37000.42400.105700.185100.239500 | Plank installation & anchoring till 2.5m | 32d | 2025-02-20 | 2025-03-28 | 783FS-28d | 100% | start no earlier than 2025-02-20 | Sector-44 Noida(2) | 9366984 |

| ID | WBS | Task | Duration | Start | Finish | Predecessors | Complete | Constraint | Calendar | Unique_Task_ID |
| --- | --- | --- | --- | --- | --- | --- | --- | --- | --- | --- |
| 785 | 36900.37000.42400.105700.189600 | **2.5 mtrs till 5 mtrs** | 38d | 2025-02-22 | 2025-03-31 |  | 100% | start no earlier than 2025-02-22 | Sector-44 Noida(2) | 9366034 |
| 786 | 36900.37000.42400.105700.189600.239400 | Excavation from 2.5m till 5m | 18d | 2025-02-25 | 2025-03-30 | 784FS-31d | 100% | start no earlier than 2025-02-25 | Sector-44 Noida(2) | 9366994 |
| 787 | 36900.37000.42400.105700.189600.239300 | Plank installation & anchoring till 2.5m till 5m | 38d | 2025-02-22 | 2025-03-31 | 786FF | 100% | start no earlier than 2025-02-22 | Sector-44 Noida(2) | 9367004 |
| 788 | 36900.37000.42400.105700.190000 | **12 mts till NTA fotting bottom** | 57d | 2025-03-28 | 2025-05-23 |  | 100% | start no earlier than 2025-03-28 | Sector-44 Noida(2) | 9366044 |
| 789 | 36900.37000.42400.105700.190000.239200 | Excavation from 5m to fotting PCC bottom | 13d | 2025-03-28 | 2025-05-15 | 787 | 100% | start no earlier than 2025-03-28 | Sector-44 Noida(2) | 9367014 |
| 790 | 36900.37000.42400.105700.190000.239100 | Plank installation & anchoring from 12m to footing PCC bottom | 7d | 2025-05-17 | 2025-05-23 | 789FF | 100% | start no earlier than 2025-05-17 | Sector-44 Noida(2) | 9367024 |
| 791 | 36900.37000.42400.94600 | **Sub-Structure works** | 941d | 2025-05-11 | 2028-04-20 |  | 28% | start no earlier than 2025-05-11 | Sector-44 Noida(2) | 9362084 |
| 792 | 36900.37000.42400.94600.126200 | **Soil bed preparation** | 16d | 2025-05-11 | 2025-05-26 |  | 100% | start no earlier than 2025-05-11 | Sector-44 Noida(2) | 9364274 |
| 793 | 36900.37000.42400.94600.126200.239000 | Excavation completion | 1d | 2025-05-11 | 2025-05-11 | 790FS-45d | 100% | start no earlier than 2025-05-11 | Sector-44 Noida(2) | 9367034 |
| 794 | 36900.37000.42400.94600.126200.238900 | Surface dressing | 1d | 2025-05-11 | 2025-05-11 | 793 | 100% | start no earlier than 2025-05-11 | Sector-44 Noida(2) | 9367044 |
| 795 | 36900.37000.42400.94600.126200.238800 | ATT | 1d | 2025-05-15 | 2025-05-15 | 794 | 100% | start no earlier than 2025-05-15 | Sector-44 Noida(2) | 9367054 |
| 796 | 36900.37000.42400.94600.126200.238700 | PCC | 3.1d | 2025-05-12 | 2025-05-26 | 795, 793FF, 794SF | 100% | start no earlier than 2025-05-12 | Sector-44 Noida(2) | 9367064 |
| 797 | 36900.37000.42400.94600.101600 | **RCC Works** | 152d | 2025-06-02 | 2025-11-09 |  | 100% | start no earlier than 2025-06-02 | Sector-44 Noida(2) | 9362384 |
| 798 | 36900.37000.42400.94600.101600.168600 | **Raft** | 41d | 2025-06-02 | 2025-07-12 |  | 100% | start no earlier than 2025-06-02 | Sector-44 Noida(2) | 9366004 |
| 799 | 36900.37000.42400.94600.101600.168600.202600 | Reinforcement Work | 21d | 2025-06-02 | 2025-07-10 | 796 | 100% | start no earlier than 2025-06-02 | Sector-44 Noida(2) | 9370374 |
| 800 | 36900.37000.42400.94600.101600.168600.202500 | Shuttering work | 6d | 2025-06-30 | 2025-07-10 | 799FS-19d | 100% | start no earlier than 2025-06-30 | Sector-44 Noida(2) | 9370384 |
| 801 | 36900.37000.42400.94600.101600.168600.202400 | Concreteing work | 3d | 2025-07-10 | 2025-07-12 | 799FF, 800 | 100% | start no earlier than 2025-07-10 | Sector-44 Noida(2) | 9370394 |
| 802 | 36900.37000.42400.94600.101600.112200 | **Basement-2 Roof Slab** | 73.36d | 2025-07-07 | 2025-09-19 |  | 100% | start no earlier than 2025-07-07 | Sector-44 Noida(2) | 9364144 |
| 803 | 36900.37000.42400.94600.101600.112200.143400 | **B2 Roof Slab** | 73.36d | 2025-07-07 | 2025-09-19 |  | 100% | start no earlier than 2025-07-07 | Sector-44 Noida(2) | 9365754 |
| 804 | 36900.37000.42400.94600.101600.112200.143400.245700 | Shuttering Work | 33d | 2025-07-11 | 2025-09-06 | 801 | 100% | start no earlier than 2025-07-11 | Sector-44 Noida(2) | 9378514 |
| 805 | 36900.37000.42400.94600.101600.112200.143400.245600 | Reinforcement Work | 30d | 2025-07-13 | 2025-09-18 | 804FS-56d | 100% | start no earlier than 2025-07-13 | Sector-44 Noida(2) | 9378524 |
| 806 | 36900.37000.42400.94600.101600.112200.143400.245500 | Concreteing work | 20.02d | 2025-07-07 | 2025-09-19 | 804FF, 805FF | 100% | start no earlier than 2025-07-07 | Sector-44 Noida(2) | 9378534 |
| 807 | 36900.37000.42400.94600.101600.112300 | **Basement-1 Roof Slab** | 84d | 2025-08-09 | 2025-11-09 |  | 100% | start no earlier than 2025-08-09 | Sector-44 Noida(2) | 9364154 |
| 808 | 36900.37000.42400.94600.101600.112300.143300 | **B1 Roof Slab** | 84d | 2025-08-09 | 2025-11-09 |  | 100% | start no earlier than 2025-08-09 | Sector-44 Noida(2) | 9365744 |
| 809 | 36900.37000.42400.94600.101600.112300.143300.245400 | Shuttering Work | 40d | 2025-08-22 | 2025-11-08 | 806FS-12.02d | 100% | start no earlier than 2025-08-22 | Sector-44 Noida(2) | 9378544 |
| 810 | 36900.37000.42400.94600.101600.112300.143300.245300 | Reinforcement Work | 52d | 2025-08-09 | 2025-11-09 | 809FS-84d | 100% | start no earlier than 2025-08-09 | Sector-44 Noida(2) | 9378554 |
| 811 | 36900.37000.42400.94600.101600.112300.143300.245100 | Concreteing work | 29d | 2025-09-21 | 2025-11-09 | 809FF, 810FF | 100% | start no earlier than 2025-09-21 | Sector-44 Noida(2) | 9378564 |

| ID | WBS | Task | Duration | Start | Finish | Predecessors | Complete | Constraint | Calendar | Unique_Task_ID |
| --- | --- | --- | --- | --- | --- | --- | --- | --- | --- | --- |
| 812 | 36900.37000.42400.94600.99800 | **Sub structure finishing works** | 517d | 2026-08-23 | 2028-04-20 |  |  | start no earlier than 2026-08-23 | Sector-44 Noida(2) | 9362254 |
| 813 | 36900.37000.42400.94600.99800.104100 | **Basement-2** | 185d | 2026-08-23 | 2027-04-09 |  |  | start no earlier than 2026-08-23 | Sector-44 Noida(2) | 9362524 |
| 814 | 36900.37000.42400.94600.99800.104100.376900 | Masonary | 30d | 2026-08-23 | 2026-09-21 | 811FS+250d |  |  | Sector-44 Noida(2) | 9370404 |
| 815 | 36900.37000.42400.94600.99800.104100.377000 | Structural Steel | 30d | 2026-08-23 | 2026-09-21 | 811FS+250d |  |  | Sector-44 Noida(2) | 9370414 |
| 816 | 36900.37000.42400.94600.99800.104100.377100 | Plaster | 30d | 2026-09-22 | 2026-10-21 | 814, 815 |  |  | Sector-44 Noida(2) | 9370424 |
| 817 | 36900.37000.42400.94600.99800.104100.377200 | White Wash | 30d | 2026-10-22 | 2027-01-04 | 816 |  |  | Sector-44 Noida(2) | 9370434 |
| 818 | 36900.37000.42400.94600.99800.104100.377300 | VDF | 60d | 2026-09-07 | 2026-12-20 | 816FS-45d |  |  | Sector-44 Noida(2) | 9370444 |
| 819 | 36900.37000.42400.94600.99800.104100.377400 | Drain & Sump (incl. gratings) | 60d | 2026-10-07 | 2027-01-19 | 818FS-30d |  |  | Sector-44 Noida(2) | 9370454 |
| 820 | 36900.37000.42400.94600.99800.104100.377500 | Car parking marking | 30d | 2027-03-11 | 2027-04-09 | 817FS+65d |  |  | Sector-44 Noida(2) | 9370464 |
| 821 | 36900.37000.42400.94600.99800.104100.377600 | Signages | 30d | 2027-03-11 | 2027-04-09 | 814FF, 815FF, 816FF, 817FS-10d, 818FF, 819FF, 820FF |  |  | Sector-44 Noida(2) | 9370474 |
| 822 | 36900.37000.42400.94600.99800.104200 | **Basement-1** | 487d | 2026-09-22 | 2028-04-20 |  |  | start no earlier than 2026-09-22 | Sector-44 Noida(2) | 9362514 |
| 823 | 36900.37000.42400.94600.99800.104200.377700 | Masonary | 30d | 2026-09-22 | 2026-10-21 | 814 |  |  | Sector-44 Noida(2) | 9370484 |
| 824 | 36900.37000.42400.94600.99800.104200.377800 | Structural Steel | 30d | 2026-09-22 | 2026-10-21 | 814 |  |  | Sector-44 Noida(2) | 9370494 |
| 825 | 36900.37000.42400.94600.99800.104200.377900 | Plaster | 30d | 2026-10-22 | 2027-01-04 | 823, 824 |  |  | Sector-44 Noida(2) | 9370504 |
| 826 | 36900.37000.42400.94600.99800.104200.378000 | Plaster | 5d | 2028-04-15 | 2028-04-20 | 825 |  |  | Indian Calendar | 9370505 |
| 827 | 36900.37000.42400.94600.99800.104200.378100 | White Wash | 30d | 2027-01-05 | 2027-02-03 | 825 |  |  | Sector-44 Noida(2) | 9370514 |
| 828 | 36900.37000.42400.94600.99800.104200.378200 | VDF | 60d | 2026-10-07 | 2027-01-19 | 825FS-45d |  |  | Sector-44 Noida(2) | 9370524 |
| 829 | 36900.37000.42400.94600.99800.104200.378300 | Drain & Sump (incl. gratings) | 60d | 2026-12-21 | 2027-02-18 | 828FS-30d |  |  | Sector-44 Noida(2) | 9370534 |
| 830 | 36900.37000.42400.94600.99800.104200.378400 | Car parking marking | 30d | 2027-04-10 | 2027-05-09 | 827FS+65d |  |  | Sector-44 Noida(2) | 9370544 |
| 831 | 36900.37000.42400.94600.99800.104200.378500 | Signages | 30d | 2027-04-10 | 2027-05-09 | 823FF, 824FF, 825FF, 827FS-10d, 828FF, 829FF, 830FF |  |  | Sector-44 Noida(2) | 9370554 |
| 832 | 36900.37000.42400.42800 | **Super structure works** | 965d | 2025-10-06 | 2028-10-09 |  |  | start no earlier than 2025-10-06 | Sector-44 Noida(2) | 9360724 |
| 833 | 36900.37000.42400.42800.46100 | **RCC Works** | 491d | 2025-10-06 | 2027-05-09 |  | 5% | start no earlier than 2025-10-06 | Sector-44 Noida(2) | 9360834 |
| 834 | 36900.37000.42400.42800.46100.112400 | **Stilt/GF Slab** | 46d | 2025-10-06 | 2026-01-04 |  | 57% | start no earlier than 2025-10-06 | Sector-44 Noida(2) | 9364164 |
| 835 | 36900.37000.42400.42800.46100.112400.143200 | **Stilt/GF Slab** | 46d | 2025-10-06 | 2026-01-04 |  | 57% | start no earlier than 2025-10-06 | Sector-44 Noida(2) | 9365734 |
| 836 | 36900.37000.42400.42800.46100.112400.143200.245000 | Shuttering Work | 17d | 2025-10-28 | 2025-12-28 | 811FS-1d | 23% | start no earlier than 2025-10-28 | Sector-44 Noida(2) | 9378574 |
| 837 | 36900.37000.42400.42800.46100.112400.143200.244900 | Reinforcement Work | 32d | 2025-10-06 | 2025-12-29 | 836FS-39d | 81% |  | Sector-44 Noida(2) | 9378584 |
| 838 | 36900.37000.42400.42800.46100.112400.143200.244800 | Concreteing work | 10d | 2025-10-28 | 2026-01-04 | 836FF, 837FS-18d | 40% |  | Sector-44 Noida(2) | 9378594 |

| ID | WBS | Task | Duration | Start | Finish | Predecessors | Constraint | Calendar | Unique_Task_ID |
| --- | --- | --- | --- | --- | --- | --- | --- | --- | --- |
| 839 | 36900.37000.42400.42800.46100.112500 | **Podium-1 Slab** | 22d | 2026-01-05 | 2026-01-26 |  | start no earlier than 2026-01-05 | Sector-44 Noida(2) | 9362964 |
| 840 | 36900.37000.42400.42800.46100.112500.143100 | **Podium-1 Slab** | 22d | 2026-01-05 | 2026-01-26 |  | start no earlier than 2026-01-05 | Sector-44 Noida(2) | 9364624 |
| 841 | 36900.37000.42400.42800.46100.112500.143100.634300 | Shuttering Work | 17d | 2026-01-05 | 2026-01-21 | 838 |  | Sector-44 Noida(2) | 9378604 |
| 842 | 36900.37000.42400.42800.46100.112500.143100.634400 | Reinforcement Work | 9d | 2026-01-17 | 2026-01-25 | 841FS-5d |  | Sector-44 Noida(2) | 9378614 |
| 843 | 36900.37000.42400.42800.46100.112500.143100.634500 | Conduiting work | 1d | 2026-01-25 | 2026-01-25 | 842FS-1d |  | Sector-44 Noida(2) | 9378624 |
| 844 | 36900.37000.42400.42800.46100.112500.143100.634600 | Concreteing work | 1d | 2026-01-26 | 2026-01-26 | 841FF, 842FF, 843 |  | Sector-44 Noida(2) | 9378634 |
| 845 | 36900.37000.42400.42800.46100.112600 | **1st Floor Slab** | 43d | 2026-01-27 | 2026-03-10 |  | start no earlier than 2026-01-27 | Sector-44 Noida(2) | 9362974 |
| 846 | 36900.37000.42400.42800.46100.112600.143000 | **1st Floor Slab** | 43d | 2026-01-27 | 2026-03-10 |  | start no earlier than 2026-01-27 | Sector-44 Noida(2) | 9364634 |
| 847 | 36900.37000.42400.42800.46100.112600.143000.634700 | Shuttering Work | 30d | 2026-01-27 | 2026-02-25 | 844 |  | Sector-44 Noida(2) | 9378644 |
| 848 | 36900.37000.42400.42800.46100.112600.143000.634800 | Reinforcement Work | 17d | 2026-02-21 | 2026-03-09 | 847FS-5d |  | Sector-44 Noida(2) | 9378654 |
| 849 | 36900.37000.42400.42800.46100.112600.143000.634900 | Conduiting work | 1d | 2026-03-09 | 2026-03-09 | 848FS-1d |  | Sector-44 Noida(2) | 9378664 |
| 850 | 36900.37000.42400.42800.46100.112600.143000.635000 | Concreteing work | 1d | 2026-03-10 | 2026-03-10 | 847FF, 848FF, 849 |  | Sector-44 Noida(2) | 9378674 |
| 851 | 36900.37000.42400.42800.46100.112700 | **2nd Floor Slab** | 30d | 2026-03-11 | 2026-04-09 |  | start no earlier than 2026-03-11 | Sector-44 Noida(2) | 9362984 |
| 852 | 36900.37000.42400.42800.46100.112700.142900 | **2nd Floor Slab** | 30d | 2026-03-11 | 2026-04-09 |  | start no earlier than 2026-03-11 | Sector-44 Noida(2) | 9364644 |
| 853 | 36900.37000.42400.42800.46100.112700.142900.635100 | Shuttering Work | 17d | 2026-03-11 | 2026-03-27 | 850 |  | Sector-44 Noida(2) | 9378684 |
| 854 | 36900.37000.42400.42800.46100.112700.142900.635200 | Reinforcement Work | 15d | 2026-03-25 | 2026-04-08 | 853FS-3d |  | Sector-44 Noida(2) | 9378694 |
| 855 | 36900.37000.42400.42800.46100.112700.142900.635300 | Conduiting work | 1d | 2026-04-08 | 2026-04-08 | 854FS-1d |  | Sector-44 Noida(2) | 9378704 |
| 856 | 36900.37000.42400.42800.46100.112700.142900.635400 | Concreteing work | 1d | 2026-04-09 | 2026-04-09 | 853FF, 854FF, 855 |  | Sector-44 Noida(2) | 9378714 |
| 857 | 36900.37000.42400.42800.46100.112800 | **3rd Floor Slab (1st MIVAN Setup)** | 30d | 2026-04-10 | 2026-05-09 |  | start no earlier than 2026-04-10 | Sector-44 Noida(2) | 9362994 |
| 858 | 36900.37000.42400.42800.46100.112800.142800 | **3rd Floor Slab** | 30d | 2026-04-10 | 2026-05-09 |  | start no earlier than 2026-04-10 | Sector-44 Noida(2) | 9364654 |
| 859 | 36900.37000.42400.42800.46100.112800.142800.635500 | Shuttering Work | 17d | 2026-04-10 | 2026-04-26 | 856 |  | Sector-44 Noida(2) | 9378724 |
| 860 | 36900.37000.42400.42800.46100.112800.142800.635600 | Reinforcement Work | 15d | 2026-04-24 | 2026-05-08 | 859FS-3d |  | Sector-44 Noida(2) | 9378734 |
| 861 | 36900.37000.42400.42800.46100.112800.142800.635700 | Conduiting work | 1d | 2026-05-08 | 2026-05-08 | 860FS-1d |  | Sector-44 Noida(2) | 9378744 |
| 862 | 36900.37000.42400.42800.46100.112800.142800.635800 | Concreteing work | 1d | 2026-05-09 | 2026-05-09 | 859FF, 860FF, 861 |  | Sector-44 Noida(2) | 9378754 |

| ID | WBS | Task | Duration | Start | Finish | Predecessors | Constraint | Calendar | Unique_Task_ID |
| --- | --- | --- | --- | --- | --- | --- | --- | --- | --- |
| 863 | 36900.37000.42400.42800.46100.112900 | **4th Floor Slab** | 21d | 2026-05-10 | 2026-05-30 |  | start no earlier than 2026-05-10 | Sector-44 Noida(2) | 9363004 |
| 864 | 36900.37000.42400.42800.46100.112900.142700 | **4th Floor Slab** | 21d | 2026-05-10 | 2026-05-30 |  | start no earlier than 2026-05-10 | Sector-44 Noida(2) | 9364664 |
| 865 | 36900.37000.42400.42800.46100.112900.142700.635900 | Shuttering Work | 13d | 2026-05-10 | 2026-05-22 | 862 |  | Sector-44 Noida(2) | 9378764 |
| 866 | 36900.37000.42400.42800.46100.112900.142700.636000 | Reinforcement Work | 10d | 2026-05-20 | 2026-05-29 | 865FS-3d |  | Sector-44 Noida(2) | 9378774 |
| 867 | 36900.37000.42400.42800.46100.112900.142700.636100 | Conduiting work | 1d | 2026-05-29 | 2026-05-29 | 866FS-1d |  | Sector-44 Noida(2) | 9378784 |
| 868 | 36900.37000.42400.42800.46100.112900.142700.636200 | Concreteing work | 1d | 2026-05-30 | 2026-05-30 | 865FF, 866FF, 867 |  | Sector-44 Noida(2) | 9378794 |
| 869 | 36900.37000.42400.42800.46100.113000 | **5th Floor Slab** | 12d | 2026-05-31 | 2026-06-11 |  | start no earlier than 2026-05-31 | Sector-44 Noida(2) | 9363014 |
| 870 | 36900.37000.42400.42800.46100.113000.142600 | **5th Floor Slab** | 12d | 2026-05-31 | 2026-06-11 |  | start no earlier than 2026-05-31 | Sector-44 Noida(2) | 9364674 |
| 871 | 36900.37000.42400.42800.46100.113000.142600.636300 | Shuttering Work | 9d | 2026-05-31 | 2026-06-08 | 868 |  | Sector-44 Noida(2) | 9378804 |
| 872 | 36900.37000.42400.42800.46100.113000.142600.636400 | Reinforcement Work | 5d | 2026-06-06 | 2026-06-10 | 871FS-3d |  | Sector-44 Noida(2) | 9378814 |
| 873 | 36900.37000.42400.42800.46100.113000.142600.636500 | Conduiting work | 1d | 2026-06-10 | 2026-06-10 | 872FS-1d |  | Sector-44 Noida(2) | 9378824 |
| 874 | 36900.37000.42400.42800.46100.113000.142600.636600 | Concreteing work | 1d | 2026-06-11 | 2026-06-11 | 871FF, 872FF, 873 |  | Sector-44 Noida(2) | 9378834 |
| 875 | 36900.37000.42400.42800.46100.113100 | **6th Floor Slab** | 12d | 2026-06-12 | 2026-06-23 |  | start no earlier than 2026-06-12 | Sector-44 Noida(2) | 9363024 |
| 876 | 36900.37000.42400.42800.46100.113100.142500 | **6th Floor Slab** | 12d | 2026-06-12 | 2026-06-23 |  | start no earlier than 2026-06-12 | Sector-44 Noida(2) | 9364684 |
| 877 | 36900.37000.42400.42800.46100.113100.142500.636700 | Shuttering Work | 9d | 2026-06-12 | 2026-06-20 | 874 |  | Sector-44 Noida(2) | 9378844 |
| 878 | 36900.37000.42400.42800.46100.113100.142500.636800 | Reinforcement Work | 5d | 2026-06-18 | 2026-06-22 | 877FS-3d |  | Sector-44 Noida(2) | 9378854 |
| 879 | 36900.37000.42400.42800.46100.113100.142500.636900 | Conduiting work | 1d | 2026-06-22 | 2026-06-22 | 878FS-1d |  | Sector-44 Noida(2) | 9378864 |
| 880 | 36900.37000.42400.42800.46100.113100.142500.637000 | Concreteing work | 1d | 2026-06-23 | 2026-06-23 | 877FF, 878FF, 879 |  | Sector-44 Noida(2) | 9378874 |
| 881 | 36900.37000.42400.42800.46100.113200 | **7th Floor Slab** | 12d | 2026-06-24 | 2026-07-05 |  | start no earlier than 2026-06-24 | Sector-44 Noida(2) | 9363034 |
| 882 | 36900.37000.42400.42800.46100.113200.142400 | **7th Floor Slab** | 12d | 2026-06-24 | 2026-07-05 |  | start no earlier than 2026-06-24 | Sector-44 Noida(2) | 9364694 |
| 883 | 36900.37000.42400.42800.46100.113200.142400.637100 | Shuttering Work | 9d | 2026-06-24 | 2026-07-02 | 880 |  | Sector-44 Noida(2) | 9378884 |
| 884 | 36900.37000.42400.42800.46100.113200.142400.637200 | Reinforcement Work | 5d | 2026-06-30 | 2026-07-04 | 883FS-3d |  | Sector-44 Noida(2) | 9378894 |
| 885 | 36900.37000.42400.42800.46100.113200.142400.637300 | Conduiting work | 1d | 2026-07-04 | 2026-07-04 | 884FS-1d |  | Sector-44 Noida(2) | 9378904 |
| 886 | 36900.37000.42400.42800.46100.113200.142400.637400 | Concreteing work | 1d | 2026-07-05 | 2026-07-05 | 883FF, 884FF, 885 |  | Sector-44 Noida(2) | 9378914 |

| ID | WBS | Task | Duration | Start | Finish | Predecessors | Constraint | Calendar | Unique_Task_ID |
| --- | --- | --- | --- | --- | --- | --- | --- | --- | --- |
| 887 | 36900.37000.42400.42800.46100.113300 | **8th Floor Slab** | 12d | 2026-07-06 | 2026-07-17 |  | start no earlier than 2026-07-06 | Sector-44 Noida(2) | 9363044 |
| 888 | 36900.37000.42400.42800.46100.113300.142300 | **8th Floor Slab** | 12d | 2026-07-06 | 2026-07-17 |  | start no earlier than 2026-07-06 | Sector-44 Noida(2) | 9364704 |
| 889 | 36900.37000.42400.42800.46100.113300.142300.637500 | Shuttering Work | 9d | 2026-07-06 | 2026-07-14 | 886 |  | Sector-44 Noida(2) | 9378924 |
| 890 | 36900.37000.42400.42800.46100.113300.142300.637600 | Reinforcement Work | 5d | 2026-07-12 | 2026-07-16 | 889FS-3d |  | Sector-44 Noida(2) | 9378934 |
| 891 | 36900.37000.42400.42800.46100.113300.142300.637700 | Conduiting work | 1d | 2026-07-16 | 2026-07-16 | 890FS-1d |  | Sector-44 Noida(2) | 9378944 |
| 892 | 36900.37000.42400.42800.46100.113300.142300.637800 | Concreteing work | 1d | 2026-07-17 | 2026-07-17 | 889FF, 890FF, 891 |  | Sector-44 Noida(2) | 9378954 |
| 893 | 36900.37000.42400.42800.46100.113400 | **9th Floor Slab** | 12d | 2026-07-18 | 2026-07-29 |  | start no earlier than 2026-07-18 | Sector-44 Noida(2) | 9363054 |
| 894 | 36900.37000.42400.42800.46100.113400.142200 | **9th Floor Slab** | 12d | 2026-07-18 | 2026-07-29 |  | start no earlier than 2026-07-18 | Sector-44 Noida(2) | 9364714 |
| 895 | 36900.37000.42400.42800.46100.113400.142200.637900 | Shuttering Work | 9d | 2026-07-18 | 2026-07-26 | 892 |  | Sector-44 Noida(2) | 9378964 |
| 896 | 36900.37000.42400.42800.46100.113400.142200.638000 | Reinforcement Work | 5d | 2026-07-24 | 2026-07-28 | 895FS-3d |  | Sector-44 Noida(2) | 9378974 |
| 897 | 36900.37000.42400.42800.46100.113400.142200.638100 | Conduiting work | 1d | 2026-07-28 | 2026-07-28 | 896FS-1d |  | Sector-44 Noida(2) | 9378984 |
| 898 | 36900.37000.42400.42800.46100.113400.142200.638200 | Concreteing work | 1d | 2026-07-29 | 2026-07-29 | 895FF, 896FF, 897 |  | Sector-44 Noida(2) | 9378994 |
| 899 | 36900.37000.42400.42800.46100.113500 | **10th Floor Slab** | 12d | 2026-07-30 | 2026-08-10 |  | start no earlier than 2026-07-30 | Sector-44 Noida(2) | 9363064 |
| 900 | 36900.37000.42400.42800.46100.113500.142100 | **10th Floor Slab** | 12d | 2026-07-30 | 2026-08-10 |  | start no earlier than 2026-07-30 | Sector-44 Noida(2) | 9364724 |
| 901 | 36900.37000.42400.42800.46100.113500.142100.638300 | Shuttering Work | 9d | 2026-07-30 | 2026-08-07 | 898 |  | Sector-44 Noida(2) | 9379004 |
| 902 | 36900.37000.42400.42800.46100.113500.142100.638400 | Reinforcement Work | 5d | 2026-08-05 | 2026-08-09 | 901FS-3d |  | Sector-44 Noida(2) | 9379014 |
| 903 | 36900.37000.42400.42800.46100.113500.142100.638500 | Conduiting work | 1d | 2026-08-09 | 2026-08-09 | 902FS-1d |  | Sector-44 Noida(2) | 9379024 |
| 904 | 36900.37000.42400.42800.46100.113500.142100.638600 | Concreteing work | 1d | 2026-08-10 | 2026-08-10 | 901FF, 902FF, 903 |  | Sector-44 Noida(2) | 9379034 |
| 905 | 36900.37000.42400.42800.46100.113600 | **11th Floor Slab** | 12d | 2026-08-11 | 2026-08-22 |  | start no earlier than 2026-08-11 | Sector-44 Noida(2) | 9363074 |
| 906 | 36900.37000.42400.42800.46100.113600.142000 | **11th Floor Slab** | 12d | 2026-08-11 | 2026-08-22 |  | start no earlier than 2026-08-11 | Sector-44 Noida(2) | 9364734 |
| 907 | 36900.37000.42400.42800.46100.113600.142000.638700 | Shuttering Work | 9d | 2026-08-11 | 2026-08-19 | 904 |  | Sector-44 Noida(2) | 9379044 |
| 908 | 36900.37000.42400.42800.46100.113600.142000.638800 | Reinforcement Work | 5d | 2026-08-17 | 2026-08-21 | 907FS-3d |  | Sector-44 Noida(2) | 9379054 |
| 909 | 36900.37000.42400.42800.46100.113600.142000.638900 | Conduiting work | 1d | 2026-08-21 | 2026-08-21 | 908FS-1d |  | Sector-44 Noida(2) | 9379064 |
| 910 | 36900.37000.42400.42800.46100.113600.142000.639000 | Concreteing work | 1d | 2026-08-22 | 2026-08-22 | 907FF, 908FF, 909 |  | Sector-44 Noida(2) | 9379074 |

| ID | WBS | Task | Duration | Start | Finish | Predecessors | Constraint | Calendar | Unique_Task_ID |
| --- | --- | --- | --- | --- | --- | --- | --- | --- | --- |
| 911 | 36900.37000.42400.42800.46100.113700 | **12th Floor Slab** | 12d | 2026-08-23 | 2026-09-03 |  | start no earlier than 2026-08-23 | Sector-44 Noida(2) | 9363084 |
| 912 | 36900.37000.42400.42800.46100.113700.141900 | **12th Floor Slab** | 12d | 2026-08-23 | 2026-09-03 |  | start no earlier than 2026-08-23 | Sector-44 Noida(2) | 9364744 |
| 913 | 36900.37000.42400.42800.46100.113700.141900.639100 | Shuttering Work | 9d | 2026-08-23 | 2026-08-31 | 910 |  | Sector-44 Noida(2) | 9379084 |
| 914 | 36900.37000.42400.42800.46100.113700.141900.639200 | Reinforcement Work | 5d | 2026-08-29 | 2026-09-02 | 913FS-3d |  | Sector-44 Noida(2) | 9379094 |
| 915 | 36900.37000.42400.42800.46100.113700.141900.639300 | Conduiting work | 1d | 2026-09-02 | 2026-09-02 | 914FS-1d |  | Sector-44 Noida(2) | 9379104 |
| 916 | 36900.37000.42400.42800.46100.113700.141900.639400 | Concreteing work | 1d | 2026-09-03 | 2026-09-03 | 913FF, 914FF, 915 |  | Sector-44 Noida(2) | 9379114 |
| 917 | 36900.37000.42400.42800.46100.113800 | **13th Floor Slab** | 12d | 2026-09-04 | 2026-09-15 |  | start no earlier than 2026-09-04 | Sector-44 Noida(2) | 9363094 |
| 918 | 36900.37000.42400.42800.46100.113800.141800 | **13th Floor Slab** | 12d | 2026-09-04 | 2026-09-15 |  | start no earlier than 2026-09-04 | Sector-44 Noida(2) | 9364754 |
| 919 | 36900.37000.42400.42800.46100.113800.141800.639500 | Shuttering Work | 9d | 2026-09-04 | 2026-09-12 | 916 |  | Sector-44 Noida(2) | 9379124 |
| 920 | 36900.37000.42400.42800.46100.113800.141800.639600 | Reinforcement Work | 5d | 2026-09-10 | 2026-09-14 | 919FS-3d |  | Sector-44 Noida(2) | 9379134 |
| 921 | 36900.37000.42400.42800.46100.113800.141800.639700 | Conduiting work | 1d | 2026-09-14 | 2026-09-14 | 920FS-1d |  | Sector-44 Noida(2) | 9379144 |
| 922 | 36900.37000.42400.42800.46100.113800.141800.639800 | Concreteing work | 1d | 2026-09-15 | 2026-09-15 | 919FF, 920FF, 921 |  | Sector-44 Noida(2) | 9379154 |
| 923 | 36900.37000.42400.42800.46100.113900 | **14th Floor Slab** | 12d | 2026-09-16 | 2026-09-27 |  | start no earlier than 2026-09-16 | Sector-44 Noida(2) | 9363104 |
| 924 | 36900.37000.42400.42800.46100.113900.141700 | **14th Floor Slab** | 12d | 2026-09-16 | 2026-09-27 |  | start no earlier than 2026-09-16 | Sector-44 Noida(2) | 9364764 |
| 925 | 36900.37000.42400.42800.46100.113900.141700.639900 | Shuttering Work | 9d | 2026-09-16 | 2026-09-24 | 922 |  | Sector-44 Noida(2) | 9379164 |
| 926 | 36900.37000.42400.42800.46100.113900.141700.640000 | Reinforcement Work | 5d | 2026-09-22 | 2026-09-26 | 925FS-3d |  | Sector-44 Noida(2) | 9379174 |
| 927 | 36900.37000.42400.42800.46100.113900.141700.640100 | Conduiting work | 1d | 2026-09-26 | 2026-09-26 | 926FS-1d |  | Sector-44 Noida(2) | 9379184 |
| 928 | 36900.37000.42400.42800.46100.113900.141700.640200 | Concreteing work | 1d | 2026-09-27 | 2026-09-27 | 925FF, 926FF, 927 |  | Sector-44 Noida(2) | 9379194 |
| 929 | 36900.37000.42400.42800.46100.114000 | **15th Floor Slab** | 12d | 2026-09-28 | 2026-10-09 |  | start no earlier than 2026-09-28 | Sector-44 Noida(2) | 9363114 |
| 930 | 36900.37000.42400.42800.46100.114000.141600 | **15th Floor Slab** | 12d | 2026-09-28 | 2026-10-09 |  | start no earlier than 2026-09-28 | Sector-44 Noida(2) | 9364774 |
| 931 | 36900.37000.42400.42800.46100.114000.141600.640300 | Shuttering Work | 9d | 2026-09-28 | 2026-10-06 | 928 |  | Sector-44 Noida(2) | 9379204 |
| 932 | 36900.37000.42400.42800.46100.114000.141600.640400 | Reinforcement Work | 5d | 2026-10-04 | 2026-10-08 | 931FS-3d |  | Sector-44 Noida(2) | 9379214 |
| 933 | 36900.37000.42400.42800.46100.114000.141600.640500 | Conduiting work | 1d | 2026-10-08 | 2026-10-08 | 932FS-1d |  | Sector-44 Noida(2) | 9379224 |
| 934 | 36900.37000.42400.42800.46100.114000.141600.640600 | Concreteing work | 1d | 2026-10-09 | 2026-10-09 | 931FF, 932FF, 933 |  | Sector-44 Noida(2) | 9379234 |

| ID | WBS | Task | Duration | Start | Finish | Predecessors | Constraint | Calendar | Unique_Task_ID |
| --- | --- | --- | --- | --- | --- | --- | --- | --- | --- |
| 935 | 36900.37000.42400.42800.46100.114100 | **16th Floor Slab** | 12d | 2026-10-10 | 2026-10-21 |  | start no earlier than 2026-10-10 | Sector-44 Noida(2) | 9363124 |
| 936 | 36900.37000.42400.42800.46100.114100.141500 | **16th Floor Slab** | 12d | 2026-10-10 | 2026-10-21 |  | start no earlier than 2026-10-10 | Sector-44 Noida(2) | 9364784 |
| 937 | 36900.37000.42400.42800.46100.114100.141500.640700 | Shuttering Work | 9d | 2026-10-10 | 2026-10-18 | 934 |  | Sector-44 Noida(2) | 9379244 |
| 938 | 36900.37000.42400.42800.46100.114100.141500.640800 | Reinforcement Work | 5d | 2026-10-16 | 2026-10-20 | 937FS-3d |  | Sector-44 Noida(2) | 9379254 |
| 939 | 36900.37000.42400.42800.46100.114100.141500.640900 | Conduiting work | 1d | 2026-10-20 | 2026-10-20 | 938FS-1d |  | Sector-44 Noida(2) | 9379264 |
| 940 | 36900.37000.42400.42800.46100.114100.141500.641000 | Concreteing work | 1d | 2026-10-21 | 2026-10-21 | 937FF, 938FF, 939 |  | Sector-44 Noida(2) | 9379274 |
| 941 | 36900.37000.42400.42800.46100.114200 | **17th Floor Slab** | 18d | 2026-10-22 | 2026-12-23 |  | start no earlier than 2026-10-22 | Sector-44 Noida(2) | 9363134 |
| 942 | 36900.37000.42400.42800.46100.114200.141400 | **17th Floor Slab** | 18d | 2026-10-22 | 2026-12-23 |  | start no earlier than 2026-10-22 | Sector-44 Noida(2) | 9364794 |
| 943 | 36900.37000.42400.42800.46100.114200.141400.641100 | Shuttering Work | 11d | 2026-10-22 | 2026-12-16 | 940 |  | Sector-44 Noida(2) | 9379284 |
| 944 | 36900.37000.42400.42800.46100.114200.141400.641200 | Reinforcement Work | 9d | 2026-10-30 | 2026-12-22 | 943FS-3d |  | Sector-44 Noida(2) | 9379294 |
| 945 | 36900.37000.42400.42800.46100.114200.141400.641300 | Conduiting work | 1d | 2026-12-22 | 2026-12-22 | 944FS-1d |  | Sector-44 Noida(2) | 9379304 |
| 946 | 36900.37000.42400.42800.46100.114200.141400.641400 | Concreteing work | 1d | 2026-12-23 | 2026-12-23 | 943FF, 944FF, 945 |  | Sector-44 Noida(2) | 9379314 |
| 947 | 36900.37000.42400.42800.46100.114300 | **18th Floor Slab** | 12d | 2026-12-24 | 2027-01-04 |  | start no earlier than 2026-12-24 | Sector-44 Noida(2) | 9363144 |
| 948 | 36900.37000.42400.42800.46100.114300.141300 | **18th Floor Slab** | 12d | 2026-12-24 | 2027-01-04 |  | start no earlier than 2026-12-24 | Sector-44 Noida(2) | 9364804 |
| 949 | 36900.37000.42400.42800.46100.114300.141300.641500 | Shuttering Work | 9d | 2026-12-24 | 2027-01-01 | 946 |  | Sector-44 Noida(2) | 9379324 |
| 950 | 36900.37000.42400.42800.46100.114300.141300.641600 | Reinforcement Work | 5d | 2026-12-30 | 2027-01-03 | 949FS-3d |  | Sector-44 Noida(2) | 9379334 |
| 951 | 36900.37000.42400.42800.46100.114300.141300.641700 | Conduiting work | 1d | 2027-01-03 | 2027-01-03 | 950FS-1d |  | Sector-44 Noida(2) | 9379344 |
| 952 | 36900.37000.42400.42800.46100.114300.141300.641800 | Concreteing work | 1d | 2027-01-04 | 2027-01-04 | 949FF, 950FF, 951 |  | Sector-44 Noida(2) | 9379354 |
| 953 | 36900.37000.42400.42800.46100.114400 | **19th Floor Slab** | 12d | 2027-01-05 | 2027-01-16 |  | start no earlier than 2027-01-05 | Sector-44 Noida(2) | 9363154 |
| 954 | 36900.37000.42400.42800.46100.114400.141200 | **19th Floor Slab** | 12d | 2027-01-05 | 2027-01-16 |  | start no earlier than 2027-01-05 | Sector-44 Noida(2) | 9364814 |
| 955 | 36900.37000.42400.42800.46100.114400.141200.641900 | Shuttering Work | 9d | 2027-01-05 | 2027-01-13 | 952 |  | Sector-44 Noida(2) | 9379364 |
| 956 | 36900.37000.42400.42800.46100.114400.141200.642000 | Reinforcement Work | 5d | 2027-01-11 | 2027-01-15 | 955FS-3d |  | Sector-44 Noida(2) | 9379374 |
| 957 | 36900.37000.42400.42800.46100.114400.141200.642100 | Conduiting work | 1d | 2027-01-15 | 2027-01-15 | 956FS-1d |  | Sector-44 Noida(2) | 9379384 |
| 958 | 36900.37000.42400.42800.46100.114400.141200.642200 | Concreteing work | 1d | 2027-01-16 | 2027-01-16 | 955FF, 956FF, 957 |  | Sector-44 Noida(2) | 9379394 |

| ID | WBS | Task | Duration | Start | Finish | Predecessors | Constraint | Calendar | Unique_Task_ID |
| --- | --- | --- | --- | --- | --- | --- | --- | --- | --- |
| 959 | 36900.37000.42400.42800.46100.114500 | **20th Floor Slab** | 12d | 2027-01-17 | 2027-01-28 |  | start no earlier than 2027-01-17 | Sector-44 Noida(2) | 9363164 |
| 960 | 36900.37000.42400.42800.46100.114500.141100 | **20th Floor Slab** | 12d | 2027-01-17 | 2027-01-28 |  | start no earlier than 2027-01-17 | Sector-44 Noida(2) | 9364824 |
| 961 | 36900.37000.42400.42800.46100.114500.141100.642300 | Shuttering Work | 9d | 2027-01-17 | 2027-01-25 | 958 |  | Sector-44 Noida(2) | 9379404 |
| 962 | 36900.37000.42400.42800.46100.114500.141100.642400 | Reinforcement Work | 5d | 2027-01-23 | 2027-01-27 | 961FS-3d |  | Sector-44 Noida(2) | 9379414 |
| 963 | 36900.37000.42400.42800.46100.114500.141100.642500 | Conduiting work | 1d | 2027-01-27 | 2027-01-27 | 962FS-1d |  | Sector-44 Noida(2) | 9379424 |
| 964 | 36900.37000.42400.42800.46100.114500.141100.642600 | Concreteing work | 1d | 2027-01-28 | 2027-01-28 | 961FF, 962FF, 963 |  | Sector-44 Noida(2) | 9379434 |
| 965 | 36900.37000.42400.42800.46100.114600 | **21st Floor Slab** | 12d | 2027-01-29 | 2027-02-09 |  | start no earlier than 2027-01-29 | Sector-44 Noida(2) | 9363174 |
| 966 | 36900.37000.42400.42800.46100.114600.141000 | **21st Floor Slab** | 12d | 2027-01-29 | 2027-02-09 |  | start no earlier than 2027-01-29 | Sector-44 Noida(2) | 9364834 |
| 967 | 36900.37000.42400.42800.46100.114600.141000.642700 | Shuttering Work | 9d | 2027-01-29 | 2027-02-06 | 964 |  | Sector-44 Noida(2) | 9379444 |
| 968 | 36900.37000.42400.42800.46100.114600.141000.642800 | Reinforcement Work | 5d | 2027-02-04 | 2027-02-08 | 967FS-3d |  | Sector-44 Noida(2) | 9379454 |
| 969 | 36900.37000.42400.42800.46100.114600.141000.642900 | Conduiting work | 1d | 2027-02-08 | 2027-02-08 | 968FS-1d |  | Sector-44 Noida(2) | 9379464 |
| 970 | 36900.37000.42400.42800.46100.114600.141000.643000 | Concreteing work | 1d | 2027-02-09 | 2027-02-09 | 967FF, 968FF, 969 |  | Sector-44 Noida(2) | 9379474 |
| 971 | 36900.37000.42400.42800.46100.114700 | **22nd Floor Slab** | 12d | 2027-02-10 | 2027-02-21 |  | start no earlier than 2027-02-10 | Sector-44 Noida(2) | 9363184 |
| 972 | 36900.37000.42400.42800.46100.114700.140900 | **22nd Floor Slab** | 12d | 2027-02-10 | 2027-02-21 |  | start no earlier than 2027-02-10 | Sector-44 Noida(2) | 9364844 |
| 973 | 36900.37000.42400.42800.46100.114700.140900.643100 | Shuttering Work | 9d | 2027-02-10 | 2027-02-18 | 970 |  | Sector-44 Noida(2) | 9379484 |
| 974 | 36900.37000.42400.42800.46100.114700.140900.643200 | Reinforcement Work | 5d | 2027-02-16 | 2027-02-20 | 973FS-3d |  | Sector-44 Noida(2) | 9379494 |
| 975 | 36900.37000.42400.42800.46100.114700.140900.643300 | Conduiting work | 1d | 2027-02-20 | 2027-02-20 | 974FS-1d |  | Sector-44 Noida(2) | 9379504 |
| 976 | 36900.37000.42400.42800.46100.114700.140900.643400 | Concreteing work | 1d | 2027-02-21 | 2027-02-21 | 973FF, 974FF, 975 |  | Sector-44 Noida(2) | 9379514 |
| 977 | 36900.37000.42400.42800.46100.114800 | **23rd Floor Slab** | 12d | 2027-02-22 | 2027-03-05 |  | start no earlier than 2027-02-22 | Sector-44 Noida(2) | 9363194 |
| 978 | 36900.37000.42400.42800.46100.114800.140800 | **23rd Floor Slab** | 12d | 2027-02-22 | 2027-03-05 |  | start no earlier than 2027-02-22 | Sector-44 Noida(2) | 9364854 |
| 979 | 36900.37000.42400.42800.46100.114800.140800.643500 | Shuttering Work | 9d | 2027-02-22 | 2027-03-02 | 976 |  | Sector-44 Noida(2) | 9379524 |
| 980 | 36900.37000.42400.42800.46100.114800.140800.643600 | Reinforcement Work | 5d | 2027-02-28 | 2027-03-04 | 979FS-3d |  | Sector-44 Noida(2) | 9379534 |
| 981 | 36900.37000.42400.42800.46100.114800.140800.643700 | Conduiting work | 1d | 2027-03-04 | 2027-03-04 | 980FS-1d |  | Sector-44 Noida(2) | 9379544 |
| 982 | 36900.37000.42400.42800.46100.114800.140800.643800 | Concreteing work | 1d | 2027-03-05 | 2027-03-05 | 979FF, 980FF, 981 |  | Sector-44 Noida(2) | 9379554 |

| ID | WBS | Task | Duration | Start | Finish | Predecessors | Constraint | Calendar | Unique_Task_ID |
| --- | --- | --- | --- | --- | --- | --- | --- | --- | --- |
| 983 | 36900.37000.42400.42800.46100.114900 | **Terrace Slab** | 25d | 2027-03-06 | 2027-03-30 |  | start no earlier than 2027-03-06 | Sector-44 Noida(2) | 9363204 |
| 984 | 36900.37000.42400.42800.46100.114900.140700 | **Terrace Slab** | 25d | 2027-03-06 | 2027-03-30 |  | start no earlier than 2027-03-06 | Sector-44 Noida(2) | 9364864 |
| 985 | 36900.37000.42400.42800.46100.114900.140700.643900 | Shuttering Work | 17d | 2027-03-06 | 2027-03-22 | 982 |  | Sector-44 Noida(2) | 9379564 |
| 986 | 36900.37000.42400.42800.46100.114900.140700.644000 | Reinforcement Work | 11d | 2027-03-19 | 2027-03-29 | 985FS-4d |  | Sector-44 Noida(2) | 9379574 |
| 987 | 36900.37000.42400.42800.46100.114900.140700.644100 | Conduiting work | 1d | 2027-03-29 | 2027-03-29 | 986FS-1d |  | Sector-44 Noida(2) | 9379584 |
| 988 | 36900.37000.42400.42800.46100.114900.140700.644200 | Concreteing work | 1d | 2027-03-30 | 2027-03-30 | 985FF, 986FF, 987 |  | Sector-44 Noida(2) | 9379594 |
| 989 | 36900.37000.42400.42800.46100.115000 | **Terrace to LMR Floor** | 11d | 2027-03-31 | 2027-04-10 |  | start no earlier than 2027-03-31 | Sector-44 Noida(2) | 9363214 |
| 990 | 36900.37000.42400.42800.46100.115000.140600 | **LMR Floor Slab** | 11d | 2027-03-31 | 2027-04-10 |  | start no earlier than 2027-03-31 | Sector-44 Noida(2) | 9364874 |
| 991 | 36900.37000.42400.42800.46100.115000.140600.644300 | Shuttering Work | 8d | 2027-03-31 | 2027-04-07 | 988 |  | Sector-44 Noida(2) | 9379604 |
| 992 | 36900.37000.42400.42800.46100.115000.140600.644400 | Reinforcement Work | 4d | 2027-04-06 | 2027-04-09 | 991FS-2d |  | Sector-44 Noida(2) | 9379614 |
| 993 | 36900.37000.42400.42800.46100.115000.140600.644500 | Conduiting work | 1d | 2027-04-09 | 2027-04-09 | 992FS-1d |  | Sector-44 Noida(2) | 9379624 |
| 994 | 36900.37000.42400.42800.46100.115000.140600.644600 | Concreteing work | 1d | 2027-04-10 | 2027-04-10 | 991FF, 992FF, 993 |  | Sector-44 Noida(2) | 9379634 |
| 995 | 36900.37000.42400.42800.46100.115100 | **LMR Floor to LMR Roof** | 11d | 2027-04-11 | 2027-04-21 |  | start no earlier than 2027-04-11 | Sector-44 Noida(2) | 9363224 |
| 996 | 36900.37000.42400.42800.46100.115100.140500 | **LMR Roof Slab** | 11d | 2027-04-11 | 2027-04-21 |  | start no earlier than 2027-04-11 | Sector-44 Noida(2) | 9364884 |
| 997 | 36900.37000.42400.42800.46100.115100.140500.644700 | Shuttering Work | 8d | 2027-04-11 | 2027-04-18 | 994 |  | Sector-44 Noida(2) | 9379644 |
| 998 | 36900.37000.42400.42800.46100.115100.140500.644800 | Reinforcement Work | 4d | 2027-04-17 | 2027-04-20 | 997FS-2d |  | Sector-44 Noida(2) | 9379654 |
| 999 | 36900.37000.42400.42800.46100.115100.140500.644900 | Conduiting work | 1d | 2027-04-20 | 2027-04-20 | 998FS-1d |  | Sector-44 Noida(2) | 9379664 |
| 1000 | 36900.37000.42400.42800.46100.115100.140500.645000 | Concreteing work | 1d | 2027-04-21 | 2027-04-21 | 997FF, 998FF, 999 |  | Sector-44 Noida(2) | 9379674 |
| 1001 | 36900.37000.42400.42800.46100.125600 | **OHT & Roof Features** | 18d | 2027-04-22 | 2027-05-09 |  | start no earlier than 2027-04-22 | Sector-44 Noida(2) | 9364224 |
| 1002 | 36900.37000.42400.42800.46100.125600.185800 | **OHT & Roof Features** | 18d | 2027-04-22 | 2027-05-09 |  | start no earlier than 2027-04-22 | Sector-44 Noida(2) | 9365714 |
| 1003 | 36900.37000.42400.42800.46100.125600.185800.645100 | Reinforcement Work | 11d | 2027-04-22 | 2027-05-02 | 1000 |  | Sector-44 Noida(2) | 9379684 |
| 1004 | 36900.37000.42400.42800.46100.125600.185800.645200 | Shuttering work | 9d | 2027-05-01 | 2027-05-09 | 1003FS-2d |  | Sector-44 Noida(2) | 9379694 |
| 1005 | 36900.37000.42400.42800.46100.125600.185800.645300 | Concreteing work | 7d | 2027-05-03 | 2027-05-09 | 1003FF, 1004FF |  | Sector-44 Noida(2) | 9379704 |
| 1006 | 36900.37000.42400.42800.47600 | **Post Pour Works** | 240d | 2026-07-09 | 2027-04-19 |  | start no earlier than 2026-07-09 | Sector-44 Noida(2) | 9360874 |
| 1007 | 36900.37000.42400.42800.47600.281000 | 1st Floor | 8d | 2026-07-09 | 2026-07-16 | 862FS+60d |  | Sector-44 Noida(2) | 9367074 |
| 1008 | 36900.37000.42400.42800.47600.281100 | 2nd Floor | 8d | 2026-07-17 | 2026-07-24 | 1007, 868 |  | Sector-44 Noida(2) | 9367084 |
| 1009 | 36900.37000.42400.42800.47600.281200 | 3rd Floor | 8d | 2026-07-25 | 2026-08-01 | 1008, 874 |  | Sector-44 Noida(2) | 9367094 |
| 1010 | 36900.37000.42400.42800.47600.281300 | 4th Floor | 8d | 2026-08-02 | 2026-08-09 | 1009, 880 |  | Sector-44 Noida(2) | 9367104 |
| 1011 | 36900.37000.42400.42800.47600.281400 | 5th Floor | 8d | 2026-08-10 | 2026-08-17 | 1010, 886 |  | Sector-44 Noida(2) | 9367114 |
| 1012 | 36900.37000.42400.42800.47600.281500 | 6th Floor | 8d | 2026-08-18 | 2026-08-25 | 1011, 898 |  | Sector-44 Noida(2) | 9367124 |
| 1013 | 36900.37000.42400.42800.47600.281600 | 7th Floor | 8d | 2026-08-26 | 2026-09-02 | 1012 |  | Sector-44 Noida(2) | 9367134 |
| 1014 | 36900.37000.42400.42800.47600.281700 | 8th Floor | 8d | 2026-09-03 | 2026-09-10 | 1013, 910 |  | Sector-44 Noida(2) | 9367144 |
| 1015 | 36900.37000.42400.42800.47600.281800 | 9th Floor | 8d | 2026-09-11 | 2026-09-18 | 1014, 916 |  | Sector-44 Noida(2) | 9367154 |
| 1016 | 36900.37000.42400.42800.47600.281900 | 10th Floor | 8d | 2026-09-19 | 2026-09-26 | 1015, 922 |  | Sector-44 Noida(2) | 9367164 |
| 1017 | 36900.37000.42400.42800.47600.282000 | 11th Floor | 8d | 2026-09-28 | 2026-10-05 | 1016, 928 |  | Sector-44 Noida(2) | 9367174 |
| 1018 | 36900.37000.42400.42800.47600.282100 | 12th Floor | 8d | 2026-10-10 | 2026-10-17 | 1017, 934 |  | Sector-44 Noida(2) | 9367184 |
| 1019 | 36900.37000.42400.42800.47600.282200 | 13th Floor | 8d | 2026-10-22 | 2026-10-29 | 1018, 940 |  | Sector-44 Noida(2) | 9367194 |
| 1020 | 36900.37000.42400.42800.47600.282300 | 14th Floor | 8d | 2026-12-24 | 2026-12-31 | 1019, 946 |  | Sector-44 Noida(2) | 9367204 |
| 1021 | 36900.37000.42400.42800.47600.282400 | 15th Floor | 8d | 2027-01-05 | 2027-01-12 | 1020, 952 |  | Sector-44 Noida(2) | 9367214 |
| 1022 | 36900.37000.42400.42800.47600.282500 | 16th Floor | 8d | 2027-01-17 | 2027-01-24 | 1021, 958 |  | Sector-44 Noida(2) | 9367224 |
| 1023 | 36900.37000.42400.42800.47600.282600 | 17th Floor | 8d | 2027-01-29 | 2027-02-05 | 1022, 964 |  | Sector-44 Noida(2) | 9367234 |
| 1024 | 36900.37000.42400.42800.47600.282700 | 18th Floor | 8d | 2027-02-10 | 2027-02-17 | 1023, 970 |  | Sector-44 Noida(2) | 9367244 |
| 1025 | 36900.37000.42400.42800.47600.282800 | 19th Floor | 8d | 2027-02-22 | 2027-03-01 | 1024, 976 |  | Sector-44 Noida(2) | 9367254 |
| 1026 | 36900.37000.42400.42800.47600.282900 | 20th Floor | 7d | 2027-03-06 | 2027-03-12 | 1025, 982 |  | Sector-44 Noida(2) | 9367264 |
| 1027 | 36900.37000.42400.42800.47600.283000 | 21st Floor | 7d | 2027-03-13 | 2027-03-19 | 1026 |  | Sector-44 Noida(2) | 9367274 |
| 1028 | 36900.37000.42400.42800.47600.283100 | 22nd Floor | 7d | 2027-03-20 | 2027-03-26 | 1027 |  | Sector-44 Noida(2) | 9367284 |
| 1029 | 36900.37000.42400.42800.47600.283200 | 23rd Floor | 7d | 2027-03-27 | 2027-04-02 | 1028 |  | Sector-44 Noida(2) | 9367294 |
| 1030 | 36900.37000.42400.42800.47600.283300 | Terrace Floor | 7d | 2027-04-03 | 2027-04-09 | 1029 |  | Sector-44 Noida(2) | 9367304 |
| 1031 | 36900.37000.42400.42800.47600.283400 | LMR, OHT & Roof Feauters | 10d | 2027-04-10 | 2027-04-19 | 1030 |  | Sector-44 Noida(2) | 9367314 |

| ID | WBS | Task | Duration | Start | Finish | Predecessors | Constraint | Calendar | Unique_Task_ID |
| --- | --- | --- | --- | --- | --- | --- | --- | --- | --- |
| 1032 | 36900.37000.42400.42800.43100 | **Finishing works** | 348d | 2026-10-05 | 2027-12-16 |  | start no earlier than 2026-10-05 | Sector-44 Noida(2) | 9360754 |
| 1033 | 36900.37000.42400.42800.43100.44600 | **Flat finishings** | 348d | 2026-10-05 | 2027-12-16 |  | start no earlier than 2026-10-05 | Sector-44 Noida(2) | 9360784 |
| 1034 | 36900.37000.42400.42800.43100.44600.50900 | **1st Floor** | 107d | 2026-10-05 | 2027-03-05 |  | start no earlier than 2026-10-05 | Sector-44 Noida(2) | 9362004 |
| 1035 | 36900.37000.42400.42800.43100.44600.50900.645400 | Block Work | 15d | 2026-10-05 | 2026-10-19 | 1007FS+80d |  | Sector-44 Noida(2) | 9379714 |
| 1036 | 36900.37000.42400.42800.43100.44600.50900.645500 | Installation of temporary Main door | 5d | 2026-10-20 | 2026-10-24 | 1035 |  | Sector-44 Noida(2) | 9379724 |
| 1037 | 36900.37000.42400.42800.43100.44600.50900.645600 | Fire sprinkler pipe fixing | 5d | 2026-10-20 | 2026-10-24 | 1035 |  | Sector-44 Noida(2) | 9379734 |
| 1038 | 36900.37000.42400.42800.43100.44600.50900.645700 | Internal Plumbing Works | 9d | 2026-10-20 | 2026-10-28 | 1035 |  | Sector-44 Noida(2) | 9379744 |
| 1039 | 36900.37000.42400.42800.43100.44600.50900.645800 | Waterproofing | 10d | 2026-10-25 | 2026-12-18 | 1038SS+5d |  | Sector-44 Noida(2) | 9379754 |
| 1040 | 36900.37000.42400.42800.43100.44600.50900.645900 | Internal Plaster | 14d | 2026-10-10 | 2026-10-23 | 1035SS+5d |  | Sector-44 Noida(2) | 9379764 |
| 1041 | 36900.37000.42400.42800.43100.44600.50900.646000 | IPS flooring work | 13d | 2026-10-10 | 2026-10-22 | 1035SS+5d |  | Sector-44 Noida(2) | 9379774 |
| 1042 | 36900.37000.42400.42800.43100.44600.50900.646100 | Toilet dado work | 12d | 2026-12-19 | 2026-12-30 | 1038, 1039, 1040 |  | Sector-44 Noida(2) | 9379784 |
| 1043 | 36900.37000.42400.42800.43100.44600.50900.646200 | Toilet flooring work | 12d | 2026-12-24 | 2027-01-04 | 1042SS+5d |  | Sector-44 Noida(2) | 9379794 |
| 1044 | 36900.37000.42400.42800.43100.44600.50900.646300 | Living dinning flooring | 18d | 2027-01-05 | 2027-01-22 | 1041, 1043 |  | Sector-44 Noida(2) | 9379804 |
| 1045 | 36900.37000.42400.42800.43100.44600.50900.646400 | Electrical wiring work | 12d | 2027-01-13 | 2027-01-24 | 1044FS-10d |  | Sector-44 Noida(2) | 9379814 |
| 1046 | 36900.37000.42400.42800.43100.44600.50900.646500 | Aluminium door-window fixing | 8d | 2027-01-25 | 2027-02-01 | 1036, 1038SS+3d, 1045 |  | Sector-44 Noida(2) | 9379824 |
| 1047 | 36900.37000.42400.42800.43100.44600.50900.646600 | Putty primer coat | 12d | 2027-01-25 | 2027-02-05 | 1046FS-8d |  | Sector-44 Noida(2) | 9379834 |
| 1048 | 36900.37000.42400.42800.43100.44600.50900.646700 | Prehung door fixing | 10d | 2027-02-01 | 2027-02-10 | 1047FS-5d |  | Sector-44 Noida(2) | 9379844 |
| 1049 | 36900.37000.42400.42800.43100.44600.50900.646800 | Painting 1st coat | 13d | 2027-02-11 | 2027-02-23 | 1048 |  | Sector-44 Noida(2) | 9379854 |
| 1050 | 36900.37000.42400.42800.43100.44600.50900.646900 | False Ceiling panel fixing | 10d | 2027-02-24 | 2027-03-05 | 1049 |  | Sector-44 Noida(2) | 9379864 |
| 1051 | 36900.37000.42400.42800.43100.44600.51000 | **2nd Floor** | 118d | 2026-10-13 | 2027-03-24 |  | start no earlier than 2026-10-13 | Sector-44 Noida(2) | 9361994 |
| 1052 | 36900.37000.42400.42800.43100.44600.51000.647000 | Block Work | 15d | 2026-10-13 | 2026-10-27 | 1008FS+80d |  | Sector-44 Noida(2) | 9379874 |
| 1053 | 36900.37000.42400.42800.43100.44600.51000.647100 | Installation of temporary Main door | 5d | 2026-10-28 | 2026-12-16 | 1052 |  | Sector-44 Noida(2) | 9379884 |
| 1054 | 36900.37000.42400.42800.43100.44600.51000.647200 | Fire sprinkler pipe fixing | 5d | 2026-10-28 | 2026-12-16 | 1037, 1052 |  | Sector-44 Noida(2) | 9379894 |
| 1055 | 36900.37000.42400.42800.43100.44600.51000.647300 | Internal Plumbing Works | 9d | 2026-10-28 | 2026-12-20 | 1052 |  | Sector-44 Noida(2) | 9379904 |
| 1056 | 36900.37000.42400.42800.43100.44600.51000.647400 | Waterproofing | 10d | 2026-12-21 | 2026-12-30 | 1055 |  | Sector-44 Noida(2) | 9379914 |
| 1057 | 36900.37000.42400.42800.43100.44600.51000.647500 | Internal Plaster | 14d | 2026-10-18 | 2026-10-31 | 1052SS+5d |  | Sector-44 Noida(2) | 9379924 |
| 1058 | 36900.37000.42400.42800.43100.44600.51000.647600 | IPS flooring work | 13d | 2026-10-28 | 2026-12-24 | 1052 |  | Sector-44 Noida(2) | 9379934 |
| 1059 | 36900.37000.42400.42800.43100.44600.51000.647700 | Toilet dado work | 12d | 2026-12-31 | 2027-01-11 | 1055, 1056, 1057 |  | Sector-44 Noida(2) | 9379944 |
| 1060 | 36900.37000.42400.42800.43100.44600.51000.647800 | Toilet flooring work | 12d | 2027-01-12 | 2027-01-23 | 1059 |  | Sector-44 Noida(2) | 9379954 |
| 1061 | 36900.37000.42400.42800.43100.44600.51000.647900 | Living dinning flooring | 18d | 2027-01-24 | 2027-02-10 | 1058, 1060 |  | Sector-44 Noida(2) | 9379964 |
| 1062 | 36900.37000.42400.42800.43100.44600.51000.648000 | Electrical wiring work | 12d | 2027-02-01 | 2027-02-12 | 1061FS-10d |  | Sector-44 Noida(2) | 9379974 |
| 1063 | 36900.37000.42400.42800.43100.44600.51000.648100 | Aluminium door-window fixing | 8d | 2027-02-13 | 2027-02-20 | 1046, 1053, 1062 |  | Sector-44 Noida(2) | 9379984 |
| 1064 | 36900.37000.42400.42800.43100.44600.51000.648200 | Putty primer coat | 12d | 2027-02-13 | 2027-02-24 | 1063FS-8d |  | Sector-44 Noida(2) | 9379994 |
| 1065 | 36900.37000.42400.42800.43100.44600.51000.648300 | Prehung door fixing | 10d | 2027-02-20 | 2027-03-01 | 1064FS-5d |  | Sector-44 Noida(2) | 9380004 |
| 1066 | 36900.37000.42400.42800.43100.44600.51000.648400 | Painting 1st coat | 13d | 2027-03-02 | 2027-03-14 | 1065 |  | Sector-44 Noida(2) | 9380014 |
| 1067 | 36900.37000.42400.42800.43100.44600.51000.648500 | False Ceiling panel fixing | 10d | 2027-03-15 | 2027-03-24 | 1050, 1066 |  | Sector-44 Noida(2) | 9380024 |

| ID | WBS | Task | Duration | Start | Finish | Predecessors | Constraint | Calendar | Unique_Task_ID |
| --- | --- | --- | --- | --- | --- | --- | --- | --- | --- |
| 1068 | 36900.37000.42400.42800.43100.44600.51100 | **3rd Floor** | 124d | 2026-10-21 | 2027-04-07 |  | start no earlier than 2026-10-21 | Sector-44 Noida(2) | 9361974 |
| 1069 | 36900.37000.42400.42800.43100.44600.51100.648600 | Block Work | 15d | 2026-10-21 | 2026-12-19 | 1009FS+80d |  | Sector-44 Noida(2) | 9380034 |
| 1070 | 36900.37000.42400.42800.43100.44600.51100.648700 | Installation of temporary Main door | 5d | 2026-12-20 | 2026-12-24 | 1069 |  | Sector-44 Noida(2) | 9380044 |
| 1071 | 36900.37000.42400.42800.43100.44600.51100.648800 | Fire sprinkler pipe fixing | 5d | 2026-12-20 | 2026-12-24 | 1054, 1069 |  | Sector-44 Noida(2) | 9380054 |
| 1072 | 36900.37000.42400.42800.43100.44600.51100.648900 | Internal Plumbing Works | 9d | 2026-12-20 | 2026-12-28 | 1069 |  | Sector-44 Noida(2) | 9380064 |
| 1073 | 36900.37000.42400.42800.43100.44600.51100.649000 | Waterproofing | 10d | 2026-12-29 | 2027-01-07 | 1072 |  | Sector-44 Noida(2) | 9380074 |
| 1074 | 36900.37000.42400.42800.43100.44600.51100.649100 | Internal Plaster | 14d | 2027-01-08 | 2027-01-21 | 1072, 1073 |  | Sector-44 Noida(2) | 9380084 |
| 1075 | 36900.37000.42400.42800.43100.44600.51100.649200 | IPS flooring work | 13d | 2026-12-20 | 2027-01-01 | 1069 |  | Sector-44 Noida(2) | 9380094 |
| 1076 | 36900.37000.42400.42800.43100.44600.51100.649300 | Toilet dado work | 12d | 2027-01-22 | 2027-02-02 | 1072, 1073, 1074 |  | Sector-44 Noida(2) | 9380104 |
| 1077 | 36900.37000.42400.42800.43100.44600.51100.649400 | Toilet flooring work | 12d | 2027-02-03 | 2027-02-14 | 1076 |  | Sector-44 Noida(2) | 9380114 |
| 1078 | 36900.37000.42400.42800.43100.44600.51100.649500 | Living dinning flooring | 18d | 2027-02-15 | 2027-03-04 | 1075, 1077 |  | Sector-44 Noida(2) | 9380124 |
| 1079 | 36900.37000.42400.42800.43100.44600.51100.649600 | Electrical wiring work | 12d | 2027-02-23 | 2027-03-06 | 1078FS-10d |  | Sector-44 Noida(2) | 9380134 |
| 1080 | 36900.37000.42400.42800.43100.44600.51100.649700 | Aluminium door-window fixing | 8d | 2027-02-27 | 2027-03-06 | 1070, 1079FS-8d |  | Sector-44 Noida(2) | 9380144 |
| 1081 | 36900.37000.42400.42800.43100.44600.51100.649800 | Putty primer coat | 12d | 2027-02-27 | 2027-03-10 | 1080FS-8d |  | Sector-44 Noida(2) | 9380154 |
| 1082 | 36900.37000.42400.42800.43100.44600.51100.649900 | Prehung door fixing | 10d | 2027-03-06 | 2027-03-15 | 1081FS-5d |  | Sector-44 Noida(2) | 9380164 |
| 1083 | 36900.37000.42400.42800.43100.44600.51100.650000 | Painting 1st coat | 13d | 2027-03-16 | 2027-03-28 | 1082 |  | Sector-44 Noida(2) | 9380174 |
| 1084 | 36900.37000.42400.42800.43100.44600.51100.650100 | False Ceiling panel fixing | 10d | 2027-03-29 | 2027-04-07 | 1067, 1083 |  | Sector-44 Noida(2) | 9380184 |
| 1085 | 36900.37000.42400.42800.43100.44600.51200 | **4th Floor** | 126d | 2026-10-29 | 2027-04-17 |  | start no earlier than 2026-10-29 | Sector-44 Noida(2) | 9361964 |
| 1086 | 36900.37000.42400.42800.43100.44600.51200.650200 | Block Work | 15d | 2026-10-29 | 2026-12-27 | 1010FS+80d |  | Sector-44 Noida(2) | 9380194 |
| 1087 | 36900.37000.42400.42800.43100.44600.51200.650300 | Installation of temporary Main door | 5d | 2026-12-28 | 2027-01-01 | 1086 |  | Sector-44 Noida(2) | 9380204 |
| 1088 | 36900.37000.42400.42800.43100.44600.51200.650400 | Fire sprinkler pipe fixing | 5d | 2026-12-28 | 2027-01-01 | 1071, 1086 |  | Sector-44 Noida(2) | 9380214 |
| 1089 | 36900.37000.42400.42800.43100.44600.51200.650500 | Internal Plumbing Works | 9d | 2026-12-28 | 2027-01-05 | 1086 |  | Sector-44 Noida(2) | 9380224 |
| 1090 | 36900.37000.42400.42800.43100.44600.51200.650600 | Waterproofing | 10d | 2027-01-06 | 2027-01-15 | 1089 |  | Sector-44 Noida(2) | 9380234 |
| 1091 | 36900.37000.42400.42800.43100.44600.51200.650700 | Internal Plaster | 14d | 2027-01-16 | 2027-01-29 | 1089, 1090 |  | Sector-44 Noida(2) | 9380244 |
| 1092 | 36900.37000.42400.42800.43100.44600.51200.650800 | IPS flooring work | 13d | 2026-12-28 | 2027-01-09 | 1086 |  | Sector-44 Noida(2) | 9380254 |
| 1093 | 36900.37000.42400.42800.43100.44600.51200.650900 | Toilet dado work | 12d | 2027-01-30 | 2027-02-10 | 1089, 1090, 1091 |  | Sector-44 Noida(2) | 9380264 |
| 1094 | 36900.37000.42400.42800.43100.44600.51200.651000 | Toilet flooring work | 12d | 2027-02-11 | 2027-02-22 | 1093 |  | Sector-44 Noida(2) | 9380274 |
| 1095 | 36900.37000.42400.42800.43100.44600.51200.651100 | Living dinning flooring | 18d | 2027-02-23 | 2027-03-12 | 1092, 1094 |  | Sector-44 Noida(2) | 9380284 |
| 1096 | 36900.37000.42400.42800.43100.44600.51200.651200 | Electrical wiring work | 12d | 2027-03-03 | 2027-03-14 | 1095FS-10d |  | Sector-44 Noida(2) | 9380294 |
| 1097 | 36900.37000.42400.42800.43100.44600.51200.651300 | Aluminium door-window fixing | 8d | 2027-03-07 | 2027-03-14 | 1087, 1096FS-8d |  | Sector-44 Noida(2) | 9380304 |
| 1098 | 36900.37000.42400.42800.43100.44600.51200.651400 | Putty primer coat | 12d | 2027-03-07 | 2027-03-18 | 1097FS-8d |  | Sector-44 Noida(2) | 9380314 |
| 1099 | 36900.37000.42400.42800.43100.44600.51200.651500 | Prehung door fixing | 10d | 2027-03-14 | 2027-03-23 | 1098FS-5d |  | Sector-44 Noida(2) | 9380324 |
| 1100 | 36900.37000.42400.42800.43100.44600.51200.651600 | Painting 1st coat | 13d | 2027-03-24 | 2027-04-05 | 1099 |  | Sector-44 Noida(2) | 9380334 |
| 1101 | 36900.37000.42400.42800.43100.44600.51200.651700 | False Ceiling panel fixing | 10d | 2027-04-08 | 2027-04-17 | 1084, 1100 |  | Sector-44 Noida(2) | 9380344 |

| ID | WBS | Task | Duration | Start | Finish | Predecessors | Constraint | Calendar | Unique_Task_ID |
| --- | --- | --- | --- | --- | --- | --- | --- | --- | --- |
| 1102 | 36900.37000.42400.42800.43100.44600.51300 | **5th Floor** | 128d | 2026-12-21 | 2027-04-27 |  | start no earlier than 2026-12-21 | Sector-44 Noida(2) | 9361954 |
| 1103 | 36900.37000.42400.42800.43100.44600.51300.651800 | Block Work | 15d | 2026-12-21 | 2027-01-04 | 1011FS+80d |  | Sector-44 Noida(2) | 9380354 |
| 1104 | 36900.37000.42400.42800.43100.44600.51300.651900 | Installation of temporary Main door | 5d | 2027-01-05 | 2027-01-09 | 1103 |  | Sector-44 Noida(2) | 9380364 |
| 1105 | 36900.37000.42400.42800.43100.44600.51300.652000 | Fire sprinkler pipe fixing | 5d | 2027-01-05 | 2027-01-09 | 1088, 1103 |  | Sector-44 Noida(2) | 9380374 |
| 1106 | 36900.37000.42400.42800.43100.44600.51300.652100 | Internal Plumbing Works | 9d | 2027-01-05 | 2027-01-13 | 1103 |  | Sector-44 Noida(2) | 9380384 |
| 1107 | 36900.37000.42400.42800.43100.44600.51300.652200 | Waterproofing | 10d | 2027-01-14 | 2027-01-23 | 1106 |  | Sector-44 Noida(2) | 9380394 |
| 1108 | 36900.37000.42400.42800.43100.44600.51300.652300 | Internal Plaster | 14d | 2027-01-24 | 2027-02-06 | 1106, 1107 |  | Sector-44 Noida(2) | 9380404 |
| 1109 | 36900.37000.42400.42800.43100.44600.51300.652400 | IPS flooring work | 13d | 2027-01-05 | 2027-01-17 | 1103 |  | Sector-44 Noida(2) | 9380414 |
| 1110 | 36900.37000.42400.42800.43100.44600.51300.652500 | Toilet dado work | 12d | 2027-02-07 | 2027-02-18 | 1106, 1107, 1108 |  | Sector-44 Noida(2) | 9380424 |
| 1111 | 36900.37000.42400.42800.43100.44600.51300.652600 | Toilet flooring work | 12d | 2027-02-19 | 2027-03-02 | 1110 |  | Sector-44 Noida(2) | 9380434 |
| 1112 | 36900.37000.42400.42800.43100.44600.51300.652700 | Living dinning flooring | 18d | 2027-03-03 | 2027-03-20 | 1109, 1111 |  | Sector-44 Noida(2) | 9380444 |
| 1113 | 36900.37000.42400.42800.43100.44600.51300.652800 | Electrical wiring work | 12d | 2027-03-11 | 2027-03-22 | 1112FS-10d |  | Sector-44 Noida(2) | 9380454 |
| 1114 | 36900.37000.42400.42800.43100.44600.51300.652900 | Aluminium door-window fixing | 8d | 2027-03-15 | 2027-03-22 | 1104, 1113FS-8d |  | Sector-44 Noida(2) | 9380464 |
| 1115 | 36900.37000.42400.42800.43100.44600.51300.653000 | Putty primer coat | 12d | 2027-03-15 | 2027-03-26 | 1114FS-8d |  | Sector-44 Noida(2) | 9380474 |
| 1116 | 36900.37000.42400.42800.43100.44600.51300.653100 | Prehung door fixing | 10d | 2027-03-22 | 2027-03-31 | 1115FS-5d |  | Sector-44 Noida(2) | 9380484 |
| 1117 | 36900.37000.42400.42800.43100.44600.51300.653200 | Painting 1st coat | 13d | 2027-04-01 | 2027-04-13 | 1116 |  | Sector-44 Noida(2) | 9380494 |
| 1118 | 36900.37000.42400.42800.43100.44600.51300.653300 | False Ceiling panel fixing | 10d | 2027-04-18 | 2027-04-27 | 1101, 1117 |  | Sector-44 Noida(2) | 9380504 |
| 1119 | 36900.37000.42400.42800.43100.44600.51400 | **6th Floor** | 130d | 2026-12-29 | 2027-05-07 |  | start no earlier than 2026-12-29 | Sector-44 Noida(2) | 9361934 |
| 1120 | 36900.37000.42400.42800.43100.44600.51400.653400 | Block Work | 15d | 2026-12-29 | 2027-01-12 | 1012FS+80d |  | Sector-44 Noida(2) | 9380514 |
| 1121 | 36900.37000.42400.42800.43100.44600.51400.653500 | Installation of temporary Main door | 5d | 2027-01-13 | 2027-01-17 | 1120 |  | Sector-44 Noida(2) | 9380524 |
| 1122 | 36900.37000.42400.42800.43100.44600.51400.653600 | Fire sprinkler pipe fixing | 5d | 2027-01-13 | 2027-01-17 | 1105, 1120 |  | Sector-44 Noida(2) | 9380534 |
| 1123 | 36900.37000.42400.42800.43100.44600.51400.653700 | Internal Plumbing Works | 9d | 2027-01-13 | 2027-01-21 | 1120 |  | Sector-44 Noida(2) | 9380544 |
| 1124 | 36900.37000.42400.42800.43100.44600.51400.653800 | Waterproofing | 10d | 2027-01-22 | 2027-01-31 | 1123 |  | Sector-44 Noida(2) | 9380554 |
| 1125 | 36900.37000.42400.42800.43100.44600.51400.653900 | Internal Plaster | 14d | 2027-02-01 | 2027-02-14 | 1123, 1124 |  | Sector-44 Noida(2) | 9380564 |
| 1126 | 36900.37000.42400.42800.43100.44600.51400.654000 | IPS flooring work | 13d | 2027-01-13 | 2027-01-25 | 1120 |  | Sector-44 Noida(2) | 9380574 |
| 1127 | 36900.37000.42400.42800.43100.44600.51400.654100 | Toilet dado work | 12d | 2027-02-15 | 2027-02-26 | 1123, 1124, 1125 |  | Sector-44 Noida(2) | 9380584 |
| 1128 | 36900.37000.42400.42800.43100.44600.51400.654200 | Toilet flooring work | 12d | 2027-02-27 | 2027-03-10 | 1127 |  | Sector-44 Noida(2) | 9380594 |
| 1129 | 36900.37000.42400.42800.43100.44600.51400.654300 | Living dinning flooring | 18d | 2027-03-11 | 2027-03-28 | 1126, 1128 |  | Sector-44 Noida(2) | 9380604 |
| 1130 | 36900.37000.42400.42800.43100.44600.51400.654400 | Electrical wiring work | 12d | 2027-03-19 | 2027-03-30 | 1129FS-10d |  | Sector-44 Noida(2) | 9380614 |
| 1131 | 36900.37000.42400.42800.43100.44600.51400.654500 | Aluminium door-window fixing | 8d | 2027-03-23 | 2027-03-30 | 1121, 1130FS-8d |  | Sector-44 Noida(2) | 9380624 |
| 1132 | 36900.37000.42400.42800.43100.44600.51400.654600 | Putty primer coat | 12d | 2027-03-23 | 2027-04-03 | 1131FS-8d |  | Sector-44 Noida(2) | 9380634 |
| 1133 | 36900.37000.42400.42800.43100.44600.51400.654700 | Prehung door fixing | 10d | 2027-03-30 | 2027-04-08 | 1132FS-5d |  | Sector-44 Noida(2) | 9380644 |
| 1134 | 36900.37000.42400.42800.43100.44600.51400.654800 | Painting 1st coat | 13d | 2027-04-09 | 2027-04-21 | 1133 |  | Sector-44 Noida(2) | 9380654 |
| 1135 | 36900.37000.42400.42800.43100.44600.51400.654900 | False Ceiling panel fixing | 10d | 2027-04-28 | 2027-05-07 | 1118, 1134 |  | Sector-44 Noida(2) | 9380664 |

| ID | WBS | Task | Duration | Start | Finish | Predecessors | Constraint | Calendar | Unique_Task_ID |
| --- | --- | --- | --- | --- | --- | --- | --- | --- | --- |
| 1136 | 36900.37000.42400.42800.43100.44600.51500 | **7th Floor** | 132d | 2027-01-06 | 2027-05-17 |  | start no earlier than 2027-01-06 | Sector-44 Noida(2) | 9361924 |
| 1137 | 36900.37000.42400.42800.43100.44600.51500.655000 | Block Work | 15d | 2027-01-06 | 2027-01-20 | 1013FS+80d |  | Sector-44 Noida(2) | 9380674 |
| 1138 | 36900.37000.42400.42800.43100.44600.51500.655100 | Installation of temporary Main door | 5d | 2027-01-21 | 2027-01-25 | 1137 |  | Sector-44 Noida(2) | 9380684 |
| 1139 | 36900.37000.42400.42800.43100.44600.51500.655200 | Fire sprinkler pipe fixing | 5d | 2027-01-21 | 2027-01-25 | 1122, 1137 |  | Sector-44 Noida(2) | 9380694 |
| 1140 | 36900.37000.42400.42800.43100.44600.51500.655300 | Internal Plumbing Works | 9d | 2027-01-21 | 2027-01-29 | 1137 |  | Sector-44 Noida(2) | 9380704 |
| 1141 | 36900.37000.42400.42800.43100.44600.51500.655400 | Waterproofing | 10d | 2027-01-30 | 2027-02-08 | 1140 |  | Sector-44 Noida(2) | 9380714 |
| 1142 | 36900.37000.42400.42800.43100.44600.51500.655500 | Internal Plaster | 14d | 2027-02-09 | 2027-02-22 | 1140, 1141 |  | Sector-44 Noida(2) | 9380724 |
| 1143 | 36900.37000.42400.42800.43100.44600.51500.655600 | IPS flooring work | 13d | 2027-01-21 | 2027-02-02 | 1137 |  | Sector-44 Noida(2) | 9380734 |
| 1144 | 36900.37000.42400.42800.43100.44600.51500.655700 | Toilet dado work | 12d | 2027-02-23 | 2027-03-06 | 1140, 1141, 1142 |  | Sector-44 Noida(2) | 9380744 |
| 1145 | 36900.37000.42400.42800.43100.44600.51500.655800 | Toilet flooring work | 12d | 2027-03-07 | 2027-03-18 | 1144 |  | Sector-44 Noida(2) | 9380754 |
| 1146 | 36900.37000.42400.42800.43100.44600.51500.655900 | Living dinning flooring | 18d | 2027-03-19 | 2027-04-05 | 1143, 1145 |  | Sector-44 Noida(2) | 9380764 |
| 1147 | 36900.37000.42400.42800.43100.44600.51500.656000 | Electrical wiring work | 12d | 2027-03-27 | 2027-04-07 | 1146FS-10d |  | Sector-44 Noida(2) | 9380774 |
| 1148 | 36900.37000.42400.42800.43100.44600.51500.656100 | Aluminium door-window fixing | 8d | 2027-03-31 | 2027-04-07 | 1138, 1147FS-8d |  | Sector-44 Noida(2) | 9380784 |
| 1149 | 36900.37000.42400.42800.43100.44600.51500.656200 | Putty primer coat | 12d | 2027-03-31 | 2027-04-11 | 1148FS-8d |  | Sector-44 Noida(2) | 9380794 |
| 1150 | 36900.37000.42400.42800.43100.44600.51500.656300 | Prehung door fixing | 10d | 2027-04-07 | 2027-04-16 | 1149FS-5d |  | Sector-44 Noida(2) | 9380804 |
| 1151 | 36900.37000.42400.42800.43100.44600.51500.656400 | Painting 1st coat | 13d | 2027-04-17 | 2027-04-29 | 1150 |  | Sector-44 Noida(2) | 9380814 |
| 1152 | 36900.37000.42400.42800.43100.44600.51500.656500 | False Ceiling panel fixing | 10d | 2027-05-08 | 2027-05-17 | 1135, 1151 |  | Sector-44 Noida(2) | 9380824 |
| 1153 | 36900.37000.42400.42800.43100.44600.51600 | **8th Floor** | 134d | 2027-01-14 | 2027-05-27 |  | start no earlier than 2027-01-14 | Sector-44 Noida(2) | 9361894 |
| 1154 | 36900.37000.42400.42800.43100.44600.51600.656600 | Block Work | 15d | 2027-01-14 | 2027-01-28 | 1014FS+80d |  | Sector-44 Noida(2) | 9380834 |
| 1155 | 36900.37000.42400.42800.43100.44600.51600.656700 | Installation of temporary Main door | 5d | 2027-01-29 | 2027-02-02 | 1154 |  | Sector-44 Noida(2) | 9380844 |
| 1156 | 36900.37000.42400.42800.43100.44600.51600.656800 | Fire sprinkler pipe fixing | 5d | 2027-01-29 | 2027-02-02 | 1139, 1154 |  | Sector-44 Noida(2) | 9380854 |
| 1157 | 36900.37000.42400.42800.43100.44600.51600.656900 | Internal Plumbing Works | 9d | 2027-01-29 | 2027-02-06 | 1154 |  | Sector-44 Noida(2) | 9380864 |
| 1158 | 36900.37000.42400.42800.43100.44600.51600.657000 | Waterproofing | 10d | 2027-02-07 | 2027-02-16 | 1157 |  | Sector-44 Noida(2) | 9380874 |
| 1159 | 36900.37000.42400.42800.43100.44600.51600.657100 | Internal Plaster | 14d | 2027-02-17 | 2027-03-02 | 1157, 1158 |  | Sector-44 Noida(2) | 9380884 |
| 1160 | 36900.37000.42400.42800.43100.44600.51600.657200 | IPS flooring work | 13d | 2027-01-29 | 2027-02-10 | 1154 |  | Sector-44 Noida(2) | 9380894 |
| 1161 | 36900.37000.42400.42800.43100.44600.51600.657300 | Toilet dado work | 12d | 2027-03-03 | 2027-03-14 | 1157, 1158, 1159 |  | Sector-44 Noida(2) | 9380904 |
| 1162 | 36900.37000.42400.42800.43100.44600.51600.657400 | Toilet flooring work | 12d | 2027-03-15 | 2027-03-26 | 1161 |  | Sector-44 Noida(2) | 9380914 |
| 1163 | 36900.37000.42400.42800.43100.44600.51600.657500 | Living dinning flooring | 18d | 2027-03-27 | 2027-04-13 | 1160, 1162 |  | Sector-44 Noida(2) | 9380924 |
| 1164 | 36900.37000.42400.42800.43100.44600.51600.657600 | Electrical wiring work | 12d | 2027-04-04 | 2027-04-15 | 1163FS-10d |  | Sector-44 Noida(2) | 9380934 |
| 1165 | 36900.37000.42400.42800.43100.44600.51600.657700 | Aluminium door-window fixing | 8d | 2027-04-08 | 2027-04-15 | 1155, 1164FS-8d |  | Sector-44 Noida(2) | 9380944 |
| 1166 | 36900.37000.42400.42800.43100.44600.51600.657800 | Putty primer coat | 12d | 2027-04-08 | 2027-04-19 | 1165FS-8d |  | Sector-44 Noida(2) | 9380954 |
| 1167 | 36900.37000.42400.42800.43100.44600.51600.657900 | Prehung door fixing | 10d | 2027-04-15 | 2027-04-24 | 1166FS-5d |  | Sector-44 Noida(2) | 9380964 |
| 1168 | 36900.37000.42400.42800.43100.44600.51600.658000 | Painting 1st coat | 13d | 2027-04-25 | 2027-05-07 | 1167 |  | Sector-44 Noida(2) | 9380974 |
| 1169 | 36900.37000.42400.42800.43100.44600.51600.658100 | False Ceiling panel fixing | 10d | 2027-05-18 | 2027-05-27 | 1152, 1168 |  | Sector-44 Noida(2) | 9380984 |

| ID | WBS | Task | Duration | Start | Finish | Predecessors | Constraint | Calendar | Unique_Task_ID |
| --- | --- | --- | --- | --- | --- | --- | --- | --- | --- |
| 1170 | 36900.37000.42400.42800.43100.44600.51700 | **9th Floor** | 136d | 2027-01-22 | 2027-06-06 |  | start no earlier than 2027-01-22 | Sector-44 Noida(2) | 9361884 |
| 1171 | 36900.37000.42400.42800.43100.44600.51700.658200 | Block Work | 15d | 2027-01-22 | 2027-02-05 | 1015FS+80d |  | Sector-44 Noida(2) | 9380994 |
| 1172 | 36900.37000.42400.42800.43100.44600.51700.658300 | Installation of temporary Main door | 5d | 2027-02-06 | 2027-02-10 | 1171 |  | Sector-44 Noida(2) | 9381004 |
| 1173 | 36900.37000.42400.42800.43100.44600.51700.658400 | Fire sprinkler pipe fixing | 5d | 2027-02-06 | 2027-02-10 | 1156, 1171 |  | Sector-44 Noida(2) | 9381014 |
| 1174 | 36900.37000.42400.42800.43100.44600.51700.658500 | Internal Plumbing Works | 9d | 2027-02-06 | 2027-02-14 | 1171 |  | Sector-44 Noida(2) | 9381024 |
| 1175 | 36900.37000.42400.42800.43100.44600.51700.658600 | Waterproofing | 10d | 2027-02-15 | 2027-02-24 | 1174 |  | Sector-44 Noida(2) | 9381034 |
| 1176 | 36900.37000.42400.42800.43100.44600.51700.658700 | Internal Plaster | 14d | 2027-02-25 | 2027-03-10 | 1174, 1175 |  | Sector-44 Noida(2) | 9381044 |
| 1177 | 36900.37000.42400.42800.43100.44600.51700.658800 | IPS flooring work | 13d | 2027-02-06 | 2027-02-18 | 1171 |  | Sector-44 Noida(2) | 9381054 |
| 1178 | 36900.37000.42400.42800.43100.44600.51700.658900 | Toilet dado work | 12d | 2027-03-11 | 2027-03-22 | 1174, 1175, 1176 |  | Sector-44 Noida(2) | 9381064 |
| 1179 | 36900.37000.42400.42800.43100.44600.51700.659000 | Toilet flooring work | 12d | 2027-03-23 | 2027-04-03 | 1178 |  | Sector-44 Noida(2) | 9381074 |
| 1180 | 36900.37000.42400.42800.43100.44600.51700.659100 | Living dinning flooring | 18d | 2027-04-04 | 2027-04-21 | 1177, 1179 |  | Sector-44 Noida(2) | 9381084 |
| 1181 | 36900.37000.42400.42800.43100.44600.51700.659200 | Electrical wiring work | 12d | 2027-04-12 | 2027-04-23 | 1180FS-10d |  | Sector-44 Noida(2) | 9381094 |
| 1182 | 36900.37000.42400.42800.43100.44600.51700.659300 | Aluminium door-window fixing | 8d | 2027-04-16 | 2027-04-23 | 1172, 1181FS-8d |  | Sector-44 Noida(2) | 9381104 |
| 1183 | 36900.37000.42400.42800.43100.44600.51700.659400 | Putty primer coat | 12d | 2027-04-16 | 2027-04-27 | 1182FS-8d |  | Sector-44 Noida(2) | 9381114 |
| 1184 | 36900.37000.42400.42800.43100.44600.51700.659500 | Prehung door fixing | 10d | 2027-04-23 | 2027-05-02 | 1183FS-5d |  | Sector-44 Noida(2) | 9381124 |
| 1185 | 36900.37000.42400.42800.43100.44600.51700.659600 | Painting 1st coat | 13d | 2027-05-03 | 2027-05-15 | 1184 |  | Sector-44 Noida(2) | 9381134 |
| 1186 | 36900.37000.42400.42800.43100.44600.51700.659700 | False Ceiling panel fixing | 10d | 2027-05-28 | 2027-06-06 | 1169, 1185 |  | Sector-44 Noida(2) | 9381144 |
| 1187 | 36900.37000.42400.42800.43100.44600.51800 | **10th Floor** | 138d | 2027-01-30 | 2027-06-16 |  | start no earlier than 2027-01-30 | Sector-44 Noida(2) | 9361874 |
| 1188 | 36900.37000.42400.42800.43100.44600.51800.659800 | Block Work | 15d | 2027-01-30 | 2027-02-13 | 1016FS+80d |  | Sector-44 Noida(2) | 9381154 |
| 1189 | 36900.37000.42400.42800.43100.44600.51800.659900 | Installation of temporary Main door | 5d | 2027-02-14 | 2027-02-18 | 1188 |  | Sector-44 Noida(2) | 9381164 |
| 1190 | 36900.37000.42400.42800.43100.44600.51800.660000 | Fire sprinkler pipe fixing | 5d | 2027-02-14 | 2027-02-18 | 1173, 1188 |  | Sector-44 Noida(2) | 9381174 |
| 1191 | 36900.37000.42400.42800.43100.44600.51800.660100 | Internal Plumbing Works | 9d | 2027-02-14 | 2027-02-22 | 1188 |  | Sector-44 Noida(2) | 9381184 |
| 1192 | 36900.37000.42400.42800.43100.44600.51800.660200 | Waterproofing | 10d | 2027-02-23 | 2027-03-04 | 1191 |  | Sector-44 Noida(2) | 9381194 |
| 1193 | 36900.37000.42400.42800.43100.44600.51800.660300 | Internal Plaster | 14d | 2027-03-05 | 2027-03-18 | 1191, 1192 |  | Sector-44 Noida(2) | 9381204 |
| 1194 | 36900.37000.42400.42800.43100.44600.51800.660400 | IPS flooring work | 13d | 2027-02-14 | 2027-02-26 | 1188 |  | Sector-44 Noida(2) | 9381214 |
| 1195 | 36900.37000.42400.42800.43100.44600.51800.660500 | Toilet dado work | 12d | 2027-03-19 | 2027-03-30 | 1191, 1192, 1193 |  | Sector-44 Noida(2) | 9381224 |
| 1196 | 36900.37000.42400.42800.43100.44600.51800.660600 | Toilet flooring work | 12d | 2027-03-31 | 2027-04-11 | 1195 |  | Sector-44 Noida(2) | 9381234 |
| 1197 | 36900.37000.42400.42800.43100.44600.51800.660700 | Living dinning flooring | 18d | 2027-04-12 | 2027-04-29 | 1194, 1196 |  | Sector-44 Noida(2) | 9381244 |
| 1198 | 36900.37000.42400.42800.43100.44600.51800.660800 | Electrical wiring work | 12d | 2027-04-20 | 2027-05-01 | 1197FS-10d |  | Sector-44 Noida(2) | 9381254 |
| 1199 | 36900.37000.42400.42800.43100.44600.51800.660900 | Aluminium door-window fixing | 8d | 2027-04-24 | 2027-05-01 | 1189, 1198FS-8d |  | Sector-44 Noida(2) | 9381264 |
| 1200 | 36900.37000.42400.42800.43100.44600.51800.661000 | Putty primer coat | 12d | 2027-04-24 | 2027-05-05 | 1199FS-8d |  | Sector-44 Noida(2) | 9381274 |
| 1201 | 36900.37000.42400.42800.43100.44600.51800.661100 | Prehung door fixing | 10d | 2027-05-01 | 2027-05-10 | 1200FS-5d |  | Sector-44 Noida(2) | 9381284 |
| 1202 | 36900.37000.42400.42800.43100.44600.51800.661200 | Painting 1st coat | 13d | 2027-05-11 | 2027-05-23 | 1201 |  | Sector-44 Noida(2) | 9381294 |
| 1203 | 36900.37000.42400.42800.43100.44600.51800.661300 | False Ceiling panel fixing | 10d | 2027-06-07 | 2027-06-16 | 1186, 1202 |  | Sector-44 Noida(2) | 9381304 |

| ID | WBS | Task | Duration | Start | Finish | Predecessors | Constraint | Calendar | Unique_Task_ID |
| --- | --- | --- | --- | --- | --- | --- | --- | --- | --- |
| 1204 | 36900.37000.42400.42800.43100.44600.51900 | **11th Floor** | 139d | 2027-02-08 | 2027-06-26 |  | start no earlier than 2027-02-08 | Sector-44 Noida(2) | 9361864 |
| 1205 | 36900.37000.42400.42800.43100.44600.51900.661400 | Block Work | 15d | 2027-02-08 | 2027-02-22 | 1017FS+80d |  | Sector-44 Noida(2) | 9381314 |
| 1206 | 36900.37000.42400.42800.43100.44600.51900.661500 | Installation of temporary Main door | 5d | 2027-02-23 | 2027-02-27 | 1205 |  | Sector-44 Noida(2) | 9381324 |
| 1207 | 36900.37000.42400.42800.43100.44600.51900.661600 | Fire sprinkler pipe fixing | 5d | 2027-02-23 | 2027-02-27 | 1190, 1205 |  | Sector-44 Noida(2) | 9381334 |
| 1208 | 36900.37000.42400.42800.43100.44600.51900.661700 | Internal Plumbing Works | 9d | 2027-02-23 | 2027-03-03 | 1205 |  | Sector-44 Noida(2) | 9381344 |
| 1209 | 36900.37000.42400.42800.43100.44600.51900.661800 | Waterproofing | 10d | 2027-03-04 | 2027-03-13 | 1208 |  | Sector-44 Noida(2) | 9381354 |
| 1210 | 36900.37000.42400.42800.43100.44600.51900.661900 | Internal Plaster | 14d | 2027-03-14 | 2027-03-27 | 1208, 1209 |  | Sector-44 Noida(2) | 9381364 |
| 1211 | 36900.37000.42400.42800.43100.44600.51900.662000 | IPS flooring work | 13d | 2027-02-23 | 2027-03-07 | 1205 |  | Sector-44 Noida(2) | 9381374 |
| 1212 | 36900.37000.42400.42800.43100.44600.51900.662100 | Toilet dado work | 12d | 2027-03-28 | 2027-04-08 | 1208, 1209, 1210 |  | Sector-44 Noida(2) | 9381384 |
| 1213 | 36900.37000.42400.42800.43100.44600.51900.662200 | Toilet flooring work | 12d | 2027-04-09 | 2027-04-20 | 1212 |  | Sector-44 Noida(2) | 9381394 |
| 1214 | 36900.37000.42400.42800.43100.44600.51900.662300 | Living dinning flooring | 18d | 2027-04-21 | 2027-05-08 | 1211, 1213 |  | Sector-44 Noida(2) | 9381404 |
| 1215 | 36900.37000.42400.42800.43100.44600.51900.662400 | Electrical wiring work | 12d | 2027-04-29 | 2027-05-10 | 1214FS-10d |  | Sector-44 Noida(2) | 9381414 |
| 1216 | 36900.37000.42400.42800.43100.44600.51900.662500 | Aluminium door-window fixing | 8d | 2027-05-03 | 2027-05-10 | 1206, 1215FS-8d |  | Sector-44 Noida(2) | 9381424 |
| 1217 | 36900.37000.42400.42800.43100.44600.51900.662600 | Putty primer coat | 12d | 2027-05-03 | 2027-05-14 | 1216FS-8d |  | Sector-44 Noida(2) | 9381434 |
| 1218 | 36900.37000.42400.42800.43100.44600.51900.662700 | Prehung door fixing | 10d | 2027-05-10 | 2027-05-19 | 1217FS-5d |  | Sector-44 Noida(2) | 9381444 |
| 1219 | 36900.37000.42400.42800.43100.44600.51900.662800 | Painting 1st coat | 13d | 2027-05-20 | 2027-06-01 | 1218 |  | Sector-44 Noida(2) | 9381454 |
| 1220 | 36900.37000.42400.42800.43100.44600.51900.662900 | False Ceiling panel fixing | 10d | 2027-06-17 | 2027-06-26 | 1203, 1219 |  | Sector-44 Noida(2) | 9381464 |
| 1221 | 36900.37000.42400.42800.43100.44600.52000 | **12th Floor** | 137d | 2027-02-20 | 2027-07-06 |  | start no earlier than 2027-02-20 | Sector-44 Noida(2) | 9361854 |
| 1222 | 36900.37000.42400.42800.43100.44600.52000.663000 | Block Work | 15d | 2027-02-20 | 2027-03-06 | 1018FS+80d |  | Sector-44 Noida(2) | 9381474 |
| 1223 | 36900.37000.42400.42800.43100.44600.52000.663100 | Installation of temporary Main door | 5d | 2027-03-07 | 2027-03-11 | 1222 |  | Sector-44 Noida(2) | 9381484 |
| 1224 | 36900.37000.42400.42800.43100.44600.52000.663200 | Fire sprinkler pipe fixing | 5d | 2027-03-07 | 2027-03-11 | 1207, 1222 |  | Sector-44 Noida(2) | 9381494 |
| 1225 | 36900.37000.42400.42800.43100.44600.52000.663300 | Internal Plumbing Works | 9d | 2027-03-07 | 2027-03-15 | 1222 |  | Sector-44 Noida(2) | 9381504 |
| 1226 | 36900.37000.42400.42800.43100.44600.52000.663400 | Waterproofing | 10d | 2027-03-16 | 2027-03-25 | 1225 |  | Sector-44 Noida(2) | 9381514 |
| 1227 | 36900.37000.42400.42800.43100.44600.52000.663500 | Internal Plaster | 14d | 2027-03-26 | 2027-04-08 | 1225, 1226 |  | Sector-44 Noida(2) | 9381524 |
| 1228 | 36900.37000.42400.42800.43100.44600.52000.663600 | IPS flooring work | 13d | 2027-03-07 | 2027-03-19 | 1222 |  | Sector-44 Noida(2) | 9381534 |
| 1229 | 36900.37000.42400.42800.43100.44600.52000.663700 | Toilet dado work | 12d | 2027-04-09 | 2027-04-20 | 1225, 1226, 1227 |  | Sector-44 Noida(2) | 9381544 |
| 1230 | 36900.37000.42400.42800.43100.44600.52000.663800 | Toilet flooring work | 12d | 2027-04-21 | 2027-05-02 | 1229 |  | Sector-44 Noida(2) | 9381554 |
| 1231 | 36900.37000.42400.42800.43100.44600.52000.663900 | Living dinning flooring | 18d | 2027-05-03 | 2027-05-20 | 1228, 1230 |  | Sector-44 Noida(2) | 9381564 |
| 1232 | 36900.37000.42400.42800.43100.44600.52000.664000 | Electrical wiring work | 12d | 2027-05-11 | 2027-05-22 | 1231FS-10d |  | Sector-44 Noida(2) | 9381574 |
| 1233 | 36900.37000.42400.42800.43100.44600.52000.664100 | Aluminium door-window fixing | 8d | 2027-05-15 | 2027-05-22 | 1223, 1232FS-8d |  | Sector-44 Noida(2) | 9381584 |
| 1234 | 36900.37000.42400.42800.43100.44600.52000.664200 | Putty primer coat | 12d | 2027-05-15 | 2027-05-26 | 1233FS-8d |  | Sector-44 Noida(2) | 9381594 |
| 1235 | 36900.37000.42400.42800.43100.44600.52000.664300 | Prehung door fixing | 10d | 2027-05-22 | 2027-05-31 | 1234FS-5d |  | Sector-44 Noida(2) | 9381604 |
| 1236 | 36900.37000.42400.42800.43100.44600.52000.664400 | Painting 1st coat | 13d | 2027-06-01 | 2027-06-13 | 1235 |  | Sector-44 Noida(2) | 9381614 |
| 1237 | 36900.37000.42400.42800.43100.44600.52000.664500 | False Ceiling panel fixing | 10d | 2027-06-27 | 2027-07-06 | 1220, 1236 |  | Sector-44 Noida(2) | 9381624 |

| ID | WBS | Task | Duration | Start | Finish | Predecessors | Constraint | Calendar | Unique_Task_ID |
| --- | --- | --- | --- | --- | --- | --- | --- | --- | --- |
| 1238 | 36900.37000.42400.42800.43100.44600.52100 | **13th Floor** | 135d | 2027-03-04 | 2027-07-16 |  | start no earlier than 2027-03-04 | Sector-44 Noida(2) | 9361834 |
| 1239 | 36900.37000.42400.42800.43100.44600.52100.664600 | Block Work | 15d | 2027-03-04 | 2027-03-18 | 1019FS+80d |  | Sector-44 Noida(2) | 9381634 |
| 1240 | 36900.37000.42400.42800.43100.44600.52100.664700 | Installation of temporary Main door | 5d | 2027-03-19 | 2027-03-23 | 1239 |  | Sector-44 Noida(2) | 9381644 |
| 1241 | 36900.37000.42400.42800.43100.44600.52100.664800 | Fire sprinkler pipe fixing | 5d | 2027-03-19 | 2027-03-23 | 1224, 1239 |  | Sector-44 Noida(2) | 9381654 |
| 1242 | 36900.37000.42400.42800.43100.44600.52100.664900 | Internal Plumbing Works | 9d | 2027-03-19 | 2027-03-27 | 1239 |  | Sector-44 Noida(2) | 9381664 |
| 1243 | 36900.37000.42400.42800.43100.44600.52100.665000 | Waterproofing | 10d | 2027-03-28 | 2027-04-06 | 1242 |  | Sector-44 Noida(2) | 9381674 |
| 1244 | 36900.37000.42400.42800.43100.44600.52100.665100 | Internal Plaster | 14d | 2027-04-07 | 2027-04-20 | 1242, 1243 |  | Sector-44 Noida(2) | 9381684 |
| 1245 | 36900.37000.42400.42800.43100.44600.52100.665200 | IPS flooring work | 13d | 2027-03-19 | 2027-03-31 | 1239 |  | Sector-44 Noida(2) | 9381694 |
| 1246 | 36900.37000.42400.42800.43100.44600.52100.665300 | Toilet dado work | 12d | 2027-04-21 | 2027-05-02 | 1242, 1243, 1244 |  | Sector-44 Noida(2) | 9381704 |
| 1247 | 36900.37000.42400.42800.43100.44600.52100.665400 | Toilet flooring work | 12d | 2027-05-03 | 2027-05-14 | 1246 |  | Sector-44 Noida(2) | 9381714 |
| 1248 | 36900.37000.42400.42800.43100.44600.52100.665500 | Living dinning flooring | 18d | 2027-05-15 | 2027-06-01 | 1245, 1247 |  | Sector-44 Noida(2) | 9381724 |
| 1249 | 36900.37000.42400.42800.43100.44600.52100.665600 | Electrical wiring work | 12d | 2027-05-23 | 2027-06-03 | 1248FS-10d |  | Sector-44 Noida(2) | 9381734 |
| 1250 | 36900.37000.42400.42800.43100.44600.52100.665700 | Aluminium door-window fixing | 8d | 2027-05-27 | 2027-06-03 | 1240, 1249FS-8d |  | Sector-44 Noida(2) | 9381744 |
| 1251 | 36900.37000.42400.42800.43100.44600.52100.665800 | Putty primer coat | 12d | 2027-05-27 | 2027-06-07 | 1250FS-8d |  | Sector-44 Noida(2) | 9381754 |
| 1252 | 36900.37000.42400.42800.43100.44600.52100.665900 | Prehung door fixing | 10d | 2027-06-03 | 2027-06-12 | 1251FS-5d |  | Sector-44 Noida(2) | 9381764 |
| 1253 | 36900.37000.42400.42800.43100.44600.52100.666000 | Painting 1st coat | 13d | 2027-06-13 | 2027-06-25 | 1252 |  | Sector-44 Noida(2) | 9381774 |
| 1254 | 36900.37000.42400.42800.43100.44600.52100.666100 | False Ceiling panel fixing | 10d | 2027-07-07 | 2027-07-16 | 1237, 1253 |  | Sector-44 Noida(2) | 9381784 |
| 1255 | 36900.37000.42400.42800.43100.44600.52200 | **14th Floor** | 127d | 2027-03-22 | 2027-07-26 |  | start no earlier than 2027-03-22 | Sector-44 Noida(2) | 9361824 |
| 1256 | 36900.37000.42400.42800.43100.44600.52200.666200 | Block Work | 15d | 2027-03-22 | 2027-04-05 | 1020FS+80d |  | Sector-44 Noida(2) | 9381794 |
| 1257 | 36900.37000.42400.42800.43100.44600.52200.666300 | Installation of temporary Main door | 5d | 2027-04-06 | 2027-04-10 | 1256 |  | Sector-44 Noida(2) | 9381804 |
| 1258 | 36900.37000.42400.42800.43100.44600.52200.666400 | Fire sprinkler pipe fixing | 5d | 2027-04-06 | 2027-04-10 | 1241, 1256 |  | Sector-44 Noida(2) | 9381814 |
| 1259 | 36900.37000.42400.42800.43100.44600.52200.666500 | Internal Plumbing Works | 9d | 2027-04-06 | 2027-04-14 | 1256 |  | Sector-44 Noida(2) | 9381824 |
| 1260 | 36900.37000.42400.42800.43100.44600.52200.666600 | Waterproofing | 10d | 2027-04-15 | 2027-04-24 | 1259 |  | Sector-44 Noida(2) | 9381834 |
| 1261 | 36900.37000.42400.42800.43100.44600.52200.666700 | Internal Plaster | 14d | 2027-04-25 | 2027-05-08 | 1259, 1260 |  | Sector-44 Noida(2) | 9381844 |
| 1262 | 36900.37000.42400.42800.43100.44600.52200.666800 | IPS flooring work | 13d | 2027-04-06 | 2027-04-18 | 1256 |  | Sector-44 Noida(2) | 9381854 |
| 1263 | 36900.37000.42400.42800.43100.44600.52200.666900 | Toilet dado work | 12d | 2027-05-09 | 2027-05-20 | 1259, 1260, 1261 |  | Sector-44 Noida(2) | 9381864 |
| 1264 | 36900.37000.42400.42800.43100.44600.52200.667000 | Toilet flooring work | 12d | 2027-05-21 | 2027-06-01 | 1263 |  | Sector-44 Noida(2) | 9381874 |
| 1265 | 36900.37000.42400.42800.43100.44600.52200.667100 | Living dinning flooring | 18d | 2027-06-02 | 2027-06-19 | 1262, 1264 |  | Sector-44 Noida(2) | 9381884 |
| 1266 | 36900.37000.42400.42800.43100.44600.52200.667200 | Electrical wiring work | 12d | 2027-06-10 | 2027-06-21 | 1265FS-10d |  | Sector-44 Noida(2) | 9381894 |
| 1267 | 36900.37000.42400.42800.43100.44600.52200.667300 | Aluminium door-window fixing | 8d | 2027-06-14 | 2027-06-21 | 1257, 1266FS-8d |  | Sector-44 Noida(2) | 9381904 |
| 1268 | 36900.37000.42400.42800.43100.44600.52200.667400 | Putty primer coat | 12d | 2027-06-14 | 2027-06-25 | 1267FS-8d |  | Sector-44 Noida(2) | 9381914 |
| 1269 | 36900.37000.42400.42800.43100.44600.52200.667500 | Prehung door fixing | 10d | 2027-06-21 | 2027-06-30 | 1268FS-5d |  | Sector-44 Noida(2) | 9381924 |
| 1270 | 36900.37000.42400.42800.43100.44600.52200.667600 | Painting 1st coat | 13d | 2027-07-01 | 2027-07-13 | 1269 |  | Sector-44 Noida(2) | 9381934 |
| 1271 | 36900.37000.42400.42800.43100.44600.52200.667700 | False Ceiling panel fixing | 10d | 2027-07-17 | 2027-07-26 | 1254, 1270 |  | Sector-44 Noida(2) | 9381944 |

| ID | WBS | Task | Duration | Start | Finish | Predecessors | Constraint | Calendar | Unique_Task_ID |
| --- | --- | --- | --- | --- | --- | --- | --- | --- | --- |
| 1272 | 36900.37000.42400.42800.43100.44600.52300 | **15th Floor** | 125d | 2027-04-03 | 2027-08-05 |  | start no earlier than 2027-04-03 | Sector-44 Noida(2) | 9361814 |
| 1273 | 36900.37000.42400.42800.43100.44600.52300.667800 | Block Work | 15d | 2027-04-03 | 2027-04-17 | 1021FS+80d |  | Sector-44 Noida(2) | 9381954 |
| 1274 | 36900.37000.42400.42800.43100.44600.52300.667900 | Installation of temporary Main door | 5d | 2027-04-18 | 2027-04-22 | 1273 |  | Sector-44 Noida(2) | 9381964 |
| 1275 | 36900.37000.42400.42800.43100.44600.52300.668000 | Fire sprinkler pipe fixing | 5d | 2027-04-18 | 2027-04-22 | 1258, 1273 |  | Sector-44 Noida(2) | 9381974 |
| 1276 | 36900.37000.42400.42800.43100.44600.52300.668100 | Internal Plumbing Works | 9d | 2027-04-18 | 2027-04-26 | 1273 |  | Sector-44 Noida(2) | 9381984 |
| 1277 | 36900.37000.42400.42800.43100.44600.52300.668200 | Waterproofing | 10d | 2027-04-27 | 2027-05-06 | 1276 |  | Sector-44 Noida(2) | 9381994 |
| 1278 | 36900.37000.42400.42800.43100.44600.52300.668300 | Internal Plaster | 14d | 2027-05-07 | 2027-05-20 | 1276, 1277 |  | Sector-44 Noida(2) | 9382004 |
| 1279 | 36900.37000.42400.42800.43100.44600.52300.668400 | IPS flooring work | 13d | 2027-04-18 | 2027-04-30 | 1273 |  | Sector-44 Noida(2) | 9382014 |
| 1280 | 36900.37000.42400.42800.43100.44600.52300.668500 | Toilet dado work | 12d | 2027-05-21 | 2027-06-01 | 1276, 1277, 1278 |  | Sector-44 Noida(2) | 9382024 |
| 1281 | 36900.37000.42400.42800.43100.44600.52300.668600 | Toilet flooring work | 12d | 2027-06-02 | 2027-06-13 | 1280 |  | Sector-44 Noida(2) | 9382034 |
| 1282 | 36900.37000.42400.42800.43100.44600.52300.668700 | Living dinning flooring | 18d | 2027-06-14 | 2027-07-01 | 1279, 1281 |  | Sector-44 Noida(2) | 9382044 |
| 1283 | 36900.37000.42400.42800.43100.44600.52300.668800 | Electrical wiring work | 12d | 2027-06-22 | 2027-07-03 | 1282FS-10d |  | Sector-44 Noida(2) | 9382054 |
| 1284 | 36900.37000.42400.42800.43100.44600.52300.668900 | Aluminium door-window fixing | 8d | 2027-06-26 | 2027-07-03 | 1274, 1283FS-8d |  | Sector-44 Noida(2) | 9382064 |
| 1285 | 36900.37000.42400.42800.43100.44600.52300.669000 | Putty primer coat | 12d | 2027-06-26 | 2027-07-07 | 1284FS-8d |  | Sector-44 Noida(2) | 9382074 |
| 1286 | 36900.37000.42400.42800.43100.44600.52300.669100 | Prehung door fixing | 10d | 2027-07-03 | 2027-07-12 | 1285FS-5d |  | Sector-44 Noida(2) | 9382084 |
| 1287 | 36900.37000.42400.42800.43100.44600.52300.669200 | Painting 1st coat | 13d | 2027-07-13 | 2027-07-25 | 1286 |  | Sector-44 Noida(2) | 9382094 |
| 1288 | 36900.37000.42400.42800.43100.44600.52300.669300 | False Ceiling panel fixing | 10d | 2027-07-27 | 2027-08-05 | 1271, 1287 |  | Sector-44 Noida(2) | 9382104 |
| 1289 | 36900.37000.42400.42800.43100.44600.52400 | **16th Floor** | 124d | 2027-04-15 | 2027-08-16 |  | start no earlier than 2027-04-15 | Sector-44 Noida(2) | 9361804 |
| 1290 | 36900.37000.42400.42800.43100.44600.52400.669400 | Block Work | 15d | 2027-04-15 | 2027-04-29 | 1022FS+80d |  | Sector-44 Noida(2) | 9382114 |
| 1291 | 36900.37000.42400.42800.43100.44600.52400.669500 | Installation of temporary Main door | 5d | 2027-04-30 | 2027-05-04 | 1290 |  | Sector-44 Noida(2) | 9382124 |
| 1292 | 36900.37000.42400.42800.43100.44600.52400.669600 | Fire sprinkler pipe fixing | 5d | 2027-04-30 | 2027-05-04 | 1275, 1290 |  | Sector-44 Noida(2) | 9382134 |
| 1293 | 36900.37000.42400.42800.43100.44600.52400.669700 | Internal Plumbing Works | 9d | 2027-04-30 | 2027-05-08 | 1290 |  | Sector-44 Noida(2) | 9382144 |
| 1294 | 36900.37000.42400.42800.43100.44600.52400.669800 | Waterproofing | 10d | 2027-05-09 | 2027-05-18 | 1293 |  | Sector-44 Noida(2) | 9382154 |
| 1295 | 36900.37000.42400.42800.43100.44600.52400.669900 | Internal Plaster | 14d | 2027-05-19 | 2027-06-01 | 1293, 1294 |  | Sector-44 Noida(2) | 9382164 |
| 1296 | 36900.37000.42400.42800.43100.44600.52400.670000 | IPS flooring work | 13d | 2027-04-30 | 2027-05-12 | 1290 |  | Sector-44 Noida(2) | 9382174 |
| 1297 | 36900.37000.42400.42800.43100.44600.52400.670100 | Toilet dado work | 12d | 2027-06-02 | 2027-06-13 | 1293, 1294, 1295 |  | Sector-44 Noida(2) | 9382184 |
| 1298 | 36900.37000.42400.42800.43100.44600.52400.670200 | Toilet flooring work | 12d | 2027-06-14 | 2027-06-25 | 1297 |  | Sector-44 Noida(2) | 9382194 |
| 1299 | 36900.37000.42400.42800.43100.44600.52400.670300 | Living dinning flooring | 18d | 2027-06-26 | 2027-07-13 | 1296, 1298 |  | Sector-44 Noida(2) | 9382204 |
| 1300 | 36900.37000.42400.42800.43100.44600.52400.670400 | Electrical wiring work | 12d | 2027-07-04 | 2027-07-15 | 1299FS-10d |  | Sector-44 Noida(2) | 9382214 |
| 1301 | 36900.37000.42400.42800.43100.44600.52400.670500 | Aluminium door-window fixing | 8d | 2027-07-08 | 2027-07-15 | 1291, 1300FS-8d |  | Sector-44 Noida(2) | 9382224 |
| 1302 | 36900.37000.42400.42800.43100.44600.52400.670600 | Putty primer coat | 12d | 2027-07-08 | 2027-07-19 | 1301FS-8d |  | Sector-44 Noida(2) | 9382234 |
| 1303 | 36900.37000.42400.42800.43100.44600.52400.670700 | Prehung door fixing | 10d | 2027-07-15 | 2027-07-24 | 1302FS-5d |  | Sector-44 Noida(2) | 9382244 |
| 1304 | 36900.37000.42400.42800.43100.44600.52400.670800 | Painting 1st coat | 13d | 2027-07-25 | 2027-08-06 | 1303 |  | Sector-44 Noida(2) | 9382254 |
| 1305 | 36900.37000.42400.42800.43100.44600.52400.670900 | False Ceiling panel fixing | 10d | 2027-08-07 | 2027-08-16 | 1288, 1304 |  | Sector-44 Noida(2) | 9382264 |

| ID | WBS | Task | Duration | Start | Finish | Predecessors | Constraint | Calendar | Unique_Task_ID |
| --- | --- | --- | --- | --- | --- | --- | --- | --- | --- |
| 1306 | 36900.37000.42400.42800.43100.44600.52500 | **17th Floor** | 124d | 2027-04-27 | 2027-08-28 |  | start no earlier than 2027-04-27 | Sector-44 Noida(2) | 9361794 |
| 1307 | 36900.37000.42400.42800.43100.44600.52500.671000 | Block Work | 15d | 2027-04-27 | 2027-05-11 | 1023FS+80d |  | Sector-44 Noida(2) | 9382274 |
| 1308 | 36900.37000.42400.42800.43100.44600.52500.671100 | Installation of temporary Main door | 5d | 2027-05-12 | 2027-05-16 | 1307 |  | Sector-44 Noida(2) | 9382284 |
| 1309 | 36900.37000.42400.42800.43100.44600.52500.671200 | Fire sprinkler pipe fixing | 5d | 2027-05-12 | 2027-05-16 | 1292, 1307 |  | Sector-44 Noida(2) | 9382294 |
| 1310 | 36900.37000.42400.42800.43100.44600.52500.671300 | Internal Plumbing Works | 9d | 2027-05-12 | 2027-05-20 | 1307 |  | Sector-44 Noida(2) | 9382304 |
| 1311 | 36900.37000.42400.42800.43100.44600.52500.671400 | Waterproofing | 10d | 2027-05-21 | 2027-05-30 | 1310 |  | Sector-44 Noida(2) | 9382314 |
| 1312 | 36900.37000.42400.42800.43100.44600.52500.671500 | Internal Plaster | 14d | 2027-05-31 | 2027-06-13 | 1310, 1311 |  | Sector-44 Noida(2) | 9382324 |
| 1313 | 36900.37000.42400.42800.43100.44600.52500.671600 | IPS flooring work | 13d | 2027-05-12 | 2027-05-24 | 1307 |  | Sector-44 Noida(2) | 9382334 |
| 1314 | 36900.37000.42400.42800.43100.44600.52500.671700 | Toilet dado work | 12d | 2027-06-14 | 2027-06-25 | 1310, 1311, 1312 |  | Sector-44 Noida(2) | 9382344 |
| 1315 | 36900.37000.42400.42800.43100.44600.52500.671800 | Toilet flooring work | 12d | 2027-06-26 | 2027-07-07 | 1314 |  | Sector-44 Noida(2) | 9382354 |
| 1316 | 36900.37000.42400.42800.43100.44600.52500.671900 | Living dinning flooring | 18d | 2027-07-08 | 2027-07-25 | 1313, 1315 |  | Sector-44 Noida(2) | 9382364 |
| 1317 | 36900.37000.42400.42800.43100.44600.52500.672000 | Electrical wiring work | 12d | 2027-07-16 | 2027-07-27 | 1316FS-10d |  | Sector-44 Noida(2) | 9382374 |
| 1318 | 36900.37000.42400.42800.43100.44600.52500.672100 | Aluminium door-window fixing | 8d | 2027-07-20 | 2027-07-27 | 1308, 1317FS-8d |  | Sector-44 Noida(2) | 9382384 |
| 1319 | 36900.37000.42400.42800.43100.44600.52500.672200 | Putty primer coat | 12d | 2027-07-20 | 2027-07-31 | 1318FS-8d |  | Sector-44 Noida(2) | 9382394 |
| 1320 | 36900.37000.42400.42800.43100.44600.52500.672300 | Prehung door fixing | 10d | 2027-07-27 | 2027-08-05 | 1319FS-5d |  | Sector-44 Noida(2) | 9382404 |
| 1321 | 36900.37000.42400.42800.43100.44600.52500.672400 | Painting 1st coat | 13d | 2027-08-06 | 2027-08-18 | 1320 |  | Sector-44 Noida(2) | 9382414 |
| 1322 | 36900.37000.42400.42800.43100.44600.52500.672500 | False Ceiling panel fixing | 10d | 2027-08-19 | 2027-08-28 | 1305, 1321 |  | Sector-44 Noida(2) | 9382424 |
| 1323 | 36900.37000.42400.42800.43100.44600.52600 | **18th Floor** | 124d | 2027-05-09 | 2027-09-09 |  | start no earlier than 2027-05-09 | Sector-44 Noida(2) | 9361784 |
| 1324 | 36900.37000.42400.42800.43100.44600.52600.672600 | Block Work | 15d | 2027-05-09 | 2027-05-23 | 1024FS+80d |  | Sector-44 Noida(2) | 9382434 |
| 1325 | 36900.37000.42400.42800.43100.44600.52600.672700 | Installation of temporary Main door | 5d | 2027-05-24 | 2027-05-28 | 1324 |  | Sector-44 Noida(2) | 9382444 |
| 1326 | 36900.37000.42400.42800.43100.44600.52600.672800 | Fire sprinkler pipe fixing | 5d | 2027-05-24 | 2027-05-28 | 1309, 1324 |  | Sector-44 Noida(2) | 9382454 |
| 1327 | 36900.37000.42400.42800.43100.44600.52600.672900 | Internal Plumbing Works | 9d | 2027-05-24 | 2027-06-01 | 1324 |  | Sector-44 Noida(2) | 9382464 |
| 1328 | 36900.37000.42400.42800.43100.44600.52600.673000 | Waterproofing | 10d | 2027-06-02 | 2027-06-11 | 1327 |  | Sector-44 Noida(2) | 9382474 |
| 1329 | 36900.37000.42400.42800.43100.44600.52600.673100 | Internal Plaster | 14d | 2027-06-12 | 2027-06-25 | 1327, 1328 |  | Sector-44 Noida(2) | 9382484 |
| 1330 | 36900.37000.42400.42800.43100.44600.52600.673200 | IPS flooring work | 13d | 2027-05-24 | 2027-06-05 | 1324 |  | Sector-44 Noida(2) | 9382494 |
| 1331 | 36900.37000.42400.42800.43100.44600.52600.673300 | Toilet dado work | 12d | 2027-06-26 | 2027-07-07 | 1327, 1328, 1329 |  | Sector-44 Noida(2) | 9382504 |
| 1332 | 36900.37000.42400.42800.43100.44600.52600.673400 | Toilet flooring work | 12d | 2027-07-08 | 2027-07-19 | 1331 |  | Sector-44 Noida(2) | 9382514 |
| 1333 | 36900.37000.42400.42800.43100.44600.52600.673500 | Living dinning flooring | 18d | 2027-07-20 | 2027-08-06 | 1330, 1332 |  | Sector-44 Noida(2) | 9382524 |
| 1334 | 36900.37000.42400.42800.43100.44600.52600.673600 | Electrical wiring work | 12d | 2027-07-28 | 2027-08-08 | 1333FS-10d |  | Sector-44 Noida(2) | 9382534 |
| 1335 | 36900.37000.42400.42800.43100.44600.52600.673700 | Aluminium door-window fixing | 8d | 2027-08-01 | 2027-08-08 | 1325, 1334FS-8d |  | Sector-44 Noida(2) | 9382544 |
| 1336 | 36900.37000.42400.42800.43100.44600.52600.673800 | Putty primer coat | 12d | 2027-08-01 | 2027-08-12 | 1335FS-8d |  | Sector-44 Noida(2) | 9382554 |
| 1337 | 36900.37000.42400.42800.43100.44600.52600.673900 | Prehung door fixing | 10d | 2027-08-08 | 2027-08-17 | 1336FS-5d |  | Sector-44 Noida(2) | 9382564 |
| 1338 | 36900.37000.42400.42800.43100.44600.52600.674000 | Painting 1st coat | 13d | 2027-08-18 | 2027-08-30 | 1337 |  | Sector-44 Noida(2) | 9382574 |
| 1339 | 36900.37000.42400.42800.43100.44600.52600.674100 | False Ceiling panel fixing | 10d | 2027-08-31 | 2027-09-09 | 1322, 1338 |  | Sector-44 Noida(2) | 9382584 |

| ID | WBS | Task | Duration | Start | Finish | Predecessors | Constraint | Calendar | Unique_Task_ID |
| --- | --- | --- | --- | --- | --- | --- | --- | --- | --- |
| 1340 | 36900.37000.42400.42800.43100.44600.52700 | **19th Floor** | 124d | 2027-05-21 | 2027-09-21 |  | start no earlier than 2027-05-21 | Sector-44 Noida(2) | 9361774 |
| 1341 | 36900.37000.42400.42800.43100.44600.52700.674200 | Block Work | 15d | 2027-05-21 | 2027-06-04 | 1025FS+80d |  | Sector-44 Noida(2) | 9382594 |
| 1342 | 36900.37000.42400.42800.43100.44600.52700.674300 | Installation of temporary Main door | 5d | 2027-06-05 | 2027-06-09 | 1341 |  | Sector-44 Noida(2) | 9382604 |
| 1343 | 36900.37000.42400.42800.43100.44600.52700.674400 | Fire sprinkler pipe fixing | 5d | 2027-06-05 | 2027-06-09 | 1326, 1341 |  | Sector-44 Noida(2) | 9382614 |
| 1344 | 36900.37000.42400.42800.43100.44600.52700.674500 | Internal Plumbing Works | 9d | 2027-06-05 | 2027-06-13 | 1341 |  | Sector-44 Noida(2) | 9382624 |
| 1345 | 36900.37000.42400.42800.43100.44600.52700.674600 | Waterproofing | 10d | 2027-06-14 | 2027-06-23 | 1344 |  | Sector-44 Noida(2) | 9382634 |
| 1346 | 36900.37000.42400.42800.43100.44600.52700.674700 | Internal Plaster | 14d | 2027-06-24 | 2027-07-07 | 1344, 1345 |  | Sector-44 Noida(2) | 9382644 |
| 1347 | 36900.37000.42400.42800.43100.44600.52700.674800 | IPS flooring work | 13d | 2027-06-05 | 2027-06-17 | 1341 |  | Sector-44 Noida(2) | 9382654 |
| 1348 | 36900.37000.42400.42800.43100.44600.52700.674900 | Toilet dado work | 12d | 2027-07-08 | 2027-07-19 | 1344, 1345, 1346 |  | Sector-44 Noida(2) | 9382664 |
| 1349 | 36900.37000.42400.42800.43100.44600.52700.675000 | Toilet flooring work | 12d | 2027-07-20 | 2027-07-31 | 1348 |  | Sector-44 Noida(2) | 9382674 |
| 1350 | 36900.37000.42400.42800.43100.44600.52700.675100 | Living dinning flooring | 18d | 2027-08-01 | 2027-08-18 | 1347, 1349 |  | Sector-44 Noida(2) | 9382684 |
| 1351 | 36900.37000.42400.42800.43100.44600.52700.675200 | Electrical wiring work | 12d | 2027-08-09 | 2027-08-20 | 1350FS-10d |  | Sector-44 Noida(2) | 9382694 |
| 1352 | 36900.37000.42400.42800.43100.44600.52700.675300 | Aluminium door-window fixing | 8d | 2027-08-13 | 2027-08-20 | 1342, 1351FS-8d |  | Sector-44 Noida(2) | 9382704 |
| 1353 | 36900.37000.42400.42800.43100.44600.52700.675400 | Putty primer coat | 12d | 2027-08-13 | 2027-08-24 | 1352FS-8d |  | Sector-44 Noida(2) | 9382714 |
| 1354 | 36900.37000.42400.42800.43100.44600.52700.675500 | Prehung door fixing | 10d | 2027-08-20 | 2027-08-29 | 1353FS-5d |  | Sector-44 Noida(2) | 9382724 |
| 1355 | 36900.37000.42400.42800.43100.44600.52700.675600 | Painting 1st coat | 13d | 2027-08-30 | 2027-09-11 | 1354 |  | Sector-44 Noida(2) | 9382734 |
| 1356 | 36900.37000.42400.42800.43100.44600.52700.675700 | False Ceiling panel fixing | 10d | 2027-09-12 | 2027-09-21 | 1339, 1355 |  | Sector-44 Noida(2) | 9382744 |
| 1357 | 36900.37000.42400.42800.43100.44600.52800 | **20th Floor** | 124d | 2027-06-01 | 2027-10-02 |  | start no earlier than 2027-06-01 | Sector-44 Noida(2) | 9361764 |
| 1358 | 36900.37000.42400.42800.43100.44600.52800.675800 | Block Work | 15d | 2027-06-01 | 2027-06-15 | 1026FS+80d |  | Sector-44 Noida(2) | 9382754 |
| 1359 | 36900.37000.42400.42800.43100.44600.52800.675900 | Installation of temporary Main door | 5d | 2027-06-16 | 2027-06-20 | 1358 |  | Sector-44 Noida(2) | 9382764 |
| 1360 | 36900.37000.42400.42800.43100.44600.52800.676000 | Fire sprinkler pipe fixing | 5d | 2027-06-16 | 2027-06-20 | 1343, 1358 |  | Sector-44 Noida(2) | 9382774 |
| 1361 | 36900.37000.42400.42800.43100.44600.52800.676100 | Internal Plumbing Works | 9d | 2027-06-16 | 2027-06-24 | 1358 |  | Sector-44 Noida(2) | 9382784 |
| 1362 | 36900.37000.42400.42800.43100.44600.52800.676200 | Waterproofing | 10d | 2027-06-25 | 2027-07-04 | 1361 |  | Sector-44 Noida(2) | 9382794 |
| 1363 | 36900.37000.42400.42800.43100.44600.52800.676300 | Internal Plaster | 14d | 2027-07-05 | 2027-07-18 | 1361, 1362 |  | Sector-44 Noida(2) | 9382804 |
| 1364 | 36900.37000.42400.42800.43100.44600.52800.676400 | IPS flooring work | 13d | 2027-06-16 | 2027-06-28 | 1358 |  | Sector-44 Noida(2) | 9382814 |
| 1365 | 36900.37000.42400.42800.43100.44600.52800.676500 | Toilet dado work | 12d | 2027-07-19 | 2027-07-30 | 1361, 1362, 1363 |  | Sector-44 Noida(2) | 9382824 |
| 1366 | 36900.37000.42400.42800.43100.44600.52800.676600 | Toilet flooring work | 12d | 2027-07-31 | 2027-08-11 | 1365 |  | Sector-44 Noida(2) | 9382834 |
| 1367 | 36900.37000.42400.42800.43100.44600.52800.676700 | Living dinning flooring | 18d | 2027-08-12 | 2027-08-29 | 1364, 1366 |  | Sector-44 Noida(2) | 9382844 |
| 1368 | 36900.37000.42400.42800.43100.44600.52800.676800 | Electrical wiring work | 12d | 2027-08-20 | 2027-08-31 | 1367FS-10d |  | Sector-44 Noida(2) | 9382854 |
| 1369 | 36900.37000.42400.42800.43100.44600.52800.676900 | Aluminium door-window fixing | 8d | 2027-08-24 | 2027-08-31 | 1359, 1368FS-8d |  | Sector-44 Noida(2) | 9382864 |
| 1370 | 36900.37000.42400.42800.43100.44600.52800.677000 | Putty primer coat | 12d | 2027-08-24 | 2027-09-04 | 1369FS-8d |  | Sector-44 Noida(2) | 9382874 |
| 1371 | 36900.37000.42400.42800.43100.44600.52800.677100 | Prehung door fixing | 10d | 2027-08-31 | 2027-09-09 | 1370FS-5d |  | Sector-44 Noida(2) | 9382884 |
| 1372 | 36900.37000.42400.42800.43100.44600.52800.677200 | Painting 1st coat | 13d | 2027-09-10 | 2027-09-22 | 1371 |  | Sector-44 Noida(2) | 9382894 |
| 1373 | 36900.37000.42400.42800.43100.44600.52800.677300 | False Ceiling panel fixing | 10d | 2027-09-23 | 2027-10-02 | 1356, 1372 |  | Sector-44 Noida(2) | 9382904 |

| ID | WBS | Task | Duration | Start | Finish | Predecessors | Constraint | Calendar | Unique_Task_ID |
| --- | --- | --- | --- | --- | --- | --- | --- | --- | --- |
| 1374 | 36900.37000.42400.42800.43100.44600.52900 | **21st Floor** | 127d | 2027-06-08 | 2027-10-12 |  | start no earlier than 2027-06-08 | Sector-44 Noida(2) | 9361744 |
| 1375 | 36900.37000.42400.42800.43100.44600.52900.677400 | Block Work | 15d | 2027-06-08 | 2027-06-22 | 1027FS+80d |  | Sector-44 Noida(2) | 9382914 |
| 1376 | 36900.37000.42400.42800.43100.44600.52900.677500 | Installation of temporary Main door | 5d | 2027-06-23 | 2027-06-27 | 1375 |  | Sector-44 Noida(2) | 9382924 |
| 1377 | 36900.37000.42400.42800.43100.44600.52900.677600 | Fire sprinkler pipe fixing | 5d | 2027-06-23 | 2027-06-27 | 1360, 1375 |  | Sector-44 Noida(2) | 9382934 |
| 1378 | 36900.37000.42400.42800.43100.44600.52900.677700 | Internal Plumbing Works | 9d | 2027-06-23 | 2027-07-01 | 1375 |  | Sector-44 Noida(2) | 9382944 |
| 1379 | 36900.37000.42400.42800.43100.44600.52900.677800 | Waterproofing | 10d | 2027-07-02 | 2027-07-11 | 1378 |  | Sector-44 Noida(2) | 9382954 |
| 1380 | 36900.37000.42400.42800.43100.44600.52900.677900 | Internal Plaster | 14d | 2027-07-12 | 2027-07-25 | 1378, 1379 |  | Sector-44 Noida(2) | 9382964 |
| 1381 | 36900.37000.42400.42800.43100.44600.52900.678000 | IPS flooring work | 13d | 2027-06-23 | 2027-07-05 | 1375 |  | Sector-44 Noida(2) | 9382974 |
| 1382 | 36900.37000.42400.42800.43100.44600.52900.678100 | Toilet dado work | 12d | 2027-07-26 | 2027-08-06 | 1378, 1379, 1380 |  | Sector-44 Noida(2) | 9382984 |
| 1383 | 36900.37000.42400.42800.43100.44600.52900.678200 | Toilet flooring work | 12d | 2027-08-07 | 2027-08-18 | 1382 |  | Sector-44 Noida(2) | 9382994 |
| 1384 | 36900.37000.42400.42800.43100.44600.52900.678300 | Living dinning flooring | 18d | 2027-08-19 | 2027-09-05 | 1381, 1383 |  | Sector-44 Noida(2) | 9383004 |
| 1385 | 36900.37000.42400.42800.43100.44600.52900.678400 | Electrical wiring work | 12d | 2027-08-27 | 2027-09-07 | 1384FS-10d |  | Sector-44 Noida(2) | 9383014 |
| 1386 | 36900.37000.42400.42800.43100.44600.52900.678500 | Aluminium door-window fixing | 8d | 2027-08-31 | 2027-09-07 | 1376, 1385FS-8d |  | Sector-44 Noida(2) | 9383024 |
| 1387 | 36900.37000.42400.42800.43100.44600.52900.678600 | Putty primer coat | 12d | 2027-08-31 | 2027-09-11 | 1386FS-8d |  | Sector-44 Noida(2) | 9383034 |
| 1388 | 36900.37000.42400.42800.43100.44600.52900.678700 | Prehung door fixing | 10d | 2027-09-07 | 2027-09-16 | 1387FS-5d |  | Sector-44 Noida(2) | 9383044 |
| 1389 | 36900.37000.42400.42800.43100.44600.52900.678800 | Painting 1st coat | 13d | 2027-09-17 | 2027-09-29 | 1388 |  | Sector-44 Noida(2) | 9383054 |
| 1390 | 36900.37000.42400.42800.43100.44600.52900.678900 | False Ceiling panel fixing | 10d | 2027-10-03 | 2027-10-12 | 1373, 1389 |  | Sector-44 Noida(2) | 9383064 |
| 1391 | 36900.37000.42400.42800.43100.44600.53000 | **22nd Floor** | 130d | 2027-06-15 | 2027-10-22 |  | start no earlier than 2027-06-15 | Sector-44 Noida(2) | 9361734 |
| 1392 | 36900.37000.42400.42800.43100.44600.53000.679000 | Block Work | 15d | 2027-06-15 | 2027-06-29 | 1028FS+80d |  | Sector-44 Noida(2) | 9383074 |
| 1393 | 36900.37000.42400.42800.43100.44600.53000.679100 | Installation of temporary Main door | 5d | 2027-06-30 | 2027-07-04 | 1392 |  | Sector-44 Noida(2) | 9383084 |
| 1394 | 36900.37000.42400.42800.43100.44600.53000.679200 | Fire sprinkler pipe fixing | 5d | 2027-06-30 | 2027-07-04 | 1377, 1392 |  | Sector-44 Noida(2) | 9383094 |
| 1395 | 36900.37000.42400.42800.43100.44600.53000.679300 | Internal Plumbing Works | 9d | 2027-06-30 | 2027-07-08 | 1392 |  | Sector-44 Noida(2) | 9383104 |
| 1396 | 36900.37000.42400.42800.43100.44600.53000.679400 | Waterproofing | 10d | 2027-07-09 | 2027-07-18 | 1395 |  | Sector-44 Noida(2) | 9383114 |
| 1397 | 36900.37000.42400.42800.43100.44600.53000.679500 | Internal Plaster | 14d | 2027-07-19 | 2027-08-01 | 1395, 1396 |  | Sector-44 Noida(2) | 9383124 |
| 1398 | 36900.37000.42400.42800.43100.44600.53000.679600 | IPS flooring work | 13d | 2027-06-30 | 2027-07-12 | 1392 |  | Sector-44 Noida(2) | 9383134 |
| 1399 | 36900.37000.42400.42800.43100.44600.53000.679700 | Toilet dado work | 12d | 2027-08-02 | 2027-08-13 | 1395, 1396, 1397 |  | Sector-44 Noida(2) | 9383144 |
| 1400 | 36900.37000.42400.42800.43100.44600.53000.679800 | Toilet flooring work | 12d | 2027-08-14 | 2027-08-25 | 1399 |  | Sector-44 Noida(2) | 9383154 |
| 1401 | 36900.37000.42400.42800.43100.44600.53000.679900 | Living dinning flooring | 18d | 2027-08-26 | 2027-09-12 | 1398, 1400 |  | Sector-44 Noida(2) | 9383164 |
| 1402 | 36900.37000.42400.42800.43100.44600.53000.680000 | Electrical wiring work | 12d | 2027-09-03 | 2027-09-14 | 1401FS-10d |  | Sector-44 Noida(2) | 9383174 |
| 1403 | 36900.37000.42400.42800.43100.44600.53000.680100 | Aluminium door-window fixing | 8d | 2027-09-07 | 2027-09-14 | 1393, 1402FS-8d |  | Sector-44 Noida(2) | 9383184 |
| 1404 | 36900.37000.42400.42800.43100.44600.53000.680200 | Putty primer coat | 12d | 2027-09-07 | 2027-09-18 | 1403FS-8d |  | Sector-44 Noida(2) | 9383194 |
| 1405 | 36900.37000.42400.42800.43100.44600.53000.680300 | Prehung door fixing | 10d | 2027-09-14 | 2027-09-23 | 1404FS-5d |  | Sector-44 Noida(2) | 9383204 |
| 1406 | 36900.37000.42400.42800.43100.44600.53000.680400 | Painting 1st coat | 13d | 2027-09-24 | 2027-10-06 | 1405 |  | Sector-44 Noida(2) | 9383214 |
| 1407 | 36900.37000.42400.42800.43100.44600.53000.680500 | False Ceiling panel fixing | 10d | 2027-10-13 | 2027-10-22 | 1390, 1406 |  | Sector-44 Noida(2) | 9383224 |

| ID | WBS | Task | Duration | Start | Finish | Predecessors | Constraint | Calendar | Unique_Task_ID |
| --- | --- | --- | --- | --- | --- | --- | --- | --- | --- |
| 1408 | 36900.37000.42400.42800.43100.44600.53100 | **23rd Floor** | 133d | 2027-06-22 | 2027-12-16 |  | start no earlier than 2027-06-22 | Sector-44 Noida(2) | 9361714 |
| 1409 | 36900.37000.42400.42800.43100.44600.53100.680600 | Block Work | 15d | 2027-06-22 | 2027-07-06 | 1029FS+80d |  | Sector-44 Noida(2) | 9383234 |
| 1410 | 36900.37000.42400.42800.43100.44600.53100.680700 | Installation of temporary Main door | 5d | 2027-07-07 | 2027-07-11 | 1409 |  | Sector-44 Noida(2) | 9383244 |
| 1411 | 36900.37000.42400.42800.43100.44600.53100.680800 | Fire sprinkler pipe fixing | 5d | 2027-07-07 | 2027-07-11 | 1394, 1409 |  | Sector-44 Noida(2) | 9383254 |
| 1412 | 36900.37000.42400.42800.43100.44600.53100.680900 | Internal Plumbing Works | 9d | 2027-07-07 | 2027-07-15 | 1409 |  | Sector-44 Noida(2) | 9383264 |
| 1413 | 36900.37000.42400.42800.43100.44600.53100.681000 | Waterproofing | 10d | 2027-07-16 | 2027-07-25 | 1412 |  | Sector-44 Noida(2) | 9383274 |
| 1414 | 36900.37000.42400.42800.43100.44600.53100.681100 | Internal Plaster | 14d | 2027-07-26 | 2027-08-08 | 1412, 1413 |  | Sector-44 Noida(2) | 9383284 |
| 1415 | 36900.37000.42400.42800.43100.44600.53100.681200 | IPS flooring work | 13d | 2027-07-07 | 2027-07-19 | 1409 |  | Sector-44 Noida(2) | 9383294 |
| 1416 | 36900.37000.42400.42800.43100.44600.53100.681300 | Toilet dado work | 12d | 2027-08-09 | 2027-08-20 | 1412, 1413, 1414 |  | Sector-44 Noida(2) | 9383304 |
| 1417 | 36900.37000.42400.42800.43100.44600.53100.681400 | Toilet flooring work | 12d | 2027-08-21 | 2027-09-01 | 1416 |  | Sector-44 Noida(2) | 9383314 |
| 1418 | 36900.37000.42400.42800.43100.44600.53100.681500 | Living dinning flooring | 18d | 2027-09-02 | 2027-09-19 | 1415, 1417 |  | Sector-44 Noida(2) | 9383324 |
| 1419 | 36900.37000.42400.42800.43100.44600.53100.681600 | Electrical wiring work | 12d | 2027-09-10 | 2027-09-21 | 1418FS-10d |  | Sector-44 Noida(2) | 9383334 |
| 1420 | 36900.37000.42400.42800.43100.44600.53100.681700 | Aluminium door-window fixing | 8d | 2027-09-14 | 2027-09-21 | 1410, 1419FS-8d |  | Sector-44 Noida(2) | 9383344 |
| 1421 | 36900.37000.42400.42800.43100.44600.53100.681800 | Putty primer coat | 12d | 2027-09-14 | 2027-09-25 | 1420FS-8d |  | Sector-44 Noida(2) | 9383354 |
| 1422 | 36900.37000.42400.42800.43100.44600.53100.681900 | Prehung door fixing | 10d | 2027-09-21 | 2027-09-30 | 1421FS-5d |  | Sector-44 Noida(2) | 9383364 |
| 1423 | 36900.37000.42400.42800.43100.44600.53100.682000 | Painting 1st coat | 13d | 2027-10-01 | 2027-10-13 | 1422 |  | Sector-44 Noida(2) | 9383374 |
| 1424 | 36900.37000.42400.42800.43100.44600.53100.682100 | False Ceiling panel fixing | 10d | 2027-10-23 | 2027-12-16 | 1407, 1423 |  | Sector-44 Noida(2) | 9383384 |
| 1425 | 36900.37000.42400.42800.43100.190400 | **Terrace finishing** | 70d | 2027-06-09 | 2027-08-17 |  | start no earlier than 2027-06-09 | Sector-44 Noida(2) | 9366164 |
| 1426 | 36900.37000.42400.42800.43100.190400.378600 | Terrace waterproofing | 30d | 2027-06-09 | 2027-07-08 | 1501FS+10d |  | Sector-44 Noida(2) | 9370564 |
| 1427 | 36900.37000.42400.42800.43100.190400.378700 | Terrace Finishing | 40d | 2027-07-09 | 2027-08-17 | 1426 |  | Sector-44 Noida(2) | 9370574 |
| 1428 | 36900.37000.42400.42800.43100.96400 | **Common area finishing** | 190d | 2027-03-31 | 2027-10-06 |  | start no earlier than 2027-03-31 | Sector-44 Noida(2) | 9362184 |
| 1429 | 36900.37000.42400.42800.43100.96400.378800 | Masonary Work | 40d | 2027-03-31 | 2027-05-09 | 988 |  | Sector-44 Noida(2) | 9370584 |
| 1430 | 36900.37000.42400.42800.43100.96400.378900 | Fire sprinkler pipe fixing | 40d | 2027-04-05 | 2027-05-14 | 988FS+5d |  | Sector-44 Noida(2) | 9370594 |
| 1431 | 36900.37000.42400.42800.43100.96400.379000 | Corridoor, staircase, shaft Plaster & whitewash | 80d | 2027-04-10 | 2027-06-28 | 1429FS-30d |  | Sector-44 Noida(2) | 9370604 |
| 1432 | 36900.37000.42400.42800.43100.96400.379100 | Staircase railing fixing | 80d | 2027-04-20 | 2027-07-08 | 1429FS-20d |  | Sector-44 Noida(2) | 9370614 |
| 1433 | 36900.37000.42400.42800.43100.96400.379200 | Fire staircase flooring | 100d | 2027-04-10 | 2027-07-18 | 1432FS-90d |  | Sector-44 Noida(2) | 9370624 |
| 1434 | 36900.37000.42400.42800.43100.96400.379300 | Main staircase flooring | 100d | 2027-04-10 | 2027-07-18 | 1432FS-90d |  | Sector-44 Noida(2) | 9370634 |
| 1435 | 36900.37000.42400.42800.43100.96400.379400 | Fire door work | 120d | 2027-05-20 | 2027-09-16 | 1433FS-60d |  | Sector-44 Noida(2) | 9370644 |
| 1436 | 36900.37000.42400.42800.43100.96400.379500 | Lobby flooring & Corridor | 170d | 2027-04-20 | 2027-10-06 | 1434FS-90d |  | Sector-44 Noida(2) | 9370654 |
| 1437 | 36900.37000.42400.42800.43100.96400.379600 | Ceiling & wall putty-primer | 80d | 2027-07-09 | 2027-09-26 | 1436FS-90d |  | Sector-44 Noida(2) | 9370664 |
| 1438 | 36900.37000.42400.42800.43100.96400.379700 | Ceiling & wall painting | 75d | 2027-06-19 | 2027-09-01 | 1437FS-100d |  | Sector-44 Noida(2) | 9370674 |
| 1439 | 36900.37000.42400.42800.43100.96400.379800 | Electrical wiring work | 70d | 2027-05-25 | 2027-08-02 | 1438FS-100d |  | Sector-44 Noida(2) | 9370684 |
| 1440 | 36900.37000.42400.42800.43100.96400.379900 | Light fixture supply & installation | 30d | 2027-06-19 | 2027-07-18 | 1439FS-45d |  | Sector-44 Noida(2) | 9370694 |
| 1441 | 36900.37000.42400.42800.43100.96400.380000 | Installation of fire signages including Basements | 20d | 2027-09-02 | 2027-09-21 | 1438 |  | Sector-44 Noida(2) | 9370704 |

| ID | WBS | Task | Duration | Start | Finish | Predecessors | Constraint | Calendar | Unique_Task_ID |
| --- | --- | --- | --- | --- | --- | --- | --- | --- | --- |
| 1442 | 36900.37000.42400.42800.43100.48000 | **Balcony Glass Railing** | 161d | 2027-01-13 | 2027-06-22 |  | start no earlier than 2027-01-13 | Sector-44 Noida(2) | 9360914 |
| 1443 | 36900.37000.42400.42800.43100.48000.380100 | 1st Floor | 7d | 2027-01-13 | 2027-01-19 | 1035FS+40d |  | Sector-44 Noida(2) | 9370714 |
| 1444 | 36900.37000.42400.42800.43100.48000.380200 | 2nd Floor | 7d | 2027-01-20 | 2027-01-26 | 1443 |  | Sector-44 Noida(2) | 9370724 |
| 1445 | 36900.37000.42400.42800.43100.48000.380300 | 3rd Floor | 7d | 2027-01-27 | 2027-02-02 | 1444 |  | Sector-44 Noida(2) | 9370734 |
| 1446 | 36900.37000.42400.42800.43100.48000.380400 | 4th Floor | 7d | 2027-02-03 | 2027-02-09 | 1445 |  | Sector-44 Noida(2) | 9370744 |
| 1447 | 36900.37000.42400.42800.43100.48000.380500 | 5th Floor | 7d | 2027-02-10 | 2027-02-16 | 1446 |  | Sector-44 Noida(2) | 9370754 |
| 1448 | 36900.37000.42400.42800.43100.48000.380600 | 6th Floor | 7d | 2027-02-17 | 2027-02-23 | 1447 |  | Sector-44 Noida(2) | 9370764 |
| 1449 | 36900.37000.42400.42800.43100.48000.380700 | 7th Floor | 7d | 2027-02-24 | 2027-03-02 | 1448 |  | Sector-44 Noida(2) | 9370774 |
| 1450 | 36900.37000.42400.42800.43100.48000.380800 | 8th Floor | 7d | 2027-03-03 | 2027-03-09 | 1449 |  | Sector-44 Noida(2) | 9370784 |
| 1451 | 36900.37000.42400.42800.43100.48000.380900 | 9th Floor | 7d | 2027-03-10 | 2027-03-16 | 1450 |  | Sector-44 Noida(2) | 9370794 |
| 1452 | 36900.37000.42400.42800.43100.48000.381000 | 10th Floor | 7d | 2027-03-17 | 2027-03-23 | 1451 |  | Sector-44 Noida(2) | 9370804 |
| 1453 | 36900.37000.42400.42800.43100.48000.381100 | 11th Floor | 7d | 2027-03-24 | 2027-03-30 | 1452 |  | Sector-44 Noida(2) | 9370814 |
| 1454 | 36900.37000.42400.42800.43100.48000.381200 | 12th Floor | 7d | 2027-03-31 | 2027-04-06 | 1453 |  | Sector-44 Noida(2) | 9370824 |
| 1455 | 36900.37000.42400.42800.43100.48000.381300 | 13th Floor | 7d | 2027-04-07 | 2027-04-13 | 1454 |  | Sector-44 Noida(2) | 9370834 |
| 1456 | 36900.37000.42400.42800.43100.48000.381400 | 14th Floor | 7d | 2027-04-14 | 2027-04-20 | 1455 |  | Sector-44 Noida(2) | 9370844 |
| 1457 | 36900.37000.42400.42800.43100.48000.381500 | 15th Floor | 7d | 2027-04-21 | 2027-04-27 | 1456 |  | Sector-44 Noida(2) | 9370854 |
| 1458 | 36900.37000.42400.42800.43100.48000.381600 | 16th Floor | 7d | 2027-04-28 | 2027-05-04 | 1457 |  | Sector-44 Noida(2) | 9370864 |
| 1459 | 36900.37000.42400.42800.43100.48000.381700 | 17th Floor | 7d | 2027-05-05 | 2027-05-11 | 1458 |  | Sector-44 Noida(2) | 9370874 |
| 1460 | 36900.37000.42400.42800.43100.48000.381800 | 18th Floor | 7d | 2027-05-12 | 2027-05-18 | 1459 |  | Sector-44 Noida(2) | 9370884 |
| 1461 | 36900.37000.42400.42800.43100.48000.381900 | 19th Floor | 7d | 2027-05-19 | 2027-05-25 | 1460 |  | Sector-44 Noida(2) | 9370894 |
| 1462 | 36900.37000.42400.42800.43100.48000.382000 | 20th Floor | 7d | 2027-05-26 | 2027-06-01 | 1461 |  | Sector-44 Noida(2) | 9370904 |
| 1463 | 36900.37000.42400.42800.43100.48000.382100 | 21st Floor | 7d | 2027-06-02 | 2027-06-08 | 1462 |  | Sector-44 Noida(2) | 9370914 |
| 1464 | 36900.37000.42400.42800.43100.48000.382200 | 22nd Floor | 7d | 2027-06-09 | 2027-06-15 | 1463 |  | Sector-44 Noida(2) | 9370924 |
| 1465 | 36900.37000.42400.42800.43100.48000.382300 | 23rd Floor | 7d | 2027-06-16 | 2027-06-22 | 1464 |  | Sector-44 Noida(2) | 9370934 |

| ID | WBS | Task | Duration | Start | Finish | Predecessors | Constraint | Calendar | Unique_Task_ID |
| --- | --- | --- | --- | --- | --- | --- | --- | --- | --- |
| 1466 | 36900.37000.42400.42800.96500 | **MEP Work** | 263d | 2027-03-11 | 2028-01-12 |  | start no earlier than 2027-03-11 | Sector-44 Noida(2) | 9362124 |
| 1467 | 36900.37000.42400.42800.96500.100100 | **Electrical Work** | 145d | 2027-03-11 | 2027-08-02 |  | start no earlier than 2027-03-11 | Sector-44 Noida(2) | 9362314 |
| 1468 | 36900.37000.42400.42800.96500.100100.382400 | Cable Tray | 30d | 2027-05-10 | 2027-06-08 | 1005 |  | Sector-44 Noida(2) | 9370944 |
| 1469 | 36900.37000.42400.42800.96500.100100.382500 | Cable, main & sub main | 30d | 2027-03-11 | 2027-04-09 | 1468FS-90d |  | Sector-44 Noida(2) | 9370954 |
| 1470 | 36900.37000.42400.42800.96500.100100.382600 | LT panel & DB | 40d | 2027-04-10 | 2027-05-19 | 1468FS-60d |  | Sector-44 Noida(2) | 9370964 |
| 1471 | 36900.37000.42400.42800.96500.100100.382700 | Earthing Works | 15d | 2027-06-09 | 2027-06-23 | 1468 |  | Sector-44 Noida(2) | 9370974 |
| 1472 | 36900.37000.42400.42800.96500.100100.382800 | Advanced Lightening Protection system | 15d | 2027-05-30 | 2027-06-13 | 1471FS-25d |  | Sector-44 Noida(2) | 9370984 |
| 1473 | 36900.37000.42400.42800.96500.100100.382900 | Energy meter | 15d | 2027-04-10 | 2027-04-24 | 1469 |  | Sector-44 Noida(2) | 9370994 |
| 1474 | 36900.37000.42400.42800.96500.100100.383000 | Inverter / UPS | 10d | 2027-05-20 | 2027-05-29 | 1469, 1470, 1473FS-5d |  | Sector-44 Noida(2) | 9371004 |
| 1475 | 36900.37000.42400.42800.96500.100100.383100 | HVAC & Exhaust fan | 30d | 2027-05-10 | 2027-06-08 | 1468FS-30d |  | Sector-44 Noida(2) | 9371014 |
| 1476 | 36900.37000.42400.42800.96500.100100.383200 | FTTH | 10d | 2027-04-25 | 2027-05-04 | 1470FS-25d |  | Sector-44 Noida(2) | 9371024 |
| 1477 | 36900.37000.42400.42800.96500.100100.383300 | Security System - FA & PA | 10d | 2027-04-25 | 2027-05-04 | 1470FS-25d |  | Sector-44 Noida(2) | 9371034 |
| 1478 | 36900.37000.42400.42800.96500.100100.383400 | T&C of complete system | 15d | 2027-07-19 | 2027-08-02 | 1440, 1470, 1472, 1473, 1474, 1475, 1476, 1477 |  | Sector-44 Noida(2) | 9371044 |
| 1479 | 36900.37000.42400.42800.96500.105400 | **Plumbing work** | 115d | 2027-04-10 | 2027-08-02 |  | start no earlier than 2027-04-10 | Sector-44 Noida(2) | 9362574 |
| 1480 | 36900.37000.42400.42800.96500.105400.383500 | Terrace looping | 20d | 2027-04-10 | 2027-04-29 | 1030 |  | Sector-44 Noida(2) | 9371054 |
| 1481 | 36900.37000.42400.42800.96500.105400.383600 | Shaft Plumbing | 30d | 2027-05-30 | 2027-06-28 | 1431FS-30d, 1480 |  | Sector-44 Noida(2) | 9371064 |
| 1482 | 36900.37000.42400.42800.96500.105400.383700 | CP sanitary fixture supply | 20d | 2027-06-29 | 2027-07-18 | 1481 |  | Sector-44 Noida(2) | 9371074 |
| 1483 | 36900.37000.42400.42800.96500.105400.383800 | Cold & flushing water supply | 20d | 2027-06-29 | 2027-07-18 | 1481 |  | Sector-44 Noida(2) | 9371084 |
| 1484 | 36900.37000.42400.42800.96500.105400.383900 | Misc work | 15d | 2027-07-04 | 2027-07-18 | 1483FS-15d |  | Sector-44 Noida(2) | 9371094 |
| 1485 | 36900.37000.42400.42800.96500.105400.384000 | Installation of PHE pumps | 25d | 2027-04-30 | 2027-05-24 | 1480 |  | Sector-44 Noida(2) | 9371104 |
| 1486 | 36900.37000.42400.42800.96500.105400.384100 | T&C of complete system | 15d | 2027-07-19 | 2027-08-02 | 3428, 3430, 1480, 1481, 1483, 1484, 1485 |  | Sector-44 Noida(2) | 9371114 |
| 1487 | 36900.37000.42400.42800.96500.115200 | **Fire fighting work** | 183d | 2027-05-30 | 2028-01-12 |  | start no earlier than 2027-05-30 | Sector-44 Noida(2) | 9363234 |
| 1488 | 36900.37000.42400.42800.96500.115200.384200 | Fire hydrant work | 25d | 2027-05-30 | 2027-06-23 | 1431FS-30d |  | Sector-44 Noida(2) | 9371124 |
| 1489 | 36900.37000.42400.42800.96500.115200.384300 | Pipe connection & sprinkler installation | 15d | 2027-06-24 | 2027-07-08 | 1488 |  | Sector-44 Noida(2) | 9371134 |
| 1490 | 36900.37000.42400.42800.96500.115200.384400 | Shaft Downtake works | 25d | 2027-05-30 | 2027-06-23 | 1030, 1431FS-30d |  | Sector-44 Noida(2) | 9371144 |
| 1491 | 36900.37000.42400.42800.96500.115200.384500 | Connection to pump room | 10d | 2027-06-24 | 2027-07-03 | 1490 |  | Sector-44 Noida(2) | 9371154 |
| 1492 | 36900.37000.42400.42800.96500.115200.384600 | Installation of FF pumps | 15d | 2027-06-24 | 2027-07-08 | 1488, 1490 |  | Sector-44 Noida(2) | 9371164 |
| 1493 | 36900.37000.42400.42800.96500.115200.384700 | T&C of complete system | 73d | 2027-09-17 | 2028-01-12 | 3431, 1430, 1435, 1441FS-21d, 1489, 1491, 1492, 1411 |  | Sector-44 Noida(2) | 9371174 |

| ID | WBS | Task | Duration | Start | Finish | Predecessors | Complete | Constraint | Calendar | Unique_Task_ID |
| --- | --- | --- | --- | --- | --- | --- | --- | --- | --- | --- |
| 1494 | 36900.37000.42400.42800.96500.189900 | **Lift work** | 87d | 2027-04-20 | 2027-07-15 |  |  | start no earlier than 2027-04-20 | Sector-44 Noida(2) | 9365934 |
| 1495 | 36900.37000.42400.42800.96500.189900.384800 | Lift Shaft/Pit Handover | 12d | 2027-04-20 | 2027-05-01 | 1031 |  |  | Sector-44 Noida(2) | 9371184 |
| 1496 | 36900.37000.42400.42800.96500.189900.384900 | Lift installation work | 55d | 2027-05-02 | 2027-06-25 | 1495 |  |  | Sector-44 Noida(2) | 9371194 |
| 1497 | 36900.37000.42400.42800.96500.189900.385000 | Lift testing and commissioning | 20d | 2027-06-26 | 2027-07-15 | 1496 |  |  | Sector-44 Noida(2) | 9371204 |
| 1498 | 36900.37000.42400.42800.185300 | **External Paint Works** | 80d | 2027-04-10 | 2027-06-28 |  |  | start no earlier than 2027-04-10 | Sector-44 Noida(2) | 9364284 |
| 1499 | 36900.37000.42400.42800.185300.283500 | Surface prepration | 30d | 2027-04-10 | 2027-05-09 | 1030 |  |  | Sector-44 Noida(2) | 9367324 |
| 1500 | 36900.37000.42400.42800.185300.283600 | External Painting (Primer, texture & first coat) | 50d | 2027-05-10 | 2027-06-28 | 1499 |  |  | Sector-44 Noida(2) | 9367334 |
| 1501 | 36900.37000.42400.42800.185300.283700 | Final coat of painting | 40d | 2027-04-20 | 2027-05-29 | 1500FS-70d |  |  | Sector-44 Noida(2) | 9367344 |
| 1502 | 36900.37000.42400.42800.185300.283800 | Misc. work | 20d | 2027-05-10 | 2027-05-29 | 1499 |  |  | Sector-44 Noida(2) | 9367354 |
| 1503 | 36900.37000.42400.42800.259700 | OC Application/Readiness | 1d | 2028-01-13 | 2028-01-13 | 1478, 1486, 1493, 1497, 1427, 1465, 1424, 1433, 1434, 1436 |  |  | Sector-44 Noida(2) | 9366224 |
| 1504 | 36900.37000.42400.42800.259800 | OC Receipt | 60d | 2028-01-14 | 2028-03-13 | 1503, 820, 821, 830, 831 |  |  | Sector-44 Noida(2) | 9366234 |
| 1505 | 36900.37000.42400.42800.130300 | **Post OC Activities** | 140d | 2028-01-24 | 2028-06-11 |  |  | start no earlier than 2028-01-24 | Sector-44 Noida(2) | 9364214 |
| 1506 | 36900.37000.42400.42800.130300.283900 | CP & Sanitaryware installation | 120d | 2028-02-13 | 2028-06-11 | 1504FS-30d, 1482 |  |  | Sector-44 Noida(2) | 9367364 |
| 1507 | 36900.37000.42400.42800.130300.284000 | Electrical Fixtures And Fittings installations | 120d | 2028-02-13 | 2028-06-11 | 1504FS-30d |  |  | Sector-44 Noida(2) | 9367374 |
| 1508 | 36900.37000.42400.42800.130300.284100 | Final Coat Paint Internal | 40d | 2028-02-13 | 2028-03-23 | 1504FS-30d |  |  | Sector-44 Noida(2) | 9367384 |
| 1509 | 36900.37000.42400.42800.130300.284200 | VRV Highwall (HVAC) installation | 60d | 2028-01-24 | 2028-03-23 | 1508FS-60d |  |  | Sector-44 Noida(2) | 9367394 |
| 1510 | 36900.37000.42400.42800.130300.284300 | Wooden Flooring | 100d | 2028-02-13 | 2028-05-22 | 1504FS-30d |  |  | Sector-44 Noida(2) | 9367404 |
| 1511 | 36900.37000.42400.42800.259900 | Offer to possession | 90d | 2028-07-12 | 2028-10-09 | 1504FS+120d, 1502, 1506, 1507, 1509, 1510 |  |  | Sector-44 Noida(2) | 9366244 |
| 1512 | 36900.37000.42500 | **Tower-3 (2B+S+P+23)** | 1233d | 2025-01-18 | 2028-10-16 |  | 6% | start no earlier than 2025-01-18 | Sector-44 Noida(2) | 9360674 |
| 1513 | 36900.37000.42500.105800 | **Soldier Piling & Excavation work** | 142d | 2025-01-18 | 2025-06-08 |  | 100% | start no earlier than 2025-01-18 | Sector-44 Noida(2) | 9362644 |
| 1514 | 36900.37000.42500.105800.185700 | **Till 2.5 Mtr** | 72d | 2025-01-18 | 2025-03-30 |  | 100% | start no earlier than 2025-01-18 | Sector-44 Noida(2) | 9365674 |
| 1515 | 36900.37000.42500.105800.185700.232800 | H beam pile driving - 12m | 40d | 2025-01-18 | 2025-03-02 | 782SS+10d | 100% | start no earlier than 2025-01-18 | Sector-44 Noida(2) | 9367414 |
| 1516 | 36900.37000.42500.105800.185700.232600 | Excavation from NGL to 2.5m | 34d | 2025-01-18 | 2025-03-11 | 1515FS-40d | 100% | start no earlier than 2025-01-18 | Sector-44 Noida(2) | 9367424 |
| 1517 | 36900.37000.42500.105800.185700.232500 | Plank installation & anchoring till 2.5m | 25d | 2025-02-20 | 2025-03-30 | 1516FS-37d | 100% | start no earlier than 2025-02-20 | Sector-44 Noida(2) | 9367434 |

| ID | WBS | Task | Duration | Start | Finish | Predecessors | Complete | Constraint | Calendar | Unique_Task_ID |
| --- | --- | --- | --- | --- | --- | --- | --- | --- | --- | --- |
| 1518 | 36900.37000.42500.105800.190200 | **2.5 mtrs till 5 mtrs** | 65d | 2025-01-26 | 2025-03-31 |  | 100% | start no earlier than 2025-01-26 | Sector-44 Noida(2) | 9366064 |
| 1519 | 36900.37000.42500.105800.190200.232200 | Excavation from 2.5m till 5m | 30d | 2025-01-26 | 2025-03-31 | 1517FS-37d | 100% | start no earlier than 2025-01-26 | Sector-44 Noida(2) | 9367444 |
| 1520 | 36900.37000.42500.105800.190200.232100 | Plank installation & anchoring till 2.5m till 5m | 44d | 2025-02-16 | 2025-03-31 | 1519FF | 100% | start no earlier than 2025-02-16 | Sector-44 Noida(2) | 9367454 |
| 1521 | 36900.37000.42500.105800.190100 | **12 mts till NTA fotting bottom** | 85d | 2025-03-16 | 2025-06-08 |  | 100% | start no earlier than 2025-03-16 | Sector-44 Noida(2) | 9366084 |
| 1522 | 36900.37000.42500.105800.190100.231900 | Excavation from 5m to fotting PCC bottom | 26d | 2025-03-28 | 2025-06-02 | 1520 | 100% | start no earlier than 2025-03-28 | Sector-44 Noida(2) | 9367464 |
| 1523 | 36900.37000.42500.105800.190100.231700 | Plank installation & anchoring from 12m to footing PCC bottom | 44d | 2025-03-16 | 2025-06-08 | 1522FF | 100% | start no earlier than 2025-03-16 | Sector-44 Noida(2) | 9367474 |
| 1524 | 36900.37000.42500.94700 | **Sub-Structure works** | 689.36d | 2025-04-28 | 2027-06-16 |  | 29% | start no earlier than 2025-04-28 | Sector-44 Noida(2) | 9362074 |
| 1525 | 36900.37000.42500.94700.125300 | **Soil bed preparation** | 49.36d | 2025-04-28 | 2025-06-16 |  | 100% | start no earlier than 2025-04-28 | Sector-44 Noida(2) | 9364294 |
| 1526 | 36900.37000.42500.94700.125300.231400 | Excavation completion | 3.3d | 2025-05-12 | 2025-06-02 | 1523FS-76d | 100% | start no earlier than 2025-05-12 | Sector-44 Noida(2) | 9367484 |
| 1527 | 36900.37000.42500.94700.125300.229100 | Surface dressing | 3d | 2025-05-14 | 2025-05-28 | 1526FS-14d | 100% | start no earlier than 2025-05-14 | Sector-44 Noida(2) | 9367494 |
| 1528 | 36900.37000.42500.94700.125300.227300 | ATT | 3.2d | 2025-05-21 | 2025-05-30 | 1527FS-8d | 100% | start no earlier than 2025-05-21 | Sector-44 Noida(2) | 9367504 |
| 1529 | 36900.37000.42500.94700.125300.226700 | PCC | 35.36d | 2025-04-28 | 2025-06-16 | 1526FF, 1527SF, 1528FS-31.56d | 100% |  | Sector-44 Noida(2) | 9367514 |
| 1530 | 36900.37000.42500.94700.101500 | **RCC Works** | 181d | 2025-06-11 | 2026-01-22 |  | 82% | start no earlier than 2025-06-11 | Sector-44 Noida(2) | 9362414 |
| 1531 | 36900.37000.42500.94700.101500.132200 | **Raft** | 104d | 2025-06-11 | 2025-09-22 |  | 100% | start no earlier than 2025-06-11 | Sector-44 Noida(2) | 9365914 |
| 1532 | 36900.37000.42500.94700.101500.132200.195600 | Reinforcement Work | 31d | 2025-06-11 | 2025-09-21 | 1529FS-96d | 100% | start no earlier than 2025-06-11 | Sector-44 Noida(2) | 9371214 |
| 1533 | 36900.37000.42500.94700.101500.132200.195500 | Shuttering work | 16d | 2025-08-20 | 2025-09-21 | 1532FS-34d | 100% | start no earlier than 2025-08-20 | Sector-44 Noida(2) | 9371224 |
| 1534 | 36900.37000.42500.94700.101500.132200.195400 | Concreteing work | 5d | 2025-08-24 | 2025-09-22 | 1532FF, 1533FF | 100% | start no earlier than 2025-08-24 | Sector-44 Noida(2) | 9371234 |
| 1535 | 36900.37000.42500.94700.101500.115300 | **Basement-2 Roof Slab** | 88d | 2025-08-16 | 2025-12-26 |  | 85% | start no earlier than 2025-08-16 | Sector-44 Noida(2) | 9364014 |
| 1536 | 36900.37000.42500.94700.101500.115300.140100 | **B2 Roof Slab** | 88d | 2025-08-16 | 2025-12-26 |  | 85% | start no earlier than 2025-08-16 | Sector-44 Noida(2) | 9365654 |
| 1537 | 36900.37000.42500.94700.101500.115300.140100.244600 | Shuttering Work | 30d | 2025-09-08 | 2025-12-21 | 1534FS-15d | 80% | start no earlier than 2025-09-08 | Sector-44 Noida(2) | 9383394 |
| 1538 | 36900.37000.42500.94700.101500.115300.140100.244500 | Reinforcement Work | 40d | 2025-08-16 | 2025-12-18 | 1537FS-84d | 92% | start no earlier than 2025-08-16 | Sector-44 Noida(2) | 9383404 |
| 1539 | 36900.37000.42500.94700.101500.115300.140100.244400 | Concreteing work | 47d | 2025-08-17 | 2025-12-26 | 1537FF, 1538FS-79d | 82% |  | Sector-44 Noida(2) | 9383414 |
| 1540 | 36900.37000.42500.94700.101500.115400 | **Basement-1 Roof Slab** | 75d | 2025-09-25 | 2026-01-22 |  | 70% | start no earlier than 2025-09-25 | Sector-44 Noida(2) | 9364004 |
| 1541 | 36900.37000.42500.94700.101500.115400.140000 | **B1 Roof Slab** | 75d | 2025-09-25 | 2026-01-22 |  | 70% | start no earlier than 2025-09-25 | Sector-44 Noida(2) | 9365644 |
| 1542 | 36900.37000.42500.94700.101500.115400.140000.244300 | Shuttering Work | 27d | 2025-10-19 | 2026-01-09 | 1539FS-24d | 48% |  | Sector-44 Noida(2) | 9383424 |
| 1543 | 36900.37000.42500.94700.101500.115400.140000.244200 | Reinforcement Work | 39d | 2025-10-05 | 2026-01-16 | 1542FS-52d | 69% |  | Sector-44 Noida(2) | 9383434 |
| 1544 | 36900.37000.42500.94700.101500.115400.140000.244100 | Concreteing work | 43d | 2025-09-25 | 2026-01-22 | 1542FF, 1543FS-69d | 86% |  | Sector-44 Noida(2) | 9383444 |

| ID | WBS | Task | Duration | Start | Finish | Predecessors | Constraint | Calendar | Unique_Task_ID |
| --- | --- | --- | --- | --- | --- | --- | --- | --- | --- |
| 1545 | 36900.37000.42500.94700.100900 | **Sub structure finishing works** | 215d | 2026-09-30 | 2027-06-16 |  | start no earlier than 2026-09-30 | Sector-44 Noida(2) | 9362304 |
| 1546 | 36900.37000.42500.94700.100900.104300 | **Basement-2** | 185d | 2026-09-30 | 2027-05-17 |  | start no earlier than 2026-09-30 | Sector-44 Noida(2) | 9362474 |
| 1547 | 36900.37000.42500.94700.100900.104300.385100 | Masonary | 30d | 2026-09-30 | 2026-10-29 | 1544FS+250d |  | Sector-44 Noida(2) | 9371244 |
| 1548 | 36900.37000.42500.94700.100900.104300.385200 | Structural Steel | 30d | 2026-09-30 | 2026-10-29 | 1544FS+250d |  | Sector-44 Noida(2) | 9371254 |
| 1549 | 36900.37000.42500.94700.100900.104300.385300 | Plaster | 30d | 2026-10-30 | 2027-01-12 | 1547, 1548 |  | Sector-44 Noida(2) | 9371264 |
| 1550 | 36900.37000.42500.94700.100900.104300.385400 | White Wash | 30d | 2027-01-13 | 2027-02-11 | 1549 |  | Sector-44 Noida(2) | 9371274 |
| 1551 | 36900.37000.42500.94700.100900.104300.385500 | VDF | 60d | 2026-10-15 | 2027-01-27 | 1549FS-45d |  | Sector-44 Noida(2) | 9371284 |
| 1552 | 36900.37000.42500.94700.100900.104300.385600 | Drain & Sump (incl. gratings) | 60d | 2026-12-29 | 2027-02-26 | 1551FS-30d |  | Sector-44 Noida(2) | 9371294 |
| 1553 | 36900.37000.42500.94700.100900.104300.385700 | Car parking marking | 30d | 2027-04-18 | 2027-05-17 | 1550FS+65d |  | Sector-44 Noida(2) | 9371304 |
| 1554 | 36900.37000.42500.94700.100900.104300.385800 | Signages | 30d | 2027-04-18 | 2027-05-17 | 1547FF, 1548FF, 1549FF, 1550FS-10d, 1551FF, 1552FF, 1553FF |  | Sector-44 Noida(2) | 9371314 |
| 1555 | 36900.37000.42500.94700.100900.104400 | **Basement-1** | 185d | 2026-10-30 | 2027-06-16 |  | start no earlier than 2026-10-30 | Sector-44 Noida(2) | 9362464 |
| 1556 | 36900.37000.42500.94700.100900.104400.385900 | Masonary | 30d | 2026-10-30 | 2027-01-12 | 1547 |  | Sector-44 Noida(2) | 9371324 |
| 1557 | 36900.37000.42500.94700.100900.104400.386000 | Structural Steel | 30d | 2026-10-30 | 2027-01-12 | 1547 |  | Sector-44 Noida(2) | 9371334 |
| 1558 | 36900.37000.42500.94700.100900.104400.386100 | Plaster | 30d | 2027-01-13 | 2027-02-11 | 1556, 1557 |  | Sector-44 Noida(2) | 9371344 |
| 1559 | 36900.37000.42500.94700.100900.104400.386200 | Plaster | 5d | 2027-02-19 | 2027-02-24 | 1558 |  | Indian Calendar | 9371345 |
| 1560 | 36900.37000.42500.94700.100900.104400.386300 | White Wash | 30d | 2027-02-12 | 2027-03-13 | 1558 |  | Sector-44 Noida(2) | 9371354 |
| 1561 | 36900.37000.42500.94700.100900.104400.386400 | VDF | 60d | 2026-12-29 | 2027-02-26 | 1558FS-45d |  | Sector-44 Noida(2) | 9371364 |
| 1562 | 36900.37000.42500.94700.100900.104400.386500 | Drain & Sump (incl. gratings) | 60d | 2027-01-28 | 2027-03-28 | 1561FS-30d |  | Sector-44 Noida(2) | 9371374 |
| 1563 | 36900.37000.42500.94700.100900.104400.386600 | Car parking marking | 30d | 2027-05-18 | 2027-06-16 | 1560FS+65d |  | Sector-44 Noida(2) | 9371384 |
| 1564 | 36900.37000.42500.94700.100900.104400.386700 | Signages | 30d | 2027-05-18 | 2027-06-16 | 1556FF, 1557FF, 1558FF, 1560FS-10d, 1561FF, 1562FF, 1563FF |  | Sector-44 Noida(2) | 9371394 |
| 1565 | 36900.37000.42500.42900 | **Super structure works** | 908d | 2026-01-23 | 2028-10-16 |  | start no earlier than 2026-01-23 | Sector-44 Noida(2) | 9360734 |
| 1566 | 36900.37000.42500.42900.46200 | **RCC Works** | 444d | 2026-01-23 | 2027-05-26 |  | start no earlier than 2026-01-23 | Sector-44 Noida(2) | 9360844 |
| 1567 | 36900.37000.42500.42900.46200.130400 | **Stilt/GF Slab** | 14d | 2026-01-23 | 2026-02-05 |  | start no earlier than 2026-01-23 | Sector-44 Noida(2) | 9363994 |
| 1568 | 36900.37000.42500.42900.46200.130400.186500 | **Stilt/GF Slab** | 14d | 2026-01-23 | 2026-02-05 |  | start no earlier than 2026-01-23 | Sector-44 Noida(2) | 9365624 |
| 1569 | 36900.37000.42500.42900.46200.130400.186500.682200 | Shuttering Work | 10d | 2026-01-23 | 2026-02-01 | 1544 |  | Sector-44 Noida(2) | 9383454 |
| 1570 | 36900.37000.42500.42900.46200.130400.186500.682300 | Reinforcement Work | 8d | 2026-01-28 | 2026-02-04 | 1569FS-5d |  | Sector-44 Noida(2) | 9383464 |
| 1571 | 36900.37000.42500.42900.46200.130400.186500.682400 | Concreteing work | 1d | 2026-02-05 | 2026-02-05 | 1569FF, 1570 |  | Sector-44 Noida(2) | 9383474 |

| ID | WBS | Task | Duration | Start | Finish | Predecessors | Constraint | Calendar | Unique_Task_ID |
| --- | --- | --- | --- | --- | --- | --- | --- | --- | --- |
| 1572 | 36900.37000.42500.42900.46200.115500 | **Podium-1 Slab** | 20d | 2026-02-02 | 2026-02-21 |  | start no earlier than 2026-02-02 | Sector-44 Noida(2) | 9363244 |
| 1573 | 36900.37000.42500.42900.46200.115500.139900 | **Podium-1 Slab** | 20d | 2026-02-02 | 2026-02-21 |  | start no earlier than 2026-02-02 | Sector-44 Noida(2) | 9364894 |
| 1574 | 36900.37000.42500.42900.46200.115500.139900.682500 | Shuttering Work | 16d | 2026-02-06 | 2026-02-21 | 1571 |  | Sector-44 Noida(2) | 9383484 |
| 1575 | 36900.37000.42500.42900.46200.115500.139900.682600 | Reinforcement Work | 10d | 2026-02-02 | 2026-02-11 | 1574FS-20d |  | Sector-44 Noida(2) | 9383494 |
| 1576 | 36900.37000.42500.42900.46200.115500.139900.682700 | Conduiting work | 1d | 2026-02-11 | 2026-02-11 | 1575FS-1d |  | Sector-44 Noida(2) | 9383504 |
| 1577 | 36900.37000.42500.42900.46200.115500.139900.682800 | Concreteing work | 1d | 2026-02-21 | 2026-02-21 | 1574FF, 1575FF, 1576 |  | Sector-44 Noida(2) | 9383514 |
| 1578 | 36900.37000.42500.42900.46200.115600 | **1st Floor Slab** | 37d | 2026-02-22 | 2026-03-30 |  | start no earlier than 2026-02-22 | Sector-44 Noida(2) | 9363254 |
| 1579 | 36900.37000.42500.42900.46200.115600.139800 | **1st Floor Slab** | 37d | 2026-02-22 | 2026-03-30 |  | start no earlier than 2026-02-22 | Sector-44 Noida(2) | 9364904 |
| 1580 | 36900.37000.42500.42900.46200.115600.139800.682900 | Shuttering Work | 25d | 2026-02-22 | 2026-03-18 | 1577 |  | Sector-44 Noida(2) | 9383524 |
| 1581 | 36900.37000.42500.42900.46200.115600.139800.683000 | Reinforcement Work | 16d | 2026-03-14 | 2026-03-29 | 1580FS-5d |  | Sector-44 Noida(2) | 9383534 |
| 1582 | 36900.37000.42500.42900.46200.115600.139800.683100 | Conduiting work | 1d | 2026-03-29 | 2026-03-29 | 1581FS-1d |  | Sector-44 Noida(2) | 9383544 |
| 1583 | 36900.37000.42500.42900.46200.115600.139800.683200 | Concreteing work | 1d | 2026-03-30 | 2026-03-30 | 1580FF, 1581FF, 1582 |  | Sector-44 Noida(2) | 9383554 |
| 1584 | 36900.37000.42500.42900.46200.284400 | 1st Floor Slab | 5d | 2026-04-24 | 2026-04-29 | 1578 |  | Indian Calendar | 9363255 |
| 1585 | 36900.37000.42500.42900.46200.115700 | **2nd Floor Slab** | 27d | 2026-03-31 | 2026-04-26 |  | start no earlier than 2026-03-31 | Sector-44 Noida(2) | 9363264 |
| 1586 | 36900.37000.42500.42900.46200.115700.139700 | **2nd Floor Slab** | 27d | 2026-03-31 | 2026-04-26 |  | start no earlier than 2026-03-31 | Sector-44 Noida(2) | 9364914 |
| 1587 | 36900.37000.42500.42900.46200.115700.139700.683300 | Shuttering Work | 16d | 2026-03-31 | 2026-04-15 | 1583 |  | Sector-44 Noida(2) | 9383564 |
| 1588 | 36900.37000.42500.42900.46200.115700.139700.683400 | Reinforcement Work | 13d | 2026-04-13 | 2026-04-25 | 1587FS-3d |  | Sector-44 Noida(2) | 9383574 |
| 1589 | 36900.37000.42500.42900.46200.115700.139700.683500 | Conduiting work | 1d | 2026-04-25 | 2026-04-25 | 1588FS-1d |  | Sector-44 Noida(2) | 9383584 |
| 1590 | 36900.37000.42500.42900.46200.115700.139700.683600 | Concreteing work | 1d | 2026-04-26 | 2026-04-26 | 1587FF, 1588FF, 1589 |  | Sector-44 Noida(2) | 9383594 |
| 1591 | 36900.37000.42500.42900.46200.115800 | **3rd Floor Slab** | 20d | 2026-04-27 | 2026-05-16 |  | start no earlier than 2026-04-27 | Sector-44 Noida(2) | 9363274 |
| 1592 | 36900.37000.42500.42900.46200.115800.139600 | **3rd Floor Slab** | 20d | 2026-04-27 | 2026-05-16 |  | start no earlier than 2026-04-27 | Sector-44 Noida(2) | 9364924 |
| 1593 | 36900.37000.42500.42900.46200.115800.139600.683700 | Shuttering Work | 12d | 2026-04-27 | 2026-05-08 | 1590 |  | Sector-44 Noida(2) | 9383604 |
| 1594 | 36900.37000.42500.42900.46200.115800.139600.683800 | Reinforcement Work | 10d | 2026-05-06 | 2026-05-15 | 1593FS-3d |  | Sector-44 Noida(2) | 9383614 |
| 1595 | 36900.37000.42500.42900.46200.115800.139600.683900 | Conduiting work | 1d | 2026-05-15 | 2026-05-15 | 1594FS-1d |  | Sector-44 Noida(2) | 9383624 |
| 1596 | 36900.37000.42500.42900.46200.115800.139600.684000 | Concreteing work | 1d | 2026-05-16 | 2026-05-16 | 1593FF, 1594FF, 1595 |  | Sector-44 Noida(2) | 9383634 |

| ID | WBS | Task | Duration | Start | Finish | Predecessors | Constraint | Calendar | Unique_Task_ID |
| --- | --- | --- | --- | --- | --- | --- | --- | --- | --- |
| 1597 | 36900.37000.42500.42900.46200.115900 | **4th Floor Slab** | 20d | 2026-05-17 | 2026-06-05 |  | start no earlier than 2026-05-17 | Sector-44 Noida(2) | 9363284 |
| 1598 | 36900.37000.42500.42900.46200.115900.139500 | **4th Floor Slab** | 20d | 2026-05-17 | 2026-06-05 |  | start no earlier than 2026-05-17 | Sector-44 Noida(2) | 9364934 |
| 1599 | 36900.37000.42500.42900.46200.115900.139500.684100 | Shuttering Work | 12d | 2026-05-17 | 2026-05-28 | 1596 |  | Sector-44 Noida(2) | 9383644 |
| 1600 | 36900.37000.42500.42900.46200.115900.139500.684200 | Reinforcement Work | 10d | 2026-05-26 | 2026-06-04 | 1599FS-3d |  | Sector-44 Noida(2) | 9383654 |
| 1601 | 36900.37000.42500.42900.46200.115900.139500.684300 | Conduiting work | 1d | 2026-06-04 | 2026-06-04 | 1600FS-1d |  | Sector-44 Noida(2) | 9383664 |
| 1602 | 36900.37000.42500.42900.46200.115900.139500.684400 | Concreteing work | 1d | 2026-06-05 | 2026-06-05 | 1599FF, 1600FF, 1601 |  | Sector-44 Noida(2) | 9383674 |
| 1603 | 36900.37000.42500.42900.46200.116000 | **5th Floor Slab (1st MIVAN Setup)** | 30d | 2026-06-06 | 2026-07-05 |  | start no earlier than 2026-06-06 | Sector-44 Noida(2) | 9363294 |
| 1604 | 36900.37000.42500.42900.46200.116000.139400 | **5th Floor Slab** | 30d | 2026-06-06 | 2026-07-05 |  | start no earlier than 2026-06-06 | Sector-44 Noida(2) | 9364944 |
| 1605 | 36900.37000.42500.42900.46200.116000.139400.684500 | Shuttering Work | 17d | 2026-06-06 | 2026-06-22 | 1602 |  | Sector-44 Noida(2) | 9383684 |
| 1606 | 36900.37000.42500.42900.46200.116000.139400.684600 | Reinforcement Work | 15d | 2026-06-20 | 2026-07-04 | 1605FS-3d |  | Sector-44 Noida(2) | 9383694 |
| 1607 | 36900.37000.42500.42900.46200.116000.139400.684700 | Conduiting work | 1d | 2026-07-04 | 2026-07-04 | 1606FS-1d |  | Sector-44 Noida(2) | 9383704 |
| 1608 | 36900.37000.42500.42900.46200.116000.139400.684800 | Concreteing work | 1d | 2026-07-05 | 2026-07-05 | 1605FF, 1606FF, 1607 |  | Sector-44 Noida(2) | 9383714 |
| 1609 | 36900.37000.42500.42900.46200.116100 | **6th Floor Slab** | 18d | 2026-07-06 | 2026-07-23 |  | start no earlier than 2026-07-06 | Sector-44 Noida(2) | 9363304 |
| 1610 | 36900.37000.42500.42900.46200.116100.139300 | **6th Floor Slab** | 18d | 2026-07-06 | 2026-07-23 |  | start no earlier than 2026-07-06 | Sector-44 Noida(2) | 9364954 |
| 1611 | 36900.37000.42500.42900.46200.116100.139300.684900 | Shuttering Work | 12d | 2026-07-06 | 2026-07-17 | 1608 |  | Sector-44 Noida(2) | 9383724 |
| 1612 | 36900.37000.42500.42900.46200.116100.139300.685000 | Reinforcement Work | 8d | 2026-07-15 | 2026-07-22 | 1611FS-3d |  | Sector-44 Noida(2) | 9383734 |
| 1613 | 36900.37000.42500.42900.46200.116100.139300.685100 | Conduiting work | 1d | 2026-07-22 | 2026-07-22 | 1612FS-1d |  | Sector-44 Noida(2) | 9383744 |
| 1614 | 36900.37000.42500.42900.46200.116100.139300.685200 | Concreteing work | 1d | 2026-07-23 | 2026-07-23 | 1611FF, 1612FF, 1613 |  | Sector-44 Noida(2) | 9383754 |
| 1615 | 36900.37000.42500.42900.46200.116200 | **7th Floor Slab** | 12d | 2026-07-24 | 2026-08-04 |  | start no earlier than 2026-07-24 | Sector-44 Noida(2) | 9363314 |
| 1616 | 36900.37000.42500.42900.46200.116200.139200 | **7th Floor Slab** | 12d | 2026-07-24 | 2026-08-04 |  | start no earlier than 2026-07-24 | Sector-44 Noida(2) | 9364964 |
| 1617 | 36900.37000.42500.42900.46200.116200.139200.685300 | Shuttering Work | 9d | 2026-07-24 | 2026-08-01 | 1614 |  | Sector-44 Noida(2) | 9383764 |
| 1618 | 36900.37000.42500.42900.46200.116200.139200.685400 | Reinforcement Work | 5d | 2026-07-30 | 2026-08-03 | 1617FS-3d |  | Sector-44 Noida(2) | 9383774 |
| 1619 | 36900.37000.42500.42900.46200.116200.139200.685500 | Conduiting work | 1d | 2026-08-03 | 2026-08-03 | 1618FS-1d |  | Sector-44 Noida(2) | 9383784 |
| 1620 | 36900.37000.42500.42900.46200.116200.139200.685600 | Concreteing work | 1d | 2026-08-04 | 2026-08-04 | 1617FF, 1618FF, 1619 |  | Sector-44 Noida(2) | 9383794 |

| ID | WBS | Task | Duration | Start | Finish | Predecessors | Constraint | Calendar | Unique_Task_ID |
| --- | --- | --- | --- | --- | --- | --- | --- | --- | --- |
| 1621 | 36900.37000.42500.42900.46200.116300 | **8th Floor Slab** | 12d | 2026-08-05 | 2026-08-16 |  | start no earlier than 2026-08-05 | Sector-44 Noida(2) | 9363324 |
| 1622 | 36900.37000.42500.42900.46200.116300.139100 | **8th Floor Slab** | 12d | 2026-08-05 | 2026-08-16 |  | start no earlier than 2026-08-05 | Sector-44 Noida(2) | 9364974 |
| 1623 | 36900.37000.42500.42900.46200.116300.139100.685700 | Shuttering Work | 9d | 2026-08-05 | 2026-08-13 | 1620 |  | Sector-44 Noida(2) | 9383804 |
| 1624 | 36900.37000.42500.42900.46200.116300.139100.685800 | Reinforcement Work | 5d | 2026-08-11 | 2026-08-15 | 1623FS-3d |  | Sector-44 Noida(2) | 9383814 |
| 1625 | 36900.37000.42500.42900.46200.116300.139100.685900 | Conduiting work | 1d | 2026-08-15 | 2026-08-15 | 1624FS-1d |  | Sector-44 Noida(2) | 9383824 |
| 1626 | 36900.37000.42500.42900.46200.116300.139100.686000 | Concreteing work | 1d | 2026-08-16 | 2026-08-16 | 1623FF, 1624FF, 1625 |  | Sector-44 Noida(2) | 9383834 |
| 1627 | 36900.37000.42500.42900.46200.116400 | **9th Floor Slab** | 12d | 2026-08-17 | 2026-08-28 |  | start no earlier than 2026-08-17 | Sector-44 Noida(2) | 9363334 |
| 1628 | 36900.37000.42500.42900.46200.116400.139000 | **9th Floor Slab** | 12d | 2026-08-17 | 2026-08-28 |  | start no earlier than 2026-08-17 | Sector-44 Noida(2) | 9364984 |
| 1629 | 36900.37000.42500.42900.46200.116400.139000.686100 | Shuttering Work | 9d | 2026-08-17 | 2026-08-25 | 1626 |  | Sector-44 Noida(2) | 9383844 |
| 1630 | 36900.37000.42500.42900.46200.116400.139000.686200 | Reinforcement Work | 5d | 2026-08-23 | 2026-08-27 | 1629FS-3d |  | Sector-44 Noida(2) | 9383854 |
| 1631 | 36900.37000.42500.42900.46200.116400.139000.686300 | Conduiting work | 1d | 2026-08-27 | 2026-08-27 | 1630FS-1d |  | Sector-44 Noida(2) | 9383864 |
| 1632 | 36900.37000.42500.42900.46200.116400.139000.686400 | Concreteing work | 1d | 2026-08-28 | 2026-08-28 | 1629FF, 1630FF, 1631 |  | Sector-44 Noida(2) | 9383874 |
| 1633 | 36900.37000.42500.42900.46200.116500 | **10th Floor Slab** | 12d | 2026-08-29 | 2026-09-09 |  | start no earlier than 2026-08-29 | Sector-44 Noida(2) | 9363344 |
| 1634 | 36900.37000.42500.42900.46200.116500.138900 | **10th Floor Slab** | 12d | 2026-08-29 | 2026-09-09 |  | start no earlier than 2026-08-29 | Sector-44 Noida(2) | 9364994 |
| 1635 | 36900.37000.42500.42900.46200.116500.138900.686500 | Shuttering Work | 9d | 2026-08-29 | 2026-09-06 | 1632 |  | Sector-44 Noida(2) | 9383884 |
| 1636 | 36900.37000.42500.42900.46200.116500.138900.686600 | Reinforcement Work | 5d | 2026-09-04 | 2026-09-08 | 1635FS-3d |  | Sector-44 Noida(2) | 9383894 |
| 1637 | 36900.37000.42500.42900.46200.116500.138900.686700 | Conduiting work | 1d | 2026-09-08 | 2026-09-08 | 1636FS-1d |  | Sector-44 Noida(2) | 9383904 |
| 1638 | 36900.37000.42500.42900.46200.116500.138900.686800 | Concreteing work | 1d | 2026-09-09 | 2026-09-09 | 1635FF, 1636FF, 1637 |  | Sector-44 Noida(2) | 9383914 |
| 1639 | 36900.37000.42500.42900.46200.116600 | **11th Floor Slab** | 12d | 2026-09-10 | 2026-09-21 |  | start no earlier than 2026-09-10 | Sector-44 Noida(2) | 9363354 |
| 1640 | 36900.37000.42500.42900.46200.116600.138800 | **11th Floor Slab** | 12d | 2026-09-10 | 2026-09-21 |  | start no earlier than 2026-09-10 | Sector-44 Noida(2) | 9365004 |
| 1641 | 36900.37000.42500.42900.46200.116600.138800.686900 | Shuttering Work | 9d | 2026-09-10 | 2026-09-18 | 1638 |  | Sector-44 Noida(2) | 9383924 |
| 1642 | 36900.37000.42500.42900.46200.116600.138800.687000 | Reinforcement Work | 5d | 2026-09-16 | 2026-09-20 | 1641FS-3d |  | Sector-44 Noida(2) | 9383934 |
| 1643 | 36900.37000.42500.42900.46200.116600.138800.687100 | Conduiting work | 1d | 2026-09-20 | 2026-09-20 | 1642FS-1d |  | Sector-44 Noida(2) | 9383944 |
| 1644 | 36900.37000.42500.42900.46200.116600.138800.687200 | Concreteing work | 1d | 2026-09-21 | 2026-09-21 | 1641FF, 1642FF, 1643 |  | Sector-44 Noida(2) | 9383954 |

| ID | WBS | Task | Duration | Start | Finish | Predecessors | Constraint | Calendar | Unique_Task_ID |
| --- | --- | --- | --- | --- | --- | --- | --- | --- | --- |
| 1645 | 36900.37000.42500.42900.46200.116700 | **12th Floor Slab** | 12d | 2026-09-22 | 2026-10-03 |  | start no earlier than 2026-09-22 | Sector-44 Noida(2) | 9363364 |
| 1646 | 36900.37000.42500.42900.46200.116700.138700 | **12th Floor Slab** | 12d | 2026-09-22 | 2026-10-03 |  | start no earlier than 2026-09-22 | Sector-44 Noida(2) | 9365014 |
| 1647 | 36900.37000.42500.42900.46200.116700.138700.687300 | Shuttering Work | 9d | 2026-09-22 | 2026-09-30 | 1644 |  | Sector-44 Noida(2) | 9383964 |
| 1648 | 36900.37000.42500.42900.46200.116700.138700.687400 | Reinforcement Work | 5d | 2026-09-28 | 2026-10-02 | 1647FS-3d |  | Sector-44 Noida(2) | 9383974 |
| 1649 | 36900.37000.42500.42900.46200.116700.138700.687500 | Conduiting work | 1d | 2026-10-02 | 2026-10-02 | 1648FS-1d |  | Sector-44 Noida(2) | 9383984 |
| 1650 | 36900.37000.42500.42900.46200.116700.138700.687600 | Concreteing work | 1d | 2026-10-03 | 2026-10-03 | 1647FF, 1648FF, 1649 |  | Sector-44 Noida(2) | 9383994 |
| 1651 | 36900.37000.42500.42900.46200.116800 | **13th Floor Slab** | 12d | 2026-10-04 | 2026-10-15 |  | start no earlier than 2026-10-04 | Sector-44 Noida(2) | 9363374 |
| 1652 | 36900.37000.42500.42900.46200.116800.138600 | **13th Floor Slab** | 12d | 2026-10-04 | 2026-10-15 |  | start no earlier than 2026-10-04 | Sector-44 Noida(2) | 9365024 |
| 1653 | 36900.37000.42500.42900.46200.116800.138600.687700 | Shuttering Work | 9d | 2026-10-04 | 2026-10-12 | 1650 |  | Sector-44 Noida(2) | 9384004 |
| 1654 | 36900.37000.42500.42900.46200.116800.138600.687800 | Reinforcement Work | 5d | 2026-10-10 | 2026-10-14 | 1653FS-3d |  | Sector-44 Noida(2) | 9384014 |
| 1655 | 36900.37000.42500.42900.46200.116800.138600.687900 | Conduiting work | 1d | 2026-10-14 | 2026-10-14 | 1654FS-1d |  | Sector-44 Noida(2) | 9384024 |
| 1656 | 36900.37000.42500.42900.46200.116800.138600.688000 | Concreteing work | 1d | 2026-10-15 | 2026-10-15 | 1653FF, 1654FF, 1655 |  | Sector-44 Noida(2) | 9384034 |
| 1657 | 36900.37000.42500.42900.46200.116900 | **14th Floor Slab** | 12d | 2026-10-16 | 2026-10-27 |  | start no earlier than 2026-10-16 | Sector-44 Noida(2) | 9363384 |
| 1658 | 36900.37000.42500.42900.46200.116900.138500 | **14th Floor Slab** | 12d | 2026-10-16 | 2026-10-27 |  | start no earlier than 2026-10-16 | Sector-44 Noida(2) | 9365034 |
| 1659 | 36900.37000.42500.42900.46200.116900.138500.688100 | Shuttering Work | 9d | 2026-10-16 | 2026-10-24 | 1656 |  | Sector-44 Noida(2) | 9384044 |
| 1660 | 36900.37000.42500.42900.46200.116900.138500.688200 | Reinforcement Work | 5d | 2026-10-22 | 2026-10-26 | 1659FS-3d |  | Sector-44 Noida(2) | 9384054 |
| 1661 | 36900.37000.42500.42900.46200.116900.138500.688300 | Conduiting work | 1d | 2026-10-26 | 2026-10-26 | 1660FS-1d |  | Sector-44 Noida(2) | 9384064 |
| 1662 | 36900.37000.42500.42900.46200.116900.138500.688400 | Concreteing work | 1d | 2026-10-27 | 2026-10-27 | 1659FF, 1660FF, 1661 |  | Sector-44 Noida(2) | 9384074 |
| 1663 | 36900.37000.42500.42900.46200.117000 | **15th Floor Slab** | 12d | 2026-10-28 | 2026-12-23 |  | start no earlier than 2026-10-28 | Sector-44 Noida(2) | 9363394 |
| 1664 | 36900.37000.42500.42900.46200.117000.138400 | **15th Floor Slab** | 12d | 2026-10-28 | 2026-12-23 |  | start no earlier than 2026-10-28 | Sector-44 Noida(2) | 9365044 |
| 1665 | 36900.37000.42500.42900.46200.117000.138400.688500 | Shuttering Work | 9d | 2026-10-28 | 2026-12-20 | 1662 |  | Sector-44 Noida(2) | 9384084 |
| 1666 | 36900.37000.42500.42900.46200.117000.138400.688600 | Reinforcement Work | 5d | 2026-12-18 | 2026-12-22 | 1665FS-3d |  | Sector-44 Noida(2) | 9384094 |
| 1667 | 36900.37000.42500.42900.46200.117000.138400.688700 | Conduiting work | 1d | 2026-12-22 | 2026-12-22 | 1666FS-1d |  | Sector-44 Noida(2) | 9384104 |
| 1668 | 36900.37000.42500.42900.46200.117000.138400.688800 | Concreteing work | 1d | 2026-12-23 | 2026-12-23 | 1665FF, 1666FF, 1667 |  | Sector-44 Noida(2) | 9384114 |

| ID | WBS | Task | Duration | Start | Finish | Predecessors | Constraint | Calendar | Unique_Task_ID |
| --- | --- | --- | --- | --- | --- | --- | --- | --- | --- |
| 1669 | 36900.37000.42500.42900.46200.117100 | **16th Floor Slab** | 12d | 2026-12-24 | 2027-01-04 |  | start no earlier than 2026-12-24 | Sector-44 Noida(2) | 9363404 |
| 1670 | 36900.37000.42500.42900.46200.117100.138300 | **16th Floor Slab** | 12d | 2026-12-24 | 2027-01-04 |  | start no earlier than 2026-12-24 | Sector-44 Noida(2) | 9365054 |
| 1671 | 36900.37000.42500.42900.46200.117100.138300.688900 | Shuttering Work | 9d | 2026-12-24 | 2027-01-01 | 1668 |  | Sector-44 Noida(2) | 9384124 |
| 1672 | 36900.37000.42500.42900.46200.117100.138300.689000 | Reinforcement Work | 5d | 2026-12-30 | 2027-01-03 | 1671FS-3d |  | Sector-44 Noida(2) | 9384134 |
| 1673 | 36900.37000.42500.42900.46200.117100.138300.689100 | Conduiting work | 1d | 2027-01-03 | 2027-01-03 | 1672FS-1d |  | Sector-44 Noida(2) | 9384144 |
| 1674 | 36900.37000.42500.42900.46200.117100.138300.689200 | Concreteing work | 1d | 2027-01-04 | 2027-01-04 | 1671FF, 1672FF, 1673 |  | Sector-44 Noida(2) | 9384154 |
| 1675 | 36900.37000.42500.42900.46200.117200 | **17th Floor Slab** | 15d | 2027-01-05 | 2027-01-19 |  | start no earlier than 2027-01-05 | Sector-44 Noida(2) | 9363414 |
| 1676 | 36900.37000.42500.42900.46200.117200.138200 | **17th Floor Slab** | 15d | 2027-01-05 | 2027-01-19 |  | start no earlier than 2027-01-05 | Sector-44 Noida(2) | 9365064 |
| 1677 | 36900.37000.42500.42900.46200.117200.138200.689300 | Shuttering Work | 10d | 2027-01-05 | 2027-01-14 | 1674 |  | Sector-44 Noida(2) | 9384164 |
| 1678 | 36900.37000.42500.42900.46200.117200.138200.689400 | Reinforcement Work | 7d | 2027-01-12 | 2027-01-18 | 1677FS-3d |  | Sector-44 Noida(2) | 9384174 |
| 1679 | 36900.37000.42500.42900.46200.117200.138200.689500 | Conduiting work | 1d | 2027-01-18 | 2027-01-18 | 1678FS-1d |  | Sector-44 Noida(2) | 9384184 |
| 1680 | 36900.37000.42500.42900.46200.117200.138200.689600 | Concreteing work | 1d | 2027-01-19 | 2027-01-19 | 1677FF, 1678FF, 1679 |  | Sector-44 Noida(2) | 9384194 |
| 1681 | 36900.37000.42500.42900.46200.117300 | **18th Floor Slab** | 12d | 2027-01-20 | 2027-01-31 |  | start no earlier than 2027-01-20 | Sector-44 Noida(2) | 9363424 |
| 1682 | 36900.37000.42500.42900.46200.117300.138100 | **18th Floor Slab** | 12d | 2027-01-20 | 2027-01-31 |  | start no earlier than 2027-01-20 | Sector-44 Noida(2) | 9365074 |
| 1683 | 36900.37000.42500.42900.46200.117300.138100.689700 | Shuttering Work | 9d | 2027-01-20 | 2027-01-28 | 1680 |  | Sector-44 Noida(2) | 9384204 |
| 1684 | 36900.37000.42500.42900.46200.117300.138100.689800 | Reinforcement Work | 5d | 2027-01-26 | 2027-01-30 | 1683FS-3d |  | Sector-44 Noida(2) | 9384214 |
| 1685 | 36900.37000.42500.42900.46200.117300.138100.689900 | Conduiting work | 1d | 2027-01-30 | 2027-01-30 | 1684FS-1d |  | Sector-44 Noida(2) | 9384224 |
| 1686 | 36900.37000.42500.42900.46200.117300.138100.690000 | Concreteing work | 1d | 2027-01-31 | 2027-01-31 | 1683FF, 1684FF, 1685 |  | Sector-44 Noida(2) | 9384234 |
| 1687 | 36900.37000.42500.42900.46200.117400 | **19th Floor Slab** | 12d | 2027-02-01 | 2027-02-12 |  | start no earlier than 2027-02-01 | Sector-44 Noida(2) | 9363434 |
| 1688 | 36900.37000.42500.42900.46200.117400.138000 | **19th Floor Slab** | 12d | 2027-02-01 | 2027-02-12 |  | start no earlier than 2027-02-01 | Sector-44 Noida(2) | 9365084 |
| 1689 | 36900.37000.42500.42900.46200.117400.138000.690100 | Shuttering Work | 9d | 2027-02-01 | 2027-02-09 | 1686 |  | Sector-44 Noida(2) | 9384244 |
| 1690 | 36900.37000.42500.42900.46200.117400.138000.690200 | Reinforcement Work | 5d | 2027-02-07 | 2027-02-11 | 1689FS-3d |  | Sector-44 Noida(2) | 9384254 |
| 1691 | 36900.37000.42500.42900.46200.117400.138000.690300 | Conduiting work | 1d | 2027-02-11 | 2027-02-11 | 1690FS-1d |  | Sector-44 Noida(2) | 9384264 |
| 1692 | 36900.37000.42500.42900.46200.117400.138000.690400 | Concreteing work | 1d | 2027-02-12 | 2027-02-12 | 1689FF, 1690FF, 1691 |  | Sector-44 Noida(2) | 9384274 |

| ID | WBS | Task | Duration | Start | Finish | Predecessors | Constraint | Calendar | Unique_Task_ID |
| --- | --- | --- | --- | --- | --- | --- | --- | --- | --- |
| 1693 | 36900.37000.42500.42900.46200.117500 | **20th Floor Slab** | 12d | 2027-02-13 | 2027-02-24 |  | start no earlier than 2027-02-13 | Sector-44 Noida(2) | 9363444 |
| 1694 | 36900.37000.42500.42900.46200.117500.137900 | **20th Floor Slab** | 12d | 2027-02-13 | 2027-02-24 |  | start no earlier than 2027-02-13 | Sector-44 Noida(2) | 9365094 |
| 1695 | 36900.37000.42500.42900.46200.117500.137900.690500 | Shuttering Work | 9d | 2027-02-13 | 2027-02-21 | 1692 |  | Sector-44 Noida(2) | 9384284 |
| 1696 | 36900.37000.42500.42900.46200.117500.137900.690600 | Reinforcement Work | 5d | 2027-02-19 | 2027-02-23 | 1695FS-3d |  | Sector-44 Noida(2) | 9384294 |
| 1697 | 36900.37000.42500.42900.46200.117500.137900.690700 | Conduiting work | 1d | 2027-02-23 | 2027-02-23 | 1696FS-1d |  | Sector-44 Noida(2) | 9384304 |
| 1698 | 36900.37000.42500.42900.46200.117500.137900.690800 | Concreteing work | 1d | 2027-02-24 | 2027-02-24 | 1695FF, 1696FF, 1697 |  | Sector-44 Noida(2) | 9384314 |
| 1699 | 36900.37000.42500.42900.46200.117600 | **21st Floor Slab** | 12d | 2027-02-25 | 2027-03-08 |  | start no earlier than 2027-02-25 | Sector-44 Noida(2) | 9363454 |
| 1700 | 36900.37000.42500.42900.46200.117600.137800 | **21st Floor Slab** | 12d | 2027-02-25 | 2027-03-08 |  | start no earlier than 2027-02-25 | Sector-44 Noida(2) | 9365104 |
| 1701 | 36900.37000.42500.42900.46200.117600.137800.690900 | Shuttering Work | 9d | 2027-02-25 | 2027-03-05 | 1698 |  | Sector-44 Noida(2) | 9384324 |
| 1702 | 36900.37000.42500.42900.46200.117600.137800.691000 | Reinforcement Work | 5d | 2027-03-03 | 2027-03-07 | 1701FS-3d |  | Sector-44 Noida(2) | 9384334 |
| 1703 | 36900.37000.42500.42900.46200.117600.137800.691100 | Conduiting work | 1d | 2027-03-07 | 2027-03-07 | 1702FS-1d |  | Sector-44 Noida(2) | 9384344 |
| 1704 | 36900.37000.42500.42900.46200.117600.137800.691200 | Concreteing work | 1d | 2027-03-08 | 2027-03-08 | 1701FF, 1702FF, 1703 |  | Sector-44 Noida(2) | 9384354 |
| 1705 | 36900.37000.42500.42900.46200.117700 | **22nd Floor Slab** | 12d | 2027-03-09 | 2027-03-20 |  | start no earlier than 2027-03-09 | Sector-44 Noida(2) | 9363464 |
| 1706 | 36900.37000.42500.42900.46200.117700.137700 | **22nd Floor Slab** | 12d | 2027-03-09 | 2027-03-20 |  | start no earlier than 2027-03-09 | Sector-44 Noida(2) | 9365114 |
| 1707 | 36900.37000.42500.42900.46200.117700.137700.691300 | Shuttering Work | 9d | 2027-03-09 | 2027-03-17 | 1704 |  | Sector-44 Noida(2) | 9384364 |
| 1708 | 36900.37000.42500.42900.46200.117700.137700.691400 | Reinforcement Work | 5d | 2027-03-15 | 2027-03-19 | 1707FS-3d |  | Sector-44 Noida(2) | 9384374 |
| 1709 | 36900.37000.42500.42900.46200.117700.137700.691500 | Conduiting work | 1d | 2027-03-19 | 2027-03-19 | 1708FS-1d |  | Sector-44 Noida(2) | 9384384 |
| 1710 | 36900.37000.42500.42900.46200.117700.137700.691600 | Concreteing work | 1d | 2027-03-20 | 2027-03-20 | 1707FF, 1708FF, 1709 |  | Sector-44 Noida(2) | 9384394 |
| 1711 | 36900.37000.42500.42900.46200.117800 | **23rd Floor Slab** | 12d | 2027-03-21 | 2027-04-01 |  | start no earlier than 2027-03-21 | Sector-44 Noida(2) | 9363474 |
| 1712 | 36900.37000.42500.42900.46200.117800.137600 | **23rd Floor Slab** | 12d | 2027-03-21 | 2027-04-01 |  | start no earlier than 2027-03-21 | Sector-44 Noida(2) | 9365124 |
| 1713 | 36900.37000.42500.42900.46200.117800.137600.691700 | Shuttering Work | 9d | 2027-03-21 | 2027-03-29 | 1710 |  | Sector-44 Noida(2) | 9384404 |
| 1714 | 36900.37000.42500.42900.46200.117800.137600.691800 | Reinforcement Work | 5d | 2027-03-27 | 2027-03-31 | 1713FS-3d |  | Sector-44 Noida(2) | 9384414 |
| 1715 | 36900.37000.42500.42900.46200.117800.137600.691900 | Conduiting work | 1d | 2027-03-31 | 2027-03-31 | 1714FS-1d |  | Sector-44 Noida(2) | 9384424 |
| 1716 | 36900.37000.42500.42900.46200.117800.137600.692000 | Concreteing work | 1d | 2027-04-01 | 2027-04-01 | 1713FF, 1714FF, 1715 |  | Sector-44 Noida(2) | 9384434 |

| ID | WBS | Task | Duration | Start | Finish | Predecessors | Constraint | Calendar | Unique_Task_ID |
| --- | --- | --- | --- | --- | --- | --- | --- | --- | --- |
| 1717 | 36900.37000.42500.42900.46200.117900 | **Terrace Slab** | 15d | 2027-04-02 | 2027-04-16 |  | start no earlier than 2027-04-02 | Sector-44 Noida(2) | 9363484 |
| 1718 | 36900.37000.42500.42900.46200.117900.137500 | **Terrace Slab** | 15d | 2027-04-02 | 2027-04-16 |  | start no earlier than 2027-04-02 | Sector-44 Noida(2) | 9365134 |
| 1719 | 36900.37000.42500.42900.46200.117900.137500.692100 | Shuttering Work | 10d | 2027-04-02 | 2027-04-11 | 1716 |  | Sector-44 Noida(2) | 9384444 |
| 1720 | 36900.37000.42500.42900.46200.117900.137500.692200 | Reinforcement Work | 8d | 2027-04-08 | 2027-04-15 | 1719FS-4d |  | Sector-44 Noida(2) | 9384454 |
| 1721 | 36900.37000.42500.42900.46200.117900.137500.692300 | Conduiting work | 1d | 2027-04-15 | 2027-04-15 | 1720FS-1d |  | Sector-44 Noida(2) | 9384464 |
| 1722 | 36900.37000.42500.42900.46200.117900.137500.692400 | Concreteing work | 1d | 2027-04-16 | 2027-04-16 | 1719FF, 1720FF, 1721 |  | Sector-44 Noida(2) | 9384474 |
| 1723 | 36900.37000.42500.42900.46200.118000 | **Terrace to LMR Floor** | 11d | 2027-04-17 | 2027-04-27 |  | start no earlier than 2027-04-17 | Sector-44 Noida(2) | 9363494 |
| 1724 | 36900.37000.42500.42900.46200.118000.137400 | **LMR Floor Slab** | 11d | 2027-04-17 | 2027-04-27 |  | start no earlier than 2027-04-17 | Sector-44 Noida(2) | 9365144 |
| 1725 | 36900.37000.42500.42900.46200.118000.137400.692500 | Shuttering Work | 8d | 2027-04-17 | 2027-04-24 | 1722 |  | Sector-44 Noida(2) | 9384484 |
| 1726 | 36900.37000.42500.42900.46200.118000.137400.692600 | Reinforcement Work | 4d | 2027-04-23 | 2027-04-26 | 1725FS-2d |  | Sector-44 Noida(2) | 9384494 |
| 1727 | 36900.37000.42500.42900.46200.118000.137400.692700 | Conduiting work | 1d | 2027-04-26 | 2027-04-26 | 1726FS-1d |  | Sector-44 Noida(2) | 9384504 |
| 1728 | 36900.37000.42500.42900.46200.118000.137400.692800 | Concreteing work | 1d | 2027-04-27 | 2027-04-27 | 1725FF, 1726FF, 1727 |  | Sector-44 Noida(2) | 9384514 |
| 1729 | 36900.37000.42500.42900.46200.118100 | **LMR Floor to LMR Roof** | 11d | 2027-04-28 | 2027-05-08 |  | start no earlier than 2027-04-28 | Sector-44 Noida(2) | 9363504 |
| 1730 | 36900.37000.42500.42900.46200.118100.137300 | **LMR Roof Slab** | 11d | 2027-04-28 | 2027-05-08 |  | start no earlier than 2027-04-28 | Sector-44 Noida(2) | 9365154 |
| 1731 | 36900.37000.42500.42900.46200.118100.137300.692900 | Shuttering Work | 8d | 2027-04-28 | 2027-05-05 | 1728 |  | Sector-44 Noida(2) | 9384524 |
| 1732 | 36900.37000.42500.42900.46200.118100.137300.693000 | Reinforcement Work | 4d | 2027-05-04 | 2027-05-07 | 1731FS-2d |  | Sector-44 Noida(2) | 9384534 |
| 1733 | 36900.37000.42500.42900.46200.118100.137300.693100 | Conduiting work | 1d | 2027-05-07 | 2027-05-07 | 1732FS-1d |  | Sector-44 Noida(2) | 9384544 |
| 1734 | 36900.37000.42500.42900.46200.118100.137300.693200 | Concreteing work | 1d | 2027-05-08 | 2027-05-08 | 1731FF, 1732FF, 1733 |  | Sector-44 Noida(2) | 9384554 |
| 1735 | 36900.37000.42500.42900.46200.131300 | **OHT & Roof Features** | 18d | 2027-05-09 | 2027-05-26 |  | start no earlier than 2027-05-09 | Sector-44 Noida(2) | 9364204 |
| 1736 | 36900.37000.42500.42900.46200.131300.186600 | **OHT & Roof Features** | 18d | 2027-05-09 | 2027-05-26 |  | start no earlier than 2027-05-09 | Sector-44 Noida(2) | 9365614 |
| 1737 | 36900.37000.42500.42900.46200.131300.186600.693300 | Reinforcement Work | 11d | 2027-05-09 | 2027-05-19 | 1734 |  | Sector-44 Noida(2) | 9384564 |
| 1738 | 36900.37000.42500.42900.46200.131300.186600.693400 | Shuttering work | 9d | 2027-05-18 | 2027-05-26 | 1737FS-2d |  | Sector-44 Noida(2) | 9384574 |
| 1739 | 36900.37000.42500.42900.46200.131300.186600.693500 | Concreteing work | 7d | 2027-05-20 | 2027-05-26 | 1737FF, 1738FF |  | Sector-44 Noida(2) | 9384584 |
| 1740 | 36900.37000.42500.42900.47700 | **Post Pour Works** | 320d | 2026-05-17 | 2027-05-16 |  | start no earlier than 2026-05-17 | Sector-44 Noida(2) | 9360884 |
| 1741 | 36900.37000.42500.42900.47700.284500 | 1st Floor | 8d | 2026-05-17 | 2026-05-24 | 1596 |  | Sector-44 Noida(2) | 9367524 |
| 1742 | 36900.37000.42500.42900.47700.284600 | 2nd Floor | 8d | 2026-06-06 | 2026-06-13 | 1741, 1602 |  | Sector-44 Noida(2) | 9367534 |
| 1743 | 36900.37000.42500.42900.47700.284700 | 3rd Floor | 8d | 2026-07-06 | 2026-07-13 | 1742, 1608 |  | Sector-44 Noida(2) | 9367544 |
| 1744 | 36900.37000.42500.42900.47700.284800 | 4th Floor | 8d | 2026-08-05 | 2026-08-12 | 1743, 1620 |  | Sector-44 Noida(2) | 9367554 |
| 1745 | 36900.37000.42500.42900.47700.284900 | 5th Floor | 8d | 2026-08-17 | 2026-08-24 | 1744, 1626 |  | Sector-44 Noida(2) | 9367564 |
| 1746 | 36900.37000.42500.42900.47700.285000 | 6th Floor | 8d | 2026-08-29 | 2026-09-05 | 1745, 1632 |  | Sector-44 Noida(2) | 9367574 |
| 1747 | 36900.37000.42500.42900.47700.285100 | 7th Floor | 8d | 2026-09-06 | 2026-09-13 | 1746 |  | Sector-44 Noida(2) | 9367584 |
| 1748 | 36900.37000.42500.42900.47700.285200 | 8th Floor | 8d | 2026-09-22 | 2026-09-29 | 1747, 1644 |  | Sector-44 Noida(2) | 9367594 |
| 1749 | 36900.37000.42500.42900.47700.285300 | 9th Floor | 8d | 2026-10-04 | 2026-10-11 | 1748, 1650 |  | Sector-44 Noida(2) | 9367604 |
| 1750 | 36900.37000.42500.42900.47700.285400 | 10th Floor | 8d | 2026-10-16 | 2026-10-23 | 1749, 1656 |  | Sector-44 Noida(2) | 9367614 |
| 1751 | 36900.37000.42500.42900.47700.285500 | 11th Floor | 8d | 2026-10-28 | 2026-12-19 | 1750, 1662 |  | Sector-44 Noida(2) | 9367624 |
| 1752 | 36900.37000.42500.42900.47700.285600 | 12th Floor | 8d | 2026-12-24 | 2026-12-31 | 1751, 1668 |  | Sector-44 Noida(2) | 9367634 |
| 1753 | 36900.37000.42500.42900.47700.285700 | 13th Floor | 8d | 2027-01-05 | 2027-01-12 | 1752, 1674 |  | Sector-44 Noida(2) | 9367644 |
| 1754 | 36900.37000.42500.42900.47700.285800 | 14th Floor | 8d | 2027-01-20 | 2027-01-27 | 1753, 1680 |  | Sector-44 Noida(2) | 9367654 |
| 1755 | 36900.37000.42500.42900.47700.285900 | 15th Floor | 8d | 2027-02-01 | 2027-02-08 | 1754, 1686 |  | Sector-44 Noida(2) | 9367664 |
| 1756 | 36900.37000.42500.42900.47700.286000 | 16th Floor | 8d | 2027-02-13 | 2027-02-20 | 1755, 1692 |  | Sector-44 Noida(2) | 9367674 |
| 1757 | 36900.37000.42500.42900.47700.286100 | 17th Floor | 8d | 2027-02-25 | 2027-03-04 | 1756, 1698 |  | Sector-44 Noida(2) | 9367684 |
| 1758 | 36900.37000.42500.42900.47700.286200 | 18th Floor | 8d | 2027-03-09 | 2027-03-16 | 1757, 1704 |  | Sector-44 Noida(2) | 9367694 |
| 1759 | 36900.37000.42500.42900.47700.286300 | 19th Floor | 8d | 2027-03-21 | 2027-03-28 | 1758, 1710 |  | Sector-44 Noida(2) | 9367704 |
| 1760 | 36900.37000.42500.42900.47700.286400 | 20th Floor | 7d | 2027-04-02 | 2027-04-08 | 1759, 1716 |  | Sector-44 Noida(2) | 9367714 |
| 1761 | 36900.37000.42500.42900.47700.286500 | 21st Floor | 7d | 2027-04-09 | 2027-04-15 | 1760 |  | Sector-44 Noida(2) | 9367724 |
| 1762 | 36900.37000.42500.42900.47700.286600 | 22nd Floor | 7d | 2027-04-16 | 2027-04-22 | 1761 |  | Sector-44 Noida(2) | 9367734 |
| 1763 | 36900.37000.42500.42900.47700.286700 | 23rd Floor | 7d | 2027-04-23 | 2027-04-29 | 1762 |  | Sector-44 Noida(2) | 9367744 |
| 1764 | 36900.37000.42500.42900.47700.286800 | Terrace Floor | 7d | 2027-04-30 | 2027-05-06 | 1763 |  | Sector-44 Noida(2) | 9367754 |
| 1765 | 36900.37000.42500.42900.47700.286900 | LMR, OHT & Roof Feauters | 10d | 2027-05-07 | 2027-05-16 | 1764 |  | Sector-44 Noida(2) | 9367764 |

| ID | WBS | Task | Duration | Start | Finish | Predecessors | Constraint | Calendar | Unique_Task_ID |
| --- | --- | --- | --- | --- | --- | --- | --- | --- | --- |
| 1766 | 36900.37000.42500.42900.43200 | **Finishing works** | 438d | 2026-08-08 | 2028-01-17 |  | start no earlier than 2026-08-08 | Sector-44 Noida(2) | 9360764 |
| 1767 | 36900.37000.42500.42900.43200.44700 | **Flat finishings** | 438d | 2026-08-08 | 2028-01-17 |  | start no earlier than 2026-08-08 | Sector-44 Noida(2) | 9360804 |
| 1768 | 36900.37000.42500.42900.43200.44700.53200 | **1st Floor** | 118d | 2026-08-08 | 2027-01-17 |  | start no earlier than 2026-08-08 | Sector-44 Noida(2) | 9361704 |
| 1769 | 36900.37000.42500.42900.43200.44700.53200.693600 | Block Work | 15d | 2026-08-08 | 2026-08-22 | 1741FS+75d |  | Sector-44 Noida(2) | 9384594 |
| 1770 | 36900.37000.42500.42900.43200.44700.53200.693700 | Installation of temporary Main door | 5d | 2026-08-23 | 2026-08-27 | 1769 |  | Sector-44 Noida(2) | 9384604 |
| 1771 | 36900.37000.42500.42900.43200.44700.53200.693800 | Fire sprinkler pipe fixing | 5d | 2026-08-23 | 2026-08-27 | 1769 |  | Sector-44 Noida(2) | 9384614 |
| 1772 | 36900.37000.42500.42900.43200.44700.53200.693900 | Internal Plumbing Works | 9d | 2026-08-23 | 2026-08-31 | 1769 |  | Sector-44 Noida(2) | 9384624 |
| 1773 | 36900.37000.42500.42900.43200.44700.53200.694000 | Waterproofing | 10d | 2026-09-01 | 2026-09-10 | 1772 |  | Sector-44 Noida(2) | 9384634 |
| 1774 | 36900.37000.42500.42900.43200.44700.53200.694100 | Internal Plaster | 14d | 2026-08-13 | 2026-08-26 | 1769SS+5d |  | Sector-44 Noida(2) | 9384644 |
| 1775 | 36900.37000.42500.42900.43200.44700.53200.694200 | IPS flooring work | 13d | 2026-08-23 | 2026-09-04 | 1769 |  | Sector-44 Noida(2) | 9384654 |
| 1776 | 36900.37000.42500.42900.43200.44700.53200.694300 | Toilet dado work | 12d | 2026-09-11 | 2026-09-22 | 1772, 1773, 1774 |  | Sector-44 Noida(2) | 9384664 |
| 1777 | 36900.37000.42500.42900.43200.44700.53200.694400 | Toilet flooring work | 12d | 2026-09-23 | 2026-10-04 | 1776 |  | Sector-44 Noida(2) | 9384674 |
| 1778 | 36900.37000.42500.42900.43200.44700.53200.694500 | Living dinning flooring | 18d | 2026-10-05 | 2026-10-22 | 1775, 1777 |  | Sector-44 Noida(2) | 9384684 |
| 1779 | 36900.37000.42500.42900.43200.44700.53200.694600 | Electrical wiring work | 12d | 2026-10-13 | 2026-10-24 | 1778FS-10d |  | Sector-44 Noida(2) | 9384694 |
| 1780 | 36900.37000.42500.42900.43200.44700.53200.694700 | Aluminium door-window fixing | 8d | 2026-10-25 | 2026-12-16 | 1769FS-8d, 1770, 1779 |  | Sector-44 Noida(2) | 9384704 |
| 1781 | 36900.37000.42500.42900.43200.44700.53200.694800 | Putty primer coat | 12d | 2026-10-25 | 2026-12-20 | 1780FS-8d |  | Sector-44 Noida(2) | 9384714 |
| 1782 | 36900.37000.42500.42900.43200.44700.53200.694900 | Prehung door fixing | 10d | 2026-12-16 | 2026-12-25 | 1781FS-5d |  | Sector-44 Noida(2) | 9384724 |
| 1783 | 36900.37000.42500.42900.43200.44700.53200.695000 | Painting 1st coat | 13d | 2026-12-26 | 2027-01-07 | 1782 |  | Sector-44 Noida(2) | 9384734 |
| 1784 | 36900.37000.42500.42900.43200.44700.53200.695100 | False Ceiling panel fixing | 10d | 2027-01-08 | 2027-01-17 | 1783 |  | Sector-44 Noida(2) | 9384744 |
| 1785 | 36900.37000.42500.42900.43200.44700.53300 | **2nd Floor** | 124d | 2026-08-28 | 2027-02-12 |  | start no earlier than 2026-08-28 | Sector-44 Noida(2) | 9361694 |
| 1786 | 36900.37000.42500.42900.43200.44700.53300.695200 | Block Work | 15d | 2026-08-28 | 2026-09-11 | 1742FS+75d |  | Sector-44 Noida(2) | 9384754 |
| 1787 | 36900.37000.42500.42900.43200.44700.53300.695300 | Installation of temporary Main door | 5d | 2026-09-12 | 2026-09-16 | 1786 |  | Sector-44 Noida(2) | 9384764 |
| 1788 | 36900.37000.42500.42900.43200.44700.53300.695400 | Fire sprinkler pipe fixing | 5d | 2026-09-12 | 2026-09-16 | 1771, 1786 |  | Sector-44 Noida(2) | 9384774 |
| 1789 | 36900.37000.42500.42900.43200.44700.53300.695500 | Internal Plumbing Works | 9d | 2026-09-12 | 2026-09-20 | 1786 |  | Sector-44 Noida(2) | 9384784 |
| 1790 | 36900.37000.42500.42900.43200.44700.53300.695600 | Waterproofing | 10d | 2026-09-21 | 2026-09-30 | 1789 |  | Sector-44 Noida(2) | 9384794 |
| 1791 | 36900.37000.42500.42900.43200.44700.53300.695700 | Internal Plaster | 14d | 2026-10-01 | 2026-10-14 | 1789, 1790 |  | Sector-44 Noida(2) | 9384804 |
| 1792 | 36900.37000.42500.42900.43200.44700.53300.695800 | IPS flooring work | 13d | 2026-09-12 | 2026-09-24 | 1786 |  | Sector-44 Noida(2) | 9384814 |
| 1793 | 36900.37000.42500.42900.43200.44700.53300.695900 | Toilet dado work | 12d | 2026-10-15 | 2026-10-26 | 1789, 1790, 1791 |  | Sector-44 Noida(2) | 9384824 |
| 1794 | 36900.37000.42500.42900.43200.44700.53300.696000 | Toilet flooring work | 12d | 2026-10-27 | 2026-12-22 | 1793 |  | Sector-44 Noida(2) | 9384834 |
| 1795 | 36900.37000.42500.42900.43200.44700.53300.696100 | Living dinning flooring | 18d | 2026-12-23 | 2027-01-09 | 1792, 1794 |  | Sector-44 Noida(2) | 9384844 |
| 1796 | 36900.37000.42500.42900.43200.44700.53300.696200 | Electrical wiring work | 12d | 2026-12-31 | 2027-01-11 | 1795FS-10d |  | Sector-44 Noida(2) | 9384854 |
| 1797 | 36900.37000.42500.42900.43200.44700.53300.696300 | Aluminium door-window fixing | 8d | 2027-01-04 | 2027-01-11 | 1787, 1796FS-8d |  | Sector-44 Noida(2) | 9384864 |
| 1798 | 36900.37000.42500.42900.43200.44700.53300.696400 | Putty primer coat | 12d | 2027-01-04 | 2027-01-15 | 1797FS-8d |  | Sector-44 Noida(2) | 9384874 |
| 1799 | 36900.37000.42500.42900.43200.44700.53300.696500 | Prehung door fixing | 10d | 2027-01-11 | 2027-01-20 | 1798FS-5d |  | Sector-44 Noida(2) | 9384884 |
| 1800 | 36900.37000.42500.42900.43200.44700.53300.696600 | Painting 1st coat | 13d | 2027-01-21 | 2027-02-02 | 1799 |  | Sector-44 Noida(2) | 9384894 |
| 1801 | 36900.37000.42500.42900.43200.44700.53300.696700 | False Ceiling panel fixing | 10d | 2027-02-03 | 2027-02-12 | 1784, 1800 |  | Sector-44 Noida(2) | 9384904 |

| ID | WBS | Task | Duration | Start | Finish | Predecessors | Constraint | Calendar | Unique_Task_ID |
| --- | --- | --- | --- | --- | --- | --- | --- | --- | --- |
| 1802 | 36900.37000.42500.42900.43200.44700.53400 | **3rd Floor** | 124d | 2026-09-27 | 2027-03-14 |  | start no earlier than 2026-09-27 | Sector-44 Noida(2) | 9361674 |
| 1803 | 36900.37000.42500.42900.43200.44700.53400.696800 | Block Work | 15d | 2026-09-27 | 2026-10-11 | 1743FS+75d |  | Sector-44 Noida(2) | 9384914 |
| 1804 | 36900.37000.42500.42900.43200.44700.53400.696900 | Installation of temporary Main door | 5d | 2026-10-12 | 2026-10-16 | 1803 |  | Sector-44 Noida(2) | 9384924 |
| 1805 | 36900.37000.42500.42900.43200.44700.53400.697000 | Fire sprinkler pipe fixing | 5d | 2026-10-12 | 2026-10-16 | 1788, 1803 |  | Sector-44 Noida(2) | 9384934 |
| 1806 | 36900.37000.42500.42900.43200.44700.53400.697100 | Internal Plumbing Works | 9d | 2026-10-12 | 2026-10-20 | 1803 |  | Sector-44 Noida(2) | 9384944 |
| 1807 | 36900.37000.42500.42900.43200.44700.53400.697200 | Waterproofing | 10d | 2026-10-21 | 2026-10-30 | 1806 |  | Sector-44 Noida(2) | 9384954 |
| 1808 | 36900.37000.42500.42900.43200.44700.53400.697300 | Internal Plaster | 14d | 2026-10-31 | 2026-12-28 | 1806, 1807 |  | Sector-44 Noida(2) | 9384964 |
| 1809 | 36900.37000.42500.42900.43200.44700.53400.697400 | IPS flooring work | 13d | 2026-10-12 | 2026-10-24 | 1803 |  | Sector-44 Noida(2) | 9384974 |
| 1810 | 36900.37000.42500.42900.43200.44700.53400.697500 | Toilet dado work | 12d | 2026-12-29 | 2027-01-09 | 1806, 1807, 1808 |  | Sector-44 Noida(2) | 9384984 |
| 1811 | 36900.37000.42500.42900.43200.44700.53400.697600 | Toilet flooring work | 12d | 2027-01-10 | 2027-01-21 | 1810 |  | Sector-44 Noida(2) | 9384994 |
| 1812 | 36900.37000.42500.42900.43200.44700.53400.697700 | Living dinning flooring | 18d | 2027-01-22 | 2027-02-08 | 1809, 1811 |  | Sector-44 Noida(2) | 9385004 |
| 1813 | 36900.37000.42500.42900.43200.44700.53400.697800 | Electrical wiring work | 12d | 2027-01-30 | 2027-02-10 | 1812FS-10d |  | Sector-44 Noida(2) | 9385014 |
| 1814 | 36900.37000.42500.42900.43200.44700.53400.697900 | Aluminium door-window fixing | 8d | 2027-02-03 | 2027-02-10 | 1804, 1813FS-8d |  | Sector-44 Noida(2) | 9385024 |
| 1815 | 36900.37000.42500.42900.43200.44700.53400.698000 | Putty primer coat | 12d | 2027-02-03 | 2027-02-14 | 1814FS-8d |  | Sector-44 Noida(2) | 9385034 |
| 1816 | 36900.37000.42500.42900.43200.44700.53400.698100 | Prehung door fixing | 10d | 2027-02-10 | 2027-02-19 | 1815FS-5d |  | Sector-44 Noida(2) | 9385044 |
| 1817 | 36900.37000.42500.42900.43200.44700.53400.698200 | Painting 1st coat | 13d | 2027-02-20 | 2027-03-04 | 1816 |  | Sector-44 Noida(2) | 9385054 |
| 1818 | 36900.37000.42500.42900.43200.44700.53400.698300 | False Ceiling panel fixing | 10d | 2027-03-05 | 2027-03-14 | 1801, 1817 |  | Sector-44 Noida(2) | 9385064 |
| 1819 | 36900.37000.42500.42900.43200.44700.53500 | **4th Floor** | 119d | 2026-10-27 | 2027-04-08 |  | start no earlier than 2026-10-27 | Sector-44 Noida(2) | 9361664 |
| 1820 | 36900.37000.42500.42900.43200.44700.53500.698400 | Block Work | 15d | 2026-10-27 | 2026-12-25 | 1744FS+75d |  | Sector-44 Noida(2) | 9385074 |
| 1821 | 36900.37000.42500.42900.43200.44700.53500.698500 | Installation of temporary Main door | 5d | 2026-12-26 | 2026-12-30 | 1820 |  | Sector-44 Noida(2) | 9385084 |
| 1822 | 36900.37000.42500.42900.43200.44700.53500.698600 | Fire sprinkler pipe fixing | 5d | 2026-12-26 | 2026-12-30 | 1805, 1820 |  | Sector-44 Noida(2) | 9385094 |
| 1823 | 36900.37000.42500.42900.43200.44700.53500.698700 | Internal Plumbing Works | 9d | 2026-12-26 | 2027-01-03 | 1820 |  | Sector-44 Noida(2) | 9385104 |
| 1824 | 36900.37000.42500.42900.43200.44700.53500.698800 | Waterproofing | 10d | 2027-01-04 | 2027-01-13 | 1823 |  | Sector-44 Noida(2) | 9385114 |
| 1825 | 36900.37000.42500.42900.43200.44700.53500.698900 | Internal Plaster | 14d | 2027-01-14 | 2027-01-27 | 1823, 1824 |  | Sector-44 Noida(2) | 9385124 |
| 1826 | 36900.37000.42500.42900.43200.44700.53500.699000 | IPS flooring work | 13d | 2026-12-26 | 2027-01-07 | 1820 |  | Sector-44 Noida(2) | 9385134 |
| 1827 | 36900.37000.42500.42900.43200.44700.53500.699100 | Toilet dado work | 12d | 2027-01-28 | 2027-02-08 | 1823, 1824, 1825 |  | Sector-44 Noida(2) | 9385144 |
| 1828 | 36900.37000.42500.42900.43200.44700.53500.699200 | Toilet flooring work | 12d | 2027-02-09 | 2027-02-20 | 1827 |  | Sector-44 Noida(2) | 9385154 |
| 1829 | 36900.37000.42500.42900.43200.44700.53500.699300 | Living dinning flooring | 18d | 2027-02-21 | 2027-03-10 | 1826, 1828 |  | Sector-44 Noida(2) | 9385164 |
| 1830 | 36900.37000.42500.42900.43200.44700.53500.699400 | Electrical wiring work | 12d | 2027-03-01 | 2027-03-12 | 1829FS-10d |  | Sector-44 Noida(2) | 9385174 |
| 1831 | 36900.37000.42500.42900.43200.44700.53500.699500 | Aluminium door-window fixing | 8d | 2027-03-05 | 2027-03-12 | 1821, 1830FS-8d |  | Sector-44 Noida(2) | 9385184 |
| 1832 | 36900.37000.42500.42900.43200.44700.53500.699600 | Putty primer coat | 12d | 2027-03-05 | 2027-03-16 | 1831FS-8d |  | Sector-44 Noida(2) | 9385194 |
| 1833 | 36900.37000.42500.42900.43200.44700.53500.699700 | Prehung door fixing | 10d | 2027-03-12 | 2027-03-21 | 1832FS-5d |  | Sector-44 Noida(2) | 9385204 |
| 1834 | 36900.37000.42500.42900.43200.44700.53500.699800 | Painting 1st coat | 10d | 2027-03-22 | 2027-03-31 | 1833 |  | Sector-44 Noida(2) | 9385214 |
| 1835 | 36900.37000.42500.42900.43200.44700.53500.699900 | False Ceiling panel fixing | 8d | 2027-04-01 | 2027-04-08 | 1818, 1834 |  | Sector-44 Noida(2) | 9385224 |

| ID | WBS | Task | Duration | Start | Finish | Predecessors | Constraint | Calendar | Unique_Task_ID |
| --- | --- | --- | --- | --- | --- | --- | --- | --- | --- |
| 1836 | 36900.37000.42500.42900.43200.44700.53600 | **5th Floor** | 121d | 2026-12-23 | 2027-04-22 |  | start no earlier than 2026-12-23 | Sector-44 Noida(2) | 9361644 |
| 1837 | 36900.37000.42500.42900.43200.44700.53600.700000 | Block Work | 10d | 2026-12-23 | 2027-01-01 | 1745FS+75d |  | Sector-44 Noida(2) | 9385234 |
| 1838 | 36900.37000.42500.42900.43200.44700.53600.700100 | Installation of temporary Main door | 7d | 2027-01-02 | 2027-01-08 | 1837 |  | Sector-44 Noida(2) | 9385244 |
| 1839 | 36900.37000.42500.42900.43200.44700.53600.700200 | Fire sprinkler pipe fixing | 3d | 2027-01-02 | 2027-01-04 | 1822, 1837 |  | Sector-44 Noida(2) | 9385254 |
| 1840 | 36900.37000.42500.42900.43200.44700.53600.700300 | Internal Plumbing Works | 7d | 2027-01-02 | 2027-01-08 | 1837 |  | Sector-44 Noida(2) | 9385264 |
| 1841 | 36900.37000.42500.42900.43200.44700.53600.700400 | Waterproofing | 12d | 2027-01-09 | 2027-01-20 | 1840 |  | Sector-44 Noida(2) | 9385274 |
| 1842 | 36900.37000.42500.42900.43200.44700.53600.700500 | Internal Plaster | 15d | 2027-01-21 | 2027-02-04 | 1840, 1841 |  | Sector-44 Noida(2) | 9385284 |
| 1843 | 36900.37000.42500.42900.43200.44700.53600.700600 | IPS flooring work | 11d | 2027-01-02 | 2027-01-12 | 1837 |  | Sector-44 Noida(2) | 9385294 |
| 1844 | 36900.37000.42500.42900.43200.44700.53600.700700 | Toilet dado work | 16d | 2027-02-05 | 2027-02-20 | 1840, 1841, 1842 |  | Sector-44 Noida(2) | 9385304 |
| 1845 | 36900.37000.42500.42900.43200.44700.53600.700800 | Toilet flooring work | 16d | 2027-02-21 | 2027-03-08 | 1844 |  | Sector-44 Noida(2) | 9385314 |
| 1846 | 36900.37000.42500.42900.43200.44700.53600.700900 | Living dinning flooring | 16d | 2027-03-09 | 2027-03-24 | 1843, 1845 |  | Sector-44 Noida(2) | 9385324 |
| 1847 | 36900.37000.42500.42900.43200.44700.53600.701000 | Electrical wiring work | 10d | 2027-03-15 | 2027-03-24 | 1846FS-10d |  | Sector-44 Noida(2) | 9385334 |
| 1848 | 36900.37000.42500.42900.43200.44700.53600.701100 | Aluminium door-window fixing | 17d | 2027-03-17 | 2027-04-02 | 1838, 1847FS-8d |  | Sector-44 Noida(2) | 9385344 |
| 1849 | 36900.37000.42500.42900.43200.44700.53600.701200 | Putty primer coat | 8d | 2027-03-26 | 2027-04-02 | 1848FS-8d |  | Sector-44 Noida(2) | 9385354 |
| 1850 | 36900.37000.42500.42900.43200.44700.53600.701300 | Prehung door fixing | 7d | 2027-03-29 | 2027-04-04 | 1849FS-5d |  | Sector-44 Noida(2) | 9385364 |
| 1851 | 36900.37000.42500.42900.43200.44700.53600.701400 | Painting 1st coat | 10d | 2027-04-05 | 2027-04-14 | 1850 |  | Sector-44 Noida(2) | 9385374 |
| 1852 | 36900.37000.42500.42900.43200.44700.53600.701500 | False Ceiling panel fixing | 8d | 2027-04-15 | 2027-04-22 | 1835, 1851 |  | Sector-44 Noida(2) | 9385384 |
| 1853 | 36900.37000.42500.42900.43200.44700.53700 | **6th Floor** | 121d | 2027-01-04 | 2027-05-04 |  | start no earlier than 2027-01-04 | Sector-44 Noida(2) | 9361614 |
| 1854 | 36900.37000.42500.42900.43200.44700.53700.701600 | Block Work | 10d | 2027-01-04 | 2027-01-13 | 1746FS+75d |  | Sector-44 Noida(2) | 9385394 |
| 1855 | 36900.37000.42500.42900.43200.44700.53700.701700 | Installation of temporary Main door | 7d | 2027-01-14 | 2027-01-20 | 1854 |  | Sector-44 Noida(2) | 9385404 |
| 1856 | 36900.37000.42500.42900.43200.44700.53700.701800 | Fire sprinkler pipe fixing | 3d | 2027-01-14 | 2027-01-16 | 1839, 1854 |  | Sector-44 Noida(2) | 9385414 |
| 1857 | 36900.37000.42500.42900.43200.44700.53700.701900 | Internal Plumbing Works | 7d | 2027-01-14 | 2027-01-20 | 1854 |  | Sector-44 Noida(2) | 9385424 |
| 1858 | 36900.37000.42500.42900.43200.44700.53700.702000 | Waterproofing | 12d | 2027-01-21 | 2027-02-01 | 1857 |  | Sector-44 Noida(2) | 9385434 |
| 1859 | 36900.37000.42500.42900.43200.44700.53700.702100 | Internal Plaster | 15d | 2027-02-02 | 2027-02-16 | 1857, 1858 |  | Sector-44 Noida(2) | 9385444 |
| 1860 | 36900.37000.42500.42900.43200.44700.53700.702200 | IPS flooring work | 11d | 2027-01-14 | 2027-01-24 | 1854 |  | Sector-44 Noida(2) | 9385454 |
| 1861 | 36900.37000.42500.42900.43200.44700.53700.702300 | Toilet dado work | 16d | 2027-02-17 | 2027-03-04 | 1857, 1858, 1859 |  | Sector-44 Noida(2) | 9385464 |
| 1862 | 36900.37000.42500.42900.43200.44700.53700.702400 | Toilet flooring work | 16d | 2027-03-05 | 2027-03-20 | 1861 |  | Sector-44 Noida(2) | 9385474 |
| 1863 | 36900.37000.42500.42900.43200.44700.53700.702500 | Living dinning flooring | 16d | 2027-03-21 | 2027-04-05 | 1860, 1862 |  | Sector-44 Noida(2) | 9385484 |
| 1864 | 36900.37000.42500.42900.43200.44700.53700.702600 | Electrical wiring work | 10d | 2027-03-27 | 2027-04-05 | 1863FS-10d |  | Sector-44 Noida(2) | 9385494 |
| 1865 | 36900.37000.42500.42900.43200.44700.53700.702700 | Aluminium door-window fixing | 17d | 2027-03-29 | 2027-04-14 | 1855, 1864FS-8d |  | Sector-44 Noida(2) | 9385504 |
| 1866 | 36900.37000.42500.42900.43200.44700.53700.702800 | Putty primer coat | 8d | 2027-04-07 | 2027-04-14 | 1865FS-8d |  | Sector-44 Noida(2) | 9385514 |
| 1867 | 36900.37000.42500.42900.43200.44700.53700.702900 | Prehung door fixing | 7d | 2027-04-10 | 2027-04-16 | 1866FS-5d |  | Sector-44 Noida(2) | 9385524 |
| 1868 | 36900.37000.42500.42900.43200.44700.53700.703000 | Painting 1st coat | 10d | 2027-04-17 | 2027-04-26 | 1867 |  | Sector-44 Noida(2) | 9385534 |
| 1869 | 36900.37000.42500.42900.43200.44700.53700.703100 | False Ceiling panel fixing | 8d | 2027-04-27 | 2027-05-04 | 1852, 1868 |  | Sector-44 Noida(2) | 9385544 |

| ID | WBS | Task | Duration | Start | Finish | Predecessors | Constraint | Calendar | Unique_Task_ID |
| --- | --- | --- | --- | --- | --- | --- | --- | --- | --- |
| 1870 | 36900.37000.42500.42900.43200.44700.53800 | **7th Floor** | 121d | 2027-01-12 | 2027-05-12 |  | start no earlier than 2027-01-12 | Sector-44 Noida(2) | 9361604 |
| 1871 | 36900.37000.42500.42900.43200.44700.53800.703200 | Block Work | 10d | 2027-01-12 | 2027-01-21 | 1747FS+75d |  | Sector-44 Noida(2) | 9385554 |
| 1872 | 36900.37000.42500.42900.43200.44700.53800.703300 | Installation of temporary Main door | 7d | 2027-01-22 | 2027-01-28 | 1871 |  | Sector-44 Noida(2) | 9385564 |
| 1873 | 36900.37000.42500.42900.43200.44700.53800.703400 | Fire sprinkler pipe fixing | 3d | 2027-01-22 | 2027-01-24 | 1856, 1871 |  | Sector-44 Noida(2) | 9385574 |
| 1874 | 36900.37000.42500.42900.43200.44700.53800.703500 | Internal Plumbing Works | 7d | 2027-01-22 | 2027-01-28 | 1871 |  | Sector-44 Noida(2) | 9385584 |
| 1875 | 36900.37000.42500.42900.43200.44700.53800.703600 | Waterproofing | 12d | 2027-01-29 | 2027-02-09 | 1874 |  | Sector-44 Noida(2) | 9385594 |
| 1876 | 36900.37000.42500.42900.43200.44700.53800.703700 | Internal Plaster | 15d | 2027-02-10 | 2027-02-24 | 1874, 1875 |  | Sector-44 Noida(2) | 9385604 |
| 1877 | 36900.37000.42500.42900.43200.44700.53800.703800 | IPS flooring work | 11d | 2027-01-22 | 2027-02-01 | 1871 |  | Sector-44 Noida(2) | 9385614 |
| 1878 | 36900.37000.42500.42900.43200.44700.53800.703900 | Toilet dado work | 16d | 2027-02-25 | 2027-03-12 | 1874, 1875, 1876 |  | Sector-44 Noida(2) | 9385624 |
| 1879 | 36900.37000.42500.42900.43200.44700.53800.704000 | Toilet flooring work | 16d | 2027-03-13 | 2027-03-28 | 1878 |  | Sector-44 Noida(2) | 9385634 |
| 1880 | 36900.37000.42500.42900.43200.44700.53800.704100 | Living dinning flooring | 16d | 2027-03-29 | 2027-04-13 | 1877, 1879 |  | Sector-44 Noida(2) | 9385644 |
| 1881 | 36900.37000.42500.42900.43200.44700.53800.704200 | Electrical wiring work | 10d | 2027-04-04 | 2027-04-13 | 1880FS-10d |  | Sector-44 Noida(2) | 9385654 |
| 1882 | 36900.37000.42500.42900.43200.44700.53800.704300 | Aluminium door-window fixing | 17d | 2027-04-06 | 2027-04-22 | 1872, 1881FS-8d |  | Sector-44 Noida(2) | 9385664 |
| 1883 | 36900.37000.42500.42900.43200.44700.53800.704400 | Putty primer coat | 8d | 2027-04-15 | 2027-04-22 | 1882FS-8d |  | Sector-44 Noida(2) | 9385674 |
| 1884 | 36900.37000.42500.42900.43200.44700.53800.704500 | Prehung door fixing | 7d | 2027-04-18 | 2027-04-24 | 1883FS-5d |  | Sector-44 Noida(2) | 9385684 |
| 1885 | 36900.37000.42500.42900.43200.44700.53800.704600 | Painting 1st coat | 10d | 2027-04-25 | 2027-05-04 | 1884 |  | Sector-44 Noida(2) | 9385694 |
| 1886 | 36900.37000.42500.42900.43200.44700.53800.704700 | False Ceiling panel fixing | 8d | 2027-05-05 | 2027-05-12 | 1869, 1885 |  | Sector-44 Noida(2) | 9385704 |
| 1887 | 36900.37000.42500.42900.43200.44700.53900 | **8th Floor** | 121d | 2027-01-28 | 2027-05-28 |  | start no earlier than 2027-01-28 | Sector-44 Noida(2) | 9361594 |
| 1888 | 36900.37000.42500.42900.43200.44700.53900.704800 | Block Work | 10d | 2027-01-28 | 2027-02-06 | 1748FS+75d |  | Sector-44 Noida(2) | 9385714 |
| 1889 | 36900.37000.42500.42900.43200.44700.53900.704900 | Installation of temporary Main door | 7d | 2027-02-07 | 2027-02-13 | 1888 |  | Sector-44 Noida(2) | 9385724 |
| 1890 | 36900.37000.42500.42900.43200.44700.53900.705000 | Fire sprinkler pipe fixing | 3d | 2027-02-07 | 2027-02-09 | 1873, 1888 |  | Sector-44 Noida(2) | 9385734 |
| 1891 | 36900.37000.42500.42900.43200.44700.53900.705100 | Internal Plumbing Works | 7d | 2027-02-07 | 2027-02-13 | 1888 |  | Sector-44 Noida(2) | 9385744 |
| 1892 | 36900.37000.42500.42900.43200.44700.53900.705200 | Waterproofing | 12d | 2027-02-14 | 2027-02-25 | 1891 |  | Sector-44 Noida(2) | 9385754 |
| 1893 | 36900.37000.42500.42900.43200.44700.53900.705300 | Internal Plaster | 15d | 2027-02-26 | 2027-03-12 | 1891, 1892 |  | Sector-44 Noida(2) | 9385764 |
| 1894 | 36900.37000.42500.42900.43200.44700.53900.705400 | IPS flooring work | 11d | 2027-02-07 | 2027-02-17 | 1888 |  | Sector-44 Noida(2) | 9385774 |
| 1895 | 36900.37000.42500.42900.43200.44700.53900.705500 | Toilet dado work | 16d | 2027-03-13 | 2027-03-28 | 1891, 1892, 1893 |  | Sector-44 Noida(2) | 9385784 |
| 1896 | 36900.37000.42500.42900.43200.44700.53900.705600 | Toilet flooring work | 16d | 2027-03-29 | 2027-04-13 | 1895 |  | Sector-44 Noida(2) | 9385794 |
| 1897 | 36900.37000.42500.42900.43200.44700.53900.705700 | Living dinning flooring | 16d | 2027-04-14 | 2027-04-29 | 1894, 1896 |  | Sector-44 Noida(2) | 9385804 |
| 1898 | 36900.37000.42500.42900.43200.44700.53900.705800 | Electrical wiring work | 10d | 2027-04-20 | 2027-04-29 | 1897FS-10d |  | Sector-44 Noida(2) | 9385814 |
| 1899 | 36900.37000.42500.42900.43200.44700.53900.705900 | Aluminium door-window fixing | 17d | 2027-04-22 | 2027-05-08 | 1889, 1898FS-8d |  | Sector-44 Noida(2) | 9385824 |
| 1900 | 36900.37000.42500.42900.43200.44700.53900.706000 | Putty primer coat | 8d | 2027-05-01 | 2027-05-08 | 1899FS-8d |  | Sector-44 Noida(2) | 9385834 |
| 1901 | 36900.37000.42500.42900.43200.44700.53900.706100 | Prehung door fixing | 7d | 2027-05-04 | 2027-05-10 | 1900FS-5d |  | Sector-44 Noida(2) | 9385844 |
| 1902 | 36900.37000.42500.42900.43200.44700.53900.706200 | Painting 1st coat | 10d | 2027-05-11 | 2027-05-20 | 1901 |  | Sector-44 Noida(2) | 9385854 |
| 1903 | 36900.37000.42500.42900.43200.44700.53900.706300 | False Ceiling panel fixing | 8d | 2027-05-21 | 2027-05-28 | 1886, 1902 |  | Sector-44 Noida(2) | 9385864 |

| ID | WBS | Task | Duration | Start | Finish | Predecessors | Constraint | Calendar | Unique_Task_ID |
| --- | --- | --- | --- | --- | --- | --- | --- | --- | --- |
| 1904 | 36900.37000.42500.42900.43200.44700.54000 | **9th Floor** | 121d | 2027-02-09 | 2027-06-09 |  | start no earlier than 2027-02-09 | Sector-44 Noida(2) | 9361584 |
| 1905 | 36900.37000.42500.42900.43200.44700.54000.706400 | Block Work | 10d | 2027-02-09 | 2027-02-18 | 1749FS+75d |  | Sector-44 Noida(2) | 9385874 |
| 1906 | 36900.37000.42500.42900.43200.44700.54000.706500 | Installation of temporary Main door | 7d | 2027-02-19 | 2027-02-25 | 1905 |  | Sector-44 Noida(2) | 9385884 |
| 1907 | 36900.37000.42500.42900.43200.44700.54000.706600 | Fire sprinkler pipe fixing | 3d | 2027-02-19 | 2027-02-21 | 1890, 1905 |  | Sector-44 Noida(2) | 9385894 |
| 1908 | 36900.37000.42500.42900.43200.44700.54000.706700 | Internal Plumbing Works | 7d | 2027-02-19 | 2027-02-25 | 1905 |  | Sector-44 Noida(2) | 9385904 |
| 1909 | 36900.37000.42500.42900.43200.44700.54000.706800 | Waterproofing | 12d | 2027-02-26 | 2027-03-09 | 1908 |  | Sector-44 Noida(2) | 9385914 |
| 1910 | 36900.37000.42500.42900.43200.44700.54000.706900 | Internal Plaster | 15d | 2027-03-10 | 2027-03-24 | 1908, 1909 |  | Sector-44 Noida(2) | 9385924 |
| 1911 | 36900.37000.42500.42900.43200.44700.54000.707000 | IPS flooring work | 11d | 2027-02-19 | 2027-03-01 | 1905 |  | Sector-44 Noida(2) | 9385934 |
| 1912 | 36900.37000.42500.42900.43200.44700.54000.707100 | Toilet dado work | 16d | 2027-03-25 | 2027-04-09 | 1908, 1909, 1910 |  | Sector-44 Noida(2) | 9385944 |
| 1913 | 36900.37000.42500.42900.43200.44700.54000.707200 | Toilet flooring work | 16d | 2027-04-10 | 2027-04-25 | 1912 |  | Sector-44 Noida(2) | 9385954 |
| 1914 | 36900.37000.42500.42900.43200.44700.54000.707300 | Living dinning flooring | 16d | 2027-04-26 | 2027-05-11 | 1911, 1913 |  | Sector-44 Noida(2) | 9385964 |
| 1915 | 36900.37000.42500.42900.43200.44700.54000.707400 | Electrical wiring work | 10d | 2027-05-02 | 2027-05-11 | 1914FS-10d |  | Sector-44 Noida(2) | 9385974 |
| 1916 | 36900.37000.42500.42900.43200.44700.54000.707500 | Aluminium door-window fixing | 17d | 2027-05-04 | 2027-05-20 | 1906, 1915FS-8d |  | Sector-44 Noida(2) | 9385984 |
| 1917 | 36900.37000.42500.42900.43200.44700.54000.707600 | Putty primer coat | 8d | 2027-05-13 | 2027-05-20 | 1916FS-8d |  | Sector-44 Noida(2) | 9385994 |
| 1918 | 36900.37000.42500.42900.43200.44700.54000.707700 | Prehung door fixing | 7d | 2027-05-16 | 2027-05-22 | 1917FS-5d |  | Sector-44 Noida(2) | 9386004 |
| 1919 | 36900.37000.42500.42900.43200.44700.54000.707800 | Painting 1st coat | 10d | 2027-05-23 | 2027-06-01 | 1918 |  | Sector-44 Noida(2) | 9386014 |
| 1920 | 36900.37000.42500.42900.43200.44700.54000.707900 | False Ceiling panel fixing | 8d | 2027-06-02 | 2027-06-09 | 1903, 1919 |  | Sector-44 Noida(2) | 9386024 |
| 1921 | 36900.37000.42500.42900.43200.44700.54100 | **10th Floor** | 121d | 2027-02-21 | 2027-06-21 |  | start no earlier than 2027-02-21 | Sector-44 Noida(2) | 9361564 |
| 1922 | 36900.37000.42500.42900.43200.44700.54100.708000 | Block Work | 10d | 2027-02-21 | 2027-03-02 | 1750FS+75d |  | Sector-44 Noida(2) | 9386034 |
| 1923 | 36900.37000.42500.42900.43200.44700.54100.708100 | Installation of temporary Main door | 7d | 2027-03-03 | 2027-03-09 | 1922 |  | Sector-44 Noida(2) | 9386044 |
| 1924 | 36900.37000.42500.42900.43200.44700.54100.708200 | Fire sprinkler pipe fixing | 3d | 2027-03-03 | 2027-03-05 | 1907, 1922 |  | Sector-44 Noida(2) | 9386054 |
| 1925 | 36900.37000.42500.42900.43200.44700.54100.708300 | Internal Plumbing Works | 7d | 2027-03-03 | 2027-03-09 | 1922 |  | Sector-44 Noida(2) | 9386064 |
| 1926 | 36900.37000.42500.42900.43200.44700.54100.708400 | Waterproofing | 12d | 2027-03-10 | 2027-03-21 | 1925 |  | Sector-44 Noida(2) | 9386074 |
| 1927 | 36900.37000.42500.42900.43200.44700.54100.708500 | Internal Plaster | 15d | 2027-03-22 | 2027-04-05 | 1925, 1926 |  | Sector-44 Noida(2) | 9386084 |
| 1928 | 36900.37000.42500.42900.43200.44700.54100.708600 | IPS flooring work | 11d | 2027-03-03 | 2027-03-13 | 1922 |  | Sector-44 Noida(2) | 9386094 |
| 1929 | 36900.37000.42500.42900.43200.44700.54100.708700 | Toilet dado work | 16d | 2027-04-06 | 2027-04-21 | 1925, 1926, 1927 |  | Sector-44 Noida(2) | 9386104 |
| 1930 | 36900.37000.42500.42900.43200.44700.54100.708800 | Toilet flooring work | 16d | 2027-04-22 | 2027-05-07 | 1929 |  | Sector-44 Noida(2) | 9386114 |
| 1931 | 36900.37000.42500.42900.43200.44700.54100.708900 | Living dinning flooring | 16d | 2027-05-08 | 2027-05-23 | 1928, 1930 |  | Sector-44 Noida(2) | 9386124 |
| 1932 | 36900.37000.42500.42900.43200.44700.54100.709000 | Electrical wiring work | 10d | 2027-05-14 | 2027-05-23 | 1931FS-10d |  | Sector-44 Noida(2) | 9386134 |
| 1933 | 36900.37000.42500.42900.43200.44700.54100.709100 | Aluminium door-window fixing | 17d | 2027-05-16 | 2027-06-01 | 1923, 1932FS-8d |  | Sector-44 Noida(2) | 9386144 |
| 1934 | 36900.37000.42500.42900.43200.44700.54100.709200 | Putty primer coat | 8d | 2027-05-25 | 2027-06-01 | 1933FS-8d |  | Sector-44 Noida(2) | 9386154 |
| 1935 | 36900.37000.42500.42900.43200.44700.54100.709300 | Prehung door fixing | 7d | 2027-05-28 | 2027-06-03 | 1934FS-5d |  | Sector-44 Noida(2) | 9386164 |
| 1936 | 36900.37000.42500.42900.43200.44700.54100.709400 | Painting 1st coat | 10d | 2027-06-04 | 2027-06-13 | 1935 |  | Sector-44 Noida(2) | 9386174 |
| 1937 | 36900.37000.42500.42900.43200.44700.54100.709500 | False Ceiling panel fixing | 8d | 2027-06-14 | 2027-06-21 | 1920, 1936 |  | Sector-44 Noida(2) | 9386184 |

| ID | WBS | Task | Duration | Start | Finish | Predecessors | Constraint | Calendar | Unique_Task_ID |
| --- | --- | --- | --- | --- | --- | --- | --- | --- | --- |
| 1938 | 36900.37000.42500.42900.43200.44700.54200 | **11th Floor** | 121d | 2027-03-05 | 2027-07-03 |  | start no earlier than 2027-03-05 | Sector-44 Noida(2) | 9361524 |
| 1939 | 36900.37000.42500.42900.43200.44700.54200.709600 | Block Work | 10d | 2027-03-05 | 2027-03-14 | 1751FS+75d |  | Sector-44 Noida(2) | 9386194 |
| 1940 | 36900.37000.42500.42900.43200.44700.54200.709700 | Installation of temporary Main door | 7d | 2027-03-15 | 2027-03-21 | 1939 |  | Sector-44 Noida(2) | 9386204 |
| 1941 | 36900.37000.42500.42900.43200.44700.54200.709800 | Fire sprinkler pipe fixing | 3d | 2027-03-15 | 2027-03-17 | 1924, 1939 |  | Sector-44 Noida(2) | 9386214 |
| 1942 | 36900.37000.42500.42900.43200.44700.54200.709900 | Internal Plumbing Works | 7d | 2027-03-15 | 2027-03-21 | 1939 |  | Sector-44 Noida(2) | 9386224 |
| 1943 | 36900.37000.42500.42900.43200.44700.54200.710000 | Waterproofing | 12d | 2027-03-22 | 2027-04-02 | 1942 |  | Sector-44 Noida(2) | 9386234 |
| 1944 | 36900.37000.42500.42900.43200.44700.54200.710100 | Internal Plaster | 15d | 2027-04-03 | 2027-04-17 | 1942, 1943 |  | Sector-44 Noida(2) | 9386244 |
| 1945 | 36900.37000.42500.42900.43200.44700.54200.710200 | IPS flooring work | 11d | 2027-03-15 | 2027-03-25 | 1939 |  | Sector-44 Noida(2) | 9386254 |
| 1946 | 36900.37000.42500.42900.43200.44700.54200.710300 | Toilet dado work | 16d | 2027-04-18 | 2027-05-03 | 1942, 1943, 1944 |  | Sector-44 Noida(2) | 9386264 |
| 1947 | 36900.37000.42500.42900.43200.44700.54200.710400 | Toilet flooring work | 16d | 2027-05-04 | 2027-05-19 | 1946 |  | Sector-44 Noida(2) | 9386274 |
| 1948 | 36900.37000.42500.42900.43200.44700.54200.710500 | Living dinning flooring | 16d | 2027-05-20 | 2027-06-04 | 1945, 1947 |  | Sector-44 Noida(2) | 9386284 |
| 1949 | 36900.37000.42500.42900.43200.44700.54200.710600 | Electrical wiring work | 10d | 2027-05-26 | 2027-06-04 | 1948FS-10d |  | Sector-44 Noida(2) | 9386294 |
| 1950 | 36900.37000.42500.42900.43200.44700.54200.710700 | Aluminium door-window fixing | 17d | 2027-05-28 | 2027-06-13 | 1940, 1949FS-8d |  | Sector-44 Noida(2) | 9386304 |
| 1951 | 36900.37000.42500.42900.43200.44700.54200.710800 | Putty primer coat | 8d | 2027-06-06 | 2027-06-13 | 1950FS-8d |  | Sector-44 Noida(2) | 9386314 |
| 1952 | 36900.37000.42500.42900.43200.44700.54200.710900 | Prehung door fixing | 7d | 2027-06-09 | 2027-06-15 | 1951FS-5d |  | Sector-44 Noida(2) | 9386324 |
| 1953 | 36900.37000.42500.42900.43200.44700.54200.711000 | Painting 1st coat | 10d | 2027-06-16 | 2027-06-25 | 1952 |  | Sector-44 Noida(2) | 9386334 |
| 1954 | 36900.37000.42500.42900.43200.44700.54200.711100 | False Ceiling panel fixing | 8d | 2027-06-26 | 2027-07-03 | 1937, 1953 |  | Sector-44 Noida(2) | 9386344 |
| 1955 | 36900.37000.42500.42900.43200.44700.54300 | **12th Floor** | 121d | 2027-03-17 | 2027-07-15 |  | start no earlier than 2027-03-17 | Sector-44 Noida(2) | 9361514 |
| 1956 | 36900.37000.42500.42900.43200.44700.54300.711200 | Block Work | 10d | 2027-03-17 | 2027-03-26 | 1752FS+75d |  | Sector-44 Noida(2) | 9386354 |
| 1957 | 36900.37000.42500.42900.43200.44700.54300.711300 | Installation of temporary Main door | 7d | 2027-03-27 | 2027-04-02 | 1956 |  | Sector-44 Noida(2) | 9386364 |
| 1958 | 36900.37000.42500.42900.43200.44700.54300.711400 | Fire sprinkler pipe fixing | 3d | 2027-03-27 | 2027-03-29 | 1941, 1956 |  | Sector-44 Noida(2) | 9386374 |
| 1959 | 36900.37000.42500.42900.43200.44700.54300.711500 | Internal Plumbing Works | 7d | 2027-03-27 | 2027-04-02 | 1956 |  | Sector-44 Noida(2) | 9386384 |
| 1960 | 36900.37000.42500.42900.43200.44700.54300.711600 | Waterproofing | 12d | 2027-04-03 | 2027-04-14 | 1959 |  | Sector-44 Noida(2) | 9386394 |
| 1961 | 36900.37000.42500.42900.43200.44700.54300.711700 | Internal Plaster | 15d | 2027-04-15 | 2027-04-29 | 1959, 1960 |  | Sector-44 Noida(2) | 9386404 |
| 1962 | 36900.37000.42500.42900.43200.44700.54300.711800 | IPS flooring work | 11d | 2027-03-27 | 2027-04-06 | 1956 |  | Sector-44 Noida(2) | 9386414 |
| 1963 | 36900.37000.42500.42900.43200.44700.54300.711900 | Toilet dado work | 16d | 2027-04-30 | 2027-05-15 | 1959, 1960, 1961 |  | Sector-44 Noida(2) | 9386424 |
| 1964 | 36900.37000.42500.42900.43200.44700.54300.712000 | Toilet flooring work | 16d | 2027-05-16 | 2027-05-31 | 1963 |  | Sector-44 Noida(2) | 9386434 |
| 1965 | 36900.37000.42500.42900.43200.44700.54300.712100 | Living dinning flooring | 16d | 2027-06-01 | 2027-06-16 | 1962, 1964 |  | Sector-44 Noida(2) | 9386444 |
| 1966 | 36900.37000.42500.42900.43200.44700.54300.712200 | Electrical wiring work | 10d | 2027-06-07 | 2027-06-16 | 1965FS-10d |  | Sector-44 Noida(2) | 9386454 |
| 1967 | 36900.37000.42500.42900.43200.44700.54300.712300 | Aluminium door-window fixing | 17d | 2027-06-09 | 2027-06-25 | 1957, 1966FS-8d |  | Sector-44 Noida(2) | 9386464 |
| 1968 | 36900.37000.42500.42900.43200.44700.54300.712400 | Putty primer coat | 8d | 2027-06-18 | 2027-06-25 | 1967FS-8d |  | Sector-44 Noida(2) | 9386474 |
| 1969 | 36900.37000.42500.42900.43200.44700.54300.712500 | Prehung door fixing | 7d | 2027-06-21 | 2027-06-27 | 1968FS-5d |  | Sector-44 Noida(2) | 9386484 |
| 1970 | 36900.37000.42500.42900.43200.44700.54300.712600 | Painting 1st coat | 10d | 2027-06-28 | 2027-07-07 | 1969 |  | Sector-44 Noida(2) | 9386494 |
| 1971 | 36900.37000.42500.42900.43200.44700.54300.712700 | False Ceiling panel fixing | 8d | 2027-07-08 | 2027-07-15 | 1954, 1970 |  | Sector-44 Noida(2) | 9386504 |

| ID | WBS | Task | Duration | Start | Finish | Predecessors | Constraint | Calendar | Unique_Task_ID |
| --- | --- | --- | --- | --- | --- | --- | --- | --- | --- |
| 1972 | 36900.37000.42500.42900.43200.44700.54400 | **13th Floor** | 121d | 2027-03-29 | 2027-07-27 |  | start no earlier than 2027-03-29 | Sector-44 Noida(2) | 9361504 |
| 1973 | 36900.37000.42500.42900.43200.44700.54400.712800 | Block Work | 10d | 2027-03-29 | 2027-04-07 | 1753FS+75d |  | Sector-44 Noida(2) | 9386514 |
| 1974 | 36900.37000.42500.42900.43200.44700.54400.712900 | Installation of temporary Main door | 7d | 2027-04-08 | 2027-04-14 | 1973 |  | Sector-44 Noida(2) | 9386524 |
| 1975 | 36900.37000.42500.42900.43200.44700.54400.713000 | Fire sprinkler pipe fixing | 3d | 2027-04-08 | 2027-04-10 | 1958, 1973 |  | Sector-44 Noida(2) | 9386534 |
| 1976 | 36900.37000.42500.42900.43200.44700.54400.713100 | Internal Plumbing Works | 7d | 2027-04-08 | 2027-04-14 | 1973 |  | Sector-44 Noida(2) | 9386544 |
| 1977 | 36900.37000.42500.42900.43200.44700.54400.713200 | Waterproofing | 12d | 2027-04-15 | 2027-04-26 | 1976 |  | Sector-44 Noida(2) | 9386554 |
| 1978 | 36900.37000.42500.42900.43200.44700.54400.713300 | Internal Plaster | 15d | 2027-04-27 | 2027-05-11 | 1976, 1977 |  | Sector-44 Noida(2) | 9386564 |
| 1979 | 36900.37000.42500.42900.43200.44700.54400.713400 | IPS flooring work | 11d | 2027-04-08 | 2027-04-18 | 1973 |  | Sector-44 Noida(2) | 9386574 |
| 1980 | 36900.37000.42500.42900.43200.44700.54400.713500 | Toilet dado work | 16d | 2027-05-12 | 2027-05-27 | 1976, 1977, 1978 |  | Sector-44 Noida(2) | 9386584 |
| 1981 | 36900.37000.42500.42900.43200.44700.54400.713600 | Toilet flooring work | 16d | 2027-05-28 | 2027-06-12 | 1980 |  | Sector-44 Noida(2) | 9386594 |
| 1982 | 36900.37000.42500.42900.43200.44700.54400.713700 | Living dinning flooring | 16d | 2027-06-13 | 2027-06-28 | 1979, 1981 |  | Sector-44 Noida(2) | 9386604 |
| 1983 | 36900.37000.42500.42900.43200.44700.54400.713800 | Electrical wiring work | 10d | 2027-06-19 | 2027-06-28 | 1982FS-10d |  | Sector-44 Noida(2) | 9386614 |
| 1984 | 36900.37000.42500.42900.43200.44700.54400.713900 | Aluminium door-window fixing | 17d | 2027-06-21 | 2027-07-07 | 1974, 1983FS-8d |  | Sector-44 Noida(2) | 9386624 |
| 1985 | 36900.37000.42500.42900.43200.44700.54400.714000 | Putty primer coat | 8d | 2027-06-30 | 2027-07-07 | 1984FS-8d |  | Sector-44 Noida(2) | 9386634 |
| 1986 | 36900.37000.42500.42900.43200.44700.54400.714100 | Prehung door fixing | 7d | 2027-07-03 | 2027-07-09 | 1985FS-5d |  | Sector-44 Noida(2) | 9386644 |
| 1987 | 36900.37000.42500.42900.43200.44700.54400.714200 | Painting 1st coat | 10d | 2027-07-10 | 2027-07-19 | 1986 |  | Sector-44 Noida(2) | 9386654 |
| 1988 | 36900.37000.42500.42900.43200.44700.54400.714300 | False Ceiling panel fixing | 8d | 2027-07-20 | 2027-07-27 | 1971, 1987 |  | Sector-44 Noida(2) | 9386664 |
| 1989 | 36900.37000.42500.42900.43200.44700.54500 | **14th Floor** | 121d | 2027-04-13 | 2027-08-11 |  | start no earlier than 2027-04-13 | Sector-44 Noida(2) | 9361484 |
| 1990 | 36900.37000.42500.42900.43200.44700.54500.714400 | Block Work | 10d | 2027-04-13 | 2027-04-22 | 1754FS+75d |  | Sector-44 Noida(2) | 9386674 |
| 1991 | 36900.37000.42500.42900.43200.44700.54500.714500 | Installation of temporary Main door | 7d | 2027-04-23 | 2027-04-29 | 1990 |  | Sector-44 Noida(2) | 9386684 |
| 1992 | 36900.37000.42500.42900.43200.44700.54500.714600 | Fire sprinkler pipe fixing | 3d | 2027-04-23 | 2027-04-25 | 1975, 1990 |  | Sector-44 Noida(2) | 9386694 |
| 1993 | 36900.37000.42500.42900.43200.44700.54500.714700 | Internal Plumbing Works | 7d | 2027-04-23 | 2027-04-29 | 1990 |  | Sector-44 Noida(2) | 9386704 |
| 1994 | 36900.37000.42500.42900.43200.44700.54500.714800 | Waterproofing | 12d | 2027-04-30 | 2027-05-11 | 1993 |  | Sector-44 Noida(2) | 9386714 |
| 1995 | 36900.37000.42500.42900.43200.44700.54500.714900 | Internal Plaster | 15d | 2027-05-12 | 2027-05-26 | 1993, 1994 |  | Sector-44 Noida(2) | 9386724 |
| 1996 | 36900.37000.42500.42900.43200.44700.54500.715000 | IPS flooring work | 11d | 2027-04-23 | 2027-05-03 | 1990 |  | Sector-44 Noida(2) | 9386734 |
| 1997 | 36900.37000.42500.42900.43200.44700.54500.715100 | Toilet dado work | 16d | 2027-05-27 | 2027-06-11 | 1993, 1994, 1995 |  | Sector-44 Noida(2) | 9386744 |
| 1998 | 36900.37000.42500.42900.43200.44700.54500.715200 | Toilet flooring work | 16d | 2027-06-12 | 2027-06-27 | 1997 |  | Sector-44 Noida(2) | 9386754 |
| 1999 | 36900.37000.42500.42900.43200.44700.54500.715300 | Living dinning flooring | 16d | 2027-06-28 | 2027-07-13 | 1996, 1998 |  | Sector-44 Noida(2) | 9386764 |
| 2000 | 36900.37000.42500.42900.43200.44700.54500.715400 | Electrical wiring work | 10d | 2027-07-04 | 2027-07-13 | 1999FS-10d |  | Sector-44 Noida(2) | 9386774 |
| 2001 | 36900.37000.42500.42900.43200.44700.54500.715500 | Aluminium door-window fixing | 17d | 2027-07-06 | 2027-07-22 | 1991, 2000FS-8d |  | Sector-44 Noida(2) | 9386784 |
| 2002 | 36900.37000.42500.42900.43200.44700.54500.715600 | Putty primer coat | 8d | 2027-07-15 | 2027-07-22 | 2001FS-8d |  | Sector-44 Noida(2) | 9386794 |
| 2003 | 36900.37000.42500.42900.43200.44700.54500.715700 | Prehung door fixing | 7d | 2027-07-18 | 2027-07-24 | 2002FS-5d |  | Sector-44 Noida(2) | 9386804 |
| 2004 | 36900.37000.42500.42900.43200.44700.54500.715800 | Painting 1st coat | 10d | 2027-07-25 | 2027-08-03 | 2003 |  | Sector-44 Noida(2) | 9386814 |
| 2005 | 36900.37000.42500.42900.43200.44700.54500.715900 | False Ceiling panel fixing | 8d | 2027-08-04 | 2027-08-11 | 1988, 2004 |  | Sector-44 Noida(2) | 9386824 |

| ID | WBS | Task | Duration | Start | Finish | Predecessors | Constraint | Calendar | Unique_Task_ID |
| --- | --- | --- | --- | --- | --- | --- | --- | --- | --- |
| 2006 | 36900.37000.42500.42900.43200.44700.54600 | **15th Floor** | 121d | 2027-04-25 | 2027-08-23 |  | start no earlier than 2027-04-25 | Sector-44 Noida(2) | 9361474 |
| 2007 | 36900.37000.42500.42900.43200.44700.54600.716000 | Block Work | 10d | 2027-04-25 | 2027-05-04 | 1755FS+75d |  | Sector-44 Noida(2) | 9386834 |
| 2008 | 36900.37000.42500.42900.43200.44700.54600.716100 | Installation of temporary Main door | 7d | 2027-05-05 | 2027-05-11 | 2007 |  | Sector-44 Noida(2) | 9386844 |
| 2009 | 36900.37000.42500.42900.43200.44700.54600.716200 | Fire sprinkler pipe fixing | 3d | 2027-05-05 | 2027-05-07 | 1992, 2007 |  | Sector-44 Noida(2) | 9386854 |
| 2010 | 36900.37000.42500.42900.43200.44700.54600.716300 | Internal Plumbing Works | 7d | 2027-05-05 | 2027-05-11 | 2007 |  | Sector-44 Noida(2) | 9386864 |
| 2011 | 36900.37000.42500.42900.43200.44700.54600.716400 | Waterproofing | 12d | 2027-05-12 | 2027-05-23 | 2010 |  | Sector-44 Noida(2) | 9386874 |
| 2012 | 36900.37000.42500.42900.43200.44700.54600.716500 | Internal Plaster | 15d | 2027-05-24 | 2027-06-07 | 2010, 2011 |  | Sector-44 Noida(2) | 9386884 |
| 2013 | 36900.37000.42500.42900.43200.44700.54600.716600 | IPS flooring work | 11d | 2027-05-05 | 2027-05-15 | 2007 |  | Sector-44 Noida(2) | 9386894 |
| 2014 | 36900.37000.42500.42900.43200.44700.54600.716700 | Toilet dado work | 16d | 2027-06-08 | 2027-06-23 | 2010, 2011, 2012 |  | Sector-44 Noida(2) | 9386904 |
| 2015 | 36900.37000.42500.42900.43200.44700.54600.716800 | Toilet flooring work | 16d | 2027-06-24 | 2027-07-09 | 2014 |  | Sector-44 Noida(2) | 9386914 |
| 2016 | 36900.37000.42500.42900.43200.44700.54600.716900 | Living dinning flooring | 16d | 2027-07-10 | 2027-07-25 | 2013, 2015 |  | Sector-44 Noida(2) | 9386924 |
| 2017 | 36900.37000.42500.42900.43200.44700.54600.717000 | Electrical wiring work | 10d | 2027-07-16 | 2027-07-25 | 2016FS-10d |  | Sector-44 Noida(2) | 9386934 |
| 2018 | 36900.37000.42500.42900.43200.44700.54600.717100 | Aluminium door-window fixing | 17d | 2027-07-18 | 2027-08-03 | 2008, 2017FS-8d |  | Sector-44 Noida(2) | 9386944 |
| 2019 | 36900.37000.42500.42900.43200.44700.54600.717200 | Putty primer coat | 8d | 2027-07-27 | 2027-08-03 | 2018FS-8d |  | Sector-44 Noida(2) | 9386954 |
| 2020 | 36900.37000.42500.42900.43200.44700.54600.717300 | Prehung door fixing | 7d | 2027-07-30 | 2027-08-05 | 2019FS-5d |  | Sector-44 Noida(2) | 9386964 |
| 2021 | 36900.37000.42500.42900.43200.44700.54600.717400 | Painting 1st coat | 10d | 2027-08-06 | 2027-08-15 | 2020 |  | Sector-44 Noida(2) | 9386974 |
| 2022 | 36900.37000.42500.42900.43200.44700.54600.717500 | False Ceiling panel fixing | 8d | 2027-08-16 | 2027-08-23 | 2005, 2021 |  | Sector-44 Noida(2) | 9386984 |
| 2023 | 36900.37000.42500.42900.43200.44700.54700 | **16th Floor** | 121d | 2027-05-07 | 2027-09-04 |  | start no earlier than 2027-05-07 | Sector-44 Noida(2) | 9361454 |
| 2024 | 36900.37000.42500.42900.43200.44700.54700.717600 | Block Work | 10d | 2027-05-07 | 2027-05-16 | 1756FS+75d |  | Sector-44 Noida(2) | 9386994 |
| 2025 | 36900.37000.42500.42900.43200.44700.54700.717700 | Installation of temporary Main door | 7d | 2027-05-17 | 2027-05-23 | 2024 |  | Sector-44 Noida(2) | 9387004 |
| 2026 | 36900.37000.42500.42900.43200.44700.54700.717800 | Fire sprinkler pipe fixing | 3d | 2027-05-17 | 2027-05-19 | 2009, 2024 |  | Sector-44 Noida(2) | 9387014 |
| 2027 | 36900.37000.42500.42900.43200.44700.54700.717900 | Internal Plumbing Works | 7d | 2027-05-17 | 2027-05-23 | 2024 |  | Sector-44 Noida(2) | 9387024 |
| 2028 | 36900.37000.42500.42900.43200.44700.54700.718000 | Waterproofing | 12d | 2027-05-24 | 2027-06-04 | 2027 |  | Sector-44 Noida(2) | 9387034 |
| 2029 | 36900.37000.42500.42900.43200.44700.54700.718100 | Internal Plaster | 15d | 2027-06-05 | 2027-06-19 | 2027, 2028 |  | Sector-44 Noida(2) | 9387044 |
| 2030 | 36900.37000.42500.42900.43200.44700.54700.718200 | IPS flooring work | 11d | 2027-05-17 | 2027-05-27 | 2024 |  | Sector-44 Noida(2) | 9387054 |
| 2031 | 36900.37000.42500.42900.43200.44700.54700.718300 | Toilet dado work | 16d | 2027-06-20 | 2027-07-05 | 2027, 2028, 2029 |  | Sector-44 Noida(2) | 9387064 |
| 2032 | 36900.37000.42500.42900.43200.44700.54700.718400 | Toilet flooring work | 16d | 2027-07-06 | 2027-07-21 | 2031 |  | Sector-44 Noida(2) | 9387074 |
| 2033 | 36900.37000.42500.42900.43200.44700.54700.718500 | Living dinning flooring | 16d | 2027-07-22 | 2027-08-06 | 2030, 2032 |  | Sector-44 Noida(2) | 9387084 |
| 2034 | 36900.37000.42500.42900.43200.44700.54700.718600 | Electrical wiring work | 10d | 2027-07-28 | 2027-08-06 | 2033FS-10d |  | Sector-44 Noida(2) | 9387094 |
| 2035 | 36900.37000.42500.42900.43200.44700.54700.718700 | Aluminium door-window fixing | 17d | 2027-07-30 | 2027-08-15 | 2025, 2034FS-8d |  | Sector-44 Noida(2) | 9387104 |
| 2036 | 36900.37000.42500.42900.43200.44700.54700.718800 | Putty primer coat | 8d | 2027-08-08 | 2027-08-15 | 2035FS-8d |  | Sector-44 Noida(2) | 9387114 |
| 2037 | 36900.37000.42500.42900.43200.44700.54700.718900 | Prehung door fixing | 7d | 2027-08-11 | 2027-08-17 | 2036FS-5d |  | Sector-44 Noida(2) | 9387124 |
| 2038 | 36900.37000.42500.42900.43200.44700.54700.719000 | Painting 1st coat | 10d | 2027-08-18 | 2027-08-27 | 2037 |  | Sector-44 Noida(2) | 9387134 |
| 2039 | 36900.37000.42500.42900.43200.44700.54700.719100 | False Ceiling panel fixing | 8d | 2027-08-28 | 2027-09-04 | 2022, 2038 |  | Sector-44 Noida(2) | 9387144 |

| ID | WBS | Task | Duration | Start | Finish | Predecessors | Constraint | Calendar | Unique_Task_ID |
| --- | --- | --- | --- | --- | --- | --- | --- | --- | --- |
| 2040 | 36900.37000.42500.42900.43200.44700.54800 | **17th Floor** | 121d | 2027-05-19 | 2027-09-16 |  | start no earlier than 2027-05-19 | Sector-44 Noida(2) | 9361444 |
| 2041 | 36900.37000.42500.42900.43200.44700.54800.719200 | Block Work | 10d | 2027-05-19 | 2027-05-28 | 1757FS+75d |  | Sector-44 Noida(2) | 9387154 |
| 2042 | 36900.37000.42500.42900.43200.44700.54800.719300 | Installation of temporary Main door | 7d | 2027-05-29 | 2027-06-04 | 2041 |  | Sector-44 Noida(2) | 9387164 |
| 2043 | 36900.37000.42500.42900.43200.44700.54800.719400 | Fire sprinkler pipe fixing | 3d | 2027-05-29 | 2027-05-31 | 2026, 2041 |  | Sector-44 Noida(2) | 9387174 |
| 2044 | 36900.37000.42500.42900.43200.44700.54800.719500 | Internal Plumbing Works | 7d | 2027-05-29 | 2027-06-04 | 2041 |  | Sector-44 Noida(2) | 9387184 |
| 2045 | 36900.37000.42500.42900.43200.44700.54800.719600 | Waterproofing | 12d | 2027-06-05 | 2027-06-16 | 2044 |  | Sector-44 Noida(2) | 9387194 |
| 2046 | 36900.37000.42500.42900.43200.44700.54800.719700 | Internal Plaster | 15d | 2027-06-17 | 2027-07-01 | 2044, 2045 |  | Sector-44 Noida(2) | 9387204 |
| 2047 | 36900.37000.42500.42900.43200.44700.54800.719800 | IPS flooring work | 11d | 2027-05-29 | 2027-06-08 | 2041 |  | Sector-44 Noida(2) | 9387214 |
| 2048 | 36900.37000.42500.42900.43200.44700.54800.719900 | Toilet dado work | 16d | 2027-07-02 | 2027-07-17 | 2044, 2045, 2046 |  | Sector-44 Noida(2) | 9387224 |
| 2049 | 36900.37000.42500.42900.43200.44700.54800.720000 | Toilet flooring work | 16d | 2027-07-18 | 2027-08-02 | 2048 |  | Sector-44 Noida(2) | 9387234 |
| 2050 | 36900.37000.42500.42900.43200.44700.54800.720100 | Living dinning flooring | 16d | 2027-08-03 | 2027-08-18 | 2047, 2049 |  | Sector-44 Noida(2) | 9387244 |
| 2051 | 36900.37000.42500.42900.43200.44700.54800.720200 | Electrical wiring work | 10d | 2027-08-09 | 2027-08-18 | 2050FS-10d |  | Sector-44 Noida(2) | 9387254 |
| 2052 | 36900.37000.42500.42900.43200.44700.54800.720300 | Aluminium door-window fixing | 17d | 2027-08-11 | 2027-08-27 | 2042, 2051FS-8d |  | Sector-44 Noida(2) | 9387264 |
| 2053 | 36900.37000.42500.42900.43200.44700.54800.720400 | Putty primer coat | 8d | 2027-08-20 | 2027-08-27 | 2052FS-8d |  | Sector-44 Noida(2) | 9387274 |
| 2054 | 36900.37000.42500.42900.43200.44700.54800.720500 | Prehung door fixing | 7d | 2027-08-23 | 2027-08-29 | 2053FS-5d |  | Sector-44 Noida(2) | 9387284 |
| 2055 | 36900.37000.42500.42900.43200.44700.54800.720600 | Painting 1st coat | 10d | 2027-08-30 | 2027-09-08 | 2054 |  | Sector-44 Noida(2) | 9387294 |
| 2056 | 36900.37000.42500.42900.43200.44700.54800.720700 | False Ceiling panel fixing | 8d | 2027-09-09 | 2027-09-16 | 2039, 2055 |  | Sector-44 Noida(2) | 9387304 |
| 2057 | 36900.37000.42500.42900.43200.44700.54900 | **18th Floor** | 124d | 2027-05-31 | 2027-10-01 |  | start no earlier than 2027-05-31 | Sector-44 Noida(2) | 9361424 |
| 2058 | 36900.37000.42500.42900.43200.44700.54900.720800 | Block Work | 10d | 2027-05-31 | 2027-06-09 | 1758FS+75d |  | Sector-44 Noida(2) | 9387314 |
| 2059 | 36900.37000.42500.42900.43200.44700.54900.720900 | Installation of temporary Main door | 7d | 2027-06-10 | 2027-06-16 | 2058 |  | Sector-44 Noida(2) | 9387324 |
| 2060 | 36900.37000.42500.42900.43200.44700.54900.721000 | Fire sprinkler pipe fixing | 3d | 2027-06-10 | 2027-06-12 | 2043, 2058 |  | Sector-44 Noida(2) | 9387334 |
| 2061 | 36900.37000.42500.42900.43200.44700.54900.721100 | Internal Plumbing Works | 10d | 2027-06-10 | 2027-06-19 | 2058 |  | Sector-44 Noida(2) | 9387344 |
| 2062 | 36900.37000.42500.42900.43200.44700.54900.721200 | Waterproofing | 12d | 2027-06-20 | 2027-07-01 | 2061 |  | Sector-44 Noida(2) | 9387354 |
| 2063 | 36900.37000.42500.42900.43200.44700.54900.721300 | Internal Plaster | 15d | 2027-07-02 | 2027-07-16 | 2061, 2062 |  | Sector-44 Noida(2) | 9387364 |
| 2064 | 36900.37000.42500.42900.43200.44700.54900.721400 | IPS flooring work | 11d | 2027-06-10 | 2027-06-20 | 2058 |  | Sector-44 Noida(2) | 9387374 |
| 2065 | 36900.37000.42500.42900.43200.44700.54900.721500 | Toilet dado work | 16d | 2027-07-17 | 2027-08-01 | 2061, 2062, 2063 |  | Sector-44 Noida(2) | 9387384 |
| 2066 | 36900.37000.42500.42900.43200.44700.54900.721600 | Toilet flooring work | 16d | 2027-08-02 | 2027-08-17 | 2065 |  | Sector-44 Noida(2) | 9387394 |
| 2067 | 36900.37000.42500.42900.43200.44700.54900.721700 | Living dinning flooring | 16d | 2027-08-18 | 2027-09-02 | 2064, 2066 |  | Sector-44 Noida(2) | 9387404 |
| 2068 | 36900.37000.42500.42900.43200.44700.54900.721800 | Electrical wiring work | 10d | 2027-08-24 | 2027-09-02 | 2067FS-10d |  | Sector-44 Noida(2) | 9387414 |
| 2069 | 36900.37000.42500.42900.43200.44700.54900.721900 | Aluminium door-window fixing | 17d | 2027-08-26 | 2027-09-11 | 2059, 2068FS-8d |  | Sector-44 Noida(2) | 9387424 |
| 2070 | 36900.37000.42500.42900.43200.44700.54900.722000 | Putty primer coat | 8d | 2027-09-04 | 2027-09-11 | 2069FS-8d |  | Sector-44 Noida(2) | 9387434 |
| 2071 | 36900.37000.42500.42900.43200.44700.54900.722100 | Prehung door fixing | 7d | 2027-09-07 | 2027-09-13 | 2070FS-5d |  | Sector-44 Noida(2) | 9387444 |
| 2072 | 36900.37000.42500.42900.43200.44700.54900.722200 | Painting 1st coat | 10d | 2027-09-14 | 2027-09-23 | 2071 |  | Sector-44 Noida(2) | 9387454 |
| 2073 | 36900.37000.42500.42900.43200.44700.54900.722300 | False Ceiling panel fixing | 8d | 2027-09-24 | 2027-10-01 | 2056, 2072 |  | Sector-44 Noida(2) | 9387464 |

| ID | WBS | Task | Duration | Start | Finish | Predecessors | Constraint | Calendar | Unique_Task_ID |
| --- | --- | --- | --- | --- | --- | --- | --- | --- | --- |
| 2074 | 36900.37000.42500.42900.43200.44700.55000 | **19th Floor** | 121d | 2027-06-12 | 2027-10-10 |  | start no earlier than 2027-06-12 | Sector-44 Noida(2) | 9361394 |
| 2075 | 36900.37000.42500.42900.43200.44700.55000.722400 | Block Work | 10d | 2027-06-12 | 2027-06-21 | 1759FS+75d |  | Sector-44 Noida(2) | 9387474 |
| 2076 | 36900.37000.42500.42900.43200.44700.55000.722500 | Installation of temporary Main door | 7d | 2027-06-22 | 2027-06-28 | 2075 |  | Sector-44 Noida(2) | 9387484 |
| 2077 | 36900.37000.42500.42900.43200.44700.55000.722600 | Fire sprinkler pipe fixing | 3d | 2027-06-22 | 2027-06-24 | 2060, 2075 |  | Sector-44 Noida(2) | 9387494 |
| 2078 | 36900.37000.42500.42900.43200.44700.55000.722700 | Internal Plumbing Works | 7d | 2027-06-22 | 2027-06-28 | 2075 |  | Sector-44 Noida(2) | 9387504 |
| 2079 | 36900.37000.42500.42900.43200.44700.55000.722800 | Waterproofing | 12d | 2027-06-29 | 2027-07-10 | 2078 |  | Sector-44 Noida(2) | 9387514 |
| 2080 | 36900.37000.42500.42900.43200.44700.55000.722900 | Internal Plaster | 15d | 2027-07-11 | 2027-07-25 | 2078, 2079 |  | Sector-44 Noida(2) | 9387524 |
| 2081 | 36900.37000.42500.42900.43200.44700.55000.723000 | IPS flooring work | 11d | 2027-06-22 | 2027-07-02 | 2075 |  | Sector-44 Noida(2) | 9387534 |
| 2082 | 36900.37000.42500.42900.43200.44700.55000.723100 | Toilet dado work | 16d | 2027-07-26 | 2027-08-10 | 2078, 2079, 2080 |  | Sector-44 Noida(2) | 9387544 |
| 2083 | 36900.37000.42500.42900.43200.44700.55000.723200 | Toilet flooring work | 16d | 2027-08-11 | 2027-08-26 | 2082 |  | Sector-44 Noida(2) | 9387554 |
| 2084 | 36900.37000.42500.42900.43200.44700.55000.723300 | Living dinning flooring | 16d | 2027-08-27 | 2027-09-11 | 2081, 2083 |  | Sector-44 Noida(2) | 9387564 |
| 2085 | 36900.37000.42500.42900.43200.44700.55000.723400 | Electrical wiring work | 10d | 2027-09-02 | 2027-09-11 | 2084FS-10d |  | Sector-44 Noida(2) | 9387574 |
| 2086 | 36900.37000.42500.42900.43200.44700.55000.723500 | Aluminium door-window fixing | 17d | 2027-09-04 | 2027-09-20 | 2076, 2085FS-8d |  | Sector-44 Noida(2) | 9387584 |
| 2087 | 36900.37000.42500.42900.43200.44700.55000.723600 | Putty primer coat | 8d | 2027-09-13 | 2027-09-20 | 2086FS-8d |  | Sector-44 Noida(2) | 9387594 |
| 2088 | 36900.37000.42500.42900.43200.44700.55000.723700 | Prehung door fixing | 7d | 2027-09-16 | 2027-09-22 | 2087FS-5d |  | Sector-44 Noida(2) | 9387604 |
| 2089 | 36900.37000.42500.42900.43200.44700.55000.723800 | Painting 1st coat | 10d | 2027-09-23 | 2027-10-02 | 2088 |  | Sector-44 Noida(2) | 9387614 |
| 2090 | 36900.37000.42500.42900.43200.44700.55000.723900 | False Ceiling panel fixing | 8d | 2027-10-03 | 2027-10-10 | 2073, 2089 |  | Sector-44 Noida(2) | 9387624 |
| 2091 | 36900.37000.42500.42900.43200.44700.55100 | **20th Floor** | 118d | 2027-06-23 | 2027-10-18 |  | start no earlier than 2027-06-23 | Sector-44 Noida(2) | 9361384 |
| 2092 | 36900.37000.42500.42900.43200.44700.55100.724000 | Block Work | 10d | 2027-06-23 | 2027-07-02 | 1760FS+75d |  | Sector-44 Noida(2) | 9387634 |
| 2093 | 36900.37000.42500.42900.43200.44700.55100.724100 | Installation of temporary Main door | 7d | 2027-07-03 | 2027-07-09 | 2092 |  | Sector-44 Noida(2) | 9387644 |
| 2094 | 36900.37000.42500.42900.43200.44700.55100.724200 | Fire sprinkler pipe fixing | 3d | 2027-07-03 | 2027-07-05 | 2077, 2092 |  | Sector-44 Noida(2) | 9387654 |
| 2095 | 36900.37000.42500.42900.43200.44700.55100.724300 | Internal Plumbing Works | 7d | 2027-07-03 | 2027-07-09 | 2092 |  | Sector-44 Noida(2) | 9387664 |
| 2096 | 36900.37000.42500.42900.43200.44700.55100.724400 | Waterproofing | 12d | 2027-07-10 | 2027-07-21 | 2095 |  | Sector-44 Noida(2) | 9387674 |
| 2097 | 36900.37000.42500.42900.43200.44700.55100.724500 | Internal Plaster | 5d | 2027-07-22 | 2027-07-26 | 2095, 2096 |  | Sector-44 Noida(2) | 9387684 |
| 2098 | 36900.37000.42500.42900.43200.44700.55100.724600 | IPS flooring work | 1d | 2027-07-03 | 2027-07-03 | 2092 |  | Sector-44 Noida(2) | 9387694 |
| 2099 | 36900.37000.42500.42900.43200.44700.55100.724700 | Toilet dado work | 16d | 2027-07-27 | 2027-08-11 | 2095, 2096, 2097 |  | Sector-44 Noida(2) | 9387704 |
| 2100 | 36900.37000.42500.42900.43200.44700.55100.724800 | Toilet flooring work | 16d | 2027-08-12 | 2027-08-27 | 2099 |  | Sector-44 Noida(2) | 9387714 |
| 2101 | 36900.37000.42500.42900.43200.44700.55100.724900 | Living dinning flooring | 16d | 2027-08-28 | 2027-09-12 | 2098, 2100 |  | Sector-44 Noida(2) | 9387724 |
| 2102 | 36900.37000.42500.42900.43200.44700.55100.725000 | Electrical wiring work | 10d | 2027-09-03 | 2027-09-12 | 2101FS-10d |  | Sector-44 Noida(2) | 9387734 |
| 2103 | 36900.37000.42500.42900.43200.44700.55100.725100 | Aluminium door-window fixing | 17d | 2027-09-05 | 2027-09-21 | 2093, 2102FS-8d |  | Sector-44 Noida(2) | 9387744 |
| 2104 | 36900.37000.42500.42900.43200.44700.55100.725200 | Putty primer coat | 8d | 2027-09-14 | 2027-09-21 | 2103FS-8d |  | Sector-44 Noida(2) | 9387754 |
| 2105 | 36900.37000.42500.42900.43200.44700.55100.725300 | Prehung door fixing | 7d | 2027-09-17 | 2027-09-23 | 2104FS-5d |  | Sector-44 Noida(2) | 9387764 |
| 2106 | 36900.37000.42500.42900.43200.44700.55100.725400 | Painting 1st coat | 10d | 2027-09-24 | 2027-10-03 | 2105 |  | Sector-44 Noida(2) | 9387774 |
| 2107 | 36900.37000.42500.42900.43200.44700.55100.725500 | False Ceiling panel fixing | 8d | 2027-10-11 | 2027-10-18 | 2090, 2106 |  | Sector-44 Noida(2) | 9387784 |

| ID | WBS | Task | Duration | Start | Finish | Predecessors | Constraint | Calendar | Unique_Task_ID |
| --- | --- | --- | --- | --- | --- | --- | --- | --- | --- |
| 2108 | 36900.37000.42500.42900.43200.44700.55200 | **21st Floor** | 119d | 2027-06-30 | 2027-10-26 |  | start no earlier than 2027-06-30 | Sector-44 Noida(2) | 9361364 |
| 2109 | 36900.37000.42500.42900.43200.44700.55200.725600 | Block Work | 7d | 2027-06-30 | 2027-07-06 | 1761FS+75d |  | Sector-44 Noida(2) | 9387794 |
| 2110 | 36900.37000.42500.42900.43200.44700.55200.725700 | Installation of temporary Main door | 7d | 2027-07-07 | 2027-07-13 | 2109 |  | Sector-44 Noida(2) | 9387804 |
| 2111 | 36900.37000.42500.42900.43200.44700.55200.725800 | Fire sprinkler pipe fixing | 3d | 2027-07-07 | 2027-07-09 | 2094, 2109 |  | Sector-44 Noida(2) | 9387814 |
| 2112 | 36900.37000.42500.42900.43200.44700.55200.725900 | Internal Plumbing Works | 7d | 2027-07-07 | 2027-07-13 | 2109 |  | Sector-44 Noida(2) | 9387824 |
| 2113 | 36900.37000.42500.42900.43200.44700.55200.726000 | Waterproofing | 12d | 2027-07-14 | 2027-07-25 | 2112 |  | Sector-44 Noida(2) | 9387834 |
| 2114 | 36900.37000.42500.42900.43200.44700.55200.726100 | Internal Plaster | 15d | 2027-07-26 | 2027-08-09 | 2112, 2113 |  | Sector-44 Noida(2) | 9387844 |
| 2115 | 36900.37000.42500.42900.43200.44700.55200.726200 | IPS flooring work | 11d | 2027-07-07 | 2027-07-17 | 2109 |  | Sector-44 Noida(2) | 9387854 |
| 2116 | 36900.37000.42500.42900.43200.44700.55200.726300 | Toilet dado work | 16d | 2027-08-10 | 2027-08-25 | 2112, 2113, 2114 |  | Sector-44 Noida(2) | 9387864 |
| 2117 | 36900.37000.42500.42900.43200.44700.55200.726400 | Toilet flooring work | 16d | 2027-08-26 | 2027-09-10 | 2116 |  | Sector-44 Noida(2) | 9387874 |
| 2118 | 36900.37000.42500.42900.43200.44700.55200.726500 | Living dinning flooring | 16d | 2027-09-11 | 2027-09-26 | 2115, 2117 |  | Sector-44 Noida(2) | 9387884 |
| 2119 | 36900.37000.42500.42900.43200.44700.55200.726600 | Electrical wiring work | 10d | 2027-09-17 | 2027-09-26 | 2118FS-10d |  | Sector-44 Noida(2) | 9387894 |
| 2120 | 36900.37000.42500.42900.43200.44700.55200.726700 | Aluminium door-window fixing | 17d | 2027-09-19 | 2027-10-05 | 2110, 2119FS-8d |  | Sector-44 Noida(2) | 9387904 |
| 2121 | 36900.37000.42500.42900.43200.44700.55200.726800 | Putty primer coat | 8d | 2027-09-28 | 2027-10-05 | 2120FS-8d |  | Sector-44 Noida(2) | 9387914 |
| 2122 | 36900.37000.42500.42900.43200.44700.55200.726900 | Prehung door fixing | 7d | 2027-10-01 | 2027-10-07 | 2121FS-5d |  | Sector-44 Noida(2) | 9387924 |
| 2123 | 36900.37000.42500.42900.43200.44700.55200.727000 | Painting 1st coat | 10d | 2027-10-08 | 2027-10-17 | 2122 |  | Sector-44 Noida(2) | 9387934 |
| 2124 | 36900.37000.42500.42900.43200.44700.55200.727100 | False Ceiling panel fixing | 8d | 2027-10-19 | 2027-10-26 | 2107, 2123 |  | Sector-44 Noida(2) | 9387944 |
| 2125 | 36900.37000.42500.42900.43200.44700.55300 | **22nd Floor** | 122d | 2027-07-07 | 2027-12-20 |  | start no earlier than 2027-07-07 | Sector-44 Noida(2) | 9361344 |
| 2126 | 36900.37000.42500.42900.43200.44700.55300.727200 | Block Work | 7d | 2027-07-07 | 2027-07-13 | 1762FS+75d |  | Sector-44 Noida(2) | 9387954 |
| 2127 | 36900.37000.42500.42900.43200.44700.55300.727300 | Installation of temporary Main door | 7d | 2027-07-14 | 2027-07-20 | 2126 |  | Sector-44 Noida(2) | 9387964 |
| 2128 | 36900.37000.42500.42900.43200.44700.55300.727400 | Fire sprinkler pipe fixing | 3d | 2027-07-14 | 2027-07-16 | 2111, 2126 |  | Sector-44 Noida(2) | 9387974 |
| 2129 | 36900.37000.42500.42900.43200.44700.55300.727500 | Internal Plumbing Works | 7d | 2027-07-14 | 2027-07-20 | 2126 |  | Sector-44 Noida(2) | 9387984 |
| 2130 | 36900.37000.42500.42900.43200.44700.55300.727600 | Waterproofing | 12d | 2027-07-21 | 2027-08-01 | 2129 |  | Sector-44 Noida(2) | 9387994 |
| 2131 | 36900.37000.42500.42900.43200.44700.55300.727700 | Internal Plaster | 15d | 2027-08-02 | 2027-08-16 | 2129, 2130 |  | Sector-44 Noida(2) | 9388004 |
| 2132 | 36900.37000.42500.42900.43200.44700.55300.727800 | IPS flooring work | 11d | 2027-07-14 | 2027-07-24 | 2126 |  | Sector-44 Noida(2) | 9388014 |
| 2133 | 36900.37000.42500.42900.43200.44700.55300.727900 | Toilet dado work | 20d | 2027-08-17 | 2027-09-05 | 2129, 2130, 2131 |  | Sector-44 Noida(2) | 9388024 |
| 2134 | 36900.37000.42500.42900.43200.44700.55300.728000 | Toilet flooring work | 16d | 2027-09-06 | 2027-09-21 | 2133 |  | Sector-44 Noida(2) | 9388034 |
| 2135 | 36900.37000.42500.42900.43200.44700.55300.728100 | Living dinning flooring | 16d | 2027-09-22 | 2027-10-07 | 2132, 2134 |  | Sector-44 Noida(2) | 9388044 |
| 2136 | 36900.37000.42500.42900.43200.44700.55300.728200 | Electrical wiring work | 10d | 2027-09-28 | 2027-10-07 | 2135FS-10d |  | Sector-44 Noida(2) | 9388054 |
| 2137 | 36900.37000.42500.42900.43200.44700.55300.728300 | Aluminium door-window fixing | 17d | 2027-09-30 | 2027-10-16 | 2127, 2136FS-8d |  | Sector-44 Noida(2) | 9388064 |
| 2138 | 36900.37000.42500.42900.43200.44700.55300.728400 | Putty primer coat | 8d | 2027-10-09 | 2027-10-16 | 2137FS-8d |  | Sector-44 Noida(2) | 9388074 |
| 2139 | 36900.37000.42500.42900.43200.44700.55300.728500 | Prehung door fixing | 7d | 2027-10-12 | 2027-10-18 | 2138FS-5d |  | Sector-44 Noida(2) | 9388084 |
| 2140 | 36900.37000.42500.42900.43200.44700.55300.728600 | Painting 1st coat | 10d | 2027-10-19 | 2027-10-28 | 2139 |  | Sector-44 Noida(2) | 9388094 |
| 2141 | 36900.37000.42500.42900.43200.44700.55300.728700 | False Ceiling panel fixing | 8d | 2027-10-29 | 2027-12-20 | 2124, 2140 |  | Sector-44 Noida(2) | 9388104 |

| ID | WBS | Task | Duration | Start | Finish | Predecessors | Constraint | Calendar | Unique_Task_ID |
| --- | --- | --- | --- | --- | --- | --- | --- | --- | --- |
| 2142 | 36900.37000.42500.42900.43200.44700.55400 | **23rd Floor** | 148d | 2027-07-09 | 2028-01-17 |  | start no earlier than 2027-07-09 | Sector-44 Noida(2) | 9361334 |
| 2143 | 36900.37000.42500.42900.43200.44700.55400.728800 | Block Work | 24d | 2027-07-09 | 2027-08-01 | 1763FS+70d |  | Sector-44 Noida(2) | 9388114 |
| 2144 | 36900.37000.42500.42900.43200.44700.55400.728900 | Installation of temporary Main door | 7d | 2027-08-02 | 2027-08-08 | 2143 |  | Sector-44 Noida(2) | 9388124 |
| 2145 | 36900.37000.42500.42900.43200.44700.55400.729000 | Fire sprinkler pipe fixing | 3d | 2027-08-02 | 2027-08-04 | 2128, 2143 |  | Sector-44 Noida(2) | 9388134 |
| 2146 | 36900.37000.42500.42900.43200.44700.55400.729100 | Internal Plumbing Works | 7d | 2027-08-02 | 2027-08-08 | 2143 |  | Sector-44 Noida(2) | 9388144 |
| 2147 | 36900.37000.42500.42900.43200.44700.55400.729200 | Waterproofing | 12d | 2027-08-09 | 2027-08-20 | 2146 |  | Sector-44 Noida(2) | 9388154 |
| 2148 | 36900.37000.42500.42900.43200.44700.55400.729300 | Internal Plaster | 11d | 2027-08-21 | 2027-08-31 | 2146, 2147 |  | Sector-44 Noida(2) | 9388164 |
| 2149 | 36900.37000.42500.42900.43200.44700.55400.729400 | IPS flooring work | 11d | 2027-08-02 | 2027-08-12 | 2143 |  | Sector-44 Noida(2) | 9388174 |
| 2150 | 36900.37000.42500.42900.43200.44700.55400.729500 | Toilet dado work | 20d | 2027-09-01 | 2027-09-20 | 2146, 2147, 2148 |  | Sector-44 Noida(2) | 9388184 |
| 2151 | 36900.37000.42500.42900.43200.44700.55400.729600 | Toilet flooring work | 16d | 2027-09-21 | 2027-10-06 | 2150 |  | Sector-44 Noida(2) | 9388194 |
| 2152 | 36900.37000.42500.42900.43200.44700.55400.729700 | Living dinning flooring | 29d | 2027-10-07 | 2027-12-19 | 2149, 2151 |  | Sector-44 Noida(2) | 9388204 |
| 2153 | 36900.37000.42500.42900.43200.44700.55400.729800 | Electrical wiring work | 10d | 2027-10-26 | 2027-12-19 | 2152FS-10d |  | Sector-44 Noida(2) | 9388214 |
| 2154 | 36900.37000.42500.42900.43200.44700.55400.729900 | Aluminium door-window fixing | 17d | 2027-10-28 | 2027-12-28 | 2144, 2153FS-8d |  | Sector-44 Noida(2) | 9388224 |
| 2155 | 36900.37000.42500.42900.43200.44700.55400.730000 | Putty primer coat | 8d | 2027-12-21 | 2027-12-28 | 2154FS-8d |  | Sector-44 Noida(2) | 9388234 |
| 2156 | 36900.37000.42500.42900.43200.44700.55400.730100 | Prehung door fixing | 7d | 2027-12-24 | 2027-12-30 | 2155FS-5d |  | Sector-44 Noida(2) | 9388244 |
| 2157 | 36900.37000.42500.42900.43200.44700.55400.730200 | Painting 1st coat | 10d | 2027-12-31 | 2028-01-09 | 2156 |  | Sector-44 Noida(2) | 9388254 |
| 2158 | 36900.37000.42500.42900.43200.44700.55400.730300 | False Ceiling panel fixing | 8d | 2028-01-10 | 2028-01-17 | 2141, 2157 |  | Sector-44 Noida(2) | 9388264 |
| 2159 | 36900.37000.42500.42900.43200.192000 | **Terrace finishing** | 70d | 2027-07-06 | 2027-09-13 |  | start no earlier than 2027-07-06 | Sector-44 Noida(2) | 9366134 |
| 2160 | 36900.37000.42500.42900.43200.192000.386800 | Terrace waterproofing | 30d | 2027-07-06 | 2027-08-04 | 2235FS+10d |  | Sector-44 Noida(2) | 9371404 |
| 2161 | 36900.37000.42500.42900.43200.192000.386900 | Terrace Finishing | 40d | 2027-08-05 | 2027-09-13 | 2160 |  | Sector-44 Noida(2) | 9371414 |
| 2162 | 36900.37000.42500.42900.43200.96200 | **Common area finishing** | 190d | 2027-04-17 | 2027-10-23 |  | start no earlier than 2027-04-17 | Sector-44 Noida(2) | 9362154 |
| 2163 | 36900.37000.42500.42900.43200.96200.387000 | Masonary Work | 40d | 2027-04-17 | 2027-05-26 | 1722 |  | Sector-44 Noida(2) | 9371424 |
| 2164 | 36900.37000.42500.42900.43200.96200.387100 | Fire sprinkler pipe fixing | 40d | 2027-04-22 | 2027-05-31 | 1722FS+5d |  | Sector-44 Noida(2) | 9371434 |
| 2165 | 36900.37000.42500.42900.43200.96200.387200 | Corridoor, staircase, shaft Plaster & whitewash | 80d | 2027-04-27 | 2027-07-15 | 2163FS-30d |  | Sector-44 Noida(2) | 9371444 |
| 2166 | 36900.37000.42500.42900.43200.96200.387300 | Staircase railing fixing | 80d | 2027-05-07 | 2027-07-25 | 2163FS-20d |  | Sector-44 Noida(2) | 9371454 |
| 2167 | 36900.37000.42500.42900.43200.96200.387400 | Fire staircase flooring | 100d | 2027-04-27 | 2027-08-04 | 2166FS-90d |  | Sector-44 Noida(2) | 9371464 |
| 2168 | 36900.37000.42500.42900.43200.96200.387500 | Main staircase flooring | 100d | 2027-04-27 | 2027-08-04 | 2166FS-90d |  | Sector-44 Noida(2) | 9371474 |
| 2169 | 36900.37000.42500.42900.43200.96200.387600 | Fire door work | 120d | 2027-06-06 | 2027-10-03 | 2167FS-60d |  | Sector-44 Noida(2) | 9371484 |
| 2170 | 36900.37000.42500.42900.43200.96200.387700 | Lobby flooring & Corridor | 170d | 2027-05-07 | 2027-10-23 | 2168FS-90d |  | Sector-44 Noida(2) | 9371494 |
| 2171 | 36900.37000.42500.42900.43200.96200.387800 | Ceiling & wall putty-primer | 80d | 2027-07-26 | 2027-10-13 | 2170FS-90d |  | Sector-44 Noida(2) | 9371504 |
| 2172 | 36900.37000.42500.42900.43200.96200.387900 | Ceiling & wall painting | 75d | 2027-07-06 | 2027-09-18 | 2171FS-100d |  | Sector-44 Noida(2) | 9371514 |
| 2173 | 36900.37000.42500.42900.43200.96200.388000 | Electrical wiring work | 70d | 2027-06-11 | 2027-08-19 | 2172FS-100d |  | Sector-44 Noida(2) | 9371524 |
| 2174 | 36900.37000.42500.42900.43200.96200.388100 | Light fixture supply & installation | 30d | 2027-07-06 | 2027-08-04 | 2173FS-45d |  | Sector-44 Noida(2) | 9371534 |
| 2175 | 36900.37000.42500.42900.43200.96200.388200 | Installation of fire signages including Basements | 20d | 2027-09-19 | 2027-10-08 | 2172 |  | Sector-44 Noida(2) | 9371544 |

| ID | WBS | Task | Duration | Start | Finish | Predecessors | Constraint | Calendar | Unique_Task_ID |
| --- | --- | --- | --- | --- | --- | --- | --- | --- | --- |
| 2176 | 36900.37000.42500.42900.43200.47900 | **Balcony Glass Railing** | 161d | 2027-03-26 | 2027-09-02 |  | start no earlier than 2027-03-26 | Sector-44 Noida(2) | 9360904 |
| 2177 | 36900.37000.42500.42900.43200.47900.388300 | 1st Floor | 7d | 2027-03-26 | 2027-04-01 | 1769FS+170d |  | Sector-44 Noida(2) | 9371554 |
| 2178 | 36900.37000.42500.42900.43200.47900.388400 | 2nd Floor | 7d | 2027-04-02 | 2027-04-08 | 2177 |  | Sector-44 Noida(2) | 9371564 |
| 2179 | 36900.37000.42500.42900.43200.47900.388500 | 3rd Floor | 7d | 2027-04-09 | 2027-04-15 | 2178 |  | Sector-44 Noida(2) | 9371574 |
| 2180 | 36900.37000.42500.42900.43200.47900.388600 | 4th Floor | 7d | 2027-04-16 | 2027-04-22 | 2179 |  | Sector-44 Noida(2) | 9371584 |
| 2181 | 36900.37000.42500.42900.43200.47900.388700 | 5th Floor | 7d | 2027-04-23 | 2027-04-29 | 2180 |  | Sector-44 Noida(2) | 9371594 |
| 2182 | 36900.37000.42500.42900.43200.47900.388800 | 6th Floor | 7d | 2027-04-30 | 2027-05-06 | 2181 |  | Sector-44 Noida(2) | 9371604 |
| 2183 | 36900.37000.42500.42900.43200.47900.388900 | 7th Floor | 7d | 2027-05-07 | 2027-05-13 | 2182 |  | Sector-44 Noida(2) | 9371614 |
| 2184 | 36900.37000.42500.42900.43200.47900.389000 | 8th Floor | 7d | 2027-05-14 | 2027-05-20 | 2183 |  | Sector-44 Noida(2) | 9371624 |
| 2185 | 36900.37000.42500.42900.43200.47900.389100 | 9th Floor | 7d | 2027-05-21 | 2027-05-27 | 2184 |  | Sector-44 Noida(2) | 9371634 |
| 2186 | 36900.37000.42500.42900.43200.47900.389200 | 10th Floor | 7d | 2027-05-28 | 2027-06-03 | 2185 |  | Sector-44 Noida(2) | 9371644 |
| 2187 | 36900.37000.42500.42900.43200.47900.389300 | 11th Floor | 7d | 2027-06-04 | 2027-06-10 | 2186 |  | Sector-44 Noida(2) | 9371654 |
| 2188 | 36900.37000.42500.42900.43200.47900.389400 | 12th Floor | 7d | 2027-06-11 | 2027-06-17 | 2187 |  | Sector-44 Noida(2) | 9371664 |
| 2189 | 36900.37000.42500.42900.43200.47900.389500 | 13th Floor | 7d | 2027-06-18 | 2027-06-24 | 2188 |  | Sector-44 Noida(2) | 9371674 |
| 2190 | 36900.37000.42500.42900.43200.47900.389600 | 14th Floor | 7d | 2027-06-25 | 2027-07-01 | 2189 |  | Sector-44 Noida(2) | 9371684 |
| 2191 | 36900.37000.42500.42900.43200.47900.389700 | 15th Floor | 7d | 2027-07-02 | 2027-07-08 | 2190 |  | Sector-44 Noida(2) | 9371694 |
| 2192 | 36900.37000.42500.42900.43200.47900.389800 | 16th Floor | 7d | 2027-07-09 | 2027-07-15 | 2191 |  | Sector-44 Noida(2) | 9371704 |
| 2193 | 36900.37000.42500.42900.43200.47900.389900 | 17th Floor | 7d | 2027-07-16 | 2027-07-22 | 2192 |  | Sector-44 Noida(2) | 9371714 |
| 2194 | 36900.37000.42500.42900.43200.47900.390000 | 18th Floor | 7d | 2027-07-23 | 2027-07-29 | 2193 |  | Sector-44 Noida(2) | 9371724 |
| 2195 | 36900.37000.42500.42900.43200.47900.390100 | 19th Floor | 7d | 2027-07-30 | 2027-08-05 | 2194 |  | Sector-44 Noida(2) | 9371734 |
| 2196 | 36900.37000.42500.42900.43200.47900.390200 | 20th Floor | 7d | 2027-08-06 | 2027-08-12 | 2195 |  | Sector-44 Noida(2) | 9371744 |
| 2197 | 36900.37000.42500.42900.43200.47900.390300 | 21st Floor | 7d | 2027-08-13 | 2027-08-19 | 2196 |  | Sector-44 Noida(2) | 9371754 |
| 2198 | 36900.37000.42500.42900.43200.47900.390400 | 22nd Floor | 7d | 2027-08-20 | 2027-08-26 | 2197 |  | Sector-44 Noida(2) | 9371764 |
| 2199 | 36900.37000.42500.42900.43200.47900.390500 | 23rd Floor | 7d | 2027-08-27 | 2027-09-02 | 2198 |  | Sector-44 Noida(2) | 9371774 |

| ID | WBS | Task | Duration | Start | Finish | Predecessors | Constraint | Calendar | Unique_Task_ID |
| --- | --- | --- | --- | --- | --- | --- | --- | --- | --- |
| 2200 | 36900.37000.42500.42900.96700 | **MEP Work** | 253d | 2027-03-28 | 2028-01-19 |  | start no earlier than 2027-03-28 | Sector-44 Noida(2) | 9362174 |
| 2201 | 36900.37000.42500.42900.96700.99500 | **Electrical Work** | 145d | 2027-03-28 | 2027-08-19 |  | start no earlier than 2027-03-28 | Sector-44 Noida(2) | 9362284 |
| 2202 | 36900.37000.42500.42900.96700.99500.390600 | Cable Tray | 30d | 2027-05-27 | 2027-06-25 | 1739 |  | Sector-44 Noida(2) | 9371784 |
| 2203 | 36900.37000.42500.42900.96700.99500.390700 | Cable, main & sub main | 30d | 2027-03-28 | 2027-04-26 | 2202FS-90d |  | Sector-44 Noida(2) | 9371794 |
| 2204 | 36900.37000.42500.42900.96700.99500.390800 | LT panel & DB | 40d | 2027-04-27 | 2027-06-05 | 2202FS-60d |  | Sector-44 Noida(2) | 9371804 |
| 2205 | 36900.37000.42500.42900.96700.99500.390900 | Earthing Works | 15d | 2027-06-26 | 2027-07-10 | 2202 |  | Sector-44 Noida(2) | 9371814 |
| 2206 | 36900.37000.42500.42900.96700.99500.391000 | Advanced Lightening Protection system | 15d | 2027-06-16 | 2027-06-30 | 2205FS-25d |  | Sector-44 Noida(2) | 9371824 |
| 2207 | 36900.37000.42500.42900.96700.99500.391100 | Energy meter | 15d | 2027-04-27 | 2027-05-11 | 2203 |  | Sector-44 Noida(2) | 9371834 |
| 2208 | 36900.37000.42500.42900.96700.99500.391200 | Inverter / UPS | 10d | 2027-06-06 | 2027-06-15 | 2203, 2204, 2207FS-5d |  | Sector-44 Noida(2) | 9371844 |
| 2209 | 36900.37000.42500.42900.96700.99500.391300 | HVAC & Exhaust fan | 30d | 2027-05-27 | 2027-06-25 | 2202FS-30d |  | Sector-44 Noida(2) | 9371854 |
| 2210 | 36900.37000.42500.42900.96700.99500.391400 | FTTH | 10d | 2027-05-12 | 2027-05-21 | 2204FS-25d |  | Sector-44 Noida(2) | 9371864 |
| 2211 | 36900.37000.42500.42900.96700.99500.391500 | Security System - FA & PA | 10d | 2027-05-12 | 2027-05-21 | 2204FS-25d |  | Sector-44 Noida(2) | 9371874 |
| 2212 | 36900.37000.42500.42900.96700.99500.391600 | T&C of complete system | 15d | 2027-08-05 | 2027-08-19 | 2174, 2204, 2206, 2207, 2208, 2209, 2210, 2211 |  | Sector-44 Noida(2) | 9371884 |
| 2213 | 36900.37000.42500.42900.96700.105300 | **Plumbing work** | 105d | 2027-05-07 | 2027-08-19 |  | start no earlier than 2027-05-07 | Sector-44 Noida(2) | 9362614 |
| 2214 | 36900.37000.42500.42900.96700.105300.391700 | Terrace looping | 20d | 2027-05-07 | 2027-05-26 | 1764 |  | Sector-44 Noida(2) | 9371894 |
| 2215 | 36900.37000.42500.42900.96700.105300.391800 | Shaft Plumbing | 30d | 2027-06-16 | 2027-07-15 | 2165FS-30d, 2214 |  | Sector-44 Noida(2) | 9371904 |
| 2216 | 36900.37000.42500.42900.96700.105300.391900 | CP sanitary fixture supply | 20d | 2027-07-16 | 2027-08-04 | 2215 |  | Sector-44 Noida(2) | 9371914 |
| 2217 | 36900.37000.42500.42900.96700.105300.392000 | Cold & flushing water supply | 20d | 2027-07-16 | 2027-08-04 | 2215 |  | Sector-44 Noida(2) | 9371924 |
| 2218 | 36900.37000.42500.42900.96700.105300.392100 | Misc work | 15d | 2027-07-21 | 2027-08-04 | 2217FS-15d |  | Sector-44 Noida(2) | 9371934 |
| 2219 | 36900.37000.42500.42900.96700.105300.392200 | Installation of PHE pumps | 25d | 2027-05-27 | 2027-06-20 | 2214 |  | Sector-44 Noida(2) | 9371944 |
| 2220 | 36900.37000.42500.42900.96700.105300.392300 | T&C of complete system | 15d | 2027-08-05 | 2027-08-19 | 3428, 3429, 3430, 2214, 2215, 2217, 2218, 2219 |  | Sector-44 Noida(2) | 9371954 |
| 2221 | 36900.37000.42500.42900.96700.118200 | **Fire fighting work** | 173d | 2027-06-16 | 2028-01-19 |  | start no earlier than 2027-06-16 | Sector-44 Noida(2) | 9363514 |
| 2222 | 36900.37000.42500.42900.96700.118200.392400 | Fire hydrant work | 25d | 2027-06-16 | 2027-07-10 | 2165FS-30d |  | Sector-44 Noida(2) | 9371964 |
| 2223 | 36900.37000.42500.42900.96700.118200.392500 | Pipe connection & sprinkler installation | 15d | 2027-07-11 | 2027-07-25 | 2222 |  | Sector-44 Noida(2) | 9371974 |
| 2224 | 36900.37000.42500.42900.96700.118200.392600 | Shaft Downtake works | 25d | 2027-06-16 | 2027-07-10 | 1764, 2165FS-30d |  | Sector-44 Noida(2) | 9371984 |
| 2225 | 36900.37000.42500.42900.96700.118200.392700 | Connection to pump room | 10d | 2027-07-11 | 2027-07-20 | 2224 |  | Sector-44 Noida(2) | 9371994 |
| 2226 | 36900.37000.42500.42900.96700.118200.392800 | Installation of FF pumps | 25d | 2027-07-11 | 2027-08-04 | 2222, 2224 |  | Sector-44 Noida(2) | 9372004 |
| 2227 | 36900.37000.42500.42900.96700.118200.392900 | T&C of complete system | 63d | 2027-10-04 | 2028-01-19 | 3431, 2164, 2169, 2175FS-21d, 2223, 2225, 2226, 2145 |  | Sector-44 Noida(2) | 9372014 |

| ID | WBS | Task | Duration | Start | Finish | Predecessors | Complete | Constraint | Calendar | Unique_Task_ID |
| --- | --- | --- | --- | --- | --- | --- | --- | --- | --- | --- |
| 2228 | 36900.37000.42500.42900.96700.189400 | **Lift work** | 87d | 2027-05-17 | 2027-08-11 |  |  | start no earlier than 2027-05-17 | Sector-44 Noida(2) | 9365884 |
| 2229 | 36900.37000.42500.42900.96700.189400.393000 | Lift Shaft/Pit Handover | 12d | 2027-05-17 | 2027-05-28 | 1765 |  |  | Sector-44 Noida(2) | 9372024 |
| 2230 | 36900.37000.42500.42900.96700.189400.393100 | Lift installation work | 55d | 2027-05-29 | 2027-07-22 | 2229 |  |  | Sector-44 Noida(2) | 9372034 |
| 2231 | 36900.37000.42500.42900.96700.189400.393200 | Lift testing and commissioning | 20d | 2027-07-23 | 2027-08-11 | 2230 |  |  | Sector-44 Noida(2) | 9372044 |
| 2232 | 36900.37000.42500.42900.184700 | **External Paint Works** | 80d | 2027-05-07 | 2027-07-25 |  |  | start no earlier than 2027-05-07 | Sector-44 Noida(2) | 9364304 |
| 2233 | 36900.37000.42500.42900.184700.287000 | Surface prepration | 30d | 2027-05-07 | 2027-06-05 | 1764 |  |  | Sector-44 Noida(2) | 9367774 |
| 2234 | 36900.37000.42500.42900.184700.287100 | External Painting (Primer, texture & first coat) | 50d | 2027-06-06 | 2027-07-25 | 2233 |  |  | Sector-44 Noida(2) | 9367784 |
| 2235 | 36900.37000.42500.42900.184700.287200 | Final coat of painting | 40d | 2027-05-17 | 2027-06-25 | 2234FS-70d |  |  | Sector-44 Noida(2) | 9367794 |
| 2236 | 36900.37000.42500.42900.184700.287300 | Misc. work | 20d | 2027-06-06 | 2027-06-25 | 2233 |  |  | Sector-44 Noida(2) | 9367804 |
| 2237 | 36900.37000.42500.42900.260000 | OC Application/Readiness | 1d | 2028-01-20 | 2028-01-20 | 2212, 2220, 2227, 2231, 2161, 2199, 2158, 2167, 2168, 2170, 3432 |  |  | Sector-44 Noida(2) | 9366254 |
| 2238 | 36900.37000.42500.42900.260100 | OC Receipt | 60d | 2028-01-21 | 2028-03-20 | 2237, 1553, 1554, 1563, 1564 |  |  | Sector-44 Noida(2) | 9366264 |
| 2239 | 36900.37000.42500.42900.126100 | **Post OC Activities** | 140d | 2028-01-31 | 2028-06-18 |  |  | start no earlier than 2028-01-31 | Sector-44 Noida(2) | 9364244 |
| 2240 | 36900.37000.42500.42900.126100.287400 | CP & Sanitaryware installation | 120d | 2028-02-20 | 2028-06-18 | 2238FS-30d, 2216 |  |  | Sector-44 Noida(2) | 9367814 |
| 2241 | 36900.37000.42500.42900.126100.287500 | Electrical Fixtures And Fittings installations | 120d | 2028-02-20 | 2028-06-18 | 2238FS-30d |  |  | Sector-44 Noida(2) | 9367824 |
| 2242 | 36900.37000.42500.42900.126100.287600 | Final Coat Paint Internal | 40d | 2028-02-20 | 2028-03-30 | 2238FS-30d |  |  | Sector-44 Noida(2) | 9367834 |
| 2243 | 36900.37000.42500.42900.126100.287700 | VRV Highwall (HVAC) installation | 60d | 2028-01-31 | 2028-03-30 | 2242FS-60d |  |  | Sector-44 Noida(2) | 9367844 |
| 2244 | 36900.37000.42500.42900.126100.287800 | Wooden Flooring | 100d | 2028-02-20 | 2028-05-29 | 2238FS-30d |  |  | Sector-44 Noida(2) | 9367854 |
| 2245 | 36900.37000.42500.42900.260200 | Offer to possession | 90d | 2028-07-19 | 2028-10-16 | 2238FS+120d, 2236, 2240, 2241, 2243, 2244 |  |  | Sector-44 Noida(2) | 9366274 |
| 2246 | 36900.37000.37700 | **Tower-4 (2B+S+P+38)** | 2640.62d | 2022-04-30 | 2030-01-18 |  | 9% | start no earlier than 2022-04-30 | Sector-44 Noida(2) | 9323554 |
| 2247 | 36900.37000.37700.105900 | **Soldier Piling,RCC Piling & Excavation work** | 1326.62d | 2022-04-30 | 2026-01-30 |  | 95% | start no earlier than 2022-04-30 | Sector-44 Noida(2) | 9362654 |
| 2248 | 36900.37000.37700.105900.185400 | **Till 2.5 Mtr** | 67d | 2025-01-24 | 2025-03-31 |  | 100% | start no earlier than 2025-01-24 | Sector-44 Noida(2) | 9365634 |
| 2249 | 36900.37000.37700.105900.185400.199700 | H beam pile driving - 12m | 26d | 2025-01-24 | 2025-03-11 | 44 | 100% | start no earlier than 2025-01-24 | Sector-44 Noida(2) | 9367864 |
| 2250 | 36900.37000.37700.105900.185400.199500 | Excavation from NGL to 2.5m | 36d | 2025-01-24 | 2025-03-23 | 2249FS-47d | 100% | start no earlier than 2025-01-24 | Sector-44 Noida(2) | 9367874 |
| 2251 | 36900.37000.37700.105900.185400.199400 | Plank installation & anchoring till 2.5m | 17d | 2025-03-15 | 2025-03-31 | 2250FS-15d | 100% | start no earlier than 2025-03-15 | Sector-44 Noida(2) | 9367884 |

| ID | WBS | Task | Duration | Start | Finish | Predecessors | Complete | Constraint | Calendar | Unique_Task_ID |
| --- | --- | --- | --- | --- | --- | --- | --- | --- | --- | --- |
| 2252 | 36900.37000.37700.105900.189700 | **2.5 mtrs till 5 mtrs** | 159d | 2025-03-16 | 2025-08-21 |  | 100% | start no earlier than 2025-03-16 | Sector-44 Noida(2) | 9366094 |
| 2253 | 36900.37000.37700.105900.189700.198900 | Excavation from 2.5m till 5m | 40d | 2025-03-16 | 2025-07-27 | 2251 | 100% | start no earlier than 2025-03-16 | Sector-44 Noida(2) | 9367894 |
| 2254 | 36900.37000.37700.105900.189700.198800 | Plank installation & anchoring till 2.5m till 5m | 20d | 2025-05-31 | 2025-08-21 | 2253FS-68d | 100% | start no earlier than 2025-05-31 | Sector-44 Noida(2) | 9367904 |
| 2255 | 36900.37000.37700.105900.189800 | **12 mts till NTA fotting bottom** | 1295.62d | 2022-04-30 | 2025-12-30 |  | 97% | start no earlier than 2022-04-30 | Sector-44 Noida(2) | 9366104 |
| 2256 | 36900.37000.37700.105900.189800.287900 | Excavation from 12m to fotting PCC bottom | 1051.38d | 2022-04-30 | 2025-12-10 |  | 99% | start no earlier than 2022-04-30 | Indian Calendar | 9366105 |
| 2257 | 36900.37000.37700.105900.189800.198700 | Excavation from 12m to fotting PCC bottom | 13d | 2025-10-19 | 2025-12-16 | 2254FS-12.61d, 2256 | 97% |  | Sector-44 Noida(2) | 9367914 |
| 2258 | 36900.37000.37700.105900.189800.197700 | Plank installation & anchoring from 12m to footing PCC bottom | 47d | 2025-09-03 | 2025-12-30 | 2257FS-59d | 68% |  | Sector-44 Noida(2) | 9367924 |
| 2259 | 36900.37000.37700.105900.192100 | **Dummy Basement** | 30d | 2026-01-01 | 2026-01-30 |  |  | start no earlier than 2026-01-01 | Sector-44 Noida(2) | 9366174 |
| 2260 | 36900.37000.37700.105900.192100.288000 | Dummy Basement | 30d | 2026-01-01 | 2026-01-30 | 2258FS+1d |  |  | Sector-44 Noida(2) | 9367934 |
| 2261 | 36900.37000.37700.94800 | **Sub-Structure works** | 1149d | 2026-01-31 | 2029-08-06 |  |  | start no earlier than 2026-01-31 | Sector-44 Noida(2) | 9362064 |
| 2262 | 36900.37000.37700.94800.185500 | **Soil bed preparation** | 6d | 2026-01-31 | 2026-02-05 |  |  | start no earlier than 2026-01-31 | Sector-44 Noida(2) | 9364314 |
| 2263 | 36900.37000.37700.94800.185500.288100 | Excavation completion | 2d | 2026-01-31 | 2026-02-01 | 2260 |  |  | Sector-44 Noida(2) | 9367944 |
| 2264 | 36900.37000.37700.94800.185500.288200 | Surface dressing | 2d | 2026-02-02 | 2026-02-03 | 2263 |  |  | Sector-44 Noida(2) | 9367954 |
| 2265 | 36900.37000.37700.94800.185500.288300 | ATT | 1d | 2026-02-04 | 2026-02-04 | 2264 |  |  | Sector-44 Noida(2) | 9367964 |
| 2266 | 36900.37000.37700.94800.185500.288400 | PCC | 1d | 2026-02-05 | 2026-02-05 | 2263FF, 2264SF, 2265 |  |  | Sector-44 Noida(2) | 9367974 |
| 2267 | 36900.37000.37700.94800.102700 | **RCC Works** | 97d | 2026-02-06 | 2026-05-13 |  |  | start no earlier than 2026-02-06 | Sector-44 Noida(2) | 9362374 |
| 2268 | 36900.37000.37700.94800.102700.188500 | **Raft** | 27d | 2026-02-06 | 2026-03-04 |  |  | start no earlier than 2026-02-06 | Sector-44 Noida(2) | 9365824 |
| 2269 | 36900.37000.37700.94800.102700.188500.393300 | Reinforcement Work | 20d | 2026-02-06 | 2026-02-25 | 2266 |  |  | Sector-44 Noida(2) | 9372054 |
| 2270 | 36900.37000.37700.94800.102700.188500.393400 | Shuttering work | 15d | 2026-02-16 | 2026-03-02 | 2269FS-10d |  |  | Sector-44 Noida(2) | 9372064 |
| 2271 | 36900.37000.37700.94800.102700.188500.393500 | Concreteing work | 2d | 2026-03-03 | 2026-03-04 | 2269FF, 2270 |  |  | Sector-44 Noida(2) | 9372074 |
| 2272 | 36900.37000.37700.94800.102700.130200 | **Basement-2 Roof Slab (LB)** | 30d | 2026-03-05 | 2026-04-03 |  |  | start no earlier than 2026-03-05 | Sector-44 Noida(2) | 9364064 |
| 2273 | 36900.37000.37700.94800.102700.130200.186900 | **B2 Roof Slab** | 30d | 2026-03-05 | 2026-04-03 |  |  | start no earlier than 2026-03-05 | Sector-44 Noida(2) | 9365694 |
| 2274 | 36900.37000.37700.94800.102700.130200.186900.730400 | Shuttering Work | 20d | 2026-03-05 | 2026-03-24 | 2271 |  |  | Sector-44 Noida(2) | 9388274 |
| 2275 | 36900.37000.37700.94800.102700.130200.186900.730500 | Reinforcement Work | 14d | 2026-03-20 | 2026-04-02 | 2274FS-5d |  |  | Sector-44 Noida(2) | 9388284 |
| 2276 | 36900.37000.37700.94800.102700.130200.186900.730600 | Concreteing work | 1d | 2026-04-03 | 2026-04-03 | 2274FF, 2275 |  |  | Sector-44 Noida(2) | 9388294 |

| ID | WBS | Task | Duration | Start | Finish | Predecessors | Constraint | Calendar | Unique_Task_ID |
| --- | --- | --- | --- | --- | --- | --- | --- | --- | --- |
| 2277 | 36900.37000.37700.94800.102700.130100 | **Basement-1 Roof Slab (UB)** | 40d | 2026-04-04 | 2026-05-13 |  | start no earlier than 2026-04-04 | Sector-44 Noida(2) | 9364034 |
| 2278 | 36900.37000.37700.94800.102700.130100.187000 | **B1 Roof Slab** | 40d | 2026-04-04 | 2026-05-13 |  | start no earlier than 2026-04-04 | Sector-44 Noida(2) | 9365704 |
| 2279 | 36900.37000.37700.94800.102700.130100.187000.730700 | Shuttering Work | 25d | 2026-04-04 | 2026-04-28 | 2276 |  | Sector-44 Noida(2) | 9388304 |
| 2280 | 36900.37000.37700.94800.102700.130100.187000.730800 | Reinforcement Work | 19d | 2026-04-24 | 2026-05-12 | 2279FS-5d |  | Sector-44 Noida(2) | 9388314 |
| 2281 | 36900.37000.37700.94800.102700.130100.187000.730900 | Concreteing work | 1d | 2026-05-13 | 2026-05-13 | 2279FF, 2280 |  | Sector-44 Noida(2) | 9388324 |
| 2282 | 36900.37000.37700.94800.101000 | **Sub structure finishing works** | 1001d | 2026-06-28 | 2029-08-06 |  | start no earlier than 2026-06-28 | Sector-44 Noida(2) | 9362274 |
| 2283 | 36900.37000.37700.94800.101000.104500 | **Basement-2** | 970d | 2026-06-28 | 2029-07-06 |  | start no earlier than 2026-06-28 | Sector-44 Noida(2) | 9362434 |
| 2284 | 36900.37000.37700.94800.101000.104500.393600 | Masonary | 30d | 2027-03-05 | 2027-04-03 | 2281FS+250d |  | Sector-44 Noida(2) | 9372084 |
| 2285 | 36900.37000.37700.94800.101000.104500.393700 | Structural Steel | 30d | 2026-06-28 | 2026-07-27 | 2281FS+45d |  | Sector-44 Noida(2) | 9372094 |
| 2286 | 36900.37000.37700.94800.101000.104500.393800 | Structural Steel | 5d | 2029-07-02 | 2029-07-06 | 2285 |  | Indian Calendar | 9372095 |
| 2287 | 36900.37000.37700.94800.101000.104500.393900 | Plaster | 30d | 2027-04-04 | 2027-05-03 | 2284, 2285 |  | Sector-44 Noida(2) | 9372104 |
| 2288 | 36900.37000.37700.94800.101000.104500.394000 | White Wash | 30d | 2027-05-04 | 2027-06-02 | 2287 |  | Sector-44 Noida(2) | 9372114 |
| 2289 | 36900.37000.37700.94800.101000.104500.394100 | VDF | 60d | 2027-03-20 | 2027-05-18 | 2287FS-45d |  | Sector-44 Noida(2) | 9372124 |
| 2290 | 36900.37000.37700.94800.101000.104500.394200 | Drain & Sump (incl. gratings) | 60d | 2027-07-18 | 2027-09-15 | 2289FS+60d |  | Sector-44 Noida(2) | 9372134 |
| 2291 | 36900.37000.37700.94800.101000.104500.394300 | Car parking marking | 30d | 2027-05-19 | 2027-06-17 | 2288FS-15d |  | Sector-44 Noida(2) | 9372144 |
| 2292 | 36900.37000.37700.94800.101000.104500.394400 | Signages | 30d | 2027-08-17 | 2027-09-15 | 2284FF, 2285FF, 2287FF, 2288FS-10d, 2289FF, 2290FF, 2291FF |  | Sector-44 Noida(2) | 9372154 |
| 2293 | 36900.37000.37700.94800.101000.104500.394500 | Signages | 5d | 2027-10-01 | 2027-10-06 | 2292 |  | Indian Calendar | 10106079 |
| 2294 | 36900.37000.37700.94800.101000.104600 | **Basement-1** | 766d | 2027-04-04 | 2029-08-06 |  | start no earlier than 2027-04-04 | Sector-44 Noida(2) | 9362424 |
| 2295 | 36900.37000.37700.94800.101000.104600.394600 | Masonary | 30d | 2027-04-04 | 2027-05-03 | 2284 |  | Sector-44 Noida(2) | 9372164 |
| 2296 | 36900.37000.37700.94800.101000.104600.394700 | Masonary | 5d | 2029-08-01 | 2029-08-06 | 2295 |  | Indian Calendar | 9372165 |
| 2297 | 36900.37000.37700.94800.101000.104600.394800 | Structural Steel | 30d | 2027-04-04 | 2027-05-03 | 2284 |  | Sector-44 Noida(2) | 9372174 |
| 2298 | 36900.37000.37700.94800.101000.104600.394900 | Plaster | 30d | 2027-05-04 | 2027-06-02 | 2295, 2297 |  | Sector-44 Noida(2) | 9372184 |
| 2299 | 36900.37000.37700.94800.101000.104600.395000 | White Wash | 30d | 2027-06-03 | 2027-07-02 | 2298 |  | Sector-44 Noida(2) | 9372194 |
| 2300 | 36900.37000.37700.94800.101000.104600.395100 | VDF | 60d | 2027-04-19 | 2027-06-17 | 2298FS-45d |  | Sector-44 Noida(2) | 9372204 |
| 2301 | 36900.37000.37700.94800.101000.104600.395200 | Drain & Sump (incl. gratings) | 60d | 2027-08-17 | 2027-10-15 | 2300FS+60d |  | Sector-44 Noida(2) | 9372214 |
| 2302 | 36900.37000.37700.94800.101000.104600.395300 | Car parking marking | 30d | 2027-06-18 | 2027-07-17 | 2299FS-15d |  | Sector-44 Noida(2) | 9372224 |
| 2303 | 36900.37000.37700.94800.101000.104600.395400 | Signages | 30d | 2027-09-16 | 2027-10-15 | 2295FF, 2297FF, 2298FF, 2299FS-10d, 2300FF, 2301FF, 2302FF |  | Sector-44 Noida(2) | 9372234 |

| ID | WBS | Task | Duration | Start | Finish | Predecessors | Constraint | Calendar | Unique_Task_ID |
| --- | --- | --- | --- | --- | --- | --- | --- | --- | --- |
| 2304 | 36900.37000.37700.37800 | **Super structure works** | 1211d | 2026-05-14 | 2030-01-18 |  | start no earlier than 2026-05-14 | Sector-44 Noida(2) | 9323564 |
| 2305 | 36900.37000.37700.37800.42600 | **RCC Works** | 661d | 2026-05-14 | 2028-06-02 |  | start no earlier than 2026-05-14 | Sector-44 Noida(2) | 9360704 |
| 2306 | 36900.37000.37700.37800.42600.130000 | **GF Slab** | 40d | 2026-05-14 | 2026-06-22 |  | start no earlier than 2026-05-14 | Sector-44 Noida(2) | 9364024 |
| 2307 | 36900.37000.37700.37800.42600.130000.187100 | **GF Slab** | 40d | 2026-05-14 | 2026-06-22 |  | start no earlier than 2026-05-14 | Sector-44 Noida(2) | 9365724 |
| 2308 | 36900.37000.37700.37800.42600.130000.187100.731000 | Shuttering Work | 25d | 2026-05-14 | 2026-06-07 | 2281 |  | Sector-44 Noida(2) | 9388334 |
| 2309 | 36900.37000.37700.37800.42600.130000.187100.731100 | Reinforcement Work | 19d | 2026-06-03 | 2026-06-21 | 2308FS-5d |  | Sector-44 Noida(2) | 9388344 |
| 2310 | 36900.37000.37700.37800.42600.130000.187100.731200 | Concreteing work | 1d | 2026-06-22 | 2026-06-22 | 2308FF, 2309 |  | Sector-44 Noida(2) | 9388354 |
| 2311 | 36900.37000.37700.37800.42600.118300 | **Podium-1/Stilt Slab** | 40d | 2026-06-23 | 2026-08-01 |  | start no earlier than 2026-06-23 | Sector-44 Noida(2) | 9363524 |
| 2312 | 36900.37000.37700.37800.42600.118300.137000 | **Podium-1/Stilt Slab** | 40d | 2026-06-23 | 2026-08-01 |  | start no earlier than 2026-06-23 | Sector-44 Noida(2) | 9365164 |
| 2313 | 36900.37000.37700.37800.42600.118300.137000.731300 | Shuttering Work | 25d | 2026-06-23 | 2026-07-17 | 2310 |  | Sector-44 Noida(2) | 9388364 |
| 2314 | 36900.37000.37700.37800.42600.118300.137000.731400 | Reinforcement Work | 19d | 2026-07-13 | 2026-07-31 | 2313FS-5d |  | Sector-44 Noida(2) | 9388374 |
| 2315 | 36900.37000.37700.37800.42600.118300.137000.731500 | Conduiting work | 1d | 2026-07-31 | 2026-07-31 | 2314FS-1d |  | Sector-44 Noida(2) | 9388384 |
| 2316 | 36900.37000.37700.37800.42600.118300.137000.731600 | Concreteing work | 1d | 2026-08-01 | 2026-08-01 | 2313FF, 2314FF, 2315 |  | Sector-44 Noida(2) | 9388394 |
| 2317 | 36900.37000.37700.37800.42600.118400 | **1st Floor Slab** | 30d | 2026-08-02 | 2026-08-31 |  | start no earlier than 2026-08-02 | Sector-44 Noida(2) | 9363534 |
| 2318 | 36900.37000.37700.37800.42600.118400.136900 | **1st Floor Slab** | 30d | 2026-08-02 | 2026-08-31 |  | start no earlier than 2026-08-02 | Sector-44 Noida(2) | 9365174 |
| 2319 | 36900.37000.37700.37800.42600.118400.136900.731700 | Shuttering Work | 19d | 2026-08-02 | 2026-08-20 | 2316 |  | Sector-44 Noida(2) | 9388404 |
| 2320 | 36900.37000.37700.37800.42600.118400.136900.731800 | Reinforcement Work | 15d | 2026-08-16 | 2026-08-30 | 2319FS-5d |  | Sector-44 Noida(2) | 9388414 |
| 2321 | 36900.37000.37700.37800.42600.118400.136900.731900 | Conduiting work | 1d | 2026-08-30 | 2026-08-30 | 2320FS-1d |  | Sector-44 Noida(2) | 9388424 |
| 2322 | 36900.37000.37700.37800.42600.118400.136900.732000 | Concreteing work | 1d | 2026-08-31 | 2026-08-31 | 2319FF, 2320FF, 2321 |  | Sector-44 Noida(2) | 9388434 |
| 2323 | 36900.37000.37700.37800.42600.118500 | **2nd Floor Slab** | 30d | 2026-09-01 | 2026-09-30 |  | start no earlier than 2026-09-01 | Sector-44 Noida(2) | 9363544 |
| 2324 | 36900.37000.37700.37800.42600.118500.136800 | **2nd Floor Slab** | 30d | 2026-09-01 | 2026-09-30 |  | start no earlier than 2026-09-01 | Sector-44 Noida(2) | 9365184 |
| 2325 | 36900.37000.37700.37800.42600.118500.136800.732100 | Shuttering Work | 17d | 2026-09-01 | 2026-09-17 | 2322 |  | Sector-44 Noida(2) | 9388444 |
| 2326 | 36900.37000.37700.37800.42600.118500.136800.732200 | Reinforcement Work | 15d | 2026-09-15 | 2026-09-29 | 2325FS-3d |  | Sector-44 Noida(2) | 9388454 |
| 2327 | 36900.37000.37700.37800.42600.118500.136800.732300 | Conduiting work | 1d | 2026-09-29 | 2026-09-29 | 2326FS-1d |  | Sector-44 Noida(2) | 9388464 |
| 2328 | 36900.37000.37700.37800.42600.118500.136800.732400 | Concreteing work | 1d | 2026-09-30 | 2026-09-30 | 2325FF, 2326FF, 2327 |  | Sector-44 Noida(2) | 9388474 |

| ID | WBS | Task | Duration | Start | Finish | Predecessors | Constraint | Calendar | Unique_Task_ID |
| --- | --- | --- | --- | --- | --- | --- | --- | --- | --- |
| 2329 | 36900.37000.37700.37800.42600.118600 | **3rd Floor Slab (1st MIVAN Setup)** | 30d | 2026-10-01 | 2026-10-30 |  | start no earlier than 2026-10-01 | Sector-44 Noida(2) | 9363554 |
| 2330 | 36900.37000.37700.37800.42600.118600.136700 | **3rd Floor Slab** | 30d | 2026-10-01 | 2026-10-30 |  | start no earlier than 2026-10-01 | Sector-44 Noida(2) | 9365194 |
| 2331 | 36900.37000.37700.37800.42600.118600.136700.732500 | Shuttering Work | 17d | 2026-10-01 | 2026-10-17 | 2328 |  | Sector-44 Noida(2) | 9388484 |
| 2332 | 36900.37000.37700.37800.42600.118600.136700.732600 | Reinforcement Work | 15d | 2026-10-15 | 2026-10-29 | 2331FS-3d |  | Sector-44 Noida(2) | 9388494 |
| 2333 | 36900.37000.37700.37800.42600.118600.136700.732700 | Conduiting work | 1d | 2026-10-29 | 2026-10-29 | 2332FS-1d |  | Sector-44 Noida(2) | 9388504 |
| 2334 | 36900.37000.37700.37800.42600.118600.136700.732800 | Concreteing work | 1d | 2026-10-30 | 2026-10-30 | 2331FF, 2332FF, 2333 |  | Sector-44 Noida(2) | 9388514 |
| 2335 | 36900.37000.37700.37800.42600.118700 | **4th Floor Slab** | 19d | 2026-10-31 | 2027-01-02 |  | start no earlier than 2026-10-31 | Sector-44 Noida(2) | 9363564 |
| 2336 | 36900.37000.37700.37800.42600.118700.136600 | **4th Floor Slab** | 19d | 2026-10-31 | 2027-01-02 |  | start no earlier than 2026-10-31 | Sector-44 Noida(2) | 9365204 |
| 2337 | 36900.37000.37700.37800.42600.118700.136600.732900 | Shuttering Work | 12d | 2026-10-31 | 2026-12-26 | 2334 |  | Sector-44 Noida(2) | 9388524 |
| 2338 | 36900.37000.37700.37800.42600.118700.136600.733000 | Reinforcement Work | 9d | 2026-12-24 | 2027-01-01 | 2337FS-3d |  | Sector-44 Noida(2) | 9388534 |
| 2339 | 36900.37000.37700.37800.42600.118700.136600.733100 | Conduiting work | 1d | 2027-01-01 | 2027-01-01 | 2338FS-1d |  | Sector-44 Noida(2) | 9388544 |
| 2340 | 36900.37000.37700.37800.42600.118700.136600.733200 | Concreteing work | 1d | 2027-01-02 | 2027-01-02 | 2337FF, 2338FF, 2339 |  | Sector-44 Noida(2) | 9388554 |
| 2341 | 36900.37000.37700.37800.42600.118800 | **5th Floor Slab** | 12d | 2027-01-03 | 2027-01-14 |  | start no earlier than 2027-01-03 | Sector-44 Noida(2) | 9363574 |
| 2342 | 36900.37000.37700.37800.42600.118800.136500 | **5th Floor Slab** | 12d | 2027-01-03 | 2027-01-14 |  | start no earlier than 2027-01-03 | Sector-44 Noida(2) | 9365214 |
| 2343 | 36900.37000.37700.37800.42600.118800.136500.733300 | Shuttering Work | 9d | 2027-01-03 | 2027-01-11 | 2340 |  | Sector-44 Noida(2) | 9388564 |
| 2344 | 36900.37000.37700.37800.42600.118800.136500.733400 | Reinforcement Work | 5d | 2027-01-09 | 2027-01-13 | 2343FS-3d |  | Sector-44 Noida(2) | 9388574 |
| 2345 | 36900.37000.37700.37800.42600.118800.136500.733500 | Conduiting work | 1d | 2027-01-13 | 2027-01-13 | 2344FS-1d |  | Sector-44 Noida(2) | 9388584 |
| 2346 | 36900.37000.37700.37800.42600.118800.136500.733600 | Concreteing work | 1d | 2027-01-14 | 2027-01-14 | 2343FF, 2344FF, 2345 |  | Sector-44 Noida(2) | 9388594 |
| 2347 | 36900.37000.37700.37800.42600.118900 | **6th Floor Slab** | 12d | 2027-01-15 | 2027-01-26 |  | start no earlier than 2027-01-15 | Sector-44 Noida(2) | 9363584 |
| 2348 | 36900.37000.37700.37800.42600.118900.136400 | **6th Floor Slab** | 12d | 2027-01-15 | 2027-01-26 |  | start no earlier than 2027-01-15 | Sector-44 Noida(2) | 9365224 |
| 2349 | 36900.37000.37700.37800.42600.118900.136400.733700 | Shuttering Work | 9d | 2027-01-15 | 2027-01-23 | 2346 |  | Sector-44 Noida(2) | 9388604 |
| 2350 | 36900.37000.37700.37800.42600.118900.136400.733800 | Reinforcement Work | 5d | 2027-01-21 | 2027-01-25 | 2349FS-3d |  | Sector-44 Noida(2) | 9388614 |
| 2351 | 36900.37000.37700.37800.42600.118900.136400.733900 | Conduiting work | 1d | 2027-01-25 | 2027-01-25 | 2350FS-1d |  | Sector-44 Noida(2) | 9388624 |
| 2352 | 36900.37000.37700.37800.42600.118900.136400.734000 | Concreteing work | 1d | 2027-01-26 | 2027-01-26 | 2349FF, 2350FF, 2351 |  | Sector-44 Noida(2) | 9388634 |

| ID | WBS | Task | Duration | Start | Finish | Predecessors | Constraint | Calendar | Unique_Task_ID |
| --- | --- | --- | --- | --- | --- | --- | --- | --- | --- |
| 2353 | 36900.37000.37700.37800.42600.119000 | **7th Floor Slab** | 12d | 2027-01-27 | 2027-02-07 |  | start no earlier than 2027-01-27 | Sector-44 Noida(2) | 9363594 |
| 2354 | 36900.37000.37700.37800.42600.119000.136300 | **7th Floor Slab** | 12d | 2027-01-27 | 2027-02-07 |  | start no earlier than 2027-01-27 | Sector-44 Noida(2) | 9365234 |
| 2355 | 36900.37000.37700.37800.42600.119000.136300.734100 | Shuttering Work | 9d | 2027-01-27 | 2027-02-04 | 2352 |  | Sector-44 Noida(2) | 9388644 |
| 2356 | 36900.37000.37700.37800.42600.119000.136300.734200 | Reinforcement Work | 5d | 2027-02-02 | 2027-02-06 | 2355FS-3d |  | Sector-44 Noida(2) | 9388654 |
| 2357 | 36900.37000.37700.37800.42600.119000.136300.734300 | Conduiting work | 1d | 2027-02-06 | 2027-02-06 | 2356FS-1d |  | Sector-44 Noida(2) | 9388664 |
| 2358 | 36900.37000.37700.37800.42600.119000.136300.734400 | Concreteing work | 1d | 2027-02-07 | 2027-02-07 | 2355FF, 2356FF, 2357 |  | Sector-44 Noida(2) | 9388674 |
| 2359 | 36900.37000.37700.37800.42600.119100 | **8th Floor Slab** | 12d | 2027-02-08 | 2027-02-19 |  | start no earlier than 2027-02-08 | Sector-44 Noida(2) | 9363604 |
| 2360 | 36900.37000.37700.37800.42600.119100.136200 | **8th Floor Slab** | 12d | 2027-02-08 | 2027-02-19 |  | start no earlier than 2027-02-08 | Sector-44 Noida(2) | 9365244 |
| 2361 | 36900.37000.37700.37800.42600.119100.136200.734500 | Shuttering Work | 9d | 2027-02-08 | 2027-02-16 | 2358 |  | Sector-44 Noida(2) | 9388684 |
| 2362 | 36900.37000.37700.37800.42600.119100.136200.734600 | Reinforcement Work | 5d | 2027-02-14 | 2027-02-18 | 2361FS-3d |  | Sector-44 Noida(2) | 9388694 |
| 2363 | 36900.37000.37700.37800.42600.119100.136200.734700 | Conduiting work | 1d | 2027-02-18 | 2027-02-18 | 2362FS-1d |  | Sector-44 Noida(2) | 9388704 |
| 2364 | 36900.37000.37700.37800.42600.119100.136200.734800 | Concreteing work | 1d | 2027-02-19 | 2027-02-19 | 2361FF, 2362FF, 2363 |  | Sector-44 Noida(2) | 9388714 |
| 2365 | 36900.37000.37700.37800.42600.119200 | **9th Floor Slab** | 12d | 2027-02-20 | 2027-03-03 |  | start no earlier than 2027-02-20 | Sector-44 Noida(2) | 9363614 |
| 2366 | 36900.37000.37700.37800.42600.119200.136100 | **9th Floor Slab** | 12d | 2027-02-20 | 2027-03-03 |  | start no earlier than 2027-02-20 | Sector-44 Noida(2) | 9365254 |
| 2367 | 36900.37000.37700.37800.42600.119200.136100.734900 | Shuttering Work | 9d | 2027-02-20 | 2027-02-28 | 2364 |  | Sector-44 Noida(2) | 9388724 |
| 2368 | 36900.37000.37700.37800.42600.119200.136100.735000 | Reinforcement Work | 5d | 2027-02-26 | 2027-03-02 | 2367FS-3d |  | Sector-44 Noida(2) | 9388734 |
| 2369 | 36900.37000.37700.37800.42600.119200.136100.735100 | Conduiting work | 1d | 2027-03-02 | 2027-03-02 | 2368FS-1d |  | Sector-44 Noida(2) | 9388744 |
| 2370 | 36900.37000.37700.37800.42600.119200.136100.735200 | Concreteing work | 1d | 2027-03-03 | 2027-03-03 | 2367FF, 2368FF, 2369 |  | Sector-44 Noida(2) | 9388754 |
| 2371 | 36900.37000.37700.37800.42600.119300 | **10th Floor Slab** | 12d | 2027-03-04 | 2027-03-15 |  | start no earlier than 2027-03-04 | Sector-44 Noida(2) | 9363624 |
| 2372 | 36900.37000.37700.37800.42600.119300.136000 | **10th Floor Slab** | 12d | 2027-03-04 | 2027-03-15 |  | start no earlier than 2027-03-04 | Sector-44 Noida(2) | 9365264 |
| 2373 | 36900.37000.37700.37800.42600.119300.136000.735300 | Shuttering Work | 9d | 2027-03-04 | 2027-03-12 | 2370 |  | Sector-44 Noida(2) | 9388764 |
| 2374 | 36900.37000.37700.37800.42600.119300.136000.735400 | Reinforcement Work | 5d | 2027-03-10 | 2027-03-14 | 2373FS-3d |  | Sector-44 Noida(2) | 9388774 |
| 2375 | 36900.37000.37700.37800.42600.119300.136000.735500 | Conduiting work | 1d | 2027-03-14 | 2027-03-14 | 2374FS-1d |  | Sector-44 Noida(2) | 9388784 |
| 2376 | 36900.37000.37700.37800.42600.119300.136000.735600 | Concreteing work | 1d | 2027-03-15 | 2027-03-15 | 2373FF, 2374FF, 2375 |  | Sector-44 Noida(2) | 9388794 |

| ID | WBS | Task | Duration | Start | Finish | Predecessors | Constraint | Calendar | Unique_Task_ID |
| --- | --- | --- | --- | --- | --- | --- | --- | --- | --- |
| 2377 | 36900.37000.37700.37800.42600.119400 | **11th Floor Slab** | 12d | 2027-03-16 | 2027-03-27 |  | start no earlier than 2027-03-16 | Sector-44 Noida(2) | 9363634 |
| 2378 | 36900.37000.37700.37800.42600.119400.135900 | **11th Floor Slab** | 12d | 2027-03-16 | 2027-03-27 |  | start no earlier than 2027-03-16 | Sector-44 Noida(2) | 9365274 |
| 2379 | 36900.37000.37700.37800.42600.119400.135900.735700 | Shuttering Work | 9d | 2027-03-16 | 2027-03-24 | 2376 |  | Sector-44 Noida(2) | 9388804 |
| 2380 | 36900.37000.37700.37800.42600.119400.135900.735800 | Reinforcement Work | 5d | 2027-03-22 | 2027-03-26 | 2379FS-3d |  | Sector-44 Noida(2) | 9388814 |
| 2381 | 36900.37000.37700.37800.42600.119400.135900.735900 | Conduiting work | 1d | 2027-03-26 | 2027-03-26 | 2380FS-1d |  | Sector-44 Noida(2) | 9388824 |
| 2382 | 36900.37000.37700.37800.42600.119400.135900.736000 | Concreteing work | 1d | 2027-03-27 | 2027-03-27 | 2379FF, 2380FF, 2381 |  | Sector-44 Noida(2) | 9388834 |
| 2383 | 36900.37000.37700.37800.42600.119500 | **12th Floor Slab** | 12d | 2027-03-28 | 2027-04-08 |  | start no earlier than 2027-03-28 | Sector-44 Noida(2) | 9363644 |
| 2384 | 36900.37000.37700.37800.42600.119500.135800 | **12th Floor Slab** | 12d | 2027-03-28 | 2027-04-08 |  | start no earlier than 2027-03-28 | Sector-44 Noida(2) | 9365284 |
| 2385 | 36900.37000.37700.37800.42600.119500.135800.736100 | Shuttering Work | 9d | 2027-03-28 | 2027-04-05 | 2382 |  | Sector-44 Noida(2) | 9388844 |
| 2386 | 36900.37000.37700.37800.42600.119500.135800.736200 | Reinforcement Work | 5d | 2027-04-03 | 2027-04-07 | 2385FS-3d |  | Sector-44 Noida(2) | 9388854 |
| 2387 | 36900.37000.37700.37800.42600.119500.135800.736300 | Conduiting work | 1d | 2027-04-07 | 2027-04-07 | 2386FS-1d |  | Sector-44 Noida(2) | 9388864 |
| 2388 | 36900.37000.37700.37800.42600.119500.135800.736400 | Concreteing work | 1d | 2027-04-08 | 2027-04-08 | 2385FF, 2386FF, 2387 |  | Sector-44 Noida(2) | 9388874 |
| 2389 | 36900.37000.37700.37800.42600.119600 | **13th Floor Slab** | 12d | 2027-04-09 | 2027-04-20 |  | start no earlier than 2027-04-09 | Sector-44 Noida(2) | 9363654 |
| 2390 | 36900.37000.37700.37800.42600.119600.135500 | **13th Floor Slab** | 12d | 2027-04-09 | 2027-04-20 |  | start no earlier than 2027-04-09 | Sector-44 Noida(2) | 9365294 |
| 2391 | 36900.37000.37700.37800.42600.119600.135500.736500 | Shuttering Work | 9d | 2027-04-09 | 2027-04-17 | 2388 |  | Sector-44 Noida(2) | 9388884 |
| 2392 | 36900.37000.37700.37800.42600.119600.135500.736600 | Reinforcement Work | 5d | 2027-04-15 | 2027-04-19 | 2391FS-3d |  | Sector-44 Noida(2) | 9388894 |
| 2393 | 36900.37000.37700.37800.42600.119600.135500.736700 | Conduiting work | 1d | 2027-04-19 | 2027-04-19 | 2392FS-1d |  | Sector-44 Noida(2) | 9388904 |
| 2394 | 36900.37000.37700.37800.42600.119600.135500.736800 | Concreteing work | 1d | 2027-04-20 | 2027-04-20 | 2391FF, 2392FF, 2393 |  | Sector-44 Noida(2) | 9388914 |
| 2395 | 36900.37000.37700.37800.42600.119700 | **14th Floor Slab** | 12d | 2027-04-21 | 2027-05-02 |  | start no earlier than 2027-04-21 | Sector-44 Noida(2) | 9363664 |
| 2396 | 36900.37000.37700.37800.42600.119700.135400 | **14th Floor Slab** | 12d | 2027-04-21 | 2027-05-02 |  | start no earlier than 2027-04-21 | Sector-44 Noida(2) | 9365304 |
| 2397 | 36900.37000.37700.37800.42600.119700.135400.736900 | Shuttering Work | 9d | 2027-04-21 | 2027-04-29 | 2394 |  | Sector-44 Noida(2) | 9388924 |
| 2398 | 36900.37000.37700.37800.42600.119700.135400.737000 | Reinforcement Work | 5d | 2027-04-27 | 2027-05-01 | 2397FS-3d |  | Sector-44 Noida(2) | 9388934 |
| 2399 | 36900.37000.37700.37800.42600.119700.135400.737100 | Conduiting work | 1d | 2027-05-01 | 2027-05-01 | 2398FS-1d |  | Sector-44 Noida(2) | 9388944 |
| 2400 | 36900.37000.37700.37800.42600.119700.135400.737200 | Concreteing work | 1d | 2027-05-02 | 2027-05-02 | 2397FF, 2398FF, 2399 |  | Sector-44 Noida(2) | 9388954 |

| ID | WBS | Task | Duration | Start | Finish | Predecessors | Constraint | Calendar | Unique_Task_ID |
| --- | --- | --- | --- | --- | --- | --- | --- | --- | --- |
| 2401 | 36900.37000.37700.37800.42600.119800 | **15th Floor Slab** | 12d | 2027-05-03 | 2027-05-14 |  | start no earlier than 2027-05-03 | Sector-44 Noida(2) | 9363674 |
| 2402 | 36900.37000.37700.37800.42600.119800.135300 | **15th Floor Slab** | 12d | 2027-05-03 | 2027-05-14 |  | start no earlier than 2027-05-03 | Sector-44 Noida(2) | 9365314 |
| 2403 | 36900.37000.37700.37800.42600.119800.135300.737300 | Shuttering Work | 9d | 2027-05-03 | 2027-05-11 | 2400 |  | Sector-44 Noida(2) | 9388964 |
| 2404 | 36900.37000.37700.37800.42600.119800.135300.737400 | Reinforcement Work | 5d | 2027-05-09 | 2027-05-13 | 2403FS-3d |  | Sector-44 Noida(2) | 9388974 |
| 2405 | 36900.37000.37700.37800.42600.119800.135300.737500 | Conduiting work | 1d | 2027-05-13 | 2027-05-13 | 2404FS-1d |  | Sector-44 Noida(2) | 9388984 |
| 2406 | 36900.37000.37700.37800.42600.119800.135300.737600 | Concreteing work | 1d | 2027-05-14 | 2027-05-14 | 2403FF, 2404FF, 2405 |  | Sector-44 Noida(2) | 9388994 |
| 2407 | 36900.37000.37700.37800.42600.119900 | **16th Floor Slab** | 12d | 2027-05-15 | 2027-05-26 |  | start no earlier than 2027-05-15 | Sector-44 Noida(2) | 9363684 |
| 2408 | 36900.37000.37700.37800.42600.119900.135200 | **16th Floor Slab** | 12d | 2027-05-15 | 2027-05-26 |  | start no earlier than 2027-05-15 | Sector-44 Noida(2) | 9365324 |
| 2409 | 36900.37000.37700.37800.42600.119900.135200.737700 | Shuttering Work | 9d | 2027-05-15 | 2027-05-23 | 2406 |  | Sector-44 Noida(2) | 9389004 |
| 2410 | 36900.37000.37700.37800.42600.119900.135200.737800 | Reinforcement Work | 5d | 2027-05-21 | 2027-05-25 | 2409FS-3d |  | Sector-44 Noida(2) | 9389014 |
| 2411 | 36900.37000.37700.37800.42600.119900.135200.737900 | Conduiting work | 1d | 2027-05-25 | 2027-05-25 | 2410FS-1d |  | Sector-44 Noida(2) | 9389024 |
| 2412 | 36900.37000.37700.37800.42600.119900.135200.738000 | Concreteing work | 1d | 2027-05-26 | 2027-05-26 | 2409FF, 2410FF, 2411 |  | Sector-44 Noida(2) | 9389034 |
| 2413 | 36900.37000.37700.37800.42600.120000 | **17th Floor Slab** | 15d | 2027-05-27 | 2027-06-10 |  | start no earlier than 2027-05-27 | Sector-44 Noida(2) | 9363694 |
| 2414 | 36900.37000.37700.37800.42600.120000.135100 | **17th Floor Slab** | 15d | 2027-05-27 | 2027-06-10 |  | start no earlier than 2027-05-27 | Sector-44 Noida(2) | 9365334 |
| 2415 | 36900.37000.37700.37800.42600.120000.135100.738100 | Shuttering Work | 10d | 2027-05-27 | 2027-06-05 | 2412 |  | Sector-44 Noida(2) | 9389044 |
| 2416 | 36900.37000.37700.37800.42600.120000.135100.738200 | Reinforcement Work | 7d | 2027-06-03 | 2027-06-09 | 2415FS-3d |  | Sector-44 Noida(2) | 9389054 |
| 2417 | 36900.37000.37700.37800.42600.120000.135100.738300 | Conduiting work | 1d | 2027-06-09 | 2027-06-09 | 2416FS-1d |  | Sector-44 Noida(2) | 9389064 |
| 2418 | 36900.37000.37700.37800.42600.120000.135100.738400 | Concreteing work | 1d | 2027-06-10 | 2027-06-10 | 2415FF, 2416FF, 2417 |  | Sector-44 Noida(2) | 9389074 |
| 2419 | 36900.37000.37700.37800.42600.120100 | **18th Floor Slab** | 12d | 2027-06-11 | 2027-06-22 |  | start no earlier than 2027-06-11 | Sector-44 Noida(2) | 9363704 |
| 2420 | 36900.37000.37700.37800.42600.120100.135000 | **18th Floor Slab** | 12d | 2027-06-11 | 2027-06-22 |  | start no earlier than 2027-06-11 | Sector-44 Noida(2) | 9365344 |
| 2421 | 36900.37000.37700.37800.42600.120100.135000.738500 | Shuttering Work | 9d | 2027-06-11 | 2027-06-19 | 2418 |  | Sector-44 Noida(2) | 9389084 |
| 2422 | 36900.37000.37700.37800.42600.120100.135000.738600 | Reinforcement Work | 5d | 2027-06-17 | 2027-06-21 | 2421FS-3d |  | Sector-44 Noida(2) | 9389094 |
| 2423 | 36900.37000.37700.37800.42600.120100.135000.738700 | Conduiting work | 1d | 2027-06-21 | 2027-06-21 | 2422FS-1d |  | Sector-44 Noida(2) | 9389104 |
| 2424 | 36900.37000.37700.37800.42600.120100.135000.738800 | Concreteing work | 1d | 2027-06-22 | 2027-06-22 | 2421FF, 2422FF, 2423 |  | Sector-44 Noida(2) | 9389114 |

| ID | WBS | Task | Duration | Start | Finish | Predecessors | Constraint | Calendar | Unique_Task_ID |
| --- | --- | --- | --- | --- | --- | --- | --- | --- | --- |
| 2425 | 36900.37000.37700.37800.42600.120200 | **19th Floor Slab** | 12d | 2027-06-23 | 2027-07-04 |  | start no earlier than 2027-06-23 | Sector-44 Noida(2) | 9363714 |
| 2426 | 36900.37000.37700.37800.42600.120200.134900 | **19th Floor Slab** | 12d | 2027-06-23 | 2027-07-04 |  | start no earlier than 2027-06-23 | Sector-44 Noida(2) | 9365354 |
| 2427 | 36900.37000.37700.37800.42600.120200.134900.738900 | Shuttering Work | 9d | 2027-06-23 | 2027-07-01 | 2424 |  | Sector-44 Noida(2) | 9389124 |
| 2428 | 36900.37000.37700.37800.42600.120200.134900.739000 | Reinforcement Work | 5d | 2027-06-29 | 2027-07-03 | 2427FS-3d |  | Sector-44 Noida(2) | 9389134 |
| 2429 | 36900.37000.37700.37800.42600.120200.134900.739100 | Conduiting work | 1d | 2027-07-03 | 2027-07-03 | 2428FS-1d |  | Sector-44 Noida(2) | 9389144 |
| 2430 | 36900.37000.37700.37800.42600.120200.134900.739200 | Concreteing work | 1d | 2027-07-04 | 2027-07-04 | 2427FF, 2428FF, 2429 |  | Sector-44 Noida(2) | 9389154 |
| 2431 | 36900.37000.37700.37800.42600.120300 | **20th Floor Slab** | 12d | 2027-07-05 | 2027-07-16 |  | start no earlier than 2027-07-05 | Sector-44 Noida(2) | 9363724 |
| 2432 | 36900.37000.37700.37800.42600.120300.134800 | **20th Floor Slab** | 12d | 2027-07-05 | 2027-07-16 |  | start no earlier than 2027-07-05 | Sector-44 Noida(2) | 9365364 |
| 2433 | 36900.37000.37700.37800.42600.120300.134800.739300 | Shuttering Work | 9d | 2027-07-05 | 2027-07-13 | 2430 |  | Sector-44 Noida(2) | 9389164 |
| 2434 | 36900.37000.37700.37800.42600.120300.134800.739400 | Reinforcement Work | 5d | 2027-07-11 | 2027-07-15 | 2433FS-3d |  | Sector-44 Noida(2) | 9389174 |
| 2435 | 36900.37000.37700.37800.42600.120300.134800.739500 | Conduiting work | 1d | 2027-07-15 | 2027-07-15 | 2434FS-1d |  | Sector-44 Noida(2) | 9389184 |
| 2436 | 36900.37000.37700.37800.42600.120300.134800.739600 | Concreteing work | 1d | 2027-07-16 | 2027-07-16 | 2433FF, 2434FF, 2435 |  | Sector-44 Noida(2) | 9389194 |
| 2437 | 36900.37000.37700.37800.42600.120400 | **21st Floor Slab** | 12d | 2027-07-17 | 2027-07-28 |  | start no earlier than 2027-07-17 | Sector-44 Noida(2) | 9363734 |
| 2438 | 36900.37000.37700.37800.42600.120400.134700 | **21st Floor Slab** | 12d | 2027-07-17 | 2027-07-28 |  | start no earlier than 2027-07-17 | Sector-44 Noida(2) | 9365374 |
| 2439 | 36900.37000.37700.37800.42600.120400.134700.739700 | Shuttering Work | 9d | 2027-07-17 | 2027-07-25 | 2436 |  | Sector-44 Noida(2) | 9389204 |
| 2440 | 36900.37000.37700.37800.42600.120400.134700.739800 | Reinforcement Work | 5d | 2027-07-23 | 2027-07-27 | 2439FS-3d |  | Sector-44 Noida(2) | 9389214 |
| 2441 | 36900.37000.37700.37800.42600.120400.134700.739900 | Conduiting work | 1d | 2027-07-27 | 2027-07-27 | 2440FS-1d |  | Sector-44 Noida(2) | 9389224 |
| 2442 | 36900.37000.37700.37800.42600.120400.134700.740000 | Concreteing work | 1d | 2027-07-28 | 2027-07-28 | 2439FF, 2440FF, 2441 |  | Sector-44 Noida(2) | 9389234 |
| 2443 | 36900.37000.37700.37800.42600.120500 | **22nd Floor Slab** | 12d | 2027-07-29 | 2027-08-09 |  | start no earlier than 2027-07-29 | Sector-44 Noida(2) | 9363744 |
| 2444 | 36900.37000.37700.37800.42600.120500.134600 | **22nd Floor Slab** | 12d | 2027-07-29 | 2027-08-09 |  | start no earlier than 2027-07-29 | Sector-44 Noida(2) | 9365384 |
| 2445 | 36900.37000.37700.37800.42600.120500.134600.740100 | Shuttering Work | 9d | 2027-07-29 | 2027-08-06 | 2442 |  | Sector-44 Noida(2) | 9389244 |
| 2446 | 36900.37000.37700.37800.42600.120500.134600.740200 | Reinforcement Work | 5d | 2027-08-04 | 2027-08-08 | 2445FS-3d |  | Sector-44 Noida(2) | 9389254 |
| 2447 | 36900.37000.37700.37800.42600.120500.134600.740300 | Conduiting work | 1d | 2027-08-08 | 2027-08-08 | 2446FS-1d |  | Sector-44 Noida(2) | 9389264 |
| 2448 | 36900.37000.37700.37800.42600.120500.134600.740400 | Concreteing work | 1d | 2027-08-09 | 2027-08-09 | 2445FF, 2446FF, 2447 |  | Sector-44 Noida(2) | 9389274 |

| ID | WBS | Task | Duration | Start | Finish | Predecessors | Constraint | Calendar | Unique_Task_ID |
| --- | --- | --- | --- | --- | --- | --- | --- | --- | --- |
| 2449 | 36900.37000.37700.37800.42600.120600 | **23rd Floor Slab** | 12d | 2027-08-10 | 2027-08-21 |  | start no earlier than 2027-08-10 | Sector-44 Noida(2) | 9363754 |
| 2450 | 36900.37000.37700.37800.42600.120600.134500 | **23rd Floor Slab** | 12d | 2027-08-10 | 2027-08-21 |  | start no earlier than 2027-08-10 | Sector-44 Noida(2) | 9365394 |
| 2451 | 36900.37000.37700.37800.42600.120600.134500.740500 | Shuttering Work | 9d | 2027-08-10 | 2027-08-18 | 2448 |  | Sector-44 Noida(2) | 9389284 |
| 2452 | 36900.37000.37700.37800.42600.120600.134500.740600 | Reinforcement Work | 5d | 2027-08-16 | 2027-08-20 | 2451FS-3d |  | Sector-44 Noida(2) | 9389294 |
| 2453 | 36900.37000.37700.37800.42600.120600.134500.740700 | Conduiting work | 1d | 2027-08-20 | 2027-08-20 | 2452FS-1d |  | Sector-44 Noida(2) | 9389304 |
| 2454 | 36900.37000.37700.37800.42600.120600.134500.740800 | Concreteing work | 1d | 2027-08-21 | 2027-08-21 | 2451FF, 2452FF, 2453 |  | Sector-44 Noida(2) | 9389314 |
| 2455 | 36900.37000.37700.37800.42600.120700 | **24th Floor Slab** | 12d | 2027-08-22 | 2027-09-02 |  | start no earlier than 2027-08-22 | Sector-44 Noida(2) | 9363764 |
| 2456 | 36900.37000.37700.37800.42600.120700.134400 | **24th Floor Slab** | 12d | 2027-08-22 | 2027-09-02 |  | start no earlier than 2027-08-22 | Sector-44 Noida(2) | 9365404 |
| 2457 | 36900.37000.37700.37800.42600.120700.134400.740900 | Shuttering Work | 9d | 2027-08-22 | 2027-08-30 | 2454 |  | Sector-44 Noida(2) | 9389324 |
| 2458 | 36900.37000.37700.37800.42600.120700.134400.741000 | Reinforcement Work | 5d | 2027-08-28 | 2027-09-01 | 2457FS-3d |  | Sector-44 Noida(2) | 9389334 |
| 2459 | 36900.37000.37700.37800.42600.120700.134400.741100 | Conduiting work | 1d | 2027-09-01 | 2027-09-01 | 2458FS-1d |  | Sector-44 Noida(2) | 9389344 |
| 2460 | 36900.37000.37700.37800.42600.120700.134400.741200 | Concreteing work | 1d | 2027-09-02 | 2027-09-02 | 2457FF, 2458FF, 2459 |  | Sector-44 Noida(2) | 9389354 |
| 2461 | 36900.37000.37700.37800.42600.120800 | **25th Floor Slab** | 12d | 2027-09-03 | 2027-09-14 |  | start no earlier than 2027-09-03 | Sector-44 Noida(2) | 9363774 |
| 2462 | 36900.37000.37700.37800.42600.120800.134300 | **25th Floor Slab** | 12d | 2027-09-03 | 2027-09-14 |  | start no earlier than 2027-09-03 | Sector-44 Noida(2) | 9365414 |
| 2463 | 36900.37000.37700.37800.42600.120800.134300.741300 | Shuttering Work | 9d | 2027-09-03 | 2027-09-11 | 2460 |  | Sector-44 Noida(2) | 9389364 |
| 2464 | 36900.37000.37700.37800.42600.120800.134300.741400 | Reinforcement Work | 5d | 2027-09-09 | 2027-09-13 | 2463FS-3d |  | Sector-44 Noida(2) | 9389374 |
| 2465 | 36900.37000.37700.37800.42600.120800.134300.741500 | Conduiting work | 1d | 2027-09-13 | 2027-09-13 | 2464FS-1d |  | Sector-44 Noida(2) | 9389384 |
| 2466 | 36900.37000.37700.37800.42600.120800.134300.741600 | Concreteing work | 1d | 2027-09-14 | 2027-09-14 | 2463FF, 2464FF, 2465 |  | Sector-44 Noida(2) | 9389394 |
| 2467 | 36900.37000.37700.37800.42600.120900 | **26th Floor Slab** | 15d | 2027-09-15 | 2027-09-29 |  | start no earlier than 2027-09-15 | Sector-44 Noida(2) | 9363784 |
| 2468 | 36900.37000.37700.37800.42600.120900.134200 | **26th Floor Slab** | 15d | 2027-09-15 | 2027-09-29 |  | start no earlier than 2027-09-15 | Sector-44 Noida(2) | 9365424 |
| 2469 | 36900.37000.37700.37800.42600.120900.134200.741700 | Shuttering Work | 10d | 2027-09-15 | 2027-09-24 | 2466 |  | Sector-44 Noida(2) | 9389404 |
| 2470 | 36900.37000.37700.37800.42600.120900.134200.741800 | Reinforcement Work | 7d | 2027-09-22 | 2027-09-28 | 2469FS-3d |  | Sector-44 Noida(2) | 9389414 |
| 2471 | 36900.37000.37700.37800.42600.120900.134200.741900 | Conduiting work | 1d | 2027-09-28 | 2027-09-28 | 2470FS-1d |  | Sector-44 Noida(2) | 9389424 |
| 2472 | 36900.37000.37700.37800.42600.120900.134200.742000 | Concreteing work | 1d | 2027-09-29 | 2027-09-29 | 2469FF, 2470FF, 2471 |  | Sector-44 Noida(2) | 9389434 |

| ID | WBS | Task | Duration | Start | Finish | Predecessors | Constraint | Calendar | Unique_Task_ID |
| --- | --- | --- | --- | --- | --- | --- | --- | --- | --- |
| 2473 | 36900.37000.37700.37800.42600.121000 | **27th Floor Slab** | 12d | 2027-09-30 | 2027-10-11 |  | start no earlier than 2027-09-30 | Sector-44 Noida(2) | 9363794 |
| 2474 | 36900.37000.37700.37800.42600.121000.134100 | **27th Floor Slab** | 12d | 2027-09-30 | 2027-10-11 |  | start no earlier than 2027-09-30 | Sector-44 Noida(2) | 9365434 |
| 2475 | 36900.37000.37700.37800.42600.121000.134100.742100 | Shuttering Work | 9d | 2027-09-30 | 2027-10-08 | 2472 |  | Sector-44 Noida(2) | 9389444 |
| 2476 | 36900.37000.37700.37800.42600.121000.134100.742200 | Reinforcement Work | 5d | 2027-10-06 | 2027-10-10 | 2475FS-3d |  | Sector-44 Noida(2) | 9389454 |
| 2477 | 36900.37000.37700.37800.42600.121000.134100.742300 | Conduiting work | 1d | 2027-10-10 | 2027-10-10 | 2476FS-1d |  | Sector-44 Noida(2) | 9389464 |
| 2478 | 36900.37000.37700.37800.42600.121000.134100.742400 | Concreteing work | 1d | 2027-10-11 | 2027-10-11 | 2475FF, 2476FF, 2477 |  | Sector-44 Noida(2) | 9389474 |
| 2479 | 36900.37000.37700.37800.42600.121100 | **28th Floor Slab** | 12d | 2027-10-12 | 2027-10-23 |  | start no earlier than 2027-10-12 | Sector-44 Noida(2) | 9363804 |
| 2480 | 36900.37000.37700.37800.42600.121100.134000 | **28th Floor Slab** | 12d | 2027-10-12 | 2027-10-23 |  | start no earlier than 2027-10-12 | Sector-44 Noida(2) | 9365444 |
| 2481 | 36900.37000.37700.37800.42600.121100.134000.742500 | Shuttering Work | 9d | 2027-10-12 | 2027-10-20 | 2478 |  | Sector-44 Noida(2) | 9389484 |
| 2482 | 36900.37000.37700.37800.42600.121100.134000.742600 | Reinforcement Work | 5d | 2027-10-18 | 2027-10-22 | 2481FS-3d |  | Sector-44 Noida(2) | 9389494 |
| 2483 | 36900.37000.37700.37800.42600.121100.134000.742700 | Conduiting work | 1d | 2027-10-22 | 2027-10-22 | 2482FS-1d |  | Sector-44 Noida(2) | 9389504 |
| 2484 | 36900.37000.37700.37800.42600.121100.134000.742800 | Concreteing work | 1d | 2027-10-23 | 2027-10-23 | 2481FF, 2482FF, 2483 |  | Sector-44 Noida(2) | 9389514 |
| 2485 | 36900.37000.37700.37800.42600.121200 | **29th Floor Slab** | 12d | 2027-10-24 | 2027-12-19 |  | start no earlier than 2027-10-24 | Sector-44 Noida(2) | 9363814 |
| 2486 | 36900.37000.37700.37800.42600.121200.133900 | **29th Floor Slab** | 12d | 2027-10-24 | 2027-12-19 |  | start no earlier than 2027-10-24 | Sector-44 Noida(2) | 9365454 |
| 2487 | 36900.37000.37700.37800.42600.121200.133900.742900 | Shuttering Work | 9d | 2027-10-24 | 2027-12-16 | 2484 |  | Sector-44 Noida(2) | 9389524 |
| 2488 | 36900.37000.37700.37800.42600.121200.133900.743000 | Reinforcement Work | 5d | 2027-10-30 | 2027-12-18 | 2487FS-3d |  | Sector-44 Noida(2) | 9389534 |
| 2489 | 36900.37000.37700.37800.42600.121200.133900.743100 | Conduiting work | 1d | 2027-12-18 | 2027-12-18 | 2488FS-1d |  | Sector-44 Noida(2) | 9389544 |
| 2490 | 36900.37000.37700.37800.42600.121200.133900.743200 | Concreteing work | 1d | 2027-12-19 | 2027-12-19 | 2487FF, 2488FF, 2489 |  | Sector-44 Noida(2) | 9389554 |
| 2491 | 36900.37000.37700.37800.42600.121300 | **30th Floor Slab** | 12d | 2027-12-20 | 2027-12-31 |  | start no earlier than 2027-12-20 | Sector-44 Noida(2) | 9363824 |
| 2492 | 36900.37000.37700.37800.42600.121300.133800 | **30th Floor Slab** | 12d | 2027-12-20 | 2027-12-31 |  | start no earlier than 2027-12-20 | Sector-44 Noida(2) | 9365464 |
| 2493 | 36900.37000.37700.37800.42600.121300.133800.743300 | Shuttering Work | 9d | 2027-12-20 | 2027-12-28 | 2490 |  | Sector-44 Noida(2) | 9389564 |
| 2494 | 36900.37000.37700.37800.42600.121300.133800.743400 | Reinforcement Work | 5d | 2027-12-26 | 2027-12-30 | 2493FS-3d |  | Sector-44 Noida(2) | 9389574 |
| 2495 | 36900.37000.37700.37800.42600.121300.133800.743500 | Conduiting work | 1d | 2027-12-30 | 2027-12-30 | 2494FS-1d |  | Sector-44 Noida(2) | 9389584 |
| 2496 | 36900.37000.37700.37800.42600.121300.133800.743600 | Concreteing work | 1d | 2027-12-31 | 2027-12-31 | 2493FF, 2494FF, 2495 |  | Sector-44 Noida(2) | 9389594 |

| ID | WBS | Task | Duration | Start | Finish | Predecessors | Constraint | Calendar | Unique_Task_ID |
| --- | --- | --- | --- | --- | --- | --- | --- | --- | --- |
| 2497 | 36900.37000.37700.37800.42600.121400 | **31st Floor Slab** | 12d | 2028-01-01 | 2028-01-12 |  | start no earlier than 2028-01-01 | Sector-44 Noida(2) | 9363834 |
| 2498 | 36900.37000.37700.37800.42600.121400.133700 | **31st Floor Slab** | 12d | 2028-01-01 | 2028-01-12 |  | start no earlier than 2028-01-01 | Sector-44 Noida(2) | 9365474 |
| 2499 | 36900.37000.37700.37800.42600.121400.133700.743700 | Shuttering Work | 9d | 2028-01-01 | 2028-01-09 | 2496 |  | Sector-44 Noida(2) | 9389604 |
| 2500 | 36900.37000.37700.37800.42600.121400.133700.743800 | Reinforcement Work | 5d | 2028-01-07 | 2028-01-11 | 2499FS-3d |  | Sector-44 Noida(2) | 9389614 |
| 2501 | 36900.37000.37700.37800.42600.121400.133700.743900 | Conduiting work | 1d | 2028-01-11 | 2028-01-11 | 2500FS-1d |  | Sector-44 Noida(2) | 9389624 |
| 2502 | 36900.37000.37700.37800.42600.121400.133700.744000 | Concreteing work | 1d | 2028-01-12 | 2028-01-12 | 2499FF, 2500FF, 2501 |  | Sector-44 Noida(2) | 9389634 |
| 2503 | 36900.37000.37700.37800.42600.121500 | **32nd Floor Slab** | 12d | 2028-01-13 | 2028-01-24 |  | start no earlier than 2028-01-13 | Sector-44 Noida(2) | 9363844 |
| 2504 | 36900.37000.37700.37800.42600.121500.133600 | **32nd Floor Slab** | 12d | 2028-01-13 | 2028-01-24 |  | start no earlier than 2028-01-13 | Sector-44 Noida(2) | 9365484 |
| 2505 | 36900.37000.37700.37800.42600.121500.133600.744100 | Shuttering Work | 9d | 2028-01-13 | 2028-01-21 | 2502 |  | Sector-44 Noida(2) | 9389644 |
| 2506 | 36900.37000.37700.37800.42600.121500.133600.744200 | Reinforcement Work | 5d | 2028-01-19 | 2028-01-23 | 2505FS-3d |  | Sector-44 Noida(2) | 9389654 |
| 2507 | 36900.37000.37700.37800.42600.121500.133600.744300 | Conduiting work | 1d | 2028-01-23 | 2028-01-23 | 2506FS-1d |  | Sector-44 Noida(2) | 9389664 |
| 2508 | 36900.37000.37700.37800.42600.121500.133600.744400 | Concreteing work | 1d | 2028-01-24 | 2028-01-24 | 2505FF, 2506FF, 2507 |  | Sector-44 Noida(2) | 9389674 |
| 2509 | 36900.37000.37700.37800.42600.121600 | **33rd Floor Slab** | 12d | 2028-01-25 | 2028-02-05 |  | start no earlier than 2028-01-25 | Sector-44 Noida(2) | 9363854 |
| 2510 | 36900.37000.37700.37800.42600.121600.133400 | **33rd Floor Slab** | 12d | 2028-01-25 | 2028-02-05 |  | start no earlier than 2028-01-25 | Sector-44 Noida(2) | 9365494 |
| 2511 | 36900.37000.37700.37800.42600.121600.133400.744500 | Shuttering Work | 9d | 2028-01-25 | 2028-02-02 | 2508 |  | Sector-44 Noida(2) | 9389684 |
| 2512 | 36900.37000.37700.37800.42600.121600.133400.744600 | Reinforcement Work | 5d | 2028-01-31 | 2028-02-04 | 2511FS-3d |  | Sector-44 Noida(2) | 9389694 |
| 2513 | 36900.37000.37700.37800.42600.121600.133400.744700 | Conduiting work | 1d | 2028-02-04 | 2028-02-04 | 2512FS-1d |  | Sector-44 Noida(2) | 9389704 |
| 2514 | 36900.37000.37700.37800.42600.121600.133400.744800 | Concreteing work | 1d | 2028-02-05 | 2028-02-05 | 2511FF, 2512FF, 2513 |  | Sector-44 Noida(2) | 9389714 |
| 2515 | 36900.37000.37700.37800.42600.121700 | **34th Floor Slab** | 12d | 2028-02-06 | 2028-02-17 |  | start no earlier than 2028-02-06 | Sector-44 Noida(2) | 9363864 |
| 2516 | 36900.37000.37700.37800.42600.121700.133300 | **34th Floor Slab** | 12d | 2028-02-06 | 2028-02-17 |  | start no earlier than 2028-02-06 | Sector-44 Noida(2) | 9365504 |
| 2517 | 36900.37000.37700.37800.42600.121700.133300.744900 | Shuttering Work | 9d | 2028-02-06 | 2028-02-14 | 2514 |  | Sector-44 Noida(2) | 9389724 |
| 2518 | 36900.37000.37700.37800.42600.121700.133300.745000 | Reinforcement Work | 5d | 2028-02-12 | 2028-02-16 | 2517FS-3d |  | Sector-44 Noida(2) | 9389734 |
| 2519 | 36900.37000.37700.37800.42600.121700.133300.745100 | Conduiting work | 1d | 2028-02-16 | 2028-02-16 | 2518FS-1d |  | Sector-44 Noida(2) | 9389744 |
| 2520 | 36900.37000.37700.37800.42600.121700.133300.745200 | Concreteing work | 1d | 2028-02-17 | 2028-02-17 | 2517FF, 2518FF, 2519 |  | Sector-44 Noida(2) | 9389754 |

| ID | WBS | Task | Duration | Start | Finish | Predecessors | Constraint | Calendar | Unique_Task_ID |
| --- | --- | --- | --- | --- | --- | --- | --- | --- | --- |
| 2521 | 36900.37000.37700.37800.42600.121800 | **35th Floor Slab** | 15d | 2028-02-18 | 2028-03-03 |  | start no earlier than 2028-02-18 | Sector-44 Noida(2) | 9363874 |
| 2522 | 36900.37000.37700.37800.42600.121800.133100 | **35th Floor Slab** | 15d | 2028-02-18 | 2028-03-03 |  | start no earlier than 2028-02-18 | Sector-44 Noida(2) | 9365514 |
| 2523 | 36900.37000.37700.37800.42600.121800.133100.745300 | Shuttering Work | 10d | 2028-02-18 | 2028-02-27 | 2520 |  | Sector-44 Noida(2) | 9389764 |
| 2524 | 36900.37000.37700.37800.42600.121800.133100.745400 | Reinforcement Work | 7d | 2028-02-25 | 2028-03-02 | 2523FS-3d |  | Sector-44 Noida(2) | 9389774 |
| 2525 | 36900.37000.37700.37800.42600.121800.133100.745500 | Conduiting work | 1d | 2028-03-02 | 2028-03-02 | 2524FS-1d |  | Sector-44 Noida(2) | 9389784 |
| 2526 | 36900.37000.37700.37800.42600.121800.133100.745600 | Concreteing work | 1d | 2028-03-03 | 2028-03-03 | 2523FF, 2524FF, 2525 |  | Sector-44 Noida(2) | 9389794 |
| 2527 | 36900.37000.37700.37800.42600.121900 | **36th Floor Slab** | 12d | 2028-03-04 | 2028-03-15 |  | start no earlier than 2028-03-04 | Sector-44 Noida(2) | 9363884 |
| 2528 | 36900.37000.37700.37800.42600.121900.133000 | **36th Floor Slab** | 12d | 2028-03-04 | 2028-03-15 |  | start no earlier than 2028-03-04 | Sector-44 Noida(2) | 9365524 |
| 2529 | 36900.37000.37700.37800.42600.121900.133000.745700 | Shuttering Work | 9d | 2028-03-04 | 2028-03-12 | 2526 |  | Sector-44 Noida(2) | 9389804 |
| 2530 | 36900.37000.37700.37800.42600.121900.133000.745800 | Reinforcement Work | 5d | 2028-03-10 | 2028-03-14 | 2529FS-3d |  | Sector-44 Noida(2) | 9389814 |
| 2531 | 36900.37000.37700.37800.42600.121900.133000.745900 | Conduiting work | 1d | 2028-03-14 | 2028-03-14 | 2530FS-1d |  | Sector-44 Noida(2) | 9389824 |
| 2532 | 36900.37000.37700.37800.42600.121900.133000.746000 | Concreteing work | 1d | 2028-03-15 | 2028-03-15 | 2529FF, 2530FF, 2531 |  | Sector-44 Noida(2) | 9389834 |
| 2533 | 36900.37000.37700.37800.42600.122000 | **37th Floor Slab** | 12d | 2028-03-16 | 2028-03-27 |  | start no earlier than 2028-03-16 | Sector-44 Noida(2) | 9363894 |
| 2534 | 36900.37000.37700.37800.42600.122000.132900 | **37th Floor Slab** | 12d | 2028-03-16 | 2028-03-27 |  | start no earlier than 2028-03-16 | Sector-44 Noida(2) | 9365534 |
| 2535 | 36900.37000.37700.37800.42600.122000.132900.746100 | Shuttering Work | 9d | 2028-03-16 | 2028-03-24 | 2532 |  | Sector-44 Noida(2) | 9389844 |
| 2536 | 36900.37000.37700.37800.42600.122000.132900.746200 | Reinforcement Work | 5d | 2028-03-22 | 2028-03-26 | 2535FS-3d |  | Sector-44 Noida(2) | 9389854 |
| 2537 | 36900.37000.37700.37800.42600.122000.132900.746300 | Conduiting work | 1d | 2028-03-26 | 2028-03-26 | 2536FS-1d |  | Sector-44 Noida(2) | 9389864 |
| 2538 | 36900.37000.37700.37800.42600.122000.132900.746400 | Concreteing work | 1d | 2028-03-27 | 2028-03-27 | 2535FF, 2536FF, 2537 |  | Sector-44 Noida(2) | 9389874 |
| 2539 | 36900.37000.37700.37800.42600.122100 | **38th Floor Slab** | 12d | 2028-03-28 | 2028-04-08 |  | start no earlier than 2028-03-28 | Sector-44 Noida(2) | 9363904 |
| 2540 | 36900.37000.37700.37800.42600.122100.132800 | **38th Floor Slab** | 12d | 2028-03-28 | 2028-04-08 |  | start no earlier than 2028-03-28 | Sector-44 Noida(2) | 9365544 |
| 2541 | 36900.37000.37700.37800.42600.122100.132800.746500 | Shuttering Work | 9d | 2028-03-28 | 2028-04-05 | 2538 |  | Sector-44 Noida(2) | 9389884 |
| 2542 | 36900.37000.37700.37800.42600.122100.132800.746600 | Reinforcement Work | 5d | 2028-04-03 | 2028-04-07 | 2541FS-3d |  | Sector-44 Noida(2) | 9389894 |
| 2543 | 36900.37000.37700.37800.42600.122100.132800.746700 | Conduiting work | 1d | 2028-04-07 | 2028-04-07 | 2542FS-1d |  | Sector-44 Noida(2) | 9389904 |
| 2544 | 36900.37000.37700.37800.42600.122100.132800.746800 | Concreteing work | 1d | 2028-04-08 | 2028-04-08 | 2541FF, 2542FF, 2543 |  | Sector-44 Noida(2) | 9389914 |

| ID | WBS | Task | Duration | Start | Finish | Predecessors | Constraint | Calendar | Unique_Task_ID |
| --- | --- | --- | --- | --- | --- | --- | --- | --- | --- |
| 2545 | 36900.37000.37700.37800.42600.122200 | **Terrace Slab** | 15d | 2028-04-09 | 2028-04-23 |  | start no earlier than 2028-04-09 | Sector-44 Noida(2) | 9363914 |
| 2546 | 36900.37000.37700.37800.42600.122200.132700 | **Terrace Slab** | 15d | 2028-04-09 | 2028-04-23 |  | start no earlier than 2028-04-09 | Sector-44 Noida(2) | 9365554 |
| 2547 | 36900.37000.37700.37800.42600.122200.132700.746900 | Shuttering Work | 10d | 2028-04-09 | 2028-04-18 | 2544 |  | Sector-44 Noida(2) | 9389924 |
| 2548 | 36900.37000.37700.37800.42600.122200.132700.747000 | Reinforcement Work | 8d | 2028-04-15 | 2028-04-22 | 2547FS-4d |  | Sector-44 Noida(2) | 9389934 |
| 2549 | 36900.37000.37700.37800.42600.122200.132700.747100 | Conduiting work | 1d | 2028-04-22 | 2028-04-22 | 2548FS-1d |  | Sector-44 Noida(2) | 9389944 |
| 2550 | 36900.37000.37700.37800.42600.122200.132700.747200 | Concreteing work | 1d | 2028-04-23 | 2028-04-23 | 2547FF, 2548FF, 2549 |  | Sector-44 Noida(2) | 9389954 |
| 2551 | 36900.37000.37700.37800.42600.122300 | **Terrace to LMR Floor** | 11d | 2028-04-24 | 2028-05-04 |  | start no earlier than 2028-04-24 | Sector-44 Noida(2) | 9363924 |
| 2552 | 36900.37000.37700.37800.42600.122300.132600 | **LMR Floor Slab** | 11d | 2028-04-24 | 2028-05-04 |  | start no earlier than 2028-04-24 | Sector-44 Noida(2) | 9365564 |
| 2553 | 36900.37000.37700.37800.42600.122300.132600.747300 | Shuttering Work | 8d | 2028-04-24 | 2028-05-01 | 2550 |  | Sector-44 Noida(2) | 9389964 |
| 2554 | 36900.37000.37700.37800.42600.122300.132600.747400 | Reinforcement Work | 4d | 2028-04-30 | 2028-05-03 | 2553FS-2d |  | Sector-44 Noida(2) | 9389974 |
| 2555 | 36900.37000.37700.37800.42600.122300.132600.747500 | Conduiting work | 1d | 2028-05-03 | 2028-05-03 | 2554FS-1d |  | Sector-44 Noida(2) | 9389984 |
| 2556 | 36900.37000.37700.37800.42600.122300.132600.747600 | Concreteing work | 1d | 2028-05-04 | 2028-05-04 | 2553FF, 2554FF, 2555 |  | Sector-44 Noida(2) | 9389994 |
| 2557 | 36900.37000.37700.37800.42600.122400 | **LMR Floor to LMR Roof** | 11d | 2028-05-05 | 2028-05-15 |  | start no earlier than 2028-05-05 | Sector-44 Noida(2) | 9363934 |
| 2558 | 36900.37000.37700.37800.42600.122400.132500 | **LMR Roof Slab** | 11d | 2028-05-05 | 2028-05-15 |  | start no earlier than 2028-05-05 | Sector-44 Noida(2) | 9365574 |
| 2559 | 36900.37000.37700.37800.42600.122400.132500.747700 | Shuttering Work | 8d | 2028-05-05 | 2028-05-12 | 2556 |  | Sector-44 Noida(2) | 9390004 |
| 2560 | 36900.37000.37700.37800.42600.122400.132500.747800 | Reinforcement Work | 4d | 2028-05-11 | 2028-05-14 | 2559FS-2d |  | Sector-44 Noida(2) | 9390014 |
| 2561 | 36900.37000.37700.37800.42600.122400.132500.747900 | Conduiting work | 1d | 2028-05-14 | 2028-05-14 | 2560FS-1d |  | Sector-44 Noida(2) | 9390024 |
| 2562 | 36900.37000.37700.37800.42600.122400.132500.748000 | Concreteing work | 1d | 2028-05-15 | 2028-05-15 | 2559FF, 2560FF, 2561 |  | Sector-44 Noida(2) | 9390034 |
| 2563 | 36900.37000.37700.37800.42600.129600 | **OHT & Roof Features** | 18d | 2028-05-16 | 2028-06-02 |  | start no earlier than 2028-05-16 | Sector-44 Noida(2) | 9364044 |
| 2564 | 36900.37000.37700.37800.42600.129600.187400 | **OHT & Roof Features** | 18d | 2028-05-16 | 2028-06-02 |  | start no earlier than 2028-05-16 | Sector-44 Noida(2) | 9365774 |
| 2565 | 36900.37000.37700.37800.42600.129600.187400.748100 | Reinforcement Work | 11d | 2028-05-16 | 2028-05-26 | 2562 |  | Sector-44 Noida(2) | 9390044 |
| 2566 | 36900.37000.37700.37800.42600.129600.187400.748200 | Shuttering work | 9d | 2028-05-25 | 2028-06-02 | 2565FS-2d |  | Sector-44 Noida(2) | 9390054 |
| 2567 | 36900.37000.37700.37800.42600.129600.187400.748300 | Concreteing work | 7d | 2028-05-27 | 2028-06-02 | 2565FF, 2566FF |  | Sector-44 Noida(2) | 9390064 |
| 2568 | 36900.37000.37700.37800.44400 | **Post Pour Works** | 478d | 2027-01-03 | 2028-06-08 |  | start no earlier than 2027-01-03 | Sector-44 Noida(2) | 9360774 |
| 2569 | 36900.37000.37700.37800.44400.288500 | 1st Floor | 8d | 2027-01-03 | 2027-01-10 | 2340 |  | Sector-44 Noida(2) | 9367984 |
| 2570 | 36900.37000.37700.37800.44400.288600 | 2nd Floor | 8d | 2027-01-15 | 2027-01-22 | 2569, 2346 |  | Sector-44 Noida(2) | 9367994 |
| 2571 | 36900.37000.37700.37800.44400.288700 | 3rd Floor | 8d | 2027-01-23 | 2027-01-30 | 2570 |  | Sector-44 Noida(2) | 9368004 |
| 2572 | 36900.37000.37700.37800.44400.288800 | 4th Floor | 8d | 2027-02-08 | 2027-02-15 | 2571, 2358 |  | Sector-44 Noida(2) | 9368014 |
| 2573 | 36900.37000.37700.37800.44400.288900 | 5th Floor | 8d | 2027-02-20 | 2027-02-27 | 2572, 2364 |  | Sector-44 Noida(2) | 9368024 |
| 2574 | 36900.37000.37700.37800.44400.289000 | 6th Floor | 8d | 2027-03-04 | 2027-03-11 | 2573, 2370 |  | Sector-44 Noida(2) | 9368034 |
| 2575 | 36900.37000.37700.37800.44400.289100 | 7th Floor | 8d | 2027-03-12 | 2027-03-19 | 2574 |  | Sector-44 Noida(2) | 9368044 |
| 2576 | 36900.37000.37700.37800.44400.289200 | 8th Floor | 8d | 2027-03-28 | 2027-04-04 | 2575, 2382 |  | Sector-44 Noida(2) | 9368054 |
| 2577 | 36900.37000.37700.37800.44400.289300 | 9th Floor | 8d | 2027-04-09 | 2027-04-16 | 2576, 2388 |  | Sector-44 Noida(2) | 9368064 |
| 2578 | 36900.37000.37700.37800.44400.289400 | 10th Floor | 8d | 2027-04-21 | 2027-04-28 | 2577, 2394 |  | Sector-44 Noida(2) | 9368074 |
| 2579 | 36900.37000.37700.37800.44400.289500 | 11th Floor | 8d | 2027-05-03 | 2027-05-10 | 2578, 2400 |  | Sector-44 Noida(2) | 9368084 |
| 2580 | 36900.37000.37700.37800.44400.289600 | 12th Floor | 8d | 2027-05-15 | 2027-05-22 | 2579, 2406 |  | Sector-44 Noida(2) | 9368094 |
| 2581 | 36900.37000.37700.37800.44400.289700 | 13th Floor | 8d | 2027-05-27 | 2027-06-03 | 2580, 2412 |  | Sector-44 Noida(2) | 9368104 |
| 2582 | 36900.37000.37700.37800.44400.289800 | 14th Floor | 8d | 2027-06-11 | 2027-06-18 | 2581, 2418 |  | Sector-44 Noida(2) | 9368114 |
| 2583 | 36900.37000.37700.37800.44400.289900 | 15th Floor | 8d | 2027-06-23 | 2027-06-30 | 2582, 2424 |  | Sector-44 Noida(2) | 9368124 |
| 2584 | 36900.37000.37700.37800.44400.290000 | 16th Floor | 8d | 2027-07-05 | 2027-07-12 | 2583, 2430 |  | Sector-44 Noida(2) | 9368134 |
| 2585 | 36900.37000.37700.37800.44400.290100 | 17th Floor | 8d | 2027-07-17 | 2027-07-24 | 2584, 2436 |  | Sector-44 Noida(2) | 9368144 |
| 2586 | 36900.37000.37700.37800.44400.290200 | 18th Floor | 8d | 2027-07-29 | 2027-08-05 | 2585, 2442 |  | Sector-44 Noida(2) | 9368154 |
| 2587 | 36900.37000.37700.37800.44400.290300 | 19th Floor | 8d | 2027-08-10 | 2027-08-17 | 2586, 2448 |  | Sector-44 Noida(2) | 9368164 |
| 2588 | 36900.37000.37700.37800.44400.290400 | 20th Floor | 7d | 2027-08-22 | 2027-08-28 | 2587, 2454 |  | Sector-44 Noida(2) | 9368174 |
| 2589 | 36900.37000.37700.37800.44400.290500 | 21st Floor | 7d | 2027-09-03 | 2027-09-09 | 2588, 2460 |  | Sector-44 Noida(2) | 9368184 |
| 2590 | 36900.37000.37700.37800.44400.290600 | 22nd Floor | 7d | 2027-09-15 | 2027-09-21 | 2589, 2466 |  | Sector-44 Noida(2) | 9368194 |
| 2591 | 36900.37000.37700.37800.44400.290700 | 23rd Floor | 7d | 2027-09-30 | 2027-10-06 | 2590, 2472 |  | Sector-44 Noida(2) | 9368204 |
| 2592 | 36900.37000.37700.37800.44400.290800 | 24th Floor | 7d | 2027-10-12 | 2027-10-18 | 2591, 2478 |  | Sector-44 Noida(2) | 9368214 |
| 2593 | 36900.37000.37700.37800.44400.290900 | 25th Floor | 7d | 2027-10-24 | 2027-10-30 | 2592, 2484 |  | Sector-44 Noida(2) | 9368224 |
| 2594 | 36900.37000.37700.37800.44400.291000 | 26th Floor | 7d | 2027-12-20 | 2027-12-26 | 2593, 2490 |  | Sector-44 Noida(2) | 9368234 |
| 2595 | 36900.37000.37700.37800.44400.291100 | 27th Floor | 7d | 2028-01-01 | 2028-01-07 | 2594, 2496 |  | Sector-44 Noida(2) | 9368244 |
| 2596 | 36900.37000.37700.37800.44400.291200 | 28th Floor | 9d | 2028-01-13 | 2028-01-21 | 2595, 2502 |  | Sector-44 Noida(2) | 9368254 |
| 2597 | 36900.37000.37700.37800.44400.291300 | 29st Floor | 9d | 2028-01-25 | 2028-02-02 | 2596, 2508 |  | Sector-44 Noida(2) | 9368264 |
| 2598 | 36900.37000.37700.37800.44400.291400 | 30th Floor | 9d | 2028-02-06 | 2028-02-14 | 2597, 2514 |  | Sector-44 Noida(2) | 9368274 |
| 2599 | 36900.37000.37700.37800.44400.291500 | 31st Floor | 9d | 2028-02-18 | 2028-02-26 | 2598, 2520 |  | Sector-44 Noida(2) | 9368284 |
| 2600 | 36900.37000.37700.37800.44400.291600 | 32nd Floor | 9d | 2028-03-04 | 2028-03-12 | 2599, 2526 |  | Sector-44 Noida(2) | 9368294 |
| 2601 | 36900.37000.37700.37800.44400.291700 | 33rd Floor | 9d | 2028-03-16 | 2028-03-24 | 2600, 2532 |  | Sector-44 Noida(2) | 9368304 |
| 2602 | 36900.37000.37700.37800.44400.291800 | 34th Floor | 9d | 2028-03-28 | 2028-04-05 | 2601, 2538 |  | Sector-44 Noida(2) | 9368314 |
| 2603 | 36900.37000.37700.37800.44400.291900 | 35th Floor | 9d | 2028-04-09 | 2028-04-17 | 2602, 2544 |  | Sector-44 Noida(2) | 9368324 |
| 2604 | 36900.37000.37700.37800.44400.292000 | 36th Floor | 9d | 2028-04-24 | 2028-05-02 | 2603, 2550 |  | Sector-44 Noida(2) | 9368334 |
| 2605 | 36900.37000.37700.37800.44400.292100 | 37th Floor | 9d | 2028-05-03 | 2028-05-11 | 2604 |  | Sector-44 Noida(2) | 9368344 |
| 2606 | 36900.37000.37700.37800.44400.292200 | 38th Floor | 9d | 2028-05-12 | 2028-05-20 | 2605 |  | Sector-44 Noida(2) | 9368354 |
| 2607 | 36900.37000.37700.37800.44400.292300 | Terrace Floor | 9d | 2028-05-21 | 2028-05-29 | 2606 |  | Sector-44 Noida(2) | 9368364 |
| 2608 | 36900.37000.37700.37800.44400.292400 | LMR, OHT & Roof Feauters | 10d | 2028-05-30 | 2028-06-08 | 2607 |  | Sector-44 Noida(2) | 9368374 |

| ID | WBS | Task | Duration | Start | Finish | Predecessors | Constraint | Calendar | Unique_Task_ID |
| --- | --- | --- | --- | --- | --- | --- | --- | --- | --- |
| 2609 | 36900.37000.37700.37800.39900 | **Finishing works** | 1014d | 2027-01-11 | 2030-01-18 |  | start no earlier than 2027-01-11 | Sector-44 Noida(2) | 9323914 |
| 2610 | 36900.37000.37700.37800.39900.40000 | **Flat finishings** | 1014d | 2027-01-11 | 2030-01-18 |  | start no earlier than 2027-01-11 | Sector-44 Noida(2) | 9356604 |
| 2611 | 36900.37000.37700.37800.39900.40000.55500 | **1st Floor** | 106d | 2027-01-11 | 2027-04-26 |  | start no earlier than 2027-01-11 | Sector-44 Noida(2) | 9361314 |
| 2612 | 36900.37000.37700.37800.39900.40000.55500.748400 | Block Work | 10d | 2027-01-11 | 2027-01-20 | 2569 |  | Sector-44 Noida(2) | 9390074 |
| 2613 | 36900.37000.37700.37800.39900.40000.55500.748500 | Installation of temporary Main door | 7d | 2027-01-21 | 2027-01-27 | 2612 |  | Sector-44 Noida(2) | 9390084 |
| 2614 | 36900.37000.37700.37800.39900.40000.55500.748600 | Fire sprinkler pipe fixing | 3d | 2027-01-21 | 2027-01-23 | 2612 |  | Sector-44 Noida(2) | 9390094 |
| 2615 | 36900.37000.37700.37800.39900.40000.55500.748700 | Internal Plumbing Works | 7d | 2027-01-21 | 2027-01-27 | 2612 |  | Sector-44 Noida(2) | 9390104 |
| 2616 | 36900.37000.37700.37800.39900.40000.55500.748800 | Waterproofing | 12d | 2027-01-28 | 2027-02-08 | 2615 |  | Sector-44 Noida(2) | 9390114 |
| 2617 | 36900.37000.37700.37800.39900.40000.55500.748900 | Internal Plaster | 15d | 2027-01-21 | 2027-02-04 | 2612 |  | Sector-44 Noida(2) | 9390124 |
| 2618 | 36900.37000.37700.37800.39900.40000.55500.749000 | IPS flooring work | 11d | 2027-01-21 | 2027-01-31 | 2612 |  | Sector-44 Noida(2) | 9390134 |
| 2619 | 36900.37000.37700.37800.39900.40000.55500.749100 | Toilet dado work | 16d | 2027-02-09 | 2027-02-24 | 2615, 2616, 2617 |  | Sector-44 Noida(2) | 9390144 |
| 2620 | 36900.37000.37700.37800.39900.40000.55500.749200 | Toilet flooring work | 16d | 2027-02-25 | 2027-03-12 | 2619 |  | Sector-44 Noida(2) | 9390154 |
| 2621 | 36900.37000.37700.37800.39900.40000.55500.749300 | Living dinning flooring | 16d | 2027-03-13 | 2027-03-28 | 2618, 2620 |  | Sector-44 Noida(2) | 9390164 |
| 2622 | 36900.37000.37700.37800.39900.40000.55500.749400 | Electrical wiring work | 10d | 2027-03-19 | 2027-03-28 | 2621FS-10d |  | Sector-44 Noida(2) | 9390174 |
| 2623 | 36900.37000.37700.37800.39900.40000.55500.749500 | Aluminium door-window fixing | 17d | 2027-03-21 | 2027-04-06 | 2613, 2622FS-8d |  | Sector-44 Noida(2) | 9390184 |
| 2624 | 36900.37000.37700.37800.39900.40000.55500.749600 | Putty primer coat | 8d | 2027-03-30 | 2027-04-06 | 2623FS-8d |  | Sector-44 Noida(2) | 9390194 |
| 2625 | 36900.37000.37700.37800.39900.40000.55500.749700 | Prehung door fixing | 7d | 2027-04-02 | 2027-04-08 | 2624FS-5d |  | Sector-44 Noida(2) | 9390204 |
| 2626 | 36900.37000.37700.37800.39900.40000.55500.749800 | Painting 1st coat | 10d | 2027-04-09 | 2027-04-18 | 2625 |  | Sector-44 Noida(2) | 9390214 |
| 2627 | 36900.37000.37700.37800.39900.40000.55500.749900 | False Ceiling panel fixing | 8d | 2027-04-19 | 2027-04-26 | 2626 |  | Sector-44 Noida(2) | 9390224 |
| 2628 | 36900.37000.37700.37800.39900.40000.55600 | **2nd Floor** | 121d | 2027-01-23 | 2027-05-23 |  | start no earlier than 2027-01-23 | Sector-44 Noida(2) | 9361304 |
| 2629 | 36900.37000.37700.37800.39900.40000.55600.750000 | Block Work | 10d | 2027-01-23 | 2027-02-01 | 2570 |  | Sector-44 Noida(2) | 9390234 |
| 2630 | 36900.37000.37700.37800.39900.40000.55600.750100 | Installation of temporary Main door | 7d | 2027-02-02 | 2027-02-08 | 2629 |  | Sector-44 Noida(2) | 9390244 |
| 2631 | 36900.37000.37700.37800.39900.40000.55600.750200 | Fire sprinkler pipe fixing | 3d | 2027-02-02 | 2027-02-04 | 2614, 2629 |  | Sector-44 Noida(2) | 9390254 |
| 2632 | 36900.37000.37700.37800.39900.40000.55600.750300 | Internal Plumbing Works | 7d | 2027-02-02 | 2027-02-08 | 2629 |  | Sector-44 Noida(2) | 9390264 |
| 2633 | 36900.37000.37700.37800.39900.40000.55600.750400 | Waterproofing | 12d | 2027-02-09 | 2027-02-20 | 2632 |  | Sector-44 Noida(2) | 9390274 |
| 2634 | 36900.37000.37700.37800.39900.40000.55600.750500 | Internal Plaster | 15d | 2027-02-21 | 2027-03-07 | 2632, 2633 |  | Sector-44 Noida(2) | 9390284 |
| 2635 | 36900.37000.37700.37800.39900.40000.55600.750600 | IPS flooring work | 11d | 2027-02-02 | 2027-02-12 | 2629 |  | Sector-44 Noida(2) | 9390294 |
| 2636 | 36900.37000.37700.37800.39900.40000.55600.750700 | Toilet dado work | 16d | 2027-03-08 | 2027-03-23 | 2632, 2633, 2634 |  | Sector-44 Noida(2) | 9390304 |
| 2637 | 36900.37000.37700.37800.39900.40000.55600.750800 | Toilet flooring work | 16d | 2027-03-24 | 2027-04-08 | 2636 |  | Sector-44 Noida(2) | 9390314 |
| 2638 | 36900.37000.37700.37800.39900.40000.55600.750900 | Living dinning flooring | 16d | 2027-04-09 | 2027-04-24 | 2635, 2637 |  | Sector-44 Noida(2) | 9390324 |
| 2639 | 36900.37000.37700.37800.39900.40000.55600.751000 | Electrical wiring work | 10d | 2027-04-15 | 2027-04-24 | 2638FS-10d |  | Sector-44 Noida(2) | 9390334 |
| 2640 | 36900.37000.37700.37800.39900.40000.55600.751100 | Aluminium door-window fixing | 17d | 2027-04-17 | 2027-05-03 | 2630, 2639FS-8d |  | Sector-44 Noida(2) | 9390344 |
| 2641 | 36900.37000.37700.37800.39900.40000.55600.751200 | Putty primer coat | 8d | 2027-04-26 | 2027-05-03 | 2640FS-8d |  | Sector-44 Noida(2) | 9390354 |
| 2642 | 36900.37000.37700.37800.39900.40000.55600.751300 | Prehung door fixing | 7d | 2027-04-29 | 2027-05-05 | 2641FS-5d |  | Sector-44 Noida(2) | 9390364 |
| 2643 | 36900.37000.37700.37800.39900.40000.55600.751400 | Painting 1st coat | 10d | 2027-05-06 | 2027-05-15 | 2642 |  | Sector-44 Noida(2) | 9390374 |
| 2644 | 36900.37000.37700.37800.39900.40000.55600.751500 | False Ceiling panel fixing | 8d | 2027-05-16 | 2027-05-23 | 2627, 2643 |  | Sector-44 Noida(2) | 9390384 |

| ID | WBS | Task | Duration | Start | Finish | Predecessors | Constraint | Calendar | Unique_Task_ID |
| --- | --- | --- | --- | --- | --- | --- | --- | --- | --- |
| 2645 | 36900.37000.37700.37800.39900.40000.55700 | **3rd Floor** | 121d | 2027-01-31 | 2027-05-31 |  | start no earlier than 2027-01-31 | Sector-44 Noida(2) | 9361294 |
| 2646 | 36900.37000.37700.37800.39900.40000.55700.751600 | Block Work | 10d | 2027-01-31 | 2027-02-09 | 2571 |  | Sector-44 Noida(2) | 9390394 |
| 2647 | 36900.37000.37700.37800.39900.40000.55700.751700 | Installation of temporary Main door | 7d | 2027-02-10 | 2027-02-16 | 2646 |  | Sector-44 Noida(2) | 9390404 |
| 2648 | 36900.37000.37700.37800.39900.40000.55700.751800 | Fire sprinkler pipe fixing | 3d | 2027-02-10 | 2027-02-12 | 2631, 2646 |  | Sector-44 Noida(2) | 9390414 |
| 2649 | 36900.37000.37700.37800.39900.40000.55700.751900 | Internal Plumbing Works | 7d | 2027-02-10 | 2027-02-16 | 2646 |  | Sector-44 Noida(2) | 9390424 |
| 2650 | 36900.37000.37700.37800.39900.40000.55700.752000 | Waterproofing | 12d | 2027-02-17 | 2027-02-28 | 2649 |  | Sector-44 Noida(2) | 9390434 |
| 2651 | 36900.37000.37700.37800.39900.40000.55700.752100 | Internal Plaster | 15d | 2027-03-01 | 2027-03-15 | 2649, 2650 |  | Sector-44 Noida(2) | 9390444 |
| 2652 | 36900.37000.37700.37800.39900.40000.55700.752200 | IPS flooring work | 11d | 2027-02-10 | 2027-02-20 | 2646 |  | Sector-44 Noida(2) | 9390454 |
| 2653 | 36900.37000.37700.37800.39900.40000.55700.752300 | Toilet dado work | 16d | 2027-03-16 | 2027-03-31 | 2649, 2650, 2651 |  | Sector-44 Noida(2) | 9390464 |
| 2654 | 36900.37000.37700.37800.39900.40000.55700.752400 | Toilet flooring work | 16d | 2027-04-01 | 2027-04-16 | 2653 |  | Sector-44 Noida(2) | 9390474 |
| 2655 | 36900.37000.37700.37800.39900.40000.55700.752500 | Living dinning flooring | 16d | 2027-04-17 | 2027-05-02 | 2652, 2654 |  | Sector-44 Noida(2) | 9390484 |
| 2656 | 36900.37000.37700.37800.39900.40000.55700.752600 | Electrical wiring work | 10d | 2027-04-23 | 2027-05-02 | 2655FS-10d |  | Sector-44 Noida(2) | 9390494 |
| 2657 | 36900.37000.37700.37800.39900.40000.55700.752700 | Aluminium door-window fixing | 17d | 2027-04-25 | 2027-05-11 | 2647, 2656FS-8d |  | Sector-44 Noida(2) | 9390504 |
| 2658 | 36900.37000.37700.37800.39900.40000.55700.752800 | Putty primer coat | 8d | 2027-05-04 | 2027-05-11 | 2657FS-8d |  | Sector-44 Noida(2) | 9390514 |
| 2659 | 36900.37000.37700.37800.39900.40000.55700.752900 | Prehung door fixing | 7d | 2027-05-07 | 2027-05-13 | 2658FS-5d |  | Sector-44 Noida(2) | 9390524 |
| 2660 | 36900.37000.37700.37800.39900.40000.55700.753000 | Painting 1st coat | 10d | 2027-05-14 | 2027-05-23 | 2659 |  | Sector-44 Noida(2) | 9390534 |
| 2661 | 36900.37000.37700.37800.39900.40000.55700.753100 | False Ceiling panel fixing | 8d | 2027-05-24 | 2027-05-31 | 2644, 2660 |  | Sector-44 Noida(2) | 9390544 |
| 2662 | 36900.37000.37700.37800.39900.40000.55800 | **4th Floor** | 121d | 2027-02-16 | 2027-06-16 |  | start no earlier than 2027-02-16 | Sector-44 Noida(2) | 9361284 |
| 2663 | 36900.37000.37700.37800.39900.40000.55800.753200 | Block Work | 10d | 2027-02-16 | 2027-02-25 | 2572 |  | Sector-44 Noida(2) | 9390554 |
| 2664 | 36900.37000.37700.37800.39900.40000.55800.753300 | Installation of temporary Main door | 7d | 2027-02-26 | 2027-03-04 | 2663 |  | Sector-44 Noida(2) | 9390564 |
| 2665 | 36900.37000.37700.37800.39900.40000.55800.753400 | Fire sprinkler pipe fixing | 3d | 2027-02-26 | 2027-02-28 | 2648, 2663 |  | Sector-44 Noida(2) | 9390574 |
| 2666 | 36900.37000.37700.37800.39900.40000.55800.753500 | Internal Plumbing Works | 7d | 2027-02-26 | 2027-03-04 | 2663 |  | Sector-44 Noida(2) | 9390584 |
| 2667 | 36900.37000.37700.37800.39900.40000.55800.753600 | Waterproofing | 12d | 2027-03-05 | 2027-03-16 | 2666 |  | Sector-44 Noida(2) | 9390594 |
| 2668 | 36900.37000.37700.37800.39900.40000.55800.753700 | Internal Plaster | 15d | 2027-03-17 | 2027-03-31 | 2666, 2667 |  | Sector-44 Noida(2) | 9390604 |
| 2669 | 36900.37000.37700.37800.39900.40000.55800.753800 | IPS flooring work | 11d | 2027-02-26 | 2027-03-08 | 2663 |  | Sector-44 Noida(2) | 9390614 |
| 2670 | 36900.37000.37700.37800.39900.40000.55800.753900 | Toilet dado work | 16d | 2027-04-01 | 2027-04-16 | 2666, 2667, 2668 |  | Sector-44 Noida(2) | 9390624 |
| 2671 | 36900.37000.37700.37800.39900.40000.55800.754000 | Toilet flooring work | 16d | 2027-04-17 | 2027-05-02 | 2670 |  | Sector-44 Noida(2) | 9390634 |
| 2672 | 36900.37000.37700.37800.39900.40000.55800.754100 | Living dinning flooring | 16d | 2027-05-03 | 2027-05-18 | 2669, 2671 |  | Sector-44 Noida(2) | 9390644 |
| 2673 | 36900.37000.37700.37800.39900.40000.55800.754200 | Electrical wiring work | 10d | 2027-05-09 | 2027-05-18 | 2672FS-10d |  | Sector-44 Noida(2) | 9390654 |
| 2674 | 36900.37000.37700.37800.39900.40000.55800.754300 | Aluminium door-window fixing | 17d | 2027-05-11 | 2027-05-27 | 2664, 2673FS-8d |  | Sector-44 Noida(2) | 9390664 |
| 2675 | 36900.37000.37700.37800.39900.40000.55800.754400 | Putty primer coat | 8d | 2027-05-20 | 2027-05-27 | 2674FS-8d |  | Sector-44 Noida(2) | 9390674 |
| 2676 | 36900.37000.37700.37800.39900.40000.55800.754500 | Prehung door fixing | 7d | 2027-05-23 | 2027-05-29 | 2675FS-5d |  | Sector-44 Noida(2) | 9390684 |
| 2677 | 36900.37000.37700.37800.39900.40000.55800.754600 | Painting 1st coat | 10d | 2027-05-30 | 2027-06-08 | 2676 |  | Sector-44 Noida(2) | 9390694 |
| 2678 | 36900.37000.37700.37800.39900.40000.55800.754700 | False Ceiling panel fixing | 8d | 2027-06-09 | 2027-06-16 | 2661, 2677 |  | Sector-44 Noida(2) | 9390704 |

| ID | WBS | Task | Duration | Start | Finish | Predecessors | Constraint | Calendar | Unique_Task_ID |
| --- | --- | --- | --- | --- | --- | --- | --- | --- | --- |
| 2679 | 36900.37000.37700.37800.39900.40000.55900 | **5th Floor** | 121d | 2027-02-28 | 2027-06-28 |  | start no earlier than 2027-02-28 | Sector-44 Noida(2) | 9361274 |
| 2680 | 36900.37000.37700.37800.39900.40000.55900.754800 | Block Work | 10d | 2027-02-28 | 2027-03-09 | 2573 |  | Sector-44 Noida(2) | 9390714 |
| 2681 | 36900.37000.37700.37800.39900.40000.55900.754900 | Installation of temporary Main door | 7d | 2027-03-10 | 2027-03-16 | 2680 |  | Sector-44 Noida(2) | 9390724 |
| 2682 | 36900.37000.37700.37800.39900.40000.55900.755000 | Fire sprinkler pipe fixing | 3d | 2027-03-10 | 2027-03-12 | 2665, 2680 |  | Sector-44 Noida(2) | 9390734 |
| 2683 | 36900.37000.37700.37800.39900.40000.55900.755100 | Internal Plumbing Works | 7d | 2027-03-10 | 2027-03-16 | 2680 |  | Sector-44 Noida(2) | 9390744 |
| 2684 | 36900.37000.37700.37800.39900.40000.55900.755200 | Waterproofing | 12d | 2027-03-17 | 2027-03-28 | 2683 |  | Sector-44 Noida(2) | 9390754 |
| 2685 | 36900.37000.37700.37800.39900.40000.55900.755300 | Internal Plaster | 15d | 2027-03-29 | 2027-04-12 | 2683, 2684 |  | Sector-44 Noida(2) | 9390764 |
| 2686 | 36900.37000.37700.37800.39900.40000.55900.755400 | IPS flooring work | 11d | 2027-03-10 | 2027-03-20 | 2680 |  | Sector-44 Noida(2) | 9390774 |
| 2687 | 36900.37000.37700.37800.39900.40000.55900.755500 | Toilet dado work | 16d | 2027-04-13 | 2027-04-28 | 2683, 2684, 2685 |  | Sector-44 Noida(2) | 9390784 |
| 2688 | 36900.37000.37700.37800.39900.40000.55900.755600 | Toilet flooring work | 16d | 2027-04-29 | 2027-05-14 | 2687 |  | Sector-44 Noida(2) | 9390794 |
| 2689 | 36900.37000.37700.37800.39900.40000.55900.755700 | Living dinning flooring | 16d | 2027-05-15 | 2027-05-30 | 2686, 2688 |  | Sector-44 Noida(2) | 9390804 |
| 2690 | 36900.37000.37700.37800.39900.40000.55900.755800 | Electrical wiring work | 10d | 2027-05-21 | 2027-05-30 | 2689FS-10d |  | Sector-44 Noida(2) | 9390814 |
| 2691 | 36900.37000.37700.37800.39900.40000.55900.755900 | Aluminium door-window fixing | 17d | 2027-05-23 | 2027-06-08 | 2681, 2690FS-8d |  | Sector-44 Noida(2) | 9390824 |
| 2692 | 36900.37000.37700.37800.39900.40000.55900.756000 | Putty primer coat | 8d | 2027-06-01 | 2027-06-08 | 2691FS-8d |  | Sector-44 Noida(2) | 9390834 |
| 2693 | 36900.37000.37700.37800.39900.40000.55900.756100 | Prehung door fixing | 7d | 2027-06-04 | 2027-06-10 | 2692FS-5d |  | Sector-44 Noida(2) | 9390844 |
| 2694 | 36900.37000.37700.37800.39900.40000.55900.756200 | Painting 1st coat | 10d | 2027-06-11 | 2027-06-20 | 2693 |  | Sector-44 Noida(2) | 9390854 |
| 2695 | 36900.37000.37700.37800.39900.40000.55900.756300 | False Ceiling panel fixing | 8d | 2027-06-21 | 2027-06-28 | 2678, 2694 |  | Sector-44 Noida(2) | 9390864 |
| 2696 | 36900.37000.37700.37800.39900.40000.56000 | **6th Floor** | 121d | 2027-03-12 | 2027-07-10 |  | start no earlier than 2027-03-12 | Sector-44 Noida(2) | 9361254 |
| 2697 | 36900.37000.37700.37800.39900.40000.56000.756400 | Block Work | 10d | 2027-03-12 | 2027-03-21 | 2574 |  | Sector-44 Noida(2) | 9390874 |
| 2698 | 36900.37000.37700.37800.39900.40000.56000.756500 | Installation of temporary Main door | 7d | 2027-03-22 | 2027-03-28 | 2697 |  | Sector-44 Noida(2) | 9390884 |
| 2699 | 36900.37000.37700.37800.39900.40000.56000.756600 | Fire sprinkler pipe fixing | 3d | 2027-03-22 | 2027-03-24 | 2682, 2697 |  | Sector-44 Noida(2) | 9390894 |
| 2700 | 36900.37000.37700.37800.39900.40000.56000.756700 | Internal Plumbing Works | 7d | 2027-03-22 | 2027-03-28 | 2697 |  | Sector-44 Noida(2) | 9390904 |
| 2701 | 36900.37000.37700.37800.39900.40000.56000.756800 | Waterproofing | 12d | 2027-03-29 | 2027-04-09 | 2700 |  | Sector-44 Noida(2) | 9390914 |
| 2702 | 36900.37000.37700.37800.39900.40000.56000.756900 | Internal Plaster | 15d | 2027-04-10 | 2027-04-24 | 2700, 2701 |  | Sector-44 Noida(2) | 9390924 |
| 2703 | 36900.37000.37700.37800.39900.40000.56000.757000 | IPS flooring work | 11d | 2027-03-22 | 2027-04-01 | 2697 |  | Sector-44 Noida(2) | 9390934 |
| 2704 | 36900.37000.37700.37800.39900.40000.56000.757100 | Toilet dado work | 16d | 2027-04-25 | 2027-05-10 | 2700, 2701, 2702 |  | Sector-44 Noida(2) | 9390944 |
| 2705 | 36900.37000.37700.37800.39900.40000.56000.757200 | Toilet flooring work | 16d | 2027-05-11 | 2027-05-26 | 2704 |  | Sector-44 Noida(2) | 9390954 |
| 2706 | 36900.37000.37700.37800.39900.40000.56000.757300 | Living dinning flooring | 16d | 2027-05-27 | 2027-06-11 | 2703, 2705 |  | Sector-44 Noida(2) | 9390964 |
| 2707 | 36900.37000.37700.37800.39900.40000.56000.757400 | Electrical wiring work | 10d | 2027-06-02 | 2027-06-11 | 2706FS-10d |  | Sector-44 Noida(2) | 9390974 |
| 2708 | 36900.37000.37700.37800.39900.40000.56000.757500 | Aluminium door-window fixing | 17d | 2027-06-04 | 2027-06-20 | 2698, 2707FS-8d |  | Sector-44 Noida(2) | 9390984 |
| 2709 | 36900.37000.37700.37800.39900.40000.56000.757600 | Putty primer coat | 8d | 2027-06-13 | 2027-06-20 | 2708FS-8d |  | Sector-44 Noida(2) | 9390994 |
| 2710 | 36900.37000.37700.37800.39900.40000.56000.757700 | Prehung door fixing | 7d | 2027-06-16 | 2027-06-22 | 2709FS-5d |  | Sector-44 Noida(2) | 9391004 |
| 2711 | 36900.37000.37700.37800.39900.40000.56000.757800 | Painting 1st coat | 10d | 2027-06-23 | 2027-07-02 | 2710 |  | Sector-44 Noida(2) | 9391014 |
| 2712 | 36900.37000.37700.37800.39900.40000.56000.757900 | False Ceiling panel fixing | 8d | 2027-07-03 | 2027-07-10 | 2695, 2711 |  | Sector-44 Noida(2) | 9391024 |

| ID | WBS | Task | Duration | Start | Finish | Predecessors | Constraint | Calendar | Unique_Task_ID |
| --- | --- | --- | --- | --- | --- | --- | --- | --- | --- |
| 2713 | 36900.37000.37700.37800.39900.40000.56100 | **7th Floor** | 121d | 2027-03-20 | 2027-07-18 |  | start no earlier than 2027-03-20 | Sector-44 Noida(2) | 9360964 |
| 2714 | 36900.37000.37700.37800.39900.40000.56100.758000 | Block Work | 10d | 2027-03-20 | 2027-03-29 | 2575 |  | Sector-44 Noida(2) | 9391034 |
| 2715 | 36900.37000.37700.37800.39900.40000.56100.758100 | Installation of temporary Main door | 7d | 2027-03-30 | 2027-04-05 | 2714 |  | Sector-44 Noida(2) | 9391044 |
| 2716 | 36900.37000.37700.37800.39900.40000.56100.758200 | Fire sprinkler pipe fixing | 3d | 2027-03-30 | 2027-04-01 | 2699, 2714 |  | Sector-44 Noida(2) | 9391054 |
| 2717 | 36900.37000.37700.37800.39900.40000.56100.758300 | Internal Plumbing Works | 7d | 2027-03-30 | 2027-04-05 | 2714 |  | Sector-44 Noida(2) | 9391064 |
| 2718 | 36900.37000.37700.37800.39900.40000.56100.758400 | Waterproofing | 12d | 2027-04-06 | 2027-04-17 | 2717 |  | Sector-44 Noida(2) | 9391074 |
| 2719 | 36900.37000.37700.37800.39900.40000.56100.758500 | Internal Plaster | 15d | 2027-04-18 | 2027-05-02 | 2717, 2718 |  | Sector-44 Noida(2) | 9391084 |
| 2720 | 36900.37000.37700.37800.39900.40000.56100.758600 | IPS flooring work | 11d | 2027-03-30 | 2027-04-09 | 2714 |  | Sector-44 Noida(2) | 9391094 |
| 2721 | 36900.37000.37700.37800.39900.40000.56100.758700 | Toilet dado work | 16d | 2027-05-03 | 2027-05-18 | 2717, 2718, 2719 |  | Sector-44 Noida(2) | 9391104 |
| 2722 | 36900.37000.37700.37800.39900.40000.56100.758800 | Toilet flooring work | 16d | 2027-05-19 | 2027-06-03 | 2721 |  | Sector-44 Noida(2) | 9391114 |
| 2723 | 36900.37000.37700.37800.39900.40000.56100.758900 | Living dinning flooring | 16d | 2027-06-04 | 2027-06-19 | 2720, 2722 |  | Sector-44 Noida(2) | 9391124 |
| 2724 | 36900.37000.37700.37800.39900.40000.56100.759000 | Electrical wiring work | 10d | 2027-06-10 | 2027-06-19 | 2723FS-10d |  | Sector-44 Noida(2) | 9391134 |
| 2725 | 36900.37000.37700.37800.39900.40000.56100.759100 | Aluminium door-window fixing | 17d | 2027-06-12 | 2027-06-28 | 2715, 2724FS-8d |  | Sector-44 Noida(2) | 9391144 |
| 2726 | 36900.37000.37700.37800.39900.40000.56100.759200 | Putty primer coat | 8d | 2027-06-21 | 2027-06-28 | 2725FS-8d |  | Sector-44 Noida(2) | 9391154 |
| 2727 | 36900.37000.37700.37800.39900.40000.56100.759300 | Prehung door fixing | 7d | 2027-06-24 | 2027-06-30 | 2726FS-5d |  | Sector-44 Noida(2) | 9391164 |
| 2728 | 36900.37000.37700.37800.39900.40000.56100.759400 | Painting 1st coat | 10d | 2027-07-01 | 2027-07-10 | 2727 |  | Sector-44 Noida(2) | 9391174 |
| 2729 | 36900.37000.37700.37800.39900.40000.56100.759500 | False Ceiling panel fixing | 8d | 2027-07-11 | 2027-07-18 | 2712, 2728 |  | Sector-44 Noida(2) | 9391184 |
| 2730 | 36900.37000.37700.37800.39900.40000.56200 | **8th Floor** | 113d | 2027-04-05 | 2027-07-26 |  | start no earlier than 2027-04-05 | Sector-44 Noida(2) | 9360974 |
| 2731 | 36900.37000.37700.37800.39900.40000.56200.759600 | Block Work | 10d | 2027-04-05 | 2027-04-14 | 2576 |  | Sector-44 Noida(2) | 9391194 |
| 2732 | 36900.37000.37700.37800.39900.40000.56200.759700 | Installation of temporary Main door | 7d | 2027-04-15 | 2027-04-21 | 2731 |  | Sector-44 Noida(2) | 9391204 |
| 2733 | 36900.37000.37700.37800.39900.40000.56200.759800 | Fire sprinkler pipe fixing | 3d | 2027-04-15 | 2027-04-17 | 2716, 2731 |  | Sector-44 Noida(2) | 9391214 |
| 2734 | 36900.37000.37700.37800.39900.40000.56200.759900 | Internal Plumbing Works | 7d | 2027-04-15 | 2027-04-21 | 2731 |  | Sector-44 Noida(2) | 9391224 |
| 2735 | 36900.37000.37700.37800.39900.40000.56200.760000 | Waterproofing | 12d | 2027-04-22 | 2027-05-03 | 2734 |  | Sector-44 Noida(2) | 9391234 |
| 2736 | 36900.37000.37700.37800.39900.40000.56200.760100 | Internal Plaster | 5d | 2027-05-04 | 2027-05-08 | 2734, 2735 |  | Sector-44 Noida(2) | 9391244 |
| 2737 | 36900.37000.37700.37800.39900.40000.56200.760200 | IPS flooring work | 11d | 2027-04-15 | 2027-04-25 | 2731 |  | Sector-44 Noida(2) | 9391254 |
| 2738 | 36900.37000.37700.37800.39900.40000.56200.760300 | Toilet dado work | 6d | 2027-05-09 | 2027-05-14 | 2734, 2735, 2736 |  | Sector-44 Noida(2) | 9391264 |
| 2739 | 36900.37000.37700.37800.39900.40000.56200.760400 | Toilet flooring work | 6d | 2027-05-15 | 2027-05-20 | 2738 |  | Sector-44 Noida(2) | 9391274 |
| 2740 | 36900.37000.37700.37800.39900.40000.56200.760500 | Living dinning flooring | 16d | 2027-05-21 | 2027-06-05 | 2737, 2739 |  | Sector-44 Noida(2) | 9391284 |
| 2741 | 36900.37000.37700.37800.39900.40000.56200.760600 | Electrical wiring work | 10d | 2027-05-27 | 2027-06-05 | 2740FS-10d |  | Sector-44 Noida(2) | 9391294 |
| 2742 | 36900.37000.37700.37800.39900.40000.56200.760700 | Aluminium door-window fixing | 17d | 2027-05-29 | 2027-06-14 | 2732, 2741FS-8d |  | Sector-44 Noida(2) | 9391304 |
| 2743 | 36900.37000.37700.37800.39900.40000.56200.760800 | Putty primer coat | 8d | 2027-06-07 | 2027-06-14 | 2742FS-8d |  | Sector-44 Noida(2) | 9391314 |
| 2744 | 36900.37000.37700.37800.39900.40000.56200.760900 | Prehung door fixing | 7d | 2027-06-10 | 2027-06-16 | 2743FS-5d |  | Sector-44 Noida(2) | 9391324 |
| 2745 | 36900.37000.37700.37800.39900.40000.56200.761000 | Painting 1st coat | 10d | 2027-06-17 | 2027-06-26 | 2744 |  | Sector-44 Noida(2) | 9391334 |
| 2746 | 36900.37000.37700.37800.39900.40000.56200.761100 | False Ceiling panel fixing | 8d | 2027-07-19 | 2027-07-26 | 2729, 2745 |  | Sector-44 Noida(2) | 9391344 |

| ID | WBS | Task | Duration | Start | Finish | Predecessors | Constraint | Calendar | Unique_Task_ID |
| --- | --- | --- | --- | --- | --- | --- | --- | --- | --- |
| 2747 | 36900.37000.37700.37800.39900.40000.56300 | **9th Floor** | 121d | 2027-04-17 | 2027-08-15 |  | start no earlier than 2027-04-17 | Sector-44 Noida(2) | 9361004 |
| 2748 | 36900.37000.37700.37800.39900.40000.56300.761200 | Block Work | 10d | 2027-04-17 | 2027-04-26 | 2577 |  | Sector-44 Noida(2) | 9391354 |
| 2749 | 36900.37000.37700.37800.39900.40000.56300.761300 | Installation of temporary Main door | 7d | 2027-04-27 | 2027-05-03 | 2748 |  | Sector-44 Noida(2) | 9391364 |
| 2750 | 36900.37000.37700.37800.39900.40000.56300.761400 | Fire sprinkler pipe fixing | 3d | 2027-04-27 | 2027-04-29 | 2733, 2748 |  | Sector-44 Noida(2) | 9391374 |
| 2751 | 36900.37000.37700.37800.39900.40000.56300.761500 | Internal Plumbing Works | 7d | 2027-04-27 | 2027-05-03 | 2748 |  | Sector-44 Noida(2) | 9391384 |
| 2752 | 36900.37000.37700.37800.39900.40000.56300.761600 | Waterproofing | 12d | 2027-05-04 | 2027-05-15 | 2751 |  | Sector-44 Noida(2) | 9391394 |
| 2753 | 36900.37000.37700.37800.39900.40000.56300.761700 | Internal Plaster | 15d | 2027-05-16 | 2027-05-30 | 2751, 2752 |  | Sector-44 Noida(2) | 9391404 |
| 2754 | 36900.37000.37700.37800.39900.40000.56300.761800 | IPS flooring work | 11d | 2027-04-27 | 2027-05-07 | 2748 |  | Sector-44 Noida(2) | 9391414 |
| 2755 | 36900.37000.37700.37800.39900.40000.56300.761900 | Toilet dado work | 16d | 2027-05-31 | 2027-06-15 | 2751, 2752, 2753 |  | Sector-44 Noida(2) | 9391424 |
| 2756 | 36900.37000.37700.37800.39900.40000.56300.762000 | Toilet flooring work | 16d | 2027-06-16 | 2027-07-01 | 2755 |  | Sector-44 Noida(2) | 9391434 |
| 2757 | 36900.37000.37700.37800.39900.40000.56300.762100 | Living dinning flooring | 16d | 2027-07-02 | 2027-07-17 | 2754, 2756 |  | Sector-44 Noida(2) | 9391444 |
| 2758 | 36900.37000.37700.37800.39900.40000.56300.762200 | Electrical wiring work | 10d | 2027-07-08 | 2027-07-17 | 2757FS-10d |  | Sector-44 Noida(2) | 9391454 |
| 2759 | 36900.37000.37700.37800.39900.40000.56300.762300 | Aluminium door-window fixing | 17d | 2027-07-10 | 2027-07-26 | 2749, 2758FS-8d |  | Sector-44 Noida(2) | 9391464 |
| 2760 | 36900.37000.37700.37800.39900.40000.56300.762400 | Putty primer coat | 8d | 2027-07-19 | 2027-07-26 | 2759FS-8d |  | Sector-44 Noida(2) | 9391474 |
| 2761 | 36900.37000.37700.37800.39900.40000.56300.762500 | Prehung door fixing | 7d | 2027-07-22 | 2027-07-28 | 2760FS-5d |  | Sector-44 Noida(2) | 9391484 |
| 2762 | 36900.37000.37700.37800.39900.40000.56300.762600 | Painting 1st coat | 10d | 2027-07-29 | 2027-08-07 | 2761 |  | Sector-44 Noida(2) | 9391494 |
| 2763 | 36900.37000.37700.37800.39900.40000.56300.762700 | False Ceiling panel fixing | 8d | 2027-08-08 | 2027-08-15 | 2746, 2762 |  | Sector-44 Noida(2) | 9391504 |
| 2764 | 36900.37000.37700.37800.39900.40000.56400 | **10th Floor** | 117d | 2027-04-29 | 2027-08-23 |  | start no earlier than 2027-04-29 | Sector-44 Noida(2) | 9361194 |
| 2765 | 36900.37000.37700.37800.39900.40000.56400.762800 | Block Work | 10d | 2027-04-29 | 2027-05-08 | 2578 |  | Sector-44 Noida(2) | 9391514 |
| 2766 | 36900.37000.37700.37800.39900.40000.56400.762900 | Installation of temporary Main door | 7d | 2027-05-09 | 2027-05-15 | 2765 |  | Sector-44 Noida(2) | 9391524 |
| 2767 | 36900.37000.37700.37800.39900.40000.56400.763000 | Fire sprinkler pipe fixing | 3d | 2027-05-09 | 2027-05-11 | 2750, 2765 |  | Sector-44 Noida(2) | 9391534 |
| 2768 | 36900.37000.37700.37800.39900.40000.56400.763100 | Internal Plumbing Works | 7d | 2027-05-09 | 2027-05-15 | 2765 |  | Sector-44 Noida(2) | 9391544 |
| 2769 | 36900.37000.37700.37800.39900.40000.56400.763200 | Waterproofing | 12d | 2027-05-16 | 2027-05-27 | 2768 |  | Sector-44 Noida(2) | 9391554 |
| 2770 | 36900.37000.37700.37800.39900.40000.56400.763300 | Internal Plaster | 5d | 2027-05-28 | 2027-06-01 | 2768, 2769 |  | Sector-44 Noida(2) | 9391564 |
| 2771 | 36900.37000.37700.37800.39900.40000.56400.763400 | IPS flooring work | 1d | 2027-05-09 | 2027-05-09 | 2765 |  | Sector-44 Noida(2) | 9391574 |
| 2772 | 36900.37000.37700.37800.39900.40000.56400.763500 | Toilet dado work | 16d | 2027-06-02 | 2027-06-17 | 2768, 2769, 2770 |  | Sector-44 Noida(2) | 9391584 |
| 2773 | 36900.37000.37700.37800.39900.40000.56400.763600 | Toilet flooring work | 16d | 2027-06-18 | 2027-07-03 | 2772 |  | Sector-44 Noida(2) | 9391594 |
| 2774 | 36900.37000.37700.37800.39900.40000.56400.763700 | Living dinning flooring | 16d | 2027-07-04 | 2027-07-19 | 2771, 2773 |  | Sector-44 Noida(2) | 9391604 |
| 2775 | 36900.37000.37700.37800.39900.40000.56400.763800 | Electrical wiring work | 10d | 2027-07-10 | 2027-07-19 | 2774FS-10d |  | Sector-44 Noida(2) | 9391614 |
| 2776 | 36900.37000.37700.37800.39900.40000.56400.763900 | Aluminium door-window fixing | 17d | 2027-07-12 | 2027-07-28 | 2766, 2775FS-8d |  | Sector-44 Noida(2) | 9391624 |
| 2777 | 36900.37000.37700.37800.39900.40000.56400.764000 | Putty primer coat | 8d | 2027-07-21 | 2027-07-28 | 2776FS-8d |  | Sector-44 Noida(2) | 9391634 |
| 2778 | 36900.37000.37700.37800.39900.40000.56400.764100 | Prehung door fixing | 7d | 2027-07-24 | 2027-07-30 | 2777FS-5d |  | Sector-44 Noida(2) | 9391644 |
| 2779 | 36900.37000.37700.37800.39900.40000.56400.764200 | Painting 1st coat | 10d | 2027-07-31 | 2027-08-09 | 2778 |  | Sector-44 Noida(2) | 9391654 |
| 2780 | 36900.37000.37700.37800.39900.40000.56400.764300 | False Ceiling panel fixing | 8d | 2027-08-16 | 2027-08-23 | 2763, 2779 |  | Sector-44 Noida(2) | 9391664 |

| ID | WBS | Task | Duration | Start | Finish | Predecessors | Constraint | Calendar | Unique_Task_ID |
| --- | --- | --- | --- | --- | --- | --- | --- | --- | --- |
| 2781 | 36900.37000.37700.37800.39900.40000.56500 | **11th Floor** | 121d | 2027-05-11 | 2027-09-08 |  | start no earlier than 2027-05-11 | Sector-44 Noida(2) | 9361204 |
| 2782 | 36900.37000.37700.37800.39900.40000.56500.764400 | Block Work | 10d | 2027-05-11 | 2027-05-20 | 2579 |  | Sector-44 Noida(2) | 9391674 |
| 2783 | 36900.37000.37700.37800.39900.40000.56500.764500 | Installation of temporary Main door | 7d | 2027-05-21 | 2027-05-27 | 2782 |  | Sector-44 Noida(2) | 9391684 |
| 2784 | 36900.37000.37700.37800.39900.40000.56500.764600 | Fire sprinkler pipe fixing | 3d | 2027-05-21 | 2027-05-23 | 2767, 2782 |  | Sector-44 Noida(2) | 9391694 |
| 2785 | 36900.37000.37700.37800.39900.40000.56500.764700 | Internal Plumbing Works | 7d | 2027-05-21 | 2027-05-27 | 2782 |  | Sector-44 Noida(2) | 9391704 |
| 2786 | 36900.37000.37700.37800.39900.40000.56500.764800 | Waterproofing | 12d | 2027-05-28 | 2027-06-08 | 2785 |  | Sector-44 Noida(2) | 9391714 |
| 2787 | 36900.37000.37700.37800.39900.40000.56500.764900 | Internal Plaster | 15d | 2027-06-09 | 2027-06-23 | 2785, 2786 |  | Sector-44 Noida(2) | 9391724 |
| 2788 | 36900.37000.37700.37800.39900.40000.56500.765000 | IPS flooring work | 11d | 2027-05-21 | 2027-05-31 | 2782 |  | Sector-44 Noida(2) | 9391734 |
| 2789 | 36900.37000.37700.37800.39900.40000.56500.765100 | Toilet dado work | 16d | 2027-06-24 | 2027-07-09 | 2785, 2786, 2787 |  | Sector-44 Noida(2) | 9391744 |
| 2790 | 36900.37000.37700.37800.39900.40000.56500.765200 | Toilet flooring work | 16d | 2027-07-10 | 2027-07-25 | 2789 |  | Sector-44 Noida(2) | 9391754 |
| 2791 | 36900.37000.37700.37800.39900.40000.56500.765300 | Living dinning flooring | 16d | 2027-07-26 | 2027-08-10 | 2788, 2790 |  | Sector-44 Noida(2) | 9391764 |
| 2792 | 36900.37000.37700.37800.39900.40000.56500.765400 | Electrical wiring work | 10d | 2027-08-01 | 2027-08-10 | 2791FS-10d |  | Sector-44 Noida(2) | 9391774 |
| 2793 | 36900.37000.37700.37800.39900.40000.56500.765500 | Aluminium door-window fixing | 17d | 2027-08-03 | 2027-08-19 | 2783, 2792FS-8d |  | Sector-44 Noida(2) | 9391784 |
| 2794 | 36900.37000.37700.37800.39900.40000.56500.765600 | Putty primer coat | 8d | 2027-08-12 | 2027-08-19 | 2793FS-8d |  | Sector-44 Noida(2) | 9391794 |
| 2795 | 36900.37000.37700.37800.39900.40000.56500.765700 | Prehung door fixing | 7d | 2027-08-15 | 2027-08-21 | 2794FS-5d |  | Sector-44 Noida(2) | 9391804 |
| 2796 | 36900.37000.37700.37800.39900.40000.56500.765800 | Painting 1st coat | 10d | 2027-08-22 | 2027-08-31 | 2795 |  | Sector-44 Noida(2) | 9391814 |
| 2797 | 36900.37000.37700.37800.39900.40000.56500.765900 | False Ceiling panel fixing | 8d | 2027-09-01 | 2027-09-08 | 2780, 2796 |  | Sector-44 Noida(2) | 9391824 |
| 2798 | 36900.37000.37700.37800.39900.40000.56600 | **12th Floor** | 121d | 2027-05-23 | 2027-09-20 |  | start no earlier than 2027-05-23 | Sector-44 Noida(2) | 9361214 |
| 2799 | 36900.37000.37700.37800.39900.40000.56600.766000 | Block Work | 10d | 2027-05-23 | 2027-06-01 | 2580 |  | Sector-44 Noida(2) | 9391834 |
| 2800 | 36900.37000.37700.37800.39900.40000.56600.766100 | Installation of temporary Main door | 7d | 2027-06-02 | 2027-06-08 | 2799 |  | Sector-44 Noida(2) | 9391844 |
| 2801 | 36900.37000.37700.37800.39900.40000.56600.766200 | Fire sprinkler pipe fixing | 3d | 2027-06-02 | 2027-06-04 | 2784, 2799 |  | Sector-44 Noida(2) | 9391854 |
| 2802 | 36900.37000.37700.37800.39900.40000.56600.766300 | Internal Plumbing Works | 7d | 2027-06-02 | 2027-06-08 | 2799 |  | Sector-44 Noida(2) | 9391864 |
| 2803 | 36900.37000.37700.37800.39900.40000.56600.766400 | Waterproofing | 12d | 2027-06-09 | 2027-06-20 | 2802 |  | Sector-44 Noida(2) | 9391874 |
| 2804 | 36900.37000.37700.37800.39900.40000.56600.766500 | Internal Plaster | 15d | 2027-06-21 | 2027-07-05 | 2802, 2803 |  | Sector-44 Noida(2) | 9391884 |
| 2805 | 36900.37000.37700.37800.39900.40000.56600.766600 | IPS flooring work | 11d | 2027-06-02 | 2027-06-12 | 2799 |  | Sector-44 Noida(2) | 9391894 |
| 2806 | 36900.37000.37700.37800.39900.40000.56600.766700 | Toilet dado work | 16d | 2027-07-06 | 2027-07-21 | 2802, 2803, 2804 |  | Sector-44 Noida(2) | 9391904 |
| 2807 | 36900.37000.37700.37800.39900.40000.56600.766800 | Toilet flooring work | 16d | 2027-07-22 | 2027-08-06 | 2806 |  | Sector-44 Noida(2) | 9391914 |
| 2808 | 36900.37000.37700.37800.39900.40000.56600.766900 | Living dinning flooring | 16d | 2027-08-07 | 2027-08-22 | 2805, 2807 |  | Sector-44 Noida(2) | 9391924 |
| 2809 | 36900.37000.37700.37800.39900.40000.56600.767000 | Electrical wiring work | 10d | 2027-08-13 | 2027-08-22 | 2808FS-10d |  | Sector-44 Noida(2) | 9391934 |
| 2810 | 36900.37000.37700.37800.39900.40000.56600.767100 | Aluminium door-window fixing | 17d | 2027-08-15 | 2027-08-31 | 2800, 2809FS-8d |  | Sector-44 Noida(2) | 9391944 |
| 2811 | 36900.37000.37700.37800.39900.40000.56600.767200 | Putty primer coat | 8d | 2027-08-24 | 2027-08-31 | 2810FS-8d |  | Sector-44 Noida(2) | 9391954 |
| 2812 | 36900.37000.37700.37800.39900.40000.56600.767300 | Prehung door fixing | 7d | 2027-08-27 | 2027-09-02 | 2811FS-5d |  | Sector-44 Noida(2) | 9391964 |
| 2813 | 36900.37000.37700.37800.39900.40000.56600.767400 | Painting 1st coat | 10d | 2027-09-03 | 2027-09-12 | 2812 |  | Sector-44 Noida(2) | 9391974 |
| 2814 | 36900.37000.37700.37800.39900.40000.56600.767500 | False Ceiling panel fixing | 8d | 2027-09-13 | 2027-09-20 | 2797, 2813 |  | Sector-44 Noida(2) | 9391984 |

| ID | WBS | Task | Duration | Start | Finish | Predecessors | Constraint | Calendar | Unique_Task_ID |
| --- | --- | --- | --- | --- | --- | --- | --- | --- | --- |
| 2815 | 36900.37000.37700.37800.39900.40000.56700 | **13th Floor** | 121d | 2027-06-04 | 2027-10-02 |  | start no earlier than 2027-06-04 | Sector-44 Noida(2) | 9361224 |
| 2816 | 36900.37000.37700.37800.39900.40000.56700.767600 | Block Work | 10d | 2027-06-04 | 2027-06-13 | 2581 |  | Sector-44 Noida(2) | 9391994 |
| 2817 | 36900.37000.37700.37800.39900.40000.56700.767700 | Installation of temporary Main door | 7d | 2027-06-14 | 2027-06-20 | 2816 |  | Sector-44 Noida(2) | 9392004 |
| 2818 | 36900.37000.37700.37800.39900.40000.56700.767800 | Fire sprinkler pipe fixing | 3d | 2027-06-14 | 2027-06-16 | 2801, 2816 |  | Sector-44 Noida(2) | 9392014 |
| 2819 | 36900.37000.37700.37800.39900.40000.56700.767900 | Internal Plumbing Works | 7d | 2027-06-14 | 2027-06-20 | 2816 |  | Sector-44 Noida(2) | 9392024 |
| 2820 | 36900.37000.37700.37800.39900.40000.56700.768000 | Waterproofing | 12d | 2027-06-21 | 2027-07-02 | 2819 |  | Sector-44 Noida(2) | 9392034 |
| 2821 | 36900.37000.37700.37800.39900.40000.56700.768100 | Internal Plaster | 15d | 2027-07-03 | 2027-07-17 | 2819, 2820 |  | Sector-44 Noida(2) | 9392044 |
| 2822 | 36900.37000.37700.37800.39900.40000.56700.768200 | IPS flooring work | 11d | 2027-06-14 | 2027-06-24 | 2816 |  | Sector-44 Noida(2) | 9392054 |
| 2823 | 36900.37000.37700.37800.39900.40000.56700.768300 | Toilet dado work | 16d | 2027-07-18 | 2027-08-02 | 2819, 2820, 2821 |  | Sector-44 Noida(2) | 9392064 |
| 2824 | 36900.37000.37700.37800.39900.40000.56700.768400 | Toilet flooring work | 16d | 2027-08-03 | 2027-08-18 | 2823 |  | Sector-44 Noida(2) | 9392074 |
| 2825 | 36900.37000.37700.37800.39900.40000.56700.768500 | Living dinning flooring | 16d | 2027-08-19 | 2027-09-03 | 2822, 2824 |  | Sector-44 Noida(2) | 9392084 |
| 2826 | 36900.37000.37700.37800.39900.40000.56700.768600 | Electrical wiring work | 10d | 2027-08-25 | 2027-09-03 | 2825FS-10d |  | Sector-44 Noida(2) | 9392094 |
| 2827 | 36900.37000.37700.37800.39900.40000.56700.768700 | Aluminium door-window fixing | 17d | 2027-08-27 | 2027-09-12 | 2817, 2826FS-8d |  | Sector-44 Noida(2) | 9392104 |
| 2828 | 36900.37000.37700.37800.39900.40000.56700.768800 | Putty primer coat | 8d | 2027-09-05 | 2027-09-12 | 2827FS-8d |  | Sector-44 Noida(2) | 9392114 |
| 2829 | 36900.37000.37700.37800.39900.40000.56700.768900 | Prehung door fixing | 7d | 2027-09-08 | 2027-09-14 | 2828FS-5d |  | Sector-44 Noida(2) | 9392124 |
| 2830 | 36900.37000.37700.37800.39900.40000.56700.769000 | Painting 1st coat | 10d | 2027-09-15 | 2027-09-24 | 2829 |  | Sector-44 Noida(2) | 9392134 |
| 2831 | 36900.37000.37700.37800.39900.40000.56700.769100 | False Ceiling panel fixing | 8d | 2027-09-25 | 2027-10-02 | 2814, 2830 |  | Sector-44 Noida(2) | 9392144 |
| 2832 | 36900.37000.37700.37800.39900.40000.56800 | **14th Floor** | 121d | 2027-06-19 | 2027-10-17 |  | start no earlier than 2027-06-19 | Sector-44 Noida(2) | 9361234 |
| 2833 | 36900.37000.37700.37800.39900.40000.56800.769200 | Block Work | 10d | 2027-06-19 | 2027-06-28 | 2582 |  | Sector-44 Noida(2) | 9392154 |
| 2834 | 36900.37000.37700.37800.39900.40000.56800.769300 | Installation of temporary Main door | 7d | 2027-06-29 | 2027-07-05 | 2833 |  | Sector-44 Noida(2) | 9392164 |
| 2835 | 36900.37000.37700.37800.39900.40000.56800.769400 | Fire sprinkler pipe fixing | 3d | 2027-06-29 | 2027-07-01 | 2818, 2833 |  | Sector-44 Noida(2) | 9392174 |
| 2836 | 36900.37000.37700.37800.39900.40000.56800.769500 | Internal Plumbing Works | 7d | 2027-06-29 | 2027-07-05 | 2833 |  | Sector-44 Noida(2) | 9392184 |
| 2837 | 36900.37000.37700.37800.39900.40000.56800.769600 | Waterproofing | 12d | 2027-07-06 | 2027-07-17 | 2836 |  | Sector-44 Noida(2) | 9392194 |
| 2838 | 36900.37000.37700.37800.39900.40000.56800.769700 | Internal Plaster | 15d | 2027-07-18 | 2027-08-01 | 2836, 2837 |  | Sector-44 Noida(2) | 9392204 |
| 2839 | 36900.37000.37700.37800.39900.40000.56800.769800 | IPS flooring work | 11d | 2027-06-29 | 2027-07-09 | 2833 |  | Sector-44 Noida(2) | 9392214 |
| 2840 | 36900.37000.37700.37800.39900.40000.56800.769900 | Toilet dado work | 16d | 2027-08-02 | 2027-08-17 | 2836, 2837, 2838 |  | Sector-44 Noida(2) | 9392224 |
| 2841 | 36900.37000.37700.37800.39900.40000.56800.770000 | Toilet flooring work | 16d | 2027-08-18 | 2027-09-02 | 2840 |  | Sector-44 Noida(2) | 9392234 |
| 2842 | 36900.37000.37700.37800.39900.40000.56800.770100 | Living dinning flooring | 16d | 2027-09-03 | 2027-09-18 | 2839, 2841 |  | Sector-44 Noida(2) | 9392244 |
| 2843 | 36900.37000.37700.37800.39900.40000.56800.770200 | Electrical wiring work | 10d | 2027-09-09 | 2027-09-18 | 2842FS-10d |  | Sector-44 Noida(2) | 9392254 |
| 2844 | 36900.37000.37700.37800.39900.40000.56800.770300 | Aluminium door-window fixing | 17d | 2027-09-11 | 2027-09-27 | 2834, 2843FS-8d |  | Sector-44 Noida(2) | 9392264 |
| 2845 | 36900.37000.37700.37800.39900.40000.56800.770400 | Putty primer coat | 8d | 2027-09-20 | 2027-09-27 | 2844FS-8d |  | Sector-44 Noida(2) | 9392274 |
| 2846 | 36900.37000.37700.37800.39900.40000.56800.770500 | Prehung door fixing | 7d | 2027-09-23 | 2027-09-29 | 2845FS-5d |  | Sector-44 Noida(2) | 9392284 |
| 2847 | 36900.37000.37700.37800.39900.40000.56800.770600 | Painting 1st coat | 10d | 2027-09-30 | 2027-10-09 | 2846 |  | Sector-44 Noida(2) | 9392294 |
| 2848 | 36900.37000.37700.37800.39900.40000.56800.770700 | False Ceiling panel fixing | 8d | 2027-10-10 | 2027-10-17 | 2831, 2847 |  | Sector-44 Noida(2) | 9392304 |

| ID | WBS | Task | Duration | Start | Finish | Predecessors | Constraint | Calendar | Unique_Task_ID |
| --- | --- | --- | --- | --- | --- | --- | --- | --- | --- |
| 2849 | 36900.37000.37700.37800.39900.40000.56900 | **15th Floor** | 121d | 2027-07-01 | 2027-10-29 |  | start no earlier than 2027-07-01 | Sector-44 Noida(2) | 9361244 |
| 2850 | 36900.37000.37700.37800.39900.40000.56900.770800 | Block Work | 10d | 2027-07-01 | 2027-07-10 | 2583 |  | Sector-44 Noida(2) | 9392314 |
| 2851 | 36900.37000.37700.37800.39900.40000.56900.770900 | Installation of temporary Main door | 7d | 2027-07-11 | 2027-07-17 | 2850 |  | Sector-44 Noida(2) | 9392324 |
| 2852 | 36900.37000.37700.37800.39900.40000.56900.771000 | Fire sprinkler pipe fixing | 3d | 2027-07-11 | 2027-07-13 | 2835, 2850 |  | Sector-44 Noida(2) | 9392334 |
| 2853 | 36900.37000.37700.37800.39900.40000.56900.771100 | Internal Plumbing Works | 7d | 2027-07-11 | 2027-07-17 | 2850 |  | Sector-44 Noida(2) | 9392344 |
| 2854 | 36900.37000.37700.37800.39900.40000.56900.771200 | Waterproofing | 12d | 2027-07-18 | 2027-07-29 | 2853 |  | Sector-44 Noida(2) | 9392354 |
| 2855 | 36900.37000.37700.37800.39900.40000.56900.771300 | Internal Plaster | 15d | 2027-07-30 | 2027-08-13 | 2853, 2854 |  | Sector-44 Noida(2) | 9392364 |
| 2856 | 36900.37000.37700.37800.39900.40000.56900.771400 | IPS flooring work | 1d | 2027-07-11 | 2027-07-11 | 2850 |  | Sector-44 Noida(2) | 9392374 |
| 2857 | 36900.37000.37700.37800.39900.40000.56900.771500 | Toilet dado work | 16d | 2027-08-14 | 2027-08-29 | 2853, 2854, 2855 |  | Sector-44 Noida(2) | 9392384 |
| 2858 | 36900.37000.37700.37800.39900.40000.56900.771600 | Toilet flooring work | 16d | 2027-08-30 | 2027-09-14 | 2857 |  | Sector-44 Noida(2) | 9392394 |
| 2859 | 36900.37000.37700.37800.39900.40000.56900.771700 | Living dinning flooring | 16d | 2027-09-15 | 2027-09-30 | 2856, 2858 |  | Sector-44 Noida(2) | 9392404 |
| 2860 | 36900.37000.37700.37800.39900.40000.56900.771800 | Electrical wiring work | 10d | 2027-09-21 | 2027-09-30 | 2859FS-10d |  | Sector-44 Noida(2) | 9392414 |
| 2861 | 36900.37000.37700.37800.39900.40000.56900.771900 | Aluminium door-window fixing | 17d | 2027-09-23 | 2027-10-09 | 2851, 2860FS-8d |  | Sector-44 Noida(2) | 9392424 |
| 2862 | 36900.37000.37700.37800.39900.40000.56900.772000 | Putty primer coat | 8d | 2027-10-02 | 2027-10-09 | 2861FS-8d |  | Sector-44 Noida(2) | 9392434 |
| 2863 | 36900.37000.37700.37800.39900.40000.56900.772100 | Prehung door fixing | 7d | 2027-10-05 | 2027-10-11 | 2862FS-5d |  | Sector-44 Noida(2) | 9392444 |
| 2864 | 36900.37000.37700.37800.39900.40000.56900.772200 | Painting 1st coat | 10d | 2027-10-12 | 2027-10-21 | 2863 |  | Sector-44 Noida(2) | 9392454 |
| 2865 | 36900.37000.37700.37800.39900.40000.56900.772300 | False Ceiling panel fixing | 8d | 2027-10-22 | 2027-10-29 | 2848, 2864 |  | Sector-44 Noida(2) | 9392464 |
| 2866 | 36900.37000.37700.37800.39900.40000.57000 | **16th Floor** | 831d | 2027-07-13 | 2030-01-18 |  | start no earlier than 2027-07-13 | Sector-44 Noida(2) | 9361184 |
| 2867 | 36900.37000.37700.37800.39900.40000.57000.772400 | Block Work | 10d | 2027-07-13 | 2027-07-22 | 2584 |  | Sector-44 Noida(2) | 9392474 |
| 2868 | 36900.37000.37700.37800.39900.40000.57000.1342900 | Block Work | 5d | 2030-01-14 | 2030-01-18 | 2867 |  | Indian Calendar | 9392475 |
| 2869 | 36900.37000.37700.37800.39900.40000.57000.772500 | Installation of temporary Main door | 7d | 2027-07-23 | 2027-07-29 | 2867 |  | Sector-44 Noida(2) | 9392484 |
| 2870 | 36900.37000.37700.37800.39900.40000.57000.772600 | Fire sprinkler pipe fixing | 3d | 2027-07-23 | 2027-07-25 | 2852, 2867 |  | Sector-44 Noida(2) | 9392494 |
| 2871 | 36900.37000.37700.37800.39900.40000.57000.772700 | Internal Plumbing Works | 10d | 2027-07-23 | 2027-08-01 | 2867 |  | Sector-44 Noida(2) | 9392504 |
| 2872 | 36900.37000.37700.37800.39900.40000.57000.772800 | Waterproofing | 12d | 2027-08-02 | 2027-08-13 | 2871 |  | Sector-44 Noida(2) | 9392514 |
| 2873 | 36900.37000.37700.37800.39900.40000.57000.772900 | Internal Plaster | 15d | 2027-08-14 | 2027-08-28 | 2871, 2872 |  | Sector-44 Noida(2) | 9392524 |
| 2874 | 36900.37000.37700.37800.39900.40000.57000.773000 | IPS flooring work | 11d | 2027-07-23 | 2027-08-02 | 2867 |  | Sector-44 Noida(2) | 9392534 |
| 2875 | 36900.37000.37700.37800.39900.40000.57000.773100 | Toilet dado work | 16d | 2027-08-29 | 2027-09-13 | 2871, 2872, 2873 |  | Sector-44 Noida(2) | 9392544 |
| 2876 | 36900.37000.37700.37800.39900.40000.57000.773200 | Toilet flooring work | 16d | 2027-09-14 | 2027-09-29 | 2875 |  | Sector-44 Noida(2) | 9392554 |
| 2877 | 36900.37000.37700.37800.39900.40000.57000.773300 | Living dinning flooring | 16d | 2027-09-30 | 2027-10-15 | 2874, 2876 |  | Sector-44 Noida(2) | 9392564 |
| 2878 | 36900.37000.37700.37800.39900.40000.57000.773400 | Electrical wiring work | 10d | 2027-10-06 | 2027-10-15 | 2877FS-10d |  | Sector-44 Noida(2) | 9392574 |
| 2879 | 36900.37000.37700.37800.39900.40000.57000.773500 | Aluminium door-window fixing | 17d | 2027-10-08 | 2027-10-24 | 2869, 2878FS-8d |  | Sector-44 Noida(2) | 9392584 |
| 2880 | 36900.37000.37700.37800.39900.40000.57000.773600 | Putty primer coat | 8d | 2027-10-17 | 2027-10-24 | 2879FS-8d |  | Sector-44 Noida(2) | 9392594 |
| 2881 | 36900.37000.37700.37800.39900.40000.57000.773700 | Prehung door fixing | 7d | 2027-10-20 | 2027-10-26 | 2880FS-5d |  | Sector-44 Noida(2) | 9392604 |
| 2882 | 36900.37000.37700.37800.39900.40000.57000.773800 | Painting 1st coat | 10d | 2027-10-27 | 2027-12-20 | 2881 |  | Sector-44 Noida(2) | 9392614 |
| 2883 | 36900.37000.37700.37800.39900.40000.57000.773900 | False Ceiling panel fixing | 8d | 2027-12-21 | 2027-12-28 | 2865, 2882 |  | Sector-44 Noida(2) | 9392624 |

| ID | WBS | Task | Duration | Start | Finish | Predecessors | Constraint | Calendar | Unique_Task_ID |
| --- | --- | --- | --- | --- | --- | --- | --- | --- | --- |
| 2884 | 36900.37000.37700.37800.39900.40000.57100 | **17th Floor** | 121d | 2027-07-25 | 2028-01-06 |  | start no earlier than 2027-07-25 | Sector-44 Noida(2) | 9361174 |
| 2885 | 36900.37000.37700.37800.39900.40000.57100.774000 | Block Work | 10d | 2027-07-25 | 2027-08-03 | 2585 |  | Sector-44 Noida(2) | 9392634 |
| 2886 | 36900.37000.37700.37800.39900.40000.57100.774100 | Installation of temporary Main door | 7d | 2027-08-04 | 2027-08-10 | 2885 |  | Sector-44 Noida(2) | 9392644 |
| 2887 | 36900.37000.37700.37800.39900.40000.57100.774200 | Fire sprinkler pipe fixing | 3d | 2027-08-04 | 2027-08-06 | 2870, 2885 |  | Sector-44 Noida(2) | 9392654 |
| 2888 | 36900.37000.37700.37800.39900.40000.57100.774300 | Internal Plumbing Works | 7d | 2027-08-04 | 2027-08-10 | 2885 |  | Sector-44 Noida(2) | 9392664 |
| 2889 | 36900.37000.37700.37800.39900.40000.57100.774400 | Waterproofing | 12d | 2027-08-11 | 2027-08-22 | 2888 |  | Sector-44 Noida(2) | 9392674 |
| 2890 | 36900.37000.37700.37800.39900.40000.57100.774500 | Internal Plaster | 15d | 2027-08-23 | 2027-09-06 | 2888, 2889 |  | Sector-44 Noida(2) | 9392684 |
| 2891 | 36900.37000.37700.37800.39900.40000.57100.774600 | IPS flooring work | 11d | 2027-08-04 | 2027-08-14 | 2885 |  | Sector-44 Noida(2) | 9392694 |
| 2892 | 36900.37000.37700.37800.39900.40000.57100.774700 | Toilet dado work | 16d | 2027-09-07 | 2027-09-22 | 2888, 2889, 2890 |  | Sector-44 Noida(2) | 9392704 |
| 2893 | 36900.37000.37700.37800.39900.40000.57100.774800 | Toilet flooring work | 16d | 2027-09-23 | 2027-10-08 | 2892 |  | Sector-44 Noida(2) | 9392714 |
| 2894 | 36900.37000.37700.37800.39900.40000.57100.774900 | Living dinning flooring | 16d | 2027-10-09 | 2027-10-24 | 2891, 2893 |  | Sector-44 Noida(2) | 9392724 |
| 2895 | 36900.37000.37700.37800.39900.40000.57100.775000 | Electrical wiring work | 10d | 2027-10-15 | 2027-10-24 | 2894FS-10d |  | Sector-44 Noida(2) | 9392734 |
| 2896 | 36900.37000.37700.37800.39900.40000.57100.775100 | Aluminium door-window fixing | 17d | 2027-10-17 | 2027-12-17 | 2886, 2895FS-8d |  | Sector-44 Noida(2) | 9392744 |
| 2897 | 36900.37000.37700.37800.39900.40000.57100.775200 | Putty primer coat | 8d | 2027-10-26 | 2027-12-17 | 2896FS-8d |  | Sector-44 Noida(2) | 9392754 |
| 2898 | 36900.37000.37700.37800.39900.40000.57100.775300 | Prehung door fixing | 7d | 2027-10-29 | 2027-12-19 | 2897FS-5d |  | Sector-44 Noida(2) | 9392764 |
| 2899 | 36900.37000.37700.37800.39900.40000.57100.775400 | Painting 1st coat | 10d | 2027-12-20 | 2027-12-29 | 2898 |  | Sector-44 Noida(2) | 9392774 |
| 2900 | 36900.37000.37700.37800.39900.40000.57100.775500 | False Ceiling panel fixing | 8d | 2027-12-30 | 2028-01-06 | 2883, 2899 |  | Sector-44 Noida(2) | 9392784 |
| 2901 | 36900.37000.37700.37800.39900.40000.57200 | **18th Floor** | 117d | 2027-08-06 | 2028-01-14 |  | start no earlier than 2027-08-06 | Sector-44 Noida(2) | 9361154 |
| 2902 | 36900.37000.37700.37800.39900.40000.57200.775600 | Block Work | 10d | 2027-08-06 | 2027-08-15 | 2586 |  | Sector-44 Noida(2) | 9392794 |
| 2903 | 36900.37000.37700.37800.39900.40000.57200.775700 | Installation of temporary Main door | 7d | 2027-08-16 | 2027-08-22 | 2902 |  | Sector-44 Noida(2) | 9392804 |
| 2904 | 36900.37000.37700.37800.39900.40000.57200.775800 | Fire sprinkler pipe fixing | 3d | 2027-08-16 | 2027-08-18 | 2887, 2902 |  | Sector-44 Noida(2) | 9392814 |
| 2905 | 36900.37000.37700.37800.39900.40000.57200.775900 | Internal Plumbing Works | 7d | 2027-08-16 | 2027-08-22 | 2902 |  | Sector-44 Noida(2) | 9392824 |
| 2906 | 36900.37000.37700.37800.39900.40000.57200.776000 | Waterproofing | 12d | 2027-08-23 | 2027-09-03 | 2905 |  | Sector-44 Noida(2) | 9392834 |
| 2907 | 36900.37000.37700.37800.39900.40000.57200.776100 | Internal Plaster | 15d | 2027-09-04 | 2027-09-18 | 2905, 2906 |  | Sector-44 Noida(2) | 9392844 |
| 2908 | 36900.37000.37700.37800.39900.40000.57200.776200 | IPS flooring work | 11d | 2027-08-16 | 2027-08-26 | 2902 |  | Sector-44 Noida(2) | 9392854 |
| 2909 | 36900.37000.37700.37800.39900.40000.57200.776300 | Toilet dado work | 16d | 2027-09-19 | 2027-10-04 | 2905, 2906, 2907 |  | Sector-44 Noida(2) | 9392864 |
| 2910 | 36900.37000.37700.37800.39900.40000.57200.776400 | Toilet flooring work | 16d | 2027-10-05 | 2027-10-20 | 2909 |  | Sector-44 Noida(2) | 9392874 |
| 2911 | 36900.37000.37700.37800.39900.40000.57200.776500 | Living dinning flooring | 16d | 2027-10-21 | 2027-12-20 | 2908, 2910 |  | Sector-44 Noida(2) | 9392884 |
| 2912 | 36900.37000.37700.37800.39900.40000.57200.776600 | Electrical wiring work | 10d | 2027-10-27 | 2027-12-20 | 2911FS-10d |  | Sector-44 Noida(2) | 9392894 |
| 2913 | 36900.37000.37700.37800.39900.40000.57200.776700 | Aluminium door-window fixing | 7d | 2027-10-29 | 2027-12-19 | 2903, 2912FS-8d |  | Sector-44 Noida(2) | 9392904 |
| 2914 | 36900.37000.37700.37800.39900.40000.57200.776800 | Putty primer coat | 8d | 2027-10-28 | 2027-12-19 | 2913FS-8d |  | Sector-44 Noida(2) | 9392914 |
| 2915 | 36900.37000.37700.37800.39900.40000.57200.776900 | Prehung door fixing | 7d | 2027-10-31 | 2027-12-21 | 2914FS-5d |  | Sector-44 Noida(2) | 9392924 |
| 2916 | 36900.37000.37700.37800.39900.40000.57200.777000 | Painting 1st coat | 10d | 2027-12-22 | 2027-12-31 | 2915 |  | Sector-44 Noida(2) | 9392934 |
| 2917 | 36900.37000.37700.37800.39900.40000.57200.777100 | False Ceiling panel fixing | 8d | 2028-01-07 | 2028-01-14 | 2900, 2916 |  | Sector-44 Noida(2) | 9392944 |

| ID | WBS | Task | Duration | Start | Finish | Predecessors | Constraint | Calendar | Unique_Task_ID |
| --- | --- | --- | --- | --- | --- | --- | --- | --- | --- |
| 2918 | 36900.37000.37700.37800.39900.40000.57300 | **19th Floor** | 121d | 2027-08-18 | 2028-01-30 |  | start no earlier than 2027-08-18 | Sector-44 Noida(2) | 9361144 |
| 2919 | 36900.37000.37700.37800.39900.40000.57300.777200 | Block Work | 10d | 2027-08-18 | 2027-08-27 | 2587 |  | Sector-44 Noida(2) | 9392954 |
| 2920 | 36900.37000.37700.37800.39900.40000.57300.777300 | Installation of temporary Main door | 7d | 2027-08-28 | 2027-09-03 | 2919 |  | Sector-44 Noida(2) | 9392964 |
| 2921 | 36900.37000.37700.37800.39900.40000.57300.777400 | Fire sprinkler pipe fixing | 3d | 2027-08-28 | 2027-08-30 | 2904, 2919 |  | Sector-44 Noida(2) | 9392974 |
| 2922 | 36900.37000.37700.37800.39900.40000.57300.777500 | Internal Plumbing Works | 7d | 2027-08-28 | 2027-09-03 | 2919 |  | Sector-44 Noida(2) | 9392984 |
| 2923 | 36900.37000.37700.37800.39900.40000.57300.777600 | Waterproofing | 12d | 2027-09-04 | 2027-09-15 | 2922 |  | Sector-44 Noida(2) | 9392994 |
| 2924 | 36900.37000.37700.37800.39900.40000.57300.777700 | Internal Plaster | 15d | 2027-09-16 | 2027-09-30 | 2922, 2923 |  | Sector-44 Noida(2) | 9393004 |
| 2925 | 36900.37000.37700.37800.39900.40000.57300.777800 | IPS flooring work | 11d | 2027-08-28 | 2027-09-07 | 2919 |  | Sector-44 Noida(2) | 9393014 |
| 2926 | 36900.37000.37700.37800.39900.40000.57300.777900 | Toilet dado work | 16d | 2027-10-01 | 2027-10-16 | 2922, 2923, 2924 |  | Sector-44 Noida(2) | 9393024 |
| 2927 | 36900.37000.37700.37800.39900.40000.57300.778000 | Toilet flooring work | 16d | 2027-10-17 | 2027-12-16 | 2926 |  | Sector-44 Noida(2) | 9393034 |
| 2928 | 36900.37000.37700.37800.39900.40000.57300.778100 | Living dinning flooring | 16d | 2027-12-17 | 2028-01-01 | 2925, 2927 |  | Sector-44 Noida(2) | 9393044 |
| 2929 | 36900.37000.37700.37800.39900.40000.57300.778200 | Electrical wiring work | 10d | 2027-12-23 | 2028-01-01 | 2928FS-10d |  | Sector-44 Noida(2) | 9393054 |
| 2930 | 36900.37000.37700.37800.39900.40000.57300.778300 | Aluminium door-window fixing | 17d | 2027-12-25 | 2028-01-10 | 2920, 2929FS-8d |  | Sector-44 Noida(2) | 9393064 |
| 2931 | 36900.37000.37700.37800.39900.40000.57300.778400 | Putty primer coat | 8d | 2028-01-03 | 2028-01-10 | 2930FS-8d |  | Sector-44 Noida(2) | 9393074 |
| 2932 | 36900.37000.37700.37800.39900.40000.57300.778500 | Prehung door fixing | 7d | 2028-01-06 | 2028-01-12 | 2931FS-5d |  | Sector-44 Noida(2) | 9393084 |
| 2933 | 36900.37000.37700.37800.39900.40000.57300.778600 | Painting 1st coat | 10d | 2028-01-13 | 2028-01-22 | 2932 |  | Sector-44 Noida(2) | 9393094 |
| 2934 | 36900.37000.37700.37800.39900.40000.57300.778700 | False Ceiling panel fixing | 8d | 2028-01-23 | 2028-01-30 | 2917, 2933 |  | Sector-44 Noida(2) | 9393104 |
| 2935 | 36900.37000.37700.37800.39900.40000.57400 | **20th Floor** | 121d | 2027-08-29 | 2028-02-10 |  | start no earlier than 2027-08-29 | Sector-44 Noida(2) | 9361114 |
| 2936 | 36900.37000.37700.37800.39900.40000.57400.778800 | Block Work | 10d | 2027-08-29 | 2027-09-07 | 2588 |  | Sector-44 Noida(2) | 9393114 |
| 2937 | 36900.37000.37700.37800.39900.40000.57400.778900 | Installation of temporary Main door | 7d | 2027-09-08 | 2027-09-14 | 2936 |  | Sector-44 Noida(2) | 9393124 |
| 2938 | 36900.37000.37700.37800.39900.40000.57400.779000 | Fire sprinkler pipe fixing | 3d | 2027-09-08 | 2027-09-10 | 2921, 2936 |  | Sector-44 Noida(2) | 9393134 |
| 2939 | 36900.37000.37700.37800.39900.40000.57400.779100 | Internal Plumbing Works | 7d | 2027-09-08 | 2027-09-14 | 2936 |  | Sector-44 Noida(2) | 9393144 |
| 2940 | 36900.37000.37700.37800.39900.40000.57400.779200 | Waterproofing | 12d | 2027-09-15 | 2027-09-26 | 2939 |  | Sector-44 Noida(2) | 9393154 |
| 2941 | 36900.37000.37700.37800.39900.40000.57400.779300 | Internal Plaster | 15d | 2027-09-27 | 2027-10-11 | 2939, 2940 |  | Sector-44 Noida(2) | 9393164 |
| 2942 | 36900.37000.37700.37800.39900.40000.57400.779400 | IPS flooring work | 11d | 2027-09-08 | 2027-09-18 | 2936 |  | Sector-44 Noida(2) | 9393174 |
| 2943 | 36900.37000.37700.37800.39900.40000.57400.779500 | Toilet dado work | 16d | 2027-10-12 | 2027-10-27 | 2939, 2940, 2941 |  | Sector-44 Noida(2) | 9393184 |
| 2944 | 36900.37000.37700.37800.39900.40000.57400.779600 | Toilet flooring work | 16d | 2027-10-28 | 2027-12-27 | 2943 |  | Sector-44 Noida(2) | 9393194 |
| 2945 | 36900.37000.37700.37800.39900.40000.57400.779700 | Living dinning flooring | 16d | 2027-12-28 | 2028-01-12 | 2942, 2944 |  | Sector-44 Noida(2) | 9393204 |
| 2946 | 36900.37000.37700.37800.39900.40000.57400.779800 | Electrical wiring work | 10d | 2028-01-03 | 2028-01-12 | 2945FS-10d |  | Sector-44 Noida(2) | 9393214 |
| 2947 | 36900.37000.37700.37800.39900.40000.57400.779900 | Aluminium door-window fixing | 17d | 2028-01-05 | 2028-01-21 | 2937, 2946FS-8d |  | Sector-44 Noida(2) | 9393224 |
| 2948 | 36900.37000.37700.37800.39900.40000.57400.780000 | Putty primer coat | 8d | 2028-01-14 | 2028-01-21 | 2947FS-8d |  | Sector-44 Noida(2) | 9393234 |
| 2949 | 36900.37000.37700.37800.39900.40000.57400.780100 | Prehung door fixing | 7d | 2028-01-17 | 2028-01-23 | 2948FS-5d |  | Sector-44 Noida(2) | 9393244 |
| 2950 | 36900.37000.37700.37800.39900.40000.57400.780200 | Painting 1st coat | 10d | 2028-01-24 | 2028-02-02 | 2949 |  | Sector-44 Noida(2) | 9393254 |
| 2951 | 36900.37000.37700.37800.39900.40000.57400.780300 | False Ceiling panel fixing | 8d | 2028-02-03 | 2028-02-10 | 2934, 2950 |  | Sector-44 Noida(2) | 9393264 |

| ID | WBS | Task | Duration | Start | Finish | Predecessors | Constraint | Calendar | Unique_Task_ID |
| --- | --- | --- | --- | --- | --- | --- | --- | --- | --- |
| 2952 | 36900.37000.37700.37800.39900.40000.57500 | **21st Floor** | 121d | 2027-09-10 | 2028-02-22 |  | start no earlier than 2027-09-10 | Sector-44 Noida(2) | 9361104 |
| 2953 | 36900.37000.37700.37800.39900.40000.57500.780400 | Block Work | 10d | 2027-09-10 | 2027-09-19 | 2589 |  | Sector-44 Noida(2) | 9393274 |
| 2954 | 36900.37000.37700.37800.39900.40000.57500.780500 | Installation of temporary Main door | 7d | 2027-09-20 | 2027-09-26 | 2953 |  | Sector-44 Noida(2) | 9393284 |
| 2955 | 36900.37000.37700.37800.39900.40000.57500.780600 | Fire sprinkler pipe fixing | 3d | 2027-09-20 | 2027-09-22 | 2938, 2953 |  | Sector-44 Noida(2) | 9393294 |
| 2956 | 36900.37000.37700.37800.39900.40000.57500.780700 | Internal Plumbing Works | 7d | 2027-09-20 | 2027-09-26 | 2953 |  | Sector-44 Noida(2) | 9393304 |
| 2957 | 36900.37000.37700.37800.39900.40000.57500.780800 | Waterproofing | 12d | 2027-09-27 | 2027-10-08 | 2956 |  | Sector-44 Noida(2) | 9393314 |
| 2958 | 36900.37000.37700.37800.39900.40000.57500.780900 | Internal Plaster | 15d | 2027-10-09 | 2027-10-23 | 2956, 2957 |  | Sector-44 Noida(2) | 9393324 |
| 2959 | 36900.37000.37700.37800.39900.40000.57500.781000 | IPS flooring work | 11d | 2027-09-20 | 2027-09-30 | 2953 |  | Sector-44 Noida(2) | 9393334 |
| 2960 | 36900.37000.37700.37800.39900.40000.57500.781100 | Toilet dado work | 16d | 2027-10-24 | 2027-12-23 | 2956, 2957, 2958 |  | Sector-44 Noida(2) | 9393344 |
| 2961 | 36900.37000.37700.37800.39900.40000.57500.781200 | Toilet flooring work | 16d | 2027-12-24 | 2028-01-08 | 2960 |  | Sector-44 Noida(2) | 9393354 |
| 2962 | 36900.37000.37700.37800.39900.40000.57500.781300 | Living dinning flooring | 16d | 2028-01-09 | 2028-01-24 | 2959, 2961 |  | Sector-44 Noida(2) | 9393364 |
| 2963 | 36900.37000.37700.37800.39900.40000.57500.781400 | Electrical wiring work | 10d | 2028-01-15 | 2028-01-24 | 2962FS-10d |  | Sector-44 Noida(2) | 9393374 |
| 2964 | 36900.37000.37700.37800.39900.40000.57500.781500 | Aluminium door-window fixing | 17d | 2028-01-17 | 2028-02-02 | 2954, 2963FS-8d |  | Sector-44 Noida(2) | 9393384 |
| 2965 | 36900.37000.37700.37800.39900.40000.57500.781600 | Putty primer coat | 8d | 2028-01-26 | 2028-02-02 | 2964FS-8d |  | Sector-44 Noida(2) | 9393394 |
| 2966 | 36900.37000.37700.37800.39900.40000.57500.781700 | Prehung door fixing | 7d | 2028-01-29 | 2028-02-04 | 2965FS-5d |  | Sector-44 Noida(2) | 9393404 |
| 2967 | 36900.37000.37700.37800.39900.40000.57500.781800 | Painting 1st coat | 10d | 2028-02-05 | 2028-02-14 | 2966 |  | Sector-44 Noida(2) | 9393414 |
| 2968 | 36900.37000.37700.37800.39900.40000.57500.781900 | False Ceiling panel fixing | 8d | 2028-02-15 | 2028-02-22 | 2951, 2967 |  | Sector-44 Noida(2) | 9393424 |
| 2969 | 36900.37000.37700.37800.39900.40000.57600 | **22nd Floor** | 121d | 2027-09-22 | 2028-03-05 |  | start no earlier than 2027-09-22 | Sector-44 Noida(2) | 9361094 |
| 2970 | 36900.37000.37700.37800.39900.40000.57600.782000 | Block Work | 10d | 2027-09-22 | 2027-10-01 | 2590 |  | Sector-44 Noida(2) | 9393434 |
| 2971 | 36900.37000.37700.37800.39900.40000.57600.782100 | Installation of temporary Main door | 7d | 2027-10-02 | 2027-10-08 | 2970 |  | Sector-44 Noida(2) | 9393444 |
| 2972 | 36900.37000.37700.37800.39900.40000.57600.782200 | Fire sprinkler pipe fixing | 3d | 2027-10-02 | 2027-10-04 | 2955, 2970 |  | Sector-44 Noida(2) | 9393454 |
| 2973 | 36900.37000.37700.37800.39900.40000.57600.782300 | Internal Plumbing Works | 7d | 2027-10-02 | 2027-10-08 | 2970 |  | Sector-44 Noida(2) | 9393464 |
| 2974 | 36900.37000.37700.37800.39900.40000.57600.782400 | Waterproofing | 12d | 2027-10-09 | 2027-10-20 | 2973 |  | Sector-44 Noida(2) | 9393474 |
| 2975 | 36900.37000.37700.37800.39900.40000.57600.782500 | Internal Plaster | 15d | 2027-10-21 | 2027-12-19 | 2973, 2974 |  | Sector-44 Noida(2) | 9393484 |
| 2976 | 36900.37000.37700.37800.39900.40000.57600.782600 | IPS flooring work | 11d | 2027-10-02 | 2027-10-12 | 2970 |  | Sector-44 Noida(2) | 9393494 |
| 2977 | 36900.37000.37700.37800.39900.40000.57600.782700 | Toilet dado work | 16d | 2027-12-20 | 2028-01-04 | 2973, 2974, 2975 |  | Sector-44 Noida(2) | 9393504 |
| 2978 | 36900.37000.37700.37800.39900.40000.57600.782800 | Toilet flooring work | 16d | 2028-01-05 | 2028-01-20 | 2977 |  | Sector-44 Noida(2) | 9393514 |
| 2979 | 36900.37000.37700.37800.39900.40000.57600.782900 | Living dinning flooring | 16d | 2028-01-21 | 2028-02-05 | 2976, 2978 |  | Sector-44 Noida(2) | 9393524 |
| 2980 | 36900.37000.37700.37800.39900.40000.57600.783000 | Electrical wiring work | 10d | 2028-01-27 | 2028-02-05 | 2979FS-10d |  | Sector-44 Noida(2) | 9393534 |
| 2981 | 36900.37000.37700.37800.39900.40000.57600.783100 | Aluminium door-window fixing | 17d | 2028-01-29 | 2028-02-14 | 2971, 2980FS-8d |  | Sector-44 Noida(2) | 9393544 |
| 2982 | 36900.37000.37700.37800.39900.40000.57600.783200 | Putty primer coat | 8d | 2028-02-07 | 2028-02-14 | 2981FS-8d |  | Sector-44 Noida(2) | 9393554 |
| 2983 | 36900.37000.37700.37800.39900.40000.57600.783300 | Prehung door fixing | 7d | 2028-02-10 | 2028-02-16 | 2982FS-5d |  | Sector-44 Noida(2) | 9393564 |
| 2984 | 36900.37000.37700.37800.39900.40000.57600.783400 | Painting 1st coat | 10d | 2028-02-17 | 2028-02-26 | 2983 |  | Sector-44 Noida(2) | 9393574 |
| 2985 | 36900.37000.37700.37800.39900.40000.57600.783500 | False Ceiling panel fixing | 8d | 2028-02-27 | 2028-03-05 | 2968, 2984 |  | Sector-44 Noida(2) | 9393584 |

| ID | WBS | Task | Duration | Start | Finish | Predecessors | Constraint | Calendar | Unique_Task_ID |
| --- | --- | --- | --- | --- | --- | --- | --- | --- | --- |
| 2986 | 36900.37000.37700.37800.39900.40000.57700 | **23rd Floor** | 121d | 2027-10-07 | 2028-03-20 |  | start no earlier than 2027-10-07 | Sector-44 Noida(2) | 9361054 |
| 2987 | 36900.37000.37700.37800.39900.40000.57700.783600 | Block Work | 10d | 2027-10-07 | 2027-10-16 | 2591 |  | Sector-44 Noida(2) | 9393594 |
| 2988 | 36900.37000.37700.37800.39900.40000.57700.783700 | Installation of temporary Main door | 7d | 2027-10-17 | 2027-10-23 | 2987 |  | Sector-44 Noida(2) | 9393604 |
| 2989 | 36900.37000.37700.37800.39900.40000.57700.783800 | Fire sprinkler pipe fixing | 3d | 2027-10-17 | 2027-10-19 | 2972, 2987 |  | Sector-44 Noida(2) | 9393614 |
| 2990 | 36900.37000.37700.37800.39900.40000.57700.783900 | Internal Plumbing Works | 7d | 2027-10-17 | 2027-10-23 | 2987 |  | Sector-44 Noida(2) | 9393624 |
| 2991 | 36900.37000.37700.37800.39900.40000.57700.784000 | Waterproofing | 12d | 2027-10-24 | 2027-12-19 | 2990 |  | Sector-44 Noida(2) | 9393634 |
| 2992 | 36900.37000.37700.37800.39900.40000.57700.784100 | Internal Plaster | 15d | 2027-12-20 | 2028-01-03 | 2990, 2991 |  | Sector-44 Noida(2) | 9393644 |
| 2993 | 36900.37000.37700.37800.39900.40000.57700.784200 | IPS flooring work | 11d | 2027-10-17 | 2027-10-27 | 2987 |  | Sector-44 Noida(2) | 9393654 |
| 2994 | 36900.37000.37700.37800.39900.40000.57700.784300 | Toilet dado work | 16d | 2028-01-04 | 2028-01-19 | 2990, 2991, 2992 |  | Sector-44 Noida(2) | 9393664 |
| 2995 | 36900.37000.37700.37800.39900.40000.57700.784400 | Toilet flooring work | 16d | 2028-01-20 | 2028-02-04 | 2994 |  | Sector-44 Noida(2) | 9393674 |
| 2996 | 36900.37000.37700.37800.39900.40000.57700.784500 | Living dinning flooring | 16d | 2028-02-05 | 2028-02-20 | 2993, 2995 |  | Sector-44 Noida(2) | 9393684 |
| 2997 | 36900.37000.37700.37800.39900.40000.57700.784600 | Electrical wiring work | 10d | 2028-02-11 | 2028-02-20 | 2996FS-10d |  | Sector-44 Noida(2) | 9393694 |
| 2998 | 36900.37000.37700.37800.39900.40000.57700.784700 | Aluminium door-window fixing | 17d | 2028-02-13 | 2028-02-29 | 2988, 2997FS-8d |  | Sector-44 Noida(2) | 9393704 |
| 2999 | 36900.37000.37700.37800.39900.40000.57700.784800 | Putty primer coat | 8d | 2028-02-22 | 2028-02-29 | 2998FS-8d |  | Sector-44 Noida(2) | 9393714 |
| 3000 | 36900.37000.37700.37800.39900.40000.57700.784900 | Prehung door fixing | 7d | 2028-02-25 | 2028-03-02 | 2999FS-5d |  | Sector-44 Noida(2) | 9393724 |
| 3001 | 36900.37000.37700.37800.39900.40000.57700.785000 | Painting 1st coat | 10d | 2028-03-03 | 2028-03-12 | 3000 |  | Sector-44 Noida(2) | 9393734 |
| 3002 | 36900.37000.37700.37800.39900.40000.57700.785100 | False Ceiling panel fixing | 8d | 2028-03-13 | 2028-03-20 | 2985, 3001 |  | Sector-44 Noida(2) | 9393744 |
| 3003 | 36900.37000.37700.37800.39900.40000.57800 | **24th Floor** | 121d | 2027-10-19 | 2028-04-01 |  | start no earlier than 2027-10-19 | Sector-44 Noida(2) | 9361044 |
| 3004 | 36900.37000.37700.37800.39900.40000.57800.785200 | Block Work | 10d | 2027-10-19 | 2027-10-28 | 2592 |  | Sector-44 Noida(2) | 9393754 |
| 3005 | 36900.37000.37700.37800.39900.40000.57800.785300 | Installation of temporary Main door | 7d | 2027-10-29 | 2027-12-19 | 3004 |  | Sector-44 Noida(2) | 9393764 |
| 3006 | 36900.37000.37700.37800.39900.40000.57800.785400 | Fire sprinkler pipe fixing | 3d | 2027-10-29 | 2027-10-31 | 2989, 3004 |  | Sector-44 Noida(2) | 9393774 |
| 3007 | 36900.37000.37700.37800.39900.40000.57800.785500 | Internal Plumbing Works | 7d | 2027-10-29 | 2027-12-19 | 3004 |  | Sector-44 Noida(2) | 9393784 |
| 3008 | 36900.37000.37700.37800.39900.40000.57800.785600 | Waterproofing | 12d | 2027-12-20 | 2027-12-31 | 3007 |  | Sector-44 Noida(2) | 9393794 |
| 3009 | 36900.37000.37700.37800.39900.40000.57800.785700 | Internal Plaster | 15d | 2028-01-01 | 2028-01-15 | 3007, 3008 |  | Sector-44 Noida(2) | 9393804 |
| 3010 | 36900.37000.37700.37800.39900.40000.57800.785800 | IPS flooring work | 11d | 2027-10-29 | 2027-12-23 | 3004 |  | Sector-44 Noida(2) | 9393814 |
| 3011 | 36900.37000.37700.37800.39900.40000.57800.785900 | Toilet dado work | 16d | 2028-01-16 | 2028-01-31 | 3007, 3008, 3009 |  | Sector-44 Noida(2) | 9393824 |
| 3012 | 36900.37000.37700.37800.39900.40000.57800.786000 | Toilet flooring work | 16d | 2028-02-01 | 2028-02-16 | 3011 |  | Sector-44 Noida(2) | 9393834 |
| 3013 | 36900.37000.37700.37800.39900.40000.57800.786100 | Living dinning flooring | 16d | 2028-02-17 | 2028-03-03 | 3010, 3012 |  | Sector-44 Noida(2) | 9393844 |
| 3014 | 36900.37000.37700.37800.39900.40000.57800.786200 | Electrical wiring work | 10d | 2028-02-23 | 2028-03-03 | 3013FS-10d |  | Sector-44 Noida(2) | 9393854 |
| 3015 | 36900.37000.37700.37800.39900.40000.57800.786300 | Aluminium door-window fixing | 17d | 2028-02-25 | 2028-03-12 | 3005, 3014FS-8d |  | Sector-44 Noida(2) | 9393864 |
| 3016 | 36900.37000.37700.37800.39900.40000.57800.786400 | Putty primer coat | 8d | 2028-03-05 | 2028-03-12 | 3015FS-8d |  | Sector-44 Noida(2) | 9393874 |
| 3017 | 36900.37000.37700.37800.39900.40000.57800.786500 | Prehung door fixing | 7d | 2028-03-08 | 2028-03-14 | 3016FS-5d |  | Sector-44 Noida(2) | 9393884 |
| 3018 | 36900.37000.37700.37800.39900.40000.57800.786600 | Painting 1st coat | 10d | 2028-03-15 | 2028-03-24 | 3017 |  | Sector-44 Noida(2) | 9393894 |
| 3019 | 36900.37000.37700.37800.39900.40000.57800.786700 | False Ceiling panel fixing | 8d | 2028-03-25 | 2028-04-01 | 3002, 3018 |  | Sector-44 Noida(2) | 9393904 |

| ID | WBS | Task | Duration | Start | Finish | Predecessors | Constraint | Calendar | Unique_Task_ID |
| --- | --- | --- | --- | --- | --- | --- | --- | --- | --- |
| 3020 | 36900.37000.37700.37800.39900.40000.57900 | **25th Floor** | 121d | 2027-10-31 | 2028-04-13 |  | start no earlier than 2027-10-31 | Sector-44 Noida(2) | 9361034 |
| 3021 | 36900.37000.37700.37800.39900.40000.57900.786800 | Block Work | 10d | 2027-10-31 | 2027-12-24 | 2593 |  | Sector-44 Noida(2) | 9393914 |
| 3022 | 36900.37000.37700.37800.39900.40000.57900.786900 | Installation of temporary Main door | 7d | 2027-12-25 | 2027-12-31 | 3021 |  | Sector-44 Noida(2) | 9393924 |
| 3023 | 36900.37000.37700.37800.39900.40000.57900.787000 | Fire sprinkler pipe fixing | 3d | 2027-12-25 | 2027-12-27 | 3006, 3021 |  | Sector-44 Noida(2) | 9393934 |
| 3024 | 36900.37000.37700.37800.39900.40000.57900.787100 | Internal Plumbing Works | 7d | 2027-12-25 | 2027-12-31 | 3021 |  | Sector-44 Noida(2) | 9393944 |
| 3025 | 36900.37000.37700.37800.39900.40000.57900.787200 | Waterproofing | 12d | 2028-01-01 | 2028-01-12 | 3024 |  | Sector-44 Noida(2) | 9393954 |
| 3026 | 36900.37000.37700.37800.39900.40000.57900.787300 | Internal Plaster | 15d | 2028-01-13 | 2028-01-27 | 3024, 3025 |  | Sector-44 Noida(2) | 9393964 |
| 3027 | 36900.37000.37700.37800.39900.40000.57900.787400 | IPS flooring work | 11d | 2027-12-25 | 2028-01-04 | 3021 |  | Sector-44 Noida(2) | 9393974 |
| 3028 | 36900.37000.37700.37800.39900.40000.57900.787500 | Toilet dado work | 16d | 2028-01-28 | 2028-02-12 | 3024, 3025, 3026 |  | Sector-44 Noida(2) | 9393984 |
| 3029 | 36900.37000.37700.37800.39900.40000.57900.787600 | Toilet flooring work | 16d | 2028-02-13 | 2028-02-28 | 3028 |  | Sector-44 Noida(2) | 9393994 |
| 3030 | 36900.37000.37700.37800.39900.40000.57900.787700 | Living dinning flooring | 16d | 2028-02-29 | 2028-03-15 | 3027, 3029 |  | Sector-44 Noida(2) | 9394004 |
| 3031 | 36900.37000.37700.37800.39900.40000.57900.787800 | Electrical wiring work | 10d | 2028-03-06 | 2028-03-15 | 3030FS-10d |  | Sector-44 Noida(2) | 9394014 |
| 3032 | 36900.37000.37700.37800.39900.40000.57900.787900 | Aluminium door-window fixing | 17d | 2028-03-08 | 2028-03-24 | 3022, 3031FS-8d |  | Sector-44 Noida(2) | 9394024 |
| 3033 | 36900.37000.37700.37800.39900.40000.57900.788000 | Putty primer coat | 8d | 2028-03-17 | 2028-03-24 | 3032FS-8d |  | Sector-44 Noida(2) | 9394034 |
| 3034 | 36900.37000.37700.37800.39900.40000.57900.788100 | Prehung door fixing | 7d | 2028-03-20 | 2028-03-26 | 3033FS-5d |  | Sector-44 Noida(2) | 9394044 |
| 3035 | 36900.37000.37700.37800.39900.40000.57900.788200 | Painting 1st coat | 10d | 2028-03-27 | 2028-04-05 | 3034 |  | Sector-44 Noida(2) | 9394054 |
| 3036 | 36900.37000.37700.37800.39900.40000.57900.788300 | False Ceiling panel fixing | 8d | 2028-04-06 | 2028-04-13 | 3019, 3035 |  | Sector-44 Noida(2) | 9394064 |
| 3037 | 36900.37000.37700.37800.39900.40000.58000 | **26th Floor** | 121d | 2027-12-27 | 2028-04-25 |  | start no earlier than 2027-12-27 | Sector-44 Noida(2) | 9361014 |
| 3038 | 36900.37000.37700.37800.39900.40000.58000.788400 | Block Work | 10d | 2027-12-27 | 2028-01-05 | 2594 |  | Sector-44 Noida(2) | 9394074 |
| 3039 | 36900.37000.37700.37800.39900.40000.58000.788500 | Installation of temporary Main door | 7d | 2028-01-06 | 2028-01-12 | 3038 |  | Sector-44 Noida(2) | 9394084 |
| 3040 | 36900.37000.37700.37800.39900.40000.58000.788600 | Fire sprinkler pipe fixing | 3d | 2028-01-06 | 2028-01-08 | 3023, 3038 |  | Sector-44 Noida(2) | 9394094 |
| 3041 | 36900.37000.37700.37800.39900.40000.58000.788700 | Internal Plumbing Works | 7d | 2028-01-06 | 2028-01-12 | 3038 |  | Sector-44 Noida(2) | 9394104 |
| 3042 | 36900.37000.37700.37800.39900.40000.58000.788800 | Waterproofing | 12d | 2028-01-13 | 2028-01-24 | 3041 |  | Sector-44 Noida(2) | 9394114 |
| 3043 | 36900.37000.37700.37800.39900.40000.58000.788900 | Internal Plaster | 15d | 2028-01-25 | 2028-02-08 | 3041, 3042 |  | Sector-44 Noida(2) | 9394124 |
| 3044 | 36900.37000.37700.37800.39900.40000.58000.789000 | IPS flooring work | 11d | 2028-01-06 | 2028-01-16 | 3038 |  | Sector-44 Noida(2) | 9394134 |
| 3045 | 36900.37000.37700.37800.39900.40000.58000.789100 | Toilet dado work | 16d | 2028-02-09 | 2028-02-24 | 3041, 3042, 3043 |  | Sector-44 Noida(2) | 9394144 |
| 3046 | 36900.37000.37700.37800.39900.40000.58000.789200 | Toilet flooring work | 16d | 2028-02-25 | 2028-03-11 | 3045 |  | Sector-44 Noida(2) | 9394154 |
| 3047 | 36900.37000.37700.37800.39900.40000.58000.789300 | Living dinning flooring | 16d | 2028-03-12 | 2028-03-27 | 3044, 3046 |  | Sector-44 Noida(2) | 9394164 |
| 3048 | 36900.37000.37700.37800.39900.40000.58000.789400 | Electrical wiring work | 10d | 2028-03-18 | 2028-03-27 | 3047FS-10d |  | Sector-44 Noida(2) | 9394174 |
| 3049 | 36900.37000.37700.37800.39900.40000.58000.789500 | Aluminium door-window fixing | 17d | 2028-03-20 | 2028-04-05 | 3039, 3048FS-8d |  | Sector-44 Noida(2) | 9394184 |
| 3050 | 36900.37000.37700.37800.39900.40000.58000.789600 | Putty primer coat | 8d | 2028-03-29 | 2028-04-05 | 3049FS-8d |  | Sector-44 Noida(2) | 9394194 |
| 3051 | 36900.37000.37700.37800.39900.40000.58000.789700 | Prehung door fixing | 7d | 2028-04-01 | 2028-04-07 | 3050FS-5d |  | Sector-44 Noida(2) | 9394204 |
| 3052 | 36900.37000.37700.37800.39900.40000.58000.789800 | Painting 1st coat | 10d | 2028-04-08 | 2028-04-17 | 3051 |  | Sector-44 Noida(2) | 9394214 |
| 3053 | 36900.37000.37700.37800.39900.40000.58000.789900 | False Ceiling panel fixing | 8d | 2028-04-18 | 2028-04-25 | 3036, 3052 |  | Sector-44 Noida(2) | 9394224 |

| ID | WBS | Task | Duration | Start | Finish | Predecessors | Constraint | Calendar | Unique_Task_ID |
| --- | --- | --- | --- | --- | --- | --- | --- | --- | --- |
| 3054 | 36900.37000.37700.37800.39900.40000.58100 | **27th Floor** | 121d | 2028-01-08 | 2028-05-07 |  | start no earlier than 2028-01-08 | Sector-44 Noida(2) | 9360994 |
| 3055 | 36900.37000.37700.37800.39900.40000.58100.790000 | Block Work | 10d | 2028-01-08 | 2028-01-17 | 2595 |  | Sector-44 Noida(2) | 9394234 |
| 3056 | 36900.37000.37700.37800.39900.40000.58100.790100 | Installation of temporary Main door | 7d | 2028-01-18 | 2028-01-24 | 3055 |  | Sector-44 Noida(2) | 9394244 |
| 3057 | 36900.37000.37700.37800.39900.40000.58100.790200 | Fire sprinkler pipe fixing | 3d | 2028-01-18 | 2028-01-20 | 3040, 3055 |  | Sector-44 Noida(2) | 9394254 |
| 3058 | 36900.37000.37700.37800.39900.40000.58100.790300 | Internal Plumbing Works | 7d | 2028-01-18 | 2028-01-24 | 3055 |  | Sector-44 Noida(2) | 9394264 |
| 3059 | 36900.37000.37700.37800.39900.40000.58100.790400 | Waterproofing | 12d | 2028-01-25 | 2028-02-05 | 3058 |  | Sector-44 Noida(2) | 9394274 |
| 3060 | 36900.37000.37700.37800.39900.40000.58100.790500 | Internal Plaster | 15d | 2028-02-06 | 2028-02-20 | 3058, 3059 |  | Sector-44 Noida(2) | 9394284 |
| 3061 | 36900.37000.37700.37800.39900.40000.58100.790600 | IPS flooring work | 11d | 2028-01-18 | 2028-01-28 | 3055 |  | Sector-44 Noida(2) | 9394294 |
| 3062 | 36900.37000.37700.37800.39900.40000.58100.790700 | Toilet dado work | 16d | 2028-02-21 | 2028-03-07 | 3058, 3059, 3060 |  | Sector-44 Noida(2) | 9394304 |
| 3063 | 36900.37000.37700.37800.39900.40000.58100.790800 | Toilet flooring work | 16d | 2028-03-08 | 2028-03-23 | 3062 |  | Sector-44 Noida(2) | 9394314 |
| 3064 | 36900.37000.37700.37800.39900.40000.58100.790900 | Living dinning flooring | 16d | 2028-03-24 | 2028-04-08 | 3061, 3063 |  | Sector-44 Noida(2) | 9394324 |
| 3065 | 36900.37000.37700.37800.39900.40000.58100.791000 | Electrical wiring work | 10d | 2028-03-30 | 2028-04-08 | 3064FS-10d |  | Sector-44 Noida(2) | 9394334 |
| 3066 | 36900.37000.37700.37800.39900.40000.58100.791100 | Aluminium door-window fixing | 17d | 2028-04-01 | 2028-04-17 | 3056, 3065FS-8d |  | Sector-44 Noida(2) | 9394344 |
| 3067 | 36900.37000.37700.37800.39900.40000.58100.791200 | Putty primer coat | 8d | 2028-04-10 | 2028-04-17 | 3066FS-8d |  | Sector-44 Noida(2) | 9394354 |
| 3068 | 36900.37000.37700.37800.39900.40000.58100.791300 | Prehung door fixing | 7d | 2028-04-13 | 2028-04-19 | 3067FS-5d |  | Sector-44 Noida(2) | 9394364 |
| 3069 | 36900.37000.37700.37800.39900.40000.58100.791400 | Painting 1st coat | 10d | 2028-04-20 | 2028-04-29 | 3068 |  | Sector-44 Noida(2) | 9394374 |
| 3070 | 36900.37000.37700.37800.39900.40000.58100.791500 | False Ceiling panel fixing | 8d | 2028-04-30 | 2028-05-07 | 3053, 3069 |  | Sector-44 Noida(2) | 9394384 |
| 3071 | 36900.37000.37700.37800.39900.40000.58200 | **28th Floor** | 121d | 2028-01-22 | 2028-05-21 |  | start no earlier than 2028-01-22 | Sector-44 Noida(2) | 9360984 |
| 3072 | 36900.37000.37700.37800.39900.40000.58200.791600 | Block Work | 10d | 2028-01-22 | 2028-01-31 | 2596 |  | Sector-44 Noida(2) | 9394394 |
| 3073 | 36900.37000.37700.37800.39900.40000.58200.791700 | Installation of temporary Main door | 7d | 2028-02-01 | 2028-02-07 | 3072 |  | Sector-44 Noida(2) | 9394404 |
| 3074 | 36900.37000.37700.37800.39900.40000.58200.791800 | Fire sprinkler pipe fixing | 3d | 2028-02-01 | 2028-02-03 | 3057, 3072 |  | Sector-44 Noida(2) | 9394414 |
| 3075 | 36900.37000.37700.37800.39900.40000.58200.791900 | Internal Plumbing Works | 7d | 2028-02-01 | 2028-02-07 | 3072 |  | Sector-44 Noida(2) | 9394424 |
| 3076 | 36900.37000.37700.37800.39900.40000.58200.792000 | Waterproofing | 12d | 2028-02-08 | 2028-02-19 | 3075 |  | Sector-44 Noida(2) | 9394434 |
| 3077 | 36900.37000.37700.37800.39900.40000.58200.792100 | Internal Plaster | 15d | 2028-02-20 | 2028-03-05 | 3075, 3076 |  | Sector-44 Noida(2) | 9394444 |
| 3078 | 36900.37000.37700.37800.39900.40000.58200.792200 | IPS flooring work | 11d | 2028-02-01 | 2028-02-11 | 3072 |  | Sector-44 Noida(2) | 9394454 |
| 3079 | 36900.37000.37700.37800.39900.40000.58200.792300 | Toilet dado work | 16d | 2028-03-06 | 2028-03-21 | 3075, 3076, 3077 |  | Sector-44 Noida(2) | 9394464 |
| 3080 | 36900.37000.37700.37800.39900.40000.58200.792400 | Toilet flooring work | 16d | 2028-03-22 | 2028-04-06 | 3079 |  | Sector-44 Noida(2) | 9394474 |
| 3081 | 36900.37000.37700.37800.39900.40000.58200.792500 | Living dinning flooring | 16d | 2028-04-07 | 2028-04-22 | 3078, 3080 |  | Sector-44 Noida(2) | 9394484 |
| 3082 | 36900.37000.37700.37800.39900.40000.58200.792600 | Electrical wiring work | 10d | 2028-04-13 | 2028-04-22 | 3081FS-10d |  | Sector-44 Noida(2) | 9394494 |
| 3083 | 36900.37000.37700.37800.39900.40000.58200.792700 | Aluminium door-window fixing | 17d | 2028-04-15 | 2028-05-01 | 3073, 3082FS-8d |  | Sector-44 Noida(2) | 9394504 |
| 3084 | 36900.37000.37700.37800.39900.40000.58200.792800 | Putty primer coat | 8d | 2028-04-24 | 2028-05-01 | 3083FS-8d |  | Sector-44 Noida(2) | 9394514 |
| 3085 | 36900.37000.37700.37800.39900.40000.58200.792900 | Prehung door fixing | 7d | 2028-04-27 | 2028-05-03 | 3084FS-5d |  | Sector-44 Noida(2) | 9394524 |
| 3086 | 36900.37000.37700.37800.39900.40000.58200.793000 | Painting 1st coat | 10d | 2028-05-04 | 2028-05-13 | 3085 |  | Sector-44 Noida(2) | 9394534 |
| 3087 | 36900.37000.37700.37800.39900.40000.58200.793100 | False Ceiling panel fixing | 8d | 2028-05-14 | 2028-05-21 | 3070, 3086 |  | Sector-44 Noida(2) | 9394544 |

| ID | WBS | Task | Duration | Start | Finish | Predecessors | Constraint | Calendar | Unique_Task_ID |
| --- | --- | --- | --- | --- | --- | --- | --- | --- | --- |
| 3088 | 36900.37000.37700.37800.39900.40000.58300 | **29th Floor** | 121d | 2028-02-03 | 2028-06-02 |  | start no earlier than 2028-02-03 | Sector-44 Noida(2) | 9361264 |
| 3089 | 36900.37000.37700.37800.39900.40000.58300.793200 | Block Work | 10d | 2028-02-03 | 2028-02-12 | 2597 |  | Sector-44 Noida(2) | 9394554 |
| 3090 | 36900.37000.37700.37800.39900.40000.58300.793300 | Installation of temporary Main door | 7d | 2028-02-13 | 2028-02-19 | 3089 |  | Sector-44 Noida(2) | 9394564 |
| 3091 | 36900.37000.37700.37800.39900.40000.58300.793400 | Fire sprinkler pipe fixing | 3d | 2028-02-13 | 2028-02-15 | 3074, 3089 |  | Sector-44 Noida(2) | 9394574 |
| 3092 | 36900.37000.37700.37800.39900.40000.58300.793500 | Internal Plumbing Works | 7d | 2028-02-13 | 2028-02-19 | 3089 |  | Sector-44 Noida(2) | 9394584 |
| 3093 | 36900.37000.37700.37800.39900.40000.58300.793600 | Waterproofing | 12d | 2028-02-20 | 2028-03-02 | 3092 |  | Sector-44 Noida(2) | 9394594 |
| 3094 | 36900.37000.37700.37800.39900.40000.58300.793700 | Internal Plaster | 15d | 2028-03-03 | 2028-03-17 | 3092, 3093 |  | Sector-44 Noida(2) | 9394604 |
| 3095 | 36900.37000.37700.37800.39900.40000.58300.793800 | IPS flooring work | 11d | 2028-02-13 | 2028-02-23 | 3089 |  | Sector-44 Noida(2) | 9394614 |
| 3096 | 36900.37000.37700.37800.39900.40000.58300.793900 | Toilet dado work | 16d | 2028-03-18 | 2028-04-02 | 3092, 3093, 3094 |  | Sector-44 Noida(2) | 9394624 |
| 3097 | 36900.37000.37700.37800.39900.40000.58300.794000 | Toilet flooring work | 16d | 2028-04-03 | 2028-04-18 | 3096 |  | Sector-44 Noida(2) | 9394634 |
| 3098 | 36900.37000.37700.37800.39900.40000.58300.794100 | Living dinning flooring | 16d | 2028-04-19 | 2028-05-04 | 3095, 3097 |  | Sector-44 Noida(2) | 9394644 |
| 3099 | 36900.37000.37700.37800.39900.40000.58300.794200 | Electrical wiring work | 10d | 2028-04-25 | 2028-05-04 | 3098FS-10d |  | Sector-44 Noida(2) | 9394654 |
| 3100 | 36900.37000.37700.37800.39900.40000.58300.794300 | Aluminium door-window fixing | 17d | 2028-04-27 | 2028-05-13 | 3090, 3099FS-8d |  | Sector-44 Noida(2) | 9394664 |
| 3101 | 36900.37000.37700.37800.39900.40000.58300.794400 | Putty primer coat | 8d | 2028-05-06 | 2028-05-13 | 3100FS-8d |  | Sector-44 Noida(2) | 9394674 |
| 3102 | 36900.37000.37700.37800.39900.40000.58300.794500 | Prehung door fixing | 7d | 2028-05-09 | 2028-05-15 | 3101FS-5d |  | Sector-44 Noida(2) | 9394684 |
| 3103 | 36900.37000.37700.37800.39900.40000.58300.794600 | Painting 1st coat | 10d | 2028-05-16 | 2028-05-25 | 3102 |  | Sector-44 Noida(2) | 9394694 |
| 3104 | 36900.37000.37700.37800.39900.40000.58300.794700 | False Ceiling panel fixing | 8d | 2028-05-26 | 2028-06-02 | 3087, 3103 |  | Sector-44 Noida(2) | 9394704 |
| 3105 | 36900.37000.37700.37800.39900.40000.58400 | **30th Floor** | 121d | 2028-02-15 | 2028-06-14 |  | start no earlier than 2028-02-15 | Sector-44 Noida(2) | 9361324 |
| 3106 | 36900.37000.37700.37800.39900.40000.58400.794800 | Block Work | 10d | 2028-02-15 | 2028-02-24 | 2598 |  | Sector-44 Noida(2) | 9394714 |
| 3107 | 36900.37000.37700.37800.39900.40000.58400.794900 | Installation of temporary Main door | 7d | 2028-02-25 | 2028-03-02 | 3106 |  | Sector-44 Noida(2) | 9394724 |
| 3108 | 36900.37000.37700.37800.39900.40000.58400.795000 | Fire sprinkler pipe fixing | 3d | 2028-02-25 | 2028-02-27 | 3091, 3106 |  | Sector-44 Noida(2) | 9394734 |
| 3109 | 36900.37000.37700.37800.39900.40000.58400.795100 | Internal Plumbing Works | 7d | 2028-02-25 | 2028-03-02 | 3106 |  | Sector-44 Noida(2) | 9394744 |
| 3110 | 36900.37000.37700.37800.39900.40000.58400.795200 | Waterproofing | 12d | 2028-03-03 | 2028-03-14 | 3109 |  | Sector-44 Noida(2) | 9394754 |
| 3111 | 36900.37000.37700.37800.39900.40000.58400.795300 | Internal Plaster | 15d | 2028-03-15 | 2028-03-29 | 3109, 3110 |  | Sector-44 Noida(2) | 9394764 |
| 3112 | 36900.37000.37700.37800.39900.40000.58400.795400 | IPS flooring work | 11d | 2028-02-25 | 2028-03-06 | 3106 |  | Sector-44 Noida(2) | 9394774 |
| 3113 | 36900.37000.37700.37800.39900.40000.58400.795500 | Toilet dado work | 16d | 2028-03-30 | 2028-04-14 | 3109, 3110, 3111 |  | Sector-44 Noida(2) | 9394784 |
| 3114 | 36900.37000.37700.37800.39900.40000.58400.795600 | Toilet flooring work | 16d | 2028-04-15 | 2028-04-30 | 3113 |  | Sector-44 Noida(2) | 9394794 |
| 3115 | 36900.37000.37700.37800.39900.40000.58400.795700 | Living dinning flooring | 16d | 2028-05-01 | 2028-05-16 | 3112, 3114 |  | Sector-44 Noida(2) | 9394804 |
| 3116 | 36900.37000.37700.37800.39900.40000.58400.795800 | Electrical wiring work | 10d | 2028-05-07 | 2028-05-16 | 3115FS-10d |  | Sector-44 Noida(2) | 9394814 |
| 3117 | 36900.37000.37700.37800.39900.40000.58400.795900 | Aluminium door-window fixing | 17d | 2028-05-09 | 2028-05-25 | 3107, 3116FS-8d |  | Sector-44 Noida(2) | 9394824 |
| 3118 | 36900.37000.37700.37800.39900.40000.58400.796000 | Putty primer coat | 8d | 2028-05-18 | 2028-05-25 | 3117FS-8d |  | Sector-44 Noida(2) | 9394834 |
| 3119 | 36900.37000.37700.37800.39900.40000.58400.796100 | Prehung door fixing | 7d | 2028-05-21 | 2028-05-27 | 3118FS-5d |  | Sector-44 Noida(2) | 9394844 |
| 3120 | 36900.37000.37700.37800.39900.40000.58400.796200 | Painting 1st coat | 10d | 2028-05-28 | 2028-06-06 | 3119 |  | Sector-44 Noida(2) | 9394854 |
| 3121 | 36900.37000.37700.37800.39900.40000.58400.796300 | False Ceiling panel fixing | 8d | 2028-06-07 | 2028-06-14 | 3104, 3120 |  | Sector-44 Noida(2) | 9394864 |

| ID | WBS | Task | Duration | Start | Finish | Predecessors | Constraint | Calendar | Unique_Task_ID |
| --- | --- | --- | --- | --- | --- | --- | --- | --- | --- |
| 3122 | 36900.37000.37700.37800.39900.40000.58500 | **31st Floor** | 121d | 2028-02-27 | 2028-06-26 |  | start no earlier than 2028-02-27 | Sector-44 Noida(2) | 9361354 |
| 3123 | 36900.37000.37700.37800.39900.40000.58500.796400 | Block Work | 10d | 2028-02-27 | 2028-03-07 | 2599 |  | Sector-44 Noida(2) | 9394874 |
| 3124 | 36900.37000.37700.37800.39900.40000.58500.796500 | Installation of temporary Main door | 7d | 2028-03-08 | 2028-03-14 | 3123 |  | Sector-44 Noida(2) | 9394884 |
| 3125 | 36900.37000.37700.37800.39900.40000.58500.796600 | Fire sprinkler pipe fixing | 3d | 2028-03-08 | 2028-03-10 | 3108, 3123 |  | Sector-44 Noida(2) | 9394894 |
| 3126 | 36900.37000.37700.37800.39900.40000.58500.796700 | Internal Plumbing Works | 7d | 2028-03-08 | 2028-03-14 | 3123 |  | Sector-44 Noida(2) | 9394904 |
| 3127 | 36900.37000.37700.37800.39900.40000.58500.796800 | Waterproofing | 12d | 2028-03-15 | 2028-03-26 | 3126 |  | Sector-44 Noida(2) | 9394914 |
| 3128 | 36900.37000.37700.37800.39900.40000.58500.796900 | Internal Plaster | 15d | 2028-03-27 | 2028-04-10 | 3126, 3127 |  | Sector-44 Noida(2) | 9394924 |
| 3129 | 36900.37000.37700.37800.39900.40000.58500.797000 | IPS flooring work | 11d | 2028-03-08 | 2028-03-18 | 3123 |  | Sector-44 Noida(2) | 9394934 |
| 3130 | 36900.37000.37700.37800.39900.40000.58500.797100 | Toilet dado work | 16d | 2028-04-11 | 2028-04-26 | 3126, 3127, 3128 |  | Sector-44 Noida(2) | 9394944 |
| 3131 | 36900.37000.37700.37800.39900.40000.58500.797200 | Toilet flooring work | 16d | 2028-04-27 | 2028-05-12 | 3130 |  | Sector-44 Noida(2) | 9394954 |
| 3132 | 36900.37000.37700.37800.39900.40000.58500.797300 | Living dinning flooring | 16d | 2028-05-13 | 2028-05-28 | 3129, 3131 |  | Sector-44 Noida(2) | 9394964 |
| 3133 | 36900.37000.37700.37800.39900.40000.58500.797400 | Electrical wiring work | 10d | 2028-05-19 | 2028-05-28 | 3132FS-10d |  | Sector-44 Noida(2) | 9394974 |
| 3134 | 36900.37000.37700.37800.39900.40000.58500.797500 | Aluminium door-window fixing | 17d | 2028-05-21 | 2028-06-06 | 3124, 3133FS-8d |  | Sector-44 Noida(2) | 9394984 |
| 3135 | 36900.37000.37700.37800.39900.40000.58500.797600 | Putty primer coat | 8d | 2028-05-30 | 2028-06-06 | 3134FS-8d |  | Sector-44 Noida(2) | 9394994 |
| 3136 | 36900.37000.37700.37800.39900.40000.58500.797700 | Prehung door fixing | 7d | 2028-06-02 | 2028-06-08 | 3135FS-5d |  | Sector-44 Noida(2) | 9395004 |
| 3137 | 36900.37000.37700.37800.39900.40000.58500.797800 | Painting 1st coat | 10d | 2028-06-09 | 2028-06-18 | 3136 |  | Sector-44 Noida(2) | 9395014 |
| 3138 | 36900.37000.37700.37800.39900.40000.58500.797900 | False Ceiling panel fixing | 8d | 2028-06-19 | 2028-06-26 | 3121, 3137 |  | Sector-44 Noida(2) | 9395024 |
| 3139 | 36900.37000.37700.37800.39900.40000.58600 | **32nd Floor** | 121d | 2028-03-13 | 2028-07-11 |  | start no earlier than 2028-03-13 | Sector-44 Noida(2) | 9361374 |
| 3140 | 36900.37000.37700.37800.39900.40000.58600.798000 | Block Work | 10d | 2028-03-13 | 2028-03-22 | 2600 |  | Sector-44 Noida(2) | 9395034 |
| 3141 | 36900.37000.37700.37800.39900.40000.58600.798100 | Installation of temporary Main door | 7d | 2028-03-23 | 2028-03-29 | 3140 |  | Sector-44 Noida(2) | 9395044 |
| 3142 | 36900.37000.37700.37800.39900.40000.58600.798200 | Fire sprinkler pipe fixing | 3d | 2028-03-23 | 2028-03-25 | 3125, 3140 |  | Sector-44 Noida(2) | 9395054 |
| 3143 | 36900.37000.37700.37800.39900.40000.58600.798300 | Internal Plumbing Works | 7d | 2028-03-23 | 2028-03-29 | 3140 |  | Sector-44 Noida(2) | 9395064 |
| 3144 | 36900.37000.37700.37800.39900.40000.58600.798400 | Waterproofing | 12d | 2028-03-30 | 2028-04-10 | 3143 |  | Sector-44 Noida(2) | 9395074 |
| 3145 | 36900.37000.37700.37800.39900.40000.58600.798500 | Internal Plaster | 15d | 2028-04-11 | 2028-04-25 | 3143, 3144 |  | Sector-44 Noida(2) | 9395084 |
| 3146 | 36900.37000.37700.37800.39900.40000.58600.798600 | IPS flooring work | 11d | 2028-03-23 | 2028-04-02 | 3140 |  | Sector-44 Noida(2) | 9395094 |
| 3147 | 36900.37000.37700.37800.39900.40000.58600.798700 | Toilet dado work | 16d | 2028-04-26 | 2028-05-11 | 3143, 3144, 3145 |  | Sector-44 Noida(2) | 9395104 |
| 3148 | 36900.37000.37700.37800.39900.40000.58600.798800 | Toilet flooring work | 16d | 2028-05-12 | 2028-05-27 | 3147 |  | Sector-44 Noida(2) | 9395114 |
| 3149 | 36900.37000.37700.37800.39900.40000.58600.798900 | Living dinning flooring | 16d | 2028-05-28 | 2028-06-12 | 3146, 3148 |  | Sector-44 Noida(2) | 9395124 |
| 3150 | 36900.37000.37700.37800.39900.40000.58600.799000 | Electrical wiring work | 10d | 2028-06-03 | 2028-06-12 | 3149FS-10d |  | Sector-44 Noida(2) | 9395134 |
| 3151 | 36900.37000.37700.37800.39900.40000.58600.799100 | Aluminium door-window fixing | 17d | 2028-06-05 | 2028-06-21 | 3141, 3150FS-8d |  | Sector-44 Noida(2) | 9395144 |
| 3152 | 36900.37000.37700.37800.39900.40000.58600.799200 | Putty primer coat | 8d | 2028-06-14 | 2028-06-21 | 3151FS-8d |  | Sector-44 Noida(2) | 9395154 |
| 3153 | 36900.37000.37700.37800.39900.40000.58600.799300 | Prehung door fixing | 7d | 2028-06-17 | 2028-06-23 | 3152FS-5d |  | Sector-44 Noida(2) | 9395164 |
| 3154 | 36900.37000.37700.37800.39900.40000.58600.799400 | Painting 1st coat | 10d | 2028-06-24 | 2028-07-03 | 3153 |  | Sector-44 Noida(2) | 9395174 |
| 3155 | 36900.37000.37700.37800.39900.40000.58600.799500 | False Ceiling panel fixing | 8d | 2028-07-04 | 2028-07-11 | 3138, 3154 |  | Sector-44 Noida(2) | 9395184 |

| ID | WBS | Task | Duration | Start | Finish | Predecessors | Constraint | Calendar | Unique_Task_ID |
| --- | --- | --- | --- | --- | --- | --- | --- | --- | --- |
| 3156 | 36900.37000.37700.37800.39900.40000.58700 | **33rd Floor** | 121d | 2028-03-25 | 2028-07-23 |  | start no earlier than 2028-03-25 | Sector-44 Noida(2) | 9362014 |
| 3157 | 36900.37000.37700.37800.39900.40000.58700.799600 | Block Work | 10d | 2028-03-25 | 2028-04-03 | 2601 |  | Sector-44 Noida(2) | 9395194 |
| 3158 | 36900.37000.37700.37800.39900.40000.58700.799700 | Installation of temporary Main door | 7d | 2028-04-04 | 2028-04-10 | 3157 |  | Sector-44 Noida(2) | 9395204 |
| 3159 | 36900.37000.37700.37800.39900.40000.58700.799800 | Fire sprinkler pipe fixing | 3d | 2028-04-04 | 2028-04-06 | 3142, 3157 |  | Sector-44 Noida(2) | 9395214 |
| 3160 | 36900.37000.37700.37800.39900.40000.58700.799900 | Internal Plumbing Works | 7d | 2028-04-04 | 2028-04-10 | 3157 |  | Sector-44 Noida(2) | 9395224 |
| 3161 | 36900.37000.37700.37800.39900.40000.58700.800000 | Waterproofing | 12d | 2028-04-11 | 2028-04-22 | 3160 |  | Sector-44 Noida(2) | 9395234 |
| 3162 | 36900.37000.37700.37800.39900.40000.58700.800100 | Internal Plaster | 15d | 2028-04-23 | 2028-05-07 | 3160, 3161 |  | Sector-44 Noida(2) | 9395244 |
| 3163 | 36900.37000.37700.37800.39900.40000.58700.800200 | IPS flooring work | 11d | 2028-04-04 | 2028-04-14 | 3157 |  | Sector-44 Noida(2) | 9395254 |
| 3164 | 36900.37000.37700.37800.39900.40000.58700.800300 | Toilet dado work | 16d | 2028-05-08 | 2028-05-23 | 3160, 3161, 3162 |  | Sector-44 Noida(2) | 9395264 |
| 3165 | 36900.37000.37700.37800.39900.40000.58700.800400 | Toilet flooring work | 16d | 2028-05-24 | 2028-06-08 | 3164 |  | Sector-44 Noida(2) | 9395274 |
| 3166 | 36900.37000.37700.37800.39900.40000.58700.800500 | Living dinning flooring | 16d | 2028-06-09 | 2028-06-24 | 3163, 3165 |  | Sector-44 Noida(2) | 9395284 |
| 3167 | 36900.37000.37700.37800.39900.40000.58700.800600 | Electrical wiring work | 10d | 2028-06-15 | 2028-06-24 | 3166FS-10d |  | Sector-44 Noida(2) | 9395294 |
| 3168 | 36900.37000.37700.37800.39900.40000.58700.800700 | Aluminium door-window fixing | 17d | 2028-06-17 | 2028-07-03 | 3158, 3167FS-8d |  | Sector-44 Noida(2) | 9395304 |
| 3169 | 36900.37000.37700.37800.39900.40000.58700.800800 | Putty primer coat | 8d | 2028-06-26 | 2028-07-03 | 3168FS-8d |  | Sector-44 Noida(2) | 9395314 |
| 3170 | 36900.37000.37700.37800.39900.40000.58700.800900 | Prehung door fixing | 7d | 2028-06-29 | 2028-07-05 | 3169FS-5d |  | Sector-44 Noida(2) | 9395324 |
| 3171 | 36900.37000.37700.37800.39900.40000.58700.801000 | Painting 1st coat | 10d | 2028-07-06 | 2028-07-15 | 3170 |  | Sector-44 Noida(2) | 9395334 |
| 3172 | 36900.37000.37700.37800.39900.40000.58700.801100 | False Ceiling panel fixing | 8d | 2028-07-16 | 2028-07-23 | 3155, 3171 |  | Sector-44 Noida(2) | 9395344 |
| 3173 | 36900.37000.37700.37800.39900.40000.58800 | **34th Floor** | 121d | 2028-04-06 | 2028-08-04 |  | start no earlier than 2028-04-06 | Sector-44 Noida(2) | 9361404 |
| 3174 | 36900.37000.37700.37800.39900.40000.58800.801200 | Block Work | 10d | 2028-04-06 | 2028-04-15 | 2602 |  | Sector-44 Noida(2) | 9395354 |
| 3175 | 36900.37000.37700.37800.39900.40000.58800.801300 | Installation of temporary Main door | 7d | 2028-04-16 | 2028-04-22 | 3174 |  | Sector-44 Noida(2) | 9395364 |
| 3176 | 36900.37000.37700.37800.39900.40000.58800.801400 | Fire sprinkler pipe fixing | 3d | 2028-04-16 | 2028-04-18 | 3159, 3174 |  | Sector-44 Noida(2) | 9395374 |
| 3177 | 36900.37000.37700.37800.39900.40000.58800.801500 | Internal Plumbing Works | 7d | 2028-04-16 | 2028-04-22 | 3174 |  | Sector-44 Noida(2) | 9395384 |
| 3178 | 36900.37000.37700.37800.39900.40000.58800.801600 | Waterproofing | 12d | 2028-04-23 | 2028-05-04 | 3177 |  | Sector-44 Noida(2) | 9395394 |
| 3179 | 36900.37000.37700.37800.39900.40000.58800.801700 | Internal Plaster | 15d | 2028-05-05 | 2028-05-19 | 3177, 3178 |  | Sector-44 Noida(2) | 9395404 |
| 3180 | 36900.37000.37700.37800.39900.40000.58800.801800 | IPS flooring work | 11d | 2028-04-16 | 2028-04-26 | 3174 |  | Sector-44 Noida(2) | 9395414 |
| 3181 | 36900.37000.37700.37800.39900.40000.58800.801900 | Toilet dado work | 16d | 2028-05-20 | 2028-06-04 | 3177, 3178, 3179 |  | Sector-44 Noida(2) | 9395424 |
| 3182 | 36900.37000.37700.37800.39900.40000.58800.802000 | Toilet flooring work | 16d | 2028-06-05 | 2028-06-20 | 3181 |  | Sector-44 Noida(2) | 9395434 |
| 3183 | 36900.37000.37700.37800.39900.40000.58800.802100 | Living dinning flooring | 16d | 2028-06-21 | 2028-07-06 | 3180, 3182 |  | Sector-44 Noida(2) | 9395444 |
| 3184 | 36900.37000.37700.37800.39900.40000.58800.802200 | Electrical wiring work | 10d | 2028-06-27 | 2028-07-06 | 3183FS-10d |  | Sector-44 Noida(2) | 9395454 |
| 3185 | 36900.37000.37700.37800.39900.40000.58800.802300 | Aluminium door-window fixing | 17d | 2028-06-29 | 2028-07-15 | 3175, 3184FS-8d |  | Sector-44 Noida(2) | 9395464 |
| 3186 | 36900.37000.37700.37800.39900.40000.58800.802400 | Putty primer coat | 8d | 2028-07-08 | 2028-07-15 | 3185FS-8d |  | Sector-44 Noida(2) | 9395474 |
| 3187 | 36900.37000.37700.37800.39900.40000.58800.802500 | Prehung door fixing | 7d | 2028-07-11 | 2028-07-17 | 3186FS-5d |  | Sector-44 Noida(2) | 9395484 |
| 3188 | 36900.37000.37700.37800.39900.40000.58800.802600 | Painting 1st coat | 10d | 2028-07-18 | 2028-07-27 | 3187 |  | Sector-44 Noida(2) | 9395494 |
| 3189 | 36900.37000.37700.37800.39900.40000.58800.802700 | False Ceiling panel fixing | 8d | 2028-07-28 | 2028-08-04 | 3172, 3188 |  | Sector-44 Noida(2) | 9395504 |

| ID | WBS | Task | Duration | Start | Finish | Predecessors | Constraint | Calendar | Unique_Task_ID |
| --- | --- | --- | --- | --- | --- | --- | --- | --- | --- |
| 3190 | 36900.37000.37700.37800.39900.40000.58900 | **35th Floor** | 121d | 2028-04-18 | 2028-08-16 |  | start no earlier than 2028-04-18 | Sector-44 Noida(2) | 9361434 |
| 3191 | 36900.37000.37700.37800.39900.40000.58900.802800 | Block Work | 10d | 2028-04-18 | 2028-04-27 | 2603 |  | Sector-44 Noida(2) | 9395514 |
| 3192 | 36900.37000.37700.37800.39900.40000.58900.802900 | Installation of temporary Main door | 7d | 2028-04-28 | 2028-05-04 | 3191 |  | Sector-44 Noida(2) | 9395524 |
| 3193 | 36900.37000.37700.37800.39900.40000.58900.803000 | Fire sprinkler pipe fixing | 3d | 2028-04-28 | 2028-04-30 | 3176, 3191 |  | Sector-44 Noida(2) | 9395534 |
| 3194 | 36900.37000.37700.37800.39900.40000.58900.803100 | Internal Plumbing Works | 7d | 2028-04-28 | 2028-05-04 | 3191 |  | Sector-44 Noida(2) | 9395544 |
| 3195 | 36900.37000.37700.37800.39900.40000.58900.803200 | Waterproofing | 12d | 2028-05-05 | 2028-05-16 | 3194 |  | Sector-44 Noida(2) | 9395554 |
| 3196 | 36900.37000.37700.37800.39900.40000.58900.803300 | Internal Plaster | 15d | 2028-05-17 | 2028-05-31 | 3194, 3195 |  | Sector-44 Noida(2) | 9395564 |
| 3197 | 36900.37000.37700.37800.39900.40000.58900.803400 | IPS flooring work | 11d | 2028-04-28 | 2028-05-08 | 3191 |  | Sector-44 Noida(2) | 9395574 |
| 3198 | 36900.37000.37700.37800.39900.40000.58900.803500 | Toilet dado work | 16d | 2028-06-01 | 2028-06-16 | 3194, 3195, 3196 |  | Sector-44 Noida(2) | 9395584 |
| 3199 | 36900.37000.37700.37800.39900.40000.58900.803600 | Toilet flooring work | 16d | 2028-06-17 | 2028-07-02 | 3198 |  | Sector-44 Noida(2) | 9395594 |
| 3200 | 36900.37000.37700.37800.39900.40000.58900.803700 | Living dinning flooring | 16d | 2028-07-03 | 2028-07-18 | 3197, 3199 |  | Sector-44 Noida(2) | 9395604 |
| 3201 | 36900.37000.37700.37800.39900.40000.58900.803800 | Electrical wiring work | 10d | 2028-07-09 | 2028-07-18 | 3200FS-10d |  | Sector-44 Noida(2) | 9395614 |
| 3202 | 36900.37000.37700.37800.39900.40000.58900.803900 | Aluminium door-window fixing | 17d | 2028-07-11 | 2028-07-27 | 3192, 3201FS-8d |  | Sector-44 Noida(2) | 9395624 |
| 3203 | 36900.37000.37700.37800.39900.40000.58900.804000 | Putty primer coat | 8d | 2028-07-20 | 2028-07-27 | 3202FS-8d |  | Sector-44 Noida(2) | 9395634 |
| 3204 | 36900.37000.37700.37800.39900.40000.58900.804100 | Prehung door fixing | 7d | 2028-07-23 | 2028-07-29 | 3203FS-5d |  | Sector-44 Noida(2) | 9395644 |
| 3205 | 36900.37000.37700.37800.39900.40000.58900.804200 | Painting 1st coat | 10d | 2028-07-30 | 2028-08-08 | 3204 |  | Sector-44 Noida(2) | 9395654 |
| 3206 | 36900.37000.37700.37800.39900.40000.58900.804300 | False Ceiling panel fixing | 8d | 2028-08-09 | 2028-08-16 | 3189, 3205 |  | Sector-44 Noida(2) | 9395664 |
| 3207 | 36900.37000.37700.37800.39900.40000.59000 | **36th Floor** | 118d | 2028-05-03 | 2028-08-28 |  | start no earlier than 2028-05-03 | Sector-44 Noida(2) | 9361464 |
| 3208 | 36900.37000.37700.37800.39900.40000.59000.804400 | Block Work | 7d | 2028-05-03 | 2028-05-09 | 2604 |  | Sector-44 Noida(2) | 9395674 |
| 3209 | 36900.37000.37700.37800.39900.40000.59000.804500 | Installation of temporary Main door | 7d | 2028-05-10 | 2028-05-16 | 3208 |  | Sector-44 Noida(2) | 9395684 |
| 3210 | 36900.37000.37700.37800.39900.40000.59000.804600 | Fire sprinkler pipe fixing | 3d | 2028-05-10 | 2028-05-12 | 3193, 3208 |  | Sector-44 Noida(2) | 9395694 |
| 3211 | 36900.37000.37700.37800.39900.40000.59000.804700 | Internal Plumbing Works | 7d | 2028-05-10 | 2028-05-16 | 3208 |  | Sector-44 Noida(2) | 9395704 |
| 3212 | 36900.37000.37700.37800.39900.40000.59000.804800 | Waterproofing | 12d | 2028-05-17 | 2028-05-28 | 3211 |  | Sector-44 Noida(2) | 9395714 |
| 3213 | 36900.37000.37700.37800.39900.40000.59000.804900 | Internal Plaster | 15d | 2028-05-29 | 2028-06-12 | 3211, 3212 |  | Sector-44 Noida(2) | 9395724 |
| 3214 | 36900.37000.37700.37800.39900.40000.59000.805000 | IPS flooring work | 11d | 2028-05-10 | 2028-05-20 | 3208 |  | Sector-44 Noida(2) | 9395734 |
| 3215 | 36900.37000.37700.37800.39900.40000.59000.805100 | Toilet dado work | 16d | 2028-06-13 | 2028-06-28 | 3211, 3212, 3213 |  | Sector-44 Noida(2) | 9395744 |
| 3216 | 36900.37000.37700.37800.39900.40000.59000.805200 | Toilet flooring work | 16d | 2028-06-29 | 2028-07-14 | 3215 |  | Sector-44 Noida(2) | 9395754 |
| 3217 | 36900.37000.37700.37800.39900.40000.59000.805300 | Living dinning flooring | 16d | 2028-07-15 | 2028-07-30 | 3214, 3216 |  | Sector-44 Noida(2) | 9395764 |
| 3218 | 36900.37000.37700.37800.39900.40000.59000.805400 | Electrical wiring work | 10d | 2028-07-21 | 2028-07-30 | 3217FS-10d |  | Sector-44 Noida(2) | 9395774 |
| 3219 | 36900.37000.37700.37800.39900.40000.59000.805500 | Aluminium door-window fixing | 17d | 2028-07-23 | 2028-08-08 | 3209, 3218FS-8d |  | Sector-44 Noida(2) | 9395784 |
| 3220 | 36900.37000.37700.37800.39900.40000.59000.805600 | Putty primer coat | 8d | 2028-08-01 | 2028-08-08 | 3219FS-8d |  | Sector-44 Noida(2) | 9395794 |
| 3221 | 36900.37000.37700.37800.39900.40000.59000.805700 | Prehung door fixing | 7d | 2028-08-04 | 2028-08-10 | 3220FS-5d |  | Sector-44 Noida(2) | 9395804 |
| 3222 | 36900.37000.37700.37800.39900.40000.59000.805800 | Painting 1st coat | 10d | 2028-08-11 | 2028-08-20 | 3221 |  | Sector-44 Noida(2) | 9395814 |
| 3223 | 36900.37000.37700.37800.39900.40000.59000.805900 | False Ceiling panel fixing | 8d | 2028-08-21 | 2028-08-28 | 3206, 3222 |  | Sector-44 Noida(2) | 9395824 |

| ID | WBS | Task | Duration | Start | Finish | Predecessors | Constraint | Calendar | Unique_Task_ID |
| --- | --- | --- | --- | --- | --- | --- | --- | --- | --- |
| 3224 | 36900.37000.37700.37800.39900.40000.59100 | **37th Floor** | 122d | 2028-05-12 | 2028-09-10 |  | start no earlier than 2028-05-12 | Sector-44 Noida(2) | 9361574 |
| 3225 | 36900.37000.37700.37800.39900.40000.59100.806000 | Block Work | 7d | 2028-05-12 | 2028-05-18 | 2605 |  | Sector-44 Noida(2) | 9395834 |
| 3226 | 36900.37000.37700.37800.39900.40000.59100.806100 | Installation of temporary Main door | 7d | 2028-05-19 | 2028-05-25 | 3225 |  | Sector-44 Noida(2) | 9395844 |
| 3227 | 36900.37000.37700.37800.39900.40000.59100.806200 | Fire sprinkler pipe fixing | 3d | 2028-05-19 | 2028-05-21 | 3210, 3225 |  | Sector-44 Noida(2) | 9395854 |
| 3228 | 36900.37000.37700.37800.39900.40000.59100.806300 | Internal Plumbing Works | 7d | 2028-05-19 | 2028-05-25 | 3225 |  | Sector-44 Noida(2) | 9395864 |
| 3229 | 36900.37000.37700.37800.39900.40000.59100.806400 | Waterproofing | 12d | 2028-05-26 | 2028-06-06 | 3228 |  | Sector-44 Noida(2) | 9395874 |
| 3230 | 36900.37000.37700.37800.39900.40000.59100.806500 | Internal Plaster | 15d | 2028-06-07 | 2028-06-21 | 3228, 3229 |  | Sector-44 Noida(2) | 9395884 |
| 3231 | 36900.37000.37700.37800.39900.40000.59100.806600 | IPS flooring work | 11d | 2028-05-19 | 2028-05-29 | 3225 |  | Sector-44 Noida(2) | 9395894 |
| 3232 | 36900.37000.37700.37800.39900.40000.59100.806700 | Toilet dado work | 20d | 2028-06-22 | 2028-07-11 | 3228, 3229, 3230 |  | Sector-44 Noida(2) | 9395904 |
| 3233 | 36900.37000.37700.37800.39900.40000.59100.806800 | Toilet flooring work | 16d | 2028-07-12 | 2028-07-27 | 3232 |  | Sector-44 Noida(2) | 9395914 |
| 3234 | 36900.37000.37700.37800.39900.40000.59100.806900 | Living dinning flooring | 16d | 2028-07-28 | 2028-08-12 | 3231, 3233 |  | Sector-44 Noida(2) | 9395924 |
| 3235 | 36900.37000.37700.37800.39900.40000.59100.807000 | Electrical wiring work | 10d | 2028-08-03 | 2028-08-12 | 3234FS-10d |  | Sector-44 Noida(2) | 9395934 |
| 3236 | 36900.37000.37700.37800.39900.40000.59100.807100 | Aluminium door-window fixing | 17d | 2028-08-05 | 2028-08-21 | 3226, 3235FS-8d |  | Sector-44 Noida(2) | 9395944 |
| 3237 | 36900.37000.37700.37800.39900.40000.59100.807200 | Putty primer coat | 8d | 2028-08-14 | 2028-08-21 | 3236FS-8d |  | Sector-44 Noida(2) | 9395954 |
| 3238 | 36900.37000.37700.37800.39900.40000.59100.807300 | Prehung door fixing | 7d | 2028-08-17 | 2028-08-23 | 3237FS-5d |  | Sector-44 Noida(2) | 9395964 |
| 3239 | 36900.37000.37700.37800.39900.40000.59100.807400 | Painting 1st coat | 10d | 2028-08-24 | 2028-09-02 | 3238 |  | Sector-44 Noida(2) | 9395974 |
| 3240 | 36900.37000.37700.37800.39900.40000.59100.807500 | False Ceiling panel fixing | 8d | 2028-09-03 | 2028-09-10 | 3223, 3239 |  | Sector-44 Noida(2) | 9395984 |
| 3241 | 36900.37000.37700.37800.39900.40000.59200 | **38th Floor** | 137d | 2028-05-21 | 2028-10-04 |  | start no earlier than 2028-05-21 | Sector-44 Noida(2) | 9361654 |
| 3242 | 36900.37000.37700.37800.39900.40000.59200.807600 | Block Work | 13d | 2028-05-21 | 2028-06-02 | 2606 |  | Sector-44 Noida(2) | 9395994 |
| 3243 | 36900.37000.37700.37800.39900.40000.59200.807700 | Installation of temporary Main door | 7d | 2028-06-03 | 2028-06-09 | 3242 |  | Sector-44 Noida(2) | 9396004 |
| 3244 | 36900.37000.37700.37800.39900.40000.59200.807800 | Fire sprinkler pipe fixing | 3d | 2028-06-03 | 2028-06-05 | 3227, 3242 |  | Sector-44 Noida(2) | 9396014 |
| 3245 | 36900.37000.37700.37800.39900.40000.59200.807900 | Internal Plumbing Works | 7d | 2028-06-03 | 2028-06-09 | 3242 |  | Sector-44 Noida(2) | 9396024 |
| 3246 | 36900.37000.37700.37800.39900.40000.59200.808000 | Waterproofing | 12d | 2028-06-10 | 2028-06-21 | 3245 |  | Sector-44 Noida(2) | 9396034 |
| 3247 | 36900.37000.37700.37800.39900.40000.59200.808100 | Internal Plaster | 11d | 2028-06-22 | 2028-07-02 | 3245, 3246 |  | Sector-44 Noida(2) | 9396044 |
| 3248 | 36900.37000.37700.37800.39900.40000.59200.808200 | IPS flooring work | 11d | 2028-06-03 | 2028-06-13 | 3242 |  | Sector-44 Noida(2) | 9396054 |
| 3249 | 36900.37000.37700.37800.39900.40000.59200.808300 | Toilet dado work | 20d | 2028-07-03 | 2028-07-22 | 3245, 3246, 3247 |  | Sector-44 Noida(2) | 9396064 |
| 3250 | 36900.37000.37700.37800.39900.40000.59200.808400 | Toilet flooring work | 16d | 2028-07-23 | 2028-08-07 | 3249 |  | Sector-44 Noida(2) | 9396074 |
| 3251 | 36900.37000.37700.37800.39900.40000.59200.808500 | Living dinning flooring | 29d | 2028-08-08 | 2028-09-05 | 3248, 3250 |  | Sector-44 Noida(2) | 9396084 |
| 3252 | 36900.37000.37700.37800.39900.40000.59200.808600 | Electrical wiring work | 10d | 2028-08-27 | 2028-09-05 | 3251FS-10d |  | Sector-44 Noida(2) | 9396094 |
| 3253 | 36900.37000.37700.37800.39900.40000.59200.808700 | Aluminium door-window fixing | 17d | 2028-08-29 | 2028-09-14 | 3243, 3252FS-8d |  | Sector-44 Noida(2) | 9396104 |
| 3254 | 36900.37000.37700.37800.39900.40000.59200.808800 | Putty primer coat | 8d | 2028-09-07 | 2028-09-14 | 3253FS-8d |  | Sector-44 Noida(2) | 9396114 |
| 3255 | 36900.37000.37700.37800.39900.40000.59200.808900 | Prehung door fixing | 7d | 2028-09-10 | 2028-09-16 | 3254FS-5d |  | Sector-44 Noida(2) | 9396124 |
| 3256 | 36900.37000.37700.37800.39900.40000.59200.809000 | Painting 1st coat | 10d | 2028-09-17 | 2028-09-26 | 3255 |  | Sector-44 Noida(2) | 9396134 |
| 3257 | 36900.37000.37700.37800.39900.40000.59200.809100 | False Ceiling panel fixing | 8d | 2028-09-27 | 2028-10-04 | 3240, 3256 |  | Sector-44 Noida(2) | 9396144 |

| ID | WBS | Task | Duration | Start | Finish | Predecessors | Constraint | Calendar | Unique_Task_ID |
| --- | --- | --- | --- | --- | --- | --- | --- | --- | --- |
| 3258 | 36900.37000.37700.37800.39900.191200 | **Terrace finishing** | 70d | 2028-07-29 | 2028-10-06 |  | start no earlier than 2028-07-29 | Sector-44 Noida(2) | 9366124 |
| 3259 | 36900.37000.37700.37800.39900.191200.395500 | Terrace waterproofing | 30d | 2028-07-29 | 2028-08-27 | 3348FS+10d |  | Sector-44 Noida(2) | 9372244 |
| 3260 | 36900.37000.37700.37800.39900.191200.395600 | Terrace Finishing | 40d | 2028-08-28 | 2028-10-06 | 3259 |  | Sector-44 Noida(2) | 9372254 |
| 3261 | 36900.37000.37700.37800.39900.96900 | **Common area finishing** | 190d | 2028-04-24 | 2028-10-30 |  | start no earlier than 2028-04-24 | Sector-44 Noida(2) | 9362134 |
| 3262 | 36900.37000.37700.37800.39900.96900.395700 | Masonary Work | 40d | 2028-04-24 | 2028-06-02 | 2550 |  | Sector-44 Noida(2) | 9372264 |
| 3263 | 36900.37000.37700.37800.39900.96900.395800 | Fire sprinkler pipe fixing | 40d | 2028-04-29 | 2028-06-07 | 2550FS+5d |  | Sector-44 Noida(2) | 9372274 |
| 3264 | 36900.37000.37700.37800.39900.96900.395900 | Corridoor, staircase, shaft Plaster & whitewash | 80d | 2028-05-04 | 2028-07-22 | 3262FS-30d |  | Sector-44 Noida(2) | 9372284 |
| 3265 | 36900.37000.37700.37800.39900.96900.396000 | Staircase railing fixing | 80d | 2028-05-14 | 2028-08-01 | 3262FS-20d |  | Sector-44 Noida(2) | 9372294 |
| 3266 | 36900.37000.37700.37800.39900.96900.396100 | Fire staircase flooring | 100d | 2028-05-04 | 2028-08-11 | 3265FS-90d |  | Sector-44 Noida(2) | 9372304 |
| 3267 | 36900.37000.37700.37800.39900.96900.396200 | Main staircase flooring | 100d | 2028-05-04 | 2028-08-11 | 3265FS-90d |  | Sector-44 Noida(2) | 9372314 |
| 3268 | 36900.37000.37700.37800.39900.96900.396300 | Fire door work | 120d | 2028-06-13 | 2028-10-10 | 3266FS-60d |  | Sector-44 Noida(2) | 9372324 |
| 3269 | 36900.37000.37700.37800.39900.96900.396400 | Lobby flooring & Corridor | 170d | 2028-05-14 | 2028-10-30 | 3267FS-90d |  | Sector-44 Noida(2) | 9372334 |
| 3270 | 36900.37000.37700.37800.39900.96900.396500 | Ceiling & wall putty-primer | 80d | 2028-08-02 | 2028-10-20 | 3269FS-90d |  | Sector-44 Noida(2) | 9372344 |
| 3271 | 36900.37000.37700.37800.39900.96900.396600 | Ceiling & wall painting | 75d | 2028-07-13 | 2028-09-25 | 3270FS-100d |  | Sector-44 Noida(2) | 9372354 |
| 3272 | 36900.37000.37700.37800.39900.96900.396700 | Electrical wiring work | 70d | 2028-06-18 | 2028-08-26 | 3271FS-100d |  | Sector-44 Noida(2) | 9372364 |
| 3273 | 36900.37000.37700.37800.39900.96900.396800 | Light fixture supply & installation | 30d | 2028-07-13 | 2028-08-11 | 3272FS-45d |  | Sector-44 Noida(2) | 9372374 |
| 3274 | 36900.37000.37700.37800.39900.96900.396900 | Installation of fire signages including Basements | 20d | 2028-09-26 | 2028-10-15 | 3271 |  | Sector-44 Noida(2) | 9372384 |
| 3275 | 36900.37000.37700.37800.39900.45200 | **Balcony Glass Railing** | 259d | 2027-01-31 | 2027-10-16 |  | start no earlier than 2027-01-31 | Sector-44 Noida(2) | 9360814 |
| 3276 | 36900.37000.37700.37800.39900.45200.397000 | 1st Floor | 7d | 2027-01-31 | 2027-02-06 | 2612FS+10d |  | Sector-44 Noida(2) | 9372394 |
| 3277 | 36900.37000.37700.37800.39900.45200.397100 | 2nd Floor | 7d | 2027-02-07 | 2027-02-13 | 3276 |  | Sector-44 Noida(2) | 9372404 |
| 3278 | 36900.37000.37700.37800.39900.45200.397200 | 3rd Floor | 7d | 2027-02-14 | 2027-02-20 | 3277 |  | Sector-44 Noida(2) | 9372414 |
| 3279 | 36900.37000.37700.37800.39900.45200.397300 | 4th Floor | 7d | 2027-02-21 | 2027-02-27 | 3278 |  | Sector-44 Noida(2) | 9372424 |
| 3280 | 36900.37000.37700.37800.39900.45200.397400 | 5th Floor | 7d | 2027-02-28 | 2027-03-06 | 3279 |  | Sector-44 Noida(2) | 9372434 |
| 3281 | 36900.37000.37700.37800.39900.45200.397500 | 6th Floor | 7d | 2027-03-07 | 2027-03-13 | 3280 |  | Sector-44 Noida(2) | 9372444 |
| 3282 | 36900.37000.37700.37800.39900.45200.397600 | 7th Floor | 7d | 2027-03-14 | 2027-03-20 | 3281 |  | Sector-44 Noida(2) | 9372454 |
| 3283 | 36900.37000.37700.37800.39900.45200.397700 | 8th Floor | 7d | 2027-03-21 | 2027-03-27 | 3282 |  | Sector-44 Noida(2) | 9372464 |
| 3284 | 36900.37000.37700.37800.39900.45200.397800 | 9th Floor | 7d | 2027-03-28 | 2027-04-03 | 3283 |  | Sector-44 Noida(2) | 9372474 |
| 3285 | 36900.37000.37700.37800.39900.45200.397900 | 10th Floor | 7d | 2027-04-04 | 2027-04-10 | 3284 |  | Sector-44 Noida(2) | 9372484 |
| 3286 | 36900.37000.37700.37800.39900.45200.398000 | 11th Floor | 7d | 2027-04-11 | 2027-04-17 | 3285 |  | Sector-44 Noida(2) | 9372494 |
| 3287 | 36900.37000.37700.37800.39900.45200.398100 | 12th Floor | 7d | 2027-04-18 | 2027-04-24 | 3286 |  | Sector-44 Noida(2) | 9372504 |
| 3288 | 36900.37000.37700.37800.39900.45200.398200 | 13th Floor | 7d | 2027-04-25 | 2027-05-01 | 3287 |  | Sector-44 Noida(2) | 9372514 |
| 3289 | 36900.37000.37700.37800.39900.45200.398300 | 14th Floor | 7d | 2027-05-02 | 2027-05-08 | 3288 |  | Sector-44 Noida(2) | 9372524 |
| 3290 | 36900.37000.37700.37800.39900.45200.398400 | 15th Floor | 7d | 2027-05-09 | 2027-05-15 | 3289 |  | Sector-44 Noida(2) | 9372534 |
| 3291 | 36900.37000.37700.37800.39900.45200.398500 | 16th Floor | 7d | 2027-05-16 | 2027-05-22 | 3290 |  | Sector-44 Noida(2) | 9372544 |
| 3292 | 36900.37000.37700.37800.39900.45200.398600 | 17th Floor | 7d | 2027-05-23 | 2027-05-29 | 3291 |  | Sector-44 Noida(2) | 9372554 |
| 3293 | 36900.37000.37700.37800.39900.45200.398700 | 18th Floor | 7d | 2027-05-30 | 2027-06-05 | 3292 |  | Sector-44 Noida(2) | 9372564 |
| 3294 | 36900.37000.37700.37800.39900.45200.398800 | 19th Floor | 7d | 2027-06-06 | 2027-06-12 | 3293 |  | Sector-44 Noida(2) | 9372574 |
| 3295 | 36900.37000.37700.37800.39900.45200.398900 | 20th Floor | 7d | 2027-06-13 | 2027-06-19 | 3294 |  | Sector-44 Noida(2) | 9372584 |
| 3296 | 36900.37000.37700.37800.39900.45200.399000 | 21st Floor | 7d | 2027-06-20 | 2027-06-26 | 3295 |  | Sector-44 Noida(2) | 9372594 |
| 3297 | 36900.37000.37700.37800.39900.45200.399100 | 22nd Floor | 7d | 2027-06-27 | 2027-07-03 | 3296 |  | Sector-44 Noida(2) | 9372604 |
| 3298 | 36900.37000.37700.37800.39900.45200.399200 | 23rd Floor | 7d | 2027-07-04 | 2027-07-10 | 3297 |  | Sector-44 Noida(2) | 9372614 |
| 3299 | 36900.37000.37700.37800.39900.45200.399300 | 24th Floor | 7d | 2027-07-11 | 2027-07-17 | 3298 |  | Sector-44 Noida(2) | 9372624 |
| 3300 | 36900.37000.37700.37800.39900.45200.399400 | 25th Floor | 7d | 2027-07-18 | 2027-07-24 | 3299 |  | Sector-44 Noida(2) | 9372634 |
| 3301 | 36900.37000.37700.37800.39900.45200.399500 | 26th Floor | 7d | 2027-07-25 | 2027-07-31 | 3300 |  | Sector-44 Noida(2) | 9372644 |
| 3302 | 36900.37000.37700.37800.39900.45200.399600 | 27th Floor | 7d | 2027-08-01 | 2027-08-07 | 3301 |  | Sector-44 Noida(2) | 9372654 |
| 3303 | 36900.37000.37700.37800.39900.45200.399700 | 28th Floor | 7d | 2027-08-08 | 2027-08-14 | 3302 |  | Sector-44 Noida(2) | 9372664 |
| 3304 | 36900.37000.37700.37800.39900.45200.399800 | 29th Floor | 7d | 2027-08-15 | 2027-08-21 | 3303 |  | Sector-44 Noida(2) | 9372674 |
| 3305 | 36900.37000.37700.37800.39900.45200.399900 | 30th Floor | 7d | 2027-08-22 | 2027-08-28 | 3304 |  | Sector-44 Noida(2) | 9372684 |
| 3306 | 36900.37000.37700.37800.39900.45200.400000 | 31st Floor | 7d | 2027-08-29 | 2027-09-04 | 3305 |  | Sector-44 Noida(2) | 9372694 |
| 3307 | 36900.37000.37700.37800.39900.45200.400100 | 32nd Floor | 7d | 2027-09-05 | 2027-09-11 | 3306 |  | Sector-44 Noida(2) | 9372704 |
| 3308 | 36900.37000.37700.37800.39900.45200.400200 | 33th Floor | 7d | 2027-09-12 | 2027-09-18 | 3307 |  | Sector-44 Noida(2) | 9372714 |
| 3309 | 36900.37000.37700.37800.39900.45200.400300 | 34th Floor | 7d | 2027-09-19 | 2027-09-25 | 3308 |  | Sector-44 Noida(2) | 9372724 |
| 3310 | 36900.37000.37700.37800.39900.45200.400400 | 36th Floor | 7d | 2027-09-26 | 2027-10-02 | 3309 |  | Sector-44 Noida(2) | 9372734 |
| 3311 | 36900.37000.37700.37800.39900.45200.400500 | 37th Floor | 7d | 2027-10-03 | 2027-10-09 | 3310 |  | Sector-44 Noida(2) | 9372744 |
| 3312 | 36900.37000.37700.37800.39900.45200.400600 | 38th Floor | 7d | 2027-10-10 | 2027-10-16 | 3311 |  | Sector-44 Noida(2) | 9372754 |

| ID | WBS | Task | Duration | Start | Finish | Predecessors | Constraint | Calendar | Unique_Task_ID |
| --- | --- | --- | --- | --- | --- | --- | --- | --- | --- |
| 3313 | 36900.37000.37700.37800.96800 | **MEP Work** | 338d | 2028-04-04 | 2029-04-21 |  | start no earlier than 2028-04-04 | Sector-44 Noida(2) | 9362144 |
| 3314 | 36900.37000.37700.37800.96800.100500 | **Electrical Work** | 145d | 2028-04-04 | 2028-08-26 |  | start no earlier than 2028-04-04 | Sector-44 Noida(2) | 9362224 |
| 3315 | 36900.37000.37700.37800.96800.100500.400700 | Cable Tray | 30d | 2028-06-03 | 2028-07-02 | 2567 |  | Sector-44 Noida(2) | 9372764 |
| 3316 | 36900.37000.37700.37800.96800.100500.400800 | Cable, main & sub main | 30d | 2028-04-04 | 2028-05-03 | 3315FS-90d |  | Sector-44 Noida(2) | 9372774 |
| 3317 | 36900.37000.37700.37800.96800.100500.400900 | LT panel & DB | 40d | 2028-05-04 | 2028-06-12 | 3315FS-60d |  | Sector-44 Noida(2) | 9372784 |
| 3318 | 36900.37000.37700.37800.96800.100500.401000 | Earthing Works | 15d | 2028-07-03 | 2028-07-17 | 3315 |  | Sector-44 Noida(2) | 9372794 |
| 3319 | 36900.37000.37700.37800.96800.100500.401100 | Advanced Lightening Protection system | 15d | 2028-06-23 | 2028-07-07 | 3318FS-25d |  | Sector-44 Noida(2) | 9372804 |
| 3320 | 36900.37000.37700.37800.96800.100500.401200 | Energy meter | 15d | 2028-05-04 | 2028-05-18 | 3316 |  | Sector-44 Noida(2) | 9372814 |
| 3321 | 36900.37000.37700.37800.96800.100500.401300 | Inverter / UPS | 10d | 2028-06-13 | 2028-06-22 | 3316, 3317, 3320FS-5d |  | Sector-44 Noida(2) | 9372824 |
| 3322 | 36900.37000.37700.37800.96800.100500.401400 | HVAC & Exhaust fan | 30d | 2028-06-03 | 2028-07-02 | 3315FS-30d |  | Sector-44 Noida(2) | 9372834 |
| 3323 | 36900.37000.37700.37800.96800.100500.401500 | FTTH | 10d | 2028-05-19 | 2028-05-28 | 3317FS-25d |  | Sector-44 Noida(2) | 9372844 |
| 3324 | 36900.37000.37700.37800.96800.100500.401600 | Security System - FA & PA | 10d | 2028-05-19 | 2028-05-28 | 3317FS-25d |  | Sector-44 Noida(2) | 9372854 |
| 3325 | 36900.37000.37700.37800.96800.100500.401700 | T&C of complete system | 15d | 2028-08-12 | 2028-08-26 | 3273, 3317, 3319, 3320, 3321, 3322, 3323, 3324, 3457 |  | Sector-44 Noida(2) | 9372864 |
| 3326 | 36900.37000.37700.37800.96800.105200 | **Plumbing work** | 89d | 2028-05-30 | 2028-08-26 |  | start no earlier than 2028-05-30 | Sector-44 Noida(2) | 9362594 |
| 3327 | 36900.37000.37700.37800.96800.105200.401800 | Terrace looping | 20d | 2028-05-30 | 2028-06-18 | 2607 |  | Sector-44 Noida(2) | 9372874 |
| 3328 | 36900.37000.37700.37800.96800.105200.401900 | Shaft Plumbing | 30d | 2028-06-23 | 2028-07-22 | 3264FS-30d, 3327 |  | Sector-44 Noida(2) | 9372884 |
| 3329 | 36900.37000.37700.37800.96800.105200.402000 | CP sanitary fixture supply | 20d | 2028-07-23 | 2028-08-11 | 3328 |  | Sector-44 Noida(2) | 9372894 |
| 3330 | 36900.37000.37700.37800.96800.105200.402100 | Cold & flushing water supply | 20d | 2028-07-23 | 2028-08-11 | 3328 |  | Sector-44 Noida(2) | 9372904 |
| 3331 | 36900.37000.37700.37800.96800.105200.402200 | Misc work | 15d | 2028-07-28 | 2028-08-11 | 3330FS-15d |  | Sector-44 Noida(2) | 9372914 |
| 3332 | 36900.37000.37700.37800.96800.105200.402300 | Installation of PHE pumps | 25d | 2028-06-19 | 2028-07-13 | 3327 |  | Sector-44 Noida(2) | 9372924 |
| 3333 | 36900.37000.37700.37800.96800.105200.402400 | T&C of complete system | 15d | 2028-08-12 | 2028-08-26 | 3327, 3328, 3330, 3331, 3332 |  | Sector-44 Noida(2) | 9372934 |
| 3334 | 36900.37000.37700.37800.96800.122500 | **Fire fighting work** | 258d | 2028-06-23 | 2029-04-21 |  | start no earlier than 2028-06-23 | Sector-44 Noida(2) | 9363944 |
| 3335 | 36900.37000.37700.37800.96800.122500.402500 | Fire hydrant work | 25d | 2028-06-23 | 2028-07-17 | 3264FS-30d |  | Sector-44 Noida(2) | 9372944 |
| 3336 | 36900.37000.37700.37800.96800.122500.402600 | Pipe connection & sprinkler installation | 15d | 2028-07-18 | 2028-08-01 | 3335 |  | Sector-44 Noida(2) | 9372954 |
| 3337 | 36900.37000.37700.37800.96800.122500.402700 | Shaft Downtake works | 25d | 2028-06-23 | 2028-07-17 | 2607, 3264FS-30d |  | Sector-44 Noida(2) | 9372964 |
| 3338 | 36900.37000.37700.37800.96800.122500.402800 | Connection to pump room | 10d | 2028-07-18 | 2028-07-27 | 3337 |  | Sector-44 Noida(2) | 9372974 |
| 3339 | 36900.37000.37700.37800.96800.122500.402900 | Installation of FF pumps | 15d | 2028-07-18 | 2028-08-01 | 3335, 3337 |  | Sector-44 Noida(2) | 9372984 |
| 3340 | 36900.37000.37700.37800.96800.122500.403000 | T&C of complete system | 148d | 2028-10-11 | 2029-04-21 | 3263, 3268, 3274FS-22d, 3336, 3338, 3339, 3244, 2989 |  | Sector-44 Noida(2) | 9372994 |

| ID | WBS | Task | Duration | Start | Finish | Predecessors | Complete | Constraint | Calendar | Unique_Task_ID |
| --- | --- | --- | --- | --- | --- | --- | --- | --- | --- | --- |
| 3341 | 36900.37000.37700.37800.96800.185900 | **Lift work** | 78d | 2028-06-09 | 2028-08-25 |  |  | start no earlier than 2028-06-09 | Sector-44 Noida(2) | 9365804 |
| 3342 | 36900.37000.37700.37800.96800.185900.403100 | Lift Shaft/Pit Handover | 12d | 2028-06-09 | 2028-06-20 | 2608 |  |  | Sector-44 Noida(2) | 9373004 |
| 3343 | 36900.37000.37700.37800.96800.185900.403200 | Lift installation work | 58d | 2028-06-21 | 2028-08-17 | 3342 |  |  | Sector-44 Noida(2) | 9373014 |
| 3344 | 36900.37000.37700.37800.96800.185900.403300 | Lift testing and commissioning | 8d | 2028-08-18 | 2028-08-25 | 3343 |  |  | Sector-44 Noida(2) | 9373024 |
| 3345 | 36900.37000.37700.37800.185200 | **External Paint Works** | 80d | 2028-05-30 | 2028-08-17 |  |  | start no earlier than 2028-05-30 | Sector-44 Noida(2) | 9364324 |
| 3346 | 36900.37000.37700.37800.185200.292500 | Surface prepration | 30d | 2028-05-30 | 2028-06-28 | 2607 |  |  | Sector-44 Noida(2) | 9368384 |
| 3347 | 36900.37000.37700.37800.185200.292600 | External Painting (Primer, texture & first coat) | 50d | 2028-06-29 | 2028-08-17 | 3346 |  |  | Sector-44 Noida(2) | 9368394 |
| 3348 | 36900.37000.37700.37800.185200.292700 | Final coat of painting | 40d | 2028-06-09 | 2028-07-18 | 3347FS-70d |  |  | Sector-44 Noida(2) | 9368404 |
| 3349 | 36900.37000.37700.37800.185200.292800 | Misc. work | 20d | 2028-06-29 | 2028-07-18 | 3346 |  |  | Sector-44 Noida(2) | 9368414 |
| 3350 | 36900.37000.37700.37800.260300 | OC Application/Readiness | 1d | 2029-04-22 | 2029-04-22 | 3325, 3333, 3340, 3344, 3260, 3002, 3266, 3267, 3269, 3312, 3257, 3465, 3466, 3467, 3468, 3469, 3470, 3471, 3472 |  |  | Sector-44 Noida(2) | 9366284 |
| 3351 | 36900.37000.37700.37800.260400 | OC Receipt | 60d | 2029-04-23 | 2029-06-21 | 3350, 2291, 2292, 2302, 2303 |  |  | Sector-44 Noida(2) | 9366294 |
| 3352 | 36900.37000.37700.37800.129000 | **Post OC Activities** | 160d | 2029-05-23 | 2029-10-29 |  |  | start no earlier than 2029-05-23 | Sector-44 Noida(2) | 9364084 |
| 3353 | 36900.37000.37700.37800.129000.292900 | CP & Sanitaryware installation | 120d | 2029-05-23 | 2029-09-19 | 3351FS-30d, 3329 |  |  | Sector-44 Noida(2) | 9368424 |
| 3354 | 36900.37000.37700.37800.129000.293000 | Electrical Fixtures And Fittings installations | 120d | 2029-05-23 | 2029-09-19 | 3351FS-30d |  |  | Sector-44 Noida(2) | 9368434 |
| 3355 | 36900.37000.37700.37800.129000.293100 | Final Coat Paint Internal | 40d | 2029-05-23 | 2029-07-01 | 3351FS-30d |  |  | Sector-44 Noida(2) | 9368444 |
| 3356 | 36900.37000.37700.37800.129000.293200 | VRV Highwall (HVAC) installation | 60d | 2029-08-31 | 2029-10-29 | 3355FS+60d |  |  | Sector-44 Noida(2) | 9368454 |
| 3357 | 36900.37000.37700.37800.129000.293300 | Wooden Flooring | 100d | 2029-05-23 | 2029-08-30 | 3351FS-30d |  |  | Sector-44 Noida(2) | 9368464 |
| 3358 | 36900.37000.37700.37800.260500 | Offer to possession | 80d | 2029-10-30 | 2030-01-17 | 3351FS+120d, 3349, 3353, 3354, 3356, 3357 |  |  | Sector-44 Noida(2) | 9366304 |
| 3359 | 36900.37000.47300 | **NTA works** | 1445d | 2025-01-13 | 2029-06-25 |  | 9% | start no earlier than 2025-01-13 | Sector-44 Noida(2) | 9360924 |
| 3360 | 36900.37000.47300.48400 | **RCC Works** | 1034d | 2025-01-13 | 2028-03-26 |  | 18% | start no earlier than 2025-01-13 | Sector-44 Noida(2) | 9360944 |
| 3361 | 36900.37000.47300.48400.106000 | **Footings including stitch slab** | 919.9d | 2025-02-25 | 2028-01-15 |  | 14% | start no earlier than 2025-02-25 | Sector-44 Noida(2) | 9362664 |
| 3362 | 36900.37000.47300.48400.106000.237200 | Excavation for isolated fottings of NTA | 650d | 2025-08-24 | 2027-12-21 | 64FS-24d |  |  | Sector-44 Noida(2) | 9368474 |
| 3363 | 36900.37000.47300.48400.106000.237300 | ATT | 650d | 2025-08-24 | 2027-12-31 | 3362SS |  |  | Sector-44 Noida(2) | 9368484 |
| 3364 | 36900.37000.47300.48400.106000.237400 | PCC | 650d | 2025-08-24 | 2028-01-10 | 3363SS |  |  | Sector-44 Noida(2) | 9368494 |
| 3365 | 36900.37000.47300.48400.106000.237600 | Reinforcement | 650d | 2025-04-29 | 2027-08-03 | 3364SS-117d | 19% |  | Sector-44 Noida(2) | 9368504 |
| 3366 | 36900.37000.47300.48400.106000.237700 | Shuttering | 650d | 2025-03-21 | 2027-07-07 | 3365SS-39d | 25% |  | Sector-44 Noida(2) | 9368514 |
| 3367 | 36900.37000.47300.48400.106000.237800 | Concreteing work | 200d | 2025-02-25 | 2028-01-15 | 3362FS-915d, 3363FS-915d, 3364FS-915d, 3365FS-915d, 3366FS-915d | 97% |  | Sector-44 Noida(2) | 9368524 |

| ID | WBS | Task | Duration | Start | Finish | Predecessors | Complete | Constraint | Calendar | Unique_Task_ID |
| --- | --- | --- | --- | --- | --- | --- | --- | --- | --- | --- |
| 3368 | 36900.37000.47300.48400.184600 | **Retaining walls -below B2 slab bottom** | 242d | 2025-08-24 | 2026-06-06 |  | 5% | start no earlier than 2025-08-24 | Sector-44 Noida(2) | 9365854 |
| 3369 | 36900.37000.47300.48400.184600.237900 | Reinforcement | 100d | 2025-08-24 | 2026-04-17 | 3364SS | 7% |  | Sector-44 Noida(2) | 9368534 |
| 3370 | 36900.37000.47300.48400.184600.238000 | Shuttering | 130d | 2025-09-13 | 2026-05-27 | 3369SS+20d | 5% |  | Sector-44 Noida(2) | 9368544 |
| 3371 | 36900.37000.47300.48400.184600.238200 | Concreteing work | 130d | 2025-09-13 | 2026-06-06 | 3370SS | 5% |  | Sector-44 Noida(2) | 9368554 |
| 3372 | 36900.37000.47300.48400.180900 | **B2 Slab** | 1034d | 2025-01-13 | 2028-03-26 |  | 84% | start no earlier than 2025-01-13 | Sector-44 Noida(2) | 9365864 |
| 3373 | 36900.37000.47300.48400.180900.238300 | Shuttering | 250d | 2025-03-17 | 2028-02-29 | 3367SS+20d | 84% |  | Sector-44 Noida(2) | 9368564 |
| 3374 | 36900.37000.47300.48400.180900.238500 | Reinforcement | 300d | 2025-02-12 | 2028-03-26 | 3373SS-33d | 80% |  | Sector-44 Noida(2) | 9368574 |
| 3375 | 36900.37000.47300.48400.180900.238600 | Concreteing work | 300d | 2025-01-13 | 2028-03-07 | 3374SS-30d | 90% |  | Sector-44 Noida(2) | 9368584 |
| 3376 | 36900.37000.47300.48400.188800 | **Retaining walls -below B1 slab bottom** | 150d | 2026-02-14 | 2026-07-13 |  |  | start no earlier than 2026-02-14 | Sector-44 Noida(2) | 9365874 |
| 3377 | 36900.37000.47300.48400.188800.293400 | Reinforcement | 100d | 2026-02-14 | 2026-05-24 | 3371SS+109d |  |  | Sector-44 Noida(2) | 9368594 |
| 3378 | 36900.37000.47300.48400.188800.293500 | Shuttering | 130d | 2026-02-24 | 2026-07-03 | 3377SS+10d |  |  | Sector-44 Noida(2) | 9368604 |
| 3379 | 36900.37000.47300.48400.188800.293600 | Concreteing work | 130d | 2026-03-06 | 2026-07-13 | 3378SS+10d |  |  | Sector-44 Noida(2) | 9368614 |
| 3380 | 36900.37000.47300.48400.189500 | **B1 Slab** | 345d | 2026-07-27 | 2027-08-20 |  |  | start no earlier than 2026-07-27 | Sector-44 Noida(2) | 9365904 |
| 3381 | 36900.37000.47300.48400.189500.293700 | Shuttering | 180d | 2026-07-27 | 2027-03-08 | 3375FS-500d |  |  | Sector-44 Noida(2) | 9368624 |
| 3382 | 36900.37000.47300.48400.189500.293800 | Reinforcement | 180d | 2026-08-06 | 2027-03-18 | 3381SS+10d |  |  | Sector-44 Noida(2) | 9368634 |
| 3383 | 36900.37000.47300.48400.189500.293900 | Concreteing work | 180d | 2027-02-22 | 2027-08-20 | 3379, 3382FS-25d |  |  | Sector-44 Noida(2) | 9368644 |
| 3384 | 36900.37000.47300.48400.189200 | **Retaining walls -below Stilt slab bottom** | 360d | 2026-05-25 | 2027-07-03 |  |  | start no earlier than 2026-05-25 | Sector-44 Noida(2) | 9365954 |
| 3385 | 36900.37000.47300.48400.189200.294000 | Reinforcement | 100d | 2026-05-25 | 2026-09-01 | 3377 |  |  | Sector-44 Noida(2) | 9368654 |
| 3386 | 36900.37000.47300.48400.189200.294100 | Shuttering | 130d | 2026-09-02 | 2027-02-23 | 3385 |  |  | Sector-44 Noida(2) | 9368664 |
| 3387 | 36900.37000.47300.48400.189200.294200 | Concreteing work | 130d | 2027-02-24 | 2027-07-03 | 3386 |  |  | Sector-44 Noida(2) | 9368674 |
| 3388 | 36900.37000.47300.48400.189100 | **Stilt Slab** | 232d | 2027-03-04 | 2027-10-21 |  |  | start no earlier than 2027-03-04 | Sector-44 Noida(2) | 9365944 |
| 3389 | 36900.37000.47300.48400.189100.294300 | Shuttering | 110d | 2027-03-04 | 2027-06-21 | 3383SS+10d |  |  | Sector-44 Noida(2) | 9368684 |
| 3390 | 36900.37000.47300.48400.189100.294400 | Reinforcement | 110d | 2027-03-14 | 2027-07-01 | 3389SS+10d |  |  | Sector-44 Noida(2) | 9368694 |
| 3391 | 36900.37000.47300.48400.189100.294500 | Concreteing work | 110d | 2027-07-04 | 2027-10-21 | 3387, 3390SS+10d |  |  | Sector-44 Noida(2) | 9368704 |

| ID | WBS | Task | Duration | Start | Finish | Predecessors | Constraint | Calendar | Unique_Task_ID |
| --- | --- | --- | --- | --- | --- | --- | --- | --- | --- |
| 3392 | 36900.37000.47300.48400.188700 | **Podium Slab** | 70d | 2027-10-22 | 2028-02-13 |  | start no earlier than 2027-10-22 | Sector-44 Noida(2) | 9365894 |
| 3393 | 36900.37000.47300.48400.188700.294600 | Shuttering | 50d | 2027-10-22 | 2028-01-24 | 3391 |  | Sector-44 Noida(2) | 9368714 |
| 3394 | 36900.37000.47300.48400.188700.294700 | Reinforcement | 45d | 2027-12-31 | 2028-02-13 | 3393FS-25d |  | Sector-44 Noida(2) | 9368724 |
| 3395 | 36900.37000.47300.48400.188700.294800 | Concreteing work | 15d | 2028-01-20 | 2028-02-03 | 3394FS-25d |  | Sector-44 Noida(2) | 9368734 |
| 3396 | 36900.37000.47300.48400.101400 | **W/P, Soldier piling de-stressing & backfilling** | 690d | 2025-12-16 | 2028-02-03 |  | start no earlier than 2025-12-16 | Sector-44 Noida(2) | 9362364 |
| 3397 | 36900.37000.47300.48400.101400.294900 | W/P of raft and retaining wall till 2nd level of anchoring | 60d | 2025-12-16 | 2026-02-13 |  | start no earlier than 2025-12-16 | Sector-44 Noida(2) | 9368744 |
| 3398 | 36900.37000.47300.48400.101400.295000 | Backfilling till 2nd level of anchoring - B2 slab | 60d | 2026-01-30 | 2026-03-30 | 3397FS-15d |  | Sector-44 Noida(2) | 9368754 |
| 3399 | 36900.37000.47300.48400.101400.295100 | De-stressing of 2nd level of anchoring of soldier piling | 28d | 2026-03-11 | 2026-04-07 | 3398FS-20d |  | Sector-44 Noida(2) | 9368764 |
| 3400 | 36900.37000.47300.48400.101400.295200 | W/P of retaining wall till 1st level of anchoring | 40d | 2027-08-11 | 2027-09-19 | 3383FS-10d |  | Sector-44 Noida(2) | 9368774 |
| 3401 | 36900.37000.47300.48400.101400.295300 | Backfilling till 1st level of anchoring - B1 slab | 40d | 2027-09-05 | 2027-10-14 | 3400FS-15d |  | Sector-44 Noida(2) | 9368784 |
| 3402 | 36900.37000.47300.48400.101400.295400 | De-stressing of 1st level of anchoring of soldier piling | 28d | 2027-09-25 | 2027-10-22 | 3401FS-20d |  | Sector-44 Noida(2) | 9368794 |
| 3403 | 36900.37000.47300.48400.101400.295500 | W/P of balance Retaining wall till NTA slab | 30d | 2027-10-12 | 2027-12-25 | 3391FS-10d |  | Sector-44 Noida(2) | 9368804 |
| 3404 | 36900.37000.47300.48400.101400.295600 | De-stressing of top anchor of soldier piling - 2m from NTA top | 28d | 2027-10-17 | 2027-12-28 | 3403FS-25d |  | Sector-44 Noida(2) | 9368814 |
| 3405 | 36900.37000.47300.48400.101400.295700 | Backfilling till NTA top slab | 60d | 2027-10-22 | 2028-02-03 | 3403FS-20d |  | Sector-44 Noida(2) | 9368824 |
| 3406 | 36900.37000.47300.48400.101400.295800 | Removal of soldier piles | 15d | 2028-01-20 | 2028-02-03 | 3399, 3402, 3404FS-13d, 3405FS-15d |  | Sector-44 Noida(2) | 9368834 |
| 3407 | 36900.37000.47300.99400 | **Finishing works** | 135d | 2028-02-04 | 2028-06-17 |  | start no earlier than 2028-02-04 | Sector-44 Noida(2) | 9362234 |
| 3408 | 36900.37000.47300.99400.103700 | **Basement-2** | 105d | 2028-02-04 | 2028-05-18 |  | start no earlier than 2028-02-04 | Sector-44 Noida(2) | 9362454 |
| 3409 | 36900.37000.47300.99400.103700.295900 | Masonary | 30d | 2028-02-04 | 2028-03-04 | 3395 |  | Sector-44 Noida(2) | 9368844 |
| 3410 | 36900.37000.47300.99400.103700.296000 | Structural Steel | 30d | 2028-02-04 | 2028-03-04 | 3395 |  | Sector-44 Noida(2) | 9368854 |
| 3411 | 36900.37000.47300.99400.103700.296100 | Plaster | 30d | 2028-03-05 | 2028-04-03 | 3409, 3410FS-15d |  | Sector-44 Noida(2) | 9368864 |
| 3412 | 36900.37000.47300.99400.103700.296200 | White Wash | 30d | 2028-04-04 | 2028-05-03 | 3411 |  | Sector-44 Noida(2) | 9368874 |
| 3413 | 36900.37000.47300.99400.103700.296300 | VDF | 60d | 2028-02-19 | 2028-04-18 | 3411FS-45d |  | Sector-44 Noida(2) | 9368884 |
| 3414 | 36900.37000.47300.99400.103700.296400 | Drain & Sump (incl. gratings) | 60d | 2028-03-20 | 2028-05-18 | 3413FS-30d |  | Sector-44 Noida(2) | 9368894 |
| 3415 | 36900.37000.47300.99400.103700.296500 | Car parking marking | 30d | 2028-04-19 | 2028-05-18 | 3412FS-15d |  | Sector-44 Noida(2) | 9368904 |
| 3416 | 36900.37000.47300.99400.103700.296600 | Signages | 15d | 2028-05-04 | 2028-05-18 | 3409FF, 3410FF, 3411FF, 3412FS-10d, 3413FF, 3414FF, 3415FF |  | Sector-44 Noida(2) | 9368914 |

| ID | WBS | Task | Duration | Start | Finish | Predecessors | Constraint | Calendar | Unique_Task_ID |
| --- | --- | --- | --- | --- | --- | --- | --- | --- | --- |
| 3417 | 36900.37000.47300.99400.103800 | **Basement-1** | 105d | 2028-03-05 | 2028-06-17 |  | start no earlier than 2028-03-05 | Sector-44 Noida(2) | 9362544 |
| 3418 | 36900.37000.47300.99400.103800.296700 | Masonary | 30d | 2028-03-05 | 2028-04-03 | 3409 |  | Sector-44 Noida(2) | 9368924 |
| 3419 | 36900.37000.47300.99400.103800.296800 | Structural Steel | 30d | 2028-03-05 | 2028-04-03 | 3409 |  | Sector-44 Noida(2) | 9368934 |
| 3420 | 36900.37000.47300.99400.103800.296900 | Plaster | 30d | 2028-04-04 | 2028-05-03 | 3418, 3419FS-15d |  | Sector-44 Noida(2) | 9368944 |
| 3421 | 36900.37000.47300.99400.103800.297000 | White Wash | 30d | 2028-05-04 | 2028-06-02 | 3420 |  | Sector-44 Noida(2) | 9368954 |
| 3422 | 36900.37000.47300.99400.103800.297100 | VDF | 60d | 2028-03-20 | 2028-05-18 | 3420FS-45d |  | Sector-44 Noida(2) | 9368964 |
| 3423 | 36900.37000.47300.99400.103800.297200 | Drain & Sump (incl. gratings) | 60d | 2028-04-19 | 2028-06-17 | 3422FS-30d |  | Sector-44 Noida(2) | 9368974 |
| 3424 | 36900.37000.47300.99400.103800.297300 | Car parking marking | 15d | 2028-05-19 | 2028-06-02 | 3421FS-15d |  | Sector-44 Noida(2) | 9368984 |
| 3425 | 36900.37000.47300.99400.103800.297400 | Signages | 15d | 2028-06-03 | 2028-06-17 | 3418FF, 3419FF, 3420FF, 3421FS-10d, 3422FF, 3423FF, 3424FF |  | Sector-44 Noida(2) | 9368994 |
| 3426 | 36900.37000.47300.95100 | **Tanks, DG & Trafo yard works** | 391d | 2027-03-02 | 2028-05-10 |  | start no earlier than 2027-03-02 | Sector-44 Noida(2) | 9362104 |
| 3427 | 36900.37000.47300.95100.123200 | **STP WTP RWH RW tanks & plant rooms works** | 56d | 2027-04-21 | 2027-06-15 |  | start no earlier than 2027-04-21 | Sector-44 Noida(2) | 9364074 |
| 3428 | 36900.37000.47300.95100.123200.297500 | STP Works incl pumping station | 20d | 2027-05-27 | 2027-06-15 | 747, 1480, 2214 |  | Sector-44 Noida(2) | 9369004 |
| 3429 | 36900.37000.47300.95100.123200.297600 | WTP works incl Plant room | 20d | 2027-05-27 | 2027-06-15 | 747, 1480, 2214 |  | Sector-44 Noida(2) | 9369014 |
| 3430 | 36900.37000.47300.95100.123200.297700 | Raw water tank works | 20d | 2027-05-27 | 2027-06-15 | 747, 1480, 2214 |  | Sector-44 Noida(2) | 9369024 |
| 3431 | 36900.37000.47300.95100.123200.297800 | Fire fighting tank works incl Plant room | 20d | 2027-05-12 | 2027-05-31 | 757FS-60d, 1490FS-60d, 2224FS-60d |  | Sector-44 Noida(2) | 9369034 |
| 3432 | 36900.37000.47300.95100.123200.297900 | Rain water harvesting works incl Plant room | 20d | 2027-04-21 | 2027-05-10 | 297 |  | Sector-44 Noida(2) | 9369044 |
| 3433 | 36900.37000.47300.95100.101100 | **DG & Trafo yard works** | 391d | 2027-03-02 | 2028-05-10 |  | start no earlier than 2027-03-02 | Sector-44 Noida(2) | 9362244 |
| 3434 | 36900.37000.47300.95100.101100.104700 | **DG Room** | 267d | 2027-03-02 | 2028-01-07 |  | start no earlier than 2027-03-02 | Sector-44 Noida(2) | 9362554 |
| 3435 | 36900.37000.47300.95100.101100.104700.107800 | **DG installation works** | 105d | 2027-04-21 | 2027-08-03 |  | start no earlier than 2027-04-21 | Sector-44 Noida(2) | 90162 |
| 3436 | 36900.37000.47300.95100.101100.104700.107800.809200 | DG foundation works | 15d | 2027-04-21 | 2027-05-05 | 297 |  | Sector-44 Noida(2) | 9396154 |
| 3437 | 36900.37000.47300.95100.101100.104700.107800.809300 | DG room epoxy flooring | 10d | 2027-05-06 | 2027-05-15 | 3436 |  | Sector-44 Noida(2) | 9396164 |
| 3438 | 36900.37000.47300.95100.101100.104700.107800.809400 | DG room acoustics | 90d | 2027-05-06 | 2027-08-03 | 3436 |  | Sector-44 Noida(2) | 9396174 |
| 3439 | 36900.37000.47300.95100.101100.104700.107800.809500 | DG installation including day tank & motor | 30d | 2027-05-16 | 2027-06-14 | 3437 |  | Sector-44 Noida(2) | 90172 |
| 3440 | 36900.37000.47300.95100.101100.104700.107800.809600 | DG stack works including frame fabrication + frame erection + pipe erection + insulation wrapping + cladding | 100d | 2027-04-21 | 2027-07-29 | 297 |  | Sector-44 Noida(2) | 9396184 |
| 3441 | 36900.37000.47300.95100.101100.104700.107800.809700 | DG earthing | 30d | 2027-06-08 | 2027-07-07 | 3439FS-7d |  | Sector-44 Noida(2) | 9396194 |

| ID | WBS | Task | Duration | Start | Finish | Predecessors | Constraint | Calendar | Unique_Task_ID |
| --- | --- | --- | --- | --- | --- | --- | --- | --- | --- |
| 3442 | 36900.37000.47300.95100.101100.104700.177600 | **DG T&C** | 267d | 2027-03-02 | 2028-01-07 |  | start no earlier than 2027-03-02 | Sector-44 Noida(2) | 9365584 |
| 3443 | 36900.37000.47300.95100.101100.104700.177600.809800 | DG stack joint radiography | 70d | 2027-03-02 | 2027-05-10 | 3440FS-150d |  | Sector-44 Noida(2) | 9396204 |
| 3444 | 36900.37000.47300.95100.101100.104700.177600.809900 | DG sync panel installation | 30d | 2027-08-04 | 2027-09-02 | 3438, 3439, 3440FS-30d, 3441 |  | Sector-44 Noida(2) | 9396214 |
| 3445 | 36900.37000.47300.95100.101100.104700.177600.810000 | DG cranking (DG standalone testing) | 7d | 2027-09-03 | 2027-09-09 | 3443, 3444 |  | Sector-44 Noida(2) | 9396224 |
| 3446 | 36900.37000.47300.95100.101100.104700.177600.810100 | DG intergrated T&C with full load setting | 30d | 2027-10-25 | 2028-01-07 | 3445FS+45d |  | Sector-44 Noida(2) | 9396234 |
| 3447 | 36900.37000.47300.95100.101100.104800 | **Transformer room & VCB** | 341d | 2027-04-21 | 2028-05-10 |  | start no earlier than 2027-04-21 | Sector-44 Noida(2) | 9362534 |
| 3448 | 36900.37000.47300.95100.101100.104800.107700 | **Transformer & HT panel installation works** | 135d | 2027-04-21 | 2027-09-02 |  | start no earlier than 2027-04-21 | Sector-44 Noida(2) | 9363974 |
| 3449 | 36900.37000.47300.95100.101100.104800.107700.810200 | Transformer foundation works | 15d | 2027-04-21 | 2027-05-05 | 297 |  | Sector-44 Noida(2) | 9396244 |
| 3450 | 36900.37000.47300.95100.101100.104800.107700.810300 | Room epoxy flooring | 10d | 2027-05-06 | 2027-05-15 | 3449 |  | Sector-44 Noida(2) | 9396254 |
| 3451 | 36900.37000.47300.95100.101100.104800.107700.810400 | Room finishings | 30d | 2027-05-06 | 2027-06-04 | 3449 |  | Sector-44 Noida(2) | 9396264 |
| 3452 | 36900.37000.47300.95100.101100.104800.107700.810500 | Tranformer & HT / LT panels installation | 30d | 2027-05-16 | 2027-06-14 | 3450 |  | Sector-44 Noida(2) | 9396274 |
| 3453 | 36900.37000.47300.95100.101100.104800.107700.810600 | Transformer connection to HT / LT panels including cable laying | 80d | 2027-06-15 | 2027-09-02 | 3452 |  | Sector-44 Noida(2) | 9396284 |
| 3454 | 36900.37000.47300.95100.101100.104800.107700.810700 | Equipment earthing | 30d | 2027-06-08 | 2027-07-07 | 3452FS-7d |  | Sector-44 Noida(2) | 9396294 |
| 3455 | 36900.37000.47300.95100.101100.104800.191500 | **Transformer T&C** | 236d | 2027-08-04 | 2028-05-10 |  | start no earlier than 2027-08-04 | Sector-44 Noida(2) | 9366014 |
| 3456 | 36900.37000.47300.95100.101100.104800.191500.810800 | HT / LT panel installation & terminations | 30d | 2027-08-04 | 2027-09-02 | 3451, 3452, 3453FS-30d, 3454 |  | Sector-44 Noida(2) | 9396304 |
| 3457 | 36900.37000.47300.95100.101100.104800.191500.810900 | Panel charging | 7d | 2028-05-04 | 2028-05-10 | 736, 1469, 2203, 3316, 3456 |  | Sector-44 Noida(2) | 9396314 |
| 3458 | 36900.37000.47300.123400 | **Boundary wall works** | 165d | 2027-05-08 | 2027-10-19 |  | start no earlier than 2027-05-08 | Sector-44 Noida(2) | 9363984 |
| 3459 | 36900.37000.47300.123400.260600 | Removal of Temporary barricading | 60d | 2027-05-08 | 2027-07-06 | 255FS+30d |  | Sector-44 Noida(2) | 9366314 |
| 3460 | 36900.37000.47300.123400.260700 | Excavation works | 60d | 2027-05-13 | 2027-07-11 | 3459FS-55d |  | Sector-44 Noida(2) | 9366324 |
| 3461 | 36900.37000.47300.123400.260800 | Foundation works | 75d | 2027-05-18 | 2027-07-31 | 3460FS-55d |  | Sector-44 Noida(2) | 9366334 |
| 3462 | 36900.37000.47300.123400.260900 | Coloumns | 90d | 2027-06-07 | 2027-09-04 | 3461FS-55d |  | Sector-44 Noida(2) | 9366344 |
| 3463 | 36900.37000.47300.123400.261000 | Boundary wall erection works | 100d | 2027-07-12 | 2027-10-19 | 3462FS-55d |  | Sector-44 Noida(2) | 9366354 |
| 3464 | 36900.37000.47300.103600 | **Landscape works including Hardscaping, irrigation line installations, etc.** | 240d | 2027-08-11 | 2028-05-21 |  | start no earlier than 2027-08-11 | Sector-44 Noida(2) | 9362444 |
| 3465 | 36900.37000.47300.103600.261100 | Works at Retail entrance | 210d | 2027-08-11 | 2028-04-21 | 3463FS-70d |  | Sector-44 Noida(2) | 9366364 |
| 3466 | 36900.37000.47300.103600.261200 | Works at Retail plaza | 210d | 2027-08-11 | 2028-04-21 | 3463FS-70d |  | Sector-44 Noida(2) | 9366374 |
| 3467 | 36900.37000.47300.103600.261300 | Works at Residential entrance | 220d | 2027-08-11 | 2028-05-01 | 3463FS-70d |  | Sector-44 Noida(2) | 9366384 |
| 3468 | 36900.37000.47300.103600.261400 | Works at Private Lawn, BBQ Area & Shaded Plaza | 150d | 2027-12-24 | 2028-05-21 | 3471FS-120d |  | Sector-44 Noida(2) | 9366394 |
| 3469 | 36900.37000.47300.103600.261500 | Works at Kids play area | 150d | 2027-12-24 | 2028-05-21 | 3471FS-120d |  | Sector-44 Noida(2) | 9366404 |
| 3470 | 36900.37000.47300.103600.261600 | Works at Multi-purpose lawn | 150d | 2027-12-24 | 2028-05-21 | 3471FS-120d |  | Sector-44 Noida(2) | 9366414 |
| 3471 | 36900.37000.47300.103600.261700 | Works at site boundary | 210d | 2027-08-11 | 2028-04-21 | 3463FS-70d |  | Sector-44 Noida(2) | 9366424 |
| 3472 | 36900.37000.47300.103600.261800 | Works at Podium (Swimming pool & relaxing area) | 150d | 2027-12-24 | 2028-05-21 | 3471FS-120d |  | Sector-44 Noida(2) | 9366434 |

| ID | WBS | Task | Duration | Start | Finish | Predecessors | Constraint | Calendar | Unique_Task_ID |
| --- | --- | --- | --- | --- | --- | --- | --- | --- | --- |
| 3473 | 36900.37000.47300.47800 | **Club & Retail (2B+G+2)** | 901d | 2026-08-25 | 2029-06-25 |  | start no earlier than 2026-08-25 | Sector-44 Noida(2) | 9360854 |
| 3474 | 36900.37000.47300.47800.95000 | **Sub-Structure works** | 421d | 2026-08-25 | 2028-01-17 |  | start no earlier than 2026-08-25 | Sector-44 Noida(2) | 9362054 |
| 3475 | 36900.37000.47300.47800.95000.184900 | **Soil bed preparation** | 9d | 2026-08-25 | 2026-09-02 |  | start no earlier than 2026-08-25 | Sector-44 Noida(2) | 9364334 |
| 3476 | 36900.37000.47300.47800.95000.184900.403400 | Excavation completion | 4d | 2026-08-25 | 2026-08-28 | 1590FS+120d |  | Sector-44 Noida(2) | 9369054 |
| 3477 | 36900.37000.47300.47800.95000.184900.403500 | Surface dressing | 3d | 2026-08-29 | 2026-08-31 | 3476 |  | Sector-44 Noida(2) | 9369064 |
| 3478 | 36900.37000.47300.47800.95000.184900.403600 | ATT | 1d | 2026-09-01 | 2026-09-01 | 3477 |  | Sector-44 Noida(2) | 9369074 |
| 3479 | 36900.37000.47300.47800.95000.184900.403700 | PCC | 1d | 2026-09-02 | 2026-09-02 | 3476FF, 3477SF, 3478 |  | Sector-44 Noida(2) | 9369084 |
| 3480 | 36900.37000.47300.47800.95000.103200 | **RCC Works** | 182d | 2026-09-03 | 2027-04-17 |  | start no earlier than 2026-09-03 | Sector-44 Noida(2) | 9362394 |
| 3481 | 36900.37000.47300.47800.95000.103200.186700 | **Raft** | 31d | 2026-09-03 | 2026-10-03 |  | start no earlier than 2026-09-03 | Sector-44 Noida(2) | 9365764 |
| 3482 | 36900.37000.47300.47800.95000.103200.186700.811000 | Reinforcement Work | 25d | 2026-09-03 | 2026-09-27 | 3479 |  | Sector-44 Noida(2) | 9373034 |
| 3483 | 36900.37000.47300.47800.95000.103200.186700.811100 | Shuttering work | 13d | 2026-09-18 | 2026-09-30 | 3482FS-10d |  | Sector-44 Noida(2) | 9373044 |
| 3484 | 36900.37000.47300.47800.95000.103200.186700.811200 | Concreteing work | 3d | 2026-10-01 | 2026-10-03 | 3482FF, 3483 |  | Sector-44 Noida(2) | 9373054 |
| 3485 | 36900.37000.47300.47800.95000.103200.123100 | **Basement-2 Roof Slab** | 75d | 2026-10-04 | 2027-01-31 |  | start no earlier than 2026-10-04 | Sector-44 Noida(2) | 9364114 |
| 3486 | 36900.37000.47300.47800.95000.103200.123100.188100 | **B2 Roof Slab** | 75d | 2026-10-04 | 2027-01-31 |  | start no earlier than 2026-10-04 | Sector-44 Noida(2) | 9365994 |
| 3487 | 36900.37000.47300.47800.95000.103200.123100.188100.1341200 | Shuttering Work | 45d | 2026-10-04 | 2027-01-01 | 3484 |  | Sector-44 Noida(2) | 9396324 |
| 3488 | 36900.37000.47300.47800.95000.103200.123100.188100.1341300 | Reinforcement Work | 35d | 2026-12-28 | 2027-01-31 | 3487FS-5d |  | Sector-44 Noida(2) | 9396334 |
| 3489 | 36900.37000.47300.47800.95000.103200.123100.188100.1341400 | Concreteing work | 1d | 2027-01-31 | 2027-01-31 | 3487FF, 3488FF |  | Sector-44 Noida(2) | 9396344 |
| 3490 | 36900.37000.47300.47800.95000.103200.123000 | **Basement-1 Roof Slab** | 76d | 2027-02-01 | 2027-04-17 |  | start no earlier than 2027-02-01 | Sector-44 Noida(2) | 9364124 |
| 3491 | 36900.37000.47300.47800.95000.103200.123000.188000 | **B1 Roof Slab** | 76d | 2027-02-01 | 2027-04-17 |  | start no earlier than 2027-02-01 | Sector-44 Noida(2) | 9365984 |
| 3492 | 36900.37000.47300.47800.95000.103200.123000.188000.1341500 | Shuttering Work | 45d | 2027-02-01 | 2027-03-17 | 3489 |  | Sector-44 Noida(2) | 9396354 |
| 3493 | 36900.37000.47300.47800.95000.103200.123000.188000.1341600 | Reinforcement Work | 35d | 2027-03-13 | 2027-04-16 | 3492FS-5d |  | Sector-44 Noida(2) | 9396364 |
| 3494 | 36900.37000.47300.47800.95000.103200.123000.188000.1341700 | Concreteing work | 1d | 2027-04-17 | 2027-04-17 | 3492FF, 3493 |  | Sector-44 Noida(2) | 9396374 |
| 3495 | 36900.37000.47300.47800.95000.99300 | **Sub structure finishing works** | 155d | 2027-07-02 | 2028-01-17 |  | start no earlier than 2027-07-02 | Sector-44 Noida(2) | 9362264 |
| 3496 | 36900.37000.47300.47800.95000.99300.105000 | **Basement-2** | 155d | 2027-07-02 | 2028-01-17 |  | start no earlier than 2027-07-02 | Sector-44 Noida(2) | 9362494 |
| 3497 | 36900.37000.47300.47800.95000.99300.105000.811300 | Masonary | 30d | 2027-07-02 | 2027-07-31 | 3526 |  | Sector-44 Noida(2) | 9373064 |
| 3498 | 36900.37000.47300.47800.95000.99300.105000.811400 | Structural Steel | 30d | 2027-08-16 | 2027-09-14 | 3532 |  | Sector-44 Noida(2) | 9373074 |
| 3499 | 36900.37000.47300.47800.95000.99300.105000.811500 | Plaster | 30d | 2027-09-15 | 2027-10-14 | 3497, 3498 |  | Sector-44 Noida(2) | 9373084 |
| 3500 | 36900.37000.47300.47800.95000.99300.105000.811600 | White Wash | 30d | 2027-10-15 | 2027-12-28 | 3499 |  | Sector-44 Noida(2) | 9373094 |
| 3501 | 36900.37000.47300.47800.95000.99300.105000.811700 | VDF | 60d | 2027-08-31 | 2027-10-29 | 3499FS-45d |  | Sector-44 Noida(2) | 9373104 |
| 3502 | 36900.37000.47300.47800.95000.99300.105000.811800 | Drain & Sump (incl. gratings) | 60d | 2027-09-30 | 2028-01-12 | 3501FS-30d |  | Sector-44 Noida(2) | 9373114 |
| 3503 | 36900.37000.47300.47800.95000.99300.105000.811900 | Car parking marking | 30d | 2027-10-30 | 2028-01-12 | 3500FS-15d |  | Sector-44 Noida(2) | 9373124 |
| 3504 | 36900.37000.47300.47800.95000.99300.105000.812000 | Signages | 30d | 2027-12-19 | 2028-01-17 | 3497FF, 3498FF, 3499FF, 3500FS-10d, 3501FF, 3502FF, 3503FF |  | Sector-44 Noida(2) | 9373134 |

| ID | WBS | Task | Duration | Start | Finish | Predecessors | Constraint | Calendar | Unique_Task_ID |
| --- | --- | --- | --- | --- | --- | --- | --- | --- | --- |
| 3505 | 36900.37000.47300.47800.95000.99300.105100 | **Basement-1** | 110d | 2027-08-01 | 2028-01-02 |  | start no earlier than 2027-08-01 | Sector-44 Noida(2) | 9362484 |
| 3506 | 36900.37000.47300.47800.95000.99300.105100.812100 | Masonary | 30d | 2027-08-01 | 2027-08-30 | 3497 |  | Sector-44 Noida(2) | 9373144 |
| 3507 | 36900.37000.47300.47800.95000.99300.105100.812200 | Structural Steel | 30d | 2027-08-01 | 2027-08-30 | 3497 |  | Sector-44 Noida(2) | 9373154 |
| 3508 | 36900.37000.47300.47800.95000.99300.105100.812300 | Plaster | 30d | 2027-08-31 | 2027-09-29 | 3506, 3507 |  | Sector-44 Noida(2) | 9373164 |
| 3509 | 36900.37000.47300.47800.95000.99300.105100.812400 | White Wash | 30d | 2027-09-30 | 2027-10-29 | 3508 |  | Sector-44 Noida(2) | 9373174 |
| 3510 | 36900.37000.47300.47800.95000.99300.105100.812500 | VDF | 60d | 2027-08-16 | 2027-10-14 | 3508FS-45d |  | Sector-44 Noida(2) | 9373184 |
| 3511 | 36900.37000.47300.47800.95000.99300.105100.812600 | Drain & Sump (incl. gratings) | 60d | 2027-09-15 | 2027-12-28 | 3510FS-30d |  | Sector-44 Noida(2) | 9373194 |
| 3512 | 36900.37000.47300.47800.95000.99300.105100.812700 | Car parking marking | 30d | 2027-10-15 | 2027-12-28 | 3509FS-15d |  | Sector-44 Noida(2) | 9373204 |
| 3513 | 36900.37000.47300.47800.95000.99300.105100.812800 | Signages | 30d | 2027-10-20 | 2028-01-02 | 3506FF, 3507FF, 3508FF, 3509FS-10d, 3510FF, 3511FF, 3512FF |  | Sector-44 Noida(2) | 9373214 |
| 3514 | 36900.37000.47300.47800.99100 | **Super structure works** | 140d | 2027-04-18 | 2027-09-04 |  | start no earlier than 2027-04-18 | Sector-44 Noida(2) | 9362214 |
| 3515 | 36900.37000.47300.47800.99100.102000 | **RCC Works** | 120d | 2027-04-18 | 2027-08-15 |  | start no earlier than 2027-04-18 | Sector-44 Noida(2) | 9362334 |
| 3516 | 36900.37000.47300.47800.99100.102000.122900 | **GF Slab** | 45d | 2027-04-18 | 2027-06-01 |  | start no earlier than 2027-04-18 | Sector-44 Noida(2) | 9364134 |
| 3517 | 36900.37000.47300.47800.99100.102000.122900.187900 | **GF Slab** | 45d | 2027-04-18 | 2027-06-01 |  | start no earlier than 2027-04-18 | Sector-44 Noida(2) | 9365974 |
| 3518 | 36900.37000.47300.47800.99100.102000.122900.187900.1341800 | Shuttering Work | 30d | 2027-04-18 | 2027-05-17 | 3494 |  | Sector-44 Noida(2) | 9396384 |
| 3519 | 36900.37000.47300.47800.99100.102000.122900.187900.1341900 | Reinforcement Work | 19d | 2027-05-13 | 2027-05-31 | 3518FS-5d |  | Sector-44 Noida(2) | 9396394 |
| 3520 | 36900.37000.47300.47800.99100.102000.122900.187900.1342000 | Concreteing work | 1d | 2027-06-01 | 2027-06-01 | 3518FF, 3519 |  | Sector-44 Noida(2) | 9396404 |
| 3521 | 36900.37000.47300.47800.99100.102000.107600 | **1st Floor Slab** | 30d | 2027-06-02 | 2027-07-01 |  | start no earlier than 2027-06-02 | Sector-44 Noida(2) | 9363954 |
| 3522 | 36900.37000.47300.47800.99100.102000.107600.183800 | **1st Floor Slab** | 30d | 2027-06-02 | 2027-07-01 |  | start no earlier than 2027-06-02 | Sector-44 Noida(2) | 9365594 |
| 3523 | 36900.37000.47300.47800.99100.102000.107600.183800.1342100 | Shuttering Work | 20d | 2027-06-02 | 2027-06-21 | 3520 |  | Sector-44 Noida(2) | 9396414 |
| 3524 | 36900.37000.47300.47800.99100.102000.107600.183800.1342200 | Reinforcement Work | 14d | 2027-06-17 | 2027-06-30 | 3523FS-5d |  | Sector-44 Noida(2) | 9396424 |
| 3525 | 36900.37000.47300.47800.99100.102000.107600.183800.1342300 | Conduiting work | 1d | 2027-06-30 | 2027-06-30 | 3524FS-1d |  | Sector-44 Noida(2) | 9396434 |
| 3526 | 36900.37000.47300.47800.99100.102000.107600.183800.1342400 | Concreteing work | 1d | 2027-07-01 | 2027-07-01 | 3523FF, 3524FF, 3525 |  | Sector-44 Noida(2) | 9396444 |
| 3527 | 36900.37000.47300.47800.99100.102000.107500 | **Terrace** | 45d | 2027-07-02 | 2027-08-15 |  | start no earlier than 2027-07-02 | Sector-44 Noida(2) | 9363964 |
| 3528 | 36900.37000.47300.47800.99100.102000.107500.183700 | **Terrace Slab** | 45d | 2027-07-02 | 2027-08-15 |  | start no earlier than 2027-07-02 | Sector-44 Noida(2) | 9365604 |
| 3529 | 36900.37000.47300.47800.99100.102000.107500.183700.1342500 | Shuttering Work | 30d | 2027-07-02 | 2027-07-31 | 3526 |  | Sector-44 Noida(2) | 9396454 |
| 3530 | 36900.37000.47300.47800.99100.102000.107500.183700.1342600 | Reinforcement Work | 19d | 2027-07-27 | 2027-08-14 | 3529FS-5d |  | Sector-44 Noida(2) | 9396464 |
| 3531 | 36900.37000.47300.47800.99100.102000.107500.183700.1342700 | Conduiting work | 1d | 2027-08-14 | 2027-08-14 | 3530FS-1d |  | Sector-44 Noida(2) | 9396474 |
| 3532 | 36900.37000.47300.47800.99100.102000.107500.183700.1342800 | Concreteing work | 1d | 2027-08-15 | 2027-08-15 | 3529FF, 3530FF, 3531 |  | Sector-44 Noida(2) | 9396484 |

| ID | WBS | Task | Duration | Start | Finish | Predecessors | Constraint | Calendar | Unique_Task_ID |
| --- | --- | --- | --- | --- | --- | --- | --- | --- | --- |
| 3533 | 36900.37000.47300.47800.99100.191800 | **Post Pour Works** | 20d | 2027-08-16 | 2027-09-04 |  | start no earlier than 2027-08-16 | Sector-44 Noida(2) | 9366154 |
| 3534 | 36900.37000.47300.47800.99100.191800.403800 | 1st Floor | 10d | 2027-08-16 | 2027-08-25 | 3532 |  | Sector-44 Noida(2) | 9369094 |
| 3535 | 36900.37000.47300.47800.99100.191800.403900 | 2nd Floor | 10d | 2027-08-26 | 2027-09-04 | 3534 |  | Sector-44 Noida(2) | 9369104 |
| 3536 | 36900.37000.47300.47800.48300 | **Finishing works** | 434d | 2027-05-08 | 2028-08-28 |  | start no earlier than 2027-05-08 | Sector-44 Noida(2) | 9360934 |
| 3537 | 36900.37000.47300.47800.48300.48500 | **Floor finishings** | 159d | 2027-08-26 | 2028-03-16 |  | start no earlier than 2027-08-26 | Sector-44 Noida(2) | 9360954 |
| 3538 | 36900.37000.47300.47800.48300.48500.59300 | **1st Floor** | 142d | 2027-08-26 | 2028-02-28 |  | start no earlier than 2027-08-26 | Sector-44 Noida(2) | 9361024 |
| 3539 | 36900.37000.47300.47800.48300.48500.59300.812900 | Block Work | 12d | 2027-08-26 | 2027-09-06 | 3534 |  | Sector-44 Noida(2) | 9373224 |
| 3540 | 36900.37000.47300.47800.48300.48500.59300.813000 | Installation of temporary Main door | 9d | 2027-09-07 | 2027-09-15 | 3539 |  | Sector-44 Noida(2) | 9373234 |
| 3541 | 36900.37000.47300.47800.48300.48500.59300.813100 | Fire sprinkler pipe fixing | 5d | 2027-09-07 | 2027-09-11 | 3539 |  | Sector-44 Noida(2) | 9373244 |
| 3542 | 36900.37000.47300.47800.48300.48500.59300.813200 | Internal Plumbing Works | 10d | 2027-09-07 | 2027-09-16 | 3539 |  | Sector-44 Noida(2) | 9373254 |
| 3543 | 36900.37000.47300.47800.48300.48500.59300.813300 | Waterproofing | 13d | 2027-09-17 | 2027-09-29 | 3542 |  | Sector-44 Noida(2) | 9373264 |
| 3544 | 36900.37000.47300.47800.48300.48500.59300.813400 | Internal Plaster | 13d | 2027-09-30 | 2027-10-12 | 3542, 3543 |  | Sector-44 Noida(2) | 9373274 |
| 3545 | 36900.37000.47300.47800.48300.48500.59300.813500 | IPS flooring work | 13d | 2027-09-07 | 2027-09-19 | 3539 |  | Sector-44 Noida(2) | 9373284 |
| 3546 | 36900.37000.47300.47800.48300.48500.59300.813600 | Toilet dado work | 18d | 2027-10-13 | 2027-10-30 | 3542, 3543, 3544 |  | Sector-44 Noida(2) | 9373294 |
| 3547 | 36900.37000.47300.47800.48300.48500.59300.813700 | Toilet flooring work | 18d | 2027-10-31 | 2028-01-01 | 3546 |  | Sector-44 Noida(2) | 9373304 |
| 3548 | 36900.37000.47300.47800.48300.48500.59300.813800 | Living dinning flooring | 18d | 2028-01-02 | 2028-01-19 | 3545, 3547 |  | Sector-44 Noida(2) | 9373314 |
| 3549 | 36900.37000.47300.47800.48300.48500.59300.813900 | Electrical wiring work | 12d | 2028-01-10 | 2028-01-21 | 3548FS-10d |  | Sector-44 Noida(2) | 9373324 |
| 3550 | 36900.37000.47300.47800.48300.48500.59300.814000 | Aluminium door-window fixing | 19d | 2028-01-14 | 2028-02-01 | 3540, 3549FS-8d |  | Sector-44 Noida(2) | 9373334 |
| 3551 | 36900.37000.47300.47800.48300.48500.59300.814100 | Putty primer coat | 10d | 2028-01-25 | 2028-02-03 | 3550FS-8d |  | Sector-44 Noida(2) | 9373344 |
| 3552 | 36900.37000.47300.47800.48300.48500.59300.814200 | Prehung door fixing | 8d | 2028-01-30 | 2028-02-06 | 3551FS-5d |  | Sector-44 Noida(2) | 9373354 |
| 3553 | 36900.37000.47300.47800.48300.48500.59300.814300 | Painting 1st coat | 12d | 2028-02-07 | 2028-02-18 | 3552 |  | Sector-44 Noida(2) | 9373364 |
| 3554 | 36900.37000.47300.47800.48300.48500.59300.814400 | False Ceiling panel fixing | 10d | 2028-02-19 | 2028-02-28 | 3553 |  | Sector-44 Noida(2) | 9373374 |
| 3555 | 36900.37000.47300.47800.48300.48500.59400 | **2nd Floor** | 142d | 2027-09-12 | 2028-03-16 |  | start no earlier than 2027-09-12 | Sector-44 Noida(2) | 9361534 |
| 3556 | 36900.37000.47300.47800.48300.48500.59400.814500 | Block Work | 12d | 2027-09-12 | 2027-09-23 | 3541 |  | Sector-44 Noida(2) | 9373384 |
| 3557 | 36900.37000.47300.47800.48300.48500.59400.814600 | Installation of temporary Main door | 9d | 2027-09-24 | 2027-10-02 | 3556 |  | Sector-44 Noida(2) | 9373394 |
| 3558 | 36900.37000.47300.47800.48300.48500.59400.814700 | Fire sprinkler pipe fixing | 5d | 2027-09-24 | 2027-09-28 | 3541, 3556 |  | Sector-44 Noida(2) | 9373404 |
| 3559 | 36900.37000.47300.47800.48300.48500.59400.814800 | Internal Plumbing Works | 10d | 2027-09-24 | 2027-10-03 | 3556 |  | Sector-44 Noida(2) | 9373414 |
| 3560 | 36900.37000.47300.47800.48300.48500.59400.814900 | Waterproofing | 13d | 2027-10-04 | 2027-10-16 | 3559 |  | Sector-44 Noida(2) | 9373424 |
| 3561 | 36900.37000.47300.47800.48300.48500.59400.815000 | Internal Plaster | 13d | 2027-10-17 | 2027-10-29 | 3559, 3560 |  | Sector-44 Noida(2) | 9373434 |
| 3562 | 36900.37000.47300.47800.48300.48500.59400.815100 | IPS flooring work | 13d | 2027-09-24 | 2027-10-06 | 3556 |  | Sector-44 Noida(2) | 9373444 |
| 3563 | 36900.37000.47300.47800.48300.48500.59400.815200 | Toilet dado work | 18d | 2027-10-30 | 2027-12-31 | 3559, 3560, 3561 |  | Sector-44 Noida(2) | 9373454 |
| 3564 | 36900.37000.47300.47800.48300.48500.59400.815300 | Toilet flooring work | 18d | 2028-01-01 | 2028-01-18 | 3563 |  | Sector-44 Noida(2) | 9373464 |
| 3565 | 36900.37000.47300.47800.48300.48500.59400.815400 | Living dinning flooring | 18d | 2028-01-19 | 2028-02-05 | 3562, 3564 |  | Sector-44 Noida(2) | 9373474 |
| 3566 | 36900.37000.47300.47800.48300.48500.59400.815500 | Electrical wiring work | 12d | 2028-01-27 | 2028-02-07 | 3565FS-10d |  | Sector-44 Noida(2) | 9373484 |
| 3567 | 36900.37000.47300.47800.48300.48500.59400.815600 | Aluminium door-window fixing | 19d | 2028-01-31 | 2028-02-18 | 3557, 3566FS-8d |  | Sector-44 Noida(2) | 9373494 |
| 3568 | 36900.37000.47300.47800.48300.48500.59400.815700 | Putty primer coat | 10d | 2028-02-11 | 2028-02-20 | 3567FS-8d |  | Sector-44 Noida(2) | 9373504 |
| 3569 | 36900.37000.47300.47800.48300.48500.59400.815800 | Prehung door fixing | 8d | 2028-02-16 | 2028-02-23 | 3568FS-5d |  | Sector-44 Noida(2) | 9373514 |
| 3570 | 36900.37000.47300.47800.48300.48500.59400.815900 | Painting 1st coat | 12d | 2028-02-24 | 2028-03-06 | 3569 |  | Sector-44 Noida(2) | 9373524 |
| 3571 | 36900.37000.47300.47800.48300.48500.59400.816000 | False Ceiling panel fixing | 10d | 2028-03-07 | 2028-03-16 | 3554, 3570 |  | Sector-44 Noida(2) | 9373534 |

| ID | WBS | Task | Duration | Start | Finish | Predecessors | Constraint | Calendar | Unique_Task_ID |
| --- | --- | --- | --- | --- | --- | --- | --- | --- | --- |
| 3572 | 36900.37000.47300.47800.48300.191700 | **Terrace finishing** | 170d | 2028-03-12 | 2028-08-28 |  | start no earlier than 2028-03-12 | Sector-44 Noida(2) | 9366144 |
| 3573 | 36900.37000.47300.47800.48300.191700.404000 | Podium waterproofing | 80d | 2028-03-12 | 2028-05-30 | 3620FS+24d |  | Sector-44 Noida(2) | 9369114 |
| 3574 | 36900.37000.47300.47800.48300.191700.404100 | Podium finishing (only top screed) | 90d | 2028-05-31 | 2028-08-28 | 3573 |  | Sector-44 Noida(2) | 9369124 |
| 3575 | 36900.37000.47300.47800.48300.98700 | **Common area finishing** | 140d | 2027-05-08 | 2027-09-24 |  | start no earlier than 2027-05-08 | Sector-44 Noida(2) | 9362194 |
| 3576 | 36900.37000.47300.47800.48300.98700.404200 | Masonary Work | 20d | 2027-09-05 | 2027-09-24 | 3535 |  | Sector-44 Noida(2) | 9369134 |
| 3577 | 36900.37000.47300.47800.48300.98700.404300 | Fire sprinkler pipe fixing | 10d | 2027-09-10 | 2027-09-19 | 3535FS+5d |  | Sector-44 Noida(2) | 9369144 |
| 3578 | 36900.37000.47300.47800.48300.98700.404400 | Corridoor, staircase, shaft Plaster & whitewash | 20d | 2027-08-26 | 2027-09-14 | 3576FS-30d |  | Sector-44 Noida(2) | 9369154 |
| 3579 | 36900.37000.47300.47800.48300.98700.404500 | Staircase railing fixing | 20d | 2027-09-05 | 2027-09-24 | 3576FS-20d |  | Sector-44 Noida(2) | 9369164 |
| 3580 | 36900.37000.47300.47800.48300.98700.404600 | Fire staircase flooring | 20d | 2027-06-27 | 2027-07-16 | 3579FS-90d |  | Sector-44 Noida(2) | 9369174 |
| 3581 | 36900.37000.47300.47800.48300.98700.404700 | Main staircase flooring | 20d | 2027-06-27 | 2027-07-16 | 3579FS-90d |  | Sector-44 Noida(2) | 9369184 |
| 3582 | 36900.37000.47300.47800.48300.98700.404800 | Fire door work | 30d | 2027-06-17 | 2027-07-16 | 3580FS-30d |  | Sector-44 Noida(2) | 9369194 |
| 3583 | 36900.37000.47300.47800.48300.98700.404900 | Lobby flooring & Corridor | 40d | 2027-06-17 | 2027-07-26 | 3581FS-30d |  | Sector-44 Noida(2) | 9369204 |
| 3584 | 36900.37000.47300.47800.48300.98700.405000 | Ceiling & wall putty-primer | 40d | 2027-06-27 | 2027-08-05 | 3583FS-30d |  | Sector-44 Noida(2) | 9369214 |
| 3585 | 36900.37000.47300.47800.48300.98700.405100 | Ceiling & wall painting | 40d | 2027-05-08 | 2027-06-16 | 3584FS-90d |  | Sector-44 Noida(2) | 9369224 |
| 3586 | 36900.37000.47300.47800.48300.98700.405200 | Electrical wiring work | 40d | 2027-05-18 | 2027-06-26 | 3585FS-30d |  | Sector-44 Noida(2) | 9369234 |
| 3587 | 36900.37000.47300.47800.48300.98700.405300 | Light fixture supply & installation | 30d | 2027-06-02 | 2027-07-01 | 3586FS-25d |  | Sector-44 Noida(2) | 9369244 |
| 3588 | 36900.37000.47300.47800.99200 | **MEP Work** | 390d | 2027-07-22 | 2028-09-28 |  | start no earlier than 2027-07-22 | Sector-44 Noida(2) | 9362204 |
| 3589 | 36900.37000.47300.47800.99200.102100 | **Electrical Work** | 180d | 2027-07-22 | 2028-03-02 |  | start no earlier than 2027-07-22 | Sector-44 Noida(2) | 9362354 |
| 3590 | 36900.37000.47300.47800.99200.102100.405400 | Cable Tray | 45d | 2027-09-05 | 2027-10-19 | 3535 |  | Sector-44 Noida(2) | 9369254 |
| 3591 | 36900.37000.47300.47800.99200.102100.405500 | Cable, main & sub main | 45d | 2027-07-22 | 2027-09-04 | 3590FS-90d |  | Sector-44 Noida(2) | 9369264 |
| 3592 | 36900.37000.47300.47800.99200.102100.405600 | LT panel & DB | 45d | 2027-08-21 | 2027-10-04 | 3590FS-60d |  | Sector-44 Noida(2) | 9369274 |
| 3593 | 36900.37000.47300.47800.99200.102100.405700 | Earthing Works | 30d | 2027-10-20 | 2028-01-02 | 3590 |  | Sector-44 Noida(2) | 9369284 |
| 3594 | 36900.37000.47300.47800.99200.102100.405800 | Energy meter | 30d | 2027-09-05 | 2027-10-04 | 3591 |  | Sector-44 Noida(2) | 9369294 |
| 3595 | 36900.37000.47300.47800.99200.102100.405900 | Inverter / UPS | 30d | 2027-10-05 | 2027-12-18 | 3591, 3592, 3594FS-5d |  | Sector-44 Noida(2) | 9369304 |
| 3596 | 36900.37000.47300.47800.99200.102100.406000 | HVAC & Exhaust fan | 45d | 2027-09-20 | 2027-12-18 | 3590FS-30d |  | Sector-44 Noida(2) | 9369314 |
| 3597 | 36900.37000.47300.47800.99200.102100.406100 | FTTH | 35d | 2027-09-10 | 2027-10-14 | 3592FS-25d |  | Sector-44 Noida(2) | 9369324 |
| 3598 | 36900.37000.47300.47800.99200.102100.406200 | Security System - FA & PA | 35d | 2027-09-10 | 2027-10-14 | 3582, 3592FS-25d |  | Sector-44 Noida(2) | 9369334 |
| 3599 | 36900.37000.47300.47800.99200.102100.406300 | T&C of complete system | 60d | 2028-01-03 | 2028-03-02 | 3587, 3592, 3593, 3594, 3595, 3596, 3597, 3598 |  | Sector-44 Noida(2) | 9369344 |

| ID | WBS | Task | Duration | Start | Finish | Predecessors | Constraint | Calendar | Unique_Task_ID |
| --- | --- | --- | --- | --- | --- | --- | --- | --- | --- |
| 3600 | 36900.37000.47300.47800.99200.122800 | **Plumbing work** | 210d | 2027-08-16 | 2028-04-26 |  | start no earlier than 2027-08-16 | Sector-44 Noida(2) | 9364104 |
| 3601 | 36900.37000.47300.47800.99200.122800.406400 | Shaft Plumbing | 90d | 2027-08-16 | 2027-12-28 | 3578FS-30d |  | Sector-44 Noida(2) | 9369354 |
| 3602 | 36900.37000.47300.47800.99200.122800.406500 | CP sanitary fixture supply | 45d | 2027-12-29 | 2028-02-11 | 3601 |  | Sector-44 Noida(2) | 9369364 |
| 3603 | 36900.37000.47300.47800.99200.122800.406600 | Cold & flushing water supply | 45d | 2027-12-29 | 2028-02-11 | 3601 |  | Sector-44 Noida(2) | 9369374 |
| 3604 | 36900.37000.47300.47800.99200.122800.406700 | Misc work | 30d | 2028-01-28 | 2028-02-26 | 3603FS-15d |  | Sector-44 Noida(2) | 9369384 |
| 3605 | 36900.37000.47300.47800.99200.122800.406800 | T&C of complete system | 60d | 2028-02-27 | 2028-04-26 | 3601, 3603, 3604 |  | Sector-44 Noida(2) | 9369394 |
| 3606 | 36900.37000.47300.47800.99200.122600 | **Fire fighting work** | 150d | 2027-08-16 | 2028-02-26 |  | start no earlier than 2027-08-16 | Sector-44 Noida(2) | 9362674 |
| 3607 | 36900.37000.47300.47800.99200.122600.406900 | Fire hydrant work | 30d | 2027-08-16 | 2027-09-14 | 3578FS-30d |  | Sector-44 Noida(2) | 9369404 |
| 3608 | 36900.37000.47300.47800.99200.122600.407000 | Pipe connection & sprinkler installation | 45d | 2027-09-29 | 2027-12-27 | 3607, 3558 |  | Sector-44 Noida(2) | 9369414 |
| 3609 | 36900.37000.47300.47800.99200.122600.407100 | Shaft Downtake works | 30d | 2027-08-16 | 2027-09-14 | 3578FS-30d |  | Sector-44 Noida(2) | 9369424 |
| 3610 | 36900.37000.47300.47800.99200.122600.407200 | Connection to pump room | 30d | 2027-09-15 | 2027-10-14 | 3609 |  | Sector-44 Noida(2) | 9369434 |
| 3611 | 36900.37000.47300.47800.99200.122600.407300 | Installation of FF pumps | 60d | 2027-09-15 | 2027-12-28 | 3607, 3609 |  | Sector-44 Noida(2) | 9369444 |
| 3612 | 36900.37000.47300.47800.99200.122600.407400 | T&C of complete system | 60d | 2027-12-29 | 2028-02-26 | 3607, 3608, 3610, 3611 |  | Sector-44 Noida(2) | 9369454 |
| 3613 | 36900.37000.47300.47800.99200.188600 | **Lift work** | 60d | 2027-09-05 | 2027-12-18 |  | start no earlier than 2027-09-05 | Sector-44 Noida(2) | 9365924 |
| 3614 | 36900.37000.47300.47800.99200.188600.407500 | Lift Shaft/Pit Handover | 10d | 2027-09-05 | 2027-09-14 | 3535 |  | Sector-44 Noida(2) | 9369464 |
| 3615 | 36900.37000.47300.47800.99200.188600.407600 | Lift installation work | 40d | 2027-09-15 | 2027-10-24 | 3614 |  | Sector-44 Noida(2) | 9369474 |
| 3616 | 36900.37000.47300.47800.99200.188600.407700 | Lift testing and commissioning | 10d | 2027-10-25 | 2027-12-18 | 3615 |  | Sector-44 Noida(2) | 9369484 |
| 3617 | 36900.37000.47300.47800.99200.184800 | **External Paint Works** | 120d | 2027-09-05 | 2028-02-16 |  | start no earlier than 2027-09-05 | Sector-44 Noida(2) | 9364344 |
| 3618 | 36900.37000.47300.47800.99200.184800.407800 | Surface prepration | 50d | 2027-09-05 | 2027-10-24 | 3535 |  | Sector-44 Noida(2) | 9369494 |
| 3619 | 36900.37000.47300.47800.99200.184800.407900 | External Painting (Primer, texture & first coat) | 70d | 2027-10-25 | 2028-02-16 | 3618 |  | Sector-44 Noida(2) | 9369504 |
| 3620 | 36900.37000.47300.47800.99200.184800.408000 | Final coat of painting | 60d | 2027-12-19 | 2028-02-16 | 3619FS-60d |  | Sector-44 Noida(2) | 9369514 |
| 3621 | 36900.37000.47300.47800.99200.184800.408100 | Misc. work | 30d | 2027-10-25 | 2028-01-07 | 3618 |  | Sector-44 Noida(2) | 9369524 |
| 3622 | 36900.37000.47300.47800.99200.298000 | OC Application/Readiness | 1d | 2028-08-29 | 2028-08-29 | 3599, 3605, 3612, 3616, 3574, 3571, 3580, 3581, 3577 |  | Sector-44 Noida(2) | 9366444 |
| 3623 | 36900.37000.47300.47800.99200.298100 | OC Receipt | 30d | 2028-08-30 | 2028-09-28 | 3622, 3504, 3513 |  | Sector-44 Noida(2) | 9366454 |

| ID | WBS | Task | Duration | Start | Finish | Predecessors | Complete | Constraint | Calendar | Unique_Task_ID |
| --- | --- | --- | --- | --- | --- | --- | --- | --- | --- | --- |
| 3624 | 36900.37000.47300.47800.130500 | **Post OC Activities** | 105d | 2028-08-30 | 2029-01-26 |  |  | start no earlier than 2028-08-30 | Sector-44 Noida(2) | 9364054 |
| 3625 | 36900.37000.47300.47800.130500.298200 | CP & Sanitaryware installation | 60d | 2028-08-30 | 2028-10-28 | 3623FS-30d, 3602 |  |  | Sector-44 Noida(2) | 9366464 |
| 3626 | 36900.37000.47300.47800.130500.298300 | Electrical Fixtures And Fittings installations | 60d | 2028-08-30 | 2028-10-28 | 3623FS-30d |  |  | Sector-44 Noida(2) | 9366474 |
| 3627 | 36900.37000.47300.47800.130500.298400 | Final Coat Paint Internal | 40d | 2028-08-30 | 2028-10-08 | 3623FS-30d |  |  | Sector-44 Noida(2) | 9366484 |
| 3628 | 36900.37000.47300.47800.130500.298500 | Split AC Units installation | 50d | 2028-10-24 | 2029-01-26 | 3627FS+15d |  |  | Sector-44 Noida(2) | 9366494 |
| 3629 | 36900.37000.47300.47800.130500.298600 | Wooden Flooring | 90d | 2028-08-30 | 2029-01-11 | 3623FS-30d |  |  | Sector-44 Noida(2) | 9366504 |
| 3630 | 36900.37000.47300.47800.261900 | Offer to possession | 150d | 2029-01-27 | 2029-06-25 | 3625, 3626, 3628, 3629, 3621 |  |  | Sector-44 Noida(2) | 9366184 |
| 3631 | 36900.37000.253700 | Budget Esclation for Raft | 343.12d | 2026-09-01 | 2027-08-16 |  |  | start no earlier than 2026-09-01 | GC1 | 9637726 |
| 3632 | 36900.37000.253800 | MOSA Area Hampered solider piling cost | 45d | 2025-12-27 | 2026-02-04 |  |  | start no earlier than 2025-12-27 | GC1 | 9637716 |
| 3633 | 36900.37000.253900 | Labour Incentive | 500d | 2028-06-29 | 2030-02-01 |  |  | start no earlier than 2028-06-29 | Indian Calendar | 10106179 |
| 3634 | 36900.37000.208800 | Cost for Grade A Contractor | 500d | 2025-07-30 | 2030-02-01 |  | 1% | start no earlier than 2025-07-30 | Indian Calendar | 10106189 |
| 3635 | 36900.37000.254000 | Cost for Green Building Certification | 500d | 2028-06-29 | 2030-02-01 |  |  | start no earlier than 2028-06-29 | Indian Calendar | 10387838 |
