Schedule from MS Project XML, 2023-09-29 to 2029-08-27.

## Calendars

- Standard: Mon-Fri 08:00-12:00, 13:00-17:00; Sat-Sun off. Exceptions (off unless hours are given): 2023-12-25 to 2024-01-07, 2024-03-29 to 2024-04-01, 2024-05-06, 2024-05-27, 2024-08-26, 2024-12-23 to 2025-01-05, 2025-04-18 to 2025-04-21, 2025-05-05, 2025-05-26, 2025-08-25, 2025-12-22 to 2026-01-04, 2026-03-27 to 2026-03-30, 2026-05-04, 2026-05-23 to 2026-05-25, 2026-08-29 to 2026-08-31, 2026-12-21 to 2027-01-03, 2027-04-16 to 2027-04-19, 2027-05-01 to 2027-05-03, 2027-05-29 to 2027-05-31, 2027-08-30, 2027-12-25 to 2028-01-09, 2028-03-31 to 2028-04-03, 2028-04-29 to 2028-05-01, 2028-05-27 to 2028-05-29, 2028-08-26 to 2028-08-28, 2028-12-23 to 2029-01-07, 2029-03-23 to 2029-03-26, 2029-05-07, 2029-05-28, 2029-08-27.
- Indian Calendar: Mon-Sat 08:00-12:00, 13:00-17:00; Sun off. Exceptions (off unless hours are given): 2023-11-15 to 2023-12-15, 2024-07-01 to 2024-07-06 08:00-10:00, 14:00-17:00, 2024-07-07, 2024-07-08 to 2024-07-13 08:00-10:00, 14:00-17:00, 2024-07-14, 2024-07-15 to 2024-07-20 08:00-10:00, 14:00-17:00, 2024-07-21, 2024-07-22 to 2024-07-27 08:00-10:00, 14:00-17:00, 2024-07-28, 2024-07-29 to 2024-07-31 08:00-10:00, 14:00-17:00, 2024-08-01 to 2024-08-03 08:00-10:00, 11:00-12:00, 13:00-17:00, 2024-08-04, 2024-08-05 to 2024-08-10 08:00-10:00, 11:00-12:00, 13:00-17:00, 2024-08-11, 2024-08-12 to 2024-08-17 08:00-10:00, 11:00-12:00, 13:00-17:00, 2024-08-18, 2024-08-19 to 2024-08-24 08:00-10:00, 11:00-12:00, 13:00-17:00, 2024-08-25, 2024-08-26 to 2024-08-31 08:00-10:00, 11:00-12:00, 13:00-17:00, 2024-09-01, 2024-09-02 to 2024-09-07 08:00-10:00, 11:00-12:00, 13:00-17:00, 2024-09-08, 2024-09-09 to 2024-09-14 08:00-10:00, 11:00-12:00, 13:00-17:00, 2024-09-15, 2024-09-16 to 2024-09-21 08:00-10:00, 11:00-12:00, 13:00-17:00, 2024-09-22, 2024-09-23 to 2024-09-28 08:00-10:00, 11:00-12:00, 13:00-17:00, 2024-09-29, 2024-09-30 08:00-10:00, 11:00-12:00, 13:00-17:00.
- Yashwantpur Finshing: Mon-Fri 08:00-12:00, 13:00-17:00; Sat-Sun off.

## Resources

| Resource |
| --- |
| GPL Costs & Revenue |
| GPL cost & revenue |
| Riverine |
| GPL Revenue |

## Schedule

| ID | WBS | Task | Duration | Start | Finish | Predecessors | Complete | Constraint | Unique_Task_ID |
| --- | --- | --- | --- | --- | --- | --- | --- | --- | --- |
| 1 | 37100 | **Tropical Isle 146** | 2158.85ed | 2023-09-29 | 2029-08-27 |  | 11% | start no earlier than 2023-09-29 | 7567453 |
| 2 | 37100.37300 | **Tropical Isle 146** | 2016.19d | 2023-09-29 | 2029-08-27 |  | 11% | start no earlier than 2023-09-29 | 7567463 |
| 3 | 37100.37300.37600 | **Phase-1** | 2016.19d | 2023-09-29 | 2029-08-27 |  | 11% | start no earlier than 2023-09-29 | 7567473 |
| 4 | 37100.37300.37600.37900 | **Tower 5** | 1847.06d | 2023-09-29 | 2029-03-11 |  | 7% | start no earlier than 2023-09-29 | 7567483 |
| 5 | 37100.37300.37600.37900.97600 | **Substructure** | 878.69d | 2023-09-29 | 2026-06-02 |  | 57% | start no earlier than 2023-09-29 | 7569263 |
| 6 | 37100.37300.37600.37900.97600.108000 | **Soil Bed Preparation** | 763.81d | 2023-09-29 | 2026-02-07 |  | 78% | start no earlier than 2023-09-29 | 7569393 |
| 7 | 37100.37300.37600.37900.97600.108000.242900 | Test Piling | 24.94d | 2023-09-29 | 2023-10-24 |  | 100% | start no earlier than 2023-09-29 | 7571913 |
| 8 | 37100.37300.37600.37900.97600.108000.242800 | Excavation | 29.94d | 2024-01-10 | 2024-02-08 | 7SS+15.74d | 100% | start no earlier than 2024-01-10 | 7571923 |
| 9 | 37100.37300.37600.37900.97600.108000.242700 | Main Piling Work | 169.94d | 2024-04-12 | 2025-01-13 | 7FS-12.45d | 100% | start no earlier than 2024-04-12 | 7571933 |
| 10 | 37100.37300.37600.37900.97600.108000.298700 | Anti-termite | 4.94d | 2025-11-30 | 2025-12-04 | 9FF+1.88d |  |  | 7571943 |
| 11 | 37100.37300.37600.37900.97600.108000.242600 | PCC | 13.86d | 2024-10-15 | 2024-10-28 | 8FS-14.7d, 10SS+10.93d | 100% | start no earlier than 2024-10-15 | 7571953 |
| 12 | 37100.37300.37600.37900.97600.108000.298800 | Backfilling | 59.94d | 2025-11-30 | 2026-02-07 | 26FS-4.38d, 17FS-1d, 21FS-2d |  |  | 7571963 |
| 13 | 37100.37300.37600.37900.97600.103000 | **RCC Structure** | 113.62d | 2024-12-17 | 2025-04-09 |  | 100% | start no earlier than 2024-12-17 | 7569283 |
| 14 | 37100.37300.37600.37900.97600.103000.184200 | **Raft Foundation** | 31d | 2024-12-17 | 2025-01-16 |  | 100% | start no earlier than 2024-12-17 | 7571143 |
| 15 | 37100.37300.37600.37900.97600.103000.184200.195700 | Reinforcement | 26d | 2024-12-17 | 2025-01-11 | 11FS-7.91d | 100% | must finish on 2025-01-13 | 7574743 |
| 16 | 37100.37300.37600.37900.97600.103000.184200.195800 | Formwork | 14d | 2024-12-31 | 2025-01-13 | 15FF-2d | 100% | start no earlier than 2024-12-31 | 7574753 |
| 17 | 37100.37300.37600.37900.97600.103000.184200.195900 | Concreting | 4d | 2025-01-13 | 2025-01-16 | 16FS-1d | 100% | start no earlier than 2025-01-13 | 7574763 |
| 18 | 37100.37300.37600.37900.97600.103000.184100 | **Basement 1 Slab** | 27d | 2025-01-16 | 2025-02-11 |  | 100% | start no earlier than 2025-01-16 | 7571153 |
| 19 | 37100.37300.37600.37900.97600.103000.184100.196000 | Reinforcement | 22d | 2025-01-16 | 2025-02-06 | 17FS-1d | 100% | start no earlier than 2025-01-16 | 7574773 |
| 20 | 37100.37300.37600.37900.97600.103000.184100.196100 | Formwork | 22d | 2025-01-19 | 2025-02-09 | 19SS+3d | 100% | start no earlier than 2025-01-19 | 7574783 |
| 21 | 37100.37300.37600.37900.97600.103000.184100.196200 | Concreting | 2d | 2025-02-09 | 2025-02-11 | 20FS-1d | 100% | start no earlier than 2025-02-09 | 7574793 |
| 22 | 37100.37300.37600.37900.97600.103000.184000 | **Basement 2 Slab/GF** | 24.38d | 2025-02-10 | 2025-03-06 |  | 100% | start no earlier than 2025-02-10 | 7571163 |
| 23 | 37100.37300.37600.37900.97600.103000.184000.196300 | Reinforcement | 18d | 2025-02-10 | 2025-03-01 | 21FS-2d | 100% | start no earlier than 2025-02-10 | 7574803 |
| 24 | 37100.37300.37600.37900.97600.103000.184000.196400 | Formwork | 13d | 2025-02-13 | 2025-03-01 | 23SS+3d | 100% | start no earlier than 2025-02-13 | 7574813 |
| 25 | 37100.37300.37600.37900.97600.103000.184000.196500 | Concreting | 3.5d | 2025-02-25 | 2025-03-05 | 24 | 100% | start no earlier than 2025-02-25 | 7574823 |
| 26 | 37100.37300.37600.37900.97600.103000.184000.196600 | Concreting | 3.5d | 2025-02-27 | 2025-03-06 | 25 | 100% |  | 8074624 |

| ID | WBS | Task | Duration | Start | Finish | Predecessors | Complete | Constraint | Unique_Task_ID |
| --- | --- | --- | --- | --- | --- | --- | --- | --- | --- |
| 27 | 37100.37300.37600.37900.97600.103000.183900 | **Podium /Ground Floor Slab** | 30.62d | 2025-03-10 | 2025-04-09 |  | 100% | start no earlier than 2025-03-10 | 7571173 |
| 28 | 37100.37300.37600.37900.97600.103000.183900.196700 | Reinforcement | 20d | 2025-03-10 | 2025-04-05 | 26FS+2.38d | 100% | start no earlier than 2025-03-10 | 7574833 |
| 29 | 37100.37300.37600.37900.97600.103000.183900.196800 | Formwork | 22d | 2025-03-10 | 2025-04-06 | 28FF | 100% | start no earlier than 2025-03-10 | 7574843 |
| 30 | 37100.37300.37600.37900.97600.103000.183900.196900 | Concreting | 1d | 2025-04-08 | 2025-04-09 | 29FF+3.62d | 100% | start no earlier than 2025-04-08 | 7574853 |
| 31 | 37100.37300.37600.37900.97600.184400 | **Substructure Finishing** | 174.81d | 2025-11-30 | 2026-06-02 |  |  | start no earlier than 2025-11-30 | 7569483 |
| 32 | 37100.37300.37600.37900.97600.184400.298900 | Masonary work | 89.94d | 2025-11-30 | 2026-03-09 | 30FS+26.75d |  |  | 7571973 |
| 33 | 37100.37300.37600.37900.97600.184400.299000 | Plaster | 39.94d | 2026-03-09 | 2026-04-18 | 32 |  |  | 7571983 |
| 34 | 37100.37300.37600.37900.97600.184400.299100 | Structural steel | 59.94d | 2025-11-30 | 2026-02-07 | 30FS+53.38d |  |  | 7571993 |
| 35 | 37100.37300.37600.37900.97600.184400.299200 | White Wash | 44.94d | 2026-04-18 | 2026-06-02 | 33 |  |  | 7572003 |
| 36 | 37100.37300.37600.37900.38900 | **Superstructure** | 864.88d | 2025-04-14 | 2027-11-01 |  | 5% | start no earlier than 2025-04-14 | 7567523 |
| 37 | 37100.37300.37600.37900.38900.43300 | **RCC structure** | 573.31d | 2025-04-14 | 2027-01-14 |  | 38% | start no earlier than 2025-04-14 | 7567643 |
| 38 | 37100.37300.37600.37900.38900.43300.127400 | **1st floor slab** | 45d | 2025-04-14 | 2025-05-28 |  | 100% | start no earlier than 2025-04-14 | 7569563 |
| 39 | 37100.37300.37600.37900.38900.43300.127400.197000 | Reinforcement | 20d | 2025-04-14 | 2025-05-07 | 30FS+1.88d | 100% | start no earlier than 2025-04-14 | 7574863 |
| 40 | 37100.37300.37600.37900.38900.43300.127400.197100 | Wall conduiting | 4d | 2025-04-16 | 2025-04-30 | 39SS+1.75d | 100% | start no earlier than 2025-04-16 | 7574873 |
| 41 | 37100.37300.37600.37900.38900.43300.127400.197200 | Formwork | 30d | 2025-04-15 | 2025-05-25 | 39SS+3d | 100% | start no earlier than 2025-04-15 | 7574883 |
| 42 | 37100.37300.37600.37900.38900.43300.127400.197300 | Concreting | 8d | 2025-05-16 | 2025-05-28 | 41SS+26d | 100% | start no earlier than 2025-05-16 | 7574893 |
| 43 | 37100.37300.37600.37900.38900.43300.127300 | **2nd floor slab** | 51d | 2025-05-18 | 2025-07-07 |  | 100% | start no earlier than 2025-05-18 | 7569573 |
| 44 | 37100.37300.37600.37900.38900.43300.127300.197400 | Reinforcement | 25d | 2025-05-18 | 2025-06-27 | 42SS+6d | 100% | start no earlier than 2025-05-18 | 7574903 |
| 45 | 37100.37300.37600.37900.38900.43300.127300.197500 | Wall conduiting | 19d | 2025-05-22 | 2025-06-28 | 40, 44SS+2.75d | 100% | start no earlier than 2025-05-22 | 7574913 |
| 46 | 37100.37300.37600.37900.38900.43300.127300.197600 | Formwork | 30d | 2025-05-19 | 2025-07-01 | 44SS+3d | 100% | start no earlier than 2025-05-19 | 7574923 |
| 47 | 37100.37300.37600.37900.38900.43300.127300.197800 | Concreting | 9d | 2025-06-26 | 2025-07-07 | 46 | 100% | start no earlier than 2025-06-26 | 7574933 |
| 48 | 37100.37300.37600.37900.38900.43300.127200 | **3rd floor slab** | 29d | 2025-06-30 | 2025-07-28 |  | 100% | start no earlier than 2025-06-30 | 7569583 |
| 49 | 37100.37300.37600.37900.38900.43300.127200.197900 | Reinforcement | 9d | 2025-06-30 | 2025-07-28 | 47FS+1d | 100% | start no earlier than 2025-06-30 | 7574943 |
| 50 | 37100.37300.37600.37900.38900.43300.127200.198000 | Wall conduiting | 10d | 2025-07-02 | 2025-07-28 | 45, 49SS+2.75d | 100% | start no earlier than 2025-07-02 | 7574953 |
| 51 | 37100.37300.37600.37900.38900.43300.127200.198100 | Formwork | 10d | 2025-07-03 | 2025-07-28 | 49SS+3d | 100% | start no earlier than 2025-07-03 | 7574963 |
| 52 | 37100.37300.37600.37900.38900.43300.127200.198200 | Concreting | 2d | 2025-07-21 | 2025-07-28 | 51FS-7d | 100% | start no earlier than 2025-07-21 | 7574973 |

| ID | WBS | Task | Duration | Start | Finish | Predecessors | Complete | Constraint | Unique_Task_ID |
| --- | --- | --- | --- | --- | --- | --- | --- | --- | --- |
| 53 | 37100.37300.37600.37900.38900.43300.127100 | **4th floor slab** | 18d | 2025-07-28 | 2025-08-14 |  | 100% | start no earlier than 2025-07-28 | 7569593 |
| 54 | 37100.37300.37600.37900.38900.43300.127100.198300 | Reinforcement | 6d | 2025-07-28 | 2025-08-11 | 52FS-5d | 100% | start no earlier than 2025-07-28 | 7574983 |
| 55 | 37100.37300.37600.37900.38900.43300.127100.198400 | Wall conduiting | 3d | 2025-07-29 | 2025-08-11 | 50, 54SS+1d | 100% | start no earlier than 2025-07-29 | 7574993 |
| 56 | 37100.37300.37600.37900.38900.43300.127100.198500 | Formwork | 7d | 2025-07-29 | 2025-08-13 | 54SS+1d | 100% | start no earlier than 2025-07-29 | 7575003 |
| 57 | 37100.37300.37600.37900.38900.43300.127100.198600 | Concreting | 4d | 2025-08-09 | 2025-08-14 | 56FS-3d | 100% | start no earlier than 2025-08-09 | 7575013 |
| 58 | 37100.37300.37600.37900.38900.43300.127000 | **5th floor slab** | 20d | 2025-08-11 | 2025-08-30 |  | 100% | start no earlier than 2025-08-11 | 7569603 |
| 59 | 37100.37300.37600.37900.38900.43300.127000.199000 | Reinforcement | 8d | 2025-08-11 | 2025-08-27 | 57FS-4d | 100% | start no earlier than 2025-08-11 | 7575023 |
| 60 | 37100.37300.37600.37900.38900.43300.127000.199100 | Wall conduiting | 8d | 2025-08-11 | 2025-08-30 | 55, 59SS+1d | 100% | start no earlier than 2025-08-11 | 7575033 |
| 61 | 37100.37300.37600.37900.38900.43300.127000.199200 | Formwork | 7d | 2025-08-12 | 2025-08-28 | 59SS+1d | 100% | start no earlier than 2025-08-12 | 7575043 |
| 62 | 37100.37300.37600.37900.38900.43300.127000.199300 | Concreting | 3d | 2025-08-24 | 2025-08-28 | 61FS-3d | 100% | start no earlier than 2025-08-24 | 7575053 |
| 63 | 37100.37300.37600.37900.38900.43300.126800 | **6th floor slab** | 17d | 2025-08-24 | 2025-09-09 |  | 100% | start no earlier than 2025-08-24 | 7569613 |
| 64 | 37100.37300.37600.37900.38900.43300.126800.199600 | Reinforcement | 8d | 2025-08-24 | 2025-09-08 | 62FS+1d | 100% | start no earlier than 2025-08-24 | 7575063 |
| 65 | 37100.37300.37600.37900.38900.43300.126800.199800 | Wall conduiting | 3d | 2025-08-25 | 2025-09-08 | 60, 64SS+1d | 100% | start no earlier than 2025-08-25 | 7575073 |
| 66 | 37100.37300.37600.37900.38900.43300.126800.199900 | Formwork | 7d | 2025-08-25 | 2025-09-08 | 64SS+1d | 100% | start no earlier than 2025-08-25 | 7575083 |
| 67 | 37100.37300.37600.37900.38900.43300.126800.200000 | Concreting | 1d | 2025-09-09 | 2025-09-09 | 66 | 100% | start no earlier than 2025-09-09 | 7575093 |
| 68 | 37100.37300.37600.37900.38900.43300.126700 | **7th floor slab** | 15d | 2025-09-09 | 2025-09-23 |  | 100% | start no earlier than 2025-09-09 | 7569623 |
| 69 | 37100.37300.37600.37900.38900.43300.126700.200100 | Reinforcement | 8d | 2025-09-09 | 2025-09-22 | 67FS+1d | 100% | start no earlier than 2025-09-09 | 7575103 |
| 70 | 37100.37300.37600.37900.38900.43300.126700.200200 | Wall conduiting | 3d | 2025-09-10 | 2025-09-22 | 65, 69SS+1d | 100% | start no earlier than 2025-09-10 | 7575113 |
| 71 | 37100.37300.37600.37900.38900.43300.126700.200300 | Formwork | 7d | 2025-09-10 | 2025-09-22 | 69SS+1d | 100% | start no earlier than 2025-09-10 | 7575123 |
| 72 | 37100.37300.37600.37900.38900.43300.126700.200400 | Concreting | 4d | 2025-09-15 | 2025-09-23 | 71FS-7d | 100% | start no earlier than 2025-09-15 | 7575133 |
| 73 | 37100.37300.37600.37900.38900.43300.126600 | **8th floor slab** | 23d | 2025-09-18 | 2025-10-10 |  | 100% | start no earlier than 2025-09-18 | 7569633 |
| 74 | 37100.37300.37600.37900.38900.43300.126600.200500 | Reinforcement | 10d | 2025-09-18 | 2025-10-06 | 72FS-12d | 100% | start no earlier than 2025-09-18 | 7575143 |
| 75 | 37100.37300.37600.37900.38900.43300.126600.200600 | Wall conduiting | 3d | 2025-09-18 | 2025-10-01 | 70, 74SS+1d | 100% | start no earlier than 2025-09-18 | 7575153 |
| 76 | 37100.37300.37600.37900.38900.43300.126600.200700 | Formwork | 10d | 2025-09-18 | 2025-10-06 | 74SS+1d | 100% | start no earlier than 2025-09-18 | 7575163 |
| 77 | 37100.37300.37600.37900.38900.43300.126600.200800 | Concreting | 7d | 2025-10-01 | 2025-10-10 | 76 | 100% | start no earlier than 2025-10-01 | 7575173 |

| ID | WBS | Task | Duration | Start | Finish | Predecessors | Complete | Constraint | Unique_Task_ID |
| --- | --- | --- | --- | --- | --- | --- | --- | --- | --- |
| 78 | 37100.37300.37600.37900.38900.43300.126500 | **9th floor slab** | 21d | 2025-10-04 | 2025-10-24 |  | 100% | start no earlier than 2025-10-04 | 7569643 |
| 79 | 37100.37300.37600.37900.38900.43300.126500.200900 | Reinforcement | 12d | 2025-10-04 | 2025-10-23 | 77FS+1d | 100% | start no earlier than 2025-10-04 | 7575183 |
| 80 | 37100.37300.37600.37900.38900.43300.126500.201000 | Wall conduiting | 13d | 2025-10-05 | 2025-10-23 | 75, 79SS+1d | 100% | start no earlier than 2025-10-05 | 7575193 |
| 81 | 37100.37300.37600.37900.38900.43300.126500.201100 | Formwork | 17d | 2025-10-05 | 2025-10-23 | 79SS+1d | 100% | start no earlier than 2025-10-05 | 7575203 |
| 82 | 37100.37300.37600.37900.38900.43300.126500.201200 | Concreting | 6d | 2025-10-16 | 2025-10-24 | 81FS-6d | 100% | start no earlier than 2025-10-16 | 7575213 |
| 83 | 37100.37300.37600.37900.38900.43300.126400 | **10th floor slab** | 19.12d | 2025-10-20 | 2025-11-06 |  | 100% | start no earlier than 2025-10-20 | 7569653 |
| 84 | 37100.37300.37600.37900.38900.43300.126400.201300 | Reinforcement | 8d | 2025-10-20 | 2025-11-05 | 82FS+1d | 100% | start no earlier than 2025-10-20 | 7575223 |
| 85 | 37100.37300.37600.37900.38900.43300.126400.201400 | Wall conduiting | 3d | 2025-10-21 | 2025-10-31 | 80, 84SS+1d | 100% | start no earlier than 2025-10-21 | 7575233 |
| 86 | 37100.37300.37600.37900.38900.43300.126400.201500 | Formwork | 5.62d | 2025-10-23 | 2025-11-06 | 84SS+1d | 100% | start no earlier than 2025-10-23 | 7575243 |
| 87 | 37100.37300.37600.37900.38900.43300.126400.201600 | Concreting | 2d | 2025-10-31 | 2025-11-06 | 86FS-7.12d | 100% | start no earlier than 2025-10-31 | 7575253 |
| 88 | 37100.37300.37600.37900.38900.43300.126300 | **11th floor slab** | 10.31d | 2025-11-04 | 2025-11-27 |  | 100% | start no earlier than 2025-11-04 | 7569663 |
| 89 | 37100.37300.37600.37900.38900.43300.126300.201700 | Reinforcement | 5d | 2025-11-04 | 2025-11-26 | 87FS+1d | 100% | start no earlier than 2025-11-04 | 7575263 |
| 90 | 37100.37300.37600.37900.38900.43300.126300.201800 | Wall conduiting | 5d | 2025-11-04 | 2025-11-26 | 85, 89SS+1d | 100% | start no earlier than 2025-11-04 | 7575273 |
| 91 | 37100.37300.37600.37900.38900.43300.126300.201900 | Formwork | 4d | 2025-11-04 | 2025-11-26 | 89SS+1d | 100% | start no earlier than 2025-11-04 | 7575283 |
| 92 | 37100.37300.37600.37900.38900.43300.126300.202000 | Concreting | 1d | 2025-11-26 | 2025-11-27 | 91 | 100% | start no earlier than 2025-11-26 | 7575293 |
| 93 | 37100.37300.37600.37900.38900.43300.183500 | **12th floor slab** | 8.75d | 2025-11-27 | 2025-12-05 |  | 31% | start no earlier than 2025-11-27 | 7569673 |
| 94 | 37100.37300.37600.37900.38900.43300.183500.202100 | Reinforcement | 8d | 2025-11-27 | 2025-12-04 | 92FS+1d | 37% | start no earlier than 2025-11-27 | 7575303 |
| 95 | 37100.37300.37600.37900.38900.43300.183500.202200 | Wall conduiting | 3d | 2025-11-27 | 2025-12-01 | 90, 94SS+1d | 33% | start no earlier than 2025-11-27 | 7575313 |
| 96 | 37100.37300.37600.37900.38900.43300.183500.202300 | Formwork | 7d | 2025-11-27 | 2025-12-04 | 94SS+1d | 28% | start no earlier than 2025-11-27 | 7575323 |
| 97 | 37100.37300.37600.37900.38900.43300.183500.408200 | Concreting | 1d | 2025-12-04 | 2025-12-05 | 96 |  |  | 7575333 |
| 98 | 37100.37300.37600.37900.38900.43300.183400 | **13th floor slab** | 10d | 2025-12-22 | 2026-01-01 |  |  | start no earlier than 2025-12-22 | 7569683 |
| 99 | 37100.37300.37600.37900.38900.43300.183400.408300 | Reinforcement | 8d | 2025-12-22 | 2025-12-30 | 97FS+1d |  |  | 7575343 |
| 100 | 37100.37300.37600.37900.38900.43300.183400.408400 | Wall conduiting | 3d | 2025-12-23 | 2025-12-26 | 95, 99SS+1d |  |  | 7575353 |
| 101 | 37100.37300.37600.37900.38900.43300.183400.408500 | Formwork | 7d | 2025-12-23 | 2025-12-30 | 99SS+1d |  |  | 7575363 |
| 102 | 37100.37300.37600.37900.38900.43300.183400.408600 | Concreting | 2d | 2025-12-30 | 2026-01-01 | 101 |  |  | 7575373 |

| ID | WBS | Task | Duration | Start | Finish | Predecessors | Constraint | Unique_Task_ID |
| --- | --- | --- | --- | --- | --- | --- | --- | --- |
| 103 | 37100.37300.37600.37900.38900.43300.183300 | **14th floor slab** | 10d | 2026-01-02 | 2026-01-12 |  | start no earlier than 2026-01-02 | 7569693 |
| 104 | 37100.37300.37600.37900.38900.43300.183300.408700 | Reinforcement | 8d | 2026-01-02 | 2026-01-10 | 102FS+1d |  | 7575383 |
| 105 | 37100.37300.37600.37900.38900.43300.183300.408800 | Wall conduiting | 3d | 2026-01-03 | 2026-01-06 | 100, 104SS+1d |  | 7575393 |
| 106 | 37100.37300.37600.37900.38900.43300.183300.408900 | Formwork | 7d | 2026-01-03 | 2026-01-10 | 104SS+1d |  | 7575403 |
| 107 | 37100.37300.37600.37900.38900.43300.183300.409000 | Concreting | 2d | 2026-01-10 | 2026-01-12 | 106 |  | 7575413 |
| 108 | 37100.37300.37600.37900.38900.43300.183200 | **15th floor slab** | 10d | 2026-01-13 | 2026-01-23 |  | start no earlier than 2026-01-13 | 7569703 |
| 109 | 37100.37300.37600.37900.38900.43300.183200.409100 | Reinforcement | 8d | 2026-01-13 | 2026-01-21 | 107FS+1d |  | 7575423 |
| 110 | 37100.37300.37600.37900.38900.43300.183200.409200 | Wall conduiting | 3d | 2026-01-14 | 2026-01-17 | 105, 109SS+1d |  | 7575433 |
| 111 | 37100.37300.37600.37900.38900.43300.183200.409300 | Formwork | 7d | 2026-01-14 | 2026-01-21 | 109SS+1d |  | 7575443 |
| 112 | 37100.37300.37600.37900.38900.43300.183200.409400 | Concreting | 2d | 2026-01-21 | 2026-01-23 | 111 |  | 7575453 |
| 113 | 37100.37300.37600.37900.38900.43300.183100 | **16th floor slab** | 8d | 2026-01-23 | 2026-01-31 |  | start no earlier than 2026-01-23 | 7569713 |
| 114 | 37100.37300.37600.37900.38900.43300.183100.409500 | Reinforcement | 7d | 2026-01-23 | 2026-01-30 | 112 |  | 7575463 |
| 115 | 37100.37300.37600.37900.38900.43300.183100.409600 | Wall conduiting | 5d | 2026-01-24 | 2026-01-29 | 110, 114SS+1d |  | 7575473 |
| 116 | 37100.37300.37600.37900.38900.43300.183100.409700 | Formwork | 6d | 2026-01-24 | 2026-01-30 | 114SS+1d |  | 7575483 |
| 117 | 37100.37300.37600.37900.38900.43300.183100.409800 | Concreting | 1d | 2026-01-30 | 2026-01-31 | 116 |  | 7575493 |
| 118 | 37100.37300.37600.37900.38900.43300.183000 | **17th floor slab** | 8d | 2026-01-31 | 2026-02-08 |  | start no earlier than 2026-01-31 | 7569723 |
| 119 | 37100.37300.37600.37900.38900.43300.183000.409900 | Reinforcement | 7d | 2026-01-31 | 2026-02-07 | 117 |  | 7575503 |
| 120 | 37100.37300.37600.37900.38900.43300.183000.410000 | Wall conduiting | 5d | 2026-02-01 | 2026-02-06 | 115, 119SS+1d |  | 7575513 |
| 121 | 37100.37300.37600.37900.38900.43300.183000.410100 | Formwork | 6d | 2026-02-01 | 2026-02-07 | 119SS+1d |  | 7575523 |
| 122 | 37100.37300.37600.37900.38900.43300.183000.410200 | Concreting | 1d | 2026-02-07 | 2026-02-08 | 121 |  | 7575533 |
| 123 | 37100.37300.37600.37900.38900.43300.182900 | **18th floor slab** | 8d | 2026-02-08 | 2026-02-16 |  | start no earlier than 2026-02-08 | 7569733 |
| 124 | 37100.37300.37600.37900.38900.43300.182900.410300 | Reinforcement | 7d | 2026-02-08 | 2026-02-15 | 122 |  | 7575543 |
| 125 | 37100.37300.37600.37900.38900.43300.182900.410400 | Wall conduiting | 5d | 2026-02-09 | 2026-02-14 | 120, 124SS+1d |  | 7575553 |
| 126 | 37100.37300.37600.37900.38900.43300.182900.410500 | Formwork | 6d | 2026-02-09 | 2026-02-15 | 124SS+1d |  | 7575563 |
| 127 | 37100.37300.37600.37900.38900.43300.182900.410600 | Concreting | 1d | 2026-02-15 | 2026-02-16 | 126 |  | 7575573 |

| ID | WBS | Task | Duration | Start | Finish | Predecessors | Constraint | Unique_Task_ID |
| --- | --- | --- | --- | --- | --- | --- | --- | --- |
| 128 | 37100.37300.37600.37900.38900.43300.182800 | **19th floor slab** | 8d | 2026-02-16 | 2026-02-24 |  | start no earlier than 2026-02-16 | 7569743 |
| 129 | 37100.37300.37600.37900.38900.43300.182800.410700 | Reinforcement | 7d | 2026-02-16 | 2026-02-23 | 127 |  | 7575583 |
| 130 | 37100.37300.37600.37900.38900.43300.182800.410800 | Wall conduiting | 3d | 2026-02-17 | 2026-02-20 | 125, 129SS+1d |  | 7575593 |
| 131 | 37100.37300.37600.37900.38900.43300.182800.410900 | Formwork | 6d | 2026-02-17 | 2026-02-23 | 129SS+1d |  | 7575603 |
| 132 | 37100.37300.37600.37900.38900.43300.182800.411000 | Concreting | 1d | 2026-02-23 | 2026-02-24 | 131 |  | 7575613 |
| 133 | 37100.37300.37600.37900.38900.43300.182700 | **20th floor slab** | 8d | 2026-02-24 | 2026-03-04 |  | start no earlier than 2026-02-24 | 7569753 |
| 134 | 37100.37300.37600.37900.38900.43300.182700.411100 | Reinforcement | 7d | 2026-02-24 | 2026-03-03 | 132 |  | 7575623 |
| 135 | 37100.37300.37600.37900.38900.43300.182700.411200 | Wall conduiting | 3d | 2026-02-25 | 2026-02-28 | 130, 134SS+1d |  | 7575633 |
| 136 | 37100.37300.37600.37900.38900.43300.182700.411300 | Formwork | 6d | 2026-02-25 | 2026-03-03 | 134SS+1d |  | 7575643 |
| 137 | 37100.37300.37600.37900.38900.43300.182700.411400 | Concreting | 1d | 2026-03-03 | 2026-03-04 | 136 |  | 7575653 |
| 138 | 37100.37300.37600.37900.38900.43300.182600 | **21st floor slab** | 10d | 2026-03-05 | 2026-03-15 |  | start no earlier than 2026-03-05 | 7569763 |
| 139 | 37100.37300.37600.37900.38900.43300.182600.411500 | Reinforcement | 8d | 2026-03-05 | 2026-03-13 | 137FS+1d |  | 7575663 |
| 140 | 37100.37300.37600.37900.38900.43300.182600.411600 | Wall conduiting | 3d | 2026-03-06 | 2026-03-09 | 135, 139SS+1d |  | 7575673 |
| 141 | 37100.37300.37600.37900.38900.43300.182600.411700 | Formwork | 7d | 2026-03-06 | 2026-03-13 | 139SS+1d |  | 7575683 |
| 142 | 37100.37300.37600.37900.38900.43300.182600.411800 | Concreting | 2d | 2026-03-13 | 2026-03-15 | 141 |  | 7575693 |
| 143 | 37100.37300.37600.37900.38900.43300.182500 | **22nd floor slab** | 10d | 2026-03-21 | 2026-03-31 |  | start no earlier than 2026-03-21 | 7569773 |
| 144 | 37100.37300.37600.37900.38900.43300.182500.411900 | Reinforcement | 8d | 2026-03-21 | 2026-03-29 | 142FS+6d |  | 7575703 |
| 145 | 37100.37300.37600.37900.38900.43300.182500.412000 | Wall conduiting | 3d | 2026-03-22 | 2026-03-25 | 140, 144SS+1d |  | 7575713 |
| 146 | 37100.37300.37600.37900.38900.43300.182500.412100 | Formwork | 7d | 2026-03-22 | 2026-03-29 | 144SS+1d |  | 7575723 |
| 147 | 37100.37300.37600.37900.38900.43300.182500.412200 | Concreting | 2d | 2026-03-29 | 2026-03-31 | 146 |  | 7575733 |
| 148 | 37100.37300.37600.37900.38900.43300.182400 | **23rd floor slab** | 10d | 2026-04-04 | 2026-04-14 |  | start no earlier than 2026-04-04 | 7569783 |
| 149 | 37100.37300.37600.37900.38900.43300.182400.412300 | Reinforcement | 8d | 2026-04-04 | 2026-04-12 | 147FS+4d |  | 7575743 |
| 150 | 37100.37300.37600.37900.38900.43300.182400.412400 | Wall conduiting | 3d | 2026-04-05 | 2026-04-08 | 145, 149SS+1d |  | 7575753 |
| 151 | 37100.37300.37600.37900.38900.43300.182400.412500 | Formwork | 7d | 2026-04-05 | 2026-04-12 | 149SS+1d |  | 7575763 |
| 152 | 37100.37300.37600.37900.38900.43300.182400.412600 | Concreting | 2d | 2026-04-12 | 2026-04-14 | 151 |  | 7575773 |

| ID | WBS | Task | Duration | Start | Finish | Predecessors | Constraint | Unique_Task_ID |
| --- | --- | --- | --- | --- | --- | --- | --- | --- |
| 153 | 37100.37300.37600.37900.38900.43300.182300 | **24th floor slab** | 12d | 2026-04-18 | 2026-04-30 |  | start no earlier than 2026-04-18 | 7569793 |
| 154 | 37100.37300.37600.37900.38900.43300.182300.412700 | Reinforcement | 10d | 2026-04-18 | 2026-04-28 | 152FS+4d |  | 7575783 |
| 155 | 37100.37300.37600.37900.38900.43300.182300.412800 | Wall conduiting | 3d | 2026-04-19 | 2026-04-22 | 150, 154SS+1d |  | 7575793 |
| 156 | 37100.37300.37600.37900.38900.43300.182300.412900 | Formwork | 10d | 2026-04-19 | 2026-04-29 | 154SS+1d |  | 7575803 |
| 157 | 37100.37300.37600.37900.38900.43300.182300.413000 | Concreting | 1d | 2026-04-29 | 2026-04-30 | 156 |  | 7575813 |
| 158 | 37100.37300.37600.37900.38900.43300.182200 | **25th floor slab** | 12d | 2026-05-01 | 2026-05-13 |  | start no earlier than 2026-05-01 | 7569803 |
| 159 | 37100.37300.37600.37900.38900.43300.182200.413100 | Reinforcement | 10d | 2026-05-01 | 2026-05-11 | 157FS+1d |  | 7575823 |
| 160 | 37100.37300.37600.37900.38900.43300.182200.413200 | Wall conduiting | 3d | 2026-05-02 | 2026-05-05 | 155, 159SS+1d |  | 7575833 |
| 161 | 37100.37300.37600.37900.38900.43300.182200.413300 | Formwork | 10d | 2026-05-02 | 2026-05-12 | 159SS+1d |  | 7575843 |
| 162 | 37100.37300.37600.37900.38900.43300.182200.413400 | Concreting | 1d | 2026-05-12 | 2026-05-13 | 161 |  | 7575853 |
| 163 | 37100.37300.37600.37900.38900.43300.182100 | **26th floor slab** | 10d | 2026-05-14 | 2026-05-24 |  | start no earlier than 2026-05-14 | 7569813 |
| 164 | 37100.37300.37600.37900.38900.43300.182100.413500 | Reinforcement | 8d | 2026-05-14 | 2026-05-22 | 162FS+1d |  | 7575863 |
| 165 | 37100.37300.37600.37900.38900.43300.182100.413600 | Wall conduiting | 3d | 2026-05-15 | 2026-05-18 | 160, 164SS+1d |  | 7575873 |
| 166 | 37100.37300.37600.37900.38900.43300.182100.413700 | Formwork | 7d | 2026-05-15 | 2026-05-22 | 164SS+1d |  | 7575883 |
| 167 | 37100.37300.37600.37900.38900.43300.182100.413800 | Concreting | 2d | 2026-05-22 | 2026-05-24 | 166 |  | 7575893 |
| 168 | 37100.37300.37600.37900.38900.43300.182000 | **27th floor slab** | 10d | 2026-05-25 | 2026-06-04 |  | start no earlier than 2026-05-25 | 7569823 |
| 169 | 37100.37300.37600.37900.38900.43300.182000.413900 | Reinforcement | 8d | 2026-05-25 | 2026-06-02 | 167FS+1d |  | 7575903 |
| 170 | 37100.37300.37600.37900.38900.43300.182000.414000 | Wall conduiting | 3d | 2026-05-26 | 2026-05-29 | 165, 169SS+1d |  | 7575913 |
| 171 | 37100.37300.37600.37900.38900.43300.182000.414100 | Formwork | 7d | 2026-05-26 | 2026-06-02 | 169SS+1d |  | 7575923 |
| 172 | 37100.37300.37600.37900.38900.43300.182000.414200 | Concreting | 2d | 2026-06-02 | 2026-06-04 | 171 |  | 7575933 |
| 173 | 37100.37300.37600.37900.38900.43300.181900 | **28th floor slab** | 10d | 2026-06-09 | 2026-06-19 |  | start no earlier than 2026-06-09 | 7569833 |
| 174 | 37100.37300.37600.37900.38900.43300.181900.414300 | Reinforcement | 8d | 2026-06-09 | 2026-06-17 | 172FS+5d |  | 7575943 |
| 175 | 37100.37300.37600.37900.38900.43300.181900.414400 | Wall conduiting | 3d | 2026-06-10 | 2026-06-13 | 170, 174SS+1d |  | 7575953 |
| 176 | 37100.37300.37600.37900.38900.43300.181900.414500 | Formwork | 7d | 2026-06-10 | 2026-06-17 | 174SS+1d |  | 7575963 |
| 177 | 37100.37300.37600.37900.38900.43300.181900.414600 | Concreting | 2d | 2026-06-17 | 2026-06-19 | 176 |  | 7575973 |

| ID | WBS | Task | Duration | Start | Finish | Predecessors | Constraint | Unique_Task_ID |
| --- | --- | --- | --- | --- | --- | --- | --- | --- |
| 178 | 37100.37300.37600.37900.38900.43300.181800 | **29th floor slab** | 8d | 2026-06-24 | 2026-07-02 |  | start no earlier than 2026-06-24 | 7569843 |
| 179 | 37100.37300.37600.37900.38900.43300.181800.414700 | Reinforcement | 7d | 2026-06-24 | 2026-07-01 | 177FS+5d |  | 7575983 |
| 180 | 37100.37300.37600.37900.38900.43300.181800.414800 | Wall conduiting | 3d | 2026-06-25 | 2026-06-28 | 175, 179SS+1d |  | 7575993 |
| 181 | 37100.37300.37600.37900.38900.43300.181800.414900 | Formwork | 6d | 2026-06-25 | 2026-07-01 | 179SS+1d |  | 7576003 |
| 182 | 37100.37300.37600.37900.38900.43300.181800.415000 | Concreting | 1d | 2026-07-01 | 2026-07-02 | 181 |  | 7576013 |
| 183 | 37100.37300.37600.37900.38900.43300.181700 | **30th floor slab** | 10d | 2026-07-07 | 2026-07-17 |  | start no earlier than 2026-07-07 | 7569853 |
| 184 | 37100.37300.37600.37900.38900.43300.181700.415100 | Reinforcement | 7d | 2026-07-07 | 2026-07-14 | 182FS+5d |  | 7576023 |
| 185 | 37100.37300.37600.37900.38900.43300.181700.415200 | Wall conduiting | 3d | 2026-07-08 | 2026-07-11 | 180, 184SS+1d |  | 7576033 |
| 186 | 37100.37300.37600.37900.38900.43300.181700.415300 | Formwork | 8d | 2026-07-08 | 2026-07-16 | 184SS+1d |  | 7576043 |
| 187 | 37100.37300.37600.37900.38900.43300.181700.415400 | Concreting | 1d | 2026-07-16 | 2026-07-17 | 186 |  | 7576053 |
| 188 | 37100.37300.37600.37900.38900.43300.181600 | **31st floor slab** | 10d | 2026-07-17 | 2026-07-27 |  | start no earlier than 2026-07-17 | 7569863 |
| 189 | 37100.37300.37600.37900.38900.43300.181600.415500 | Reinforcement | 7d | 2026-07-17 | 2026-07-24 | 187 |  | 7576063 |
| 190 | 37100.37300.37600.37900.38900.43300.181600.415600 | Wall conduiting | 3d | 2026-07-18 | 2026-07-21 | 185, 189SS+1d |  | 7576073 |
| 191 | 37100.37300.37600.37900.38900.43300.181600.415700 | Formwork | 8d | 2026-07-18 | 2026-07-26 | 189SS+1d |  | 7576083 |
| 192 | 37100.37300.37600.37900.38900.43300.181600.415800 | Concreting | 1d | 2026-07-26 | 2026-07-27 | 191 |  | 7576093 |
| 193 | 37100.37300.37600.37900.38900.43300.181500 | **32nd floor slab** | 17.88d | 2026-08-01 | 2026-08-19 |  | start no earlier than 2026-08-01 | 7569873 |
| 194 | 37100.37300.37600.37900.38900.43300.181500.415900 | Reinforcement | 14d | 2026-08-01 | 2026-08-15 | 192FS+5d |  | 7576103 |
| 195 | 37100.37300.37600.37900.38900.43300.181500.416000 | Wall conduiting | 6d | 2026-08-02 | 2026-08-08 | 190, 194SS+1d |  | 7576113 |
| 196 | 37100.37300.37600.37900.38900.43300.181500.416100 | Formwork | 14d | 2026-08-03 | 2026-08-17 | 194SS+1.88d |  | 7576123 |
| 197 | 37100.37300.37600.37900.38900.43300.181500.416200 | Concreting | 2d | 2026-08-17 | 2026-08-19 | 196 |  | 7576133 |
| 198 | 37100.37300.37600.37900.38900.43300.181400 | **33rd floor slab** | 11.75d | 2026-08-24 | 2026-09-04 |  | start no earlier than 2026-08-24 | 7569883 |
| 199 | 37100.37300.37600.37900.38900.43300.181400.416300 | Reinforcement | 8.94d | 2026-08-24 | 2026-09-02 | 197FS+5d |  | 7576143 |
| 200 | 37100.37300.37600.37900.38900.43300.181400.416400 | Wall conduiting | 1.94d | 2026-08-25 | 2026-08-27 | 195, 199SS+1d |  | 7576153 |
| 201 | 37100.37300.37600.37900.38900.43300.181400.416500 | Formwork | 8.94d | 2026-08-26 | 2026-09-03 | 199SS+1.88d |  | 7576163 |
| 202 | 37100.37300.37600.37900.38900.43300.181400.416600 | Concreting | 0.94d | 2026-09-03 | 2026-09-04 | 201 |  | 7576173 |

| ID | WBS | Task | Duration | Start | Finish | Predecessors | Constraint | Unique_Task_ID |
| --- | --- | --- | --- | --- | --- | --- | --- | --- |
| 203 | 37100.37300.37600.37900.38900.43300.181300 | **34th floor slab** | 14.88d | 2026-09-04 | 2026-09-19 |  | start no earlier than 2026-09-04 | 7569893 |
| 204 | 37100.37300.37600.37900.38900.43300.181300.416700 | Reinforcement | 11d | 2026-09-04 | 2026-09-15 | 202 |  | 7576183 |
| 205 | 37100.37300.37600.37900.38900.43300.181300.416800 | Wall conduiting | 6d | 2026-09-05 | 2026-09-11 | 200, 204SS+1d |  | 7576193 |
| 206 | 37100.37300.37600.37900.38900.43300.181300.416900 | Formwork | 11d | 2026-09-06 | 2026-09-17 | 204SS+1.88d |  | 7576203 |
| 207 | 37100.37300.37600.37900.38900.43300.181300.417000 | Concreting | 2d | 2026-09-17 | 2026-09-19 | 206 |  | 7576213 |
| 208 | 37100.37300.37600.37900.38900.43300.181200 | **35th floor slab** | 11.75d | 2026-09-19 | 2026-10-01 |  | start no earlier than 2026-09-19 | 7569903 |
| 209 | 37100.37300.37600.37900.38900.43300.181200.417100 | Reinforcement | 8.94d | 2026-09-19 | 2026-09-28 | 207 |  | 7576223 |
| 210 | 37100.37300.37600.37900.38900.43300.181200.417200 | Wall conduiting | 1.94d | 2026-09-20 | 2026-09-22 | 205, 209SS+1d |  | 7576233 |
| 211 | 37100.37300.37600.37900.38900.43300.181200.417300 | Formwork | 7.94d | 2026-09-22 | 2026-09-30 | 210SS+1.88d |  | 7576243 |
| 212 | 37100.37300.37600.37900.38900.43300.181200.417400 | Concreting | 0.94d | 2026-09-30 | 2026-10-01 | 211 |  | 7576253 |
| 213 | 37100.37300.37600.37900.38900.43300.181100 | **Terrace floor slab** | 17.88d | 2026-10-01 | 2026-10-19 |  | start no earlier than 2026-10-01 | 7569913 |
| 214 | 37100.37300.37600.37900.38900.43300.181100.417500 | Reinforcement | 16d | 2026-10-01 | 2026-10-17 | 212 |  | 7576263 |
| 215 | 37100.37300.37600.37900.38900.43300.181100.417600 | Wall conduiting | 9d | 2026-10-02 | 2026-10-11 | 210, 214SS+1d |  | 7576273 |
| 216 | 37100.37300.37600.37900.38900.43300.181100.417700 | Formwork | 13d | 2026-10-03 | 2026-10-16 | 214SS+1.88d |  | 7576283 |
| 217 | 37100.37300.37600.37900.38900.43300.181100.417800 | Concreting | 3d | 2026-10-16 | 2026-10-19 | 216 |  | 7576293 |
| 218 | 37100.37300.37600.37900.38900.43300.181000 | **OHT & Mumty** | 41.81d | 2026-10-19 | 2027-01-14 |  | start no earlier than 2026-10-19 | 7569923 |
| 219 | 37100.37300.37600.37900.38900.43300.181000.417900 | Reinforcement | 29.94d | 2026-10-19 | 2027-01-02 | 217 |  | 7576303 |
| 220 | 37100.37300.37600.37900.38900.43300.181000.418000 | Wall conduiting | 4.94d | 2026-10-20 | 2026-10-25 | 215, 219SS+1d |  | 7576313 |
| 221 | 37100.37300.37600.37900.38900.43300.181000.418100 | Formwork | 32.94d | 2026-10-25 | 2027-01-11 | 219SS+3.62d, 220 |  | 7576323 |
| 222 | 37100.37300.37600.37900.38900.43300.181000.418200 | Concreting | 2.94d | 2027-01-11 | 2027-01-14 | 221 |  | 7576333 |
| 223 | 37100.37300.37600.37900.38900.44900 | **Post Pour Activities** | 397.94d | 2025-11-30 | 2027-02-25 |  | start no earlier than 2025-11-30 | 7567683 |
| 224 | 37100.37300.37600.37900.38900.44900.299300 | 1st Floor | 7d | 2025-11-30 | 2025-12-16 | 52FS+0.25d |  | 7572013 |
| 225 | 37100.37300.37600.37900.38900.44900.299400 | 2nd Floor | 7d | 2025-12-16 | 2025-12-23 | 224FS+0.25d, 57FS+0.25d |  | 7572023 |
| 226 | 37100.37300.37600.37900.38900.44900.299500 | 3rd Floor | 7d | 2025-12-23 | 2025-12-30 | 225FS+0.25d, 62FS+0.25d |  | 7572033 |
| 227 | 37100.37300.37600.37900.38900.44900.299600 | 4th Floor | 7d | 2025-12-31 | 2026-01-06 | 226FS+0.25d, 67FS+0.25d |  | 7572043 |
| 228 | 37100.37300.37600.37900.38900.44900.299700 | 5th Floor | 7d | 2026-01-07 | 2026-01-14 | 227FS+0.25d, 72FS+0.25d |  | 7572053 |
| 229 | 37100.37300.37600.37900.38900.44900.299800 | 6th Floor | 7d | 2026-01-14 | 2026-01-21 | 228FS+0.25d, 77FS+0.25d |  | 7572063 |
| 230 | 37100.37300.37600.37900.38900.44900.299900 | 7th Floor | 7d | 2026-01-21 | 2026-01-28 | 229FS+0.25d, 82FS+0.25d |  | 7572073 |
| 231 | 37100.37300.37600.37900.38900.44900.300000 | 8th Floor | 7d | 2026-01-29 | 2026-02-04 | 230FS+0.25d, 87FS+0.25d |  | 7572083 |
| 232 | 37100.37300.37600.37900.38900.44900.300100 | 9th Floor | 7d | 2026-02-05 | 2026-02-12 | 231FS+0.25d, 92FS+0.25d |  | 7572093 |
| 233 | 37100.37300.37600.37900.38900.44900.300200 | 10th Floor | 7d | 2026-02-12 | 2026-02-19 | 232FS+0.25d, 97FS+0.25d |  | 7572103 |
| 234 | 37100.37300.37600.37900.38900.44900.300300 | 11th Floor | 7d | 2026-02-19 | 2026-02-26 | 233FS+0.25d, 102FS+0.25d |  | 7572113 |
| 235 | 37100.37300.37600.37900.38900.44900.300400 | 12th Floor | 7d | 2026-02-27 | 2026-03-05 | 234FS+0.25d, 107FS+0.25d |  | 7572123 |
| 236 | 37100.37300.37600.37900.38900.44900.300500 | 13th Floor | 7d | 2026-03-06 | 2026-03-13 | 235FS+0.25d, 112FS+0.25d |  | 7572133 |
| 237 | 37100.37300.37600.37900.38900.44900.300600 | 14th Floor | 7d | 2026-03-13 | 2026-03-20 | 236, 132 |  | 7572143 |
| 238 | 37100.37300.37600.37900.38900.44900.300700 | 15th Floor | 7d | 2026-03-20 | 2026-03-27 | 237, 137 |  | 7572153 |
| 239 | 37100.37300.37600.37900.38900.44900.300800 | 16th Floor | 7d | 2026-03-27 | 2026-04-03 | 238, 142 |  | 7572163 |
| 240 | 37100.37300.37600.37900.38900.44900.300900 | 17th Floor | 7d | 2026-04-03 | 2026-04-10 | 239, 147 |  | 7572173 |
| 241 | 37100.37300.37600.37900.38900.44900.301000 | 18th Floor | 7d | 2026-04-14 | 2026-04-21 | 240, 152 |  | 7572183 |
| 242 | 37100.37300.37600.37900.38900.44900.301100 | 19th Floor | 7d | 2026-04-30 | 2026-05-07 | 241, 157 |  | 7572193 |
| 243 | 37100.37300.37600.37900.38900.44900.301200 | 20th Floor | 7d | 2026-05-13 | 2026-05-20 | 242, 162 |  | 7572203 |
| 244 | 37100.37300.37600.37900.38900.44900.301300 | 21st Floor | 7d | 2026-05-24 | 2026-05-31 | 243, 167 |  | 449 |
| 245 | 37100.37300.37600.37900.38900.44900.301400 | 22nd Floor | 7d | 2026-06-04 | 2026-06-11 | 244, 172 |  | 459 |
| 246 | 37100.37300.37600.37900.38900.44900.301500 | 23rd Floor | 7d | 2026-06-19 | 2026-06-26 | 245, 177 |  | 7572213 |
| 247 | 37100.37300.37600.37900.38900.44900.301600 | 24th Floor | 7d | 2026-07-02 | 2026-07-09 | 246, 182 |  | 7572223 |
| 248 | 37100.37300.37600.37900.38900.44900.301700 | 25th Floor | 7d | 2026-07-17 | 2026-07-24 | 247, 187 |  | 7572233 |
| 249 | 37100.37300.37600.37900.38900.44900.301800 | 26th Floor | 7d | 2026-07-27 | 2026-08-03 | 248, 192 |  | 7572243 |
| 250 | 37100.37300.37600.37900.38900.44900.301900 | 27th Floor | 7d | 2026-08-19 | 2026-08-26 | 249, 197 |  | 7572253 |
| 251 | 37100.37300.37600.37900.38900.44900.302000 | 28th Floor | 7d | 2026-09-04 | 2026-09-11 | 250, 202 |  | 7572263 |
| 252 | 37100.37300.37600.37900.38900.44900.302100 | 29th Floor | 7d | 2026-09-19 | 2026-09-26 | 251, 207 |  | 7572273 |
| 253 | 37100.37300.37600.37900.38900.44900.302200 | 30th Floor | 7d | 2026-10-01 | 2026-10-08 | 252, 212 |  | 7572283 |
| 254 | 37100.37300.37600.37900.38900.44900.302300 | 31st Floor | 7d | 2026-10-19 | 2026-10-26 | 253, 217 |  | 7572293 |
| 255 | 37100.37300.37600.37900.38900.44900.302400 | 32nd Flood | 7d | 2027-01-14 | 2027-01-21 | 254, 222 |  | 559 |
| 256 | 37100.37300.37600.37900.38900.44900.302500 | 33rd Floor | 7d | 2027-01-21 | 2027-01-28 | 255 |  | 7572303 |
| 257 | 37100.37300.37600.37900.38900.44900.302600 | 34th Floor | 7d | 2027-01-28 | 2027-02-04 | 256 |  | 7572313 |
| 258 | 37100.37300.37600.37900.38900.44900.302700 | 35th Floor | 7d | 2027-02-04 | 2027-02-11 | 257 |  | 7572323 |
| 259 | 37100.37300.37600.37900.38900.44900.302800 | Terrace | 7d | 2027-02-11 | 2027-02-18 | 258 |  | 7572333 |
| 260 | 37100.37300.37600.37900.38900.44900.302900 | Mumty & Machine Room | 7d | 2027-02-18 | 2027-02-25 | 259 |  | 7572343 |

| ID | WBS | Task | Duration | Start | Finish | Predecessors | Constraint | Unique_Task_ID |
| --- | --- | --- | --- | --- | --- | --- | --- | --- |
| 261 | 37100.37300.37600.37900.38900.40300 | **Finishing work** | 646.38d | 2025-12-01 | 2027-11-01 |  | start no earlier than 2025-12-01 | 7567563 |
| 262 | 37100.37300.37600.37900.38900.40300.41300 | **Flat finishing** | 624.56d | 2025-12-16 | 2027-10-16 |  | start no earlier than 2025-12-16 | 7567603 |
| 263 | 37100.37300.37600.37900.38900.40300.41300.80300 | **1st Floor** | 98d | 2025-12-16 | 2026-03-24 |  | start no earlier than 2025-12-16 | 7567723 |
| 264 | 37100.37300.37600.37900.38900.40300.41300.80300.816100 | Block Work | 5d | 2025-12-16 | 2025-12-21 | 224 |  | 7581693 |
| 265 | 37100.37300.37600.37900.38900.40300.41300.80300.816200 | Door Frame Fixing | 9d | 2025-12-21 | 2025-12-30 | 264 |  | 7581703 |
| 266 | 37100.37300.37600.37900.38900.40300.41300.80300.816300 | Internal Plumbing Works | 8d | 2025-12-21 | 2025-12-29 | 264 |  | 7581713 |
| 267 | 37100.37300.37600.37900.38900.40300.41300.80300.816400 | Waterproofing | 10d | 2025-12-29 | 2026-01-08 | 266 |  | 7581723 |
| 268 | 37100.37300.37600.37900.38900.40300.41300.80300.816500 | Internal Plaster | 5d | 2025-12-16 | 2025-12-21 | 264SS+0.25d |  | 7581733 |
| 269 | 37100.37300.37600.37900.38900.40300.41300.80300.816600 | IPS flooring work | 10d | 2026-01-08 | 2026-01-18 | 265, 266, 267 |  | 7581743 |
| 270 | 37100.37300.37600.37900.38900.40300.41300.80300.816700 | Toilet dado work | 8d | 2026-01-08 | 2026-01-16 | 267, 268 |  | 7581753 |
| 271 | 37100.37300.37600.37900.38900.40300.41300.80300.816800 | Toilet flooring work | 8d | 2026-01-16 | 2026-01-24 | 270FS+0.25d |  | 7581763 |
| 272 | 37100.37300.37600.37900.38900.40300.41300.80300.816900 | Living dinning flooring | 7d | 2026-02-13 | 2026-02-20 | 265FS+45d |  | 7581773 |
| 273 | 37100.37300.37600.37900.38900.40300.41300.80300.817000 | Aluminium door-window fixing | 7d | 2026-03-04 | 2026-03-11 | 269FS+45d |  | 7581783 |
| 274 | 37100.37300.37600.37900.38900.40300.41300.80300.817100 | Putty primer coat | 6d | 2026-02-20 | 2026-02-26 | 272 |  | 7581793 |
| 275 | 37100.37300.37600.37900.38900.40300.41300.80300.817200 | Door shutter fixing | 8d | 2026-02-20 | 2026-02-28 | 272 |  | 7581803 |
| 276 | 37100.37300.37600.37900.38900.40300.41300.80300.817300 | Electrical wiring work | 8d | 2026-02-28 | 2026-03-08 | 275 |  | 7581813 |
| 277 | 37100.37300.37600.37900.38900.40300.41300.80300.817400 | Painting 1st coat | 8d | 2026-03-08 | 2026-03-16 | 274, 275, 276 |  | 7581823 |
| 278 | 37100.37300.37600.37900.38900.40300.41300.80300.817500 | False Cieling panel fixing | 8d | 2026-03-16 | 2026-03-24 | 277 |  | 7581833 |
| 279 | 37100.37300.37600.37900.38900.40300.41300.76700 | **2nd Floor** | 319.31d | 2025-12-22 | 2026-12-21 |  | start no earlier than 2025-12-22 | 7567733 |
| 280 | 37100.37300.37600.37900.38900.40300.41300.76700.817600 | Block Work | 5d | 2025-12-23 | 2025-12-28 | 225, 264 |  | 7581843 |
| 281 | 37100.37300.37600.37900.38900.40300.41300.76700.817700 | Door Frame Fixing | 9d | 2025-12-30 | 2026-01-08 | 265, 280 |  | 7581853 |
| 282 | 37100.37300.37600.37900.38900.40300.41300.76700.817800 | Internal Plumbing Works | 8d | 2025-12-29 | 2026-01-06 | 266, 280 |  | 7581863 |
| 283 | 37100.37300.37600.37900.38900.40300.41300.76700.817900 | Waterproofing | 10d | 2026-01-08 | 2026-01-18 | 267, 282 |  | 7581873 |
| 284 | 37100.37300.37600.37900.38900.40300.41300.76700.818000 | Internal Plaster | 5d | 2025-12-22 | 2025-12-27 | 268FS+1d |  | 7581883 |
| 285 | 37100.37300.37600.37900.38900.40300.41300.76700.818100 | IPS flooring work | 10d | 2026-01-18 | 2026-01-28 | 269, 281, 282, 283 |  | 7581893 |
| 286 | 37100.37300.37600.37900.38900.40300.41300.76700.818200 | Toilet dado work | 8d | 2026-01-18 | 2026-01-26 | 270, 283, 284 |  | 7581903 |
| 287 | 37100.37300.37600.37900.38900.40300.41300.76700.818300 | Toilet flooring work | 8d | 2026-01-26 | 2026-02-03 | 271, 286 |  | 7581913 |
| 288 | 37100.37300.37600.37900.38900.40300.41300.76700.818400 | Living dinning flooring | 7d | 2026-02-20 | 2026-02-27 | 272, 281, 287 |  | 7581923 |
| 289 | 37100.37300.37600.37900.38900.40300.41300.76700.818500 | Aluminium door-window fixing | 15d | 2026-03-11 | 2026-03-26 | 273, 285, 288 |  | 7581933 |
| 290 | 37100.37300.37600.37900.38900.40300.41300.76700.818600 | Putty primer coat | 6d | 2026-02-27 | 2026-03-05 | 274, 288 |  | 7581943 |
| 291 | 37100.37300.37600.37900.38900.40300.41300.76700.818700 | Door shutter fixing | 8d | 2026-02-28 | 2026-03-08 | 275, 288 |  | 7581953 |
| 292 | 37100.37300.37600.37900.38900.40300.41300.76700.818800 | Electrical wiring work | 15d | 2026-10-06 | 2026-10-21 | 610FS+0.25d |  | 7581963 |
| 293 | 37100.37300.37600.37900.38900.40300.41300.76700.818900 | Painting 1st coat | 8d | 2026-10-21 | 2026-10-29 | 277, 290, 291, 292 |  | 7581973 |
| 294 | 37100.37300.37600.37900.38900.40300.41300.76700.819000 | False ceiling | 8d | 2026-10-29 | 2026-12-21 | 278, 293 |  | 7581983 |

| ID | WBS | Task | Duration | Start | Finish | Predecessors | Constraint | Unique_Task_ID |
| --- | --- | --- | --- | --- | --- | --- | --- | --- |
| 295 | 37100.37300.37600.37900.38900.40300.41300.76600 | **3rd Floor** | 322.06d | 2025-12-27 | 2026-12-29 |  | start no earlier than 2025-12-27 | 7567743 |
| 296 | 37100.37300.37600.37900.38900.40300.41300.76600.819100 | Block Work | 5d | 2025-12-28 | 2026-01-02 | 280FS+0.25d |  | 7581993 |
| 297 | 37100.37300.37600.37900.38900.40300.41300.76600.819200 | Door Frame Fixing | 9d | 2026-01-08 | 2026-01-17 | 281, 296 |  | 7582003 |
| 298 | 37100.37300.37600.37900.38900.40300.41300.76600.819300 | Internal Plumbing Works | 8d | 2026-01-06 | 2026-01-14 | 282, 296 |  | 7582013 |
| 299 | 37100.37300.37600.37900.38900.40300.41300.76600.819400 | Waterproofing | 10d | 2026-01-18 | 2026-01-28 | 283, 298 |  | 7582023 |
| 300 | 37100.37300.37600.37900.38900.40300.41300.76600.819500 | Internal Plaster | 5d | 2025-12-27 | 2026-01-01 | 284FS+0.25d |  | 7582033 |
| 301 | 37100.37300.37600.37900.38900.40300.41300.76600.819600 | IPS flooring work | 10d | 2026-01-28 | 2026-02-07 | 285, 297, 299, 300 |  | 7582043 |
| 302 | 37100.37300.37600.37900.38900.40300.41300.76600.819700 | Toilet dado work | 8d | 2026-01-26 | 2026-02-03 | 286FS+0.25d |  | 7582053 |
| 303 | 37100.37300.37600.37900.38900.40300.41300.76600.819800 | Toilet flooring work | 8d | 2026-02-03 | 2026-02-11 | 287, 302 |  | 7582063 |
| 304 | 37100.37300.37600.37900.38900.40300.41300.76600.819900 | Living dinning flooring | 15d | 2026-02-27 | 2026-03-14 | 288, 297, 303 |  | 7582073 |
| 305 | 37100.37300.37600.37900.38900.40300.41300.76600.820000 | Aluminium door-window fixing | 15d | 2026-03-26 | 2026-04-10 | 289, 301, 304 |  | 7582083 |
| 306 | 37100.37300.37600.37900.38900.40300.41300.76600.820100 | Putty primer coat | 6d | 2026-03-14 | 2026-03-20 | 290, 304 |  | 7582093 |
| 307 | 37100.37300.37600.37900.38900.40300.41300.76600.820200 | Door shutter fixing | 8d | 2026-03-14 | 2026-03-22 | 291, 304 |  | 7582103 |
| 308 | 37100.37300.37600.37900.38900.40300.41300.76600.820300 | Electrical wiring work | 8d | 2026-10-21 | 2026-10-29 | 292, 307 |  | 7582113 |
| 309 | 37100.37300.37600.37900.38900.40300.41300.76600.820400 | Painting 1st coat | 8d | 2026-10-29 | 2026-12-21 | 293, 306, 307, 308 |  | 7582123 |
| 310 | 37100.37300.37600.37900.38900.40300.41300.76600.820500 | False ceiling | 8d | 2026-12-21 | 2026-12-29 | 294, 309 |  | 7582133 |
| 311 | 37100.37300.37600.37900.38900.40300.41300.76500 | **4th Floor** | 319.81d | 2026-01-07 | 2027-01-06 |  | start no earlier than 2026-01-07 | 7567753 |
| 312 | 37100.37300.37600.37900.38900.40300.41300.76500.820600 | Block Work | 5d | 2026-01-07 | 2026-01-11 | 227, 296 |  | 7582143 |
| 313 | 37100.37300.37600.37900.38900.40300.41300.76500.820700 | Door Frame Fixing | 9d | 2026-01-17 | 2026-01-26 | 297, 312 |  | 7582153 |
| 314 | 37100.37300.37600.37900.38900.40300.41300.76500.820800 | Internal Plumbing Works | 8d | 2026-01-14 | 2026-01-22 | 298, 312 |  | 7582163 |
| 315 | 37100.37300.37600.37900.38900.40300.41300.76500.820900 | Waterproofing | 10d | 2026-01-28 | 2026-02-07 | 299, 314 |  | 7582173 |
| 316 | 37100.37300.37600.37900.38900.40300.41300.76500.821000 | Internal Plaster | 5d | 2026-02-07 | 2026-02-12 | 300, 313, 314, 315 |  | 7582183 |
| 317 | 37100.37300.37600.37900.38900.40300.41300.76500.821100 | IPS flooring work | 10d | 2026-02-12 | 2026-02-22 | 301, 313, 315, 316 |  | 7582193 |
| 318 | 37100.37300.37600.37900.38900.40300.41300.76500.821200 | Toilet dado work | 8d | 2026-02-12 | 2026-02-20 | 302, 315, 316 |  | 7582203 |
| 319 | 37100.37300.37600.37900.38900.40300.41300.76500.821300 | Toilet flooring work | 8d | 2026-02-20 | 2026-02-28 | 303, 318 |  | 7582213 |
| 320 | 37100.37300.37600.37900.38900.40300.41300.76500.821400 | Living dinning flooring | 7d | 2026-03-14 | 2026-03-21 | 304FS+0.25d |  | 7582223 |
| 321 | 37100.37300.37600.37900.38900.40300.41300.76500.821500 | Aluminium door-window fixing | 7d | 2026-04-10 | 2026-04-17 | 305, 317, 320 |  | 7582233 |
| 322 | 37100.37300.37600.37900.38900.40300.41300.76500.821600 | Putty primer coat | 6d | 2026-03-21 | 2026-03-27 | 306, 320 |  | 7582243 |
| 323 | 37100.37300.37600.37900.38900.40300.41300.76500.821700 | Door shutter fixing | 8d | 2026-03-22 | 2026-03-30 | 307, 320 |  | 7582253 |
| 324 | 37100.37300.37600.37900.38900.40300.41300.76500.821800 | Electrical wiring work | 8d | 2026-10-29 | 2026-12-21 | 308, 323 |  | 7582263 |
| 325 | 37100.37300.37600.37900.38900.40300.41300.76500.821900 | Painting 1st coat | 8d | 2026-12-21 | 2026-12-29 | 309, 322, 323, 324 |  | 7582273 |
| 326 | 37100.37300.37600.37900.38900.40300.41300.76500.822000 | False ceiling | 8d | 2026-12-29 | 2027-01-06 | 310, 325 |  | 7582283 |

| ID | WBS | Task | Duration | Start | Finish | Predecessors | Constraint | Unique_Task_ID |
| --- | --- | --- | --- | --- | --- | --- | --- | --- |
| 327 | 37100.37300.37600.37900.38900.40300.41300.76400 | **5th Floor** | 320.56d | 2026-01-14 | 2027-01-14 |  | start no earlier than 2026-01-14 | 7567763 |
| 328 | 37100.37300.37600.37900.38900.40300.41300.76400.822100 | Block Work | 5d | 2026-01-14 | 2026-01-19 | 228, 312 |  | 7582293 |
| 329 | 37100.37300.37600.37900.38900.40300.41300.76400.822200 | Door Frame Fixing | 9d | 2026-01-26 | 2026-02-04 | 313, 328 |  | 7582303 |
| 330 | 37100.37300.37600.37900.38900.40300.41300.76400.822300 | Internal Plumbing Works | 8d | 2026-01-22 | 2026-01-30 | 314, 328 |  | 7582313 |
| 331 | 37100.37300.37600.37900.38900.40300.41300.76400.822400 | Waterproofing | 10d | 2026-02-07 | 2026-02-17 | 315, 330 |  | 7582323 |
| 332 | 37100.37300.37600.37900.38900.40300.41300.76400.822500 | Internal Plaster | 5d | 2026-02-17 | 2026-02-22 | 316, 329, 330, 331 |  | 7582333 |
| 333 | 37100.37300.37600.37900.38900.40300.41300.76400.822600 | IPS flooring work | 10d | 2026-02-22 | 2026-03-04 | 317, 329, 331, 332 |  | 7582343 |
| 334 | 37100.37300.37600.37900.38900.40300.41300.76400.822700 | Toilet dado work | 8d | 2026-02-22 | 2026-03-02 | 318, 331, 332 |  | 7582353 |
| 335 | 37100.37300.37600.37900.38900.40300.41300.76400.822800 | Toilet flooring work | 8d | 2026-03-02 | 2026-03-10 | 319, 334 |  | 7582363 |
| 336 | 37100.37300.37600.37900.38900.40300.41300.76400.822900 | Living dinning flooring | 7d | 2026-03-21 | 2026-03-28 | 320, 329, 335 |  | 7582373 |
| 337 | 37100.37300.37600.37900.38900.40300.41300.76400.823000 | Aluminium door-window fixing | 7d | 2026-04-17 | 2026-04-24 | 321, 333, 336 |  | 7582383 |
| 338 | 37100.37300.37600.37900.38900.40300.41300.76400.823100 | Putty primer coat | 6d | 2026-03-28 | 2026-04-03 | 322, 336 |  | 7582393 |
| 339 | 37100.37300.37600.37900.38900.40300.41300.76400.823200 | Door shutter fixing | 8d | 2026-03-30 | 2026-04-07 | 323, 336 |  | 7582403 |
| 340 | 37100.37300.37600.37900.38900.40300.41300.76400.823300 | Electrical wiring work | 8d | 2026-12-21 | 2026-12-29 | 324, 339 |  | 7582413 |
| 341 | 37100.37300.37600.37900.38900.40300.41300.76400.823400 | Painting 1st coat | 8d | 2026-12-29 | 2027-01-06 | 325, 338, 339, 340 |  | 7582423 |
| 342 | 37100.37300.37600.37900.38900.40300.41300.76400.823500 | False ceiling | 8d | 2027-01-06 | 2027-01-14 | 326, 341 |  | 7582433 |
| 343 | 37100.37300.37600.37900.38900.40300.41300.76300 | **6th Floor** | 321.31d | 2026-01-21 | 2027-01-22 |  | start no earlier than 2026-01-21 | 7567773 |
| 344 | 37100.37300.37600.37900.38900.40300.41300.76300.823600 | Block Work | 5d | 2026-01-21 | 2026-01-26 | 229, 328 |  | 7582443 |
| 345 | 37100.37300.37600.37900.38900.40300.41300.76300.823700 | Door Frame Fixing | 9d | 2026-02-04 | 2026-02-13 | 77, 329 |  | 7582453 |
| 346 | 37100.37300.37600.37900.38900.40300.41300.76300.823800 | Internal Plumbing Works | 8d | 2026-01-30 | 2026-02-07 | 330, 344 |  | 7582463 |
| 347 | 37100.37300.37600.37900.38900.40300.41300.76300.823900 | Waterproofing | 10d | 2026-02-17 | 2026-02-27 | 331, 346 |  | 7582473 |
| 348 | 37100.37300.37600.37900.38900.40300.41300.76300.824000 | Internal Plaster | 5d | 2026-02-27 | 2026-03-04 | 332, 345, 346, 347 |  | 7582483 |
| 349 | 37100.37300.37600.37900.38900.40300.41300.76300.824100 | IPS flooring work | 10d | 2026-03-04 | 2026-03-14 | 333, 345, 347, 348 |  | 7582493 |
| 350 | 37100.37300.37600.37900.38900.40300.41300.76300.824200 | Toilet dado work | 8d | 2026-03-04 | 2026-03-12 | 334, 347, 348 |  | 7582503 |
| 351 | 37100.37300.37600.37900.38900.40300.41300.76300.824300 | Toilet flooring work | 8d | 2026-03-12 | 2026-03-20 | 335, 350 |  | 7582513 |
| 352 | 37100.37300.37600.37900.38900.40300.41300.76300.824400 | Living dinning flooring | 7d | 2026-03-28 | 2026-04-04 | 336, 345, 351 |  | 7582523 |
| 353 | 37100.37300.37600.37900.38900.40300.41300.76300.824500 | Aluminium door-window fixing | 7d | 2026-04-24 | 2026-05-01 | 337, 349, 352 |  | 7582533 |
| 354 | 37100.37300.37600.37900.38900.40300.41300.76300.824600 | Putty primer coat | 6d | 2026-04-04 | 2026-04-10 | 338, 352 |  | 7582543 |
| 355 | 37100.37300.37600.37900.38900.40300.41300.76300.824700 | Door shutter fixing | 8d | 2026-04-07 | 2026-04-15 | 339, 352 |  | 7582553 |
| 356 | 37100.37300.37600.37900.38900.40300.41300.76300.824800 | Electrical wiring work | 8d | 2026-12-29 | 2027-01-06 | 340, 355 |  | 7582563 |
| 357 | 37100.37300.37600.37900.38900.40300.41300.76300.824900 | Painting 1st coat | 8d | 2027-01-06 | 2027-01-14 | 341, 354, 355, 356 |  | 7582573 |
| 358 | 37100.37300.37600.37900.38900.40300.41300.76300.825000 | False ceiling | 8d | 2027-01-14 | 2027-01-22 | 342, 357 |  | 7582583 |

| ID | WBS | Task | Duration | Start | Finish | Predecessors | Constraint | Unique_Task_ID |
| --- | --- | --- | --- | --- | --- | --- | --- | --- |
| 359 | 37100.37300.37600.37900.38900.40300.41300.76200 | **7th Floor** | 329.06d | 2026-01-28 | 2027-02-06 |  | start no earlier than 2026-01-28 | 7567783 |
| 360 | 37100.37300.37600.37900.38900.40300.41300.76200.825100 | Block Work | 5d | 2026-01-28 | 2026-02-02 | 230, 344 |  | 7582593 |
| 361 | 37100.37300.37600.37900.38900.40300.41300.76200.825200 | Door Frame Fixing | 9d | 2026-02-13 | 2026-02-22 | 345, 360 |  | 7582603 |
| 362 | 37100.37300.37600.37900.38900.40300.41300.76200.825300 | Internal Plumbing Works | 8d | 2026-02-07 | 2026-02-15 | 346, 360 |  | 7582613 |
| 363 | 37100.37300.37600.37900.38900.40300.41300.76200.825400 | Waterproofing | 10d | 2026-02-27 | 2026-03-09 | 347, 362 |  | 7582623 |
| 364 | 37100.37300.37600.37900.38900.40300.41300.76200.825500 | Internal Plaster | 5d | 2026-03-09 | 2026-03-14 | 348, 361, 362, 363 |  | 7582633 |
| 365 | 37100.37300.37600.37900.38900.40300.41300.76200.825600 | IPS flooring work | 10d | 2026-03-14 | 2026-03-24 | 349, 361, 363, 364 |  | 7582643 |
| 366 | 37100.37300.37600.37900.38900.40300.41300.76200.825700 | Toilet dado work | 8d | 2026-03-14 | 2026-03-22 | 350, 363, 364 |  | 7582653 |
| 367 | 37100.37300.37600.37900.38900.40300.41300.76200.825800 | Toilet flooring work | 8d | 2026-03-22 | 2026-03-30 | 351, 366 |  | 7582663 |
| 368 | 37100.37300.37600.37900.38900.40300.41300.76200.825900 | Living dinning flooring | 7d | 2026-04-04 | 2026-04-11 | 352, 361, 367 |  | 7582673 |
| 369 | 37100.37300.37600.37900.38900.40300.41300.76200.826000 | Aluminium door-window fixing | 7d | 2026-05-01 | 2026-05-08 | 353, 365, 368 |  | 7582683 |
| 370 | 37100.37300.37600.37900.38900.40300.41300.76200.826100 | Putty primer coat | 6d | 2026-04-11 | 2026-04-17 | 354, 368 |  | 7582693 |
| 371 | 37100.37300.37600.37900.38900.40300.41300.76200.826200 | Door shutter fixing | 8d | 2026-04-15 | 2026-04-23 | 355, 368 |  | 7582703 |
| 372 | 37100.37300.37600.37900.38900.40300.41300.76200.826300 | Electrical wiring work | 15d | 2027-01-06 | 2027-01-21 | 356, 371 |  | 7582713 |
| 373 | 37100.37300.37600.37900.38900.40300.41300.76200.826400 | Painting 1st coat | 8d | 2027-01-21 | 2027-01-29 | 357, 370, 371, 372 |  | 7582723 |
| 374 | 37100.37300.37600.37900.38900.40300.41300.76200.826500 | False ceiling | 8d | 2027-01-29 | 2027-02-06 | 358, 373 |  | 7582733 |
| 375 | 37100.37300.37600.37900.38900.40300.41300.76100 | **8th Floor** | 336.81d | 2026-02-05 | 2027-02-21 |  | start no earlier than 2026-02-05 | 7567793 |
| 376 | 37100.37300.37600.37900.38900.40300.41300.76100.826600 | Block Work | 8d | 2026-02-05 | 2026-02-12 | 231, 360 |  | 7582743 |
| 377 | 37100.37300.37600.37900.38900.40300.41300.76100.826700 | Door Frame Fixing | 9d | 2026-02-22 | 2026-03-03 | 361, 376 |  | 7582753 |
| 378 | 37100.37300.37600.37900.38900.40300.41300.76100.826800 | Internal Plumbing Works | 8d | 2026-02-15 | 2026-02-23 | 362, 376 |  | 7582763 |
| 379 | 37100.37300.37600.37900.38900.40300.41300.76100.826900 | Waterproofing | 10d | 2026-03-09 | 2026-03-19 | 363, 378 |  | 7582773 |
| 380 | 37100.37300.37600.37900.38900.40300.41300.76100.827000 | Internal Plaster | 5d | 2026-03-19 | 2026-03-24 | 364, 377, 378, 379 |  | 7582783 |
| 381 | 37100.37300.37600.37900.38900.40300.41300.76100.827100 | IPS flooring work | 10d | 2026-03-24 | 2026-04-03 | 365, 377, 379, 380 |  | 7582793 |
| 382 | 37100.37300.37600.37900.38900.40300.41300.76100.827200 | Toilet dado work | 8d | 2026-03-24 | 2026-04-01 | 366, 379, 380 |  | 7582803 |
| 383 | 37100.37300.37600.37900.38900.40300.41300.76100.827300 | Toilet flooring work | 8d | 2026-04-01 | 2026-04-09 | 367, 382 |  | 7582813 |
| 384 | 37100.37300.37600.37900.38900.40300.41300.76100.827400 | Living dinning flooring | 7d | 2026-04-11 | 2026-04-18 | 368, 377, 383 |  | 7582823 |
| 385 | 37100.37300.37600.37900.38900.40300.41300.76100.827500 | Aluminium door-window fixing | 10d | 2026-05-08 | 2026-05-18 | 369, 381, 384 |  | 7582833 |
| 386 | 37100.37300.37600.37900.38900.40300.41300.76100.827600 | Putty primer coat | 6d | 2026-04-18 | 2026-04-24 | 370, 384 |  | 7582843 |
| 387 | 37100.37300.37600.37900.38900.40300.41300.76100.827700 | Door shutter fixing | 8d | 2026-04-23 | 2026-05-01 | 371, 384 |  | 7582853 |
| 388 | 37100.37300.37600.37900.38900.40300.41300.76100.827800 | Electrical wiring work | 15d | 2027-01-21 | 2027-02-05 | 372, 387 |  | 7582863 |
| 389 | 37100.37300.37600.37900.38900.40300.41300.76100.827900 | Painting 1st coat | 8d | 2027-02-05 | 2027-02-13 | 373, 386, 387, 388 |  | 7582873 |
| 390 | 37100.37300.37600.37900.38900.40300.41300.76100.828000 | False ceiling | 8d | 2027-02-13 | 2027-02-21 | 374, 389 |  | 7582883 |

| ID | WBS | Task | Duration | Start | Finish | Predecessors | Constraint | Unique_Task_ID |
| --- | --- | --- | --- | --- | --- | --- | --- | --- |
| 391 | 37100.37300.37600.37900.38900.40300.41300.76000 | **9th Floor** | 343.81d | 2026-02-13 | 2027-03-08 |  | start no earlier than 2026-02-13 | 7567803 |
| 392 | 37100.37300.37600.37900.38900.40300.41300.76000.828100 | Block Work | 8d | 2026-02-13 | 2026-02-20 | 232, 376 |  | 7582893 |
| 393 | 37100.37300.37600.37900.38900.40300.41300.76000.828200 | Door Frame Fixing | 9d | 2026-03-03 | 2026-03-12 | 377, 392 |  | 7582903 |
| 394 | 37100.37300.37600.37900.38900.40300.41300.76000.828300 | Internal Plumbing Works | 8d | 2026-02-23 | 2026-03-03 | 378, 392 |  | 7582913 |
| 395 | 37100.37300.37600.37900.38900.40300.41300.76000.828400 | Waterproofing | 10d | 2026-03-19 | 2026-03-29 | 379, 394 |  | 7582923 |
| 396 | 37100.37300.37600.37900.38900.40300.41300.76000.828500 | Internal Plaster | 5d | 2026-03-29 | 2026-04-03 | 380, 393, 394, 395 |  | 7582933 |
| 397 | 37100.37300.37600.37900.38900.40300.41300.76000.828600 | IPS flooring work | 10d | 2026-04-03 | 2026-04-13 | 381, 393, 395, 396 |  | 7582943 |
| 398 | 37100.37300.37600.37900.38900.40300.41300.76000.828700 | Toilet dado work | 8d | 2026-04-03 | 2026-04-11 | 382, 395, 396 |  | 7582953 |
| 399 | 37100.37300.37600.37900.38900.40300.41300.76000.828800 | Toilet flooring work | 8d | 2026-04-11 | 2026-04-19 | 383, 398 |  | 7582963 |
| 400 | 37100.37300.37600.37900.38900.40300.41300.76000.828900 | Living dinning flooring | 7d | 2026-04-19 | 2026-04-26 | 384, 393, 399 |  | 7582973 |
| 401 | 37100.37300.37600.37900.38900.40300.41300.76000.829000 | Aluminium door-window fixing | 10d | 2026-05-18 | 2026-05-28 | 385, 397, 400 |  | 7582983 |
| 402 | 37100.37300.37600.37900.38900.40300.41300.76000.829100 | Putty primer coat | 6d | 2026-04-26 | 2026-05-02 | 386, 400 |  | 7582993 |
| 403 | 37100.37300.37600.37900.38900.40300.41300.76000.829200 | Door shutter fixing | 8d | 2026-05-01 | 2026-05-09 | 387, 400 |  | 7583003 |
| 404 | 37100.37300.37600.37900.38900.40300.41300.76000.829300 | Electrical wiring work | 15d | 2027-02-05 | 2027-02-20 | 388, 403 |  | 7583013 |
| 405 | 37100.37300.37600.37900.38900.40300.41300.76000.829400 | Painting 1st coat | 8d | 2027-02-20 | 2027-02-28 | 389, 402, 403, 404 |  | 7583023 |
| 406 | 37100.37300.37600.37900.38900.40300.41300.76000.829500 | False ceiling | 8d | 2027-02-28 | 2027-03-08 | 390, 405 |  | 7583033 |
| 407 | 37100.37300.37600.37900.38900.40300.41300.75900 | **10th Floor** | 343.81d | 2026-02-21 | 2027-03-16 |  | start no earlier than 2026-02-21 | 7567813 |
| 408 | 37100.37300.37600.37900.38900.40300.41300.75900.829600 | Block Work | 8d | 2026-02-21 | 2026-02-28 | 233, 392 |  | 7583043 |
| 409 | 37100.37300.37600.37900.38900.40300.41300.75900.829700 | Door Frame Fixing | 9d | 2026-03-12 | 2026-03-21 | 393, 408 |  | 7583053 |
| 410 | 37100.37300.37600.37900.38900.40300.41300.75900.829800 | Internal Plumbing Works | 8d | 2026-03-03 | 2026-03-11 | 394, 408 |  | 7583063 |
| 411 | 37100.37300.37600.37900.38900.40300.41300.75900.829900 | Waterproofing | 10d | 2026-03-29 | 2026-04-08 | 395, 410 |  | 7583073 |
| 412 | 37100.37300.37600.37900.38900.40300.41300.75900.830000 | Internal Plaster | 5d | 2026-04-08 | 2026-04-13 | 396, 409, 410, 411 |  | 7583083 |
| 413 | 37100.37300.37600.37900.38900.40300.41300.75900.830100 | IPS flooring work | 10d | 2026-04-13 | 2026-04-23 | 397, 409, 411, 412 |  | 7583093 |
| 414 | 37100.37300.37600.37900.38900.40300.41300.75900.830200 | Toilet dado work | 8d | 2026-04-13 | 2026-04-21 | 398, 411, 412 |  | 7583103 |
| 415 | 37100.37300.37600.37900.38900.40300.41300.75900.830300 | Toilet flooring work | 8d | 2026-04-21 | 2026-04-29 | 399, 414 |  | 7583113 |
| 416 | 37100.37300.37600.37900.38900.40300.41300.75900.830400 | Living dinning flooring | 7d | 2026-04-29 | 2026-05-06 | 400, 409, 415 |  | 7583123 |
| 417 | 37100.37300.37600.37900.38900.40300.41300.75900.830500 | Aluminium door-window fixing | 10d | 2026-05-28 | 2026-06-07 | 401, 413, 416 |  | 7583133 |
| 418 | 37100.37300.37600.37900.38900.40300.41300.75900.830600 | Putty primer coat | 6d | 2026-05-06 | 2026-05-12 | 402, 416 |  | 7583143 |
| 419 | 37100.37300.37600.37900.38900.40300.41300.75900.830700 | Door shutter fixing | 8d | 2026-05-09 | 2026-05-17 | 403, 416 |  | 7583153 |
| 420 | 37100.37300.37600.37900.38900.40300.41300.75900.830800 | Electrical wiring work | 8d | 2027-02-20 | 2027-02-28 | 404, 419 |  | 7583163 |
| 421 | 37100.37300.37600.37900.38900.40300.41300.75900.830900 | Painting 1st coat | 8d | 2027-02-28 | 2027-03-08 | 405, 418, 419, 420 |  | 7583173 |
| 422 | 37100.37300.37600.37900.38900.40300.41300.75900.831000 | False ceiling | 8d | 2027-03-08 | 2027-03-16 | 406, 421 |  | 7583183 |

| ID | WBS | Task | Duration | Start | Finish | Predecessors | Constraint | Unique_Task_ID |
| --- | --- | --- | --- | --- | --- | --- | --- | --- |
| 423 | 37100.37300.37600.37900.38900.40300.41300.75800 | **11th Floor** | 343.81d | 2026-03-01 | 2027-03-24 |  | start no earlier than 2026-03-01 | 7567823 |
| 424 | 37100.37300.37600.37900.38900.40300.41300.75800.831100 | Block Work | 8d | 2026-03-01 | 2026-03-08 | 234, 408 |  | 7583193 |
| 425 | 37100.37300.37600.37900.38900.40300.41300.75800.831200 | Door Frame Fixing | 9d | 2026-03-21 | 2026-03-30 | 409, 424 |  | 7583203 |
| 426 | 37100.37300.37600.37900.38900.40300.41300.75800.831300 | Internal Plumbing Works | 8d | 2026-03-11 | 2026-03-19 | 410, 424 |  | 7583213 |
| 427 | 37100.37300.37600.37900.38900.40300.41300.75800.831400 | Waterproofing | 10d | 2026-04-08 | 2026-04-18 | 411, 426 |  | 7583223 |
| 428 | 37100.37300.37600.37900.38900.40300.41300.75800.831500 | Internal Plaster | 5d | 2026-04-18 | 2026-04-23 | 412, 425, 426, 427 |  | 7583233 |
| 429 | 37100.37300.37600.37900.38900.40300.41300.75800.831600 | IPS flooring work | 10d | 2026-04-23 | 2026-05-03 | 413, 425, 426, 427 |  | 7583243 |
| 430 | 37100.37300.37600.37900.38900.40300.41300.75800.831700 | Toilet dado work | 8d | 2026-04-23 | 2026-05-01 | 414, 427, 428 |  | 7583253 |
| 431 | 37100.37300.37600.37900.38900.40300.41300.75800.831800 | Toilet flooring work | 8d | 2026-05-01 | 2026-05-09 | 415, 430 |  | 7583263 |
| 432 | 37100.37300.37600.37900.38900.40300.41300.75800.831900 | Living dinning flooring | 7d | 2026-05-09 | 2026-05-16 | 416, 425, 431 |  | 7583273 |
| 433 | 37100.37300.37600.37900.38900.40300.41300.75800.832000 | Aluminium door-window fixing | 10d | 2026-06-07 | 2026-06-17 | 417, 429, 432 |  | 7583283 |
| 434 | 37100.37300.37600.37900.38900.40300.41300.75800.832100 | Putty primer coat | 6d | 2026-05-16 | 2026-05-22 | 418, 432 |  | 7583293 |
| 435 | 37100.37300.37600.37900.38900.40300.41300.75800.832200 | Door shutter fixing | 8d | 2026-05-17 | 2026-05-25 | 419, 432 |  | 7583303 |
| 436 | 37100.37300.37600.37900.38900.40300.41300.75800.832300 | Electrical wiring work | 8d | 2027-02-28 | 2027-03-08 | 420, 435 |  | 7583313 |
| 437 | 37100.37300.37600.37900.38900.40300.41300.75800.832400 | Painting 1st coat | 8d | 2027-03-08 | 2027-03-16 | 421, 434, 435, 436 |  | 7583323 |
| 438 | 37100.37300.37600.37900.38900.40300.41300.75800.832500 | False ceiling | 8d | 2027-03-16 | 2027-03-24 | 422, 437 |  | 7583333 |
| 439 | 37100.37300.37600.37900.38900.40300.41300.75700 | **12th Floor** | 343.81d | 2026-03-09 | 2027-04-01 |  | start no earlier than 2026-03-09 | 7567833 |
| 440 | 37100.37300.37600.37900.38900.40300.41300.75700.832600 | Block Work | 8d | 2026-03-09 | 2026-03-16 | 235, 424 |  | 7583343 |
| 441 | 37100.37300.37600.37900.38900.40300.41300.75700.832700 | Door Frame Fixing | 9d | 2026-03-30 | 2026-04-08 | 425, 440 |  | 7583353 |
| 442 | 37100.37300.37600.37900.38900.40300.41300.75700.832800 | Internal Plumbing Works | 8d | 2026-03-19 | 2026-03-27 | 426, 440 |  | 7583363 |
| 443 | 37100.37300.37600.37900.38900.40300.41300.75700.832900 | Waterproofing | 10d | 2026-04-18 | 2026-04-28 | 427, 442 |  | 7583373 |
| 444 | 37100.37300.37600.37900.38900.40300.41300.75700.833000 | Internal Plaster | 5d | 2026-04-28 | 2026-05-03 | 428, 441, 442, 443 |  | 7583383 |
| 445 | 37100.37300.37600.37900.38900.40300.41300.75700.833100 | IPS flooring work | 10d | 2026-05-03 | 2026-05-13 | 429, 441, 442, 443 |  | 7583393 |
| 446 | 37100.37300.37600.37900.38900.40300.41300.75700.833200 | Toilet dado work | 8d | 2026-05-03 | 2026-05-11 | 430, 443, 444 |  | 7583403 |
| 447 | 37100.37300.37600.37900.38900.40300.41300.75700.833300 | Toilet flooring work | 8d | 2026-05-11 | 2026-05-19 | 431, 446 |  | 7583413 |
| 448 | 37100.37300.37600.37900.38900.40300.41300.75700.833400 | Living dinning flooring | 7d | 2026-05-19 | 2026-05-26 | 432, 441, 447 |  | 7583423 |
| 449 | 37100.37300.37600.37900.38900.40300.41300.75700.833500 | Aluminium door-window fixing | 10d | 2026-06-17 | 2026-06-27 | 433, 445, 448 |  | 7583433 |
| 450 | 37100.37300.37600.37900.38900.40300.41300.75700.833600 | Putty primer coat | 6d | 2026-05-26 | 2026-06-01 | 434, 448 |  | 7583443 |
| 451 | 37100.37300.37600.37900.38900.40300.41300.75700.833700 | Door shutter fixing | 8d | 2026-05-26 | 2026-06-03 | 435, 448 |  | 7583453 |
| 452 | 37100.37300.37600.37900.38900.40300.41300.75700.833800 | Electrical wiring work | 8d | 2027-03-08 | 2027-03-16 | 436, 451 |  | 7583463 |
| 453 | 37100.37300.37600.37900.38900.40300.41300.75700.833900 | Painting 1st coat | 8d | 2027-03-16 | 2027-03-24 | 437, 450, 451, 452 |  | 7583473 |
| 454 | 37100.37300.37600.37900.38900.40300.41300.75700.834000 | False ceiling | 8d | 2027-03-24 | 2027-04-01 | 438, 453 |  | 7583483 |

| ID | WBS | Task | Duration | Start | Finish | Predecessors | Constraint | Unique_Task_ID |
| --- | --- | --- | --- | --- | --- | --- | --- | --- |
| 455 | 37100.37300.37600.37900.38900.40300.41300.75600 | **13th Floor** | 357.81d | 2026-03-17 | 2027-04-23 |  | start no earlier than 2026-03-17 | 7567843 |
| 456 | 37100.37300.37600.37900.38900.40300.41300.75600.834100 | Block Work | 8d | 2026-03-17 | 2026-03-24 | 236, 440 |  | 7583493 |
| 457 | 37100.37300.37600.37900.38900.40300.41300.75600.834200 | Door Frame Fixing | 9d | 2026-04-08 | 2026-04-17 | 441, 456 |  | 7583503 |
| 458 | 37100.37300.37600.37900.38900.40300.41300.75600.834300 | Internal Plumbing Works | 8d | 2026-03-27 | 2026-04-04 | 442, 456 |  | 7583513 |
| 459 | 37100.37300.37600.37900.38900.40300.41300.75600.834400 | Waterproofing | 10d | 2026-04-28 | 2026-05-08 | 443, 458 |  | 7583523 |
| 460 | 37100.37300.37600.37900.38900.40300.41300.75600.834500 | Internal Plaster | 5d | 2026-05-08 | 2026-05-13 | 444, 457, 458, 459 |  | 7583533 |
| 461 | 37100.37300.37600.37900.38900.40300.41300.75600.834600 | IPS flooring work | 10d | 2026-05-13 | 2026-05-23 | 445, 457, 459, 460 |  | 7583543 |
| 462 | 37100.37300.37600.37900.38900.40300.41300.75600.834700 | Toilet dado work | 8d | 2026-05-13 | 2026-05-21 | 446, 459, 460 |  | 7583553 |
| 463 | 37100.37300.37600.37900.38900.40300.41300.75600.834800 | Toilet flooring work | 8d | 2026-05-21 | 2026-05-29 | 447, 462 |  | 7583563 |
| 464 | 37100.37300.37600.37900.38900.40300.41300.75600.834900 | Living dinning flooring | 7d | 2026-05-29 | 2026-06-05 | 448, 457, 463 |  | 7583573 |
| 465 | 37100.37300.37600.37900.38900.40300.41300.75600.835000 | Aluminium door-window fixing | 12d | 2026-06-27 | 2026-07-09 | 449, 461, 464 |  | 7583583 |
| 466 | 37100.37300.37600.37900.38900.40300.41300.75600.835100 | Putty primer coat | 6d | 2026-06-05 | 2026-06-11 | 450, 464 |  | 7583593 |
| 467 | 37100.37300.37600.37900.38900.40300.41300.75600.835200 | Door shutter fixing | 8d | 2026-06-05 | 2026-06-13 | 451, 464 |  | 7583603 |
| 468 | 37100.37300.37600.37900.38900.40300.41300.75600.835300 | Electrical wiring work | 15d | 2027-03-16 | 2027-03-31 | 452, 467 |  | 7583613 |
| 469 | 37100.37300.37600.37900.38900.40300.41300.75600.835400 | Painting 1st coat | 15d | 2027-03-31 | 2027-04-15 | 453, 466, 467, 468 |  | 7583623 |
| 470 | 37100.37300.37600.37900.38900.40300.41300.75600.835500 | False ceiling | 8d | 2027-04-15 | 2027-04-23 | 454, 469 |  | 7583633 |
| 471 | 37100.37300.37600.37900.38900.40300.41300.75500 | **14th Floor** | 357.56d | 2026-03-25 | 2027-05-01 |  | start no earlier than 2026-03-25 | 7567853 |
| 472 | 37100.37300.37600.37900.38900.40300.41300.75500.835600 | Block Work | 5d | 2026-03-25 | 2026-03-30 | 456FS+0.25d |  | 7583643 |
| 473 | 37100.37300.37600.37900.38900.40300.41300.75500.835700 | Door Frame Fixing | 9d | 2026-04-17 | 2026-04-26 | 457, 472 |  | 7583653 |
| 474 | 37100.37300.37600.37900.38900.40300.41300.75500.835800 | Internal Plumbing Works | 8d | 2026-04-04 | 2026-04-12 | 458, 472 |  | 7583663 |
| 475 | 37100.37300.37600.37900.38900.40300.41300.75500.835900 | Waterproofing | 10d | 2026-05-08 | 2026-05-18 | 459, 474 |  | 7583673 |
| 476 | 37100.37300.37600.37900.38900.40300.41300.75500.836000 | Internal Plaster | 5d | 2026-05-13 | 2026-05-18 | 460FS+0.25d |  | 7583683 |
| 477 | 37100.37300.37600.37900.38900.40300.41300.75500.836100 | IPS flooring work | 10d | 2026-05-23 | 2026-06-02 | 461FS+0.25d |  | 7583693 |
| 478 | 37100.37300.37600.37900.38900.40300.41300.75500.836200 | Toilet dado work | 8d | 2026-05-21 | 2026-05-29 | 462, 475, 476 |  | 7583703 |
| 479 | 37100.37300.37600.37900.38900.40300.41300.75500.836300 | Toilet flooring work | 8d | 2026-05-29 | 2026-06-06 | 463, 478 |  | 7583713 |
| 480 | 37100.37300.37600.37900.38900.40300.41300.75500.836400 | Living dinning flooring | 7d | 2026-06-05 | 2026-06-12 | 464FS+0.25d |  | 7583723 |
| 481 | 37100.37300.37600.37900.38900.40300.41300.75500.836500 | Aluminium door-window fixing | 10d | 2026-07-09 | 2026-07-19 | 465FS+0.25d |  | 7583733 |
| 482 | 37100.37300.37600.37900.38900.40300.41300.75500.836600 | Putty primer coat | 6d | 2026-06-12 | 2026-06-18 | 466, 480 |  | 7583743 |
| 483 | 37100.37300.37600.37900.38900.40300.41300.75500.836700 | Door shutter fixing | 8d | 2026-06-13 | 2026-06-21 | 467, 480 |  | 7583753 |
| 484 | 37100.37300.37600.37900.38900.40300.41300.75500.836800 | Electrical wiring work | 8d | 2027-03-31 | 2027-04-08 | 468, 483 |  | 7583763 |
| 485 | 37100.37300.37600.37900.38900.40300.41300.75500.836900 | Painting 1st coat | 8d | 2027-04-15 | 2027-04-23 | 469, 482, 483, 484 |  | 7583773 |
| 486 | 37100.37300.37600.37900.38900.40300.41300.75500.837000 | False ceiling | 8d | 2027-04-23 | 2027-05-01 | 470, 485 |  | 7583783 |

| ID | WBS | Task | Duration | Start | Finish | Predecessors | Constraint | Unique_Task_ID |
| --- | --- | --- | --- | --- | --- | --- | --- | --- |
| 487 | 37100.37300.37600.37900.38900.40300.41300.75400 | **15th Floor** | 360.31d | 2026-03-30 | 2027-05-09 |  | start no earlier than 2026-03-30 | 7567863 |
| 488 | 37100.37300.37600.37900.38900.40300.41300.75400.837100 | Block Work | 8d | 2026-03-30 | 2026-04-07 | 472FS+0.25d |  | 7583793 |
| 489 | 37100.37300.37600.37900.38900.40300.41300.75400.837200 | Door Frame Fixing | 9d | 2026-04-26 | 2026-05-05 | 473, 488 |  | 7583803 |
| 490 | 37100.37300.37600.37900.38900.40300.41300.75400.837300 | Internal Plumbing Works | 8d | 2026-04-12 | 2026-04-20 | 474, 488 |  | 7583813 |
| 491 | 37100.37300.37600.37900.38900.40300.41300.75400.837400 | Waterproofing | 10d | 2026-05-18 | 2026-05-28 | 475, 490 |  | 7583823 |
| 492 | 37100.37300.37600.37900.38900.40300.41300.75400.837500 | Internal Plaster | 53.81d | 2026-05-18 | 2026-07-11 | 476FS+0.25d |  | 7583833 |
| 493 | 37100.37300.37600.37900.38900.40300.41300.75400.837600 | IPS flooring work | 10d | 2026-06-02 | 2026-06-12 | 477, 489, 490, 491 |  | 7583843 |
| 494 | 37100.37300.37600.37900.38900.40300.41300.75400.837700 | Toilet dado work | 8d | 2026-07-11 | 2026-07-19 | 478, 491, 492 |  | 7583853 |
| 495 | 37100.37300.37600.37900.38900.40300.41300.75400.837800 | Toilet flooring work | 8d | 2026-07-19 | 2026-07-27 | 479, 494 |  | 7583863 |
| 496 | 37100.37300.37600.37900.38900.40300.41300.75400.837900 | Living dinning flooring | 7d | 2026-06-12 | 2026-06-19 | 480FS+0.25d |  | 7583873 |
| 497 | 37100.37300.37600.37900.38900.40300.41300.75400.838000 | Aluminium door-window fixing | 10d | 2026-07-19 | 2026-07-29 | 481FS+0.25d |  | 7583883 |
| 498 | 37100.37300.37600.37900.38900.40300.41300.75400.838100 | Putty primer coat | 6d | 2026-06-19 | 2026-06-25 | 482, 496 |  | 7583893 |
| 499 | 37100.37300.37600.37900.38900.40300.41300.75400.838200 | Door shutter fixing | 8d | 2026-06-21 | 2026-06-29 | 483, 496 |  | 7583903 |
| 500 | 37100.37300.37600.37900.38900.40300.41300.75400.838300 | Electrical wiring work | 8d | 2027-04-08 | 2027-04-16 | 484, 499 |  | 7583913 |
| 501 | 37100.37300.37600.37900.38900.40300.41300.75400.838400 | Painting 1st coat | 8d | 2027-04-23 | 2027-05-01 | 485, 498, 499, 500 |  | 7583923 |
| 502 | 37100.37300.37600.37900.38900.40300.41300.75400.838500 | False ceiling | 8d | 2027-05-01 | 2027-05-09 | 486, 501 |  | 7583933 |
| 503 | 37100.37300.37600.37900.38900.40300.41300.75300 | **16th Floor** | 360.06d | 2026-04-07 | 2027-05-17 |  | start no earlier than 2026-04-07 | 7567873 |
| 504 | 37100.37300.37600.37900.38900.40300.41300.75300.838600 | Block Work | 8d | 2026-04-07 | 2026-04-15 | 488FS+0.25d |  | 7583943 |
| 505 | 37100.37300.37600.37900.38900.40300.41300.75300.838700 | Door Frame Fixing | 9d | 2026-05-05 | 2026-05-14 | 489, 504 |  | 7583953 |
| 506 | 37100.37300.37600.37900.38900.40300.41300.75300.838800 | Internal Plumbing Works | 8d | 2026-04-20 | 2026-04-28 | 490, 504 |  | 7583963 |
| 507 | 37100.37300.37600.37900.38900.40300.41300.75300.838900 | Waterproofing | 10d | 2026-05-28 | 2026-06-07 | 491, 506 |  | 7583973 |
| 508 | 37100.37300.37600.37900.38900.40300.41300.75300.839000 | Internal Plaster | 5d | 2026-07-11 | 2026-07-16 | 492FS+0.25d |  | 7583983 |
| 509 | 37100.37300.37600.37900.38900.40300.41300.75300.839100 | IPS flooring work | 10d | 2026-06-12 | 2026-06-22 | 493, 505, 506, 507 |  | 7583993 |
| 510 | 37100.37300.37600.37900.38900.40300.41300.75300.839200 | Toilet dado work | 8d | 2026-07-19 | 2026-07-27 | 494, 507, 508 |  | 7584003 |
| 511 | 37100.37300.37600.37900.38900.40300.41300.75300.839300 | Toilet flooring work | 8d | 2026-07-27 | 2026-08-04 | 495, 510 |  | 7584013 |
| 512 | 37100.37300.37600.37900.38900.40300.41300.75300.839400 | Living dinning flooring | 7d | 2026-06-20 | 2026-06-26 | 496FS+0.25d |  | 7584023 |
| 513 | 37100.37300.37600.37900.38900.40300.41300.75300.839500 | Aluminium door-window fixing | 10d | 2026-07-30 | 2026-08-08 | 497FS+0.25d |  | 7584033 |
| 514 | 37100.37300.37600.37900.38900.40300.41300.75300.839600 | Putty primer coat | 6d | 2026-06-27 | 2026-07-02 | 498, 512 |  | 7584043 |
| 515 | 37100.37300.37600.37900.38900.40300.41300.75300.839700 | Door shutter fixing | 8d | 2026-06-29 | 2026-07-07 | 499, 512 |  | 7584053 |
| 516 | 37100.37300.37600.37900.38900.40300.41300.75300.839800 | Electrical wiring work | 8d | 2027-04-16 | 2027-04-24 | 500, 515 |  | 7584063 |
| 517 | 37100.37300.37600.37900.38900.40300.41300.75300.839900 | Painting 1st coat | 8d | 2027-05-01 | 2027-05-09 | 501, 514, 515, 516 |  | 7584073 |
| 518 | 37100.37300.37600.37900.38900.40300.41300.75300.840000 | False ceiling | 8d | 2027-05-09 | 2027-05-17 | 502, 517 |  | 7584083 |

| ID | WBS | Task | Duration | Start | Finish | Predecessors | Constraint | Unique_Task_ID |
| --- | --- | --- | --- | --- | --- | --- | --- | --- |
| 519 | 37100.37300.37600.37900.38900.40300.41300.75200 | **17th Floor** | 359.81d | 2026-04-16 | 2027-05-25 |  | start no earlier than 2026-04-16 | 7567883 |
| 520 | 37100.37300.37600.37900.38900.40300.41300.75200.840100 | Block Work | 8d | 2026-04-16 | 2026-04-23 | 504FS+0.25d |  | 7584093 |
| 521 | 37100.37300.37600.37900.38900.40300.41300.75200.840200 | Door Frame Fixing | 9d | 2026-05-14 | 2026-05-23 | 505, 520 |  | 7584103 |
| 522 | 37100.37300.37600.37900.38900.40300.41300.75200.840300 | Internal Plumbing Works | 8d | 2026-04-28 | 2026-05-06 | 506, 520 |  | 7584113 |
| 523 | 37100.37300.37600.37900.38900.40300.41300.75200.840400 | Waterproofing | 10d | 2026-06-07 | 2026-06-17 | 507, 522 |  | 7584123 |
| 524 | 37100.37300.37600.37900.38900.40300.41300.75200.840500 | Internal Plaster | 5d | 2026-07-17 | 2026-07-22 | 508FS+0.25d |  | 7584133 |
| 525 | 37100.37300.37600.37900.38900.40300.41300.75200.840600 | IPS flooring work | 10d | 2026-06-22 | 2026-07-02 | 509, 521, 522, 523 |  | 7584143 |
| 526 | 37100.37300.37600.37900.38900.40300.41300.75200.840700 | Toilet dado work | 8d | 2026-07-27 | 2026-08-04 | 510, 523, 524 |  | 7584153 |
| 527 | 37100.37300.37600.37900.38900.40300.41300.75200.840800 | Toilet flooring work | 8d | 2026-08-04 | 2026-08-12 | 511, 526 |  | 7584163 |
| 528 | 37100.37300.37600.37900.38900.40300.41300.75200.840900 | Living dinning flooring | 7d | 2026-06-27 | 2026-07-04 | 512FS+0.25d |  | 7584173 |
| 529 | 37100.37300.37600.37900.38900.40300.41300.75200.841000 | Aluminium door-window fixing | 10d | 2026-08-09 | 2026-08-19 | 513FS+0.25d |  | 7584183 |
| 530 | 37100.37300.37600.37900.38900.40300.41300.75200.841100 | Putty primer coat | 6d | 2026-07-04 | 2026-07-10 | 514, 528 |  | 7584193 |
| 531 | 37100.37300.37600.37900.38900.40300.41300.75200.841200 | Door shutter fixing | 8d | 2026-07-07 | 2026-07-15 | 515, 528 |  | 7584203 |
| 532 | 37100.37300.37600.37900.38900.40300.41300.75200.841300 | Electrical wiring work | 8d | 2027-04-24 | 2027-05-02 | 516, 531 |  | 7584213 |
| 533 | 37100.37300.37600.37900.38900.40300.41300.75200.841400 | Painting 1st coat | 8d | 2027-05-09 | 2027-05-17 | 517, 530, 531, 532 |  | 7584223 |
| 534 | 37100.37300.37600.37900.38900.40300.41300.75200.841500 | False ceiling | 8d | 2027-05-17 | 2027-05-25 | 518, 533 |  | 7584233 |
| 535 | 37100.37300.37600.37900.38900.40300.41300.75100 | **18th Floor** | 359.56d | 2026-04-24 | 2027-06-02 |  | start no earlier than 2026-04-24 | 7567893 |
| 536 | 37100.37300.37600.37900.38900.40300.41300.75100.841600 | Block Work | 8d | 2026-04-24 | 2026-05-02 | 520FS+0.25d |  | 7584243 |
| 537 | 37100.37300.37600.37900.38900.40300.41300.75100.841700 | Door Frame Fixing | 9d | 2026-05-23 | 2026-06-01 | 521, 536 |  | 7584253 |
| 538 | 37100.37300.37600.37900.38900.40300.41300.75100.841800 | Internal Plumbing Works | 8d | 2026-05-06 | 2026-05-14 | 522, 536 |  | 7584263 |
| 539 | 37100.37300.37600.37900.38900.40300.41300.75100.841900 | Waterproofing | 10d | 2026-06-17 | 2026-06-27 | 523, 538 |  | 7584273 |
| 540 | 37100.37300.37600.37900.38900.40300.41300.75100.842000 | Internal Plaster | 5d | 2026-07-22 | 2026-07-27 | 524FS+0.25d |  | 7584283 |
| 541 | 37100.37300.37600.37900.38900.40300.41300.75100.842100 | IPS flooring work | 10d | 2026-07-02 | 2026-07-12 | 525, 537, 538, 539 |  | 7584293 |
| 542 | 37100.37300.37600.37900.38900.40300.41300.75100.842200 | Toilet dado work | 8d | 2026-08-04 | 2026-08-12 | 526, 539, 540 |  | 7584303 |
| 543 | 37100.37300.37600.37900.38900.40300.41300.75100.842300 | Toilet flooring work | 8d | 2026-08-12 | 2026-08-20 | 527, 542 |  | 7584313 |
| 544 | 37100.37300.37600.37900.38900.40300.41300.75100.842400 | Living dinning flooring | 7d | 2026-07-04 | 2026-07-11 | 528FS+0.25d |  | 7584323 |
| 545 | 37100.37300.37600.37900.38900.40300.41300.75100.842500 | Aluminium door-window fixing | 7d | 2026-08-19 | 2026-08-26 | 529, 541, 544 |  | 7584333 |
| 546 | 37100.37300.37600.37900.38900.40300.41300.75100.842600 | Putty primer coat | 6d | 2026-07-11 | 2026-07-17 | 530, 544 |  | 7584343 |
| 547 | 37100.37300.37600.37900.38900.40300.41300.75100.842700 | Door shutter fixing | 8d | 2026-07-15 | 2026-07-23 | 531, 544 |  | 7584353 |
| 548 | 37100.37300.37600.37900.38900.40300.41300.75100.842800 | Electrical wiring work | 8d | 2027-05-02 | 2027-05-10 | 532, 547 |  | 7584363 |
| 549 | 37100.37300.37600.37900.38900.40300.41300.75100.842900 | Painting 1st coat | 8d | 2027-05-17 | 2027-05-25 | 533, 546, 547, 548 |  | 7584373 |
| 550 | 37100.37300.37600.37900.38900.40300.41300.75100.843000 | False ceiling | 8d | 2027-05-25 | 2027-06-02 | 534, 549 |  | 7584383 |

| ID | WBS | Task | Duration | Start | Finish | Predecessors | Constraint | Unique_Task_ID |
| --- | --- | --- | --- | --- | --- | --- | --- | --- |
| 551 | 37100.37300.37600.37900.38900.40300.41300.68000 | **19th Floor** | 359.31d | 2026-05-02 | 2027-06-10 |  | start no earlier than 2026-05-02 | 7567903 |
| 552 | 37100.37300.37600.37900.38900.40300.41300.68000.843100 | Block Work | 8d | 2026-05-02 | 2026-05-10 | 536FS+0.25d |  | 7584393 |
| 553 | 37100.37300.37600.37900.38900.40300.41300.68000.843200 | Door Frame Fixing | 9d | 2026-06-01 | 2026-06-10 | 537, 552 |  | 7584403 |
| 554 | 37100.37300.37600.37900.38900.40300.41300.68000.843300 | Internal Plumbing Works | 8d | 2026-05-14 | 2026-05-22 | 538, 552 |  | 7584413 |
| 555 | 37100.37300.37600.37900.38900.40300.41300.68000.843400 | Waterproofing | 10d | 2026-06-27 | 2026-07-07 | 539, 554 |  | 7584423 |
| 556 | 37100.37300.37600.37900.38900.40300.41300.68000.843500 | Internal Plaster | 8d | 2026-07-27 | 2026-08-04 | 540FS+0.25d |  | 7584424 |
| 557 | 37100.37300.37600.37900.38900.40300.41300.68000.843600 | Internal Plaster | 9d | 2026-08-04 | 2026-08-13 | 540, 553, 554, 555, 556 |  | 7584433 |
| 558 | 37100.37300.37600.37900.38900.40300.41300.68000.843700 | IPS flooring work | 10d | 2026-08-13 | 2026-08-23 | 541, 553, 555, 557 |  | 7584443 |
| 559 | 37100.37300.37600.37900.38900.40300.41300.68000.843800 | Toilet dado work | 8d | 2026-08-13 | 2026-08-21 | 542, 555, 557 |  | 7584453 |
| 560 | 37100.37300.37600.37900.38900.40300.41300.68000.843900 | Toilet flooring work | 8d | 2026-08-21 | 2026-08-29 | 543, 559 |  | 7584463 |
| 561 | 37100.37300.37600.37900.38900.40300.41300.68000.844000 | Living dinning flooring | 7d | 2026-07-11 | 2026-07-18 | 544FS+0.25d |  | 7584473 |
| 562 | 37100.37300.37600.37900.38900.40300.41300.68000.844100 | Aluminium door-window fixing | 10d | 2026-08-26 | 2026-09-05 | 545, 558, 561 |  | 7584483 |
| 563 | 37100.37300.37600.37900.38900.40300.41300.68000.844200 | Putty primer coat | 6d | 2026-07-18 | 2026-07-24 | 546, 561 |  | 7584493 |
| 564 | 37100.37300.37600.37900.38900.40300.41300.68000.844300 | Door shutter fixing | 8d | 2026-07-23 | 2026-07-31 | 547, 561 |  | 7584503 |
| 565 | 37100.37300.37600.37900.38900.40300.41300.68000.844400 | Electrical wiring work | 8d | 2027-05-10 | 2027-05-18 | 548, 564 |  | 7584513 |
| 566 | 37100.37300.37600.37900.38900.40300.41300.68000.844500 | Painting 1st coat | 8d | 2027-05-25 | 2027-06-02 | 549, 563, 564, 565 |  | 7584523 |
| 567 | 37100.37300.37600.37900.38900.40300.41300.68000.844600 | False ceiling | 8d | 2027-06-02 | 2027-06-10 | 550, 566 |  | 7584533 |
| 568 | 37100.37300.37600.37900.38900.40300.41300.61000 | **20th Floor** | 359.06d | 2026-05-10 | 2027-06-18 |  | start no earlier than 2026-05-10 | 7567913 |
| 569 | 37100.37300.37600.37900.38900.40300.41300.61000.844700 | Block Work | 8d | 2026-05-10 | 2026-05-18 | 552FS+0.25d |  | 7584543 |
| 570 | 37100.37300.37600.37900.38900.40300.41300.61000.844800 | Door Frame Fixing | 9d | 2026-06-10 | 2026-06-19 | 553, 569 |  | 7584553 |
| 571 | 37100.37300.37600.37900.38900.40300.41300.61000.844900 | Internal Plumbing Works | 8d | 2026-05-22 | 2026-05-30 | 554, 569 |  | 7584563 |
| 572 | 37100.37300.37600.37900.38900.40300.41300.61000.845000 | Waterproofing | 10d | 2026-07-07 | 2026-07-17 | 555, 571 |  | 7584573 |
| 573 | 37100.37300.37600.37900.38900.40300.41300.61000.845100 | Internal Plaster | 5d | 2026-08-13 | 2026-08-18 | 557FS+0.25d |  | 7584583 |
| 574 | 37100.37300.37600.37900.38900.40300.41300.61000.845200 | IPS flooring work | 10d | 2026-08-23 | 2026-09-02 | 558, 570, 572, 573 |  | 7584593 |
| 575 | 37100.37300.37600.37900.38900.40300.41300.61000.845300 | Toilet dado work | 8d | 2026-08-21 | 2026-08-29 | 559, 572, 573 |  | 7584603 |
| 576 | 37100.37300.37600.37900.38900.40300.41300.61000.845400 | Toilet flooring work | 8d | 2026-08-29 | 2026-09-06 | 560, 575 |  | 7584613 |
| 577 | 37100.37300.37600.37900.38900.40300.41300.61000.845500 | Living dinning flooring | 7d | 2026-07-19 | 2026-07-25 | 561FS+0.25d |  | 7584623 |
| 578 | 37100.37300.37600.37900.38900.40300.41300.61000.845600 | Aluminium door-window fixing | 7d | 2026-09-05 | 2026-09-12 | 562, 574, 577 |  | 7584633 |
| 579 | 37100.37300.37600.37900.38900.40300.41300.61000.845700 | Putty primer coat | 6d | 2026-07-26 | 2026-07-31 | 563, 577 |  | 7584643 |
| 580 | 37100.37300.37600.37900.38900.40300.41300.61000.845800 | Door shutter fixing | 8d | 2026-07-31 | 2026-08-08 | 564, 577 |  | 7584653 |
| 581 | 37100.37300.37600.37900.38900.40300.41300.61000.845900 | Electrical wiring work | 8d | 2027-05-18 | 2027-05-26 | 565, 580 |  | 7584663 |
| 582 | 37100.37300.37600.37900.38900.40300.41300.61000.846000 | Painting 1st coat | 8d | 2027-06-02 | 2027-06-10 | 566, 579, 580, 581 |  | 7584673 |
| 583 | 37100.37300.37600.37900.38900.40300.41300.61000.846100 | False ceiling | 8d | 2027-06-10 | 2027-06-18 | 567, 582 |  | 7584683 |

| ID | WBS | Task | Duration | Start | Finish | Predecessors | Constraint | Unique_Task_ID |
| --- | --- | --- | --- | --- | --- | --- | --- | --- |
| 584 | 37100.37300.37600.37900.38900.40300.41300.60900 | **21st Floor** | 358.81d | 2026-05-19 | 2027-06-26 |  | start no earlier than 2026-05-19 | 7567923 |
| 585 | 37100.37300.37600.37900.38900.40300.41300.60900.846200 | Block Work | 8d | 2026-05-19 | 2026-05-26 | 569FS+0.25d |  | 7584693 |
| 586 | 37100.37300.37600.37900.38900.40300.41300.60900.846300 | Door Frame Fixing | 9d | 2026-06-19 | 2026-06-28 | 570, 585 |  | 7584703 |
| 587 | 37100.37300.37600.37900.38900.40300.41300.60900.846400 | Internal Plumbing Works | 8d | 2026-05-30 | 2026-06-07 | 571FS+0.25d |  | 7584713 |
| 588 | 37100.37300.37600.37900.38900.40300.41300.60900.846500 | Waterproofing | 10d | 2026-07-17 | 2026-07-27 | 572, 587 |  | 7584723 |
| 589 | 37100.37300.37600.37900.38900.40300.41300.60900.846600 | Internal Plaster | 8d | 2026-05-27 | 2026-06-04 | 585FS+0.25d |  | 7584733 |
| 590 | 37100.37300.37600.37900.38900.40300.41300.60900.846700 | IPS flooring work | 10d | 2026-09-02 | 2026-09-12 | 574FS+0.25d |  | 7584743 |
| 591 | 37100.37300.37600.37900.38900.40300.41300.60900.846800 | Toilet dado work | 8d | 2026-08-29 | 2026-09-06 | 575, 588, 589 |  | 7584753 |
| 592 | 37100.37300.37600.37900.38900.40300.41300.60900.846900 | Toilet flooring work | 8d | 2026-09-06 | 2026-09-14 | 576, 591 |  | 7584763 |
| 593 | 37100.37300.37600.37900.38900.40300.41300.60900.847000 | Living dinning flooring | 12d | 2026-07-26 | 2026-08-07 | 577FS+0.25d |  | 7584773 |
| 594 | 37100.37300.37600.37900.38900.40300.41300.60900.847100 | Aluminium door-window fixing | 12d | 2026-09-12 | 2026-09-24 | 578, 590, 593 |  | 7584783 |
| 595 | 37100.37300.37600.37900.38900.40300.41300.60900.847200 | Putty primer coat | 6d | 2026-08-07 | 2026-08-13 | 579, 593 |  | 7584793 |
| 596 | 37100.37300.37600.37900.38900.40300.41300.60900.847300 | Door shutter fixing | 8d | 2026-08-08 | 2026-08-16 | 580, 593 |  | 7584803 |
| 597 | 37100.37300.37600.37900.38900.40300.41300.60900.847400 | Electrical wiring work | 8d | 2027-05-26 | 2027-06-03 | 581, 596 |  | 7584813 |
| 598 | 37100.37300.37600.37900.38900.40300.41300.60900.847500 | Painting 1st coat | 8d | 2027-06-10 | 2027-06-18 | 582, 595, 596, 597 |  | 7584823 |
| 599 | 37100.37300.37600.37900.38900.40300.41300.60900.847600 | False ceiling | 8d | 2027-06-18 | 2027-06-26 | 583, 598 |  | 7584833 |
| 600 | 37100.37300.37600.37900.38900.40300.41300.59500 | **22nd Floor** | 358.56d | 2026-05-27 | 2027-07-04 |  | start no earlier than 2026-05-27 | 7567933 |
| 601 | 37100.37300.37600.37900.38900.40300.41300.59500.847700 | Block Work | 8d | 2026-05-27 | 2026-06-04 | 585FS+0.25d |  | 7584843 |
| 602 | 37100.37300.37600.37900.38900.40300.41300.59500.847800 | Door Frame Fixing | 9d | 2026-06-28 | 2026-07-07 | 586, 601 |  | 7584853 |
| 603 | 37100.37300.37600.37900.38900.40300.41300.59500.847900 | Internal Plumbing Works | 8d | 2026-06-07 | 2026-06-15 | 587, 601 |  | 7584863 |
| 604 | 37100.37300.37600.37900.38900.40300.41300.59500.848000 | Waterproofing | 10d | 2026-07-27 | 2026-08-06 | 588, 603 |  | 7584873 |
| 605 | 37100.37300.37600.37900.38900.40300.41300.59500.848100 | Internal Plaster | 5d | 2026-06-04 | 2026-06-09 | 589FS+0.25d |  | 7584883 |
| 606 | 37100.37300.37600.37900.38900.40300.41300.59500.848200 | IPS flooring work | 10d | 2026-09-12 | 2026-09-22 | 590, 602, 604, 605 |  | 7584893 |
| 607 | 37100.37300.37600.37900.38900.40300.41300.59500.848300 | Toilet dado work | 8d | 2026-09-06 | 2026-09-14 | 591, 604, 605 |  | 7584903 |
| 608 | 37100.37300.37600.37900.38900.40300.41300.59500.848400 | Toilet flooring work | 8d | 2026-09-14 | 2026-09-22 | 592, 607 |  | 7584913 |
| 609 | 37100.37300.37600.37900.38900.40300.41300.59500.848500 | Living dinning flooring | 7d | 2026-09-22 | 2026-09-29 | 593, 602, 608 |  | 7584923 |
| 610 | 37100.37300.37600.37900.38900.40300.41300.59500.848600 | Aluminium door-window fixing | 7d | 2026-09-29 | 2026-10-06 | 594, 606, 609 |  | 7584933 |
| 611 | 37100.37300.37600.37900.38900.40300.41300.59500.848700 | Putty primer coat | 6d | 2026-09-29 | 2026-10-05 | 595, 609 |  | 7584943 |
| 612 | 37100.37300.37600.37900.38900.40300.41300.59500.848800 | Door shutter fixing | 8d | 2026-09-29 | 2026-10-07 | 596, 609 |  | 7584953 |
| 613 | 37100.37300.37600.37900.38900.40300.41300.59500.848900 | Electrical wiring work | 8d | 2027-06-03 | 2027-06-11 | 597, 612 |  | 7584963 |
| 614 | 37100.37300.37600.37900.38900.40300.41300.59500.849000 | Painting 1st coat | 8d | 2027-06-18 | 2027-06-26 | 598, 611, 612, 613 |  | 7584973 |
| 615 | 37100.37300.37600.37900.38900.40300.41300.59500.849100 | False ceiling | 8d | 2027-06-26 | 2027-07-04 | 599, 614 |  | 7584983 |

| ID | WBS | Task | Duration | Start | Finish | Predecessors | Constraint | Unique_Task_ID |
| --- | --- | --- | --- | --- | --- | --- | --- | --- |
| 616 | 37100.37300.37600.37900.38900.40300.41300.59600 | **23rd Floor** | 358.31d | 2026-06-04 | 2027-07-12 |  | start no earlier than 2026-06-04 | 7567943 |
| 617 | 37100.37300.37600.37900.38900.40300.41300.59600.849200 | Block Work | 8d | 2026-06-04 | 2026-06-12 | 601FS+0.25d |  | 7584993 |
| 618 | 37100.37300.37600.37900.38900.40300.41300.59600.849300 | Door Frame Fixing | 9d | 2026-07-07 | 2026-07-16 | 602, 617 |  | 7585003 |
| 619 | 37100.37300.37600.37900.38900.40300.41300.59600.849400 | Internal Plumbing Works | 8d | 2026-06-15 | 2026-06-23 | 603, 617 |  | 7585013 |
| 620 | 37100.37300.37600.37900.38900.40300.41300.59600.849500 | Waterproofing | 10d | 2026-08-06 | 2026-08-16 | 604, 619 |  | 7585023 |
| 621 | 37100.37300.37600.37900.38900.40300.41300.59600.849600 | Internal Plaster | 5d | 2026-06-09 | 2026-06-14 | 605FS+0.25d |  | 7585033 |
| 622 | 37100.37300.37600.37900.38900.40300.41300.59600.849700 | IPS flooring work | 10d | 2026-09-22 | 2026-10-02 | 606, 618, 620, 621 |  | 7585043 |
| 623 | 37100.37300.37600.37900.38900.40300.41300.59600.849800 | Toilet dado work | 8d | 2026-09-14 | 2026-09-22 | 607, 620, 621 |  | 7585053 |
| 624 | 37100.37300.37600.37900.38900.40300.41300.59600.849900 | Toilet flooring work | 8d | 2026-09-22 | 2026-09-30 | 608, 623 |  | 7585063 |
| 625 | 37100.37300.37600.37900.38900.40300.41300.59600.850000 | Living dinning flooring | 7d | 2026-09-30 | 2026-10-07 | 609, 618, 624 |  | 7585073 |
| 626 | 37100.37300.37600.37900.38900.40300.41300.59600.850100 | Aluminium door-window fixing | 7d | 2026-10-07 | 2026-10-14 | 610, 622, 625 |  | 7585083 |
| 627 | 37100.37300.37600.37900.38900.40300.41300.59600.850200 | Putty primer coat | 6d | 2026-10-07 | 2026-10-13 | 611, 625 |  | 7585093 |
| 628 | 37100.37300.37600.37900.38900.40300.41300.59600.850300 | Door shutter fixing | 8d | 2026-10-07 | 2026-10-15 | 612, 625 |  | 7585103 |
| 629 | 37100.37300.37600.37900.38900.40300.41300.59600.850400 | Electrical wiring work | 8d | 2027-06-11 | 2027-06-19 | 613, 628 |  | 7585113 |
| 630 | 37100.37300.37600.37900.38900.40300.41300.59600.850500 | Painting 1st coat | 8d | 2027-06-26 | 2027-07-04 | 614, 627, 628, 629 |  | 7585123 |
| 631 | 37100.37300.37600.37900.38900.40300.41300.59600.850600 | False ceiling | 8d | 2027-07-04 | 2027-07-12 | 615, 630 |  | 7585133 |
| 632 | 37100.37300.37600.37900.38900.40300.41300.59700 | **24th Floor** | 358.06d | 2026-06-12 | 2027-07-20 |  | start no earlier than 2026-06-12 | 7567953 |
| 633 | 37100.37300.37600.37900.38900.40300.41300.59700.850700 | Block Work | 8d | 2026-06-12 | 2026-06-20 | 617FS+0.25d |  | 7585143 |
| 634 | 37100.37300.37600.37900.38900.40300.41300.59700.850800 | Door Frame Fixing | 9d | 2026-07-16 | 2026-07-25 | 618, 633 |  | 7585153 |
| 635 | 37100.37300.37600.37900.38900.40300.41300.59700.850900 | Internal Plumbing Works | 8d | 2026-06-23 | 2026-07-01 | 619, 633 |  | 7585163 |
| 636 | 37100.37300.37600.37900.38900.40300.41300.59700.851000 | Waterproofing | 10d | 2026-08-16 | 2026-08-26 | 620, 635 |  | 7585173 |
| 637 | 37100.37300.37600.37900.38900.40300.41300.59700.851100 | Internal Plaster | 8d | 2026-08-26 | 2026-09-03 | 621, 634, 635, 636 |  | 7585183 |
| 638 | 37100.37300.37600.37900.38900.40300.41300.59700.851200 | IPS flooring work | 10d | 2026-10-02 | 2026-10-12 | 622, 634, 636, 637 |  | 7585193 |
| 639 | 37100.37300.37600.37900.38900.40300.41300.59700.851300 | Toilet dado work | 8d | 2026-09-22 | 2026-09-30 | 623, 636, 637 |  | 7585203 |
| 640 | 37100.37300.37600.37900.38900.40300.41300.59700.851400 | Toilet flooring work | 8d | 2026-09-30 | 2026-10-08 | 624, 639 |  | 7585213 |
| 641 | 37100.37300.37600.37900.38900.40300.41300.59700.851500 | Living dinning flooring | 12d | 2026-10-08 | 2026-10-20 | 625, 634, 640 |  | 7585223 |
| 642 | 37100.37300.37600.37900.38900.40300.41300.59700.851600 | Aluminium door-window fixing | 12d | 2026-10-20 | 2026-12-16 | 626, 638, 641 |  | 7585233 |
| 643 | 37100.37300.37600.37900.38900.40300.41300.59700.851700 | Putty primer coat | 6d | 2026-10-20 | 2026-10-26 | 627, 641 |  | 7585243 |
| 644 | 37100.37300.37600.37900.38900.40300.41300.59700.851800 | Door shutter fixing | 8d | 2026-10-20 | 2026-10-28 | 628, 641 |  | 7585253 |
| 645 | 37100.37300.37600.37900.38900.40300.41300.59700.851900 | Electrical wiring work | 8d | 2027-06-19 | 2027-06-27 | 629, 644 |  | 7585263 |
| 646 | 37100.37300.37600.37900.38900.40300.41300.59700.852000 | Painting 1st coat | 8d | 2027-07-04 | 2027-07-12 | 630, 643, 644, 645 |  | 7585273 |
| 647 | 37100.37300.37600.37900.38900.40300.41300.59700.852100 | False ceiling | 8d | 2027-07-12 | 2027-07-20 | 631, 646 |  | 7585283 |

| ID | WBS | Task | Duration | Start | Finish | Predecessors | Constraint | Unique_Task_ID |
| --- | --- | --- | --- | --- | --- | --- | --- | --- |
| 648 | 37100.37300.37600.37900.38900.40300.41300.59800 | **25th Floor** | 324.56d | 2026-07-24 | 2027-07-28 |  | start no earlier than 2026-07-24 | 7567963 |
| 649 | 37100.37300.37600.37900.38900.40300.41300.59800.852200 | Block Work | 8d | 2026-07-24 | 2026-08-01 | 248, 633 |  | 7585293 |
| 650 | 37100.37300.37600.37900.38900.40300.41300.59800.852300 | Door Frame Fixing | 9d | 2026-08-01 | 2026-08-10 | 634, 649 |  | 7585303 |
| 651 | 37100.37300.37600.37900.38900.40300.41300.59800.852400 | Internal Plumbing Works | 8d | 2026-08-01 | 2026-08-09 | 635, 649 |  | 7585313 |
| 652 | 37100.37300.37600.37900.38900.40300.41300.59800.852500 | Waterproofing | 10d | 2026-08-26 | 2026-09-05 | 636, 651 |  | 7585323 |
| 653 | 37100.37300.37600.37900.38900.40300.41300.59800.852600 | Internal Plaster | 8d | 2026-09-05 | 2026-09-13 | 637, 650, 651, 652 |  | 7585333 |
| 654 | 37100.37300.37600.37900.38900.40300.41300.59800.852700 | IPS flooring work | 10d | 2026-10-12 | 2026-10-22 | 638, 650, 652, 653 |  | 7585343 |
| 655 | 37100.37300.37600.37900.38900.40300.41300.59800.852800 | Toilet dado work | 8d | 2026-09-30 | 2026-10-08 | 639, 652, 653 |  | 7585353 |
| 656 | 37100.37300.37600.37900.38900.40300.41300.59800.852900 | Toilet flooring work | 8d | 2026-10-08 | 2026-10-16 | 640, 655 |  | 7585363 |
| 657 | 37100.37300.37600.37900.38900.40300.41300.59800.853000 | Living dinning flooring | 12d | 2026-10-20 | 2026-12-16 | 641, 650, 656 |  | 7585373 |
| 658 | 37100.37300.37600.37900.38900.40300.41300.59800.853100 | Aluminium door-window fixing | 12d | 2026-12-16 | 2026-12-28 | 642, 654, 657 |  | 7585383 |
| 659 | 37100.37300.37600.37900.38900.40300.41300.59800.853200 | Putty primer coat | 6d | 2026-12-16 | 2026-12-22 | 643, 657 |  | 7585393 |
| 660 | 37100.37300.37600.37900.38900.40300.41300.59800.853300 | Door shutter fixing | 8d | 2026-12-16 | 2026-12-24 | 644, 657 |  | 7585403 |
| 661 | 37100.37300.37600.37900.38900.40300.41300.59800.853400 | Electrical wiring work | 8d | 2027-06-27 | 2027-07-05 | 645, 660 |  | 7585413 |
| 662 | 37100.37300.37600.37900.38900.40300.41300.59800.853500 | Painting 1st coat | 8d | 2027-07-12 | 2027-07-20 | 646, 659, 660, 661 |  | 7585423 |
| 663 | 37100.37300.37600.37900.38900.40300.41300.59800.853600 | False ceiling | 8d | 2027-07-20 | 2027-07-28 | 647, 662 |  | 7585433 |
| 664 | 37100.37300.37600.37900.38900.40300.41300.59900 | **26th Floor** | 322.56d | 2026-08-03 | 2027-08-05 |  | start no earlier than 2026-08-03 | 7567973 |
| 665 | 37100.37300.37600.37900.38900.40300.41300.59900.853700 | Block Work | 8d | 2026-08-03 | 2026-08-11 | 249, 649 |  | 7585443 |
| 666 | 37100.37300.37600.37900.38900.40300.41300.59900.853800 | Door Frame Fixing | 9d | 2026-08-11 | 2026-08-20 | 650, 665 |  | 7585453 |
| 667 | 37100.37300.37600.37900.38900.40300.41300.59900.853900 | Internal Plumbing Works | 8d | 2026-08-11 | 2026-08-19 | 651, 665 |  | 7585463 |
| 668 | 37100.37300.37600.37900.38900.40300.41300.59900.854000 | Waterproofing | 10d | 2026-09-05 | 2026-09-15 | 652, 667 |  | 7585473 |
| 669 | 37100.37300.37600.37900.38900.40300.41300.59900.854100 | Internal Plaster | 8d | 2026-09-15 | 2026-09-23 | 653, 666, 667, 668 |  | 7585483 |
| 670 | 37100.37300.37600.37900.38900.40300.41300.59900.854200 | IPS flooring work | 10d | 2026-10-22 | 2026-12-16 | 654, 666, 668, 669 |  | 7585493 |
| 671 | 37100.37300.37600.37900.38900.40300.41300.59900.854300 | Toilet dado work | 8d | 2026-10-08 | 2026-10-16 | 655, 668, 669 |  | 7585503 |
| 672 | 37100.37300.37600.37900.38900.40300.41300.59900.854400 | Toilet flooring work | 8d | 2026-10-16 | 2026-10-24 | 656, 671 |  | 7585513 |
| 673 | 37100.37300.37600.37900.38900.40300.41300.59900.854500 | Living dinning flooring | 20d | 2026-12-16 | 2027-01-05 | 657, 666, 672 |  | 7585523 |
| 674 | 37100.37300.37600.37900.38900.40300.41300.59900.854600 | Aluminium door-window fixing | 12d | 2027-01-05 | 2027-01-17 | 658, 670, 673 |  | 7585533 |
| 675 | 37100.37300.37600.37900.38900.40300.41300.59900.854700 | Putty primer coat | 6d | 2027-01-05 | 2027-01-11 | 659, 673 |  | 7585543 |
| 676 | 37100.37300.37600.37900.38900.40300.41300.59900.854800 | Door shutter fixing | 8d | 2027-01-05 | 2027-01-13 | 660, 673 |  | 7585553 |
| 677 | 37100.37300.37600.37900.38900.40300.41300.59900.854900 | Electrical wiring work | 8d | 2027-07-05 | 2027-07-13 | 661, 676 |  | 7585563 |
| 678 | 37100.37300.37600.37900.38900.40300.41300.59900.855000 | Painting 1st coat | 8d | 2027-07-20 | 2027-07-28 | 662, 675, 676, 677 |  | 7585573 |
| 679 | 37100.37300.37600.37900.38900.40300.41300.59900.855100 | False ceiling | 8d | 2027-07-28 | 2027-08-05 | 663, 678 |  | 7585583 |

| ID | WBS | Task | Duration | Start | Finish | Predecessors | Constraint | Unique_Task_ID |
| --- | --- | --- | --- | --- | --- | --- | --- | --- |
| 680 | 37100.37300.37600.37900.38900.40300.41300.60000 | **27th Floor** | 307.69d | 2026-08-26 | 2027-08-13 |  | start no earlier than 2026-08-26 | 7567983 |
| 681 | 37100.37300.37600.37900.38900.40300.41300.60000.855200 | Block Work | 8d | 2026-08-26 | 2026-09-03 | 250, 665 |  | 7585593 |
| 682 | 37100.37300.37600.37900.38900.40300.41300.60000.855300 | Door Frame Fixing | 9d | 2026-09-03 | 2026-09-12 | 666, 681 |  | 7585603 |
| 683 | 37100.37300.37600.37900.38900.40300.41300.60000.855400 | Internal Plumbing Works | 8d | 2026-09-03 | 2026-09-11 | 667, 681 |  | 7585613 |
| 684 | 37100.37300.37600.37900.38900.40300.41300.60000.855500 | Waterproofing | 10d | 2026-09-15 | 2026-09-25 | 668, 683 |  | 7585623 |
| 685 | 37100.37300.37600.37900.38900.40300.41300.60000.855600 | Internal Plaster | 8d | 2026-09-25 | 2026-10-03 | 669, 682, 683, 684 |  | 7585633 |
| 686 | 37100.37300.37600.37900.38900.40300.41300.60000.855700 | IPS flooring work | 10d | 2026-12-16 | 2026-12-26 | 670, 682, 684, 685 |  | 7585643 |
| 687 | 37100.37300.37600.37900.38900.40300.41300.60000.855800 | Toilet dado work | 8d | 2026-10-16 | 2026-10-24 | 671, 684, 685 |  | 7585653 |
| 688 | 37100.37300.37600.37900.38900.40300.41300.60000.855900 | Toilet flooring work | 8d | 2026-10-24 | 2026-12-16 | 672, 687 |  | 7585663 |
| 689 | 37100.37300.37600.37900.38900.40300.41300.60000.856000 | Living dinning flooring | 12d | 2027-01-05 | 2027-01-17 | 673, 682, 688 |  | 7585673 |
| 690 | 37100.37300.37600.37900.38900.40300.41300.60000.856100 | Aluminium door-window fixing | 20d | 2027-01-17 | 2027-02-06 | 674, 686, 689 |  | 7585683 |
| 691 | 37100.37300.37600.37900.38900.40300.41300.60000.856200 | Putty primer coat | 6d | 2027-01-17 | 2027-01-23 | 675, 689 |  | 7585693 |
| 692 | 37100.37300.37600.37900.38900.40300.41300.60000.856300 | Door shutter fixing | 8d | 2027-01-17 | 2027-01-25 | 676, 689 |  | 7585703 |
| 693 | 37100.37300.37600.37900.38900.40300.41300.60000.856400 | Electrical wiring work | 8d | 2027-07-13 | 2027-07-21 | 677, 692 |  | 7585713 |
| 694 | 37100.37300.37600.37900.38900.40300.41300.60000.856500 | Painting 1st coat | 8d | 2027-07-28 | 2027-08-05 | 678, 691, 692, 693 |  | 7585723 |
| 695 | 37100.37300.37600.37900.38900.40300.41300.60000.856600 | False ceiling | 8d | 2027-08-05 | 2027-08-13 | 679, 694 |  | 7585733 |
| 696 | 37100.37300.37600.37900.38900.40300.41300.60100 | **28th Floor** | 298.94d | 2026-09-11 | 2027-08-21 |  | start no earlier than 2026-09-11 | 7567993 |
| 697 | 37100.37300.37600.37900.38900.40300.41300.60100.856700 | Block Work | 8d | 2026-09-11 | 2026-09-19 | 251, 681 |  | 7585743 |
| 698 | 37100.37300.37600.37900.38900.40300.41300.60100.856800 | Door Frame Fixing | 9d | 2026-09-19 | 2026-09-28 | 682, 697 |  | 7585753 |
| 699 | 37100.37300.37600.37900.38900.40300.41300.60100.856900 | Internal Plumbing Works | 8d | 2026-09-19 | 2026-09-27 | 683, 697 |  | 7585763 |
| 700 | 37100.37300.37600.37900.38900.40300.41300.60100.857000 | Waterproofing | 10d | 2026-09-27 | 2026-10-07 | 684, 699 |  | 7585773 |
| 701 | 37100.37300.37600.37900.38900.40300.41300.60100.857100 | Internal Plaster | 8d | 2026-10-07 | 2026-10-15 | 685, 698, 699, 700 |  | 7585783 |
| 702 | 37100.37300.37600.37900.38900.40300.41300.60100.857200 | IPS flooring work | 10d | 2026-12-26 | 2027-01-05 | 686, 698, 700, 701 |  | 7585793 |
| 703 | 37100.37300.37600.37900.38900.40300.41300.60100.857300 | Toilet dado work | 8d | 2026-10-24 | 2026-12-16 | 687, 700, 701 |  | 7585803 |
| 704 | 37100.37300.37600.37900.38900.40300.41300.60100.857400 | Toilet flooring work | 8d | 2026-12-16 | 2026-12-24 | 688, 703 |  | 7585813 |
| 705 | 37100.37300.37600.37900.38900.40300.41300.60100.857500 | Living dinning flooring | 12d | 2027-01-17 | 2027-01-29 | 689, 698, 704 |  | 7585823 |
| 706 | 37100.37300.37600.37900.38900.40300.41300.60100.857600 | Aluminium door-window fixing | 12d | 2027-02-06 | 2027-02-18 | 690, 702, 705 |  | 7585833 |
| 707 | 37100.37300.37600.37900.38900.40300.41300.60100.857700 | Putty primer coat | 6d | 2027-01-29 | 2027-02-04 | 691, 705 |  | 7585843 |
| 708 | 37100.37300.37600.37900.38900.40300.41300.60100.857800 | Door shutter fixing | 8d | 2027-01-29 | 2027-02-06 | 692, 705 |  | 7585853 |
| 709 | 37100.37300.37600.37900.38900.40300.41300.60100.857900 | Electrical wiring work | 8d | 2027-07-21 | 2027-07-29 | 693, 708 |  | 7585863 |
| 710 | 37100.37300.37600.37900.38900.40300.41300.60100.858000 | Painting 1st coat | 8d | 2027-08-05 | 2027-08-13 | 694, 707, 708, 709 |  | 7585873 |
| 711 | 37100.37300.37600.37900.38900.40300.41300.60100.858100 | False ceiling | 8d | 2027-08-13 | 2027-08-21 | 695, 710 |  | 7585883 |

| ID | WBS | Task | Duration | Start | Finish | Predecessors | Constraint | Unique_Task_ID |
| --- | --- | --- | --- | --- | --- | --- | --- | --- |
| 712 | 37100.37300.37600.37900.38900.40300.41300.60200 | **29th Floor** | 292.06d | 2026-09-26 | 2027-08-29 |  | start no earlier than 2026-09-26 | 7568003 |
| 713 | 37100.37300.37600.37900.38900.40300.41300.60200.858200 | Block Work | 8d | 2026-09-26 | 2026-10-04 | 252, 697 |  | 7585893 |
| 714 | 37100.37300.37600.37900.38900.40300.41300.60200.858300 | Door Frame Fixing | 9d | 2026-10-04 | 2026-10-13 | 698, 713 |  | 7585903 |
| 715 | 37100.37300.37600.37900.38900.40300.41300.60200.858400 | Internal Plumbing Works | 8d | 2026-10-04 | 2026-10-12 | 699, 713 |  | 7585913 |
| 716 | 37100.37300.37600.37900.38900.40300.41300.60200.858500 | Waterproofing | 10d | 2026-10-12 | 2026-10-22 | 700, 715 |  | 7585923 |
| 717 | 37100.37300.37600.37900.38900.40300.41300.60200.858600 | Internal Plaster | 8d | 2026-10-22 | 2026-10-30 | 701, 714, 715, 716 |  | 7585933 |
| 718 | 37100.37300.37600.37900.38900.40300.41300.60200.858700 | IPS flooring work | 10d | 2027-01-05 | 2027-01-15 | 702, 714, 716, 717 |  | 7585943 |
| 719 | 37100.37300.37600.37900.38900.40300.41300.60200.858800 | Toilet dado work | 8d | 2026-12-16 | 2026-12-24 | 703, 716, 717 |  | 7585953 |
| 720 | 37100.37300.37600.37900.38900.40300.41300.60200.858900 | Toilet flooring work | 8d | 2026-12-24 | 2027-01-01 | 704, 719 |  | 7585963 |
| 721 | 37100.37300.37600.37900.38900.40300.41300.60200.859000 | Living dinning flooring | 12d | 2027-01-29 | 2027-02-10 | 705, 714, 720 |  | 7585973 |
| 722 | 37100.37300.37600.37900.38900.40300.41300.60200.859100 | Aluminium door-window fixing | 12d | 2027-02-18 | 2027-03-02 | 706, 718, 721 |  | 7585983 |
| 723 | 37100.37300.37600.37900.38900.40300.41300.60200.859200 | Putty primer coat | 6d | 2027-02-10 | 2027-02-16 | 707, 721 |  | 7585993 |
| 724 | 37100.37300.37600.37900.38900.40300.41300.60200.859300 | Door shutter fixing | 8d | 2027-02-10 | 2027-02-18 | 708, 721 |  | 7586003 |
| 725 | 37100.37300.37600.37900.38900.40300.41300.60200.859400 | Electrical wiring work | 8d | 2027-07-29 | 2027-08-06 | 709, 724 |  | 7586013 |
| 726 | 37100.37300.37600.37900.38900.40300.41300.60200.859500 | Painting 1st coat | 8d | 2027-08-13 | 2027-08-21 | 710, 723, 724, 725 |  | 7586023 |
| 727 | 37100.37300.37600.37900.38900.40300.41300.60200.859600 | False ceiling | 8d | 2027-08-21 | 2027-08-29 | 711, 726 |  | 7586033 |
| 728 | 37100.37300.37600.37900.38900.40300.41300.60300 | **30th Floor** | 288.31d | 2026-10-08 | 2027-09-06 |  | start no earlier than 2026-10-08 | 7568013 |
| 729 | 37100.37300.37600.37900.38900.40300.41300.60300.859700 | Block Work | 8d | 2026-10-08 | 2026-10-16 | 253, 713 |  | 7586043 |
| 730 | 37100.37300.37600.37900.38900.40300.41300.60300.859800 | Door Frame Fixing | 9d | 2026-10-16 | 2026-10-25 | 714, 729 |  | 7586053 |
| 731 | 37100.37300.37600.37900.38900.40300.41300.60300.859900 | Internal Plumbing Works | 8d | 2026-10-16 | 2026-10-24 | 715, 729 |  | 7586063 |
| 732 | 37100.37300.37600.37900.38900.40300.41300.60300.860000 | Waterproofing | 10d | 2026-10-24 | 2026-12-18 | 716, 731 |  | 7586073 |
| 733 | 37100.37300.37600.37900.38900.40300.41300.60300.860100 | Internal Plaster | 8d | 2026-12-18 | 2026-12-26 | 717, 730, 731, 732 |  | 7586083 |
| 734 | 37100.37300.37600.37900.38900.40300.41300.60300.860200 | IPS flooring work | 10d | 2027-01-15 | 2027-01-25 | 718, 730, 732, 733 |  | 7586093 |
| 735 | 37100.37300.37600.37900.38900.40300.41300.60300.860300 | Toilet dado work | 8d | 2026-12-26 | 2027-01-03 | 719, 732, 733 |  | 7586103 |
| 736 | 37100.37300.37600.37900.38900.40300.41300.60300.860400 | Toilet flooring work | 8d | 2027-01-03 | 2027-01-11 | 720, 735 |  | 7586113 |
| 737 | 37100.37300.37600.37900.38900.40300.41300.60300.860500 | Living dinning flooring | 12d | 2027-02-10 | 2027-02-22 | 721, 730, 736 |  | 7586123 |
| 738 | 37100.37300.37600.37900.38900.40300.41300.60300.860600 | Aluminium door-window fixing | 12d | 2027-03-02 | 2027-03-14 | 722, 734, 737 |  | 7586133 |
| 739 | 37100.37300.37600.37900.38900.40300.41300.60300.860700 | Putty primer coat | 6d | 2027-02-22 | 2027-02-28 | 723, 737 |  | 7586143 |
| 740 | 37100.37300.37600.37900.38900.40300.41300.60300.860800 | Door shutter fixing | 8d | 2027-02-22 | 2027-03-02 | 724, 737 |  | 7586153 |
| 741 | 37100.37300.37600.37900.38900.40300.41300.60300.860900 | Electrical wiring work | 8d | 2027-08-06 | 2027-08-14 | 725, 740 |  | 7586163 |
| 742 | 37100.37300.37600.37900.38900.40300.41300.60300.861000 | Painting 1st coat | 8d | 2027-08-21 | 2027-08-29 | 726, 739, 740, 741 |  | 7586173 |
| 743 | 37100.37300.37600.37900.38900.40300.41300.60300.861100 | False ceiling | 8d | 2027-08-29 | 2027-09-06 | 727, 742 |  | 7586183 |

| ID | WBS | Task | Duration | Start | Finish | Predecessors | Constraint | Unique_Task_ID |
| --- | --- | --- | --- | --- | --- | --- | --- | --- |
| 744 | 37100.37300.37600.37900.38900.40300.41300.60400 | **31st Floor** | 278.44d | 2026-10-26 | 2027-09-14 |  | start no earlier than 2026-10-26 | 7568023 |
| 745 | 37100.37300.37600.37900.38900.40300.41300.60400.861200 | Block Work | 8d | 2026-10-26 | 2026-12-18 | 254, 729 |  | 7586193 |
| 746 | 37100.37300.37600.37900.38900.40300.41300.60400.861300 | Door Frame Fixing | 9d | 2026-12-18 | 2026-12-27 | 730, 745 |  | 7586203 |
| 747 | 37100.37300.37600.37900.38900.40300.41300.60400.861400 | Internal Plumbing Works | 8d | 2026-12-18 | 2026-12-26 | 731, 745 |  | 7586213 |
| 748 | 37100.37300.37600.37900.38900.40300.41300.60400.861500 | Waterproofing | 10d | 2026-12-26 | 2027-01-05 | 732, 747 |  | 7586223 |
| 749 | 37100.37300.37600.37900.38900.40300.41300.60400.861600 | Internal Plaster | 8d | 2027-01-05 | 2027-01-13 | 733, 746, 747, 748 |  | 7586233 |
| 750 | 37100.37300.37600.37900.38900.40300.41300.60400.861700 | IPS flooring work | 10d | 2027-01-25 | 2027-02-04 | 734, 746, 748, 749 |  | 7586243 |
| 751 | 37100.37300.37600.37900.38900.40300.41300.60400.861800 | Toilet dado work | 8d | 2027-01-13 | 2027-01-21 | 735, 748, 749 |  | 7586253 |
| 752 | 37100.37300.37600.37900.38900.40300.41300.60400.861900 | Toilet flooring work | 8d | 2027-01-21 | 2027-01-29 | 736, 751 |  | 7586263 |
| 753 | 37100.37300.37600.37900.38900.40300.41300.60400.862000 | Living dinning flooring | 19d | 2027-02-22 | 2027-03-13 | 737, 746, 752 |  | 7586273 |
| 754 | 37100.37300.37600.37900.38900.40300.41300.60400.862100 | Aluminium door-window fixing | 12d | 2027-03-14 | 2027-03-26 | 738, 750, 753 |  | 7586283 |
| 755 | 37100.37300.37600.37900.38900.40300.41300.60400.862200 | Putty primer coat | 6d | 2027-03-13 | 2027-03-19 | 739, 753 |  | 7586293 |
| 756 | 37100.37300.37600.37900.38900.40300.41300.60400.862300 | Door shutter fixing | 8d | 2027-03-13 | 2027-03-21 | 740, 753 |  | 7586303 |
| 757 | 37100.37300.37600.37900.38900.40300.41300.60400.862400 | Electrical wiring work | 8d | 2027-08-14 | 2027-08-22 | 741, 756 |  | 7586313 |
| 758 | 37100.37300.37600.37900.38900.40300.41300.60400.862500 | Painting 1st coat | 8d | 2027-08-29 | 2027-09-06 | 742, 755, 756, 757 |  | 7586323 |
| 759 | 37100.37300.37600.37900.38900.40300.41300.60400.862600 | False ceiling | 8d | 2027-09-06 | 2027-09-14 | 743, 758 |  | 7586333 |
| 760 | 37100.37300.37600.37900.38900.40300.41300.60500 | **32nd Floor** | 244.62d | 2027-01-21 | 2027-09-22 |  | start no earlier than 2027-01-21 | 7568033 |
| 761 | 37100.37300.37600.37900.38900.40300.41300.60500.862700 | Block Work | 8d | 2027-01-21 | 2027-01-29 | 255, 745 |  | 7586343 |
| 762 | 37100.37300.37600.37900.38900.40300.41300.60500.862800 | Door Frame Fixing | 9d | 2027-01-29 | 2027-02-07 | 746, 761 |  | 7586353 |
| 763 | 37100.37300.37600.37900.38900.40300.41300.60500.862900 | Internal Plumbing Works | 8d | 2027-01-29 | 2027-02-06 | 747, 761 |  | 7586363 |
| 764 | 37100.37300.37600.37900.38900.40300.41300.60500.863000 | Waterproofing | 10d | 2027-02-06 | 2027-02-16 | 748, 763 |  | 7586373 |
| 765 | 37100.37300.37600.37900.38900.40300.41300.60500.863100 | Internal Plaster | 8d | 2027-02-16 | 2027-02-24 | 749, 762, 763, 764 |  | 7586383 |
| 766 | 37100.37300.37600.37900.38900.40300.41300.60500.863200 | IPS flooring work | 10d | 2027-02-24 | 2027-03-06 | 750, 762, 764, 765 |  | 7586393 |
| 767 | 37100.37300.37600.37900.38900.40300.41300.60500.863300 | Toilet dado work | 8d | 2027-02-24 | 2027-03-04 | 751, 764, 765 |  | 7586403 |
| 768 | 37100.37300.37600.37900.38900.40300.41300.60500.863400 | Toilet flooring work | 8d | 2027-03-04 | 2027-03-12 | 752, 767 |  | 7586413 |
| 769 | 37100.37300.37600.37900.38900.40300.41300.60500.863500 | Living dinning flooring | 12d | 2027-03-13 | 2027-03-25 | 753, 762, 768 |  | 7586423 |
| 770 | 37100.37300.37600.37900.38900.40300.41300.60500.863600 | Aluminium door-window fixing | 12d | 2027-03-26 | 2027-04-07 | 754, 766, 769 |  | 7586433 |
| 771 | 37100.37300.37600.37900.38900.40300.41300.60500.863700 | Putty primer coat | 6d | 2027-03-25 | 2027-03-31 | 755, 769 |  | 7586443 |
| 772 | 37100.37300.37600.37900.38900.40300.41300.60500.863800 | Door shutter fixing | 8d | 2027-03-25 | 2027-04-02 | 756, 769 |  | 7586453 |
| 773 | 37100.37300.37600.37900.38900.40300.41300.60500.863900 | Electrical wiring work | 8d | 2027-08-22 | 2027-08-30 | 757, 772 |  | 7586463 |
| 774 | 37100.37300.37600.37900.38900.40300.41300.60500.864000 | Painting 1st coat | 8d | 2027-09-06 | 2027-09-14 | 758, 771, 772, 773 |  | 7586473 |
| 775 | 37100.37300.37600.37900.38900.40300.41300.60500.864100 | False ceiling | 8d | 2027-09-14 | 2027-09-22 | 759, 774 |  | 7586483 |

| ID | WBS | Task | Duration | Start | Finish | Predecessors | Constraint | Unique_Task_ID |
| --- | --- | --- | --- | --- | --- | --- | --- | --- |
| 776 | 37100.37300.37600.37900.38900.40300.41300.60600 | **33rd Floor** | 244.62d | 2027-01-29 | 2027-09-30 |  | start no earlier than 2027-01-29 | 7568043 |
| 777 | 37100.37300.37600.37900.38900.40300.41300.60600.864200 | Block Work | 8d | 2027-01-29 | 2027-02-06 | 256, 761 |  | 7586493 |
| 778 | 37100.37300.37600.37900.38900.40300.41300.60600.864300 | Door Frame Fixing | 9d | 2027-02-07 | 2027-02-16 | 762, 777 |  | 7586503 |
| 779 | 37100.37300.37600.37900.38900.40300.41300.60600.864400 | Internal Plumbing Works | 8d | 2027-02-06 | 2027-02-14 | 763, 777 |  | 7586513 |
| 780 | 37100.37300.37600.37900.38900.40300.41300.60600.864500 | Waterproofing | 10d | 2027-02-16 | 2027-02-26 | 764, 779 |  | 7586523 |
| 781 | 37100.37300.37600.37900.38900.40300.41300.60600.864600 | Internal Plaster | 8d | 2027-02-26 | 2027-03-06 | 765, 778, 779, 780 |  | 7586533 |
| 782 | 37100.37300.37600.37900.38900.40300.41300.60600.864700 | IPS flooring work | 10d | 2027-03-06 | 2027-03-16 | 766, 778, 780, 781 |  | 7586543 |
| 783 | 37100.37300.37600.37900.38900.40300.41300.60600.864800 | Toilet dado work | 8d | 2027-03-06 | 2027-03-14 | 767, 780, 781 |  | 7586553 |
| 784 | 37100.37300.37600.37900.38900.40300.41300.60600.864900 | Toilet flooring work | 8d | 2027-03-14 | 2027-03-22 | 768, 783 |  | 7586563 |
| 785 | 37100.37300.37600.37900.38900.40300.41300.60600.865000 | Living dinning flooring | 12d | 2027-03-25 | 2027-04-06 | 769, 778, 784 |  | 7586573 |
| 786 | 37100.37300.37600.37900.38900.40300.41300.60600.865100 | Aluminium door-window fixing | 12d | 2027-04-07 | 2027-04-19 | 770, 782, 785 |  | 7586583 |
| 787 | 37100.37300.37600.37900.38900.40300.41300.60600.865200 | Putty primer coat | 6d | 2027-04-06 | 2027-04-12 | 771, 785 |  | 7586593 |
| 788 | 37100.37300.37600.37900.38900.40300.41300.60600.865300 | Door shutter fixing | 8d | 2027-04-06 | 2027-04-14 | 772, 785 |  | 7586603 |
| 789 | 37100.37300.37600.37900.38900.40300.41300.60600.865400 | Electrical wiring work | 8d | 2027-08-30 | 2027-09-07 | 773, 788 |  | 7586613 |
| 790 | 37100.37300.37600.37900.38900.40300.41300.60600.865500 | Painting 1st coat | 8d | 2027-09-14 | 2027-09-22 | 774, 787, 788, 789 |  | 7586623 |
| 791 | 37100.37300.37600.37900.38900.40300.41300.60600.865600 | False ceiling | 8d | 2027-09-22 | 2027-09-30 | 775, 790 |  | 7586633 |
| 792 | 37100.37300.37600.37900.38900.40300.41300.60700 | **34th Floor** | 244.62d | 2027-02-06 | 2027-10-08 |  | start no earlier than 2027-02-06 | 7568053 |
| 793 | 37100.37300.37600.37900.38900.40300.41300.60700.865700 | Block Work | 8d | 2027-02-06 | 2027-02-14 | 257, 777 |  | 7586643 |
| 794 | 37100.37300.37600.37900.38900.40300.41300.60700.865800 | Door Frame Fixing | 9d | 2027-02-16 | 2027-02-25 | 778, 793 |  | 7586653 |
| 795 | 37100.37300.37600.37900.38900.40300.41300.60700.865900 | Internal Plumbing Works | 8d | 2027-02-14 | 2027-02-22 | 779, 793 |  | 7586663 |
| 796 | 37100.37300.37600.37900.38900.40300.41300.60700.866000 | Waterproofing | 10d | 2027-02-26 | 2027-03-08 | 780, 795 |  | 7586673 |
| 797 | 37100.37300.37600.37900.38900.40300.41300.60700.866100 | Internal Plaster | 8d | 2027-03-08 | 2027-03-16 | 781, 794, 795, 796 |  | 7586683 |
| 798 | 37100.37300.37600.37900.38900.40300.41300.60700.866200 | IPS flooring work | 10d | 2027-03-16 | 2027-03-26 | 782, 794, 796, 797 |  | 7586693 |
| 799 | 37100.37300.37600.37900.38900.40300.41300.60700.866300 | Toilet dado work | 8d | 2027-03-16 | 2027-03-24 | 783, 796, 797 |  | 7586703 |
| 800 | 37100.37300.37600.37900.38900.40300.41300.60700.866400 | Toilet flooring work | 8d | 2027-03-24 | 2027-04-01 | 784, 799 |  | 7586713 |
| 801 | 37100.37300.37600.37900.38900.40300.41300.60700.866500 | Living dinning flooring | 20d | 2027-04-06 | 2027-04-26 | 785, 794, 800 |  | 7586723 |
| 802 | 37100.37300.37600.37900.38900.40300.41300.60700.866600 | Aluminium door-window fixing | 12d | 2027-04-26 | 2027-05-08 | 786, 798, 801 |  | 7586733 |
| 803 | 37100.37300.37600.37900.38900.40300.41300.60700.866700 | Putty primer coat | 6d | 2027-04-26 | 2027-05-02 | 787, 801 |  | 7586743 |
| 804 | 37100.37300.37600.37900.38900.40300.41300.60700.866800 | Door shutter fixing | 8d | 2027-04-26 | 2027-05-04 | 788, 801 |  | 7586753 |
| 805 | 37100.37300.37600.37900.38900.40300.41300.60700.866900 | Electrical wiring work | 8d | 2027-09-07 | 2027-09-15 | 789, 804 |  | 7586763 |
| 806 | 37100.37300.37600.37900.38900.40300.41300.60700.867000 | Painting 1st coat | 8d | 2027-09-22 | 2027-09-30 | 790, 803, 804, 805 |  | 7586773 |
| 807 | 37100.37300.37600.37900.38900.40300.41300.60700.867100 | False ceiling | 8d | 2027-09-30 | 2027-10-08 | 791, 806 |  | 7586783 |

| ID | WBS | Task | Duration | Start | Finish | Predecessors | Constraint | Unique_Task_ID |
| --- | --- | --- | --- | --- | --- | --- | --- | --- |
| 808 | 37100.37300.37600.37900.38900.40300.41300.60800 | **35th Floor** | 244.62d | 2027-02-14 | 2027-10-16 |  | start no earlier than 2027-02-14 | 7568063 |
| 809 | 37100.37300.37600.37900.38900.40300.41300.60800.867200 | Block Work | 8d | 2027-02-14 | 2027-02-22 | 258, 793 |  | 7586793 |
| 810 | 37100.37300.37600.37900.38900.40300.41300.60800.867300 | Door Frame Fixing | 9d | 2027-02-25 | 2027-03-06 | 794, 809 |  | 7586803 |
| 811 | 37100.37300.37600.37900.38900.40300.41300.60800.867400 | Internal Plumbing Works | 8d | 2027-02-22 | 2027-03-02 | 795, 809 |  | 7586813 |
| 812 | 37100.37300.37600.37900.38900.40300.41300.60800.867500 | Waterproofing | 10d | 2027-03-08 | 2027-03-18 | 796, 811 |  | 7586823 |
| 813 | 37100.37300.37600.37900.38900.40300.41300.60800.867600 | Internal Plaster | 15d | 2027-03-18 | 2027-04-02 | 797, 810, 811, 812 |  | 7586833 |
| 814 | 37100.37300.37600.37900.38900.40300.41300.60800.867700 | IPS flooring work | 10d | 2027-04-02 | 2027-04-12 | 798, 810, 812, 813 |  | 7586843 |
| 815 | 37100.37300.37600.37900.38900.40300.41300.60800.867800 | Toilet dado work | 8d | 2027-04-02 | 2027-04-10 | 799, 812, 813 |  | 7586853 |
| 816 | 37100.37300.37600.37900.38900.40300.41300.60800.867900 | Toilet flooring work | 8d | 2027-04-10 | 2027-04-18 | 800, 815 |  | 7586863 |
| 817 | 37100.37300.37600.37900.38900.40300.41300.60800.868000 | Living dinning flooring | 20d | 2027-04-26 | 2027-05-16 | 801, 810, 816 |  | 7586873 |
| 818 | 37100.37300.37600.37900.38900.40300.41300.60800.868100 | Aluminium door-window fixing | 12d | 2027-05-16 | 2027-05-28 | 802, 814, 817 |  | 7586883 |
| 819 | 37100.37300.37600.37900.38900.40300.41300.60800.868200 | Putty primer coat | 6d | 2027-05-16 | 2027-05-22 | 803, 817 |  | 7586893 |
| 820 | 37100.37300.37600.37900.38900.40300.41300.60800.868300 | Door shutter fixing | 8d | 2027-05-16 | 2027-05-24 | 804, 817 |  | 7586903 |
| 821 | 37100.37300.37600.37900.38900.40300.41300.60800.868400 | Electrical wiring work | 8d | 2027-09-15 | 2027-09-23 | 805, 820 |  | 7586913 |
| 822 | 37100.37300.37600.37900.38900.40300.41300.60800.868500 | Painting 1st coat | 8d | 2027-09-30 | 2027-10-08 | 806, 819, 820, 821 |  | 7586923 |
| 823 | 37100.37300.37600.37900.38900.40300.41300.60800.868600 | False ceiling | 8d | 2027-10-08 | 2027-10-16 | 807, 822 |  | 7586933 |
| 824 | 37100.37300.37600.37900.38900.40300.191600 | **Terrace Finishing** | 79.88d | 2026-10-19 | 2027-02-21 |  | start no earlier than 2026-10-19 | 7571253 |
| 825 | 37100.37300.37600.37900.38900.40300.191600.418300 | Terrace waterproofing | 39.94d | 2026-10-19 | 2027-01-12 | 217 |  | 7576343 |
| 826 | 37100.37300.37600.37900.38900.40300.191600.418400 | Terrace finishing | 39.94d | 2027-01-12 | 2027-02-21 | 825 |  | 7576353 |
| 827 | 37100.37300.37600.37900.38900.40300.101300 | **Common Area Finishing** | 600.38d | 2026-01-14 | 2027-10-21 |  | start no earlier than 2026-01-14 | 7569213 |
| 828 | 37100.37300.37600.37900.38900.40300.101300.418500 | Block Work | 39.94d | 2026-01-14 | 2026-02-23 | 228FS+0.25d |  | 7576363 |
| 829 | 37100.37300.37600.37900.38900.40300.101300.418600 | Internal Plaster | 119.94d | 2026-02-19 | 2026-06-19 | 834SS+17.88d |  | 7576373 |
| 830 | 37100.37300.37600.37900.38900.40300.101300.418700 | Staircase railing fixing | 149.94d | 2026-05-23 | 2026-10-20 | 832SS+26.75d, 831SS+26.75d |  | 7576383 |
| 831 | 37100.37300.37600.37900.38900.40300.101300.418800 | Main staircase flooring | 149.94d | 2026-04-27 | 2026-09-24 | 832SS+13.38d |  | 7576393 |
| 832 | 37100.37300.37600.37900.38900.40300.101300.418900 | Fire staircase flooring | 149.94d | 2026-04-13 | 2026-09-10 | 829SS+13.38d, 836SS+26.75d |  | 7576403 |
| 833 | 37100.37300.37600.37900.38900.40300.101300.419000 | Fire door work | 59.94d | 2026-05-23 | 2026-07-22 | 831SS+26.75d, 832SS+26.75d |  | 7576413 |
| 834 | 37100.37300.37600.37900.38900.40300.101300.419100 | Electrical wiring work | 119.94d | 2026-02-01 | 2026-06-01 | 828SS+17.88d |  | 7576423 |
| 835 | 37100.37300.37600.37900.38900.40300.101300.419200 | Lobby flooring | 270d | 2026-07-25 | 2027-06-05 | 817FF+20d |  | 7576433 |
| 836 | 37100.37300.37600.37900.38900.40300.101300.419300 | Ceiling & wall putty-primer | 109.94d | 2026-03-18 | 2026-07-05 | 829SS+26.75d |  | 7576443 |
| 837 | 37100.37300.37600.37900.38900.40300.101300.419400 | Ceiling & wall painting | 99.94d | 2026-04-04 | 2026-07-13 | 836SS+17.88d |  | 7576453 |
| 838 | 37100.37300.37600.37900.38900.40300.101300.419500 | Light fixture supply & installation | 210d | 2027-03-25 | 2027-10-21 | 837SS+310d |  | 7576463 |

| ID | WBS | Task | Duration | Start | Finish | Predecessors | Constraint | Calendar | Unique_Task_ID |
| --- | --- | --- | --- | --- | --- | --- | --- | --- | --- |
| 839 | 37100.37300.37600.37900.38900.40300.46300 | **Balcony Glass Railing** | 646.38d | 2025-12-01 | 2027-11-01 |  | start no earlier than 2025-12-01 |  | 132460 |
| 840 | 37100.37300.37600.37900.38900.40300.46300.419600 | 1st Floor | 1.94d | 2027-08-25 | 2027-08-27 | 911 |  |  | 132470 |
| 841 | 37100.37300.37600.37900.38900.40300.46300.419700 | 2nd Floor | 1.94d | 2027-08-27 | 2027-08-29 | 840 |  |  | 132480 |
| 842 | 37100.37300.37600.37900.38900.40300.46300.419800 | 3rd Floor | 1.94d | 2027-08-29 | 2027-08-31 | 841 |  |  | 132490 |
| 843 | 37100.37300.37600.37900.38900.40300.46300.419900 | 4th Floor | 1.94d | 2027-08-31 | 2027-09-02 | 842 |  |  | 132500 |
| 844 | 37100.37300.37600.37900.38900.40300.46300.420000 | 5th Floor | 1.94d | 2027-09-02 | 2027-09-04 | 843 |  |  | 132510 |
| 845 | 37100.37300.37600.37900.38900.40300.46300.420100 | 2nd Floor | 1.94d | 2027-09-17 | 2027-09-18 | 844 |  |  | 10340748 |
| 846 | 37100.37300.37600.37900.38900.40300.46300.420200 | 6th Floor | 1.94d | 2027-09-04 | 2027-09-06 | 844 |  |  | 132520 |
| 847 | 37100.37300.37600.37900.38900.40300.46300.420300 | 7th Floor | 1.94d | 2027-09-06 | 2027-09-08 | 846 |  |  | 132530 |
| 848 | 37100.37300.37600.37900.38900.40300.46300.420400 | 8th Floor | 1.94d | 2027-09-08 | 2027-09-10 | 847 |  |  | 132540 |
| 849 | 37100.37300.37600.37900.38900.40300.46300.420500 | 9th Floor | 1.94d | 2027-09-10 | 2027-09-12 | 848 |  |  | 132550 |
| 850 | 37100.37300.37600.37900.38900.40300.46300.420600 | 10th Floor | 1.94d | 2027-09-12 | 2027-09-14 | 849 |  |  | 132560 |
| 851 | 37100.37300.37600.37900.38900.40300.46300.420700 | 11th Floor | 1.94d | 2027-09-14 | 2027-09-16 | 850 |  |  | 132570 |
| 852 | 37100.37300.37600.37900.38900.40300.46300.420800 | 12th Floor | 1.94d | 2027-09-16 | 2027-09-18 | 851 |  |  | 132580 |
| 853 | 37100.37300.37600.37900.38900.40300.46300.420900 | 13th Floor | 1.94d | 2027-09-18 | 2027-09-20 | 852 |  |  | 132590 |
| 854 | 37100.37300.37600.37900.38900.40300.46300.421000 | 14th Floor | 1.94d | 2027-09-20 | 2027-09-22 | 853 |  |  | 132600 |
| 855 | 37100.37300.37600.37900.38900.40300.46300.421100 | 15th Floor | 1.94d | 2027-09-22 | 2027-09-23 | 854 |  |  | 132610 |
| 856 | 37100.37300.37600.37900.38900.40300.46300.421200 | 16th Floor | 1.94d | 2027-09-24 | 2027-09-25 | 855 |  |  | 7576473 |
| 857 | 37100.37300.37600.37900.38900.40300.46300.421300 | 17th Floor | 1.94d | 2027-09-25 | 2027-09-27 | 856 |  |  | 132620 |
| 858 | 37100.37300.37600.37900.38900.40300.46300.421400 | 18th Floor | 1.94d | 2027-09-27 | 2027-09-29 | 857 |  |  | 132630 |
| 859 | 37100.37300.37600.37900.38900.40300.46300.421500 | 19th Floor | 1.94d | 2027-09-29 | 2027-10-01 | 858 |  |  | 132640 |
| 860 | 37100.37300.37600.37900.38900.40300.46300.421600 | 20th Floor | 1.94d | 2027-10-01 | 2027-10-03 | 859 |  |  | 132650 |
| 861 | 37100.37300.37600.37900.38900.40300.46300.421700 | 21st Floor | 1.94d | 2027-10-03 | 2027-10-05 | 860 |  |  | 7576483 |
| 862 | 37100.37300.37600.37900.38900.40300.46300.421800 | 22nd Floor | 1.94d | 2027-10-05 | 2027-10-07 | 861 |  |  | 132660 |
| 863 | 37100.37300.37600.37900.38900.40300.46300.421900 | 23rd Floor | 1.94d | 2027-10-07 | 2027-10-09 | 862 |  |  | 132670 |
| 864 | 37100.37300.37600.37900.38900.40300.46300.422000 | 24th Floor | 1.94d | 2027-10-09 | 2027-10-11 | 863 |  |  | 132680 |
| 865 | 37100.37300.37600.37900.38900.40300.46300.422100 | 25th Floor | 1.94d | 2027-10-11 | 2027-10-13 | 864 |  |  | 132690 |
| 866 | 37100.37300.37600.37900.38900.40300.46300.422200 | 26th Floor | 1.94d | 2027-10-13 | 2027-10-15 | 865 |  |  | 132700 |
| 867 | 37100.37300.37600.37900.38900.40300.46300.422300 | 27th Floor | 1.94d | 2027-10-15 | 2027-10-17 | 866 |  |  | 132710 |
| 868 | 37100.37300.37600.37900.38900.40300.46300.422400 | 28th Floor | 1.94d | 2027-10-17 | 2027-10-19 | 867 |  |  | 132720 |
| 869 | 37100.37300.37600.37900.38900.40300.46300.422500 | 29th Floor | 5d | 2025-12-01 | 2025-12-05 |  | start no earlier than 2025-12-01 | Indian Calendar | 10340758 |
| 870 | 37100.37300.37600.37900.38900.40300.46300.422600 | 29th Floor | 1.94d | 2027-10-19 | 2027-10-21 | 868, 869 |  |  | 132730 |
| 871 | 37100.37300.37600.37900.38900.40300.46300.422700 | 30th Floor | 1.94d | 2027-10-21 | 2027-10-23 | 870 |  |  | 132740 |
| 872 | 37100.37300.37600.37900.38900.40300.46300.422800 | 31st Floor | 5d | 2026-03-16 | 2026-03-20 |  | start no earlier than 2026-03-16 | Indian Calendar | 10340768 |
| 873 | 37100.37300.37600.37900.38900.40300.46300.422900 | 31st Floor | 1.94d | 2027-10-23 | 2027-10-24 | 871, 872 |  |  | 7576493 |
| 874 | 37100.37300.37600.37900.38900.40300.46300.423000 | 32nd Floor | 1.94d | 2027-10-25 | 2027-10-26 | 873 |  |  | 132750 |
| 875 | 37100.37300.37600.37900.38900.40300.46300.423100 | 33rd Floor | 1.94d | 2027-10-26 | 2027-10-28 | 874 |  |  | 132760 |
| 876 | 37100.37300.37600.37900.38900.40300.46300.423200 | 34th Floor | 1.94d | 2027-10-28 | 2027-10-30 | 875 |  |  | 132770 |
| 877 | 37100.37300.37600.37900.38900.40300.46300.423300 | 35th Floor | 1.94d | 2027-10-30 | 2027-11-01 | 876 |  |  | 132780 |

| ID | WBS | Task | Duration | Start | Finish | Predecessors | Constraint | Unique_Task_ID |
| --- | --- | --- | --- | --- | --- | --- | --- | --- |
| 878 | 37100.37300.37600.37900.95200 | **MEP work** | 1033.25d | 2025-11-30 | 2028-11-21 |  | start no earlier than 2025-11-30 | 7569153 |
| 879 | 37100.37300.37600.37900.95200.98300 | **Electrical work** | 268.19d | 2027-01-14 | 2027-10-09 |  | start no earlier than 2027-01-14 | 7569163 |
| 880 | 37100.37300.37600.37900.95200.98300.303000 | Cable Tray | 89.94d | 2027-01-14 | 2027-04-14 | 222 |  | 7572353 |
| 881 | 37100.37300.37600.37900.95200.98300.303100 | Cable, main & sub main | 79.94d | 2027-02-23 | 2027-05-14 | 880SS+40d |  | 9211 |
| 882 | 37100.37300.37600.37900.95200.98300.303200 | LT panel & DB | 119.94d | 2027-04-14 | 2027-08-12 | 880 |  | 7572363 |
| 883 | 37100.37300.37600.37900.95200.98300.303300 | Rising main | 89.94d | 2027-06-06 | 2027-09-04 | 880FS+53.38d |  | 7572373 |
| 884 | 37100.37300.37600.37900.95200.98300.303400 | EARTHING Works | 59.94d | 2027-04-27 | 2027-06-26 | 880FS+13.38d |  | 9204 |
| 885 | 37100.37300.37600.37900.95200.98300.303500 | Advance lightening protection | 59.94d | 2027-02-21 | 2027-04-22 | 826 |  | 9205 |
| 886 | 37100.37300.37600.37900.95200.98300.303600 | Inverter | 34.94d | 2027-09-04 | 2027-10-09 | 883, 884, 887 |  | 9206 |
| 887 | 37100.37300.37600.37900.95200.98300.303700 | Energy meter | 59.94d | 2027-05-14 | 2027-07-13 | 881 |  | 9207 |
| 888 | 37100.37300.37600.37900.95200.98300.303800 | Exhast fan | 60d | 2027-04-03 | 2027-06-02 | 818FF+4.5d |  | 9208 |
| 889 | 37100.37300.37600.37900.95200.98300.303900 | FTTH | 59.94d | 2027-06-17 | 2027-08-16 | 884FS-9d |  | 9209 |
| 890 | 37100.37300.37600.37900.95200.98300.304000 | Security System - FA & PA | 54.94d | 2027-08-12 | 2027-10-05 | 882, 889FF |  | 9219 |
| 891 | 37100.37300.37600.37900.95200.98300.304100 | Solar water heater | 59.94d | 2027-02-21 | 2027-04-22 | 826 |  | 9229 |
| 892 | 37100.37300.37600.37900.95200.128800 | **Plumbing wrok** | 578.31d | 2025-11-30 | 2027-08-24 |  | start no earlier than 2025-11-30 | 7569413 |
| 893 | 37100.37300.37600.37900.95200.128800.304200 | Terrace looping | 44.94d | 2027-01-12 | 2027-02-26 | 825 |  | 7572383 |
| 894 | 37100.37300.37600.37900.95200.128800.304300 | Shaft Plumbing | 119.94d | 2027-02-26 | 2027-06-26 | 35, 893 |  | 7572393 |
| 895 | 37100.37300.37600.37900.95200.128800.304400 | CP sanitary fixture supply | 75d | 2027-06-10 | 2027-08-24 | 813, 816FS+53.38d |  | 7572403 |
| 896 | 37100.37300.37600.37900.95200.128800.304500 | Cold & flushing water supply | 89.94d | 2025-11-30 | 2026-03-09 | 829SS-80d |  | 7572413 |
| 897 | 37100.37300.37600.37900.95200.128800.304600 | Misc work | 29.94d | 2026-02-28 | 2026-03-30 | 896FS-9d |  | 7572423 |
| 898 | 37100.37300.37600.37900.95200.184300 | **Fire fighting work** | 589.94d | 2026-02-19 | 2027-11-16 |  | start no earlier than 2026-02-19 | 7569493 |
| 899 | 37100.37300.37600.37900.95200.184300.304700 | Fire hydrant work | 89.94d | 2026-02-19 | 2026-05-20 | 829SS+0.38d |  | 9221 |
| 900 | 37100.37300.37600.37900.95200.184300.304800 | Sprinkler & piping work | 240d | 2027-03-21 | 2027-11-16 | 899FS+260d |  | 7572433 |
| 901 | 37100.37300.37600.37900.95200.184300.304900 | Shaft Downtake works | 89.94d | 2027-01-12 | 2027-04-12 | 825 |  | 7572443 |
| 902 | 37100.37300.37600.37900.95200.184300.305000 | Connection to pump room | 29.94d | 2027-04-12 | 2027-05-12 | 901 |  | 9224 |

| ID | WBS | Task | Duration | Start | Finish | Predecessors | Complete | Constraint | Unique_Task_ID |
| --- | --- | --- | --- | --- | --- | --- | --- | --- | --- |
| 903 | 37100.37300.37600.37900.95200.188200 | **Lift work** | 304.88d | 2027-01-14 | 2027-11-15 |  |  | start no earlier than 2027-01-14 | 7571053 |
| 904 | 37100.37300.37600.37900.95200.188200.305100 | Lift Shaft Handover | 39.94d | 2027-01-14 | 2027-02-23 | 222 |  |  | 7572453 |
| 905 | 37100.37300.37600.37900.95200.188200.305200 | Lift installation work | 180d | 2027-02-23 | 2027-08-22 | 904 |  |  | 7572463 |
| 906 | 37100.37300.37600.37900.95200.188200.305300 | Lift testing and commissioning | 84.94d | 2027-08-22 | 2027-11-15 | 905 |  |  | 7572473 |
| 907 | 37100.37300.37600.37900.95200.195000 | **AC work** | 62.94d | 2028-09-19 | 2028-11-21 |  |  | start no earlier than 2028-09-19 | 7571323 |
| 908 | 37100.37300.37600.37900.95200.195000.305400 | Split AC | 62.94d | 2028-09-19 | 2028-11-21 | 924FS+132d |  |  | 7572483 |
| 909 | 37100.37300.37600.37900.184500 | **Tower Completion** | 265.88d | 2027-02-27 | 2027-11-19 |  |  | start no earlier than 2027-02-27 | 7569443 |
| 910 | 37100.37300.37600.37900.184500.262000 | SURFACE PREPARATION | 79.94d | 2027-02-27 | 2027-05-17 | 260FS+1.88d |  |  | 7571483 |
| 911 | 37100.37300.37600.37900.184500.262100 | External Painting | 99.94d | 2027-05-18 | 2027-08-25 | 910 |  |  | 7571493 |
| 912 | 37100.37300.37600.37900.184500.262200 | Final coat of painting | 86d | 2027-08-25 | 2027-11-19 | 911 |  |  | 7571503 |
| 913 | 37100.37300.37600.37900.184500.262300 | Misc. work | 59.94d | 2027-08-25 | 2027-10-24 | 911 |  |  | 7571513 |
| 914 | 37100.37300.37600.37900.195100 | **Entrance lobby** | 60d | 2028-03-11 | 2028-05-10 |  |  | start no earlier than 2028-03-11 | 7571293 |
| 915 | 37100.37300.37600.37900.195100.262400 | Entrance lobby | 60d | 2028-03-11 | 2028-05-10 | 835FS+280d |  |  | 7571523 |
| 916 | 37100.37300.37600.37900.107400 | **Post OC activities** | 301.69d | 2028-04-13 | 2029-02-09 |  |  | start no earlier than 2028-04-13 | 7569373 |
| 917 | 37100.37300.37600.37900.107400.262500 | Wardrobe installation | 142.94d | 2028-04-13 | 2028-09-03 | 924FS-26.75d |  |  | 7571533 |
| 918 | 37100.37300.37600.37900.107400.262600 | Home Automation | 82.94d | 2028-09-19 | 2028-12-11 | 924FS+132d |  |  | 37702 |
| 919 | 37100.37300.37600.37900.107400.262700 | Wooden Flooring | 142.94d | 2028-09-19 | 2029-02-09 | 924FS+132d |  |  | 7571543 |
| 920 | 37100.37300.37600.37900.107400.262800 | Shaft Closer | 79.94d | 2028-09-19 | 2028-12-08 | 924FS+132d |  |  | 37704 |
| 921 | 37100.37300.37600.37900.107400.262900 | Modular Kitchen | 142.94d | 2028-09-19 | 2029-02-09 | 924FS+132d |  |  | 37714 |
| 922 | 37100.37300.37600.37900.107400.263000 | External Elevation Façade | 67.94d | 2028-09-19 | 2028-11-26 | 924FS+132d |  |  | 37705 |
| 923 | 37100.37300.37600.37900.254600 | OC Application/Readiness | 0.94d | 2027-11-16 | 2027-11-17 | 222, 830FS+7.12d, 906, 823, 888, 890, 891, 886, 885, 877FS-44.5d, 34, 833, 894, 897, 900, 902, 913 |  |  | 7571363 |
| 924 | 37100.37300.37600.37900.254700 | OC Receipt | 0d | 2028-05-10 | 2028-05-10 | 923FS+53.38d, 912, 915 |  |  | 7571373 |
| 925 | 37100.37300.37600.37900.254800 | Offer To Possession | 29.94d | 2029-02-09 | 2029-03-11 | 917, 918, 919, 920, 921, 922, 908 |  |  | 7571383 |
| 926 | 37100.37300.37600.38000 | **Tower 4** | 2016.19d | 2023-09-30 | 2029-08-27 |  | 6% | start no earlier than 2023-09-30 | 7567493 |
| 927 | 37100.37300.37600.38000.97700 | **Substructure** | 833.69d | 2023-09-30 | 2026-04-18 |  | 60% | start no earlier than 2023-09-30 | 7569253 |
| 928 | 37100.37300.37600.38000.97700.108100 | **Soil Bed Preparation** | 763.81d | 2023-09-30 | 2026-02-07 |  | 77% | start no earlier than 2023-09-30 | 7569383 |
| 929 | 37100.37300.37600.38000.97700.108100.241900 | Test Piling | 24.94d | 2023-09-30 | 2023-10-24 |  | 100% | start no earlier than 2023-09-30 | 7572493 |
| 930 | 37100.37300.37600.38000.97700.108100.241800 | Excavation | 29.94d | 2024-01-10 | 2024-02-08 | 7SS+36.74d | 100% | start no earlier than 2024-01-10 | 7572503 |
| 931 | 37100.37300.37600.38000.97700.108100.241700 | Main Piling Work | 168.94d | 2024-04-12 | 2024-12-23 | 7FS-7.45d | 100% | start no earlier than 2024-04-12 | 7572513 |
| 932 | 37100.37300.37600.38000.97700.108100.305500 | Anti-termite | 5d | 2025-11-30 | 2025-12-04 | 931FS+13.38d |  |  | 7572523 |
| 933 | 37100.37300.37600.38000.97700.108100.241600 | PCC | 3.01d | 2024-10-25 | 2024-10-28 | 930FS-14.7d, 932SS+2.98d | 100% | start no earlier than 2024-10-25 | 7572533 |
| 934 | 37100.37300.37600.38000.97700.108100.305600 | Backfilling | 59.94d | 2025-11-30 | 2026-02-07 | 947FS-0.94d |  |  | 7572543 |

| ID | WBS | Task | Duration | Start | Finish | Predecessors | Complete | Constraint | Unique_Task_ID |
| --- | --- | --- | --- | --- | --- | --- | --- | --- | --- |
| 935 | 37100.37300.37600.38000.97700.103100 | **RCC Structure** | 124.5d | 2024-12-21 | 2025-04-24 |  | 100% | start no earlier than 2024-12-21 | 7569293 |
| 936 | 37100.37300.37600.38000.97700.103100.180800 | **Raft Foundation** | 36.5d | 2024-12-21 | 2025-01-26 |  | 100% | start no earlier than 2024-12-21 | 7571233 |
| 937 | 37100.37300.37600.38000.97700.103100.180800.203100 | Reinforcement | 23d | 2024-12-21 | 2025-01-22 | 933FS-31.15d | 100% | start no earlier than 2024-12-21 | 7576503 |
| 938 | 37100.37300.37600.38000.97700.103100.180800.203200 | Formwork | 24d | 2024-12-31 | 2025-01-23 | 937FF+2d | 100% | start no earlier than 2024-12-31 | 7576513 |
| 939 | 37100.37300.37600.38000.97700.103100.180800.203300 | Concreting | 4d | 2025-01-23 | 2025-01-26 | 938FS-1d | 100% | start no earlier than 2025-01-23 | 7576523 |
| 940 | 37100.37300.37600.38000.97700.103100.180700 | **Basement 1 Slab** | 26d | 2025-01-25 | 2025-02-19 |  | 100% | start no earlier than 2025-01-25 | 7571213 |
| 941 | 37100.37300.37600.38000.97700.103100.180700.203400 | Reinforcement | 22d | 2025-01-25 | 2025-02-15 | 939 | 100% | start no earlier than 2025-01-25 | 7576533 |
| 942 | 37100.37300.37600.38000.97700.103100.180700.203500 | Formwork | 19d | 2025-01-31 | 2025-02-18 | 941SS+3d | 100% | start no earlier than 2025-01-31 | 7576543 |
| 943 | 37100.37300.37600.38000.97700.103100.180700.203600 | Concreting | 4d | 2025-02-16 | 2025-02-19 | 942FS+6.4d | 100% | start no earlier than 2025-02-16 | 7576553 |
| 944 | 37100.37300.37600.38000.97700.103100.180600 | **Basement 2 Slab/GF** | 21.94d | 2025-02-17 | 2025-03-10 |  | 100% | start no earlier than 2025-02-17 | 7571203 |
| 945 | 37100.37300.37600.38000.97700.103100.180600.203700 | Reinforcement | 19d | 2025-02-17 | 2025-03-09 | 943FS-1d | 100% | start no earlier than 2025-02-17 | 7576563 |
| 946 | 37100.37300.37600.38000.97700.103100.180600.203800 | Formwork | 18d | 2025-02-20 | 2025-03-09 | 945SS+3d | 100% | start no earlier than 2025-02-20 | 7576573 |
| 947 | 37100.37300.37600.38000.97700.103100.180600.203900 | Concreting | 1.94d | 2025-03-09 | 2025-03-10 | 946FS-1d | 100% | start no earlier than 2025-03-09 | 7576583 |
| 948 | 37100.37300.37600.38000.97700.103100.180500 | **Podium** | 45d | 2025-03-11 | 2025-04-24 |  | 100% | start no earlier than 2025-03-11 | 7571193 |
| 949 | 37100.37300.37600.38000.97700.103100.180500.204000 | Reinforcement | 15d | 2025-03-11 | 2025-04-21 | 947FS+0.06d | 100% | start no earlier than 2025-03-11 | 7576593 |
| 950 | 37100.37300.37600.38000.97700.103100.180500.204100 | Formwork | 15d | 2025-03-17 | 2025-04-21 | 949SS+1d | 100% | start no earlier than 2025-03-17 | 7576603 |
| 951 | 37100.37300.37600.38000.97700.103100.180500.204200 | Concreting | 1d | 2025-04-24 | 2025-04-24 | 950 | 100% | start no earlier than 2025-04-24 | 7576613 |
| 952 | 37100.37300.37600.38000.97700.173800 | **Substructure Finishing** | 129.81d | 2025-11-30 | 2026-04-18 |  |  | start no earlier than 2025-11-30 | 7569503 |
| 953 | 37100.37300.37600.38000.97700.173800.305700 | Masonary work | 44.94d | 2025-11-30 | 2026-01-23 | 951FS+26.75d |  |  | 7572553 |
| 954 | 37100.37300.37600.38000.97700.173800.305800 | Plaster | 39.94d | 2026-01-23 | 2026-03-04 | 953 |  |  | 7572563 |
| 955 | 37100.37300.37600.38000.97700.173800.305900 | Structural steel | 59.94d | 2025-11-30 | 2026-02-07 | 951FS+53.38d |  |  | 7572573 |
| 956 | 37100.37300.37600.38000.97700.173800.306000 | White Wash | 44.94d | 2026-03-04 | 2026-04-18 | 954 |  |  | 7572583 |
| 957 | 37100.37300.37600.38000.39000 | **Superstructure** | 1405.06d | 2025-04-25 | 2029-05-06 |  | 3% | start no earlier than 2025-04-25 | 7567533 |
| 958 | 37100.37300.37600.38000.39000.43400 | **RCC structure** | 564.75d | 2025-04-25 | 2027-01-17 |  | 29% | start no earlier than 2025-04-25 | 7567653 |
| 959 | 37100.37300.37600.38000.39000.43400.125200 | **1st floor slab** | 69.25d | 2025-04-25 | 2025-07-03 |  | 100% | start no earlier than 2025-04-25 | 7569933 |
| 960 | 37100.37300.37600.38000.39000.43400.125200.204300 | Reinforcement | 20d | 2025-04-25 | 2025-06-01 | 951FS+2.75d | 100% | start no earlier than 2025-04-25 | 7576623 |
| 961 | 37100.37300.37600.38000.39000.43400.125200.204400 | Wall conduiting | 4d | 2025-04-28 | 2025-05-02 | 960SS+2.75d | 100% | start no earlier than 2025-04-28 | 7576633 |
| 962 | 37100.37300.37600.38000.39000.43400.125200.204500 | Formwork | 35d | 2025-04-28 | 2025-07-03 | 960SS+3d | 100% | start no earlier than 2025-04-28 | 7576643 |
| 963 | 37100.37300.37600.38000.39000.43400.125200.204600 | Concreting | 10d | 2025-05-16 | 2025-07-03 | 962FS-45d | 100% | start no earlier than 2025-05-16 | 7576653 |

| ID | WBS | Task | Duration | Start | Finish | Predecessors | Complete | Constraint | Unique_Task_ID |
| --- | --- | --- | --- | --- | --- | --- | --- | --- | --- |
| 964 | 37100.37300.37600.38000.39000.43400.125100 | **2nd floor slab** | 47d | 2025-07-07 | 2025-08-22 |  | 100% | start no earlier than 2025-07-07 | 7569943 |
| 965 | 37100.37300.37600.38000.39000.43400.125100.204700 | Reinforcement | 20d | 2025-07-07 | 2025-08-18 | 963FS+1d | 100% | start no earlier than 2025-07-07 | 7576663 |
| 966 | 37100.37300.37600.38000.39000.43400.125100.204800 | Wall conduiting | 14d | 2025-07-14 | 2025-08-18 | 961, 965SS+2.75d | 100% | start no earlier than 2025-07-14 | 7576673 |
| 967 | 37100.37300.37600.38000.39000.43400.125100.204900 | Formwork | 17d | 2025-07-14 | 2025-08-18 | 965SS+3d | 100% | start no earlier than 2025-07-14 | 7576683 |
| 968 | 37100.37300.37600.38000.39000.43400.125100.205000 | Concreting | 4d | 2025-08-15 | 2025-08-22 | 967FS-6d | 100% | start no earlier than 2025-08-15 | 7576693 |
| 969 | 37100.37300.37600.38000.39000.43400.125000 | **3rd floor slab** | 17d | 2025-08-24 | 2025-09-09 |  | 100% | start no earlier than 2025-08-24 | 7569953 |
| 970 | 37100.37300.37600.38000.39000.43400.125000.205100 | Reinforcement | 11d | 2025-08-24 | 2025-09-08 | 968FS+1d | 100% | start no earlier than 2025-08-24 | 7576703 |
| 971 | 37100.37300.37600.38000.39000.43400.125000.205200 | Wall conduiting | 8d | 2025-08-28 | 2025-09-08 | 966, 970SS+2.75d | 100% | start no earlier than 2025-08-28 | 7576713 |
| 972 | 37100.37300.37600.38000.39000.43400.125000.205300 | Formwork | 11d | 2025-08-26 | 2025-09-08 | 970SS+3d | 100% | start no earlier than 2025-08-26 | 7576723 |
| 973 | 37100.37300.37600.38000.39000.43400.125000.205400 | Concreting | 4d | 2025-09-06 | 2025-09-09 | 972 | 100% | start no earlier than 2025-09-06 | 7576733 |
| 974 | 37100.37300.37600.38000.39000.43400.124900 | **4th floor slab** | 19d | 2025-09-05 | 2025-09-23 |  | 100% | start no earlier than 2025-09-05 | 7569963 |
| 975 | 37100.37300.37600.38000.39000.43400.124900.205500 | Reinforcement | 8d | 2025-09-07 | 2025-09-22 | 973FS-7d | 100% | start no earlier than 2025-09-07 | 7576743 |
| 976 | 37100.37300.37600.38000.39000.43400.124900.205600 | Wall conduiting | 7d | 2025-09-05 | 2025-09-22 | 971, 975SS+1d | 100% | start no earlier than 2025-09-05 | 7576753 |
| 977 | 37100.37300.37600.38000.39000.43400.124900.205700 | Formwork | 7d | 2025-09-08 | 2025-09-22 | 975SS+1d | 100% | start no earlier than 2025-09-08 | 7576763 |
| 978 | 37100.37300.37600.38000.39000.43400.124900.205800 | Concreting | 5d | 2025-09-15 | 2025-09-23 | 977FS-5d | 100% | start no earlier than 2025-09-15 | 7576773 |
| 979 | 37100.37300.37600.38000.39000.43400.124800 | **5th floor slab** | 16d | 2025-09-18 | 2025-10-03 |  | 100% | start no earlier than 2025-09-18 | 7569973 |
| 980 | 37100.37300.37600.38000.39000.43400.124800.205900 | Reinforcement | 7d | 2025-09-18 | 2025-10-03 | 978FS-10d | 100% | start no earlier than 2025-09-18 | 7576783 |
| 981 | 37100.37300.37600.38000.39000.43400.124800.206000 | Wall conduiting | 3d | 2025-09-18 | 2025-09-30 | 976, 980SS+1d | 100% | start no earlier than 2025-09-18 | 7576793 |
| 982 | 37100.37300.37600.38000.39000.43400.124800.206200 | Formwork | 6d | 2025-09-18 | 2025-10-02 | 980SS+1d | 100% | start no earlier than 2025-09-18 | 7576803 |
| 983 | 37100.37300.37600.38000.39000.43400.124800.206300 | Concreting | 2d | 2025-09-30 | 2025-10-01 | 982FS-1d | 100% | start no earlier than 2025-09-30 | 7576813 |
| 984 | 37100.37300.37600.38000.39000.43400.124700 | **6th floor slab** | 13d | 2025-10-01 | 2025-10-13 |  | 100% | start no earlier than 2025-10-01 | 7569983 |
| 985 | 37100.37300.37600.38000.39000.43400.124700.206600 | Reinforcement | 12d | 2025-10-01 | 2025-10-12 | 983FS+1d | 100% | start no earlier than 2025-10-01 | 7576823 |
| 986 | 37100.37300.37600.38000.39000.43400.124700.206700 | Wall conduiting | 3d | 2025-10-01 | 2025-10-12 | 981, 985SS+1d | 100% | start no earlier than 2025-10-01 | 7576833 |
| 987 | 37100.37300.37600.38000.39000.43400.124700.206800 | Formwork | 7d | 2025-10-01 | 2025-10-12 | 985SS+1d | 100% | start no earlier than 2025-10-01 | 7576843 |
| 988 | 37100.37300.37600.38000.39000.43400.124700.206900 | Concreting | 3d | 2025-10-11 | 2025-10-13 | 987 | 100% | start no earlier than 2025-10-11 | 7576853 |

| ID | WBS | Task | Duration | Start | Finish | Predecessors | Complete | Constraint | Unique_Task_ID |
| --- | --- | --- | --- | --- | --- | --- | --- | --- | --- |
| 989 | 37100.37300.37600.38000.39000.43400.124100 | **7th floor slab** | 13d | 2025-10-19 | 2025-10-31 |  | 100% | start no earlier than 2025-10-19 | 7569993 |
| 990 | 37100.37300.37600.38000.39000.43400.124100.207000 | Reinforcement | 8d | 2025-10-19 | 2025-10-30 | 988FS+1d | 100% | start no earlier than 2025-10-19 | 7576863 |
| 991 | 37100.37300.37600.38000.39000.43400.124100.207100 | Wall conduiting | 3d | 2025-10-19 | 2025-10-30 | 986, 990SS+1d | 100% | start no earlier than 2025-10-19 | 7576873 |
| 992 | 37100.37300.37600.38000.39000.43400.124100.207200 | Formwork | 7d | 2025-10-19 | 2025-10-30 | 990SS+1d | 100% | start no earlier than 2025-10-19 | 7576883 |
| 993 | 37100.37300.37600.38000.39000.43400.124100.207300 | Concreting | 5d | 2025-10-27 | 2025-10-31 | 992FS-3d | 100% | start no earlier than 2025-10-27 | 7576893 |
| 994 | 37100.37300.37600.38000.39000.43400.124000 | **8th floor slab** | 19.62d | 2025-10-27 | 2025-11-28 |  | 100% | start no earlier than 2025-10-27 | 7570003 |
| 995 | 37100.37300.37600.38000.39000.43400.124000.207400 | Reinforcement | 8.88d | 2025-10-28 | 2025-11-27 | 993FS+1d | 100% | start no earlier than 2025-10-28 | 7576903 |
| 996 | 37100.37300.37600.38000.39000.43400.124000.207500 | Wall conduiting | 7d | 2025-10-27 | 2025-11-27 | 991, 995SS+1d | 100% | start no earlier than 2025-10-27 | 7576913 |
| 997 | 37100.37300.37600.38000.39000.43400.124000.207600 | Formwork | 10d | 2025-10-28 | 2025-11-27 | 995SS+1d | 100% | start no earlier than 2025-10-28 | 7576923 |
| 998 | 37100.37300.37600.38000.39000.43400.124000.207700 | Concreting | 1d | 2025-11-27 | 2025-11-28 | 997 | 100% | start no earlier than 2025-11-27 | 7576933 |
| 999 | 37100.37300.37600.38000.39000.43400.180400 | **9th floor slab** | 8d | 2025-12-17 | 2025-12-25 |  |  | start no earlier than 2025-12-17 | 7570013 |
| 1000 | 37100.37300.37600.38000.39000.43400.180400.423400 | Reinforcement | 7d | 2025-12-17 | 2025-12-24 | 998 |  |  | 7576943 |
| 1001 | 37100.37300.37600.38000.39000.43400.180400.423500 | Wall conduiting | 3d | 2025-12-18 | 2025-12-21 | 1000SS+1d, 996 |  |  | 7576953 |
| 1002 | 37100.37300.37600.38000.39000.43400.180400.423600 | Formwork | 6d | 2025-12-18 | 2025-12-24 | 1000SS+1d |  |  | 7576963 |
| 1003 | 37100.37300.37600.38000.39000.43400.180400.423700 | Concreting | 1d | 2025-12-24 | 2025-12-25 | 1002 |  |  | 7576973 |
| 1004 | 37100.37300.37600.38000.39000.43400.180300 | **10th floor slab** | 9d | 2025-12-22 | 2025-12-31 |  |  | start no earlier than 2025-12-22 | 7570023 |
| 1005 | 37100.37300.37600.38000.39000.43400.180300.423800 | Reinforcement | 8d | 2025-12-22 | 2025-12-30 | 1000SS+5d |  |  | 7576983 |
| 1006 | 37100.37300.37600.38000.39000.43400.180300.423900 | Wall conduiting | 3d | 2025-12-23 | 2025-12-26 | 1001, 1005SS+1d |  |  | 7576993 |
| 1007 | 37100.37300.37600.38000.39000.43400.180300.424000 | Formwork | 7d | 2025-12-23 | 2025-12-30 | 1005SS+1d |  |  | 7577003 |
| 1008 | 37100.37300.37600.38000.39000.43400.180300.424100 | Concreting | 1d | 2025-12-30 | 2025-12-31 | 1007 |  |  | 7577013 |
| 1009 | 37100.37300.37600.38000.39000.43400.180200 | **11th floor slab** | 8d | 2025-12-31 | 2026-01-08 |  |  | start no earlier than 2025-12-31 | 7570033 |
| 1010 | 37100.37300.37600.38000.39000.43400.180200.424200 | Reinforcement | 7d | 2025-12-31 | 2026-01-07 | 1008 |  |  | 7577023 |
| 1011 | 37100.37300.37600.38000.39000.43400.180200.424300 | Wall conduiting | 3d | 2026-01-01 | 2026-01-04 | 1006, 1010SS+1d |  |  | 7577033 |
| 1012 | 37100.37300.37600.38000.39000.43400.180200.424400 | Formwork | 6d | 2026-01-01 | 2026-01-07 | 1010SS+1d |  |  | 7577043 |
| 1013 | 37100.37300.37600.38000.39000.43400.180200.424500 | Concreting | 1d | 2026-01-07 | 2026-01-08 | 1012 |  |  | 7577053 |

| ID | WBS | Task | Duration | Start | Finish | Predecessors | Constraint | Unique_Task_ID |
| --- | --- | --- | --- | --- | --- | --- | --- | --- |
| 1014 | 37100.37300.37600.38000.39000.43400.180100 | **12th floor slab** | 8d | 2026-01-08 | 2026-01-16 |  | start no earlier than 2026-01-08 | 7570043 |
| 1015 | 37100.37300.37600.38000.39000.43400.180100.424600 | Reinforcement | 7d | 2026-01-08 | 2026-01-15 | 1013 |  | 7577063 |
| 1016 | 37100.37300.37600.38000.39000.43400.180100.424700 | Wall conduiting | 3d | 2026-01-09 | 2026-01-12 | 1011, 1015SS+1d |  | 7577073 |
| 1017 | 37100.37300.37600.38000.39000.43400.180100.424800 | Formwork | 6d | 2026-01-09 | 2026-01-15 | 1015SS+1d |  | 7577083 |
| 1018 | 37100.37300.37600.38000.39000.43400.180100.424900 | Concreting | 1d | 2026-01-15 | 2026-01-16 | 1017 |  | 7577093 |
| 1019 | 37100.37300.37600.38000.39000.43400.180000 | **13th floor slab** | 8d | 2026-01-16 | 2026-01-24 |  | start no earlier than 2026-01-16 | 7570053 |
| 1020 | 37100.37300.37600.38000.39000.43400.180000.425000 | Reinforcement | 7d | 2026-01-16 | 2026-01-23 | 1018 |  | 7577103 |
| 1021 | 37100.37300.37600.38000.39000.43400.180000.425100 | Wall conduiting | 3d | 2026-01-17 | 2026-01-20 | 1016, 1020SS+1d |  | 7577113 |
| 1022 | 37100.37300.37600.38000.39000.43400.180000.425200 | Formwork | 6d | 2026-01-17 | 2026-01-23 | 1020SS+1d |  | 7577123 |
| 1023 | 37100.37300.37600.38000.39000.43400.180000.425300 | Concreting | 1d | 2026-01-23 | 2026-01-24 | 1022 |  | 7577133 |
| 1024 | 37100.37300.37600.38000.39000.43400.179900 | **14th floor slab** | 8d | 2026-01-24 | 2026-02-01 |  | start no earlier than 2026-01-24 | 7570063 |
| 1025 | 37100.37300.37600.38000.39000.43400.179900.425400 | Reinforcement | 7d | 2026-01-24 | 2026-01-31 | 1023 |  | 7577143 |
| 1026 | 37100.37300.37600.38000.39000.43400.179900.425500 | Wall conduiting | 3d | 2026-01-25 | 2026-01-28 | 1021, 1025SS+1d |  | 7577153 |
| 1027 | 37100.37300.37600.38000.39000.43400.179900.425600 | Formwork | 6d | 2026-01-25 | 2026-01-31 | 1025SS+1d |  | 7577163 |
| 1028 | 37100.37300.37600.38000.39000.43400.179900.425700 | Concreting | 1d | 2026-01-31 | 2026-02-01 | 1027 |  | 7577173 |
| 1029 | 37100.37300.37600.38000.39000.43400.179800 | **15th floor slab** | 9d | 2026-02-02 | 2026-02-11 |  | start no earlier than 2026-02-02 | 7570073 |
| 1030 | 37100.37300.37600.38000.39000.43400.179800.425800 | Reinforcement | 8d | 2026-02-02 | 2026-02-10 | 1028FS+1d |  | 7577183 |
| 1031 | 37100.37300.37600.38000.39000.43400.179800.425900 | Wall conduiting | 3d | 2026-02-03 | 2026-02-06 | 1026, 1030SS+1d |  | 7577193 |
| 1032 | 37100.37300.37600.38000.39000.43400.179800.426000 | Formwork | 7d | 2026-02-03 | 2026-02-10 | 1030SS+1d |  | 7577203 |
| 1033 | 37100.37300.37600.38000.39000.43400.179800.426100 | Concreting | 1d | 2026-02-10 | 2026-02-11 | 1032 |  | 7577213 |
| 1034 | 37100.37300.37600.38000.39000.43400.179700 | **16th floor slab** | 8d | 2026-02-11 | 2026-02-19 |  | start no earlier than 2026-02-11 | 7570083 |
| 1035 | 37100.37300.37600.38000.39000.43400.179700.426200 | Reinforcement | 7d | 2026-02-11 | 2026-02-18 | 1033 |  | 7577223 |
| 1036 | 37100.37300.37600.38000.39000.43400.179700.426300 | Wall conduiting | 3d | 2026-02-12 | 2026-02-15 | 1031, 1035SS+1d |  | 7577233 |
| 1037 | 37100.37300.37600.38000.39000.43400.179700.426400 | Formwork | 6d | 2026-02-12 | 2026-02-18 | 1035SS+1d |  | 7577243 |
| 1038 | 37100.37300.37600.38000.39000.43400.179700.426500 | Concreting | 1d | 2026-02-18 | 2026-02-19 | 1037 |  | 7577253 |

| ID | WBS | Task | Duration | Start | Finish | Predecessors | Constraint | Unique_Task_ID |
| --- | --- | --- | --- | --- | --- | --- | --- | --- |
| 1039 | 37100.37300.37600.38000.39000.43400.179600 | **17th floor slab** | 8d | 2026-02-18 | 2026-02-26 |  | start no earlier than 2026-02-18 | 7570093 |
| 1040 | 37100.37300.37600.38000.39000.43400.179600.426600 | Reinforcement | 7d | 2026-02-18 | 2026-02-25 | 1038FS-1d |  | 7577263 |
| 1041 | 37100.37300.37600.38000.39000.43400.179600.426700 | Wall conduiting | 3d | 2026-02-19 | 2026-02-22 | 1036, 1040SS+1d |  | 7577273 |
| 1042 | 37100.37300.37600.38000.39000.43400.179600.426800 | Formwork | 6d | 2026-02-19 | 2026-02-25 | 1040SS+1d |  | 7577283 |
| 1043 | 37100.37300.37600.38000.39000.43400.179600.426900 | Concreting | 1d | 2026-02-25 | 2026-02-26 | 1042 |  | 7577293 |
| 1044 | 37100.37300.37600.38000.39000.43400.179500 | **18th floor slab** | 8d | 2026-02-25 | 2026-03-05 |  | start no earlier than 2026-02-25 | 7570103 |
| 1045 | 37100.37300.37600.38000.39000.43400.179500.427000 | Reinforcement | 7d | 2026-02-25 | 2026-03-04 | 1043FS-1d |  | 7577303 |
| 1046 | 37100.37300.37600.38000.39000.43400.179500.427100 | Wall conduiting | 3d | 2026-02-26 | 2026-03-01 | 1041, 1045SS+1d |  | 7577313 |
| 1047 | 37100.37300.37600.38000.39000.43400.179500.427200 | Formwork | 6d | 2026-02-26 | 2026-03-04 | 1045SS+1d |  | 7577323 |
| 1048 | 37100.37300.37600.38000.39000.43400.179500.427300 | Concreting | 1d | 2026-03-04 | 2026-03-05 | 1047 |  | 7577333 |
| 1049 | 37100.37300.37600.38000.39000.43400.179400 | **19th floor slab** | 8d | 2026-03-05 | 2026-03-13 |  | start no earlier than 2026-03-05 | 7570113 |
| 1050 | 37100.37300.37600.38000.39000.43400.179400.427400 | Reinforcement | 7d | 2026-03-05 | 2026-03-12 | 1048 |  | 7577343 |
| 1051 | 37100.37300.37600.38000.39000.43400.179400.427500 | Wall conduiting | 3d | 2026-03-06 | 2026-03-09 | 1046, 1050SS+1d |  | 7577353 |
| 1052 | 37100.37300.37600.38000.39000.43400.179400.427600 | Formwork | 6d | 2026-03-06 | 2026-03-12 | 1050SS+1d |  | 7577363 |
| 1053 | 37100.37300.37600.38000.39000.43400.179400.427700 | Concreting | 1d | 2026-03-12 | 2026-03-13 | 1052 |  | 7577373 |
| 1054 | 37100.37300.37600.38000.39000.43400.179300 | **20th floor slab** | 9d | 2026-03-14 | 2026-03-23 |  | start no earlier than 2026-03-14 | 7570123 |
| 1055 | 37100.37300.37600.38000.39000.43400.179300.427800 | Reinforcement | 7d | 2026-03-14 | 2026-03-21 | 1053FS+1d |  | 7577383 |
| 1056 | 37100.37300.37600.38000.39000.43400.179300.427900 | Wall conduiting | 3d | 2026-03-15 | 2026-03-18 | 1051, 1055SS+1d |  | 7577393 |
| 1057 | 37100.37300.37600.38000.39000.43400.179300.428000 | Formwork | 6d | 2026-03-15 | 2026-03-21 | 1055SS+1d |  | 7577403 |
| 1058 | 37100.37300.37600.38000.39000.43400.179300.428100 | Concreting | 2d | 2026-03-21 | 2026-03-23 | 1057 |  | 7577413 |
| 1059 | 37100.37300.37600.38000.39000.43400.179200 | **21st floor slab** | 9d | 2026-03-24 | 2026-04-02 |  | start no earlier than 2026-03-24 | 7570133 |
| 1060 | 37100.37300.37600.38000.39000.43400.179200.428200 | Reinforcement | 9d | 2026-03-24 | 2026-04-02 | 1058FS+1d |  | 7577423 |
| 1061 | 37100.37300.37600.38000.39000.43400.179200.428300 | Wall conduiting | 3d | 2026-03-25 | 2026-03-28 | 1056, 1060SS+1d |  | 7577433 |
| 1062 | 37100.37300.37600.38000.39000.43400.179200.428400 | Formwork | 7d | 2026-03-25 | 2026-04-01 | 1060SS+1d |  | 7577443 |
| 1063 | 37100.37300.37600.38000.39000.43400.179200.428500 | Concreting | 1d | 2026-04-01 | 2026-04-02 | 1062 |  | 7577453 |

| ID | WBS | Task | Duration | Start | Finish | Predecessors | Constraint | Unique_Task_ID |
| --- | --- | --- | --- | --- | --- | --- | --- | --- |
| 1064 | 37100.37300.37600.38000.39000.43400.179100 | **22nd floor slab** | 10d | 2026-04-09 | 2026-04-19 |  | start no earlier than 2026-04-09 | 7570143 |
| 1065 | 37100.37300.37600.38000.39000.43400.179100.428600 | Reinforcement | 9d | 2026-04-09 | 2026-04-18 | 1063FS+7d |  | 7577463 |
| 1066 | 37100.37300.37600.38000.39000.43400.179100.428700 | Wall conduiting | 3d | 2026-04-10 | 2026-04-13 | 1061, 1065SS+1d |  | 7577473 |
| 1067 | 37100.37300.37600.38000.39000.43400.179100.428800 | Formwork | 8d | 2026-04-10 | 2026-04-18 | 1065SS+1d |  | 7577483 |
| 1068 | 37100.37300.37600.38000.39000.43400.179100.428900 | Concreting | 1d | 2026-04-18 | 2026-04-19 | 1067 |  | 7577493 |
| 1069 | 37100.37300.37600.38000.39000.43400.179000 | **23rd floor slab** | 10d | 2026-04-20 | 2026-04-30 |  | start no earlier than 2026-04-20 | 7570153 |
| 1070 | 37100.37300.37600.38000.39000.43400.179000.429000 | Reinforcement | 9d | 2026-04-20 | 2026-04-29 | 1068FS+1d |  | 7577503 |
| 1071 | 37100.37300.37600.38000.39000.43400.179000.429100 | Wall conduiting | 3d | 2026-04-21 | 2026-04-24 | 1066, 1070SS+1d |  | 7577513 |
| 1072 | 37100.37300.37600.38000.39000.43400.179000.429200 | Formwork | 8d | 2026-04-21 | 2026-04-29 | 1070SS+1d |  | 7577523 |
| 1073 | 37100.37300.37600.38000.39000.43400.179000.429300 | Concreting | 1d | 2026-04-29 | 2026-04-30 | 1072 |  | 7577533 |
| 1074 | 37100.37300.37600.38000.39000.43400.178900 | **24th floor slab** | 14d | 2026-05-01 | 2026-05-15 |  | start no earlier than 2026-05-01 | 7570163 |
| 1075 | 37100.37300.37600.38000.39000.43400.178900.429400 | Reinforcement | 10d | 2026-05-01 | 2026-05-11 | 1073FS+1d |  | 7577543 |
| 1076 | 37100.37300.37600.38000.39000.43400.178900.429500 | Wall conduiting | 3d | 2026-05-02 | 2026-05-05 | 1071, 1075SS+1d |  | 7577553 |
| 1077 | 37100.37300.37600.38000.39000.43400.178900.429600 | Formwork | 12d | 2026-05-02 | 2026-05-14 | 1075SS+1d |  | 7577563 |
| 1078 | 37100.37300.37600.38000.39000.43400.178900.429700 | Concreting | 1d | 2026-05-14 | 2026-05-15 | 1077 |  | 7577573 |
| 1079 | 37100.37300.37600.38000.39000.43400.178800 | **25th floor slab** | 15d | 2026-05-16 | 2026-05-31 |  | start no earlier than 2026-05-16 | 7570173 |
| 1080 | 37100.37300.37600.38000.39000.43400.178800.429800 | Reinforcement | 10d | 2026-05-16 | 2026-05-26 | 1078FS+1d |  | 7577583 |
| 1081 | 37100.37300.37600.38000.39000.43400.178800.429900 | Wall conduiting | 3d | 2026-05-17 | 2026-05-20 | 1076, 1080SS+1d |  | 7577593 |
| 1082 | 37100.37300.37600.38000.39000.43400.178800.430000 | Formwork | 13d | 2026-05-17 | 2026-05-30 | 1080SS+1d |  | 7577603 |
| 1083 | 37100.37300.37600.38000.39000.43400.178800.430100 | Concreting | 1d | 2026-05-30 | 2026-05-31 | 1082 |  | 7577613 |
| 1084 | 37100.37300.37600.38000.39000.43400.178700 | **26th floor slab** | 10d | 2026-06-01 | 2026-06-11 |  | start no earlier than 2026-06-01 | 7570183 |
| 1085 | 37100.37300.37600.38000.39000.43400.178700.430200 | Reinforcement | 9d | 2026-06-01 | 2026-06-10 | 1083FS+1d |  | 7577623 |
| 1086 | 37100.37300.37600.38000.39000.43400.178700.430300 | Wall conduiting | 3d | 2026-06-02 | 2026-06-05 | 1081, 1085SS+1d |  | 7577633 |
| 1087 | 37100.37300.37600.38000.39000.43400.178700.430400 | Formwork | 8d | 2026-06-02 | 2026-06-10 | 1085SS+1d |  | 7577643 |
| 1088 | 37100.37300.37600.38000.39000.43400.178700.430500 | Concreting | 1d | 2026-06-10 | 2026-06-11 | 1087 |  | 7577653 |

| ID | WBS | Task | Duration | Start | Finish | Predecessors | Constraint | Unique_Task_ID |
| --- | --- | --- | --- | --- | --- | --- | --- | --- |
| 1089 | 37100.37300.37600.38000.39000.43400.178600 | **27th floor slab** | 10d | 2026-06-12 | 2026-06-22 |  | start no earlier than 2026-06-12 | 7570193 |
| 1090 | 37100.37300.37600.38000.39000.43400.178600.430600 | Reinforcement | 9d | 2026-06-12 | 2026-06-21 | 1088FS+1d |  | 7577663 |
| 1091 | 37100.37300.37600.38000.39000.43400.178600.430700 | Wall conduiting | 3d | 2026-06-13 | 2026-06-16 | 1086, 1090SS+1d |  | 7577673 |
| 1092 | 37100.37300.37600.38000.39000.43400.178600.430800 | Formwork | 8d | 2026-06-13 | 2026-06-21 | 1090SS+1d |  | 7577683 |
| 1093 | 37100.37300.37600.38000.39000.43400.178600.430900 | Concreting | 1d | 2026-06-21 | 2026-06-22 | 1092 |  | 7577693 |
| 1094 | 37100.37300.37600.38000.39000.43400.178500 | **28th floor slab** | 10d | 2026-06-23 | 2026-07-03 |  | start no earlier than 2026-06-23 | 7570203 |
| 1095 | 37100.37300.37600.38000.39000.43400.178500.431000 | Reinforcement | 9d | 2026-06-23 | 2026-07-02 | 1093FS+1d |  | 7577703 |
| 1096 | 37100.37300.37600.38000.39000.43400.178500.431100 | Wall conduiting | 3d | 2026-06-24 | 2026-06-27 | 1091, 1095SS+1d |  | 7577713 |
| 1097 | 37100.37300.37600.38000.39000.43400.178500.431200 | Formwork | 8d | 2026-06-24 | 2026-07-02 | 1095SS+1d |  | 7577723 |
| 1098 | 37100.37300.37600.38000.39000.43400.178500.431300 | Concreting | 1d | 2026-07-02 | 2026-07-03 | 1097 |  | 7577733 |
| 1099 | 37100.37300.37600.38000.39000.43400.178400 | **29th floor slab** | 10d | 2026-07-07 | 2026-07-17 |  | start no earlier than 2026-07-07 | 7570213 |
| 1100 | 37100.37300.37600.38000.39000.43400.178400.431400 | Reinforcement | 9d | 2026-07-07 | 2026-07-16 | 1098FS+4d |  | 7577743 |
| 1101 | 37100.37300.37600.38000.39000.43400.178400.431500 | Wall conduiting | 3d | 2026-07-08 | 2026-07-11 | 1096, 1100SS+1d |  | 7577753 |
| 1102 | 37100.37300.37600.38000.39000.43400.178400.431600 | Formwork | 8d | 2026-07-08 | 2026-07-16 | 1100SS+1d |  | 7577763 |
| 1103 | 37100.37300.37600.38000.39000.43400.178400.431700 | Concreting | 1d | 2026-07-16 | 2026-07-17 | 1102 |  | 7577773 |
| 1104 | 37100.37300.37600.38000.39000.43400.178300 | **30th floor slab** | 10d | 2026-07-17 | 2026-07-27 |  | start no earlier than 2026-07-17 | 7570223 |
| 1105 | 37100.37300.37600.38000.39000.43400.178300.431800 | Reinforcement | 9d | 2026-07-17 | 2026-07-26 | 1103 |  | 7577783 |
| 1106 | 37100.37300.37600.38000.39000.43400.178300.431900 | Wall conduiting | 3d | 2026-07-18 | 2026-07-21 | 1101, 1105SS+1d |  | 7577793 |
| 1107 | 37100.37300.37600.38000.39000.43400.178300.432000 | Formwork | 8d | 2026-07-18 | 2026-07-26 | 1105SS+1d |  | 7577803 |
| 1108 | 37100.37300.37600.38000.39000.43400.178300.432100 | Concreting | 1d | 2026-07-26 | 2026-07-27 | 1107 |  | 7577813 |
| 1109 | 37100.37300.37600.38000.39000.43400.178200 | **31st floor slab** | 11.75d | 2026-07-27 | 2026-08-07 |  | start no earlier than 2026-07-27 | 7570233 |
| 1110 | 37100.37300.37600.38000.39000.43400.178200.432200 | Reinforcement | 8.94d | 2026-07-27 | 2026-08-05 | 1108 |  | 7577823 |
| 1111 | 37100.37300.37600.38000.39000.43400.178200.432300 | Wall conduiting | 1.94d | 2026-07-28 | 2026-07-30 | 1106, 1110SS+1d |  | 7577833 |
| 1112 | 37100.37300.37600.38000.39000.43400.178200.432400 | Formwork | 8.94d | 2026-07-29 | 2026-08-07 | 1110SS+1.88d |  | 7577843 |
| 1113 | 37100.37300.37600.38000.39000.43400.178200.432500 | Concreting | 0.94d | 2026-08-07 | 2026-08-07 | 1112 |  | 7577853 |

| ID | WBS | Task | Duration | Start | Finish | Predecessors | Constraint | Unique_Task_ID |
| --- | --- | --- | --- | --- | --- | --- | --- | --- |
| 1114 | 37100.37300.37600.38000.39000.43400.178100 | **32nd floor slab** | 12.75d | 2026-08-12 | 2026-08-24 |  | start no earlier than 2026-08-12 | 7570243 |
| 1115 | 37100.37300.37600.38000.39000.43400.178100.432600 | Reinforcement | 9.94d | 2026-08-12 | 2026-08-21 | 1113FS+4d |  | 7577863 |
| 1116 | 37100.37300.37600.38000.39000.43400.178100.432700 | Wall conduiting | 1.94d | 2026-08-13 | 2026-08-14 | 1111, 1115SS+1d |  | 7577873 |
| 1117 | 37100.37300.37600.38000.39000.43400.178100.432800 | Formwork | 9.94d | 2026-08-13 | 2026-08-23 | 1115SS+1.88d |  | 7577883 |
| 1118 | 37100.37300.37600.38000.39000.43400.178100.432900 | Concreting | 0.94d | 2026-08-23 | 2026-08-24 | 1117 |  | 7577893 |
| 1119 | 37100.37300.37600.38000.39000.43400.178000 | **33rd floor slab** | 11.75d | 2026-08-26 | 2026-09-07 |  | start no earlier than 2026-08-26 | 7570253 |
| 1120 | 37100.37300.37600.38000.39000.43400.178000.433000 | Reinforcement | 8.94d | 2026-08-26 | 2026-09-04 | 1118FS+2d |  | 7577903 |
| 1121 | 37100.37300.37600.38000.39000.43400.178000.433100 | Wall conduiting | 1.94d | 2026-08-27 | 2026-08-29 | 1116, 1120SS+1d |  | 7577913 |
| 1122 | 37100.37300.37600.38000.39000.43400.178000.433200 | Formwork | 8.94d | 2026-08-28 | 2026-09-06 | 1120SS+1.88d |  | 7577923 |
| 1123 | 37100.37300.37600.38000.39000.43400.178000.433300 | Concreting | 0.94d | 2026-09-06 | 2026-09-07 | 1122 |  | 7577933 |
| 1124 | 37100.37300.37600.38000.39000.43400.177900 | **34th floor slab** | 12.75d | 2026-09-07 | 2026-09-20 |  | start no earlier than 2026-09-07 | 7570263 |
| 1125 | 37100.37300.37600.38000.39000.43400.177900.433400 | Reinforcement | 9.94d | 2026-09-07 | 2026-09-17 | 1123 |  | 7577943 |
| 1126 | 37100.37300.37600.38000.39000.43400.177900.433500 | Wall conduiting | 1.94d | 2026-09-08 | 2026-09-10 | 1121, 1125SS+1d |  | 7577953 |
| 1127 | 37100.37300.37600.38000.39000.43400.177900.433600 | Formwork | 9.94d | 2026-09-09 | 2026-09-19 | 1125SS+1.88d |  | 7577963 |
| 1128 | 37100.37300.37600.38000.39000.43400.177900.433700 | Concreting | 0.94d | 2026-09-19 | 2026-09-20 | 1127 |  | 7577973 |
| 1129 | 37100.37300.37600.38000.39000.43400.177800 | **35th floor slab** | 11.75d | 2026-09-26 | 2026-10-07 |  | start no earlier than 2026-09-26 | 7570273 |
| 1130 | 37100.37300.37600.38000.39000.43400.177800.433800 | Reinforcement | 8.94d | 2026-09-26 | 2026-10-05 | 1128FS+6d |  | 7577983 |
| 1131 | 37100.37300.37600.38000.39000.43400.177800.433900 | Wall conduiting | 1.94d | 2026-09-27 | 2026-09-29 | 1126, 1130SS+1d |  | 7577993 |
| 1132 | 37100.37300.37600.38000.39000.43400.177800.434000 | Formwork | 7.94d | 2026-09-29 | 2026-10-07 | 1131SS+1.88d |  | 7578003 |
| 1133 | 37100.37300.37600.38000.39000.43400.177800.434100 | Concreting | 0.94d | 2026-10-07 | 2026-10-07 | 1132 |  | 7578013 |
| 1134 | 37100.37300.37600.38000.39000.43400.177700 | **Terrace floor slab** | 21d | 2026-10-08 | 2026-10-28 |  | start no earlier than 2026-10-08 | 7570283 |
| 1135 | 37100.37300.37600.38000.39000.43400.177700.434200 | Reinforcement | 21d | 2026-10-08 | 2026-10-28 | 1133 |  | 7578023 |
| 1136 | 37100.37300.37600.38000.39000.43400.177700.434300 | Wall conduiting | 8d | 2026-10-09 | 2026-10-16 | 1131, 1135SS+1d |  | 7578033 |
| 1137 | 37100.37300.37600.38000.39000.43400.177700.434400 | Formwork | 14d | 2026-10-09 | 2026-10-23 | 1135SS+1.88d |  | 7578043 |
| 1138 | 37100.37300.37600.38000.39000.43400.177700.434500 | Concreting | 1d | 2026-10-23 | 2026-10-24 | 1137 |  | 7578053 |

| ID | WBS | Task | Duration | Start | Finish | Predecessors | Constraint | Unique_Task_ID |
| --- | --- | --- | --- | --- | --- | --- | --- | --- |
| 1139 | 37100.37300.37600.38000.39000.43400.177500 | **OHT & Mumty** | 39.5d | 2026-10-24 | 2027-01-17 |  | start no earlier than 2026-10-24 | 7570293 |
| 1140 | 37100.37300.37600.38000.39000.43400.177500.434600 | Reinforcement | 29.94d | 2026-10-24 | 2027-01-07 | 1138 |  | 7578063 |
| 1141 | 37100.37300.37600.38000.39000.43400.177500.434700 | Wall conduiting | 4.94d | 2026-10-25 | 2026-10-30 | 1136, 1140SS+1d |  | 7578073 |
| 1142 | 37100.37300.37600.38000.39000.43400.177500.434800 | Formwork | 32.94d | 2026-10-28 | 2027-01-14 | 1140SS+3.62d |  | 7578083 |
| 1143 | 37100.37300.37600.38000.39000.43400.177500.434900 | Concreting | 2.94d | 2027-01-14 | 2027-01-17 | 1142 |  | 7578093 |
| 1144 | 37100.37300.37600.38000.39000.45900 | **Post Pour Activities** | 401.12d | 2025-11-30 | 2027-02-28 |  | start no earlier than 2025-11-30 | 7567693 |
| 1145 | 37100.37300.37600.38000.39000.45900.306100 | 1st Floor | 7d | 2025-11-30 | 2025-12-16 | 973FS+0.25d |  | 7572593 |
| 1146 | 37100.37300.37600.38000.39000.45900.306200 | 2nd Floor | 7d | 2025-12-16 | 2025-12-23 | 1145FS+0.25d, 978FS+0.25d |  | 7572603 |
| 1147 | 37100.37300.37600.38000.39000.45900.306300 | 3rd Floor | 7d | 2025-12-23 | 2025-12-30 | 1146FS+0.25d, 993FS+0.25d |  | 7572613 |
| 1148 | 37100.37300.37600.38000.39000.45900.306400 | 4th Floor | 7d | 2025-12-31 | 2026-01-06 | 1147FS+0.25d, 998FS+0.25d |  | 7572623 |
| 1149 | 37100.37300.37600.38000.39000.45900.306500 | 5th Floor | 7d | 2026-01-07 | 2026-01-14 | 1148FS+0.25d, 1003FS+0.25d |  | 7572633 |
| 1150 | 37100.37300.37600.38000.39000.45900.306600 | 6th Floor | 7d | 2026-01-14 | 2026-01-21 | 1149FS+0.25d, 1008FS+0.25d |  | 7572643 |
| 1151 | 37100.37300.37600.38000.39000.45900.306700 | 7th Floor | 7d | 2026-01-21 | 2026-01-28 | 1150FS+0.25d, 1013FS+0.25d |  | 7572653 |
| 1152 | 37100.37300.37600.38000.39000.45900.306800 | 8th Floor | 7d | 2026-01-29 | 2026-02-04 | 1151FS+0.25d, 1018FS+0.25d |  | 7572663 |
| 1153 | 37100.37300.37600.38000.39000.45900.306900 | 9th Floor | 7d | 2026-02-05 | 2026-02-12 | 1152FS+0.25d, 1023FS+0.25d |  | 7572673 |
| 1154 | 37100.37300.37600.38000.39000.45900.307000 | 10th Floor | 7d | 2026-02-12 | 2026-02-19 | 1153FS+0.25d, 1028FS+0.25d |  | 7572683 |
| 1155 | 37100.37300.37600.38000.39000.45900.307100 | 11th Floor | 7d | 2026-02-19 | 2026-02-26 | 1154, 1038 |  | 7572693 |
| 1156 | 37100.37300.37600.38000.39000.45900.307200 | 12th Floor | 7d | 2026-02-26 | 2026-03-05 | 1155, 1043 |  | 7572703 |
| 1157 | 37100.37300.37600.38000.39000.45900.307300 | 13th Floor | 7d | 2026-03-05 | 2026-03-12 | 1156, 1048 |  | 7572713 |
| 1158 | 37100.37300.37600.38000.39000.45900.307400 | 14th Floor | 7d | 2026-03-13 | 2026-03-20 | 1157, 1053 |  | 7572723 |
| 1159 | 37100.37300.37600.38000.39000.45900.307500 | 15th Floor | 7d | 2026-03-23 | 2026-03-30 | 1158, 1058 |  | 7572733 |
| 1160 | 37100.37300.37600.38000.39000.45900.307600 | 16th Floor | 7d | 2026-04-02 | 2026-04-09 | 1159, 1063 |  | 7572743 |
| 1161 | 37100.37300.37600.38000.39000.45900.307700 | 17th Floor | 7d | 2026-04-19 | 2026-04-26 | 1160, 1068 |  | 7572753 |
| 1162 | 37100.37300.37600.38000.39000.45900.307800 | 18th Floor | 7d | 2026-04-30 | 2026-05-07 | 1161, 1073 |  | 7572763 |
| 1163 | 37100.37300.37600.38000.39000.45900.307900 | 19th Floor | 7d | 2026-05-15 | 2026-05-22 | 1162, 1078 |  | 7572773 |
| 1164 | 37100.37300.37600.38000.39000.45900.308000 | 20th Floor | 7d | 2026-05-31 | 2026-06-07 | 1163, 1083 |  | 7572783 |
| 1165 | 37100.37300.37600.38000.39000.45900.308100 | 21st Floor | 7d | 2026-06-11 | 2026-06-18 | 1164, 1088 |  | 7572793 |
| 1166 | 37100.37300.37600.38000.39000.45900.308200 | 22nd Floor | 7d | 2026-06-22 | 2026-06-29 | 1165, 1093 |  | 7572803 |
| 1167 | 37100.37300.37600.38000.39000.45900.308300 | 23rd Floor | 7d | 2026-07-03 | 2026-07-10 | 1166, 1098 |  | 7572813 |
| 1168 | 37100.37300.37600.38000.39000.45900.308400 | 24th Floor | 7d | 2026-07-17 | 2026-07-24 | 1167, 1103 |  | 7572823 |
| 1169 | 37100.37300.37600.38000.39000.45900.308500 | 25th Floor | 7d | 2026-07-27 | 2026-08-03 | 1168, 1108 |  | 7572833 |
| 1170 | 37100.37300.37600.38000.39000.45900.308600 | 26th Floor | 7d | 2026-08-08 | 2026-08-14 | 1169, 1113 |  | 7572843 |
| 1171 | 37100.37300.37600.38000.39000.45900.308700 | 27th Floor | 7d | 2026-08-24 | 2026-08-31 | 1170, 1118 |  | 7572853 |
| 1172 | 37100.37300.37600.38000.39000.45900.308800 | 28th Floor | 7d | 2026-09-07 | 2026-09-14 | 1171, 1123 |  | 7572863 |
| 1173 | 37100.37300.37600.38000.39000.45900.308900 | 29th Floor | 7d | 2026-09-20 | 2026-09-27 | 1172, 1128 |  | 7572873 |
| 1174 | 37100.37300.37600.38000.39000.45900.309000 | 30th Floor | 7d | 2026-10-08 | 2026-10-14 | 1173, 1133 |  | 7572883 |
| 1175 | 37100.37300.37600.38000.39000.45900.309100 | 31st Floor | 7d | 2026-10-24 | 2026-10-31 | 1174, 1138 |  | 7572893 |
| 1176 | 37100.37300.37600.38000.39000.45900.309200 | 32nd Flood | 7d | 2027-01-17 | 2027-01-24 | 1175, 1143 |  | 7572903 |
| 1177 | 37100.37300.37600.38000.39000.45900.309300 | 33rd Floor | 7d | 2027-01-24 | 2027-01-31 | 1176 |  | 7572913 |
| 1178 | 37100.37300.37600.38000.39000.45900.309400 | 34th Floor | 7d | 2027-01-31 | 2027-02-07 | 1177 |  | 7572923 |
| 1179 | 37100.37300.37600.38000.39000.45900.309500 | 35th Floor | 7d | 2027-02-07 | 2027-02-14 | 1178 |  | 7572933 |
| 1180 | 37100.37300.37600.38000.39000.45900.309600 | Terrace | 7d | 2027-02-14 | 2027-02-21 | 1179 |  | 7572943 |
| 1181 | 37100.37300.37600.38000.39000.45900.309700 | Mumty & Machine Room | 7d | 2027-02-21 | 2027-02-28 | 1180 |  | 7572953 |

| ID | WBS | Task | Duration | Start | Finish | Predecessors | Constraint | Unique_Task_ID |
| --- | --- | --- | --- | --- | --- | --- | --- | --- |
| 1182 | 37100.37300.37600.38000.39000.40400 | **Finishing work** | 1192.19d | 2025-12-16 | 2029-05-06 |  | start no earlier than 2025-12-16 | 7567573 |
| 1183 | 37100.37300.37600.38000.39000.40400.41400 | **Flat finishing** | 1192.19d | 2025-12-16 | 2029-05-06 |  | start no earlier than 2025-12-16 | 7567613 |
| 1184 | 37100.37300.37600.38000.39000.40400.41400.61100 | **1st Floor** | 785.19d | 2025-12-16 | 2028-03-25 |  | start no earlier than 2025-12-16 | 7568073 |
| 1185 | 37100.37300.37600.38000.39000.40400.41400.61100.868700 | Block Work | 5d | 2025-12-16 | 2025-12-21 | 1145FS+0.25d |  | 7586943 |
| 1186 | 37100.37300.37600.38000.39000.40400.41400.61100.868800 | Door Frame Fixing | 5d | 2025-12-21 | 2025-12-26 | 1185 |  | 7586953 |
| 1187 | 37100.37300.37600.38000.39000.40400.41400.61100.868900 | Internal Plumbing Works | 5d | 2025-12-17 | 2025-12-22 | 1185SS+1d |  | 7586963 |
| 1188 | 37100.37300.37600.38000.39000.40400.41400.61100.869000 | Waterproofing | 8d | 2025-12-22 | 2025-12-30 | 1187 |  | 7586973 |
| 1189 | 37100.37300.37600.38000.39000.40400.41400.61100.869100 | Internal Plaster | 7d | 2025-12-22 | 2025-12-29 | 1185FS+1d |  | 7586983 |
| 1190 | 37100.37300.37600.38000.39000.40400.41400.61100.869200 | IPS flooring work | 7d | 2025-12-30 | 2026-01-06 | 1186, 1187, 1188 |  | 7586993 |
| 1191 | 37100.37300.37600.38000.39000.40400.41400.61100.869300 | Toilet dado work | 7d | 2025-12-30 | 2026-01-06 | 1188, 1189 |  | 7587003 |
| 1192 | 37100.37300.37600.38000.39000.40400.41400.61100.869400 | Toilet flooring work | 7d | 2026-01-06 | 2026-01-13 | 1191 |  | 7587013 |
| 1193 | 37100.37300.37600.38000.39000.40400.41400.61100.869500 | Living dinning flooring | 8d | 2026-02-09 | 2026-02-17 | 1186FS+45d |  | 7587023 |
| 1194 | 37100.37300.37600.38000.39000.40400.41400.61100.869600 | Aluminium door-window fixing | 7d | 2026-02-20 | 2026-02-27 | 1190FS+45d |  | 7587033 |
| 1195 | 37100.37300.37600.38000.39000.40400.41400.61100.869700 | Putty primer coat | 6d | 2026-02-17 | 2026-02-23 | 1193 |  | 7587043 |
| 1196 | 37100.37300.37600.38000.39000.40400.41400.61100.869800 | Door shutter fixing | 8d | 2026-02-17 | 2026-02-25 | 1193 |  | 7587053 |
| 1197 | 37100.37300.37600.38000.39000.40400.41400.61100.869900 | Electrical wiring work | 8d | 2028-03-01 | 2028-03-09 | 1842FS-90d |  | 7587063 |
| 1198 | 37100.37300.37600.38000.39000.40400.41400.61100.870000 | Painting 1st coat | 8d | 2028-03-09 | 2028-03-17 | 1195, 1196, 1197 |  | 7587073 |
| 1199 | 37100.37300.37600.38000.39000.40400.41400.61100.870100 | False ceiling | 8d | 2028-03-17 | 2028-03-25 | 1198 |  | 7587083 |
| 1200 | 37100.37300.37600.38000.39000.40400.41400.61200 | **2nd Floor** | 787.94d | 2025-12-21 | 2028-04-02 |  | start no earlier than 2025-12-21 | 7568083 |
| 1201 | 37100.37300.37600.38000.39000.40400.41400.61200.870200 | Block Work | 8d | 2025-12-21 | 2025-12-29 | 1185FS+0.25d |  | 7587093 |
| 1202 | 37100.37300.37600.38000.39000.40400.41400.61200.870300 | Door Frame Fixing | 9d | 2025-12-29 | 2026-01-07 | 1186, 1201 |  | 7587103 |
| 1203 | 37100.37300.37600.38000.39000.40400.41400.61200.870400 | Internal Plumbing Works | 8d | 2025-12-29 | 2026-01-06 | 1187, 1201 |  | 7587113 |
| 1204 | 37100.37300.37600.38000.39000.40400.41400.61200.870500 | Waterproofing | 10d | 2026-01-06 | 2026-01-16 | 1188, 1203 |  | 7587123 |
| 1205 | 37100.37300.37600.38000.39000.40400.41400.61200.870600 | Internal Plaster | 8d | 2025-12-29 | 2026-01-06 | 1189FS+0.25d |  | 7587133 |
| 1206 | 37100.37300.37600.38000.39000.40400.41400.61200.870700 | IPS flooring work | 10d | 2026-01-16 | 2026-01-26 | 1190, 1202, 1203, 1204 |  | 7587143 |
| 1207 | 37100.37300.37600.38000.39000.40400.41400.61200.870800 | Toilet dado work | 8d | 2026-01-16 | 2026-01-24 | 1191, 1204, 1205 |  | 7587153 |
| 1208 | 37100.37300.37600.38000.39000.40400.41400.61200.870900 | Toilet flooring work | 8d | 2026-01-24 | 2026-02-01 | 1192, 1207 |  | 7587163 |
| 1209 | 37100.37300.37600.38000.39000.40400.41400.61200.871000 | Living dinning flooring | 12d | 2026-02-17 | 2026-03-01 | 1193FS+0.25d |  | 7587173 |
| 1210 | 37100.37300.37600.38000.39000.40400.41400.61200.871100 | Aluminium door-window fixing | 12d | 2026-02-27 | 2026-03-11 | 1194FS+0.25d |  | 7587183 |
| 1211 | 37100.37300.37600.38000.39000.40400.41400.61200.871200 | Putty primer coat | 6d | 2026-03-01 | 2026-03-07 | 1195, 1209 |  | 7587193 |
| 1212 | 37100.37300.37600.38000.39000.40400.41400.61200.871300 | Door shutter fixing | 8d | 2026-03-01 | 2026-03-09 | 1196, 1209 |  | 7587203 |
| 1213 | 37100.37300.37600.38000.39000.40400.41400.61200.871400 | Electrical wiring work | 8d | 2028-03-09 | 2028-03-17 | 1197, 1212 |  | 7587213 |
| 1214 | 37100.37300.37600.38000.39000.40400.41400.61200.871500 | Painting 1st coat | 8d | 2028-03-17 | 2028-03-25 | 1198, 1211, 1212, 1213 |  | 7587223 |
| 1215 | 37100.37300.37600.38000.39000.40400.41400.61200.871600 | False ceiling | 8d | 2028-03-25 | 2028-04-02 | 1199, 1214 |  | 7587233 |

| ID | WBS | Task | Duration | Start | Finish | Predecessors | Constraint | Unique_Task_ID |
| --- | --- | --- | --- | --- | --- | --- | --- | --- |
| 1216 | 37100.37300.37600.38000.39000.40400.41400.61300 | **3rd Floor** | 787.69d | 2025-12-30 | 2028-04-10 |  | start no earlier than 2025-12-30 | 7568093 |
| 1217 | 37100.37300.37600.38000.39000.40400.41400.61300.871700 | Block Work | 8d | 2025-12-30 | 2026-01-06 | 1201FS+0.25d |  | 7587243 |
| 1218 | 37100.37300.37600.38000.39000.40400.41400.61300.871800 | Door Frame Fixing | 9d | 2026-01-07 | 2026-01-16 | 1202, 1217 |  | 7587253 |
| 1219 | 37100.37300.37600.38000.39000.40400.41400.61300.871900 | Internal Plumbing Works | 8d | 2026-01-07 | 2026-01-14 | 1203, 1217 |  | 7587263 |
| 1220 | 37100.37300.37600.38000.39000.40400.41400.61300.872000 | Waterproofing | 10d | 2026-01-16 | 2026-01-26 | 1204, 1219 |  | 7587273 |
| 1221 | 37100.37300.37600.38000.39000.40400.41400.61300.872100 | Internal Plaster | 8d | 2026-01-07 | 2026-01-14 | 1205FS+0.25d |  | 7587283 |
| 1222 | 37100.37300.37600.38000.39000.40400.41400.61300.872200 | IPS flooring work | 10d | 2026-01-26 | 2026-02-05 | 1206, 1218, 1220, 1221 |  | 7587293 |
| 1223 | 37100.37300.37600.38000.39000.40400.41400.61300.872300 | Toilet dado work | 8d | 2026-01-26 | 2026-02-03 | 1207, 1220, 1221 |  | 7587303 |
| 1224 | 37100.37300.37600.38000.39000.40400.41400.61300.872400 | Toilet flooring work | 8d | 2026-02-02 | 2026-02-09 | 1208FS+0.25d |  | 7587313 |
| 1225 | 37100.37300.37600.38000.39000.40400.41400.61300.872500 | Living dinning flooring | 12d | 2026-03-02 | 2026-03-13 | 1209FS+0.25d |  | 7587323 |
| 1226 | 37100.37300.37600.38000.39000.40400.41400.61300.872600 | Aluminium door-window fixing | 12d | 2026-03-12 | 2026-03-23 | 1210FS+0.25d |  | 7587333 |
| 1227 | 37100.37300.37600.38000.39000.40400.41400.61300.872700 | Putty primer coat | 6d | 2026-03-14 | 2026-03-19 | 1211, 1225 |  | 7587343 |
| 1228 | 37100.37300.37600.38000.39000.40400.41400.61300.872800 | Door shutter fixing | 8d | 2026-03-14 | 2026-03-21 | 1212, 1225 |  | 7587353 |
| 1229 | 37100.37300.37600.38000.39000.40400.41400.61300.872900 | Electrical wiring work | 8d | 2028-03-17 | 2028-03-25 | 1213, 1228 |  | 7587363 |
| 1230 | 37100.37300.37600.38000.39000.40400.41400.61300.873000 | Painting 1st coat | 8d | 2028-03-25 | 2028-04-02 | 1214, 1227, 1228, 1229 |  | 7587373 |
| 1231 | 37100.37300.37600.38000.39000.40400.41400.61300.873100 | False ceiling | 8d | 2028-04-02 | 2028-04-10 | 1215, 1230 |  | 7587383 |
| 1232 | 37100.37300.37600.38000.39000.40400.41400.61400 | **4th Floor** | 773.19d | 2026-01-21 | 2028-04-18 |  | start no earlier than 2026-01-21 | 7568103 |
| 1233 | 37100.37300.37600.38000.39000.40400.41400.61400.873200 | Block Work | 8d | 2026-01-21 | 2026-01-29 | 1150, 1217 |  | 7587393 |
| 1234 | 37100.37300.37600.38000.39000.40400.41400.61400.873300 | Door Frame Fixing | 9d | 2026-01-29 | 2026-02-07 | 1218, 1233 |  | 7587403 |
| 1235 | 37100.37300.37600.38000.39000.40400.41400.61400.873400 | Internal Plumbing Works | 8d | 2026-01-29 | 2026-02-06 | 1219, 1233 |  | 7587413 |
| 1236 | 37100.37300.37600.38000.39000.40400.41400.61400.873500 | Waterproofing | 10d | 2026-02-06 | 2026-02-16 | 1220, 1235 |  | 7587423 |
| 1237 | 37100.37300.37600.38000.39000.40400.41400.61400.873600 | Internal Plaster | 8d | 2026-02-16 | 2026-02-24 | 1221, 1234, 1235, 1236 |  | 7587433 |
| 1238 | 37100.37300.37600.38000.39000.40400.41400.61400.873700 | IPS flooring work | 10d | 2026-02-24 | 2026-03-06 | 1222, 1234, 1236, 1237 |  | 7587443 |
| 1239 | 37100.37300.37600.38000.39000.40400.41400.61400.873800 | Toilet dado work | 8d | 2026-02-24 | 2026-03-04 | 1223, 1236, 1237 |  | 7587453 |
| 1240 | 37100.37300.37600.38000.39000.40400.41400.61400.873900 | Toilet flooring work | 8d | 2026-03-04 | 2026-03-12 | 1224, 1239 |  | 7587463 |
| 1241 | 37100.37300.37600.38000.39000.40400.41400.61400.874000 | Living dinning flooring | 12d | 2026-03-14 | 2026-03-26 | 1225FS+0.25d |  | 7587473 |
| 1242 | 37100.37300.37600.38000.39000.40400.41400.61400.874100 | Aluminium door-window fixing | 12d | 2026-03-24 | 2026-04-05 | 1226FS+0.25d |  | 7587483 |
| 1243 | 37100.37300.37600.38000.39000.40400.41400.61400.874200 | Putty primer coat | 6d | 2026-03-26 | 2026-04-01 | 1227, 1241 |  | 7587493 |
| 1244 | 37100.37300.37600.38000.39000.40400.41400.61400.874300 | Door shutter fixing | 8d | 2026-03-26 | 2026-04-03 | 1228, 1241 |  | 7587503 |
| 1245 | 37100.37300.37600.38000.39000.40400.41400.61400.874400 | Electrical wiring work | 8d | 2028-03-25 | 2028-04-02 | 1229, 1244 |  | 7587513 |
| 1246 | 37100.37300.37600.38000.39000.40400.41400.61400.874500 | Painting 1st coat | 8d | 2028-04-02 | 2028-04-10 | 1230, 1243, 1244, 1245 |  | 7587523 |
| 1247 | 37100.37300.37600.38000.39000.40400.41400.61400.874600 | False ceiling | 8d | 2028-04-10 | 2028-04-18 | 1231, 1246 |  | 7587533 |

| ID | WBS | Task | Duration | Start | Finish | Predecessors | Constraint | Unique_Task_ID |
| --- | --- | --- | --- | --- | --- | --- | --- | --- |
| 1248 | 37100.37300.37600.38000.39000.40400.41400.61500 | **5th Floor** | 781.94d | 2026-01-29 | 2028-05-05 |  | start no earlier than 2026-01-29 | 7568113 |
| 1249 | 37100.37300.37600.38000.39000.40400.41400.61500.874700 | Block Work | 8d | 2026-01-29 | 2026-02-06 | 1233FS+0.25d |  | 7587543 |
| 1250 | 37100.37300.37600.38000.39000.40400.41400.61500.874800 | Door Frame Fixing | 9d | 2026-02-07 | 2026-02-16 | 1234, 1249 |  | 7587553 |
| 1251 | 37100.37300.37600.38000.39000.40400.41400.61500.874900 | Internal Plumbing Works | 8d | 2026-02-06 | 2026-02-14 | 1235, 1249 |  | 7587563 |
| 1252 | 37100.37300.37600.38000.39000.40400.41400.61500.875000 | Waterproofing | 10d | 2026-02-16 | 2026-02-26 | 1236, 1251 |  | 7587573 |
| 1253 | 37100.37300.37600.38000.39000.40400.41400.61500.875100 | Internal Plaster | 8d | 2026-02-27 | 2026-03-07 | 1237FS+2.75d |  | 7587583 |
| 1254 | 37100.37300.37600.38000.39000.40400.41400.61500.875200 | IPS flooring work | 10d | 2026-03-07 | 2026-03-17 | 1238, 1250, 1252, 1253 |  | 7587593 |
| 1255 | 37100.37300.37600.38000.39000.40400.41400.61500.875300 | Toilet dado work | 8d | 2026-03-07 | 2026-03-15 | 1239, 1252, 1253 |  | 7587603 |
| 1256 | 37100.37300.37600.38000.39000.40400.41400.61500.875400 | Toilet flooring work | 8d | 2026-03-15 | 2026-03-23 | 1240, 1255 |  | 7587613 |
| 1257 | 37100.37300.37600.38000.39000.40400.41400.61500.875500 | Living dinning flooring | 12d | 2026-03-26 | 2026-04-07 | 1241FS+0.25d |  | 7587623 |
| 1258 | 37100.37300.37600.38000.39000.40400.41400.61500.875600 | Aluminium door-window fixing | 12d | 2026-04-05 | 2026-04-17 | 1242FS+0.25d |  | 7587633 |
| 1259 | 37100.37300.37600.38000.39000.40400.41400.61500.875700 | Putty primer coat | 6d | 2026-04-07 | 2026-04-13 | 1243, 1257 |  | 7587643 |
| 1260 | 37100.37300.37600.38000.39000.40400.41400.61500.875800 | Door shutter fixing | 8d | 2026-04-07 | 2026-04-15 | 1244, 1257 |  | 7587653 |
| 1261 | 37100.37300.37600.38000.39000.40400.41400.61500.875900 | Electrical wiring work | 17d | 2028-04-02 | 2028-04-19 | 1245, 1260 |  | 7587663 |
| 1262 | 37100.37300.37600.38000.39000.40400.41400.61500.876000 | Painting 1st coat | 8d | 2028-04-19 | 2028-04-27 | 1246, 1259, 1260, 1261 |  | 7587673 |
| 1263 | 37100.37300.37600.38000.39000.40400.41400.61500.876100 | False ceiling | 8d | 2028-04-27 | 2028-05-05 | 1247, 1262 |  | 7587683 |
| 1264 | 37100.37300.37600.38000.39000.40400.41400.61600 | **6th Floor** | 781.69d | 2026-02-07 | 2028-05-13 |  | start no earlier than 2026-02-07 | 7568123 |
| 1265 | 37100.37300.37600.38000.39000.40400.41400.61600.876200 | Block Work | 5d | 2026-02-07 | 2026-02-11 | 1249FS+0.25d |  | 7587693 |
| 1266 | 37100.37300.37600.38000.39000.40400.41400.61600.876300 | Door Frame Fixing | 5d | 2026-02-16 | 2026-02-21 | 998, 1250 |  | 7587703 |
| 1267 | 37100.37300.37600.38000.39000.40400.41400.61600.876400 | Internal Plumbing Works | 5d | 2026-02-14 | 2026-02-19 | 1251, 1265 |  | 7587713 |
| 1268 | 37100.37300.37600.38000.39000.40400.41400.61600.876500 | Waterproofing | 8d | 2026-02-26 | 2026-03-06 | 1252, 1267 |  | 7587723 |
| 1269 | 37100.37300.37600.38000.39000.40400.41400.61600.876600 | Internal Plaster | 7d | 2026-03-07 | 2026-03-14 | 1253FS+0.25d |  | 7587733 |
| 1270 | 37100.37300.37600.38000.39000.40400.41400.61600.876700 | IPS flooring work | 7d | 2026-03-17 | 2026-03-24 | 1254, 1266, 1268, 1269 |  | 7587743 |
| 1271 | 37100.37300.37600.38000.39000.40400.41400.61600.876800 | Toilet dado work | 7d | 2026-03-15 | 2026-03-22 | 1255, 1268, 1269 |  | 7587753 |
| 1272 | 37100.37300.37600.38000.39000.40400.41400.61600.876900 | Toilet flooring work | 7d | 2026-03-23 | 2026-03-30 | 1256, 1271 |  | 7587763 |
| 1273 | 37100.37300.37600.38000.39000.40400.41400.61600.877000 | Living dinning flooring | 8d | 2026-04-07 | 2026-04-15 | 1257FS+0.25d |  | 7587773 |
| 1274 | 37100.37300.37600.38000.39000.40400.41400.61600.877100 | Aluminium door-window fixing | 7d | 2026-04-17 | 2026-04-24 | 1258FS+0.25d |  | 7587783 |
| 1275 | 37100.37300.37600.38000.39000.40400.41400.61600.877200 | Putty primer coat | 6d | 2026-04-15 | 2026-04-21 | 1259, 1273 |  | 7587793 |
| 1276 | 37100.37300.37600.38000.39000.40400.41400.61600.877300 | Door shutter fixing | 8d | 2026-04-15 | 2026-04-23 | 1260, 1273 |  | 7587803 |
| 1277 | 37100.37300.37600.38000.39000.40400.41400.61600.877400 | Electrical wiring work | 8d | 2028-04-19 | 2028-04-27 | 1261, 1276 |  | 7587813 |
| 1278 | 37100.37300.37600.38000.39000.40400.41400.61600.877500 | Painting 1st coat | 8d | 2028-04-27 | 2028-05-05 | 1262, 1275, 1276, 1277 |  | 7587823 |
| 1279 | 37100.37300.37600.38000.39000.40400.41400.61600.877600 | False ceiling | 8d | 2028-05-05 | 2028-05-13 | 1263, 1278 |  | 7587833 |

| ID | WBS | Task | Duration | Start | Finish | Predecessors | Constraint | Unique_Task_ID |
| --- | --- | --- | --- | --- | --- | --- | --- | --- |
| 1280 | 37100.37300.37600.38000.39000.40400.41400.61700 | **7th Floor** | 784.44d | 2026-02-12 | 2028-05-21 |  | start no earlier than 2026-02-12 | 7568133 |
| 1281 | 37100.37300.37600.38000.39000.40400.41400.61700.877700 | Block Work | 5d | 2026-02-12 | 2026-02-17 | 1265FS+0.25d |  | 7587843 |
| 1282 | 37100.37300.37600.38000.39000.40400.41400.61700.877800 | Door Frame Fixing | 5d | 2026-02-21 | 2026-02-26 | 1266, 1281 |  | 7587853 |
| 1283 | 37100.37300.37600.38000.39000.40400.41400.61700.877900 | Internal Plumbing Works | 5d | 2026-02-19 | 2026-02-24 | 1267, 1281 |  | 7587863 |
| 1284 | 37100.37300.37600.38000.39000.40400.41400.61700.878000 | Waterproofing | 8d | 2026-03-06 | 2026-03-14 | 1268, 1283 |  | 7587873 |
| 1285 | 37100.37300.37600.38000.39000.40400.41400.61700.878100 | Internal Plaster | 7d | 2026-03-14 | 2026-03-21 | 1269FS+0.25d |  | 7587883 |
| 1286 | 37100.37300.37600.38000.39000.40400.41400.61700.878200 | IPS flooring work | 7d | 2026-03-24 | 2026-03-31 | 1270, 1282, 1284, 1285 |  | 7587893 |
| 1287 | 37100.37300.37600.38000.39000.40400.41400.61700.878300 | Toilet dado work | 7d | 2026-03-22 | 2026-03-29 | 1271, 1284, 1285 |  | 7587903 |
| 1288 | 37100.37300.37600.38000.39000.40400.41400.61700.878400 | Toilet flooring work | 7d | 2026-03-30 | 2026-04-06 | 1272, 1287 |  | 7587913 |
| 1289 | 37100.37300.37600.38000.39000.40400.41400.61700.878500 | Living dinning flooring | 8d | 2026-04-16 | 2026-04-23 | 1273FS+0.25d |  | 7587923 |
| 1290 | 37100.37300.37600.38000.39000.40400.41400.61700.878600 | Aluminium door-window fixing | 7d | 2026-04-25 | 2026-05-01 | 1274FS+0.25d |  | 7587933 |
| 1291 | 37100.37300.37600.38000.39000.40400.41400.61700.878700 | Putty primer coat | 6d | 2026-04-24 | 2026-04-29 | 1275, 1289 |  | 7587943 |
| 1292 | 37100.37300.37600.38000.39000.40400.41400.61700.878800 | Door shutter fixing | 8d | 2026-04-24 | 2026-05-01 | 1276, 1289 |  | 7587953 |
| 1293 | 37100.37300.37600.38000.39000.40400.41400.61700.878900 | Electrical wiring work | 8d | 2028-04-27 | 2028-05-05 | 1277, 1292 |  | 7587963 |
| 1294 | 37100.37300.37600.38000.39000.40400.41400.61700.879000 | Painting 1st coat | 8d | 2028-05-05 | 2028-05-13 | 1278, 1291, 1292, 1293 |  | 7587973 |
| 1295 | 37100.37300.37600.38000.39000.40400.41400.61700.879100 | False ceiling | 8d | 2028-05-13 | 2028-05-21 | 1279, 1294 |  | 7587983 |
| 1296 | 37100.37300.37600.38000.39000.40400.41400.61800 | **8th Floor** | 787.19d | 2026-02-17 | 2028-05-29 |  | start no earlier than 2026-02-17 | 7568143 |
| 1297 | 37100.37300.37600.38000.39000.40400.41400.61800.879200 | Block Work | 5d | 2026-02-17 | 2026-02-22 | 1281FS+0.25d |  | 7587993 |
| 1298 | 37100.37300.37600.38000.39000.40400.41400.61800.879300 | Door Frame Fixing | 5d | 2026-02-26 | 2026-03-03 | 1282, 1297 |  | 7588003 |
| 1299 | 37100.37300.37600.38000.39000.40400.41400.61800.879400 | Internal Plumbing Works | 5d | 2026-02-24 | 2026-03-01 | 1283, 1297 |  | 7588013 |
| 1300 | 37100.37300.37600.38000.39000.40400.41400.61800.879500 | Waterproofing | 8d | 2026-03-14 | 2026-03-22 | 1284, 1299 |  | 7588023 |
| 1301 | 37100.37300.37600.38000.39000.40400.41400.61800.879600 | Internal Plaster | 7d | 2026-03-22 | 2026-03-28 | 1285FS+0.25d |  | 7588033 |
| 1302 | 37100.37300.37600.38000.39000.40400.41400.61800.879700 | IPS flooring work | 7d | 2026-03-31 | 2026-04-07 | 1286, 1298, 1300, 1301 |  | 7588043 |
| 1303 | 37100.37300.37600.38000.39000.40400.41400.61800.879800 | Toilet dado work | 7d | 2026-03-29 | 2026-04-05 | 1287, 1300, 1301 |  | 7588053 |
| 1304 | 37100.37300.37600.38000.39000.40400.41400.61800.879900 | Toilet flooring work | 7d | 2026-04-06 | 2026-04-13 | 1288, 1303 |  | 7588063 |
| 1305 | 37100.37300.37600.38000.39000.40400.41400.61800.880000 | Living dinning flooring | 8d | 2026-04-24 | 2026-05-02 | 1289FS+0.25d |  | 7588073 |
| 1306 | 37100.37300.37600.38000.39000.40400.41400.61800.880100 | Aluminium door-window fixing | 7d | 2026-05-02 | 2026-05-09 | 1290FS+0.25d |  | 7588083 |
| 1307 | 37100.37300.37600.38000.39000.40400.41400.61800.880200 | Putty primer coat | 6d | 2026-05-02 | 2026-05-08 | 1291, 1305 |  | 7588093 |
| 1308 | 37100.37300.37600.38000.39000.40400.41400.61800.880300 | Door shutter fixing | 8d | 2026-05-02 | 2026-05-10 | 1292, 1305 |  | 7588103 |
| 1309 | 37100.37300.37600.38000.39000.40400.41400.61800.880400 | Electrical wiring work | 8d | 2028-05-05 | 2028-05-13 | 1293, 1308 |  | 7588113 |
| 1310 | 37100.37300.37600.38000.39000.40400.41400.61800.880500 | Painting 1st coat | 8d | 2028-05-13 | 2028-05-21 | 1294, 1307, 1308, 1309 |  | 7588123 |
| 1311 | 37100.37300.37600.38000.39000.40400.41400.61800.880600 | False ceiling | 8d | 2028-05-21 | 2028-05-29 | 1295, 1310 |  | 7588133 |

| ID | WBS | Task | Duration | Start | Finish | Predecessors | Constraint | Unique_Task_ID |
| --- | --- | --- | --- | --- | --- | --- | --- | --- |
| 1312 | 37100.37300.37600.38000.39000.40400.41400.61900 | **9th Floor** | 796.19d | 2026-02-26 | 2028-06-16 |  | start no earlier than 2026-02-26 | 7568153 |
| 1313 | 37100.37300.37600.38000.39000.40400.41400.61900.880700 | Block Work | 5d | 2026-02-26 | 2026-03-03 | 1155, 1297 |  | 7588143 |
| 1314 | 37100.37300.37600.38000.39000.40400.41400.61900.880800 | Door Frame Fixing | 5d | 2026-03-03 | 2026-03-08 | 1298, 1313 |  | 7588153 |
| 1315 | 37100.37300.37600.38000.39000.40400.41400.61900.880900 | Internal Plumbing Works | 5d | 2026-03-03 | 2026-03-08 | 1299, 1313 |  | 7588163 |
| 1316 | 37100.37300.37600.38000.39000.40400.41400.61900.881000 | Waterproofing | 8d | 2026-03-22 | 2026-03-30 | 1300, 1315 |  | 7588173 |
| 1317 | 37100.37300.37600.38000.39000.40400.41400.61900.881100 | Internal Plaster | 7d | 2026-03-29 | 2026-04-05 | 1301FS+0.25d |  | 7588183 |
| 1318 | 37100.37300.37600.38000.39000.40400.41400.61900.881200 | IPS flooring work | 7d | 2026-04-07 | 2026-04-14 | 1302, 1314, 1316, 1317 |  | 7588193 |
| 1319 | 37100.37300.37600.38000.39000.40400.41400.61900.881300 | Toilet dado work | 7d | 2026-04-05 | 2026-04-12 | 1303, 1316, 1317 |  | 7588203 |
| 1320 | 37100.37300.37600.38000.39000.40400.41400.61900.881400 | Toilet flooring work | 7d | 2026-04-13 | 2026-04-20 | 1304, 1319 |  | 7588213 |
| 1321 | 37100.37300.37600.38000.39000.40400.41400.61900.881500 | Living dinning flooring | 8d | 2026-05-02 | 2026-05-10 | 1305FS+0.25d |  | 7588223 |
| 1322 | 37100.37300.37600.38000.39000.40400.41400.61900.881600 | Aluminium door-window fixing | 7d | 2026-05-09 | 2026-05-16 | 1306FS+0.25d |  | 7588233 |
| 1323 | 37100.37300.37600.38000.39000.40400.41400.61900.881700 | Putty primer coat | 6d | 2026-05-10 | 2026-05-16 | 1307, 1321 |  | 7588243 |
| 1324 | 37100.37300.37600.38000.39000.40400.41400.61900.881800 | Door shutter fixing | 8d | 2026-05-10 | 2026-05-18 | 1308, 1321 |  | 7588253 |
| 1325 | 37100.37300.37600.38000.39000.40400.41400.61900.881900 | Electrical wiring work | 12d | 2028-05-13 | 2028-05-25 | 1309, 1324 |  | 7588263 |
| 1326 | 37100.37300.37600.38000.39000.40400.41400.61900.882000 | Painting 1st coat | 12d | 2028-05-25 | 2028-06-06 | 1310, 1323, 1324, 1325 |  | 7588273 |
| 1327 | 37100.37300.37600.38000.39000.40400.41400.61900.882100 | False ceiling | 10d | 2028-06-06 | 2028-06-16 | 1311, 1326 |  | 7588283 |
| 1328 | 37100.37300.37600.38000.39000.40400.41400.62000 | **10th Floor** | 802.94d | 2026-03-03 | 2028-06-28 |  | start no earlier than 2026-03-03 | 7568163 |
| 1329 | 37100.37300.37600.38000.39000.40400.41400.62000.882200 | Block Work | 5d | 2026-03-03 | 2026-03-08 | 1313FS+0.25d |  | 7588293 |
| 1330 | 37100.37300.37600.38000.39000.40400.41400.62000.882300 | Door Frame Fixing | 5d | 2026-03-08 | 2026-03-13 | 1314, 1329 |  | 7588303 |
| 1331 | 37100.37300.37600.38000.39000.40400.41400.62000.882400 | Internal Plumbing Works | 5d | 2026-03-08 | 2026-03-13 | 1315, 1329 |  | 7588313 |
| 1332 | 37100.37300.37600.38000.39000.40400.41400.62000.882500 | Waterproofing | 8d | 2026-03-30 | 2026-04-07 | 1316, 1331 |  | 7588323 |
| 1333 | 37100.37300.37600.38000.39000.40400.41400.62000.882600 | Internal Plaster | 7d | 2026-04-05 | 2026-04-12 | 1317FS+0.25d |  | 7588333 |
| 1334 | 37100.37300.37600.38000.39000.40400.41400.62000.882700 | IPS flooring work | 7d | 2026-04-14 | 2026-04-21 | 1318, 1330, 1332, 1333 |  | 7588343 |
| 1335 | 37100.37300.37600.38000.39000.40400.41400.62000.882800 | Toilet dado work | 7d | 2026-04-12 | 2026-04-19 | 1319, 1332, 1333 |  | 7588353 |
| 1336 | 37100.37300.37600.38000.39000.40400.41400.62000.882900 | Toilet flooring work | 7d | 2026-04-20 | 2026-04-27 | 1320, 1335 |  | 7588363 |
| 1337 | 37100.37300.37600.38000.39000.40400.41400.62000.883000 | Living dinning flooring | 8d | 2026-05-10 | 2026-05-18 | 1321FS+0.25d |  | 7588373 |
| 1338 | 37100.37300.37600.38000.39000.40400.41400.62000.883100 | Aluminium door-window fixing | 7d | 2026-05-16 | 2026-05-23 | 1322FS+0.25d |  | 7588383 |
| 1339 | 37100.37300.37600.38000.39000.40400.41400.62000.883200 | Putty primer coat | 6d | 2026-05-18 | 2026-05-24 | 1323, 1337 |  | 7588393 |
| 1340 | 37100.37300.37600.38000.39000.40400.41400.62000.883300 | Door shutter fixing | 8d | 2026-05-18 | 2026-05-26 | 1324, 1337 |  | 7588403 |
| 1341 | 37100.37300.37600.38000.39000.40400.41400.62000.883400 | Electrical wiring work | 12d | 2028-05-25 | 2028-06-06 | 1325, 1340 |  | 7588413 |
| 1342 | 37100.37300.37600.38000.39000.40400.41400.62000.883500 | Painting 1st coat | 12d | 2028-06-06 | 2028-06-18 | 1326, 1339, 1340, 1341 |  | 7588423 |
| 1343 | 37100.37300.37600.38000.39000.40400.41400.62000.883600 | False ceiling | 10d | 2028-06-18 | 2028-06-28 | 1327, 1342 |  | 7588433 |

| ID | WBS | Task | Duration | Start | Finish | Predecessors | Constraint | Unique_Task_ID |
| --- | --- | --- | --- | --- | --- | --- | --- | --- |
| 1344 | 37100.37300.37600.38000.39000.40400.41400.62100 | **11th Floor** | 809.69d | 2026-03-09 | 2028-07-10 |  | start no earlier than 2026-03-09 | 7568173 |
| 1345 | 37100.37300.37600.38000.39000.40400.41400.62100.883700 | Block Work | 5d | 2026-03-09 | 2026-03-13 | 1329FS+0.25d |  | 7588443 |
| 1346 | 37100.37300.37600.38000.39000.40400.41400.62100.883800 | Door Frame Fixing | 5d | 2026-03-14 | 2026-03-18 | 1330, 1345 |  | 7588453 |
| 1347 | 37100.37300.37600.38000.39000.40400.41400.62100.883900 | Internal Plumbing Works | 5d | 2026-03-14 | 2026-03-18 | 1331, 1345 |  | 7588463 |
| 1348 | 37100.37300.37600.38000.39000.40400.41400.62100.884000 | Waterproofing | 8d | 2026-04-07 | 2026-04-15 | 1332, 1347 |  | 7588473 |
| 1349 | 37100.37300.37600.38000.39000.40400.41400.62100.884100 | Internal Plaster | 7d | 2026-04-12 | 2026-04-19 | 1333FS+0.25d |  | 7588483 |
| 1350 | 37100.37300.37600.38000.39000.40400.41400.62100.884200 | IPS flooring work | 7d | 2026-04-21 | 2026-04-28 | 1334, 1346, 1347, 1348 |  | 7588493 |
| 1351 | 37100.37300.37600.38000.39000.40400.41400.62100.884300 | Toilet dado work | 7d | 2026-04-19 | 2026-04-26 | 1335, 1348, 1349 |  | 7588503 |
| 1352 | 37100.37300.37600.38000.39000.40400.41400.62100.884400 | Toilet flooring work | 7d | 2026-04-27 | 2026-05-04 | 1336, 1351 |  | 7588513 |
| 1353 | 37100.37300.37600.38000.39000.40400.41400.62100.884500 | Living dinning flooring | 8d | 2026-05-19 | 2026-05-26 | 1337FS+0.25d |  | 7588523 |
| 1354 | 37100.37300.37600.38000.39000.40400.41400.62100.884600 | Aluminium door-window fixing | 7d | 2026-05-24 | 2026-05-30 | 1338FS+0.25d |  | 7588533 |
| 1355 | 37100.37300.37600.38000.39000.40400.41400.62100.884700 | Putty primer coat | 6d | 2026-05-27 | 2026-06-01 | 1339, 1353 |  | 7588543 |
| 1356 | 37100.37300.37600.38000.39000.40400.41400.62100.884800 | Door shutter fixing | 8d | 2026-05-27 | 2026-06-03 | 1340, 1353 |  | 7588553 |
| 1357 | 37100.37300.37600.38000.39000.40400.41400.62100.884900 | Electrical wiring work | 12d | 2028-06-06 | 2028-06-18 | 1341, 1356 |  | 7588563 |
| 1358 | 37100.37300.37600.38000.39000.40400.41400.62100.885000 | Painting 1st coat | 12d | 2028-06-18 | 2028-06-30 | 1342, 1355, 1356, 1357 |  | 7588573 |
| 1359 | 37100.37300.37600.38000.39000.40400.41400.62100.885100 | False ceiling | 10d | 2028-06-30 | 2028-07-10 | 1343, 1358 |  | 7588583 |
| 1360 | 37100.37300.37600.38000.39000.40400.41400.62200 | **12th Floor** | 816.44d | 2026-03-14 | 2028-07-22 |  | start no earlier than 2026-03-14 | 7568183 |
| 1361 | 37100.37300.37600.38000.39000.40400.41400.62200.885200 | Block Work | 5d | 2026-03-14 | 2026-03-19 | 1345FS+0.25d |  | 7588593 |
| 1362 | 37100.37300.37600.38000.39000.40400.41400.62200.885300 | Door Frame Fixing | 9d | 2026-03-19 | 2026-03-28 | 1346, 1361 |  | 7588603 |
| 1363 | 37100.37300.37600.38000.39000.40400.41400.62200.885400 | Internal Plumbing Works | 15d | 2026-03-19 | 2026-04-03 | 1347, 1361 |  | 7588613 |
| 1364 | 37100.37300.37600.38000.39000.40400.41400.62200.885500 | Waterproofing | 15d | 2026-04-15 | 2026-04-30 | 1348, 1363 |  | 7588623 |
| 1365 | 37100.37300.37600.38000.39000.40400.41400.62200.885600 | Internal Plaster | 8d | 2026-04-20 | 2026-04-27 | 1349FS+0.25d |  | 7588633 |
| 1366 | 37100.37300.37600.38000.39000.40400.41400.62200.885700 | IPS flooring work | 12d | 2026-04-30 | 2026-05-12 | 1350, 1362, 1363, 1364 |  | 7588643 |
| 1367 | 37100.37300.37600.38000.39000.40400.41400.62200.885800 | Toilet dado work | 12d | 2026-04-30 | 2026-05-12 | 1351, 1364, 1365 |  | 7588653 |
| 1368 | 37100.37300.37600.38000.39000.40400.41400.62200.885900 | Toilet flooring work | 12d | 2026-05-12 | 2026-05-24 | 1352, 1367 |  | 7588663 |
| 1369 | 37100.37300.37600.38000.39000.40400.41400.62200.886000 | Living dinning flooring | 7d | 2026-05-27 | 2026-06-03 | 1353FS+0.25d |  | 7588673 |
| 1370 | 37100.37300.37600.38000.39000.40400.41400.62200.886100 | Aluminium door-window fixing | 8d | 2026-05-31 | 2026-06-08 | 1354FS+0.25d |  | 7588683 |
| 1371 | 37100.37300.37600.38000.39000.40400.41400.62200.886200 | Putty primer coat | 6d | 2026-06-03 | 2026-06-09 | 1355, 1369 |  | 7588693 |
| 1372 | 37100.37300.37600.38000.39000.40400.41400.62200.886300 | Door shutter fixing | 8d | 2026-06-04 | 2026-06-11 | 1356, 1369 |  | 7588703 |
| 1373 | 37100.37300.37600.38000.39000.40400.41400.62200.886400 | Electrical wiring work | 12d | 2028-06-18 | 2028-06-30 | 1357, 1372 |  | 7588713 |
| 1374 | 37100.37300.37600.38000.39000.40400.41400.62200.886500 | Painting 1st coat | 12d | 2028-06-30 | 2028-07-12 | 1358, 1371, 1372, 1373 |  | 7588723 |
| 1375 | 37100.37300.37600.38000.39000.40400.41400.62200.886600 | False ceiling | 10d | 2028-07-12 | 2028-07-22 | 1359, 1374 |  | 7588733 |

| ID | WBS | Task | Duration | Start | Finish | Predecessors | Constraint | Unique_Task_ID |
| --- | --- | --- | --- | --- | --- | --- | --- | --- |
| 1376 | 37100.37300.37600.38000.39000.40400.41400.62300 | **13th Floor** | 823.19d | 2026-03-19 | 2028-08-03 |  | start no earlier than 2026-03-19 | 7568193 |
| 1377 | 37100.37300.37600.38000.39000.40400.41400.62300.886700 | Block Work | 5d | 2026-03-19 | 2026-03-24 | 1361FS+0.25d |  | 7588743 |
| 1378 | 37100.37300.37600.38000.39000.40400.41400.62300.886800 | Door Frame Fixing | 5d | 2026-03-28 | 2026-04-02 | 1362, 1377 |  | 7588753 |
| 1379 | 37100.37300.37600.38000.39000.40400.41400.62300.886900 | Internal Plumbing Works | 5d | 2026-04-03 | 2026-04-08 | 1363, 1377 |  | 7588763 |
| 1380 | 37100.37300.37600.38000.39000.40400.41400.62300.887000 | Waterproofing | 8d | 2026-04-30 | 2026-05-08 | 1364, 1379 |  | 7588773 |
| 1381 | 37100.37300.37600.38000.39000.40400.41400.62300.887100 | Internal Plaster | 7d | 2026-04-30 | 2026-05-07 | 1365FS+2.75d |  | 7588783 |
| 1382 | 37100.37300.37600.38000.39000.40400.41400.62300.887200 | IPS flooring work | 7d | 2026-05-12 | 2026-05-19 | 1366, 1378, 1380, 1381 |  | 7588793 |
| 1383 | 37100.37300.37600.38000.39000.40400.41400.62300.887300 | Toilet dado work | 7d | 2026-05-12 | 2026-05-19 | 1367, 1380, 1381 |  | 7588803 |
| 1384 | 37100.37300.37600.38000.39000.40400.41400.62300.887400 | Toilet flooring work | 7d | 2026-05-24 | 2026-05-31 | 1368, 1383 |  | 7588813 |
| 1385 | 37100.37300.37600.38000.39000.40400.41400.62300.887500 | Living dinning flooring | 8d | 2026-06-03 | 2026-06-11 | 1369FS+0.25d |  | 7588823 |
| 1386 | 37100.37300.37600.38000.39000.40400.41400.62300.887600 | Aluminium door-window fixing | 7d | 2026-06-08 | 2026-06-15 | 1370FS+0.25d |  | 7588833 |
| 1387 | 37100.37300.37600.38000.39000.40400.41400.62300.887700 | Putty primer coat | 6d | 2026-06-11 | 2026-06-17 | 1371, 1385 |  | 7588843 |
| 1388 | 37100.37300.37600.38000.39000.40400.41400.62300.887800 | Door shutter fixing | 8d | 2026-06-12 | 2026-06-19 | 1372, 1385 |  | 7588853 |
| 1389 | 37100.37300.37600.38000.39000.40400.41400.62300.887900 | Electrical wiring work | 12d | 2028-06-30 | 2028-07-12 | 1373, 1388 |  | 7588863 |
| 1390 | 37100.37300.37600.38000.39000.40400.41400.62300.888000 | Painting 1st coat | 12d | 2028-07-12 | 2028-07-24 | 1374, 1387, 1388, 1389 |  | 7588873 |
| 1391 | 37100.37300.37600.38000.39000.40400.41400.62300.888100 | False ceiling | 10d | 2028-07-24 | 2028-08-03 | 1375, 1390 |  | 7588883 |
| 1392 | 37100.37300.37600.38000.39000.40400.41400.62400 | **14th Floor** | 829.94d | 2026-03-24 | 2028-08-15 |  | start no earlier than 2026-03-24 | 7568203 |
| 1393 | 37100.37300.37600.38000.39000.40400.41400.62400.888200 | Block Work | 5d | 2026-03-24 | 2026-03-29 | 1377FS+0.25d |  | 7588893 |
| 1394 | 37100.37300.37600.38000.39000.40400.41400.62400.888300 | Door Frame Fixing | 9d | 2026-04-02 | 2026-04-11 | 1378, 1393 |  | 7588903 |
| 1395 | 37100.37300.37600.38000.39000.40400.41400.62400.888400 | Internal Plumbing Works | 15d | 2026-04-08 | 2026-04-23 | 1379, 1393 |  | 7588913 |
| 1396 | 37100.37300.37600.38000.39000.40400.41400.62400.888500 | Waterproofing | 15d | 2026-05-08 | 2026-05-23 | 1380, 1395 |  | 7588923 |
| 1397 | 37100.37300.37600.38000.39000.40400.41400.62400.888600 | Internal Plaster | 8d | 2026-05-08 | 2026-05-15 | 1381FS+0.25d |  | 7588933 |
| 1398 | 37100.37300.37600.38000.39000.40400.41400.62400.888700 | IPS flooring work | 12d | 2026-05-23 | 2026-06-04 | 1382, 1394, 1395, 1396 |  | 7588943 |
| 1399 | 37100.37300.37600.38000.39000.40400.41400.62400.888800 | Toilet dado work | 12d | 2026-05-23 | 2026-06-04 | 1383, 1396, 1397 |  | 7588953 |
| 1400 | 37100.37300.37600.38000.39000.40400.41400.62400.888900 | Toilet flooring work | 12d | 2026-06-04 | 2026-06-16 | 1384, 1399 |  | 7588963 |
| 1401 | 37100.37300.37600.38000.39000.40400.41400.62400.889000 | Living dinning flooring | 7d | 2026-06-11 | 2026-06-18 | 1385FS+0.25d |  | 7588973 |
| 1402 | 37100.37300.37600.38000.39000.40400.41400.62400.889100 | Aluminium door-window fixing | 8d | 2026-06-15 | 2026-06-23 | 1386FS+0.25d |  | 7588983 |
| 1403 | 37100.37300.37600.38000.39000.40400.41400.62400.889200 | Putty primer coat | 6d | 2026-06-18 | 2026-06-24 | 1387, 1401 |  | 7588993 |
| 1404 | 37100.37300.37600.38000.39000.40400.41400.62400.889300 | Door shutter fixing | 8d | 2026-06-20 | 2026-06-27 | 1388, 1401 |  | 7589003 |
| 1405 | 37100.37300.37600.38000.39000.40400.41400.62400.889400 | Electrical wiring work | 12d | 2028-07-12 | 2028-07-24 | 1389, 1404 |  | 7589013 |
| 1406 | 37100.37300.37600.38000.39000.40400.41400.62400.889500 | Painting 1st coat | 12d | 2028-07-24 | 2028-08-05 | 1390, 1403, 1404, 1405 |  | 7589023 |
| 1407 | 37100.37300.37600.38000.39000.40400.41400.62400.889600 | False ceiling | 10d | 2028-08-05 | 2028-08-15 | 1391, 1406 |  | 7589033 |

| ID | WBS | Task | Duration | Start | Finish | Predecessors | Constraint | Unique_Task_ID |
| --- | --- | --- | --- | --- | --- | --- | --- | --- |
| 1408 | 37100.37300.37600.38000.39000.40400.41400.62500 | **15th Floor** | 836.69d | 2026-03-30 | 2028-08-27 |  | start no earlier than 2026-03-30 | 7568213 |
| 1409 | 37100.37300.37600.38000.39000.40400.41400.62500.889700 | Block Work | 8d | 2026-03-30 | 2026-04-06 | 1393FS+0.25d |  | 7589043 |
| 1410 | 37100.37300.37600.38000.39000.40400.41400.62500.889800 | Door Frame Fixing | 9d | 2026-04-11 | 2026-04-20 | 1394, 1409 |  | 7589053 |
| 1411 | 37100.37300.37600.38000.39000.40400.41400.62500.889900 | Internal Plumbing Works | 10d | 2026-04-23 | 2026-05-03 | 1395, 1409 |  | 7589063 |
| 1412 | 37100.37300.37600.38000.39000.40400.41400.62500.890000 | Waterproofing | 12d | 2026-05-23 | 2026-06-04 | 1396, 1411 |  | 7589073 |
| 1413 | 37100.37300.37600.38000.39000.40400.41400.62500.890100 | Internal Plaster | 5d | 2026-05-16 | 2026-05-21 | 1397FS+0.25d |  | 7589083 |
| 1414 | 37100.37300.37600.38000.39000.40400.41400.62500.890200 | IPS flooring work | 9d | 2026-06-04 | 2026-06-13 | 1398, 1410, 1411, 1412 |  | 7589093 |
| 1415 | 37100.37300.37600.38000.39000.40400.41400.62500.890300 | Toilet dado work | 8d | 2026-06-04 | 2026-06-12 | 1399, 1412, 1413 |  | 7589103 |
| 1416 | 37100.37300.37600.38000.39000.40400.41400.62500.890400 | Toilet flooring work | 7d | 2026-06-16 | 2026-06-23 | 1400, 1415 |  | 7589113 |
| 1417 | 37100.37300.37600.38000.39000.40400.41400.62500.890500 | Living dinning flooring | 12d | 2026-06-19 | 2026-06-30 | 1401FS+0.25d |  | 7589123 |
| 1418 | 37100.37300.37600.38000.39000.40400.41400.62500.890600 | Aluminium door-window fixing | 12d | 2026-06-24 | 2026-07-05 | 1402FS+0.25d |  | 7589133 |
| 1419 | 37100.37300.37600.38000.39000.40400.41400.62500.890700 | Putty primer coat | 6d | 2026-07-01 | 2026-07-06 | 1403, 1417 |  | 7589143 |
| 1420 | 37100.37300.37600.38000.39000.40400.41400.62500.890800 | Door shutter fixing | 8d | 2026-07-01 | 2026-07-08 | 1404, 1417 |  | 7589153 |
| 1421 | 37100.37300.37600.38000.39000.40400.41400.62500.890900 | Electrical wiring work | 12d | 2028-07-24 | 2028-08-05 | 1405, 1420 |  | 7589163 |
| 1422 | 37100.37300.37600.38000.39000.40400.41400.62500.891000 | Painting 1st coat | 12d | 2028-08-05 | 2028-08-17 | 1406, 1419, 1420, 1421 |  | 7589173 |
| 1423 | 37100.37300.37600.38000.39000.40400.41400.62500.891100 | False ceiling | 10d | 2028-08-17 | 2028-08-27 | 1407, 1422 |  | 7589183 |
| 1424 | 37100.37300.37600.38000.39000.40400.41400.62600 | **16th Floor** | 840.44d | 2026-04-07 | 2028-09-08 |  | start no earlier than 2026-04-07 | 7568223 |
| 1425 | 37100.37300.37600.38000.39000.40400.41400.62600.891200 | Block Work | 8d | 2026-04-07 | 2026-04-15 | 1409FS+0.25d |  | 7589193 |
| 1426 | 37100.37300.37600.38000.39000.40400.41400.62600.891300 | Door Frame Fixing | 9d | 2026-04-20 | 2026-04-29 | 1410, 1425 |  | 7589203 |
| 1427 | 37100.37300.37600.38000.39000.40400.41400.62600.891400 | Internal Plumbing Works | 10d | 2026-05-03 | 2026-05-13 | 1411, 1425 |  | 7589213 |
| 1428 | 37100.37300.37600.38000.39000.40400.41400.62600.891500 | Waterproofing | 12d | 2026-06-04 | 2026-06-16 | 1412, 1427 |  | 7589223 |
| 1429 | 37100.37300.37600.38000.39000.40400.41400.62600.891600 | Internal Plaster | 5d | 2026-05-21 | 2026-05-26 | 1413FS+0.25d |  | 7589233 |
| 1430 | 37100.37300.37600.38000.39000.40400.41400.62600.891700 | IPS flooring work | 9d | 2026-06-16 | 2026-06-25 | 1414, 1426, 1427, 1428 |  | 7589243 |
| 1431 | 37100.37300.37600.38000.39000.40400.41400.62600.891800 | Toilet dado work | 8d | 2026-06-16 | 2026-06-24 | 1415, 1428, 1429 |  | 7589253 |
| 1432 | 37100.37300.37600.38000.39000.40400.41400.62600.891900 | Toilet flooring work | 7d | 2026-06-24 | 2026-07-01 | 1416, 1431 |  | 7589263 |
| 1433 | 37100.37300.37600.38000.39000.40400.41400.62600.892000 | Living dinning flooring | 12d | 2026-07-01 | 2026-07-13 | 1417FS+0.25d |  | 7589273 |
| 1434 | 37100.37300.37600.38000.39000.40400.41400.62600.892100 | Aluminium door-window fixing | 12d | 2026-07-06 | 2026-07-18 | 1418FS+0.25d |  | 7589283 |
| 1435 | 37100.37300.37600.38000.39000.40400.41400.62600.892200 | Putty primer coat | 6d | 2026-07-13 | 2026-07-19 | 1419, 1433 |  | 7589293 |
| 1436 | 37100.37300.37600.38000.39000.40400.41400.62600.892300 | Door shutter fixing | 8d | 2026-07-13 | 2026-07-21 | 1420, 1433 |  | 7589303 |
| 1437 | 37100.37300.37600.38000.39000.40400.41400.62600.892400 | Electrical wiring work | 12d | 2028-08-05 | 2028-08-17 | 1421, 1436 |  | 7589313 |
| 1438 | 37100.37300.37600.38000.39000.40400.41400.62600.892500 | Painting 1st coat | 12d | 2028-08-17 | 2028-08-29 | 1422, 1435, 1436, 1437 |  | 7589323 |
| 1439 | 37100.37300.37600.38000.39000.40400.41400.62600.892600 | False ceiling | 10d | 2028-08-29 | 2028-09-08 | 1423, 1438 |  | 7589333 |

| ID | WBS | Task | Duration | Start | Finish | Predecessors | Constraint | Unique_Task_ID |
| --- | --- | --- | --- | --- | --- | --- | --- | --- |
| 1440 | 37100.37300.37600.38000.39000.40400.41400.62700 | **17th Floor** | 844.19d | 2026-04-15 | 2028-09-20 |  | start no earlier than 2026-04-15 | 7568233 |
| 1441 | 37100.37300.37600.38000.39000.40400.41400.62700.892700 | Block Work | 8d | 2026-04-15 | 2026-04-23 | 1425FS+0.25d |  | 7589343 |
| 1442 | 37100.37300.37600.38000.39000.40400.41400.62700.892800 | Door Frame Fixing | 9d | 2026-04-29 | 2026-05-08 | 1426, 1441 |  | 7589353 |
| 1443 | 37100.37300.37600.38000.39000.40400.41400.62700.892900 | Internal Plumbing Works | 10d | 2026-05-13 | 2026-05-23 | 1427, 1441 |  | 7589363 |
| 1444 | 37100.37300.37600.38000.39000.40400.41400.62700.893000 | Waterproofing | 12d | 2026-06-16 | 2026-06-28 | 1428, 1443 |  | 7589373 |
| 1445 | 37100.37300.37600.38000.39000.40400.41400.62700.893100 | Internal Plaster | 5d | 2026-05-26 | 2026-05-31 | 1429FS+0.25d |  | 7589383 |
| 1446 | 37100.37300.37600.38000.39000.40400.41400.62700.893200 | IPS flooring work | 9d | 2026-06-28 | 2026-07-07 | 1430, 1442, 1443, 1444 |  | 7589393 |
| 1447 | 37100.37300.37600.38000.39000.40400.41400.62700.893300 | Toilet dado work | 8d | 2026-06-28 | 2026-07-06 | 1431, 1444, 1445 |  | 7589403 |
| 1448 | 37100.37300.37600.38000.39000.40400.41400.62700.893400 | Toilet flooring work | 7d | 2026-07-06 | 2026-07-13 | 1432, 1447 |  | 7589413 |
| 1449 | 37100.37300.37600.38000.39000.40400.41400.62700.893500 | Living dinning flooring | 12d | 2026-07-13 | 2026-07-25 | 1433FS+0.25d |  | 7589423 |
| 1450 | 37100.37300.37600.38000.39000.40400.41400.62700.893600 | Aluminium door-window fixing | 12d | 2026-07-25 | 2026-08-06 | 1434, 1446, 1449 |  | 7589433 |
| 1451 | 37100.37300.37600.38000.39000.40400.41400.62700.893700 | Putty primer coat | 6d | 2026-07-25 | 2026-07-31 | 1435, 1449 |  | 7589443 |
| 1452 | 37100.37300.37600.38000.39000.40400.41400.62700.893800 | Door shutter fixing | 8d | 2026-07-25 | 2026-08-02 | 1436, 1449 |  | 7589453 |
| 1453 | 37100.37300.37600.38000.39000.40400.41400.62700.893900 | Electrical wiring work | 12d | 2028-08-17 | 2028-08-29 | 1437, 1452 |  | 7589463 |
| 1454 | 37100.37300.37600.38000.39000.40400.41400.62700.894000 | Painting 1st coat | 12d | 2028-08-29 | 2028-09-10 | 1438, 1451, 1452, 1453 |  | 7589473 |
| 1455 | 37100.37300.37600.38000.39000.40400.41400.62700.894100 | False ceiling | 10d | 2028-09-10 | 2028-09-20 | 1439, 1454 |  | 7589483 |
| 1456 | 37100.37300.37600.38000.39000.40400.41400.62800 | **18th Floor** | 847.94d | 2026-04-23 | 2028-10-02 |  | start no earlier than 2026-04-23 | 7568243 |
| 1457 | 37100.37300.37600.38000.39000.40400.41400.62800.894200 | Block Work | 8d | 2026-04-23 | 2026-05-01 | 1441FS+0.25d |  | 7589493 |
| 1458 | 37100.37300.37600.38000.39000.40400.41400.62800.894300 | Door Frame Fixing | 9d | 2026-05-08 | 2026-05-17 | 1442, 1457 |  | 7589503 |
| 1459 | 37100.37300.37600.38000.39000.40400.41400.62800.894400 | Internal Plumbing Works | 10d | 2026-05-23 | 2026-06-02 | 1443, 1457 |  | 7589513 |
| 1460 | 37100.37300.37600.38000.39000.40400.41400.62800.894500 | Waterproofing | 12d | 2026-06-28 | 2026-07-10 | 1444, 1459 |  | 7589523 |
| 1461 | 37100.37300.37600.38000.39000.40400.41400.62800.894600 | Internal Plaster | 9d | 2026-05-31 | 2026-06-09 | 1445 |  | 7589533 |
| 1462 | 37100.37300.37600.38000.39000.40400.41400.62800.894700 | IPS flooring work | 9d | 2026-07-10 | 2026-07-19 | 1446, 1458, 1459, 1460 |  | 7589543 |
| 1463 | 37100.37300.37600.38000.39000.40400.41400.62800.894800 | Toilet dado work | 8d | 2026-07-10 | 2026-07-18 | 1447, 1460, 1461 |  | 7589553 |
| 1464 | 37100.37300.37600.38000.39000.40400.41400.62800.894900 | Toilet flooring work | 7d | 2026-07-18 | 2026-07-25 | 1448, 1463 |  | 7589563 |
| 1465 | 37100.37300.37600.38000.39000.40400.41400.62800.895000 | Living dinning flooring | 12d | 2026-07-25 | 2026-08-06 | 1449FS+0.25d |  | 7589573 |
| 1466 | 37100.37300.37600.38000.39000.40400.41400.62800.895100 | Aluminium door-window fixing | 12d | 2026-08-06 | 2026-08-18 | 1450FS+0.25d |  | 7589583 |
| 1467 | 37100.37300.37600.38000.39000.40400.41400.62800.895200 | Putty primer coat | 6d | 2026-08-06 | 2026-08-12 | 1451, 1465 |  | 7589593 |
| 1468 | 37100.37300.37600.38000.39000.40400.41400.62800.895300 | Door shutter fixing | 8d | 2026-08-06 | 2026-08-14 | 1452, 1465 |  | 7589603 |
| 1469 | 37100.37300.37600.38000.39000.40400.41400.62800.895400 | Electrical wiring work | 12d | 2028-08-29 | 2028-09-10 | 1453, 1468 |  | 7589613 |
| 1470 | 37100.37300.37600.38000.39000.40400.41400.62800.895500 | Painting 1st coat | 12d | 2028-09-10 | 2028-09-22 | 1454, 1467, 1468, 1469 |  | 7589623 |
| 1471 | 37100.37300.37600.38000.39000.40400.41400.62800.895600 | False ceiling | 10d | 2028-09-22 | 2028-10-02 | 1455, 1470 |  | 7589633 |

| ID | WBS | Task | Duration | Start | Finish | Predecessors | Constraint | Unique_Task_ID |
| --- | --- | --- | --- | --- | --- | --- | --- | --- |
| 1472 | 37100.37300.37600.38000.39000.40400.41400.62900 | **19th Floor** | 851.69d | 2026-05-02 | 2028-10-14 |  | start no earlier than 2026-05-02 | 7568253 |
| 1473 | 37100.37300.37600.38000.39000.40400.41400.62900.895700 | Block Work | 8d | 2026-05-02 | 2026-05-09 | 1457FS+0.25d |  | 7589643 |
| 1474 | 37100.37300.37600.38000.39000.40400.41400.62900.895800 | Door Frame Fixing | 9d | 2026-05-17 | 2026-05-26 | 1458, 1473 |  | 7589653 |
| 1475 | 37100.37300.37600.38000.39000.40400.41400.62900.895900 | Internal Plumbing Works | 10d | 2026-06-02 | 2026-06-12 | 1459, 1473 |  | 7589663 |
| 1476 | 37100.37300.37600.38000.39000.40400.41400.62900.896000 | Waterproofing | 12d | 2026-07-10 | 2026-07-22 | 1460, 1475 |  | 7589673 |
| 1477 | 37100.37300.37600.38000.39000.40400.41400.62900.896100 | Internal Plaster | 5d | 2026-06-10 | 2026-06-14 | 1461FS+0.25d |  | 7589683 |
| 1478 | 37100.37300.37600.38000.39000.40400.41400.62900.896200 | IPS flooring work | 9d | 2026-07-22 | 2026-07-31 | 1462, 1474, 1476, 1477 |  | 7589693 |
| 1479 | 37100.37300.37600.38000.39000.40400.41400.62900.896300 | Toilet dado work | 8d | 2026-07-22 | 2026-07-30 | 1463, 1476, 1477 |  | 7589703 |
| 1480 | 37100.37300.37600.38000.39000.40400.41400.62900.896400 | Toilet flooring work | 7d | 2026-07-30 | 2026-08-06 | 1464, 1479 |  | 7589713 |
| 1481 | 37100.37300.37600.38000.39000.40400.41400.62900.896500 | Living dinning flooring | 12d | 2026-08-07 | 2026-08-18 | 1465FS+0.25d |  | 7589723 |
| 1482 | 37100.37300.37600.38000.39000.40400.41400.62900.896600 | Aluminium door-window fixing | 12d | 2026-08-19 | 2026-08-30 | 1466FS+0.25d |  | 7589733 |
| 1483 | 37100.37300.37600.38000.39000.40400.41400.62900.896700 | Putty primer coat | 6d | 2026-08-19 | 2026-08-24 | 1467, 1481 |  | 7589743 |
| 1484 | 37100.37300.37600.38000.39000.40400.41400.62900.896800 | Door shutter fixing | 8d | 2026-08-19 | 2026-08-26 | 1468, 1481 |  | 7589753 |
| 1485 | 37100.37300.37600.38000.39000.40400.41400.62900.896900 | Electrical wiring work | 12d | 2028-09-10 | 2028-09-22 | 1469, 1484 |  | 7589763 |
| 1486 | 37100.37300.37600.38000.39000.40400.41400.62900.897000 | Painting 1st coat | 12d | 2028-09-22 | 2028-10-04 | 1470, 1483, 1484, 1485 |  | 7589773 |
| 1487 | 37100.37300.37600.38000.39000.40400.41400.62900.897100 | False ceiling | 10d | 2028-10-04 | 2028-10-14 | 1471, 1486 |  | 7589783 |
| 1488 | 37100.37300.37600.38000.39000.40400.41400.63000 | **20th Floor** | 855.44d | 2026-05-10 | 2028-10-26 |  | start no earlier than 2026-05-10 | 7568263 |
| 1489 | 37100.37300.37600.38000.39000.40400.41400.63000.897200 | Block Work | 8d | 2026-05-10 | 2026-05-18 | 1473FS+0.25d |  | 7589793 |
| 1490 | 37100.37300.37600.38000.39000.40400.41400.63000.897300 | Door Frame Fixing | 9d | 2026-05-26 | 2026-06-04 | 1474, 1489 |  | 7589803 |
| 1491 | 37100.37300.37600.38000.39000.40400.41400.63000.897400 | Internal Plumbing Works | 10d | 2026-06-12 | 2026-06-22 | 1475, 1489 |  | 7589813 |
| 1492 | 37100.37300.37600.38000.39000.40400.41400.63000.897500 | Waterproofing | 12d | 2026-07-22 | 2026-08-03 | 1476, 1491 |  | 7589823 |
| 1493 | 37100.37300.37600.38000.39000.40400.41400.63000.897600 | Internal Plaster | 5d | 2026-06-15 | 2026-06-20 | 1477FS+0.25d |  | 7589833 |
| 1494 | 37100.37300.37600.38000.39000.40400.41400.63000.897700 | IPS flooring work | 9d | 2026-08-03 | 2026-08-12 | 1478, 1490, 1492, 1493 |  | 7589843 |
| 1495 | 37100.37300.37600.38000.39000.40400.41400.63000.897800 | Toilet dado work | 8d | 2026-08-03 | 2026-08-11 | 1479, 1492, 1493 |  | 7589853 |
| 1496 | 37100.37300.37600.38000.39000.40400.41400.63000.897900 | Toilet flooring work | 7d | 2026-08-11 | 2026-08-18 | 1480, 1495 |  | 7589863 |
| 1497 | 37100.37300.37600.38000.39000.40400.41400.63000.898000 | Living dinning flooring | 12d | 2026-08-19 | 2026-08-31 | 1481FS+0.25d |  | 7589873 |
| 1498 | 37100.37300.37600.38000.39000.40400.41400.63000.898100 | Aluminium door-window fixing | 12d | 2026-08-31 | 2026-09-12 | 1482, 1494, 1497 |  | 7589883 |
| 1499 | 37100.37300.37600.38000.39000.40400.41400.63000.898200 | Putty primer coat | 6d | 2026-08-31 | 2026-09-06 | 1483, 1497 |  | 7589893 |
| 1500 | 37100.37300.37600.38000.39000.40400.41400.63000.898300 | Door shutter fixing | 8d | 2026-08-31 | 2026-09-08 | 1484, 1497 |  | 7589903 |
| 1501 | 37100.37300.37600.38000.39000.40400.41400.63000.898400 | Electrical wiring work | 12d | 2028-09-22 | 2028-10-04 | 1485, 1500 |  | 7589913 |
| 1502 | 37100.37300.37600.38000.39000.40400.41400.63000.898500 | Painting 1st coat | 12d | 2028-10-04 | 2028-10-16 | 1486, 1499, 1500, 1501 |  | 7589923 |
| 1503 | 37100.37300.37600.38000.39000.40400.41400.63000.898600 | False ceiling | 10d | 2028-10-16 | 2028-10-26 | 1487, 1502 |  | 7589933 |

| ID | WBS | Task | Duration | Start | Finish | Predecessors | Constraint | Unique_Task_ID |
| --- | --- | --- | --- | --- | --- | --- | --- | --- |
| 1504 | 37100.37300.37600.38000.39000.40400.41400.63100 | **21st Floor** | 859.19d | 2026-05-18 | 2028-11-07 |  | start no earlier than 2026-05-18 | 7568273 |
| 1505 | 37100.37300.37600.38000.39000.40400.41400.63100.898700 | Block Work | 8d | 2026-05-18 | 2026-05-26 | 1489FS+0.25d |  | 7589943 |
| 1506 | 37100.37300.37600.38000.39000.40400.41400.63100.898800 | Door Frame Fixing | 9d | 2026-06-04 | 2026-06-13 | 1490, 1505 |  | 7589953 |
| 1507 | 37100.37300.37600.38000.39000.40400.41400.63100.898900 | Internal Plumbing Works | 10d | 2026-06-22 | 2026-07-02 | 1491, 1505 |  | 7589963 |
| 1508 | 37100.37300.37600.38000.39000.40400.41400.63100.899000 | Waterproofing | 12d | 2026-08-03 | 2026-08-15 | 1492, 1507 |  | 7589973 |
| 1509 | 37100.37300.37600.38000.39000.40400.41400.63100.899100 | Internal Plaster | 8d | 2026-06-20 | 2026-06-28 | 1493FS+0.25d |  | 7589983 |
| 1510 | 37100.37300.37600.38000.39000.40400.41400.63100.899200 | IPS flooring work | 9d | 2026-08-15 | 2026-08-24 | 1494, 1506, 1508, 1509 |  | 7589993 |
| 1511 | 37100.37300.37600.38000.39000.40400.41400.63100.899300 | Toilet dado work | 8d | 2026-08-15 | 2026-08-23 | 1495, 1508, 1509 |  | 7590003 |
| 1512 | 37100.37300.37600.38000.39000.40400.41400.63100.899400 | Toilet flooring work | 7d | 2026-08-23 | 2026-08-30 | 1496, 1511 |  | 7590013 |
| 1513 | 37100.37300.37600.38000.39000.40400.41400.63100.899500 | Living dinning flooring | 12d | 2026-08-31 | 2026-09-12 | 1497, 1506, 1512 |  | 7590023 |
| 1514 | 37100.37300.37600.38000.39000.40400.41400.63100.899600 | Aluminium door-window fixing | 12d | 2026-09-12 | 2026-09-24 | 1498, 1510, 1513 |  | 7590033 |
| 1515 | 37100.37300.37600.38000.39000.40400.41400.63100.899700 | Putty primer coat | 6d | 2026-09-12 | 2026-09-18 | 1499, 1513 |  | 7590043 |
| 1516 | 37100.37300.37600.38000.39000.40400.41400.63100.899800 | Door shutter fixing | 8d | 2026-09-12 | 2026-09-20 | 1500, 1513 |  | 7590053 |
| 1517 | 37100.37300.37600.38000.39000.40400.41400.63100.899900 | Electrical wiring work | 12d | 2028-10-04 | 2028-10-16 | 1501, 1516 |  | 7590063 |
| 1518 | 37100.37300.37600.38000.39000.40400.41400.63100.900000 | Painting 1st coat | 12d | 2028-10-16 | 2028-10-28 | 1502, 1515, 1516, 1517 |  | 7590073 |
| 1519 | 37100.37300.37600.38000.39000.40400.41400.63100.900100 | False ceiling | 10d | 2028-10-28 | 2028-11-07 | 1503, 1518 |  | 7590083 |
| 1520 | 37100.37300.37600.38000.39000.40400.41400.63200 | **22nd Floor** | 862.94d | 2026-05-26 | 2028-11-19 |  | start no earlier than 2026-05-26 | 7568283 |
| 1521 | 37100.37300.37600.38000.39000.40400.41400.63200.900200 | Block Work | 5d | 2026-05-26 | 2026-05-31 | 1505FS+0.25d |  | 7590093 |
| 1522 | 37100.37300.37600.38000.39000.40400.41400.63200.900300 | Door Frame Fixing | 9d | 2026-06-13 | 2026-06-22 | 1506, 1521 |  | 7590103 |
| 1523 | 37100.37300.37600.38000.39000.40400.41400.63200.900400 | Internal Plumbing Works | 10d | 2026-07-02 | 2026-07-12 | 1507, 1521 |  | 7590113 |
| 1524 | 37100.37300.37600.38000.39000.40400.41400.63200.900500 | Waterproofing | 12d | 2026-08-15 | 2026-08-27 | 1508, 1523 |  | 7590123 |
| 1525 | 37100.37300.37600.38000.39000.40400.41400.63200.900600 | Internal Plaster | 10d | 2026-06-28 | 2026-07-08 | 1509FS+0.25d |  | 7590133 |
| 1526 | 37100.37300.37600.38000.39000.40400.41400.63200.900700 | IPS flooring work | 9d | 2026-08-27 | 2026-09-05 | 1510, 1522, 1524, 1525 |  | 7590143 |
| 1527 | 37100.37300.37600.38000.39000.40400.41400.63200.900800 | Toilet dado work | 8d | 2026-08-27 | 2026-09-04 | 1511, 1524, 1525 |  | 7590153 |
| 1528 | 37100.37300.37600.38000.39000.40400.41400.63200.900900 | Toilet flooring work | 7d | 2026-09-04 | 2026-09-11 | 1512, 1527 |  | 7590163 |
| 1529 | 37100.37300.37600.38000.39000.40400.41400.63200.901000 | Living dinning flooring | 12d | 2026-09-12 | 2026-09-24 | 1513, 1522, 1528 |  | 7590173 |
| 1530 | 37100.37300.37600.38000.39000.40400.41400.63200.901100 | Aluminium door-window fixing | 12d | 2026-09-24 | 2026-10-06 | 1514, 1526, 1529 |  | 7590183 |
| 1531 | 37100.37300.37600.38000.39000.40400.41400.63200.901200 | Putty primer coat | 6d | 2026-09-24 | 2026-09-30 | 1515, 1529 |  | 7590193 |
| 1532 | 37100.37300.37600.38000.39000.40400.41400.63200.901300 | Door shutter fixing | 8d | 2026-09-24 | 2026-10-02 | 1516, 1529 |  | 7590203 |
| 1533 | 37100.37300.37600.38000.39000.40400.41400.63200.901400 | Electrical wiring work | 12d | 2028-10-16 | 2028-10-28 | 1517, 1532 |  | 7590213 |
| 1534 | 37100.37300.37600.38000.39000.40400.41400.63200.901500 | Painting 1st coat | 12d | 2028-10-28 | 2028-11-09 | 1518, 1531, 1532, 1533 |  | 7590223 |
| 1535 | 37100.37300.37600.38000.39000.40400.41400.63200.901600 | False ceiling | 10d | 2028-11-09 | 2028-11-19 | 1519, 1534 |  | 7590233 |

| ID | WBS | Task | Duration | Start | Finish | Predecessors | Constraint | Unique_Task_ID |
| --- | --- | --- | --- | --- | --- | --- | --- | --- |
| 1536 | 37100.37300.37600.38000.39000.40400.41400.63300 | **23rd Floor** | 869.69d | 2026-06-01 | 2028-12-01 |  | start no earlier than 2026-06-01 | 7568293 |
| 1537 | 37100.37300.37600.38000.39000.40400.41400.63300.901700 | Block Work | 7.94d | 2026-06-01 | 2026-06-08 | 1521FS+0.25d |  | 7590243 |
| 1538 | 37100.37300.37600.38000.39000.40400.41400.63300.901800 | Door Frame Fixing | 9d | 2026-06-22 | 2026-07-01 | 1522, 1537 |  | 7590253 |
| 1539 | 37100.37300.37600.38000.39000.40400.41400.63300.901900 | Internal Plumbing Works | 10d | 2026-07-12 | 2026-07-22 | 1523, 1537 |  | 7590263 |
| 1540 | 37100.37300.37600.38000.39000.40400.41400.63300.902000 | Waterproofing | 12d | 2026-08-27 | 2026-09-08 | 1524, 1539 |  | 7590273 |
| 1541 | 37100.37300.37600.38000.39000.40400.41400.63300.902100 | Internal Plaster | 10d | 2026-07-09 | 2026-07-18 | 1525FS+0.25d |  | 7590283 |
| 1542 | 37100.37300.37600.38000.39000.40400.41400.63300.902200 | IPS flooring work | 9d | 2026-09-08 | 2026-09-17 | 1526, 1538, 1540, 1541 |  | 7590293 |
| 1543 | 37100.37300.37600.38000.39000.40400.41400.63300.902300 | Toilet dado work | 8d | 2026-09-08 | 2026-09-16 | 1527, 1540, 1541 |  | 7590303 |
| 1544 | 37100.37300.37600.38000.39000.40400.41400.63300.902400 | Toilet flooring work | 7d | 2026-09-16 | 2026-09-23 | 1528, 1543 |  | 7590313 |
| 1545 | 37100.37300.37600.38000.39000.40400.41400.63300.902500 | Living dinning flooring | 15d | 2026-09-24 | 2026-10-09 | 1529, 1538, 1544 |  | 7590323 |
| 1546 | 37100.37300.37600.38000.39000.40400.41400.63300.902600 | Aluminium door-window fixing | 15d | 2026-10-09 | 2026-10-24 | 1530, 1542, 1545 |  | 7590333 |
| 1547 | 37100.37300.37600.38000.39000.40400.41400.63300.902700 | Putty primer coat | 6d | 2026-10-09 | 2026-10-15 | 1531, 1545 |  | 7590343 |
| 1548 | 37100.37300.37600.38000.39000.40400.41400.63300.902800 | Door shutter fixing | 8d | 2026-10-09 | 2026-10-17 | 1532, 1545 |  | 7590353 |
| 1549 | 37100.37300.37600.38000.39000.40400.41400.63300.902900 | Electrical wiring work | 12d | 2028-10-28 | 2028-11-09 | 1533, 1548 |  | 7590363 |
| 1550 | 37100.37300.37600.38000.39000.40400.41400.63300.903000 | Painting 1st coat | 12d | 2028-11-09 | 2028-11-21 | 1534, 1547, 1548, 1549 |  | 7590373 |
| 1551 | 37100.37300.37600.38000.39000.40400.41400.63300.903100 | False ceiling | 10d | 2028-11-21 | 2028-12-01 | 1535, 1550 |  | 7590383 |
| 1552 | 37100.37300.37600.38000.39000.40400.41400.63400 | **24th Floor** | 873.5d | 2026-06-09 | 2028-12-13 |  | start no earlier than 2026-06-09 | 7568303 |
| 1553 | 37100.37300.37600.38000.39000.40400.41400.63400.903200 | Block Work | 4d | 2026-06-09 | 2026-06-13 | 1537FS+0.25d |  | 7590393 |
| 1554 | 37100.37300.37600.38000.39000.40400.41400.63400.903300 | Door Frame Fixing | 9d | 2026-07-01 | 2026-07-10 | 1538, 1553 |  | 7590403 |
| 1555 | 37100.37300.37600.38000.39000.40400.41400.63400.903400 | Internal Plumbing Works | 10d | 2026-07-22 | 2026-08-01 | 1539, 1553 |  | 7590413 |
| 1556 | 37100.37300.37600.38000.39000.40400.41400.63400.903500 | Waterproofing | 12d | 2026-09-08 | 2026-09-20 | 1540, 1555 |  | 7590423 |
| 1557 | 37100.37300.37600.38000.39000.40400.41400.63400.903600 | Internal Plaster | 9d | 2026-09-20 | 2026-09-29 | 1541, 1554, 1555, 1556 |  | 7590433 |
| 1558 | 37100.37300.37600.38000.39000.40400.41400.63400.903700 | IPS flooring work | 9d | 2026-09-29 | 2026-10-08 | 1542, 1554, 1556, 1557 |  | 7590443 |
| 1559 | 37100.37300.37600.38000.39000.40400.41400.63400.903800 | Toilet dado work | 8d | 2026-09-29 | 2026-10-07 | 1543, 1556, 1557 |  | 7590453 |
| 1560 | 37100.37300.37600.38000.39000.40400.41400.63400.903900 | Toilet flooring work | 7d | 2026-10-07 | 2026-10-14 | 1544, 1559 |  | 7590463 |
| 1561 | 37100.37300.37600.38000.39000.40400.41400.63400.904000 | Living dinning flooring | 15d | 2026-10-14 | 2026-10-29 | 1545, 1554, 1560 |  | 7590473 |
| 1562 | 37100.37300.37600.38000.39000.40400.41400.63400.904100 | Aluminium door-window fixing | 15d | 2026-10-29 | 2026-12-28 | 1546, 1558, 1561 |  | 7590483 |
| 1563 | 37100.37300.37600.38000.39000.40400.41400.63400.904200 | Putty primer coat | 6d | 2026-10-29 | 2026-12-19 | 1547, 1561 |  | 7590493 |
| 1564 | 37100.37300.37600.38000.39000.40400.41400.63400.904300 | Door shutter fixing | 8d | 2026-10-29 | 2026-12-21 | 1548, 1561 |  | 7590503 |
| 1565 | 37100.37300.37600.38000.39000.40400.41400.63400.904400 | Electrical wiring work | 12d | 2028-11-09 | 2028-11-21 | 1549, 1564 |  | 7590513 |
| 1566 | 37100.37300.37600.38000.39000.40400.41400.63400.904500 | Painting 1st coat | 12d | 2028-11-21 | 2028-12-03 | 1550, 1563, 1564, 1565 |  | 7590523 |
| 1567 | 37100.37300.37600.38000.39000.40400.41400.63400.904600 | False ceiling | 10d | 2028-12-03 | 2028-12-13 | 1551, 1566 |  | 7590533 |

| ID | WBS | Task | Duration | Start | Finish | Predecessors | Constraint | Unique_Task_ID |
| --- | --- | --- | --- | --- | --- | --- | --- | --- |
| 1568 | 37100.37300.37600.38000.39000.40400.41400.63500 | **25th Floor** | 801.94d | 2026-08-31 | 2028-12-25 |  | start no earlier than 2026-08-31 | 7568313 |
| 1569 | 37100.37300.37600.38000.39000.40400.41400.63500.904700 | Block Work | 7.94d | 2026-08-31 | 2026-09-08 | 1171, 1553 |  | 7590543 |
| 1570 | 37100.37300.37600.38000.39000.40400.41400.63500.904800 | Door Frame Fixing | 9d | 2026-09-08 | 2026-09-17 | 1554, 1569 |  | 7590553 |
| 1571 | 37100.37300.37600.38000.39000.40400.41400.63500.904900 | Internal Plumbing Works | 10d | 2026-09-08 | 2026-09-18 | 1555, 1569 |  | 7590563 |
| 1572 | 37100.37300.37600.38000.39000.40400.41400.63500.905000 | Waterproofing | 12d | 2026-09-20 | 2026-10-02 | 1556, 1571 |  | 7590573 |
| 1573 | 37100.37300.37600.38000.39000.40400.41400.63500.905100 | Internal Plaster | 9d | 2026-10-02 | 2026-10-11 | 1557, 1570, 1571, 1572 |  | 7590583 |
| 1574 | 37100.37300.37600.38000.39000.40400.41400.63500.905200 | IPS flooring work | 9d | 2026-10-11 | 2026-10-20 | 1558, 1570, 1572, 1573 |  | 7590593 |
| 1575 | 37100.37300.37600.38000.39000.40400.41400.63500.905300 | Toilet dado work | 8d | 2026-10-11 | 2026-10-19 | 1559, 1572, 1573 |  | 7590603 |
| 1576 | 37100.37300.37600.38000.39000.40400.41400.63500.905400 | Toilet flooring work | 7d | 2026-10-19 | 2026-10-26 | 1560, 1575 |  | 7590613 |
| 1577 | 37100.37300.37600.38000.39000.40400.41400.63500.905500 | Living dinning flooring | 15d | 2026-10-29 | 2026-12-28 | 1561, 1570, 1576 |  | 7590623 |
| 1578 | 37100.37300.37600.38000.39000.40400.41400.63500.905600 | Aluminium door-window fixing | 15d | 2026-12-28 | 2027-01-12 | 1562, 1574, 1577 |  | 7590633 |
| 1579 | 37100.37300.37600.38000.39000.40400.41400.63500.905700 | Putty primer coat | 6d | 2026-12-28 | 2027-01-03 | 1563, 1577 |  | 7590643 |
| 1580 | 37100.37300.37600.38000.39000.40400.41400.63500.905800 | Door shutter fixing | 8d | 2026-12-28 | 2027-01-05 | 1564, 1577 |  | 7590653 |
| 1581 | 37100.37300.37600.38000.39000.40400.41400.63500.905900 | Electrical wiring work | 12d | 2028-11-21 | 2028-12-03 | 1565, 1580 |  | 7590663 |
| 1582 | 37100.37300.37600.38000.39000.40400.41400.63500.906000 | Painting 1st coat | 12d | 2028-12-03 | 2028-12-15 | 1566, 1579, 1580, 1581 |  | 7590673 |
| 1583 | 37100.37300.37600.38000.39000.40400.41400.63500.906100 | False ceiling | 10d | 2028-12-15 | 2028-12-25 | 1567, 1582 |  | 7590683 |
| 1584 | 37100.37300.37600.38000.39000.40400.41400.63600 | **26th Floor** | 800.19d | 2026-09-14 | 2029-01-06 |  | start no earlier than 2026-09-14 | 7568323 |
| 1585 | 37100.37300.37600.38000.39000.40400.41400.63600.906200 | Block Work | 7.94d | 2026-09-14 | 2026-09-22 | 1172, 1569 |  | 7590693 |
| 1586 | 37100.37300.37600.38000.39000.40400.41400.63600.906300 | Door Frame Fixing | 9d | 2026-09-22 | 2026-10-01 | 1570, 1585 |  | 7590703 |
| 1587 | 37100.37300.37600.38000.39000.40400.41400.63600.906400 | Internal Plumbing Works | 10d | 2026-09-22 | 2026-10-02 | 1571, 1585 |  | 7590713 |
| 1588 | 37100.37300.37600.38000.39000.40400.41400.63600.906500 | Waterproofing | 12d | 2026-10-02 | 2026-10-14 | 1572, 1587 |  | 7590723 |
| 1589 | 37100.37300.37600.38000.39000.40400.41400.63600.906600 | Internal Plaster | 9d | 2026-10-14 | 2026-10-23 | 1573, 1586, 1587, 1588 |  | 7590733 |
| 1590 | 37100.37300.37600.38000.39000.40400.41400.63600.906700 | IPS flooring work | 9d | 2026-10-23 | 2026-12-16 | 1574, 1586, 1588, 1589 |  | 7590743 |
| 1591 | 37100.37300.37600.38000.39000.40400.41400.63600.906800 | Toilet dado work | 8d | 2026-10-23 | 2026-10-31 | 1575, 1588, 1589 |  | 7590753 |
| 1592 | 37100.37300.37600.38000.39000.40400.41400.63600.906900 | Toilet flooring work | 7d | 2026-10-31 | 2026-12-22 | 1576, 1591 |  | 7590763 |
| 1593 | 37100.37300.37600.38000.39000.40400.41400.63600.907000 | Living dinning flooring | 15d | 2026-12-28 | 2027-01-12 | 1577, 1586, 1592 |  | 7590773 |
| 1594 | 37100.37300.37600.38000.39000.40400.41400.63600.907100 | Aluminium door-window fixing | 15d | 2027-01-12 | 2027-01-27 | 1578, 1590, 1593 |  | 7590783 |
| 1595 | 37100.37300.37600.38000.39000.40400.41400.63600.907200 | Putty primer coat | 6d | 2027-01-12 | 2027-01-18 | 1579, 1593 |  | 7590793 |
| 1596 | 37100.37300.37600.38000.39000.40400.41400.63600.907300 | Door shutter fixing | 8d | 2027-01-12 | 2027-01-20 | 1580, 1593 |  | 7590803 |
| 1597 | 37100.37300.37600.38000.39000.40400.41400.63600.907400 | Electrical wiring work | 12d | 2028-12-03 | 2028-12-15 | 1581, 1596 |  | 7590813 |
| 1598 | 37100.37300.37600.38000.39000.40400.41400.63600.907500 | Painting 1st coat | 12d | 2028-12-15 | 2028-12-27 | 1582, 1595, 1596, 1597 |  | 7590823 |
| 1599 | 37100.37300.37600.38000.39000.40400.41400.63600.907600 | False ceiling | 10d | 2028-12-27 | 2029-01-06 | 1583, 1598 |  | 7590833 |

| ID | WBS | Task | Duration | Start | Finish | Predecessors | Constraint | Unique_Task_ID |
| --- | --- | --- | --- | --- | --- | --- | --- | --- |
| 1600 | 37100.37300.37600.38000.39000.40400.41400.63700 | **27th Floor** | 799.44d | 2026-09-27 | 2029-01-18 |  | start no earlier than 2026-09-27 | 7568333 |
| 1601 | 37100.37300.37600.38000.39000.40400.41400.63700.907700 | Block Work | 7.94d | 2026-09-27 | 2026-10-05 | 1173, 1585 |  | 7590843 |
| 1602 | 37100.37300.37600.38000.39000.40400.41400.63700.907800 | Door Frame Fixing | 8.94d | 2026-10-05 | 2026-10-14 | 1586, 1601 |  | 7590853 |
| 1603 | 37100.37300.37600.38000.39000.40400.41400.63700.907900 | Internal Plumbing Works | 10d | 2026-10-05 | 2026-10-15 | 1587, 1601 |  | 7590863 |
| 1604 | 37100.37300.37600.38000.39000.40400.41400.63700.908000 | Waterproofing | 12d | 2026-10-15 | 2026-10-27 | 1588, 1603 |  | 7590873 |
| 1605 | 37100.37300.37600.38000.39000.40400.41400.63700.908100 | Internal Plaster | 9d | 2026-10-27 | 2026-12-20 | 1589, 1602, 1603, 1604 |  | 7590883 |
| 1606 | 37100.37300.37600.38000.39000.40400.41400.63700.908200 | IPS flooring work | 9d | 2026-12-20 | 2026-12-29 | 1590, 1602, 1604, 1605 |  | 7590893 |
| 1607 | 37100.37300.37600.38000.39000.40400.41400.63700.908300 | Toilet dado work | 8d | 2026-12-20 | 2026-12-28 | 1591, 1604, 1605 |  | 7590903 |
| 1608 | 37100.37300.37600.38000.39000.40400.41400.63700.908400 | Toilet flooring work | 7d | 2026-12-28 | 2027-01-04 | 1592, 1607 |  | 7590913 |
| 1609 | 37100.37300.37600.38000.39000.40400.41400.63700.908500 | Living dinning flooring | 15d | 2027-01-12 | 2027-01-27 | 1593, 1602, 1608 |  | 7590923 |
| 1610 | 37100.37300.37600.38000.39000.40400.41400.63700.908600 | Aluminium door-window fixing | 15d | 2027-01-27 | 2027-02-11 | 1594, 1606, 1609 |  | 7590933 |
| 1611 | 37100.37300.37600.38000.39000.40400.41400.63700.908700 | Putty primer coat | 6d | 2027-01-27 | 2027-02-02 | 1595, 1609 |  | 7590943 |
| 1612 | 37100.37300.37600.38000.39000.40400.41400.63700.908800 | Door shutter fixing | 8d | 2027-01-27 | 2027-02-04 | 1596, 1609 |  | 7590953 |
| 1613 | 37100.37300.37600.38000.39000.40400.41400.63700.908900 | Electrical wiring work | 12d | 2028-12-15 | 2028-12-27 | 1597, 1612 |  | 7590963 |
| 1614 | 37100.37300.37600.38000.39000.40400.41400.63700.909000 | Painting 1st coat | 12d | 2028-12-27 | 2029-01-08 | 1598, 1611, 1612, 1613 |  | 7590973 |
| 1615 | 37100.37300.37600.38000.39000.40400.41400.63700.909100 | False ceiling | 10d | 2029-01-08 | 2029-01-18 | 1599, 1614 |  | 7590983 |
| 1616 | 37100.37300.37600.38000.39000.40400.41400.63800 | **28th Floor** | 793.69d | 2026-10-15 | 2029-01-30 |  | start no earlier than 2026-10-15 | 7568343 |
| 1617 | 37100.37300.37600.38000.39000.40400.41400.63800.909200 | Block Work | 7.94d | 2026-10-15 | 2026-10-22 | 1174, 1601 |  | 7590993 |
| 1618 | 37100.37300.37600.38000.39000.40400.41400.63800.909300 | Door Frame Fixing | 8.94d | 2026-10-22 | 2026-10-31 | 1602, 1617 |  | 7591003 |
| 1619 | 37100.37300.37600.38000.39000.40400.41400.63800.909400 | Internal Plumbing Works | 10d | 2026-10-22 | 2026-12-16 | 1603, 1617 |  | 7591013 |
| 1620 | 37100.37300.37600.38000.39000.40400.41400.63800.909500 | Waterproofing | 12d | 2026-12-16 | 2026-12-28 | 1604, 1619 |  | 7591023 |
| 1621 | 37100.37300.37600.38000.39000.40400.41400.63800.909600 | Internal Plaster | 9d | 2026-12-28 | 2027-01-06 | 1605, 1618, 1619, 1620 |  | 7591033 |
| 1622 | 37100.37300.37600.38000.39000.40400.41400.63800.909700 | IPS flooring work | 9d | 2027-01-06 | 2027-01-15 | 1606, 1618, 1620, 1621 |  | 7591043 |
| 1623 | 37100.37300.37600.38000.39000.40400.41400.63800.909800 | Toilet dado work | 8d | 2027-01-06 | 2027-01-14 | 1607, 1620, 1621 |  | 7591053 |
| 1624 | 37100.37300.37600.38000.39000.40400.41400.63800.909900 | Toilet flooring work | 7d | 2027-01-14 | 2027-01-21 | 1608, 1623 |  | 7591063 |
| 1625 | 37100.37300.37600.38000.39000.40400.41400.63800.910000 | Living dinning flooring | 15d | 2027-01-27 | 2027-02-11 | 1609, 1618, 1624 |  | 7591073 |
| 1626 | 37100.37300.37600.38000.39000.40400.41400.63800.910100 | Aluminium door-window fixing | 15d | 2027-02-11 | 2027-02-26 | 1610, 1622, 1625 |  | 7591083 |
| 1627 | 37100.37300.37600.38000.39000.40400.41400.63800.910200 | Putty primer coat | 6d | 2027-02-11 | 2027-02-17 | 1611, 1625 |  | 7591093 |
| 1628 | 37100.37300.37600.38000.39000.40400.41400.63800.910300 | Door shutter fixing | 8d | 2027-02-11 | 2027-02-19 | 1612, 1625 |  | 7591103 |
| 1629 | 37100.37300.37600.38000.39000.40400.41400.63800.910400 | Electrical wiring work | 12d | 2028-12-27 | 2029-01-08 | 1613, 1628 |  | 7591113 |
| 1630 | 37100.37300.37600.38000.39000.40400.41400.63800.910500 | Painting 1st coat | 12d | 2029-01-08 | 2029-01-20 | 1614, 1627, 1628, 1629 |  | 7591123 |
| 1631 | 37100.37300.37600.38000.39000.40400.41400.63800.910600 | False ceiling | 10d | 2029-01-20 | 2029-01-30 | 1615, 1630 |  | 7591133 |

| ID | WBS | Task | Duration | Start | Finish | Predecessors | Constraint | Unique_Task_ID |
| --- | --- | --- | --- | --- | --- | --- | --- | --- |
| 1632 | 37100.37300.37600.38000.39000.40400.41400.63900 | **29th Floor** | 788.81d | 2026-10-31 | 2029-02-11 |  | start no earlier than 2026-10-31 | 7568353 |
| 1633 | 37100.37300.37600.38000.39000.40400.41400.63900.910700 | Block Work | 7.94d | 2026-10-31 | 2026-12-23 | 1175, 1617 |  | 7591143 |
| 1634 | 37100.37300.37600.38000.39000.40400.41400.63900.910800 | Door Frame Fixing | 8.94d | 2026-12-23 | 2027-01-01 | 1618, 1633 |  | 7591153 |
| 1635 | 37100.37300.37600.38000.39000.40400.41400.63900.910900 | Internal Plumbing Works | 10d | 2026-12-23 | 2027-01-02 | 1619, 1633 |  | 7591163 |
| 1636 | 37100.37300.37600.38000.39000.40400.41400.63900.911000 | Waterproofing | 12d | 2027-01-02 | 2027-01-14 | 1620, 1635 |  | 7591173 |
| 1637 | 37100.37300.37600.38000.39000.40400.41400.63900.911100 | Internal Plaster | 9d | 2027-01-14 | 2027-01-23 | 1621, 1634, 1635, 1636 |  | 7591183 |
| 1638 | 37100.37300.37600.38000.39000.40400.41400.63900.911200 | IPS flooring work | 9d | 2027-01-23 | 2027-02-01 | 1622, 1634, 1636, 1637 |  | 7591193 |
| 1639 | 37100.37300.37600.38000.39000.40400.41400.63900.911300 | Toilet dado work | 8d | 2027-01-23 | 2027-01-31 | 1623, 1636, 1637 |  | 7591203 |
| 1640 | 37100.37300.37600.38000.39000.40400.41400.63900.911400 | Toilet flooring work | 7d | 2027-01-31 | 2027-02-07 | 1624, 1639 |  | 7591213 |
| 1641 | 37100.37300.37600.38000.39000.40400.41400.63900.911500 | Living dinning flooring | 15d | 2027-02-11 | 2027-02-26 | 1625, 1634, 1640 |  | 7591223 |
| 1642 | 37100.37300.37600.38000.39000.40400.41400.63900.911600 | Aluminium door-window fixing | 15d | 2027-02-26 | 2027-03-13 | 1626, 1638, 1641 |  | 7591233 |
| 1643 | 37100.37300.37600.38000.39000.40400.41400.63900.911700 | Putty primer coat | 6d | 2027-02-26 | 2027-03-04 | 1627, 1641 |  | 7591243 |
| 1644 | 37100.37300.37600.38000.39000.40400.41400.63900.911800 | Door shutter fixing | 8d | 2027-02-26 | 2027-03-06 | 1628, 1641 |  | 7591253 |
| 1645 | 37100.37300.37600.38000.39000.40400.41400.63900.911900 | Electrical wiring work | 12d | 2029-01-08 | 2029-01-20 | 1629, 1644 |  | 7591263 |
| 1646 | 37100.37300.37600.38000.39000.40400.41400.63900.912000 | Painting 1st coat | 12d | 2029-01-20 | 2029-02-01 | 1630, 1643, 1644, 1645 |  | 7591273 |
| 1647 | 37100.37300.37600.38000.39000.40400.41400.63900.912100 | False ceiling | 10d | 2029-02-01 | 2029-02-11 | 1631, 1646 |  | 7591283 |
| 1648 | 37100.37300.37600.38000.39000.40400.41400.64000 | **30th Floor** | 767.31d | 2027-01-24 | 2029-03-01 |  | start no earlier than 2027-01-24 | 7568363 |
| 1649 | 37100.37300.37600.38000.39000.40400.41400.64000.912200 | Block Work | 7.94d | 2027-01-24 | 2027-02-01 | 1176, 1633 |  | 7591293 |
| 1650 | 37100.37300.37600.38000.39000.40400.41400.64000.912300 | Door Frame Fixing | 8.94d | 2027-02-01 | 2027-02-10 | 1634, 1649 |  | 7591303 |
| 1651 | 37100.37300.37600.38000.39000.40400.41400.64000.912400 | Internal Plumbing Works | 9.94d | 2027-02-01 | 2027-02-11 | 1635, 1649 |  | 7591313 |
| 1652 | 37100.37300.37600.38000.39000.40400.41400.64000.912500 | Waterproofing | 12d | 2027-02-11 | 2027-02-23 | 1636, 1651 |  | 7591323 |
| 1653 | 37100.37300.37600.38000.39000.40400.41400.64000.912600 | Internal Plaster | 9d | 2027-02-23 | 2027-03-04 | 1637, 1650, 1651, 1652 |  | 7591333 |
| 1654 | 37100.37300.37600.38000.39000.40400.41400.64000.912700 | IPS flooring work | 9d | 2027-03-04 | 2027-03-13 | 1638, 1650, 1652, 1653 |  | 7591343 |
| 1655 | 37100.37300.37600.38000.39000.40400.41400.64000.912800 | Toilet dado work | 8d | 2027-03-04 | 2027-03-12 | 1639, 1652, 1653 |  | 7591353 |
| 1656 | 37100.37300.37600.38000.39000.40400.41400.64000.912900 | Toilet flooring work | 7d | 2027-03-12 | 2027-03-19 | 1640, 1655 |  | 7591363 |
| 1657 | 37100.37300.37600.38000.39000.40400.41400.64000.913000 | Living dinning flooring | 15d | 2027-03-19 | 2027-04-03 | 1641, 1650, 1656 |  | 7591373 |
| 1658 | 37100.37300.37600.38000.39000.40400.41400.64000.913100 | Aluminium door-window fixing | 15d | 2027-04-03 | 2027-04-18 | 1642, 1654, 1657 |  | 7591383 |
| 1659 | 37100.37300.37600.38000.39000.40400.41400.64000.913200 | Putty primer coat | 6d | 2027-04-03 | 2027-04-09 | 1643, 1657 |  | 7591393 |
| 1660 | 37100.37300.37600.38000.39000.40400.41400.64000.913300 | Door shutter fixing | 8d | 2027-04-03 | 2027-04-11 | 1644, 1657 |  | 7591403 |
| 1661 | 37100.37300.37600.38000.39000.40400.41400.64000.913400 | Electrical wiring work | 15d | 2029-01-20 | 2029-02-04 | 1645, 1660 |  | 7591413 |
| 1662 | 37100.37300.37600.38000.39000.40400.41400.64000.913500 | Painting 1st coat | 15d | 2029-02-04 | 2029-02-19 | 1646, 1659, 1660, 1661 |  | 7591423 |
| 1663 | 37100.37300.37600.38000.39000.40400.41400.64000.913600 | False ceiling | 10d | 2029-02-19 | 2029-03-01 | 1647, 1662 |  | 7591433 |

| ID | WBS | Task | Duration | Start | Finish | Predecessors | Constraint | Unique_Task_ID |
| --- | --- | --- | --- | --- | --- | --- | --- | --- |
| 1664 | 37100.37300.37600.38000.39000.40400.41400.64100 | **31st Floor** | 774.38d | 2027-02-01 | 2029-03-16 |  | start no earlier than 2027-02-01 | 7568373 |
| 1665 | 37100.37300.37600.38000.39000.40400.41400.64100.913700 | Block Work | 7.94d | 2027-02-01 | 2027-02-09 | 1177, 1649 |  | 7591443 |
| 1666 | 37100.37300.37600.38000.39000.40400.41400.64100.913800 | Door Frame Fixing | 8.94d | 2027-02-10 | 2027-02-19 | 1650, 1665 |  | 7591453 |
| 1667 | 37100.37300.37600.38000.39000.40400.41400.64100.913900 | Internal Plumbing Works | 9.94d | 2027-02-11 | 2027-02-21 | 1651, 1665 |  | 7591463 |
| 1668 | 37100.37300.37600.38000.39000.40400.41400.64100.914000 | Waterproofing | 12d | 2027-02-23 | 2027-03-07 | 1652, 1667 |  | 7591473 |
| 1669 | 37100.37300.37600.38000.39000.40400.41400.64100.914100 | Internal Plaster | 9d | 2027-03-07 | 2027-03-16 | 1653, 1666, 1667, 1668 |  | 7591483 |
| 1670 | 37100.37300.37600.38000.39000.40400.41400.64100.914200 | IPS flooring work | 9d | 2027-03-16 | 2027-03-25 | 1654, 1666, 1668, 1669 |  | 7591493 |
| 1671 | 37100.37300.37600.38000.39000.40400.41400.64100.914300 | Toilet dado work | 8d | 2027-03-16 | 2027-03-24 | 1655, 1668, 1669 |  | 7591503 |
| 1672 | 37100.37300.37600.38000.39000.40400.41400.64100.914400 | Toilet flooring work | 7d | 2027-03-24 | 2027-03-31 | 1656, 1671 |  | 7591513 |
| 1673 | 37100.37300.37600.38000.39000.40400.41400.64100.914500 | Living dinning flooring | 15d | 2027-04-03 | 2027-04-18 | 1657, 1666, 1672 |  | 7591523 |
| 1674 | 37100.37300.37600.38000.39000.40400.41400.64100.914600 | Aluminium door-window fixing | 12d | 2027-04-18 | 2027-04-30 | 1658, 1670, 1673 |  | 7591533 |
| 1675 | 37100.37300.37600.38000.39000.40400.41400.64100.914700 | Putty primer coat | 6d | 2027-04-18 | 2027-04-24 | 1659, 1673 |  | 7591543 |
| 1676 | 37100.37300.37600.38000.39000.40400.41400.64100.914800 | Door shutter fixing | 8d | 2027-04-18 | 2027-04-26 | 1660, 1673 |  | 7591553 |
| 1677 | 37100.37300.37600.38000.39000.40400.41400.64100.914900 | Electrical wiring work | 15d | 2029-02-04 | 2029-02-19 | 1661, 1676 |  | 7591563 |
| 1678 | 37100.37300.37600.38000.39000.40400.41400.64100.915000 | Painting 1st coat | 15d | 2029-02-19 | 2029-03-06 | 1662, 1675, 1676, 1677 |  | 7591573 |
| 1679 | 37100.37300.37600.38000.39000.40400.41400.64100.915100 | False ceiling | 10d | 2029-03-06 | 2029-03-16 | 1663, 1678 |  | 7591583 |
| 1680 | 37100.37300.37600.38000.39000.40400.41400.64200 | **32nd Floor** | 781.44d | 2027-02-09 | 2029-03-31 |  | start no earlier than 2027-02-09 | 7568383 |
| 1681 | 37100.37300.37600.38000.39000.40400.41400.64200.915200 | Block Work | 7.94d | 2027-02-09 | 2027-02-17 | 1178, 1665 |  | 7591593 |
| 1682 | 37100.37300.37600.38000.39000.40400.41400.64200.915300 | Door Frame Fixing | 8.94d | 2027-02-19 | 2027-02-28 | 1666, 1681 |  | 7591603 |
| 1683 | 37100.37300.37600.38000.39000.40400.41400.64200.915400 | Internal Plumbing Works | 9.94d | 2027-02-21 | 2027-03-03 | 1667, 1681 |  | 7591613 |
| 1684 | 37100.37300.37600.38000.39000.40400.41400.64200.915500 | Waterproofing | 12d | 2027-03-07 | 2027-03-19 | 1668, 1683 |  | 7591623 |
| 1685 | 37100.37300.37600.38000.39000.40400.41400.64200.915600 | Internal Plaster | 9d | 2027-03-19 | 2027-03-28 | 1669, 1682, 1683, 1684 |  | 7591633 |
| 1686 | 37100.37300.37600.38000.39000.40400.41400.64200.915700 | IPS flooring work | 9d | 2027-03-28 | 2027-04-06 | 1670, 1682, 1684, 1685 |  | 7591643 |
| 1687 | 37100.37300.37600.38000.39000.40400.41400.64200.915800 | Toilet dado work | 8d | 2027-03-28 | 2027-04-05 | 1671, 1684, 1685 |  | 7591653 |
| 1688 | 37100.37300.37600.38000.39000.40400.41400.64200.915900 | Toilet flooring work | 7d | 2027-04-05 | 2027-04-12 | 1672, 1687 |  | 7591663 |
| 1689 | 37100.37300.37600.38000.39000.40400.41400.64200.916000 | Living dinning flooring | 15d | 2027-04-18 | 2027-05-03 | 1673, 1682, 1688 |  | 7591673 |
| 1690 | 37100.37300.37600.38000.39000.40400.41400.64200.916100 | Aluminium door-window fixing | 12d | 2027-05-03 | 2027-05-15 | 1674, 1686, 1689 |  | 7591683 |
| 1691 | 37100.37300.37600.38000.39000.40400.41400.64200.916200 | Putty primer coat | 6d | 2027-05-03 | 2027-05-09 | 1675, 1689 |  | 7591693 |
| 1692 | 37100.37300.37600.38000.39000.40400.41400.64200.916300 | Door shutter fixing | 8d | 2027-05-03 | 2027-05-11 | 1676, 1689 |  | 7591703 |
| 1693 | 37100.37300.37600.38000.39000.40400.41400.64200.916400 | Electrical wiring work | 15d | 2029-02-19 | 2029-03-06 | 1677, 1692 |  | 7591713 |
| 1694 | 37100.37300.37600.38000.39000.40400.41400.64200.916500 | Painting 1st coat | 15d | 2029-03-06 | 2029-03-21 | 1678, 1691, 1692, 1693 |  | 7591723 |
| 1695 | 37100.37300.37600.38000.39000.40400.41400.64200.916600 | False ceiling | 10d | 2029-03-21 | 2029-03-31 | 1679, 1694 |  | 7591733 |

| ID | WBS | Task | Duration | Start | Finish | Predecessors | Constraint | Unique_Task_ID |
| --- | --- | --- | --- | --- | --- | --- | --- | --- |
| 1696 | 37100.37300.37600.38000.39000.40400.41400.64300 | **33rd Floor** | 785.5d | 2027-02-17 | 2029-04-12 |  | start no earlier than 2027-02-17 | 7568393 |
| 1697 | 37100.37300.37600.38000.39000.40400.41400.64300.916700 | Block Work | 7.94d | 2027-02-17 | 2027-02-25 | 1179, 1681 |  | 7591743 |
| 1698 | 37100.37300.37600.38000.39000.40400.41400.64300.916800 | Door Frame Fixing | 8.94d | 2027-02-28 | 2027-03-09 | 1682, 1697 |  | 7591753 |
| 1699 | 37100.37300.37600.38000.39000.40400.41400.64300.916900 | Internal Plumbing Works | 9.94d | 2027-03-03 | 2027-03-13 | 1683, 1697 |  | 7591763 |
| 1700 | 37100.37300.37600.38000.39000.40400.41400.64300.917000 | Waterproofing | 12d | 2027-03-19 | 2027-03-31 | 1684, 1699 |  | 7591773 |
| 1701 | 37100.37300.37600.38000.39000.40400.41400.64300.917100 | Internal Plaster | 9d | 2027-03-31 | 2027-04-09 | 1685, 1698, 1699, 1700 |  | 7591783 |
| 1702 | 37100.37300.37600.38000.39000.40400.41400.64300.917200 | IPS flooring work | 9d | 2027-04-09 | 2027-04-18 | 1686, 1698, 1700, 1701 |  | 7591793 |
| 1703 | 37100.37300.37600.38000.39000.40400.41400.64300.917300 | Toilet dado work | 8d | 2027-04-09 | 2027-04-17 | 1687, 1700, 1701 |  | 7591803 |
| 1704 | 37100.37300.37600.38000.39000.40400.41400.64300.917400 | Toilet flooring work | 7d | 2027-04-17 | 2027-04-24 | 1688, 1703 |  | 7591813 |
| 1705 | 37100.37300.37600.38000.39000.40400.41400.64300.917500 | Living dinning flooring | 15d | 2027-05-03 | 2027-05-18 | 1689, 1698, 1704 |  | 7591823 |
| 1706 | 37100.37300.37600.38000.39000.40400.41400.64300.917600 | Aluminium door-window fixing | 15d | 2027-05-18 | 2027-06-02 | 1690, 1702, 1705 |  | 7591833 |
| 1707 | 37100.37300.37600.38000.39000.40400.41400.64300.917700 | Putty primer coat | 6d | 2027-05-18 | 2027-05-24 | 1691, 1705 |  | 7591843 |
| 1708 | 37100.37300.37600.38000.39000.40400.41400.64300.917800 | Door shutter fixing | 8d | 2027-05-18 | 2027-05-26 | 1692, 1705 |  | 7591853 |
| 1709 | 37100.37300.37600.38000.39000.40400.41400.64300.917900 | Electrical wiring work | 12d | 2029-03-06 | 2029-03-18 | 1693, 1708 |  | 7591863 |
| 1710 | 37100.37300.37600.38000.39000.40400.41400.64300.918000 | Painting 1st coat | 12d | 2029-03-21 | 2029-04-02 | 1694, 1707, 1708, 1709 |  | 7591873 |
| 1711 | 37100.37300.37600.38000.39000.40400.41400.64300.918100 | False ceiling | 10d | 2029-04-02 | 2029-04-12 | 1695, 1710 |  | 7591883 |
| 1712 | 37100.37300.37600.38000.39000.40400.41400.64400 | **34th Floor** | 789.56d | 2027-02-25 | 2029-04-24 |  | start no earlier than 2027-02-25 | 7568403 |
| 1713 | 37100.37300.37600.38000.39000.40400.41400.64400.918200 | Block Work | 7.94d | 2027-02-25 | 2027-03-05 | 1180, 1697 |  | 7591893 |
| 1714 | 37100.37300.37600.38000.39000.40400.41400.64400.918300 | Door Frame Fixing | 8.94d | 2027-03-09 | 2027-03-17 | 1698, 1713 |  | 7591903 |
| 1715 | 37100.37300.37600.38000.39000.40400.41400.64400.918400 | Internal Plumbing Works | 9.94d | 2027-03-13 | 2027-03-22 | 1699, 1713 |  | 7591913 |
| 1716 | 37100.37300.37600.38000.39000.40400.41400.64400.918500 | Waterproofing | 12d | 2027-03-31 | 2027-04-12 | 1700, 1715 |  | 7591923 |
| 1717 | 37100.37300.37600.38000.39000.40400.41400.64400.918600 | Internal Plaster | 4d | 2027-04-12 | 2027-04-16 | 1701, 1714, 1715, 1716 |  | 7591933 |
| 1718 | 37100.37300.37600.38000.39000.40400.41400.64400.918700 | IPS flooring work | 9d | 2027-04-18 | 2027-04-27 | 1702, 1714, 1716, 1717 |  | 7591943 |
| 1719 | 37100.37300.37600.38000.39000.40400.41400.64400.918800 | Toilet dado work | 8d | 2027-04-17 | 2027-04-25 | 1703, 1716, 1717 |  | 7591953 |
| 1720 | 37100.37300.37600.38000.39000.40400.41400.64400.918900 | Toilet flooring work | 7d | 2027-04-25 | 2027-05-02 | 1704, 1719 |  | 7591963 |
| 1721 | 37100.37300.37600.38000.39000.40400.41400.64400.919000 | Living dinning flooring | 15d | 2027-05-18 | 2027-06-02 | 1705, 1714, 1720 |  | 7591973 |
| 1722 | 37100.37300.37600.38000.39000.40400.41400.64400.919100 | Aluminium door-window fixing | 15d | 2027-06-02 | 2027-06-17 | 1706, 1718, 1721 |  | 7591983 |
| 1723 | 37100.37300.37600.38000.39000.40400.41400.64400.919200 | Putty primer coat | 6d | 2027-06-02 | 2027-06-08 | 1707, 1721 |  | 7591993 |
| 1724 | 37100.37300.37600.38000.39000.40400.41400.64400.919300 | Door shutter fixing | 8d | 2027-06-02 | 2027-06-10 | 1708, 1721 |  | 7592003 |
| 1725 | 37100.37300.37600.38000.39000.40400.41400.64400.919400 | Electrical wiring work | 12d | 2029-03-18 | 2029-03-30 | 1709, 1724 |  | 7592013 |
| 1726 | 37100.37300.37600.38000.39000.40400.41400.64400.919500 | Painting 1st coat | 12d | 2029-04-02 | 2029-04-14 | 1710, 1723, 1724, 1725 |  | 7592023 |
| 1727 | 37100.37300.37600.38000.39000.40400.41400.64400.919600 | False ceiling | 10d | 2029-04-14 | 2029-04-24 | 1711, 1726 |  | 7592033 |

| ID | WBS | Task | Duration | Start | Finish | Predecessors | Constraint | Calendar | Unique_Task_ID |
| --- | --- | --- | --- | --- | --- | --- | --- | --- | --- |
| 1728 | 37100.37300.37600.38000.39000.40400.41400.64500 | **35th Floor** | 793.62d | 2027-03-05 | 2029-05-06 |  | start no earlier than 2027-03-05 |  | 7568413 |
| 1729 | 37100.37300.37600.38000.39000.40400.41400.64500.919700 | Block Work | 7.94d | 2027-03-05 | 2027-03-12 | 1181, 1713 |  |  | 7592043 |
| 1730 | 37100.37300.37600.38000.39000.40400.41400.64500.919800 | Door Frame Fixing | 8.94d | 2027-03-18 | 2027-03-26 | 1714, 1729 |  |  | 7592053 |
| 1731 | 37100.37300.37600.38000.39000.40400.41400.64500.919900 | Internal Plumbing Works | 9.94d | 2027-03-23 | 2027-04-01 | 1715, 1729 |  |  | 7592063 |
| 1732 | 37100.37300.37600.38000.39000.40400.41400.64500.920000 | Waterproofing | 12d | 2027-04-12 | 2027-04-24 | 1716, 1731 |  |  | 7592073 |
| 1733 | 37100.37300.37600.38000.39000.40400.41400.64500.920100 | Internal Plaster | 4d | 2027-04-16 | 2027-04-20 | 1717FS+0.25d |  |  | 7592083 |
| 1734 | 37100.37300.37600.38000.39000.40400.41400.64500.920200 | IPS flooring work | 9d | 2027-04-27 | 2027-05-06 | 1718, 1730, 1732, 1733 |  |  | 7592093 |
| 1735 | 37100.37300.37600.38000.39000.40400.41400.64500.920300 | Toilet dado work | 8d | 2027-04-25 | 2027-05-03 | 1719, 1732, 1733 |  |  | 7592103 |
| 1736 | 37100.37300.37600.38000.39000.40400.41400.64500.920400 | Toilet flooring work | 7d | 2027-05-03 | 2027-05-10 | 1720, 1735 |  |  | 7592113 |
| 1737 | 37100.37300.37600.38000.39000.40400.41400.64500.920500 | Living dinning flooring | 7d | 2027-06-02 | 2027-06-09 | 1721, 1730, 1736 |  |  | 7592123 |
| 1738 | 37100.37300.37600.38000.39000.40400.41400.64500.920600 | Aluminium door-window fixing | 15d | 2027-06-17 | 2027-07-02 | 1722, 1734, 1737 |  |  | 7592133 |
| 1739 | 37100.37300.37600.38000.39000.40400.41400.64500.920700 | Putty primer coat | 6d | 2027-06-09 | 2027-06-15 | 1723, 1737 |  |  | 7592143 |
| 1740 | 37100.37300.37600.38000.39000.40400.41400.64500.920800 | Door shutter fixing | 8d | 2027-06-10 | 2027-06-18 | 1724, 1737 |  |  | 7592153 |
| 1741 | 37100.37300.37600.38000.39000.40400.41400.64500.920900 | Electrical wiring work | 12d | 2029-03-30 | 2029-04-11 | 1725, 1740 |  |  | 7592163 |
| 1742 | 37100.37300.37600.38000.39000.40400.41400.64500.921000 | Painting 1st coat | 12d | 2029-04-14 | 2029-04-26 | 1726, 1739, 1740, 1741 |  |  | 7592173 |
| 1743 | 37100.37300.37600.38000.39000.40400.41400.64500.921100 | False ceiling | 10d | 2029-04-26 | 2029-05-06 | 1727, 1742 |  |  | 7592183 |
| 1744 | 37100.37300.37600.38000.39000.40400.191400 | **Terrace Finishing** | 389.25d | 2026-01-28 | 2027-04-07 |  | start no earlier than 2026-01-28 |  | 7571273 |
| 1745 | 37100.37300.37600.38000.39000.40400.191400.435000 | Terrace waterproofing | 39.94d | 2027-01-17 | 2027-02-26 | 1143 |  |  | 7578103 |
| 1746 | 37100.37300.37600.38000.39000.40400.191400.435100 | Terrace finishing | 5d | 2026-01-28 | 2026-02-02 |  | start no earlier than 2026-01-28 | Indian Calendar | 7578104 |
| 1747 | 37100.37300.37600.38000.39000.40400.191400.435200 | Terrace finishing | 39.94d | 2027-02-26 | 2027-04-07 | 1745, 1746 |  |  | 7578113 |
| 1748 | 37100.37300.37600.38000.39000.40400.101200 | **Common Area Finishing** | 545.38d | 2026-01-14 | 2027-08-27 |  | start no earlier than 2026-01-14 |  | 7569203 |
| 1749 | 37100.37300.37600.38000.39000.40400.101200.435300 | Block Work | 39.94d | 2026-01-14 | 2026-02-23 | 1149FS+0.25d |  |  | 7578123 |
| 1750 | 37100.37300.37600.38000.39000.40400.101200.435400 | Internal Plaster | 119.94d | 2026-02-19 | 2026-06-19 | 1755SS+17.88d |  |  | 7578133 |
| 1751 | 37100.37300.37600.38000.39000.40400.101200.435500 | Staircase railing fixing | 149.94d | 2026-05-23 | 2026-10-20 | 1753SS+26.75d, 1752SS+26.75d |  |  | 7578143 |
| 1752 | 37100.37300.37600.38000.39000.40400.101200.435600 | Main staircase flooring | 149.94d | 2026-04-27 | 2026-09-24 | 1753SS+13.38d |  |  | 7578153 |
| 1753 | 37100.37300.37600.38000.39000.40400.101200.435700 | Fire staircase flooring | 149.94d | 2026-04-13 | 2026-09-10 | 1750SS+13.38d, 1757SS+26.75d |  |  | 7578163 |
| 1754 | 37100.37300.37600.38000.39000.40400.101200.435800 | Fire door work | 59.94d | 2026-05-23 | 2026-07-22 | 1752SS+26.75d, 1753SS+26.75d |  |  | 7578173 |
| 1755 | 37100.37300.37600.38000.39000.40400.101200.435900 | Electrical wiring work | 119.94d | 2026-02-01 | 2026-06-01 | 1749SS+17.88d |  |  | 7578183 |
| 1756 | 37100.37300.37600.38000.39000.40400.101200.436000 | Lobby flooring | 150d | 2026-02-04 | 2026-07-04 | 1755SS+3.38d |  |  | 7578193 |
| 1757 | 37100.37300.37600.38000.39000.40400.101200.436100 | Ceiling & wall putty-primer | 109.94d | 2026-03-18 | 2026-07-05 | 1750SS+26.75d |  |  | 7578203 |
| 1758 | 37100.37300.37600.38000.39000.40400.101200.436200 | Ceiling & wall painting | 99.94d | 2026-04-04 | 2026-07-13 | 1757SS+17.88d |  |  | 7578213 |
| 1759 | 37100.37300.37600.38000.39000.40400.101200.436300 | Light fixture supply & installation | 210d | 2027-01-29 | 2027-08-27 | 1758SS+255d |  |  | 7578223 |

| ID | WBS | Task | Duration | Start | Finish | Predecessors | Constraint | Unique_Task_ID |
| --- | --- | --- | --- | --- | --- | --- | --- | --- |
| 1760 | 37100.37300.37600.38000.39000.40400.46400 | **Balcony Glass Railing** | 67.81d | 2027-12-05 | 2028-02-11 |  | start no earlier than 2027-12-05 | 133510 |
| 1761 | 37100.37300.37600.38000.39000.40400.46400.436400 | 1st Floor | 1.94d | 2027-12-05 | 2027-12-07 | 1829 |  | 133520 |
| 1762 | 37100.37300.37600.38000.39000.40400.46400.436500 | 2nd Floor | 1.94d | 2027-12-07 | 2027-12-09 | 1761 |  | 133530 |
| 1763 | 37100.37300.37600.38000.39000.40400.46400.436600 | 3rd Floor | 1.94d | 2027-12-09 | 2027-12-11 | 1762 |  | 133540 |
| 1764 | 37100.37300.37600.38000.39000.40400.46400.436700 | 4th Floor | 1.94d | 2027-12-11 | 2027-12-13 | 1763 |  | 133550 |
| 1765 | 37100.37300.37600.38000.39000.40400.46400.436800 | 5th Floor | 1.94d | 2027-12-13 | 2027-12-15 | 1764 |  | 133560 |
| 1766 | 37100.37300.37600.38000.39000.40400.46400.436900 | 6th Floor | 1.94d | 2027-12-15 | 2027-12-17 | 1765 |  | 133570 |
| 1767 | 37100.37300.37600.38000.39000.40400.46400.437000 | 7th Floor | 1.94d | 2027-12-17 | 2027-12-19 | 1766 |  | 133580 |
| 1768 | 37100.37300.37600.38000.39000.40400.46400.437100 | 8th Floor | 1.94d | 2027-12-19 | 2027-12-20 | 1767 |  | 133590 |
| 1769 | 37100.37300.37600.38000.39000.40400.46400.437200 | 9th Floor | 1.94d | 2027-12-21 | 2027-12-22 | 1768 |  | 133600 |
| 1770 | 37100.37300.37600.38000.39000.40400.46400.437300 | 10th Floor | 1.94d | 2027-12-22 | 2027-12-24 | 1769 |  | 133610 |
| 1771 | 37100.37300.37600.38000.39000.40400.46400.437400 | 11th Floor | 1.94d | 2027-12-24 | 2027-12-26 | 1770 |  | 133620 |
| 1772 | 37100.37300.37600.38000.39000.40400.46400.437500 | 12th Floor | 1.94d | 2027-12-26 | 2027-12-28 | 1771 |  | 133630 |
| 1773 | 37100.37300.37600.38000.39000.40400.46400.437600 | 13th Floor | 1.94d | 2027-12-28 | 2027-12-30 | 1772 |  | 133640 |
| 1774 | 37100.37300.37600.38000.39000.40400.46400.437700 | 14th Floor | 1.94d | 2027-12-30 | 2028-01-01 | 1773 |  | 133650 |
| 1775 | 37100.37300.37600.38000.39000.40400.46400.437800 | 15th Floor | 1.94d | 2028-01-01 | 2028-01-03 | 1774 |  | 133660 |
| 1776 | 37100.37300.37600.38000.39000.40400.46400.437900 | 16th Floor | 1.94d | 2028-01-03 | 2028-01-05 | 1775 |  | 133670 |
| 1777 | 37100.37300.37600.38000.39000.40400.46400.438000 | 17th Floor | 1.94d | 2028-01-05 | 2028-01-07 | 1776 |  | 133680 |
| 1778 | 37100.37300.37600.38000.39000.40400.46400.438100 | 18th Floor | 1.94d | 2028-01-07 | 2028-01-09 | 1777 |  | 133690 |
| 1779 | 37100.37300.37600.38000.39000.40400.46400.438200 | 19th Floor | 1.94d | 2028-01-09 | 2028-01-11 | 1778 |  | 133700 |
| 1780 | 37100.37300.37600.38000.39000.40400.46400.438300 | 20th Floor | 1.94d | 2028-01-11 | 2028-01-13 | 1779 |  | 133710 |
| 1781 | 37100.37300.37600.38000.39000.40400.46400.438400 | 21st Floor | 1.94d | 2028-01-13 | 2028-01-15 | 1780 |  | 133720 |
| 1782 | 37100.37300.37600.38000.39000.40400.46400.438500 | 22nd Floor | 1.94d | 2028-01-15 | 2028-01-17 | 1781 |  | 133730 |
| 1783 | 37100.37300.37600.38000.39000.40400.46400.438600 | 23rd Floor | 1.94d | 2028-01-17 | 2028-01-19 | 1782 |  | 133740 |
| 1784 | 37100.37300.37600.38000.39000.40400.46400.438700 | 24th Floor | 1.94d | 2028-01-19 | 2028-01-20 | 1783 |  | 133750 |
| 1785 | 37100.37300.37600.38000.39000.40400.46400.438800 | 25th Floor | 1.94d | 2028-01-21 | 2028-01-22 | 1784 |  | 133760 |
| 1786 | 37100.37300.37600.38000.39000.40400.46400.438900 | 26th Floor | 1.94d | 2028-01-22 | 2028-01-24 | 1785 |  | 133770 |
| 1787 | 37100.37300.37600.38000.39000.40400.46400.439000 | 27th Floor | 1.94d | 2028-01-24 | 2028-01-26 | 1786 |  | 133780 |
| 1788 | 37100.37300.37600.38000.39000.40400.46400.439100 | 28th Floor | 1.94d | 2028-01-26 | 2028-01-28 | 1787 |  | 133790 |
| 1789 | 37100.37300.37600.38000.39000.40400.46400.439200 | 29th Floor | 1.94d | 2028-01-28 | 2028-01-30 | 1788 |  | 133800 |
| 1790 | 37100.37300.37600.38000.39000.40400.46400.439300 | 30th Floor | 1.94d | 2028-01-30 | 2028-02-01 | 1789 |  | 133810 |
| 1791 | 37100.37300.37600.38000.39000.40400.46400.439400 | 31st Floor | 1.94d | 2028-02-01 | 2028-02-03 | 1790 |  | 133820 |
| 1792 | 37100.37300.37600.38000.39000.40400.46400.439500 | 32nd Floor | 1.94d | 2028-02-03 | 2028-02-05 | 1791 |  | 133830 |
| 1793 | 37100.37300.37600.38000.39000.40400.46400.439600 | 33rd Floor | 1.94d | 2028-02-05 | 2028-02-07 | 1792 |  | 133840 |
| 1794 | 37100.37300.37600.38000.39000.40400.46400.439700 | 34th Floor | 1.94d | 2028-02-07 | 2028-02-09 | 1793 |  | 133850 |
| 1795 | 37100.37300.37600.38000.39000.40400.46400.439800 | 35th Floor | 1.94d | 2028-02-09 | 2028-02-11 | 1794 |  | 133860 |

| ID | WBS | Task | Duration | Start | Finish | Predecessors | Constraint | Unique_Task_ID |
| --- | --- | --- | --- | --- | --- | --- | --- | --- |
| 1796 | 37100.37300.37600.38000.95300 | **MEP work** | 909.62d | 2025-11-30 | 2028-07-20 |  | start no earlier than 2025-11-30 | 7569143 |
| 1797 | 37100.37300.37600.38000.95300.98200 | **Electrical work** | 233.25d | 2027-01-17 | 2027-09-07 |  | start no earlier than 2027-01-17 | 7569173 |
| 1798 | 37100.37300.37600.38000.95300.98200.309800 | Cable Tray | 89.94d | 2027-01-17 | 2027-04-17 | 1143 |  | 7572963 |
| 1799 | 37100.37300.37600.38000.95300.98200.309900 | Cable, main & sub main | 79.94d | 2027-02-26 | 2027-05-17 | 1798SS+40d |  | 7572973 |
| 1800 | 37100.37300.37600.38000.95300.98200.310000 | LT panel & DB | 119.94d | 2027-04-17 | 2027-08-15 | 1798 |  | 7572983 |
| 1801 | 37100.37300.37600.38000.95300.98200.310100 | Rising main | 89.94d | 2027-06-09 | 2027-09-07 | 1798FS+53.38d |  | 7572993 |
| 1802 | 37100.37300.37600.38000.95300.98200.310200 | EARTHING Works | 59.94d | 2027-04-30 | 2027-06-29 | 1798FS+13.38d |  | 7573003 |
| 1803 | 37100.37300.37600.38000.95300.98200.310300 | Advance lightening protection | 59.94d | 2027-04-07 | 2027-06-06 | 1747 |  | 7573013 |
| 1804 | 37100.37300.37600.38000.95300.98200.310400 | Inverter | 34.94d | 2027-06-29 | 2027-08-03 | 1802 |  | 7573023 |
| 1805 | 37100.37300.37600.38000.95300.98200.310500 | Energy meter | 59.94d | 2027-05-17 | 2027-07-16 | 1799 |  | 7573033 |
| 1806 | 37100.37300.37600.38000.95300.98200.310600 | Exhast fan | 60d | 2027-05-07 | 2027-07-06 | 1738FF+4.5d |  | 7573043 |
| 1807 | 37100.37300.37600.38000.95300.98200.310700 | FTTH | 59.94d | 2027-06-20 | 2027-08-19 | 1802FS-9d |  | 7573053 |
| 1808 | 37100.37300.37600.38000.95300.98200.310800 | Security System - FA & PA | 54.94d | 2027-06-25 | 2027-08-19 | 1807FF |  | 7573063 |
| 1809 | 37100.37300.37600.38000.95300.98200.310900 | Solar water heater | 59.94d | 2027-04-07 | 2027-06-06 | 1747 |  | 7573073 |
| 1810 | 37100.37300.37600.38000.95300.130800 | **Plumbing wrok** | 600.38d | 2025-11-30 | 2027-09-15 |  | start no earlier than 2025-11-30 | 7569403 |
| 1811 | 37100.37300.37600.38000.95300.130800.311000 | Terrace looping | 44.94d | 2027-02-26 | 2027-04-12 | 1745 |  | 7573083 |
| 1812 | 37100.37300.37600.38000.95300.130800.311100 | Shaft Plumbing | 119.94d | 2027-04-12 | 2027-08-10 | 1811 |  | 7573093 |
| 1813 | 37100.37300.37600.38000.95300.130800.311200 | CP sanitary fixture supply | 75d | 2027-07-02 | 2027-09-15 | 1733, 1736FS+53.38d |  | 7573103 |
| 1814 | 37100.37300.37600.38000.95300.130800.311300 | Cold & flushing water supply | 89.94d | 2025-11-30 | 2026-03-09 | 1750SS-90d |  | 7573113 |
| 1815 | 37100.37300.37600.38000.95300.130800.311400 | Misc work | 29.94d | 2026-09-25 | 2026-10-25 | 1814FS+200d |  | 7573123 |
| 1816 | 37100.37300.37600.38000.95300.173700 | **Fire fighting work** | 393.56d | 2026-04-13 | 2027-06-26 |  | start no earlier than 2026-04-13 | 7569513 |
| 1817 | 37100.37300.37600.38000.95300.173700.311500 | Fire hydrant work | 89.94d | 2026-04-13 | 2026-07-12 | 1750SS+53.38d |  | 7573133 |
| 1818 | 37100.37300.37600.38000.95300.173700.311600 | Sprinkler & piping work | 89.94d | 2026-07-13 | 2026-10-11 | 1817FS+0.75d |  | 7573143 |
| 1819 | 37100.37300.37600.38000.95300.173700.311700 | Shaft Downtake works | 89.94d | 2027-02-26 | 2027-05-27 | 1745 |  | 7573153 |
| 1820 | 37100.37300.37600.38000.95300.173700.311800 | Connection to pump room | 29.94d | 2027-05-27 | 2027-06-26 | 1819 |  | 7573163 |

| ID | WBS | Task | Duration | Start | Finish | Predecessors | Complete | Constraint | Unique_Task_ID |
| --- | --- | --- | --- | --- | --- | --- | --- | --- | --- |
| 1821 | 37100.37300.37600.38000.95300.186000 | **Lift work** | 304.88d | 2027-01-17 | 2027-11-18 |  |  | start no earlier than 2027-01-17 | 7571063 |
| 1822 | 37100.37300.37600.38000.95300.186000.311900 | Lift Shaft Handover | 39.94d | 2027-01-17 | 2027-02-26 | 1143 |  |  | 7573173 |
| 1823 | 37100.37300.37600.38000.95300.186000.312000 | Lift installation work | 180d | 2027-02-26 | 2027-08-25 | 1822 |  |  | 7573183 |
| 1824 | 37100.37300.37600.38000.95300.186000.312100 | Lift testing and commissioning | 84.94d | 2027-08-25 | 2027-11-18 | 1823 |  |  | 7573193 |
| 1825 | 37100.37300.37600.38000.95300.194800 | **AC work** | 77.94d | 2028-05-03 | 2028-07-20 |  |  | start no earlier than 2028-05-03 | 7571313 |
| 1826 | 37100.37300.37600.38000.95300.194800.312200 | Split AC | 77.94d | 2028-05-03 | 2028-07-20 | 1842FS-26.75d |  |  | 7573203 |
| 1827 | 37100.37300.37600.38000.183600 | **Tower Completion** | 251.12d | 2027-06-08 | 2028-02-14 |  |  | start no earlier than 2027-06-08 | 7569453 |
| 1828 | 37100.37300.37600.38000.183600.263100 | SURFACE PREPARATION | 79.94d | 2027-06-08 | 2027-08-27 | 1181FS+100d |  |  | 7571553 |
| 1829 | 37100.37300.37600.38000.183600.263200 | External Painting | 99.94d | 2027-08-27 | 2027-12-05 | 1828FS+0.25d |  |  | 7571563 |
| 1830 | 37100.37300.37600.38000.183600.263300 | Final coat of painting | 71d | 2027-12-05 | 2028-02-14 | 1829 |  |  | 7571573 |
| 1831 | 37100.37300.37600.38000.183600.263400 | Misc. work | 59.94d | 2027-12-05 | 2028-02-03 | 1829 |  |  | 7571583 |
| 1832 | 37100.37300.37600.38000.194900 | **Entrance lobby** | 60d | 2028-02-05 | 2028-04-05 |  |  | start no earlier than 2028-02-05 | 7571283 |
| 1833 | 37100.37300.37600.38000.194900.263500 | Entrance lobby | 60d | 2028-02-05 | 2028-04-05 | 1831FS+2d |  |  | 7571593 |
| 1834 | 37100.37300.37600.38000.107300 | **Post OC activities** | 450.69d | 2028-05-03 | 2029-07-28 |  |  | start no earlier than 2028-05-03 | 7569363 |
| 1835 | 37100.37300.37600.38000.107300.263600 | Wardrobe installation | 157.94d | 2028-05-03 | 2028-10-08 | 1842FS-26.75d |  |  | 7571603 |
| 1836 | 37100.37300.37600.38000.107300.263700 | CP & SANITARYWARE | 97.94d | 2028-05-03 | 2028-08-09 | 1842FS-26.75d, 1813 |  |  | 7571613 |
| 1837 | 37100.37300.37600.38000.107300.263800 | Wooden Flooring | 157.94d | 2028-05-03 | 2028-10-08 | 1842FS-26.75d |  |  | 7571623 |
| 1838 | 37100.37300.37600.38000.107300.263900 | Shaft closer | 75d | 2029-04-11 | 2029-06-25 | 1741FS+0.25d |  |  | 7571633 |
| 1839 | 37100.37300.37600.38000.107300.264000 | Modular Kitchen | 157.94d | 2028-09-27 | 2029-03-04 | 1842FS+120d |  |  | 7571643 |
| 1840 | 37100.37300.37600.38000.107300.264100 | External Elevation Façade | 82.94d | 2029-05-06 | 2029-07-28 | 1842FS-13.38d, 1743 |  |  | 7571653 |
| 1841 | 37100.37300.37600.38000.254900 | OC Application/Readiness | 0.94d | 2028-04-05 | 2028-04-06 | 1143, 1751FS+7.12d, 1759, 1141, 955, 956, 1754, 1824, 1820, 1818, 1815, 1812, 1800, 1801, 1803, 1804, 1805, 1806, 1808, 1809, 1833 |  |  | 7571393 |
| 1842 | 37100.37300.37600.38000.255000 | OC Receipt | 0.94d | 2028-05-29 | 2028-05-30 | 1841FS+53.38d, 1795, 1830, 1831 |  |  | 7571403 |
| 1843 | 37100.37300.37600.38000.255100 | Offer To Possession | 29.94d | 2029-07-28 | 2029-08-27 | 1835, 1836, 1837, 1838, 1839, 1840 |  |  | 132350 |
| 1844 | 37100.37300.37600.38100 | **Tower 3** | 1993.06d | 2023-09-30 | 2029-08-04 |  | 6% | start no earlier than 2023-09-30 | 7567503 |
| 1845 | 37100.37300.37600.38100.97800 | **Substructure** | 833.69d | 2023-09-30 | 2026-04-18 |  | 64% | start no earlier than 2023-09-30 | 7569233 |
| 1846 | 37100.37300.37600.38100.97800.108200 | **Soil Bed Preparation** | 763.81d | 2023-09-30 | 2026-02-07 |  | 80% | start no earlier than 2023-09-30 | 7569353 |
| 1847 | 37100.37300.37600.38100.97800.108200.238400 | Test Piling | 74.94d | 2023-09-30 | 2024-01-27 |  | 100% | start no earlier than 2023-09-30 | 7573213 |
| 1848 | 37100.37300.37600.38100.97800.108200.238100 | Excavation | 29.94d | 2024-01-10 | 2024-02-08 | 7SS+61.74d | 100% | start no earlier than 2024-01-10 | 7573223 |
| 1849 | 37100.37300.37600.38100.97800.108200.237500 | Main Piling Work | 184.12d | 2024-04-12 | 2024-10-13 | 7FS-5.45d | 100% | start no earlier than 2024-04-12 | 7573233 |
| 1850 | 37100.37300.37600.38100.97800.108200.312300 | Anti-termite | 4.94d | 2025-11-30 | 2025-12-04 | 1849FS-81d |  |  | 7573243 |
| 1851 | 37100.37300.37600.38100.97800.108200.312400 | PCC | 3.94d | 2025-11-30 | 2025-12-03 | 1848FS-14.7d |  |  | 7573253 |
| 1852 | 37100.37300.37600.38100.97800.108200.312500 | Backfilling | 59.94d | 2025-11-30 | 2026-02-07 | 1865FS+4d |  |  | 7573263 |

| ID | WBS | Task | Duration | Start | Finish | Predecessors | Complete | Constraint | Unique_Task_ID |
| --- | --- | --- | --- | --- | --- | --- | --- | --- | --- |
| 1853 | 37100.37300.37600.38100.97800.103300 | **RCC Structure** | 123.94d | 2025-01-03 | 2025-05-06 |  | 100% | start no earlier than 2025-01-03 | 7569303 |
| 1854 | 37100.37300.37600.38100.97800.103300.177400 | **Raft Foundation** | 35d | 2025-01-03 | 2025-02-06 |  | 100% | start no earlier than 2025-01-03 | 7571093 |
| 1855 | 37100.37300.37600.38100.97800.103300.177400.209700 | Reinforcement | 30d | 2025-01-03 | 2025-02-02 | 1851FS-30.94d | 100% | start no earlier than 2025-01-03 | 7578233 |
| 1856 | 37100.37300.37600.38100.97800.103300.177400.209800 | Formwork | 18d | 2025-01-17 | 2025-02-03 | 1855FF+1.06d | 100% | start no earlier than 2025-01-17 | 7578243 |
| 1857 | 37100.37300.37600.38100.97800.103300.177400.209900 | Concreting | 4d | 2025-02-03 | 2025-02-06 | 1856FS-1d | 100% | start no earlier than 2025-02-03 | 7578253 |
| 1858 | 37100.37300.37600.38100.97800.103300.177300 | **Basement 1 Slab** | 27d | 2025-02-08 | 2025-03-06 |  | 100% | start no earlier than 2025-02-08 | 7571083 |
| 1859 | 37100.37300.37600.38100.97800.103300.177300.210000 | Reinforcement | 21d | 2025-02-08 | 2025-03-06 | 1857FS+1d | 100% | start no earlier than 2025-02-08 | 7578263 |
| 1860 | 37100.37300.37600.38100.97800.103300.177300.210100 | Formwork | 15d | 2025-02-11 | 2025-03-06 | 1859SS+3d | 100% | start no earlier than 2025-02-11 | 7578273 |
| 1861 | 37100.37300.37600.38100.97800.103300.177300.210200 | Concreting | 2d | 2025-03-03 | 2025-03-06 | 1860FF+3.25d | 100% | start no earlier than 2025-03-03 | 7578283 |
| 1862 | 37100.37300.37600.38100.97800.103300.177200 | **Basement 2 Slab/GF** | 18d | 2025-03-04 | 2025-03-21 |  | 100% | start no earlier than 2025-03-04 | 7571073 |
| 1863 | 37100.37300.37600.38100.97800.103300.177200.210300 | Reinforcement | 15d | 2025-03-04 | 2025-03-21 | 1861FS-2d | 100% | start no earlier than 2025-03-04 | 7578293 |
| 1864 | 37100.37300.37600.38100.97800.103300.177200.210400 | Formwork | 15d | 2025-03-05 | 2025-03-21 | 1863SS+1d | 100% | start no earlier than 2025-03-05 | 7578303 |
| 1865 | 37100.37300.37600.38100.97800.103300.177200.210500 | Concreting | 3d | 2025-03-09 | 2025-03-11 | 1864FS-1d | 100% | start no earlier than 2025-03-09 | 7578313 |
| 1866 | 37100.37300.37600.38100.97800.103300.177100 | **Podium** | 49.94d | 2025-03-18 | 2025-05-06 |  | 100% | start no earlier than 2025-03-18 | 7571043 |
| 1867 | 37100.37300.37600.38100.97800.103300.177100.210600 | Reinforcement | 22.94d | 2025-03-18 | 2025-05-04 | 1865FS+5d | 100% | start no earlier than 2025-03-18 | 7578323 |
| 1868 | 37100.37300.37600.38100.97800.103300.177100.210700 | Formwork | 30.94d | 2025-03-21 | 2025-05-05 | 1867SS+2.75d | 100% | start no earlier than 2025-03-21 | 7578333 |
| 1869 | 37100.37300.37600.38100.97800.103300.177100.210800 | Concreting | 1d | 2025-05-05 | 2025-05-06 | 1868 | 100% | start no earlier than 2025-05-05 | 7578343 |
| 1870 | 37100.37300.37600.38100.97800.172800 | **Substructure Finishing** | 129.81d | 2025-11-30 | 2026-04-18 |  |  | start no earlier than 2025-11-30 | 7569523 |
| 1871 | 37100.37300.37600.38100.97800.172800.312600 | Masonary work | 44.94d | 2025-11-30 | 2026-01-23 | 1869FS+26.75d |  |  | 7573273 |
| 1872 | 37100.37300.37600.38100.97800.172800.312700 | Plaster | 39.94d | 2026-01-23 | 2026-03-04 | 1871 |  |  | 7573283 |
| 1873 | 37100.37300.37600.38100.97800.172800.312800 | Structural steel | 59.94d | 2025-11-30 | 2026-02-07 | 1869FS+53.38d |  |  | 7573293 |
| 1874 | 37100.37300.37600.38100.97800.172800.312900 | White Wash | 44.94d | 2026-03-04 | 2026-04-18 | 1872 |  |  | 7573303 |
| 1875 | 37100.37300.37600.38100.39100 | **Superstructure** | 1012.44d | 2025-05-07 | 2028-04-21 |  | 4% | start no earlier than 2025-05-07 | 7567543 |
| 1876 | 37100.37300.37600.38100.39100.43500 | **RCC structure** | 558.75d | 2025-05-07 | 2027-01-23 |  | 32% | start no earlier than 2025-05-07 | 7567663 |
| 1877 | 37100.37300.37600.38100.39100.43500.122700 | **1st floor slab** | 52.25d | 2025-05-07 | 2025-06-28 |  | 100% | start no earlier than 2025-05-07 | 7570303 |
| 1878 | 37100.37300.37600.38100.39100.43500.122700.211300 | Reinforcement | 32d | 2025-05-07 | 2025-06-28 | 1869FS+2.75d | 100% | start no earlier than 2025-05-07 | 7578353 |
| 1879 | 37100.37300.37600.38100.39100.43500.122700.211400 | Wall conduiting | 25d | 2025-05-10 | 2025-06-24 | 1878SS+2.75d | 100% | start no earlier than 2025-05-10 | 7578363 |
| 1880 | 37100.37300.37600.38100.39100.43500.122700.211500 | Formwork | 30d | 2025-05-10 | 2025-06-26 | 1878SS+3d | 100% | start no earlier than 2025-05-10 | 7578373 |
| 1881 | 37100.37300.37600.38100.39100.43500.122700.211600 | Concreting | 14d | 2025-05-24 | 2025-06-27 | 1880SS+15d | 100% | start no earlier than 2025-05-24 | 7578383 |

| ID | WBS | Task | Duration | Start | Finish | Predecessors | Complete | Constraint | Unique_Task_ID |
| --- | --- | --- | --- | --- | --- | --- | --- | --- | --- |
| 1882 | 37100.37300.37600.38100.39100.43500.123500 | **2nd floor slab** | 40d | 2025-06-28 | 2025-08-06 |  | 100% | start no earlier than 2025-06-28 | 7570313 |
| 1883 | 37100.37300.37600.38100.39100.43500.123500.211700 | Reinforcement | 20d | 2025-06-28 | 2025-07-31 | 1881FS+1d | 100% | start no earlier than 2025-06-28 | 7578393 |
| 1884 | 37100.37300.37600.38100.39100.43500.123500.211800 | Wall conduiting | 8d | 2025-07-02 | 2025-07-31 | 1879, 1883SS+2.75d | 100% | start no earlier than 2025-07-02 | 7578403 |
| 1885 | 37100.37300.37600.38100.39100.43500.123500.211900 | Formwork | 20d | 2025-06-30 | 2025-07-31 | 1883SS | 100% | start no earlier than 2025-06-30 | 7578413 |
| 1886 | 37100.37300.37600.38100.39100.43500.123500.212000 | Concreting | 3d | 2025-07-31 | 2025-08-06 | 1885 | 100% | start no earlier than 2025-07-31 | 7578423 |
| 1887 | 37100.37300.37600.38100.39100.43500.123600 | **3rd floor slab** | 29d | 2025-08-02 | 2025-08-30 |  | 100% | start no earlier than 2025-08-02 | 7570323 |
| 1888 | 37100.37300.37600.38100.39100.43500.123600.212100 | Reinforcement | 11d | 2025-08-02 | 2025-08-26 | 1886FS+1d | 100% | start no earlier than 2025-08-02 | 7578433 |
| 1889 | 37100.37300.37600.38100.39100.43500.123600.212200 | Wall conduiting | 3d | 2025-08-04 | 2025-08-25 | 1884, 1888SS+2.75d | 100% | start no earlier than 2025-08-04 | 7578443 |
| 1890 | 37100.37300.37600.38100.39100.43500.123600.212300 | Formwork | 11d | 2025-08-05 | 2025-08-29 | 1888SS+3d | 100% | start no earlier than 2025-08-05 | 7578453 |
| 1891 | 37100.37300.37600.38100.39100.43500.123600.212400 | Concreting | 3d | 2025-08-24 | 2025-08-30 | 1890FS-5d | 100% | start no earlier than 2025-08-24 | 7578463 |
| 1892 | 37100.37300.37600.38100.39100.43500.123700 | **4th floor slab** | 17d | 2025-08-28 | 2025-09-13 |  | 100% | start no earlier than 2025-08-28 | 7570333 |
| 1893 | 37100.37300.37600.38100.39100.43500.123700.212500 | Reinforcement | 8d | 2025-08-28 | 2025-09-12 | 1891FS+1d | 100% | start no earlier than 2025-08-28 | 7578473 |
| 1894 | 37100.37300.37600.38100.39100.43500.123700.212600 | Wall conduiting | 6d | 2025-08-28 | 2025-09-12 | 1889, 1893SS+1d | 100% | start no earlier than 2025-08-28 | 7578483 |
| 1895 | 37100.37300.37600.38100.39100.43500.123700.212700 | Formwork | 7d | 2025-08-29 | 2025-09-12 | 1893SS+1d | 100% | start no earlier than 2025-08-29 | 7578493 |
| 1896 | 37100.37300.37600.38100.39100.43500.123700.212800 | Concreting | 2d | 2025-09-12 | 2025-09-13 | 1895 | 100% | start no earlier than 2025-09-12 | 7578503 |
| 1897 | 37100.37300.37600.38100.39100.43500.123900 | **5th floor slab** | 15d | 2025-09-12 | 2025-09-26 |  | 100% | start no earlier than 2025-09-12 | 7570343 |
| 1898 | 37100.37300.37600.38100.39100.43500.123900.212900 | Reinforcement | 8d | 2025-09-12 | 2025-09-25 | 1896FS+1d | 100% | start no earlier than 2025-09-12 | 7578513 |
| 1899 | 37100.37300.37600.38100.39100.43500.123900.213000 | Wall conduiting | 8d | 2025-09-12 | 2025-09-25 | 1894, 1898SS+1d | 100% | start no earlier than 2025-09-12 | 7578523 |
| 1900 | 37100.37300.37600.38100.39100.43500.123900.213100 | Formwork | 7d | 2025-09-12 | 2025-09-25 | 1898SS+1d | 100% | start no earlier than 2025-09-12 | 7578533 |
| 1901 | 37100.37300.37600.38100.39100.43500.123900.213200 | Concreting | 1d | 2025-09-26 | 2025-09-26 | 1900 | 100% | start no earlier than 2025-09-26 | 7578543 |
| 1902 | 37100.37300.37600.38100.39100.43500.124300 | **6th floor slab** | 15d | 2025-09-26 | 2025-10-10 |  | 100% | start no earlier than 2025-09-26 | 7570353 |
| 1903 | 37100.37300.37600.38100.39100.43500.124300.213300 | Reinforcement | 8d | 2025-09-26 | 2025-10-06 | 1901FS+1d | 100% | start no earlier than 2025-09-26 | 7578553 |
| 1904 | 37100.37300.37600.38100.39100.43500.124300.213400 | Wall conduiting | 3d | 2025-09-26 | 2025-10-06 | 1899, 1903SS+1d | 100% | start no earlier than 2025-09-26 | 7578563 |
| 1905 | 37100.37300.37600.38100.39100.43500.124300.213500 | Formwork | 7d | 2025-09-26 | 2025-10-06 | 1903SS+1d | 100% | start no earlier than 2025-09-26 | 7578573 |
| 1906 | 37100.37300.37600.38100.39100.43500.124300.213600 | Concreting | 2d | 2025-10-06 | 2025-10-10 | 1905 | 100% | start no earlier than 2025-10-06 | 7578583 |

| ID | WBS | Task | Duration | Start | Finish | Predecessors | Complete | Constraint | Unique_Task_ID |
| --- | --- | --- | --- | --- | --- | --- | --- | --- | --- |
| 1907 | 37100.37300.37600.38100.39100.43500.124400 | **7th floor slab** | 16d | 2025-10-10 | 2025-10-25 |  | 100% | start no earlier than 2025-10-10 | 7570363 |
| 1908 | 37100.37300.37600.38100.39100.43500.124400.213700 | Reinforcement | 8d | 2025-10-10 | 2025-10-18 | 1906FS+1d | 100% | start no earlier than 2025-10-10 | 7578593 |
| 1909 | 37100.37300.37600.38100.39100.43500.124400.213800 | Wall conduiting | 5d | 2025-10-10 | 2025-10-18 | 1904, 1908SS+1d | 100% | start no earlier than 2025-10-10 | 7578603 |
| 1910 | 37100.37300.37600.38100.39100.43500.124400.213900 | Formwork | 7d | 2025-10-10 | 2025-10-18 | 1908SS+1d | 100% | start no earlier than 2025-10-10 | 7578613 |
| 1911 | 37100.37300.37600.38100.39100.43500.124400.214000 | Concreting | 2d | 2025-10-18 | 2025-10-25 | 1910 | 100% | start no earlier than 2025-10-18 | 7578623 |
| 1912 | 37100.37300.37600.38100.39100.43500.124500 | **8th floor slab** | 23.88d | 2025-10-20 | 2025-11-10 |  | 100% | start no earlier than 2025-10-20 | 7570373 |
| 1913 | 37100.37300.37600.38100.39100.43500.124500.214100 | Reinforcement | 10d | 2025-10-20 | 2025-11-10 | 1911FS+1d | 100% | start no earlier than 2025-10-20 | 7578633 |
| 1914 | 37100.37300.37600.38100.39100.43500.124500.214200 | Wall conduiting | 3d | 2025-10-20 | 2025-11-10 | 1909, 1913SS+1d | 100% | start no earlier than 2025-10-20 | 7578643 |
| 1915 | 37100.37300.37600.38100.39100.43500.124500.214300 | Formwork | 10d | 2025-10-20 | 2025-11-10 | 1913SS+1d | 100% | start no earlier than 2025-10-20 | 7578653 |
| 1916 | 37100.37300.37600.38100.39100.43500.124500.214400 | Concreting | 5d | 2025-11-03 | 2025-11-07 | 1915 | 100% | start no earlier than 2025-11-03 | 7578663 |
| 1917 | 37100.37300.37600.38100.39100.43500.124600 | **9th floor slab** | 22.31d | 2025-11-05 | 2025-12-19 |  | 60% | start no earlier than 2025-11-05 | 7570383 |
| 1918 | 37100.37300.37600.38100.39100.43500.124600.214500 | Reinforcement | 8d | 2025-11-05 | 2025-12-19 | 1916FS+1d | 62% | start no earlier than 2025-11-05 | 7578673 |
| 1919 | 37100.37300.37600.38100.39100.43500.124600.214600 | Wall conduiting | 3d | 2025-11-05 | 2025-12-17 | 1914, 1918SS+1d | 66% | start no earlier than 2025-11-05 | 7578683 |
| 1920 | 37100.37300.37600.38100.39100.43500.124600.214700 | Formwork | 7d | 2025-11-05 | 2025-12-18 | 1918SS+1d | 71% | start no earlier than 2025-11-05 | 7578693 |
| 1921 | 37100.37300.37600.38100.39100.43500.124600.214800 | Concreting | 5d | 2025-11-29 | 2025-12-04 | 1920FS-2.25d | 40% |  | 7578703 |
| 1922 | 37100.37300.37600.38100.39100.43500.177000 | **10th floor slab** | 9d | 2025-12-03 | 2025-12-22 |  |  | start no earlier than 2025-12-03 | 7570393 |
| 1923 | 37100.37300.37600.38100.39100.43500.177000.439900 | Reinforcement | 8d | 2025-12-03 | 2025-12-21 | 1921FS+1d |  |  | 7578713 |
| 1924 | 37100.37300.37600.38100.39100.43500.177000.440000 | Wall conduiting | 3d | 2025-12-04 | 2025-12-17 | 1919, 1923SS+1d |  |  | 7578723 |
| 1925 | 37100.37300.37600.38100.39100.43500.177000.440100 | Formwork | 7d | 2025-12-04 | 2025-12-21 | 1923SS+1d |  |  | 7578733 |
| 1926 | 37100.37300.37600.38100.39100.43500.177000.440200 | Concreting | 1d | 2025-12-21 | 2025-12-22 | 1925 |  |  | 7578743 |
| 1927 | 37100.37300.37600.38100.39100.43500.176900 | **11th floor slab** | 9d | 2025-12-23 | 2026-01-01 |  |  | start no earlier than 2025-12-23 | 7570403 |
| 1928 | 37100.37300.37600.38100.39100.43500.176900.440300 | Reinforcement | 8d | 2025-12-23 | 2025-12-31 | 1926FS+1d |  |  | 7578753 |
| 1929 | 37100.37300.37600.38100.39100.43500.176900.440400 | Wall conduiting | 3d | 2025-12-24 | 2025-12-27 | 1924, 1928SS+1d |  |  | 7578763 |
| 1930 | 37100.37300.37600.38100.39100.43500.176900.440500 | Formwork | 7d | 2025-12-24 | 2025-12-31 | 1928SS+1d |  |  | 7578773 |
| 1931 | 37100.37300.37600.38100.39100.43500.176900.440600 | Concreting | 1d | 2025-12-31 | 2026-01-01 | 1930 |  |  | 7578783 |

| ID | WBS | Task | Duration | Start | Finish | Predecessors | Constraint | Unique_Task_ID |
| --- | --- | --- | --- | --- | --- | --- | --- | --- |
| 1932 | 37100.37300.37600.38100.39100.43500.176800 | **12th floor slab** | 9d | 2026-01-02 | 2026-01-11 |  | start no earlier than 2026-01-02 | 7570413 |
| 1933 | 37100.37300.37600.38100.39100.43500.176800.440700 | Reinforcement | 8d | 2026-01-02 | 2026-01-10 | 1931FS+1d |  | 7578793 |
| 1934 | 37100.37300.37600.38100.39100.43500.176800.440800 | Wall conduiting | 3d | 2026-01-03 | 2026-01-06 | 1929, 1933SS+1d |  | 7578803 |
| 1935 | 37100.37300.37600.38100.39100.43500.176800.440900 | Formwork | 7d | 2026-01-03 | 2026-01-10 | 1933SS+1d |  | 7578813 |
| 1936 | 37100.37300.37600.38100.39100.43500.176800.441000 | Concreting | 1d | 2026-01-10 | 2026-01-11 | 1935 |  | 7578823 |
| 1937 | 37100.37300.37600.38100.39100.43500.176700 | **13th floor slab** | 9d | 2026-01-13 | 2026-01-22 |  | start no earlier than 2026-01-13 | 7570423 |
| 1938 | 37100.37300.37600.38100.39100.43500.176700.441100 | Reinforcement | 8d | 2026-01-13 | 2026-01-21 | 1936FS+2d |  | 7578833 |
| 1939 | 37100.37300.37600.38100.39100.43500.176700.441200 | Wall conduiting | 3d | 2026-01-14 | 2026-01-17 | 1934, 1938SS+1d |  | 7578843 |
| 1940 | 37100.37300.37600.38100.39100.43500.176700.441300 | Formwork | 7d | 2026-01-14 | 2026-01-21 | 1938SS+1d |  | 7578853 |
| 1941 | 37100.37300.37600.38100.39100.43500.176700.441400 | Concreting | 1d | 2026-01-21 | 2026-01-22 | 1940 |  | 7578863 |
| 1942 | 37100.37300.37600.38100.39100.43500.176600 | **14th floor slab** | 9d | 2026-01-21 | 2026-01-30 |  | start no earlier than 2026-01-21 | 7570433 |
| 1943 | 37100.37300.37600.38100.39100.43500.176600.441500 | Reinforcement | 8d | 2026-01-21 | 2026-01-29 | 1941FS-1d |  | 7578873 |
| 1944 | 37100.37300.37600.38100.39100.43500.176600.441600 | Wall conduiting | 3d | 2026-01-22 | 2026-01-25 | 1939, 1943SS+1d |  | 7578883 |
| 1945 | 37100.37300.37600.38100.39100.43500.176600.441700 | Formwork | 7d | 2026-01-22 | 2026-01-29 | 1943SS+1d |  | 7578893 |
| 1946 | 37100.37300.37600.38100.39100.43500.176600.441800 | Concreting | 1d | 2026-01-29 | 2026-01-30 | 1945 |  | 7578903 |
| 1947 | 37100.37300.37600.38100.39100.43500.176500 | **15th floor slab** | 9d | 2026-01-31 | 2026-02-09 |  | start no earlier than 2026-01-31 | 7570443 |
| 1948 | 37100.37300.37600.38100.39100.43500.176500.441900 | Reinforcement | 8d | 2026-01-31 | 2026-02-08 | 1946FS+0.88d |  | 7578913 |
| 1949 | 37100.37300.37600.38100.39100.43500.176500.442000 | Wall conduiting | 3d | 2026-02-01 | 2026-02-04 | 1944, 1948SS+1d |  | 7578923 |
| 1950 | 37100.37300.37600.38100.39100.43500.176500.442100 | Formwork | 7d | 2026-02-01 | 2026-02-08 | 1948SS+1d |  | 7578933 |
| 1951 | 37100.37300.37600.38100.39100.43500.176500.442200 | Concreting | 1d | 2026-02-08 | 2026-02-09 | 1950 |  | 7578943 |
| 1952 | 37100.37300.37600.38100.39100.43500.176400 | **16th floor slab** | 12d | 2026-02-08 | 2026-02-20 |  | start no earlier than 2026-02-08 | 7570453 |
| 1953 | 37100.37300.37600.38100.39100.43500.176400.442300 | Reinforcement | 10d | 2026-02-08 | 2026-02-18 | 1951FS-1d |  | 7578953 |
| 1954 | 37100.37300.37600.38100.39100.43500.176400.442400 | Wall conduiting | 3d | 2026-02-09 | 2026-02-12 | 1949, 1953SS+1d |  | 7578963 |
| 1955 | 37100.37300.37600.38100.39100.43500.176400.442500 | Formwork | 10d | 2026-02-09 | 2026-02-19 | 1953SS+1d |  | 7578973 |
| 1956 | 37100.37300.37600.38100.39100.43500.176400.442600 | Concreting | 1d | 2026-02-19 | 2026-02-20 | 1955 |  | 7578983 |

| ID | WBS | Task | Duration | Start | Finish | Predecessors | Constraint | Unique_Task_ID |
| --- | --- | --- | --- | --- | --- | --- | --- | --- |
| 1957 | 37100.37300.37600.38100.39100.43500.176300 | **17th floor slab** | 9d | 2026-02-19 | 2026-02-28 |  | start no earlier than 2026-02-19 | 7570463 |
| 1958 | 37100.37300.37600.38100.39100.43500.176300.442700 | Reinforcement | 8d | 2026-02-19 | 2026-02-27 | 1956FS-1d |  | 7578993 |
| 1959 | 37100.37300.37600.38100.39100.43500.176300.442800 | Wall conduiting | 3d | 2026-02-20 | 2026-02-23 | 1954, 1958SS+1d |  | 7579003 |
| 1960 | 37100.37300.37600.38100.39100.43500.176300.442900 | Formwork | 7d | 2026-02-20 | 2026-02-27 | 1958SS+1d |  | 7579013 |
| 1961 | 37100.37300.37600.38100.39100.43500.176300.443000 | Concreting | 1d | 2026-02-27 | 2026-02-28 | 1960 |  | 7579023 |
| 1962 | 37100.37300.37600.38100.39100.43500.176200 | **18th floor slab** | 9d | 2026-02-26 | 2026-03-07 |  | start no earlier than 2026-02-26 | 7570473 |
| 1963 | 37100.37300.37600.38100.39100.43500.176200.443100 | Reinforcement | 8d | 2026-02-26 | 2026-03-06 | 1961FS-2d |  | 7579033 |
| 1964 | 37100.37300.37600.38100.39100.43500.176200.443200 | Wall conduiting | 3d | 2026-02-27 | 2026-03-02 | 1959, 1963SS+1d |  | 7579043 |
| 1965 | 37100.37300.37600.38100.39100.43500.176200.443300 | Formwork | 7d | 2026-02-27 | 2026-03-06 | 1963SS+1d |  | 7579053 |
| 1966 | 37100.37300.37600.38100.39100.43500.176200.443400 | Concreting | 1d | 2026-03-06 | 2026-03-07 | 1965 |  | 7579063 |
| 1967 | 37100.37300.37600.38100.39100.43500.176100 | **19th floor slab** | 8d | 2026-03-04 | 2026-03-12 |  | start no earlier than 2026-03-04 | 7570483 |
| 1968 | 37100.37300.37600.38100.39100.43500.176100.443500 | Reinforcement | 7d | 2026-03-04 | 2026-03-11 | 1966FS-3d |  | 7579073 |
| 1969 | 37100.37300.37600.38100.39100.43500.176100.443600 | Wall conduiting | 3d | 2026-03-05 | 2026-03-08 | 1964, 1968SS+1d |  | 7579083 |
| 1970 | 37100.37300.37600.38100.39100.43500.176100.443700 | Formwork | 6d | 2026-03-05 | 2026-03-11 | 1968SS+1d |  | 7579093 |
| 1971 | 37100.37300.37600.38100.39100.43500.176100.443800 | Concreting | 1d | 2026-03-11 | 2026-03-12 | 1970 |  | 7579103 |
| 1972 | 37100.37300.37600.38100.39100.43500.176000 | **20th floor slab** | 8d | 2026-03-13 | 2026-03-21 |  | start no earlier than 2026-03-13 | 7570493 |
| 1973 | 37100.37300.37600.38100.39100.43500.176000.443900 | Reinforcement | 7d | 2026-03-13 | 2026-03-20 | 1971FS+1d |  | 7579113 |
| 1974 | 37100.37300.37600.38100.39100.43500.176000.444000 | Wall conduiting | 3d | 2026-03-14 | 2026-03-17 | 1969, 1973SS+1d |  | 7579123 |
| 1975 | 37100.37300.37600.38100.39100.43500.176000.444100 | Formwork | 6d | 2026-03-14 | 2026-03-20 | 1973SS+1d |  | 7579133 |
| 1976 | 37100.37300.37600.38100.39100.43500.176000.444200 | Concreting | 1d | 2026-03-20 | 2026-03-21 | 1975 |  | 7579143 |
| 1977 | 37100.37300.37600.38100.39100.43500.175900 | **21st floor slab** | 10d | 2026-03-23 | 2026-04-01 |  | start no earlier than 2026-03-23 | 7570503 |
| 1978 | 37100.37300.37600.38100.39100.43500.175900.444300 | Reinforcement | 9d | 2026-03-23 | 2026-03-31 | 1976FS+1.88d |  | 7579153 |
| 1979 | 37100.37300.37600.38100.39100.43500.175900.444400 | Wall conduiting | 3d | 2026-03-24 | 2026-03-26 | 1974, 1978SS+1d |  | 7579163 |
| 1980 | 37100.37300.37600.38100.39100.43500.175900.444500 | Formwork | 8d | 2026-03-24 | 2026-03-31 | 1978SS+1d |  | 7579173 |
| 1981 | 37100.37300.37600.38100.39100.43500.175900.444600 | Concreting | 1d | 2026-04-01 | 2026-04-01 | 1980 |  | 7579183 |

| ID | WBS | Task | Duration | Start | Finish | Predecessors | Constraint | Unique_Task_ID |
| --- | --- | --- | --- | --- | --- | --- | --- | --- |
| 1982 | 37100.37300.37600.38100.39100.43500.175800 | **22nd floor slab** | 10d | 2026-04-06 | 2026-04-15 |  | start no earlier than 2026-04-06 | 7570513 |
| 1983 | 37100.37300.37600.38100.39100.43500.175800.444700 | Reinforcement | 9d | 2026-04-06 | 2026-04-14 | 1981FS+4d |  | 7579193 |
| 1984 | 37100.37300.37600.38100.39100.43500.175800.444800 | Wall conduiting | 3d | 2026-04-07 | 2026-04-09 | 1979, 1983SS+1d |  | 7579203 |
| 1985 | 37100.37300.37600.38100.39100.43500.175800.444900 | Formwork | 8d | 2026-04-07 | 2026-04-14 | 1983SS+1d |  | 7579213 |
| 1986 | 37100.37300.37600.38100.39100.43500.175800.445000 | Concreting | 1d | 2026-04-15 | 2026-04-15 | 1985 |  | 7579223 |
| 1987 | 37100.37300.37600.38100.39100.43500.175700 | **23rd floor slab** | 10d | 2026-04-19 | 2026-04-28 |  | start no earlier than 2026-04-19 | 7570523 |
| 1988 | 37100.37300.37600.38100.39100.43500.175700.445100 | Reinforcement | 9d | 2026-04-19 | 2026-04-27 | 1986FS+3d |  | 7579233 |
| 1989 | 37100.37300.37600.38100.39100.43500.175700.445200 | Wall conduiting | 3d | 2026-04-20 | 2026-04-22 | 1984, 1988SS+1d |  | 7579243 |
| 1990 | 37100.37300.37600.38100.39100.43500.175700.445300 | Formwork | 8d | 2026-04-20 | 2026-04-27 | 1988SS+1d |  | 7579253 |
| 1991 | 37100.37300.37600.38100.39100.43500.175700.445400 | Concreting | 1d | 2026-04-28 | 2026-04-28 | 1990 |  | 7579263 |
| 1992 | 37100.37300.37600.38100.39100.43500.175600 | **24th floor slab** | 12d | 2026-05-04 | 2026-05-15 |  | start no earlier than 2026-05-04 | 7570533 |
| 1993 | 37100.37300.37600.38100.39100.43500.175600.445500 | Reinforcement | 10d | 2026-05-04 | 2026-05-13 | 1991FS+5d |  | 7579273 |
| 1994 | 37100.37300.37600.38100.39100.43500.175600.445600 | Wall conduiting | 3d | 2026-05-05 | 2026-05-07 | 1989, 1993SS+1d |  | 7579283 |
| 1995 | 37100.37300.37600.38100.39100.43500.175600.445700 | Formwork | 10d | 2026-05-05 | 2026-05-14 | 1993SS+1d |  | 7579293 |
| 1996 | 37100.37300.37600.38100.39100.43500.175600.445800 | Concreting | 1d | 2026-05-15 | 2026-05-15 | 1995 |  | 7579303 |
| 1997 | 37100.37300.37600.38100.39100.43500.175500 | **25th floor slab** | 12d | 2026-05-17 | 2026-05-28 |  | start no earlier than 2026-05-17 | 7570543 |
| 1998 | 37100.37300.37600.38100.39100.43500.175500.445900 | Reinforcement | 10d | 2026-05-17 | 2026-05-26 | 1996FS+1d |  | 7579313 |
| 1999 | 37100.37300.37600.38100.39100.43500.175500.446000 | Wall conduiting | 3d | 2026-05-18 | 2026-05-20 | 1994, 1998SS+1d |  | 7579323 |
| 2000 | 37100.37300.37600.38100.39100.43500.175500.446100 | Formwork | 10d | 2026-05-18 | 2026-05-27 | 1998SS+1d |  | 7579333 |
| 2001 | 37100.37300.37600.38100.39100.43500.175500.446200 | Concreting | 1d | 2026-05-28 | 2026-05-28 | 2000 |  | 7579343 |
| 2002 | 37100.37300.37600.38100.39100.43500.175400 | **26th floor slab** | 10d | 2026-05-30 | 2026-06-08 |  | start no earlier than 2026-05-30 | 7570553 |
| 2003 | 37100.37300.37600.38100.39100.43500.175400.446300 | Reinforcement | 9d | 2026-05-30 | 2026-06-07 | 2001FS+1d |  | 7579353 |
| 2004 | 37100.37300.37600.38100.39100.43500.175400.446400 | Wall conduiting | 3d | 2026-05-31 | 2026-06-02 | 1999, 2003SS+1d |  | 7579363 |
| 2005 | 37100.37300.37600.38100.39100.43500.175400.446500 | Formwork | 8d | 2026-05-31 | 2026-06-07 | 2003SS+1d |  | 7579373 |
| 2006 | 37100.37300.37600.38100.39100.43500.175400.446600 | Concreting | 1d | 2026-06-08 | 2026-06-08 | 2005 |  | 7579383 |

| ID | WBS | Task | Duration | Start | Finish | Predecessors | Constraint | Unique_Task_ID |
| --- | --- | --- | --- | --- | --- | --- | --- | --- |
| 2007 | 37100.37300.37600.38100.39100.43500.175300 | **27th floor slab** | 10d | 2026-06-14 | 2026-06-23 |  | start no earlier than 2026-06-14 | 7570563 |
| 2008 | 37100.37300.37600.38100.39100.43500.175300.446700 | Reinforcement | 9d | 2026-06-14 | 2026-06-22 | 2006FS+5d |  | 7579393 |
| 2009 | 37100.37300.37600.38100.39100.43500.175300.446800 | Wall conduiting | 3d | 2026-06-15 | 2026-06-17 | 2004, 2008SS+1d |  | 7579403 |
| 2010 | 37100.37300.37600.38100.39100.43500.175300.446900 | Formwork | 8d | 2026-06-15 | 2026-06-22 | 2008SS+1d |  | 7579413 |
| 2011 | 37100.37300.37600.38100.39100.43500.175300.447000 | Concreting | 1d | 2026-06-23 | 2026-06-23 | 2010 |  | 7579423 |
| 2012 | 37100.37300.37600.38100.39100.43500.175200 | **28th floor slab** | 10d | 2026-06-25 | 2026-07-04 |  | start no earlier than 2026-06-25 | 7570573 |
| 2013 | 37100.37300.37600.38100.39100.43500.175200.447100 | Reinforcement | 9d | 2026-06-25 | 2026-07-03 | 2011FS+1d |  | 7579433 |
| 2014 | 37100.37300.37600.38100.39100.43500.175200.447200 | Wall conduiting | 3d | 2026-06-26 | 2026-06-28 | 2009, 2013SS+1d |  | 7579443 |
| 2015 | 37100.37300.37600.38100.39100.43500.175200.447300 | Formwork | 8d | 2026-06-26 | 2026-07-03 | 2013SS+1d |  | 7579453 |
| 2016 | 37100.37300.37600.38100.39100.43500.175200.447400 | Concreting | 1d | 2026-07-04 | 2026-07-04 | 2015 |  | 7579463 |
| 2017 | 37100.37300.37600.38100.39100.43500.175100 | **29th floor slab** | 10d | 2026-07-06 | 2026-07-15 |  | start no earlier than 2026-07-06 | 7570583 |
| 2018 | 37100.37300.37600.38100.39100.43500.175100.447500 | Reinforcement | 9d | 2026-07-06 | 2026-07-14 | 2016FS+1d |  | 7579473 |
| 2019 | 37100.37300.37600.38100.39100.43500.175100.447600 | Wall conduiting | 3d | 2026-07-07 | 2026-07-09 | 2014, 2018SS+1d |  | 7579483 |
| 2020 | 37100.37300.37600.38100.39100.43500.175100.447700 | Formwork | 8d | 2026-07-07 | 2026-07-14 | 2018SS+1d |  | 7579493 |
| 2021 | 37100.37300.37600.38100.39100.43500.175100.447800 | Concreting | 1d | 2026-07-15 | 2026-07-15 | 2020 |  | 7579503 |
| 2022 | 37100.37300.37600.38100.39100.43500.175000 | **30th floor slab** | 10d | 2026-07-20 | 2026-07-29 |  | start no earlier than 2026-07-20 | 7570593 |
| 2023 | 37100.37300.37600.38100.39100.43500.175000.447900 | Reinforcement | 9d | 2026-07-20 | 2026-07-28 | 2021FS+4d |  | 7579513 |
| 2024 | 37100.37300.37600.38100.39100.43500.175000.448000 | Wall conduiting | 3d | 2026-07-21 | 2026-07-23 | 2019, 2023SS+1d |  | 7579523 |
| 2025 | 37100.37300.37600.38100.39100.43500.175000.448100 | Formwork | 8d | 2026-07-21 | 2026-07-28 | 2023SS+1d |  | 7579533 |
| 2026 | 37100.37300.37600.38100.39100.43500.175000.448200 | Concreting | 1d | 2026-07-29 | 2026-07-29 | 2025 |  | 7579543 |
| 2027 | 37100.37300.37600.38100.39100.43500.174900 | **31st floor slab** | 10.88d | 2026-08-03 | 2026-08-13 |  | start no earlier than 2026-08-03 | 7570603 |
| 2028 | 37100.37300.37600.38100.39100.43500.174900.448300 | Reinforcement | 8.94d | 2026-08-03 | 2026-08-11 | 2026FS+4d |  | 7579553 |
| 2029 | 37100.37300.37600.38100.39100.43500.174900.448400 | Wall conduiting | 1.94d | 2026-08-04 | 2026-08-05 | 2024, 2028SS+1d |  | 7579563 |
| 2030 | 37100.37300.37600.38100.39100.43500.174900.448500 | Formwork | 8.94d | 2026-08-04 | 2026-08-12 | 2028SS+1d |  | 7579573 |
| 2031 | 37100.37300.37600.38100.39100.43500.174900.448600 | Concreting | 0.94d | 2026-08-12 | 2026-08-13 | 2030 |  | 7579583 |

| ID | WBS | Task | Duration | Start | Finish | Predecessors | Constraint | Unique_Task_ID |
| --- | --- | --- | --- | --- | --- | --- | --- | --- |
| 2032 | 37100.37300.37600.38100.39100.43500.174800 | **32nd floor slab** | 12.75d | 2026-08-17 | 2026-08-30 |  | start no earlier than 2026-08-17 | 7570613 |
| 2033 | 37100.37300.37600.38100.39100.43500.174800.448700 | Reinforcement | 9.94d | 2026-08-17 | 2026-08-27 | 2031FS+4d |  | 7579593 |
| 2034 | 37100.37300.37600.38100.39100.43500.174800.448800 | Wall conduiting | 1.94d | 2026-08-18 | 2026-08-20 | 2029, 2033SS+1d |  | 7579603 |
| 2035 | 37100.37300.37600.38100.39100.43500.174800.448900 | Formwork | 9.94d | 2026-08-19 | 2026-08-29 | 2033SS+1.88d |  | 7579613 |
| 2036 | 37100.37300.37600.38100.39100.43500.174800.449000 | Concreting | 0.94d | 2026-08-29 | 2026-08-30 | 2035 |  | 7579623 |
| 2037 | 37100.37300.37600.38100.39100.43500.174700 | **33rd floor slab** | 14d | 2026-08-31 | 2026-09-14 |  | start no earlier than 2026-08-31 | 7570623 |
| 2038 | 37100.37300.37600.38100.39100.43500.174700.449100 | Reinforcement | 14d | 2026-08-31 | 2026-09-14 | 2036FS+1d |  | 7579633 |
| 2039 | 37100.37300.37600.38100.39100.43500.174700.449200 | Wall conduiting | 5d | 2026-09-01 | 2026-09-06 | 2034, 2038SS+1d |  | 7579643 |
| 2040 | 37100.37300.37600.38100.39100.43500.174700.449300 | Formwork | 10d | 2026-09-02 | 2026-09-12 | 2038SS+1.88d |  | 7579653 |
| 2041 | 37100.37300.37600.38100.39100.43500.174700.449400 | Concreting | 1d | 2026-09-12 | 2026-09-13 | 2040 |  | 7579663 |
| 2042 | 37100.37300.37600.38100.39100.43500.174600 | **34th floor slab** | 12.75d | 2026-09-14 | 2026-09-27 |  | start no earlier than 2026-09-14 | 7570633 |
| 2043 | 37100.37300.37600.38100.39100.43500.174600.449500 | Reinforcement | 9.94d | 2026-09-14 | 2026-09-24 | 2041FS+1d |  | 7579673 |
| 2044 | 37100.37300.37600.38100.39100.43500.174600.449600 | Wall conduiting | 1.94d | 2026-09-15 | 2026-09-17 | 2039, 2043SS+1d |  | 7579683 |
| 2045 | 37100.37300.37600.38100.39100.43500.174600.449700 | Formwork | 9.94d | 2026-09-16 | 2026-09-26 | 2043SS+1.88d |  | 7579693 |
| 2046 | 37100.37300.37600.38100.39100.43500.174600.449800 | Concreting | 0.94d | 2026-09-26 | 2026-09-27 | 2045 |  | 7579703 |
| 2047 | 37100.37300.37600.38100.39100.43500.174500 | **35th floor slab** | 11.75d | 2026-09-29 | 2026-10-10 |  | start no earlier than 2026-09-29 | 7570643 |
| 2048 | 37100.37300.37600.38100.39100.43500.174500.449900 | Reinforcement | 8.94d | 2026-09-29 | 2026-10-08 | 2046FS+2d |  | 7579713 |
| 2049 | 37100.37300.37600.38100.39100.43500.174500.450000 | Wall conduiting | 1.94d | 2026-09-30 | 2026-10-02 | 2044, 2048SS+1d |  | 7579723 |
| 2050 | 37100.37300.37600.38100.39100.43500.174500.450100 | Formwork | 7.94d | 2026-10-02 | 2026-10-10 | 2049SS+1.88d |  | 7579733 |
| 2051 | 37100.37300.37600.38100.39100.43500.174500.450200 | Concreting | 0.94d | 2026-10-10 | 2026-10-10 | 2050 |  | 7579743 |
| 2052 | 37100.37300.37600.38100.39100.43500.174400 | **Terrace floor slab** | 21d | 2026-10-12 | 2026-12-16 |  | start no earlier than 2026-10-12 | 7570653 |
| 2053 | 37100.37300.37600.38100.39100.43500.174400.450300 | Reinforcement | 21d | 2026-10-12 | 2026-12-16 | 2051FS+1d |  | 7579753 |
| 2054 | 37100.37300.37600.38100.39100.43500.174400.450400 | Wall conduiting | 1.94d | 2026-10-13 | 2026-10-14 | 2049, 2053SS+1d |  | 7579763 |
| 2055 | 37100.37300.37600.38100.39100.43500.174400.450500 | Formwork | 13d | 2026-10-13 | 2026-10-26 | 2053SS+1.88d |  | 7579773 |
| 2056 | 37100.37300.37600.38100.39100.43500.174400.450600 | Concreting | 2d | 2026-10-26 | 2026-10-28 | 2055 |  | 7579783 |

| ID | WBS | Task | Duration | Start | Finish | Predecessors | Constraint | Unique_Task_ID |
| --- | --- | --- | --- | --- | --- | --- | --- | --- |
| 2057 | 37100.37300.37600.38100.39100.43500.174300 | **OHT & Mumty** | 39.5d | 2026-10-30 | 2027-01-23 |  | start no earlier than 2026-10-30 | 7570663 |
| 2058 | 37100.37300.37600.38100.39100.43500.174300.450700 | Reinforcement | 29.94d | 2026-10-30 | 2027-01-13 | 2056FS+2d |  | 7579793 |
| 2059 | 37100.37300.37600.38100.39100.43500.174300.450800 | Wall conduiting | 4.94d | 2026-10-31 | 2026-12-20 | 2054, 2058SS+1d |  | 7579803 |
| 2060 | 37100.37300.37600.38100.39100.43500.174300.450900 | Formwork | 32.94d | 2026-12-18 | 2027-01-20 | 2058SS+3.62d |  | 7579813 |
| 2061 | 37100.37300.37600.38100.39100.43500.174300.451000 | Concreting | 2.94d | 2027-01-20 | 2027-01-23 | 2060 |  | 7579823 |
| 2062 | 37100.37300.37600.38100.39100.45800 | **Post Pour Activities** | 407.12d | 2025-11-30 | 2027-03-06 |  | start no earlier than 2025-11-30 | 7567703 |
| 2063 | 37100.37300.37600.38100.39100.45800.313000 | 1st Floor | 7d | 2025-11-30 | 2025-12-16 | 1901 |  | 7573313 |
| 2064 | 37100.37300.37600.38100.39100.45800.313100 | 2nd Floor | 7d | 2025-12-16 | 2025-12-23 | 2063, 1911 |  | 7573323 |
| 2065 | 37100.37300.37600.38100.39100.45800.313200 | 3rd Floor | 7d | 2025-12-23 | 2025-12-30 | 2064, 1916 |  | 7573333 |
| 2066 | 37100.37300.37600.38100.39100.45800.313300 | 4th Floor | 7d | 2025-12-30 | 2026-01-06 | 2065, 1921 |  | 7573343 |
| 2067 | 37100.37300.37600.38100.39100.45800.313400 | 5th Floor | 7d | 2026-01-06 | 2026-01-13 | 2066, 1926 |  | 7573353 |
| 2068 | 37100.37300.37600.38100.39100.45800.313500 | 6th Floor | 7d | 2026-01-13 | 2026-01-20 | 2067, 1931 |  | 7573363 |
| 2069 | 37100.37300.37600.38100.39100.45800.313600 | 7th Floor | 7d | 2026-01-20 | 2026-01-27 | 2068, 1936 |  | 7573373 |
| 2070 | 37100.37300.37600.38100.39100.45800.313700 | 8th Floor | 7d | 2026-01-27 | 2026-02-03 | 2069, 1941 |  | 7573383 |
| 2071 | 37100.37300.37600.38100.39100.45800.313800 | 9th Floor | 7d | 2026-02-03 | 2026-02-10 | 2070, 1946 |  | 7573393 |
| 2072 | 37100.37300.37600.38100.39100.45800.313900 | 10th Floor | 7d | 2026-02-10 | 2026-02-17 | 2071, 1951 |  | 7573403 |
| 2073 | 37100.37300.37600.38100.39100.45800.314000 | 11th Floor | 7d | 2026-02-20 | 2026-02-27 | 2072, 1956 |  | 7573413 |
| 2074 | 37100.37300.37600.38100.39100.45800.314100 | 12th Floor | 7d | 2026-02-28 | 2026-03-07 | 2073, 1961 |  | 7573423 |
| 2075 | 37100.37300.37600.38100.39100.45800.314200 | 13th Floor | 7d | 2026-03-07 | 2026-03-14 | 2074, 1966 |  | 7573433 |
| 2076 | 37100.37300.37600.38100.39100.45800.314300 | 14th Floor | 7d | 2026-03-14 | 2026-03-21 | 2075, 1971 |  | 7573443 |
| 2077 | 37100.37300.37600.38100.39100.45800.314400 | 15th Floor | 7d | 2026-03-21 | 2026-03-28 | 2076, 1976 |  | 7573453 |
| 2078 | 37100.37300.37600.38100.39100.45800.314500 | 16th Floor | 7d | 2026-04-02 | 2026-04-08 | 2077, 1981 |  | 7573463 |
| 2079 | 37100.37300.37600.38100.39100.45800.314600 | 17th Floor | 7d | 2026-04-16 | 2026-04-22 | 2078, 1986 |  | 7573473 |
| 2080 | 37100.37300.37600.38100.39100.45800.314700 | 18th Floor | 7d | 2026-04-29 | 2026-05-05 | 2079, 1991 |  | 7573483 |
| 2081 | 37100.37300.37600.38100.39100.45800.314800 | 19th Floor | 7d | 2026-05-16 | 2026-05-22 | 2080, 1996 |  | 7573493 |
| 2082 | 37100.37300.37600.38100.39100.45800.314900 | 20th Floor | 7d | 2026-05-29 | 2026-06-04 | 2081, 2001 |  | 7573503 |
| 2083 | 37100.37300.37600.38100.39100.45800.315000 | 21st Floor | 7d | 2026-06-09 | 2026-06-15 | 2082, 2006 |  | 7573513 |
| 2084 | 37100.37300.37600.38100.39100.45800.315100 | 22nd Floor | 7d | 2026-06-24 | 2026-06-30 | 2083, 2011 |  | 7573523 |
| 2085 | 37100.37300.37600.38100.39100.45800.315200 | 23rd Floor | 7d | 2026-07-05 | 2026-07-11 | 2084, 2016 |  | 7573533 |
| 2086 | 37100.37300.37600.38100.39100.45800.315300 | 24th Floor | 7d | 2026-07-16 | 2026-07-22 | 2085, 2021 |  | 7573543 |
| 2087 | 37100.37300.37600.38100.39100.45800.315400 | 25th Floor | 7d | 2026-07-30 | 2026-08-05 | 2086, 2026 |  | 7573553 |
| 2088 | 37100.37300.37600.38100.39100.45800.315500 | 26th Floor | 7d | 2026-08-13 | 2026-08-20 | 2087, 2031 |  | 7573563 |
| 2089 | 37100.37300.37600.38100.39100.45800.315600 | 27th Floor | 7d | 2026-08-30 | 2026-09-06 | 2088, 2036 |  | 7573573 |
| 2090 | 37100.37300.37600.38100.39100.45800.315700 | 28th Floor | 7d | 2026-09-13 | 2026-09-20 | 2089, 2041 |  | 7573583 |
| 2091 | 37100.37300.37600.38100.39100.45800.315800 | 29th Floor | 7d | 2026-09-27 | 2026-10-04 | 2090, 2046 |  | 7573593 |
| 2092 | 37100.37300.37600.38100.39100.45800.315900 | 30th Floor | 7d | 2026-10-11 | 2026-10-17 | 2091, 2051 |  | 7573603 |
| 2093 | 37100.37300.37600.38100.39100.45800.316000 | 31st Floor | 7d | 2026-10-28 | 2026-12-19 | 2092, 2056 |  | 7573613 |
| 2094 | 37100.37300.37600.38100.39100.45800.316100 | 32nd Flood | 7d | 2027-01-23 | 2027-01-30 | 2093, 2061 |  | 7573623 |
| 2095 | 37100.37300.37600.38100.39100.45800.316200 | 33rd Floor | 7d | 2027-01-30 | 2027-02-06 | 2094 |  | 7573633 |
| 2096 | 37100.37300.37600.38100.39100.45800.316300 | 34th Floor | 7d | 2027-02-06 | 2027-02-13 | 2095 |  | 7573643 |
| 2097 | 37100.37300.37600.38100.39100.45800.316400 | 35th Floor | 7d | 2027-02-13 | 2027-02-20 | 2096 |  | 7573653 |
| 2098 | 37100.37300.37600.38100.39100.45800.316500 | Terrace | 7d | 2027-02-20 | 2027-02-27 | 2097 |  | 7573663 |
| 2099 | 37100.37300.37600.38100.39100.45800.316600 | Mumty & Machine Room | 7d | 2027-02-27 | 2027-03-06 | 2098 |  | 7573673 |

| ID | WBS | Task | Duration | Start | Finish | Predecessors | Constraint | Unique_Task_ID |
| --- | --- | --- | --- | --- | --- | --- | --- | --- |
| 2100 | 37100.37300.37600.38100.39100.40500 | **Finishing work** | 818.81d | 2025-11-30 | 2028-04-21 |  | start no earlier than 2025-11-30 | 7567583 |
| 2101 | 37100.37300.37600.38100.39100.40500.41500 | **Flat finishing** | 818.81d | 2025-11-30 | 2028-04-21 |  | start no earlier than 2025-11-30 | 7567623 |
| 2102 | 37100.37300.37600.38100.39100.40500.41500.64600 | **1st Floor** | 448.25d | 2025-11-30 | 2027-04-16 |  | start no earlier than 2025-11-30 | 7568423 |
| 2103 | 37100.37300.37600.38100.39100.40500.41500.64600.921200 | Block Work | 8d | 2025-11-30 | 2025-12-18 | 2063SS+1d |  | 7592193 |
| 2104 | 37100.37300.37600.38100.39100.40500.41500.64600.921300 | Door Frame Fixing | 9d | 2025-12-18 | 2025-12-27 | 2103 |  | 7592203 |
| 2105 | 37100.37300.37600.38100.39100.40500.41500.64600.921400 | Internal Plumbing Works | 8d | 2025-12-18 | 2025-12-26 | 2103 |  | 7592213 |
| 2106 | 37100.37300.37600.38100.39100.40500.41500.64600.921500 | Waterproofing | 10d | 2025-12-26 | 2026-01-05 | 2105 |  | 7592223 |
| 2107 | 37100.37300.37600.38100.39100.40500.41500.64600.921600 | Internal Plaster | 8d | 2025-11-30 | 2025-12-17 | 1896FS+1d |  | 7592233 |
| 2108 | 37100.37300.37600.38100.39100.40500.41500.64600.921700 | IPS flooring work | 10d | 2026-01-05 | 2026-01-15 | 2104, 2105, 2106 |  | 7592243 |
| 2109 | 37100.37300.37600.38100.39100.40500.41500.64600.921800 | Toilet dado work | 8d | 2026-01-05 | 2026-01-13 | 2106, 2107 |  | 7592253 |
| 2110 | 37100.37300.37600.38100.39100.40500.41500.64600.921900 | Toilet flooring work | 8d | 2026-01-13 | 2026-01-21 | 2109 |  | 7592263 |
| 2111 | 37100.37300.37600.38100.39100.40500.41500.64600.922000 | Living dinning flooring | 8d | 2025-12-27 | 2026-01-04 | 2104FS+0.25d |  | 7592273 |
| 2112 | 37100.37300.37600.38100.39100.40500.41500.64600.922100 | Aluminium door-window fixing | 8d | 2026-01-15 | 2026-01-23 | 2108FS+0.25d |  | 7592283 |
| 2113 | 37100.37300.37600.38100.39100.40500.41500.64600.922200 | Putty primer coat | 6d | 2026-01-04 | 2026-01-10 | 2111 |  | 7592293 |
| 2114 | 37100.37300.37600.38100.39100.40500.41500.64600.922300 | Door shutter fixing | 8d | 2026-01-04 | 2026-01-12 | 2111 |  | 7592303 |
| 2115 | 37100.37300.37600.38100.39100.40500.41500.64600.922400 | Electrical wiring work | 8d | 2027-03-23 | 2027-03-31 | 2114FS+390d |  | 7592313 |
| 2116 | 37100.37300.37600.38100.39100.40500.41500.64600.922500 | Painting 1st coat | 8d | 2027-03-31 | 2027-04-08 | 2113, 2114, 2115 |  | 7592323 |
| 2117 | 37100.37300.37600.38100.39100.40500.41500.64600.922600 | False ceiling | 8d | 2027-04-08 | 2027-04-16 | 2116 |  | 7592333 |
| 2118 | 37100.37300.37600.38100.39100.40500.41500.64700 | **2nd Floor** | 448d | 2025-12-17 | 2027-04-24 |  | start no earlier than 2025-12-17 | 7568433 |
| 2119 | 37100.37300.37600.38100.39100.40500.41500.64700.922700 | Block Work | 8d | 2025-12-18 | 2025-12-26 | 2103FS+0.25d |  | 7592343 |
| 2120 | 37100.37300.37600.38100.39100.40500.41500.64700.922800 | Door Frame Fixing | 9d | 2025-12-26 | 2026-01-04 | 2119FS+0.25d |  | 7592353 |
| 2121 | 37100.37300.37600.38100.39100.40500.41500.64700.922900 | Internal Plumbing Works | 8d | 2025-12-26 | 2026-01-03 | 2105, 2119 |  | 7592363 |
| 2122 | 37100.37300.37600.38100.39100.40500.41500.64700.923000 | Waterproofing | 10d | 2026-01-05 | 2026-01-15 | 2106, 2121 |  | 7592373 |
| 2123 | 37100.37300.37600.38100.39100.40500.41500.64700.923100 | Internal Plaster | 8d | 2025-12-17 | 2025-12-25 | 2107FS+0.25d |  | 7592383 |
| 2124 | 37100.37300.37600.38100.39100.40500.41500.64700.923200 | IPS flooring work | 10d | 2026-01-15 | 2026-01-25 | 2108, 2120, 2121, 2122 |  | 7592393 |
| 2125 | 37100.37300.37600.38100.39100.40500.41500.64700.923300 | Toilet dado work | 8d | 2026-01-15 | 2026-01-23 | 2109, 2122, 2123 |  | 7592403 |
| 2126 | 37100.37300.37600.38100.39100.40500.41500.64700.923400 | Toilet flooring work | 8d | 2026-01-23 | 2026-01-31 | 2110, 2125 |  | 7592413 |
| 2127 | 37100.37300.37600.38100.39100.40500.41500.64700.923500 | Living dinning flooring | 8d | 2026-01-04 | 2026-01-12 | 2111FS+0.25d |  | 7592423 |
| 2128 | 37100.37300.37600.38100.39100.40500.41500.64700.923600 | Aluminium door-window fixing | 8d | 2026-01-23 | 2026-01-31 | 2112FS+0.25d |  | 7592433 |
| 2129 | 37100.37300.37600.38100.39100.40500.41500.64700.923700 | Putty primer coat | 6d | 2026-01-12 | 2026-01-18 | 2113, 2127 |  | 7592443 |
| 2130 | 37100.37300.37600.38100.39100.40500.41500.64700.923800 | Door shutter fixing | 8d | 2026-01-12 | 2026-01-20 | 2114, 2127 |  | 7592453 |
| 2131 | 37100.37300.37600.38100.39100.40500.41500.64700.923900 | Electrical wiring work | 8d | 2027-03-31 | 2027-04-08 | 2115, 2130 |  | 7592463 |
| 2132 | 37100.37300.37600.38100.39100.40500.41500.64700.924000 | Painting 1st coat | 8d | 2027-04-08 | 2027-04-16 | 2116, 2129, 2130, 2131 |  | 7592473 |
| 2133 | 37100.37300.37600.38100.39100.40500.41500.64700.924100 | False ceiling | 8d | 2027-04-16 | 2027-04-24 | 2117, 2132 |  | 7592483 |

| ID | WBS | Task | Duration | Start | Finish | Predecessors | Constraint | Unique_Task_ID |
| --- | --- | --- | --- | --- | --- | --- | --- | --- |
| 2134 | 37100.37300.37600.38100.39100.40500.41500.94900 | **3rd Floor** | 447.75d | 2025-12-25 | 2027-05-02 |  | start no earlier than 2025-12-25 | 7568443 |
| 2135 | 37100.37300.37600.38100.39100.40500.41500.94900.924200 | Block Work | 8d | 2025-12-26 | 2026-01-03 | 2119FS+0.25d |  | 7592493 |
| 2136 | 37100.37300.37600.38100.39100.40500.41500.94900.924300 | Door Frame Fixing | 9d | 2026-01-04 | 2026-01-13 | 2120, 2135 |  | 7592503 |
| 2137 | 37100.37300.37600.38100.39100.40500.41500.94900.924400 | Internal Plumbing Works | 8d | 2026-01-03 | 2026-01-11 | 2121, 2135 |  | 7592513 |
| 2138 | 37100.37300.37600.38100.39100.40500.41500.94900.924500 | Waterproofing | 10d | 2026-01-15 | 2026-01-25 | 2122, 2137 |  | 7592523 |
| 2139 | 37100.37300.37600.38100.39100.40500.41500.94900.924600 | Internal Plaster | 8d | 2025-12-25 | 2026-01-02 | 2123FS+0.25d |  | 7592533 |
| 2140 | 37100.37300.37600.38100.39100.40500.41500.94900.924700 | IPS flooring work | 10d | 2026-01-25 | 2026-02-04 | 2124, 2136, 2138, 2139 |  | 7592543 |
| 2141 | 37100.37300.37600.38100.39100.40500.41500.94900.924800 | Toilet dado work | 8d | 2026-01-25 | 2026-02-02 | 2125, 2138, 2139 |  | 7592553 |
| 2142 | 37100.37300.37600.38100.39100.40500.41500.94900.924900 | Toilet flooring work | 8d | 2026-02-02 | 2026-02-10 | 2126, 2141 |  | 7592563 |
| 2143 | 37100.37300.37600.38100.39100.40500.41500.94900.925000 | Living dinning flooring | 12d | 2026-01-13 | 2026-01-24 | 2127FS+0.25d |  | 7592573 |
| 2144 | 37100.37300.37600.38100.39100.40500.41500.94900.925100 | Aluminium door-window fixing | 12d | 2026-02-01 | 2026-02-12 | 2128FS+0.25d |  | 7592583 |
| 2145 | 37100.37300.37600.38100.39100.40500.41500.94900.925200 | Putty primer coat | 6d | 2026-01-25 | 2026-01-30 | 2129, 2143 |  | 7592593 |
| 2146 | 37100.37300.37600.38100.39100.40500.41500.94900.925300 | Door shutter fixing | 8d | 2026-01-25 | 2026-02-01 | 2130, 2143 |  | 7592603 |
| 2147 | 37100.37300.37600.38100.39100.40500.41500.94900.925400 | Electrical wiring work | 8d | 2027-04-08 | 2027-04-16 | 2131, 2146 |  | 7592613 |
| 2148 | 37100.37300.37600.38100.39100.40500.41500.94900.925500 | Painting 1st coat | 8d | 2027-04-16 | 2027-04-24 | 2132, 2145, 2146, 2147 |  | 7592623 |
| 2149 | 37100.37300.37600.38100.39100.40500.41500.94900.925600 | False ceiling | 8d | 2027-04-24 | 2027-05-02 | 2133, 2148 |  | 7592633 |
| 2150 | 37100.37300.37600.38100.39100.40500.41500.64800 | **4th Floor** | 447.5d | 2026-01-03 | 2027-05-10 |  | start no earlier than 2026-01-03 | 7568453 |
| 2151 | 37100.37300.37600.38100.39100.40500.41500.64800.925700 | Block Work | 8d | 2026-01-04 | 2026-01-11 | 2135FS+0.25d |  | 7592643 |
| 2152 | 37100.37300.37600.38100.39100.40500.41500.64800.925800 | Door Frame Fixing | 9d | 2026-01-13 | 2026-01-22 | 2136, 2151 |  | 7592653 |
| 2153 | 37100.37300.37600.38100.39100.40500.41500.64800.925900 | Internal Plumbing Works | 8d | 2026-01-12 | 2026-01-19 | 2137, 2151 |  | 7592663 |
| 2154 | 37100.37300.37600.38100.39100.40500.41500.64800.926000 | Waterproofing | 10d | 2026-01-25 | 2026-02-04 | 2138, 2153 |  | 7592673 |
| 2155 | 37100.37300.37600.38100.39100.40500.41500.64800.926100 | Internal Plaster | 8d | 2026-01-03 | 2026-01-10 | 2139FS+0.25d |  | 7592683 |
| 2156 | 37100.37300.37600.38100.39100.40500.41500.64800.926200 | IPS flooring work | 10d | 2026-02-04 | 2026-02-14 | 2140, 2152, 2154, 2155 |  | 7592693 |
| 2157 | 37100.37300.37600.38100.39100.40500.41500.64800.926300 | Toilet dado work | 8d | 2026-02-04 | 2026-02-12 | 2141, 2154, 2155 |  | 7592703 |
| 2158 | 37100.37300.37600.38100.39100.40500.41500.64800.926400 | Toilet flooring work | 8d | 2026-02-12 | 2026-02-20 | 2142, 2157 |  | 7592713 |
| 2159 | 37100.37300.37600.38100.39100.40500.41500.64800.926500 | Living dinning flooring | 12d | 2026-01-25 | 2026-02-06 | 2143FS+0.25d |  | 7592723 |
| 2160 | 37100.37300.37600.38100.39100.40500.41500.64800.926600 | Aluminium door-window fixing | 12d | 2026-02-13 | 2026-02-25 | 2144FS+0.25d |  | 7592733 |
| 2161 | 37100.37300.37600.38100.39100.40500.41500.64800.926700 | Putty primer coat | 6d | 2026-02-06 | 2026-02-12 | 2145, 2159 |  | 7592743 |
| 2162 | 37100.37300.37600.38100.39100.40500.41500.64800.926800 | Door shutter fixing | 8d | 2026-02-06 | 2026-02-14 | 2146, 2159 |  | 7592753 |
| 2163 | 37100.37300.37600.38100.39100.40500.41500.64800.926900 | Electrical wiring work | 8d | 2027-04-16 | 2027-04-24 | 2147, 2162 |  | 7592763 |
| 2164 | 37100.37300.37600.38100.39100.40500.41500.64800.927000 | Painting 1st coat | 8d | 2027-04-24 | 2027-05-02 | 2148, 2161, 2162, 2163 |  | 7592773 |
| 2165 | 37100.37300.37600.38100.39100.40500.41500.64800.927100 | False ceiling | 8d | 2027-05-02 | 2027-05-10 | 2149, 2164 |  | 7592783 |

| ID | WBS | Task | Duration | Start | Finish | Predecessors | Constraint | Unique_Task_ID |
| --- | --- | --- | --- | --- | --- | --- | --- | --- |
| 2166 | 37100.37300.37600.38100.39100.40500.41500.64900 | **5th Floor** | 447.25d | 2026-01-11 | 2027-05-18 |  | start no earlier than 2026-01-11 | 7568463 |
| 2167 | 37100.37300.37600.38100.39100.40500.41500.64900.927200 | Block Work | 8d | 2026-01-12 | 2026-01-20 | 2151FS+0.25d |  | 7592793 |
| 2168 | 37100.37300.37600.38100.39100.40500.41500.64900.927300 | Door Frame Fixing | 9d | 2026-01-22 | 2026-01-31 | 2152, 2167 |  | 7592803 |
| 2169 | 37100.37300.37600.38100.39100.40500.41500.64900.927400 | Internal Plumbing Works | 8d | 2026-01-20 | 2026-01-28 | 2153, 2167 |  | 7592813 |
| 2170 | 37100.37300.37600.38100.39100.40500.41500.64900.927500 | Waterproofing | 10d | 2026-02-04 | 2026-02-14 | 2154, 2169 |  | 7592823 |
| 2171 | 37100.37300.37600.38100.39100.40500.41500.64900.927600 | Internal Plaster | 8d | 2026-01-11 | 2026-01-19 | 2155FS+0.25d |  | 7592833 |
| 2172 | 37100.37300.37600.38100.39100.40500.41500.64900.927700 | IPS flooring work | 10d | 2026-02-14 | 2026-02-24 | 2156, 2168, 2170, 2171 |  | 7592843 |
| 2173 | 37100.37300.37600.38100.39100.40500.41500.64900.927800 | Toilet dado work | 8d | 2026-02-14 | 2026-02-22 | 2157, 2170, 2171 |  | 7592853 |
| 2174 | 37100.37300.37600.38100.39100.40500.41500.64900.927900 | Toilet flooring work | 8d | 2026-02-22 | 2026-03-02 | 2158, 2173 |  | 7592863 |
| 2175 | 37100.37300.37600.38100.39100.40500.41500.64900.928000 | Living dinning flooring | 12d | 2026-02-06 | 2026-02-18 | 2159FS+0.25d |  | 7592873 |
| 2176 | 37100.37300.37600.38100.39100.40500.41500.64900.928100 | Aluminium door-window fixing | 12d | 2026-02-25 | 2026-03-09 | 2160FS+0.25d |  | 7592883 |
| 2177 | 37100.37300.37600.38100.39100.40500.41500.64900.928200 | Putty primer coat | 6d | 2026-02-18 | 2026-02-24 | 2161, 2175 |  | 7592893 |
| 2178 | 37100.37300.37600.38100.39100.40500.41500.64900.928300 | Door shutter fixing | 8d | 2026-02-18 | 2026-02-26 | 2162, 2175 |  | 7592903 |
| 2179 | 37100.37300.37600.38100.39100.40500.41500.64900.928400 | Electrical wiring work | 8d | 2027-04-24 | 2027-05-02 | 2163, 2178 |  | 7592913 |
| 2180 | 37100.37300.37600.38100.39100.40500.41500.64900.928500 | Painting 1st coat | 8d | 2027-05-02 | 2027-05-10 | 2164, 2177, 2178, 2179 |  | 7592923 |
| 2181 | 37100.37300.37600.38100.39100.40500.41500.64900.928600 | False ceiling | 8d | 2027-05-10 | 2027-05-18 | 2165, 2180 |  | 7592933 |
| 2182 | 37100.37300.37600.38100.39100.40500.41500.65000 | **6th Floor** | 447d | 2026-01-19 | 2027-05-26 |  | start no earlier than 2026-01-19 | 7568473 |
| 2183 | 37100.37300.37600.38100.39100.40500.41500.65000.928700 | Block Work | 8d | 2026-01-20 | 2026-01-28 | 2167FS+0.25d |  | 118100 |
| 2184 | 37100.37300.37600.38100.39100.40500.41500.65000.928800 | Door Frame Fixing | 9d | 2026-01-31 | 2026-02-09 | 1916, 2168 |  | 118120 |
| 2185 | 37100.37300.37600.38100.39100.40500.41500.65000.928900 | Internal Plumbing Works | 8d | 2026-01-28 | 2026-02-05 | 2169, 2183 |  | 118130 |
| 2186 | 37100.37300.37600.38100.39100.40500.41500.65000.929000 | Waterproofing | 10d | 2026-02-14 | 2026-02-24 | 2170, 2185 |  | 118140 |
| 2187 | 37100.37300.37600.38100.39100.40500.41500.65000.929100 | Internal Plaster | 8d | 2026-01-19 | 2026-01-27 | 2171FS+0.25d |  | 118150 |
| 2188 | 37100.37300.37600.38100.39100.40500.41500.65000.929200 | IPS flooring work | 10d | 2026-02-24 | 2026-03-06 | 2172, 2184, 2186, 2187 |  | 118160 |
| 2189 | 37100.37300.37600.38100.39100.40500.41500.65000.929300 | Toilet dado work | 8d | 2026-02-24 | 2026-03-04 | 2173, 2186, 2187 |  | 118170 |
| 2190 | 37100.37300.37600.38100.39100.40500.41500.65000.929400 | Toilet flooring work | 8d | 2026-03-04 | 2026-03-12 | 2174, 2189 |  | 118180 |
| 2191 | 37100.37300.37600.38100.39100.40500.41500.65000.929500 | Living dinning flooring | 12d | 2026-02-18 | 2026-03-02 | 2175FS+0.25d |  | 118190 |
| 2192 | 37100.37300.37600.38100.39100.40500.41500.65000.929600 | Aluminium door-window fixing | 12d | 2026-03-09 | 2026-03-21 | 2176FS+0.25d |  | 118200 |
| 2193 | 37100.37300.37600.38100.39100.40500.41500.65000.929700 | Putty primer coat | 6d | 2026-03-02 | 2026-03-08 | 2177, 2191 |  | 118210 |
| 2194 | 37100.37300.37600.38100.39100.40500.41500.65000.929800 | Door shutter fixing | 8d | 2026-03-02 | 2026-03-10 | 2178, 2191 |  | 118220 |
| 2195 | 37100.37300.37600.38100.39100.40500.41500.65000.929900 | Electrical wiring work | 8d | 2027-05-02 | 2027-05-10 | 2179, 2194 |  | 118230 |
| 2196 | 37100.37300.37600.38100.39100.40500.41500.65000.930000 | Painting 1st coat | 8d | 2027-05-10 | 2027-05-18 | 2180, 2193, 2194, 2195 |  | 118240 |
| 2197 | 37100.37300.37600.38100.39100.40500.41500.65000.930100 | False ceiling | 8d | 2027-05-18 | 2027-05-26 | 2181, 2196 |  | 118250 |

| ID | WBS | Task | Duration | Start | Finish | Predecessors | Constraint | Unique_Task_ID |
| --- | --- | --- | --- | --- | --- | --- | --- | --- |
| 2198 | 37100.37300.37600.38100.39100.40500.41500.65100 | **7th Floor** | 446.75d | 2026-01-27 | 2027-06-03 |  | start no earlier than 2026-01-27 | 7568483 |
| 2199 | 37100.37300.37600.38100.39100.40500.41500.65100.930200 | Block Work | 8d | 2026-01-28 | 2026-02-05 | 2183FS+0.25d |  | 118260 |
| 2200 | 37100.37300.37600.38100.39100.40500.41500.65100.930300 | Door Frame Fixing | 9d | 2026-02-09 | 2026-02-18 | 2184, 2199 |  | 118280 |
| 2201 | 37100.37300.37600.38100.39100.40500.41500.65100.930400 | Internal Plumbing Works | 8d | 2026-02-05 | 2026-02-13 | 2185, 2199 |  | 118290 |
| 2202 | 37100.37300.37600.38100.39100.40500.41500.65100.930500 | Waterproofing | 10d | 2026-02-24 | 2026-03-06 | 2186, 2201 |  | 118300 |
| 2203 | 37100.37300.37600.38100.39100.40500.41500.65100.930600 | Internal Plaster | 8d | 2026-01-27 | 2026-02-04 | 2187FS+0.25d |  | 118310 |
| 2204 | 37100.37300.37600.38100.39100.40500.41500.65100.930700 | IPS flooring work | 10d | 2026-03-06 | 2026-03-16 | 2188, 2200, 2202, 2203 |  | 118320 |
| 2205 | 37100.37300.37600.38100.39100.40500.41500.65100.930800 | Toilet dado work | 8d | 2026-03-06 | 2026-03-14 | 2189, 2202, 2203 |  | 118330 |
| 2206 | 37100.37300.37600.38100.39100.40500.41500.65100.930900 | Toilet flooring work | 8d | 2026-03-14 | 2026-03-22 | 2190, 2205 |  | 118340 |
| 2207 | 37100.37300.37600.38100.39100.40500.41500.65100.931000 | Living dinning flooring | 12d | 2026-03-03 | 2026-03-14 | 2191FS+0.25d |  | 118350 |
| 2208 | 37100.37300.37600.38100.39100.40500.41500.65100.931100 | Aluminium door-window fixing | 12d | 2026-03-22 | 2026-04-02 | 2192FS+0.25d |  | 118360 |
| 2209 | 37100.37300.37600.38100.39100.40500.41500.65100.931200 | Putty primer coat | 6d | 2026-03-15 | 2026-03-20 | 2193, 2207 |  | 118370 |
| 2210 | 37100.37300.37600.38100.39100.40500.41500.65100.931300 | Door shutter fixing | 8d | 2026-03-15 | 2026-03-22 | 2194, 2207 |  | 118380 |
| 2211 | 37100.37300.37600.38100.39100.40500.41500.65100.931400 | Electrical wiring work | 8d | 2027-05-10 | 2027-05-18 | 2195, 2210 |  | 118390 |
| 2212 | 37100.37300.37600.38100.39100.40500.41500.65100.931500 | Painting 1st coat | 8d | 2027-05-18 | 2027-05-26 | 2196, 2209, 2210, 2211 |  | 118400 |
| 2213 | 37100.37300.37600.38100.39100.40500.41500.65100.931600 | False ceiling | 8d | 2027-05-26 | 2027-06-03 | 2197, 2212 |  | 118410 |
| 2214 | 37100.37300.37600.38100.39100.40500.41500.65200 | **8th Floor** | 446.5d | 2026-02-05 | 2027-06-11 |  | start no earlier than 2026-02-05 | 7568493 |
| 2215 | 37100.37300.37600.38100.39100.40500.41500.65200.931700 | Block Work | 8d | 2026-02-06 | 2026-02-13 | 2199FS+0.25d |  | 118420 |
| 2216 | 37100.37300.37600.38100.39100.40500.41500.65200.931800 | Door Frame Fixing | 9d | 2026-02-18 | 2026-02-27 | 2200, 2215 |  | 118440 |
| 2217 | 37100.37300.37600.38100.39100.40500.41500.65200.931900 | Internal Plumbing Works | 8d | 2026-02-14 | 2026-02-21 | 2201, 2215 |  | 118450 |
| 2218 | 37100.37300.37600.38100.39100.40500.41500.65200.932000 | Waterproofing | 10d | 2026-03-06 | 2026-03-16 | 2202, 2217 |  | 118460 |
| 2219 | 37100.37300.37600.38100.39100.40500.41500.65200.932100 | Internal Plaster | 8d | 2026-02-05 | 2026-02-12 | 2203FS+0.25d |  | 118470 |
| 2220 | 37100.37300.37600.38100.39100.40500.41500.65200.932200 | IPS flooring work | 10d | 2026-03-16 | 2026-03-26 | 2204, 2216, 2218, 2219 |  | 118480 |
| 2221 | 37100.37300.37600.38100.39100.40500.41500.65200.932300 | Toilet dado work | 8d | 2026-03-16 | 2026-03-24 | 2205, 2218, 2219 |  | 118490 |
| 2222 | 37100.37300.37600.38100.39100.40500.41500.65200.932400 | Toilet flooring work | 8d | 2026-03-24 | 2026-04-01 | 2206, 2221 |  | 118500 |
| 2223 | 37100.37300.37600.38100.39100.40500.41500.65200.932500 | Living dinning flooring | 12d | 2026-03-15 | 2026-03-27 | 2207FS+0.25d |  | 118510 |
| 2224 | 37100.37300.37600.38100.39100.40500.41500.65200.932600 | Aluminium door-window fixing | 12d | 2026-04-03 | 2026-04-15 | 2208FS+0.25d |  | 118520 |
| 2225 | 37100.37300.37600.38100.39100.40500.41500.65200.932700 | Putty primer coat | 6d | 2026-03-27 | 2026-04-02 | 2209, 2223 |  | 118530 |
| 2226 | 37100.37300.37600.38100.39100.40500.41500.65200.932800 | Door shutter fixing | 8d | 2026-03-27 | 2026-04-04 | 2210, 2223 |  | 118540 |
| 2227 | 37100.37300.37600.38100.39100.40500.41500.65200.932900 | Electrical wiring work | 8d | 2027-05-18 | 2027-05-26 | 2211, 2226 |  | 118550 |
| 2228 | 37100.37300.37600.38100.39100.40500.41500.65200.933000 | Painting 1st coat | 8d | 2027-05-26 | 2027-06-03 | 2212, 2225, 2226, 2227 |  | 118560 |
| 2229 | 37100.37300.37600.38100.39100.40500.41500.65200.933100 | False ceiling | 8d | 2027-06-03 | 2027-06-11 | 2213, 2228 |  | 118570 |

| ID | WBS | Task | Duration | Start | Finish | Predecessors | Constraint | Unique_Task_ID |
| --- | --- | --- | --- | --- | --- | --- | --- | --- |
| 2230 | 37100.37300.37600.38100.39100.40500.41500.65300 | **9th Floor** | 446.25d | 2026-02-13 | 2027-06-19 |  | start no earlier than 2026-02-13 | 7568503 |
| 2231 | 37100.37300.37600.38100.39100.40500.41500.65300.933200 | Block Work | 8d | 2026-02-14 | 2026-02-22 | 2215FS+0.25d |  | 118580 |
| 2232 | 37100.37300.37600.38100.39100.40500.41500.65300.933300 | Door Frame Fixing | 9d | 2026-02-27 | 2026-03-08 | 2216, 2231 |  | 118600 |
| 2233 | 37100.37300.37600.38100.39100.40500.41500.65300.933400 | Internal Plumbing Works | 8d | 2026-02-22 | 2026-03-02 | 2217, 2231 |  | 118610 |
| 2234 | 37100.37300.37600.38100.39100.40500.41500.65300.933500 | Waterproofing | 10d | 2026-03-16 | 2026-03-26 | 2218, 2233 |  | 118620 |
| 2235 | 37100.37300.37600.38100.39100.40500.41500.65300.933600 | Internal Plaster | 8d | 2026-02-13 | 2026-02-21 | 2219FS+0.25d |  | 118630 |
| 2236 | 37100.37300.37600.38100.39100.40500.41500.65300.933700 | IPS flooring work | 10d | 2026-03-26 | 2026-04-05 | 2220, 2232, 2234, 2235 |  | 118640 |
| 2237 | 37100.37300.37600.38100.39100.40500.41500.65300.933800 | Toilet dado work | 8d | 2026-03-26 | 2026-04-03 | 2221, 2234, 2235 |  | 118650 |
| 2238 | 37100.37300.37600.38100.39100.40500.41500.65300.933900 | Toilet flooring work | 8d | 2026-04-03 | 2026-04-11 | 2222, 2237 |  | 118660 |
| 2239 | 37100.37300.37600.38100.39100.40500.41500.65300.934000 | Living dinning flooring | 12d | 2026-03-27 | 2026-04-08 | 2223FS+0.25d |  | 118670 |
| 2240 | 37100.37300.37600.38100.39100.40500.41500.65300.934100 | Aluminium door-window fixing | 12d | 2026-04-15 | 2026-04-27 | 2224FS+0.25d |  | 118680 |
| 2241 | 37100.37300.37600.38100.39100.40500.41500.65300.934200 | Putty primer coat | 6d | 2026-04-08 | 2026-04-14 | 2225, 2239 |  | 118690 |
| 2242 | 37100.37300.37600.38100.39100.40500.41500.65300.934300 | Door shutter fixing | 8d | 2026-04-08 | 2026-04-16 | 2226, 2239 |  | 118700 |
| 2243 | 37100.37300.37600.38100.39100.40500.41500.65300.934400 | Electrical wiring work | 8d | 2027-05-26 | 2027-06-03 | 2227, 2242 |  | 118710 |
| 2244 | 37100.37300.37600.38100.39100.40500.41500.65300.934500 | Painting 1st coat | 8d | 2027-06-03 | 2027-06-11 | 2228, 2241, 2242, 2243 |  | 118720 |
| 2245 | 37100.37300.37600.38100.39100.40500.41500.65300.934600 | False ceiling | 8d | 2027-06-11 | 2027-06-19 | 2229, 2244 |  | 118730 |
| 2246 | 37100.37300.37600.38100.39100.40500.41500.65400 | **10th Floor** | 446d | 2026-02-21 | 2027-06-27 |  | start no earlier than 2026-02-21 | 7568513 |
| 2247 | 37100.37300.37600.38100.39100.40500.41500.65400.934700 | Block Work | 8d | 2026-02-22 | 2026-03-02 | 2231FS+0.25d |  | 118740 |
| 2248 | 37100.37300.37600.38100.39100.40500.41500.65400.934800 | Door Frame Fixing | 9d | 2026-03-08 | 2026-03-17 | 2232, 2247 |  | 118760 |
| 2249 | 37100.37300.37600.38100.39100.40500.41500.65400.934900 | Internal Plumbing Works | 8d | 2026-03-02 | 2026-03-10 | 2233, 2247 |  | 118770 |
| 2250 | 37100.37300.37600.38100.39100.40500.41500.65400.935000 | Waterproofing | 10d | 2026-03-26 | 2026-04-05 | 2234, 2249 |  | 118780 |
| 2251 | 37100.37300.37600.38100.39100.40500.41500.65400.935100 | Internal Plaster | 8d | 2026-02-21 | 2026-03-01 | 2235FS+0.25d |  | 118790 |
| 2252 | 37100.37300.37600.38100.39100.40500.41500.65400.935200 | IPS flooring work | 10d | 2026-04-05 | 2026-04-15 | 2236, 2248, 2250, 2251 |  | 118800 |
| 2253 | 37100.37300.37600.38100.39100.40500.41500.65400.935300 | Toilet dado work | 8d | 2026-04-05 | 2026-04-13 | 2237, 2250, 2251 |  | 118810 |
| 2254 | 37100.37300.37600.38100.39100.40500.41500.65400.935400 | Toilet flooring work | 8d | 2026-04-13 | 2026-04-21 | 2238, 2253 |  | 118820 |
| 2255 | 37100.37300.37600.38100.39100.40500.41500.65400.935500 | Living dinning flooring | 12d | 2026-04-08 | 2026-04-20 | 2239FS+0.25d |  | 118830 |
| 2256 | 37100.37300.37600.38100.39100.40500.41500.65400.935600 | Aluminium door-window fixing | 12d | 2026-04-27 | 2026-05-09 | 2240FS+0.25d |  | 118840 |
| 2257 | 37100.37300.37600.38100.39100.40500.41500.65400.935700 | Putty primer coat | 6d | 2026-04-20 | 2026-04-26 | 2241, 2255 |  | 118850 |
| 2258 | 37100.37300.37600.38100.39100.40500.41500.65400.935800 | Door shutter fixing | 8d | 2026-04-20 | 2026-04-28 | 2242, 2255 |  | 118860 |
| 2259 | 37100.37300.37600.38100.39100.40500.41500.65400.935900 | Electrical wiring work | 8d | 2027-06-03 | 2027-06-11 | 2243, 2258 |  | 118870 |
| 2260 | 37100.37300.37600.38100.39100.40500.41500.65400.936000 | Painting 1st coat | 8d | 2027-06-11 | 2027-06-19 | 2244, 2257, 2258, 2259 |  | 118880 |
| 2261 | 37100.37300.37600.38100.39100.40500.41500.65400.936100 | False ceiling | 8d | 2027-06-19 | 2027-06-27 | 2245, 2260 |  | 118890 |

| ID | WBS | Task | Duration | Start | Finish | Predecessors | Constraint | Unique_Task_ID |
| --- | --- | --- | --- | --- | --- | --- | --- | --- |
| 2262 | 37100.37300.37600.38100.39100.40500.41500.65500 | **11th Floor** | 444.75d | 2026-03-02 | 2027-07-05 |  | start no earlier than 2026-03-02 | 7568523 |
| 2263 | 37100.37300.37600.38100.39100.40500.41500.65500.936200 | Block Work | 8d | 2026-03-02 | 2026-03-10 | 2247FS+0.25d |  | 118900 |
| 2264 | 37100.37300.37600.38100.39100.40500.41500.65500.936300 | Door Frame Fixing | 9d | 2026-03-17 | 2026-03-26 | 2248, 2263 |  | 118920 |
| 2265 | 37100.37300.37600.38100.39100.40500.41500.65500.936400 | Internal Plumbing Works | 8d | 2026-03-10 | 2026-03-18 | 2249, 2263 |  | 118930 |
| 2266 | 37100.37300.37600.38100.39100.40500.41500.65500.936500 | Waterproofing | 10d | 2026-04-05 | 2026-04-15 | 2250, 2265 |  | 118940 |
| 2267 | 37100.37300.37600.38100.39100.40500.41500.65500.936600 | Internal Plaster | 8d | 2026-03-11 | 2026-03-18 | 2251FS+0.25d, 2263FS+0.25d |  | 118950 |
| 2268 | 37100.37300.37600.38100.39100.40500.41500.65500.936700 | IPS flooring work | 10d | 2026-04-15 | 2026-04-25 | 2252, 2264, 2265, 2266 |  | 118960 |
| 2269 | 37100.37300.37600.38100.39100.40500.41500.65500.936800 | Toilet dado work | 8d | 2026-04-15 | 2026-04-23 | 2253, 2266, 2267 |  | 118970 |
| 2270 | 37100.37300.37600.38100.39100.40500.41500.65500.936900 | Toilet flooring work | 8d | 2026-04-23 | 2026-05-01 | 2254, 2269 |  | 118980 |
| 2271 | 37100.37300.37600.38100.39100.40500.41500.65500.937000 | Living dinning flooring | 12d | 2026-04-21 | 2026-05-02 | 2255FS+0.25d |  | 118990 |
| 2272 | 37100.37300.37600.38100.39100.40500.41500.65500.937100 | Aluminium door-window fixing | 12d | 2026-05-10 | 2026-05-21 | 2256FS+0.25d |  | 119000 |
| 2273 | 37100.37300.37600.38100.39100.40500.41500.65500.937200 | Putty primer coat | 6d | 2026-05-03 | 2026-05-08 | 2257, 2271 |  | 119010 |
| 2274 | 37100.37300.37600.38100.39100.40500.41500.65500.937300 | Door shutter fixing | 8d | 2026-05-03 | 2026-05-10 | 2258, 2271 |  | 119020 |
| 2275 | 37100.37300.37600.38100.39100.40500.41500.65500.937400 | Electrical wiring work | 8d | 2027-06-11 | 2027-06-19 | 2259, 2274 |  | 119030 |
| 2276 | 37100.37300.37600.38100.39100.40500.41500.65500.937500 | Painting 1st coat | 8d | 2027-06-19 | 2027-06-27 | 2260, 2273, 2274, 2275 |  | 119040 |
| 2277 | 37100.37300.37600.38100.39100.40500.41500.65500.937600 | False ceiling | 8d | 2027-06-27 | 2027-07-05 | 2261, 2276 |  | 119050 |
| 2278 | 37100.37300.37600.38100.39100.40500.41500.65600 | **12th Floor** | 444.5d | 2026-03-11 | 2027-07-13 |  | start no earlier than 2026-03-11 | 7568533 |
| 2279 | 37100.37300.37600.38100.39100.40500.41500.65600.937700 | Block Work | 8d | 2026-03-11 | 2026-03-18 | 2263FS+0.25d |  | 119060 |
| 2280 | 37100.37300.37600.38100.39100.40500.41500.65600.937800 | Door Frame Fixing | 9d | 2026-03-26 | 2026-04-04 | 2264, 2279 |  | 119080 |
| 2281 | 37100.37300.37600.38100.39100.40500.41500.65600.937900 | Internal Plumbing Works | 8d | 2026-03-19 | 2026-03-26 | 2265, 2279 |  | 119090 |
| 2282 | 37100.37300.37600.38100.39100.40500.41500.65600.938000 | Waterproofing | 10d | 2026-04-15 | 2026-04-25 | 2266, 2281 |  | 119100 |
| 2283 | 37100.37300.37600.38100.39100.40500.41500.65600.938100 | Internal Plaster | 8d | 2026-03-19 | 2026-03-27 | 2267FS+0.25d, 2279FS+0.25d |  | 119110 |
| 2284 | 37100.37300.37600.38100.39100.40500.41500.65600.938200 | IPS flooring work | 10d | 2026-04-25 | 2026-05-05 | 2268, 2280, 2281, 2282 |  | 119120 |
| 2285 | 37100.37300.37600.38100.39100.40500.41500.65600.938300 | Toilet dado work | 8d | 2026-04-25 | 2026-05-03 | 2269, 2282, 2283 |  | 119130 |
| 2286 | 37100.37300.37600.38100.39100.40500.41500.65600.938400 | Toilet flooring work | 8d | 2026-05-03 | 2026-05-11 | 2270, 2285 |  | 119140 |
| 2287 | 37100.37300.37600.38100.39100.40500.41500.65600.938500 | Living dinning flooring | 12d | 2026-05-11 | 2026-05-23 | 2271, 2280, 2286 |  | 119150 |
| 2288 | 37100.37300.37600.38100.39100.40500.41500.65600.938600 | Aluminium door-window fixing | 12d | 2026-05-23 | 2026-06-04 | 2272, 2284, 2287 |  | 119160 |
| 2289 | 37100.37300.37600.38100.39100.40500.41500.65600.938700 | Putty primer coat | 6d | 2026-05-23 | 2026-05-29 | 2273, 2287 |  | 119170 |
| 2290 | 37100.37300.37600.38100.39100.40500.41500.65600.938800 | Door shutter fixing | 8d | 2026-05-23 | 2026-05-31 | 2274, 2287 |  | 119180 |
| 2291 | 37100.37300.37600.38100.39100.40500.41500.65600.938900 | Electrical wiring work | 8d | 2027-06-19 | 2027-06-27 | 2275, 2290 |  | 119190 |
| 2292 | 37100.37300.37600.38100.39100.40500.41500.65600.939000 | Painting 1st coat | 8d | 2027-06-27 | 2027-07-05 | 2276, 2289, 2290, 2291 |  | 119200 |
| 2293 | 37100.37300.37600.38100.39100.40500.41500.65600.939100 | False ceiling | 8d | 2027-07-05 | 2027-07-13 | 2277, 2292 |  | 119210 |

| ID | WBS | Task | Duration | Start | Finish | Predecessors | Constraint | Unique_Task_ID |
| --- | --- | --- | --- | --- | --- | --- | --- | --- |
| 2294 | 37100.37300.37600.38100.39100.40500.41500.65700 | **13th Floor** | 444.25d | 2026-03-19 | 2027-07-21 |  | start no earlier than 2026-03-19 | 7568543 |
| 2295 | 37100.37300.37600.38100.39100.40500.41500.65700.939200 | Block Work | 8d | 2026-03-19 | 2026-03-27 | 2279FS+0.25d |  | 119220 |
| 2296 | 37100.37300.37600.38100.39100.40500.41500.65700.939300 | Door Frame Fixing | 9d | 2026-04-04 | 2026-04-13 | 2280, 2295 |  | 119240 |
| 2297 | 37100.37300.37600.38100.39100.40500.41500.65700.939400 | Internal Plumbing Works | 8d | 2026-03-27 | 2026-04-04 | 2281, 2295 |  | 119250 |
| 2298 | 37100.37300.37600.38100.39100.40500.41500.65700.939500 | Waterproofing | 10d | 2026-04-25 | 2026-05-05 | 2282, 2297 |  | 119260 |
| 2299 | 37100.37300.37600.38100.39100.40500.41500.65700.939600 | Internal Plaster | 8d | 2026-03-27 | 2026-04-04 | 2283FS+0.25d, 2295FS+0.25d |  | 119270 |
| 2300 | 37100.37300.37600.38100.39100.40500.41500.65700.939700 | IPS flooring work | 10d | 2026-05-05 | 2026-05-15 | 2284, 2296, 2298, 2299 |  | 119280 |
| 2301 | 37100.37300.37600.38100.39100.40500.41500.65700.939800 | Toilet dado work | 8d | 2026-05-05 | 2026-05-13 | 2285, 2298, 2299 |  | 119290 |
| 2302 | 37100.37300.37600.38100.39100.40500.41500.65700.939900 | Toilet flooring work | 8d | 2026-05-13 | 2026-05-21 | 2286, 2301 |  | 119300 |
| 2303 | 37100.37300.37600.38100.39100.40500.41500.65700.940000 | Living dinning flooring | 12d | 2026-05-23 | 2026-06-04 | 2287FS+0.25d |  | 119310 |
| 2304 | 37100.37300.37600.38100.39100.40500.41500.65700.940100 | Aluminium door-window fixing | 12d | 2026-06-04 | 2026-06-16 | 2288FS+0.25d |  | 119320 |
| 2305 | 37100.37300.37600.38100.39100.40500.41500.65700.940200 | Putty primer coat | 6d | 2026-06-04 | 2026-06-10 | 2289, 2303 |  | 119330 |
| 2306 | 37100.37300.37600.38100.39100.40500.41500.65700.940300 | Door shutter fixing | 8d | 2026-06-04 | 2026-06-12 | 2290, 2303 |  | 119340 |
| 2307 | 37100.37300.37600.38100.39100.40500.41500.65700.940400 | Electrical wiring work | 8d | 2027-06-27 | 2027-07-05 | 2291, 2306 |  | 119350 |
| 2308 | 37100.37300.37600.38100.39100.40500.41500.65700.940500 | Painting 1st coat | 8d | 2027-07-05 | 2027-07-13 | 2292, 2305, 2306, 2307 |  | 119360 |
| 2309 | 37100.37300.37600.38100.39100.40500.41500.65700.940600 | False ceiling | 8d | 2027-07-13 | 2027-07-21 | 2293, 2308 |  | 119370 |
| 2310 | 37100.37300.37600.38100.39100.40500.41500.65800 | **14th Floor** | 442d | 2026-03-27 | 2027-07-27 |  | start no earlier than 2026-03-27 | 7568553 |
| 2311 | 37100.37300.37600.38100.39100.40500.41500.65800.940700 | Block Work | 5d | 2026-03-27 | 2026-04-01 | 2295FS+0.25d |  | 119380 |
| 2312 | 37100.37300.37600.38100.39100.40500.41500.65800.940800 | Door Frame Fixing | 9d | 2026-04-13 | 2026-04-22 | 2296, 2311 |  | 119400 |
| 2313 | 37100.37300.37600.38100.39100.40500.41500.65800.940900 | Internal Plumbing Works | 15d | 2026-04-04 | 2026-04-19 | 2297, 2311 |  | 119410 |
| 2314 | 37100.37300.37600.38100.39100.40500.41500.65800.941000 | Waterproofing | 15d | 2026-05-05 | 2026-05-20 | 2298, 2313 |  | 119420 |
| 2315 | 37100.37300.37600.38100.39100.40500.41500.65800.941100 | Internal Plaster | 8d | 2026-04-04 | 2026-04-12 | 2299FS+0.25d |  | 119430 |
| 2316 | 37100.37300.37600.38100.39100.40500.41500.65800.941200 | IPS flooring work | 12d | 2026-05-20 | 2026-06-01 | 2300, 2312, 2313, 2314 |  | 119440 |
| 2317 | 37100.37300.37600.38100.39100.40500.41500.65800.941300 | Toilet dado work | 12d | 2026-05-20 | 2026-06-01 | 2301, 2314, 2315 |  | 119450 |
| 2318 | 37100.37300.37600.38100.39100.40500.41500.65800.941400 | Toilet flooring work | 12d | 2026-06-01 | 2026-06-13 | 2302, 2317 |  | 119460 |
| 2319 | 37100.37300.37600.38100.39100.40500.41500.65800.941500 | Living dinning flooring | 7d | 2026-06-04 | 2026-06-11 | 2303FS+0.25d |  | 119470 |
| 2320 | 37100.37300.37600.38100.39100.40500.41500.65800.941600 | Aluminium door-window fixing | 18d | 2026-06-16 | 2026-07-04 | 2304FS+0.25d |  | 119480 |
| 2321 | 37100.37300.37600.38100.39100.40500.41500.65800.941700 | Putty primer coat | 6d | 2026-06-11 | 2026-06-17 | 2305, 2319 |  | 119490 |
| 2322 | 37100.37300.37600.38100.39100.40500.41500.65800.941800 | Door shutter fixing | 6d | 2026-06-12 | 2026-06-18 | 2306, 2319 |  | 119500 |
| 2323 | 37100.37300.37600.38100.39100.40500.41500.65800.941900 | Electrical wiring work | 6d | 2027-07-05 | 2027-07-11 | 2307, 2322 |  | 119510 |
| 2324 | 37100.37300.37600.38100.39100.40500.41500.65800.942000 | Painting 1st coat | 6d | 2027-07-13 | 2027-07-19 | 2308, 2321, 2322, 2323 |  | 119520 |
| 2325 | 37100.37300.37600.38100.39100.40500.41500.65800.942100 | False ceiling | 6d | 2027-07-21 | 2027-07-27 | 2309, 2324 |  | 119530 |

| ID | WBS | Task | Duration | Start | Finish | Predecessors | Constraint | Unique_Task_ID |
| --- | --- | --- | --- | --- | --- | --- | --- | --- |
| 2326 | 37100.37300.37600.38100.39100.40500.41500.65900 | **15th Floor** | 454.56d | 2026-04-01 | 2027-08-14 |  | start no earlier than 2026-04-01 | 7568563 |
| 2327 | 37100.37300.37600.38100.39100.40500.41500.65900.942200 | Block Work | 5d | 2026-04-01 | 2026-04-06 | 2311FS+0.25d |  | 119540 |
| 2328 | 37100.37300.37600.38100.39100.40500.41500.65900.942300 | Door Frame Fixing | 9d | 2026-04-22 | 2026-05-01 | 2312, 2327 |  | 119560 |
| 2329 | 37100.37300.37600.38100.39100.40500.41500.65900.942400 | Internal Plumbing Works | 15d | 2026-04-19 | 2026-05-04 | 2313, 2327 |  | 119570 |
| 2330 | 37100.37300.37600.38100.39100.40500.41500.65900.942500 | Waterproofing | 15d | 2026-05-20 | 2026-06-04 | 2314, 2329 |  | 119580 |
| 2331 | 37100.37300.37600.38100.39100.40500.41500.65900.942600 | Internal Plaster | 8d | 2026-04-13 | 2026-04-20 | 2315FS+0.25d |  | 119590 |
| 2332 | 37100.37300.37600.38100.39100.40500.41500.65900.942700 | IPS flooring work | 12d | 2026-06-04 | 2026-06-16 | 2316, 2328, 2329, 2330 |  | 119600 |
| 2333 | 37100.37300.37600.38100.39100.40500.41500.65900.942800 | Toilet dado work | 12d | 2026-06-04 | 2026-06-16 | 2317, 2330, 2331 |  | 119610 |
| 2334 | 37100.37300.37600.38100.39100.40500.41500.65900.942900 | Toilet flooring work | 12d | 2026-06-16 | 2026-06-28 | 2318, 2333 |  | 119620 |
| 2335 | 37100.37300.37600.38100.39100.40500.41500.65900.943000 | Living dinning flooring | 7d | 2026-06-12 | 2026-06-18 | 2319FS+0.25d |  | 119630 |
| 2336 | 37100.37300.37600.38100.39100.40500.41500.65900.943100 | Aluminium door-window fixing | 18d | 2026-07-04 | 2026-07-22 | 2320, 2332, 2335 |  | 119640 |
| 2337 | 37100.37300.37600.38100.39100.40500.41500.65900.943200 | Putty primer coat | 6d | 2026-06-19 | 2026-06-24 | 2321, 2335 |  | 119650 |
| 2338 | 37100.37300.37600.38100.39100.40500.41500.65900.943300 | Door shutter fixing | 7.94d | 2026-06-19 | 2026-06-26 | 2322, 2335 |  | 119660 |
| 2339 | 37100.37300.37600.38100.39100.40500.41500.65900.943400 | Electrical wiring work | 11.94d | 2027-07-11 | 2027-07-23 | 2323, 2338 |  | 119670 |
| 2340 | 37100.37300.37600.38100.39100.40500.41500.65900.943500 | Painting 1st coat | 11.94d | 2027-07-23 | 2027-08-04 | 2324, 2337, 2338, 2339 |  | 119680 |
| 2341 | 37100.37300.37600.38100.39100.40500.41500.65900.943600 | False ceiling | 9.94d | 2027-08-04 | 2027-08-14 | 2325, 2340 |  | 119690 |
| 2342 | 37100.37300.37600.38100.39100.40500.41500.66000 | **16th Floor** | 461.25d | 2026-04-07 | 2027-08-26 |  | start no earlier than 2026-04-07 | 7568573 |
| 2343 | 37100.37300.37600.38100.39100.40500.41500.66000.943700 | Block Work | 10d | 2026-04-07 | 2026-04-16 | 2327FS+0.25d |  | 119700 |
| 2344 | 37100.37300.37600.38100.39100.40500.41500.66000.943800 | Door Frame Fixing | 9d | 2026-05-01 | 2026-05-10 | 2328, 2343 |  | 119720 |
| 2345 | 37100.37300.37600.38100.39100.40500.41500.66000.943900 | Internal Plumbing Works | 15d | 2026-05-04 | 2026-05-19 | 2329, 2343 |  | 119730 |
| 2346 | 37100.37300.37600.38100.39100.40500.41500.66000.944000 | Waterproofing | 15d | 2026-06-04 | 2026-06-19 | 2330, 2345 |  | 119740 |
| 2347 | 37100.37300.37600.38100.39100.40500.41500.66000.944100 | Internal Plaster | 12d | 2026-04-21 | 2026-05-03 | 2331FS+0.25d |  | 119750 |
| 2348 | 37100.37300.37600.38100.39100.40500.41500.66000.944200 | IPS flooring work | 12d | 2026-06-19 | 2026-07-01 | 2332, 2344, 2345, 2346 |  | 119760 |
| 2349 | 37100.37300.37600.38100.39100.40500.41500.66000.944300 | Toilet dado work | 12d | 2026-06-19 | 2026-07-01 | 2333, 2346, 2347 |  | 119770 |
| 2350 | 37100.37300.37600.38100.39100.40500.41500.66000.944400 | Toilet flooring work | 12d | 2026-07-01 | 2026-07-13 | 2334, 2349 |  | 119780 |
| 2351 | 37100.37300.37600.38100.39100.40500.41500.66000.944500 | Living dinning flooring | 7d | 2026-06-19 | 2026-06-26 | 2335FS+0.25d |  | 119790 |
| 2352 | 37100.37300.37600.38100.39100.40500.41500.66000.944600 | Aluminium door-window fixing | 18d | 2026-07-23 | 2026-08-09 | 2336FS+0.25d |  | 119800 |
| 2353 | 37100.37300.37600.38100.39100.40500.41500.66000.944700 | Putty primer coat | 5.94d | 2026-06-26 | 2026-07-02 | 2337, 2351 |  | 119810 |
| 2354 | 37100.37300.37600.38100.39100.40500.41500.66000.944800 | Door shutter fixing | 7.94d | 2026-06-26 | 2026-07-04 | 2338, 2351 |  | 119820 |
| 2355 | 37100.37300.37600.38100.39100.40500.41500.66000.944900 | Electrical wiring work | 11.94d | 2027-07-23 | 2027-08-04 | 2339, 2354 |  | 119830 |
| 2356 | 37100.37300.37600.38100.39100.40500.41500.66000.945000 | Painting 1st coat | 11.94d | 2027-08-04 | 2027-08-16 | 2340, 2353, 2354, 2355 |  | 119840 |
| 2357 | 37100.37300.37600.38100.39100.40500.41500.66000.945100 | False ceiling | 9.94d | 2027-08-16 | 2027-08-26 | 2341, 2356 |  | 119850 |

| ID | WBS | Task | Duration | Start | Finish | Predecessors | Constraint | Unique_Task_ID |
| --- | --- | --- | --- | --- | --- | --- | --- | --- |
| 2358 | 37100.37300.37600.38100.39100.40500.41500.66100 | **17th Floor** | 462.94d | 2026-04-17 | 2027-09-07 |  | start no earlier than 2026-04-17 | 7568583 |
| 2359 | 37100.37300.37600.38100.39100.40500.41500.66100.945200 | Block Work | 12d | 2026-04-17 | 2026-04-29 | 2343FS+0.25d |  | 119860 |
| 2360 | 37100.37300.37600.38100.39100.40500.41500.66100.945300 | Door Frame Fixing | 9d | 2026-05-10 | 2026-05-19 | 2344, 2359 |  | 119880 |
| 2361 | 37100.37300.37600.38100.39100.40500.41500.66100.945400 | Internal Plumbing Works | 15d | 2026-05-19 | 2026-06-03 | 2345, 2359 |  | 119890 |
| 2362 | 37100.37300.37600.38100.39100.40500.41500.66100.945500 | Waterproofing | 15d | 2026-06-19 | 2026-07-04 | 2346, 2361 |  | 119900 |
| 2363 | 37100.37300.37600.38100.39100.40500.41500.66100.945600 | Internal Plaster | 12d | 2026-05-03 | 2026-05-15 | 2347FS+0.25d |  | 119910 |
| 2364 | 37100.37300.37600.38100.39100.40500.41500.66100.945700 | IPS flooring work | 12d | 2026-07-04 | 2026-07-16 | 2348, 2360, 2361, 2362 |  | 119920 |
| 2365 | 37100.37300.37600.38100.39100.40500.41500.66100.945800 | Toilet dado work | 12d | 2026-07-04 | 2026-07-16 | 2349, 2362, 2363 |  | 119930 |
| 2366 | 37100.37300.37600.38100.39100.40500.41500.66100.945900 | Toilet flooring work | 12d | 2026-07-16 | 2026-07-28 | 2350, 2365 |  | 119940 |
| 2367 | 37100.37300.37600.38100.39100.40500.41500.66100.946000 | Living dinning flooring | 7d | 2026-06-26 | 2026-07-03 | 2351FS+0.25d |  | 119950 |
| 2368 | 37100.37300.37600.38100.39100.40500.41500.66100.946100 | Aluminium door-window fixing | 18d | 2026-08-10 | 2026-08-27 | 2352, 2364, 2367 |  | 119960 |
| 2369 | 37100.37300.37600.38100.39100.40500.41500.66100.946200 | Putty primer coat | 5.94d | 2026-07-03 | 2026-07-09 | 2353, 2367 |  | 119970 |
| 2370 | 37100.37300.37600.38100.39100.40500.41500.66100.946300 | Door shutter fixing | 7.94d | 2026-07-04 | 2026-07-12 | 2354, 2367 |  | 119980 |
| 2371 | 37100.37300.37600.38100.39100.40500.41500.66100.946400 | Electrical wiring work | 11.94d | 2027-08-04 | 2027-08-16 | 2355, 2370 |  | 119990 |
| 2372 | 37100.37300.37600.38100.39100.40500.41500.66100.946500 | Painting 1st coat | 11.94d | 2027-08-16 | 2027-08-28 | 2356, 2369, 2370, 2371 |  | 120000 |
| 2373 | 37100.37300.37600.38100.39100.40500.41500.66100.946600 | False ceiling | 9.94d | 2027-08-28 | 2027-09-07 | 2357, 2372 |  | 120010 |
| 2374 | 37100.37300.37600.38100.39100.40500.41500.66200 | **18th Floor** | 462.62d | 2026-04-29 | 2027-09-19 |  | start no earlier than 2026-04-29 | 7568593 |
| 2375 | 37100.37300.37600.38100.39100.40500.41500.66200.946700 | Block Work | 12d | 2026-04-29 | 2026-05-11 | 2359FS+0.25d |  | 120020 |
| 2376 | 37100.37300.37600.38100.39100.40500.41500.66200.946800 | Door Frame Fixing | 9d | 2026-05-19 | 2026-05-28 | 2360, 2375 |  | 120050 |
| 2377 | 37100.37300.37600.38100.39100.40500.41500.66200.946900 | Internal Plumbing Works | 15d | 2026-06-03 | 2026-06-18 | 2361, 2375 |  | 120060 |
| 2378 | 37100.37300.37600.38100.39100.40500.41500.66200.947000 | Waterproofing | 15d | 2026-07-04 | 2026-07-19 | 2362, 2377 |  | 120070 |
| 2379 | 37100.37300.37600.38100.39100.40500.41500.66200.947100 | Internal Plaster | 12d | 2026-05-15 | 2026-05-27 | 2363FS+0.25d |  | 120080 |
| 2380 | 37100.37300.37600.38100.39100.40500.41500.66200.947200 | IPS flooring work | 12d | 2026-07-19 | 2026-07-31 | 2364, 2376, 2377, 2378 |  | 120090 |
| 2381 | 37100.37300.37600.38100.39100.40500.41500.66200.947300 | Toilet dado work | 12d | 2026-07-19 | 2026-07-31 | 2365, 2378, 2379 |  | 120100 |
| 2382 | 37100.37300.37600.38100.39100.40500.41500.66200.947400 | Toilet flooring work | 12d | 2026-07-31 | 2026-08-12 | 2366, 2381 |  | 120110 |
| 2383 | 37100.37300.37600.38100.39100.40500.41500.66200.947500 | Living dinning flooring | 7d | 2026-07-03 | 2026-07-10 | 2367FS+0.25d |  | 120120 |
| 2384 | 37100.37300.37600.38100.39100.40500.41500.66200.947600 | Aluminium door-window fixing | 18d | 2026-08-28 | 2026-09-14 | 2368, 2380, 2383 |  | 120130 |
| 2385 | 37100.37300.37600.38100.39100.40500.41500.66200.947700 | Putty primer coat | 5.94d | 2026-07-10 | 2026-07-16 | 2369, 2383 |  | 120140 |
| 2386 | 37100.37300.37600.38100.39100.40500.41500.66200.947800 | Door shutter fixing | 7.94d | 2026-07-12 | 2026-07-20 | 2370, 2383 |  | 120150 |
| 2387 | 37100.37300.37600.38100.39100.40500.41500.66200.947900 | Electrical wiring work | 11.94d | 2027-08-16 | 2027-08-28 | 2371, 2386 |  | 120160 |
| 2388 | 37100.37300.37600.38100.39100.40500.41500.66200.948000 | Painting 1st coat | 11.94d | 2027-08-28 | 2027-09-09 | 2372, 2385, 2386, 2387 |  | 120170 |
| 2389 | 37100.37300.37600.38100.39100.40500.41500.66200.948100 | False ceiling | 9.94d | 2027-09-09 | 2027-09-19 | 2373, 2388 |  | 120180 |

| ID | WBS | Task | Duration | Start | Finish | Predecessors | Constraint | Unique_Task_ID |
| --- | --- | --- | --- | --- | --- | --- | --- | --- |
| 2390 | 37100.37300.37600.38100.39100.40500.41500.66300 | **19th Floor** | 462.31d | 2026-05-11 | 2027-10-01 |  | start no earlier than 2026-05-11 | 7568603 |
| 2391 | 37100.37300.37600.38100.39100.40500.41500.66300.948200 | Block Work | 12d | 2026-05-11 | 2026-05-23 | 2375FS+0.25d |  | 120190 |
| 2392 | 37100.37300.37600.38100.39100.40500.41500.66300.948300 | Door Frame Fixing | 9d | 2026-05-28 | 2026-06-06 | 2376, 2391 |  | 120210 |
| 2393 | 37100.37300.37600.38100.39100.40500.41500.66300.948400 | Internal Plumbing Works | 15d | 2026-06-18 | 2026-07-03 | 2377, 2391 |  | 120220 |
| 2394 | 37100.37300.37600.38100.39100.40500.41500.66300.948500 | Waterproofing | 15d | 2026-07-19 | 2026-08-03 | 2378, 2393 |  | 120230 |
| 2395 | 37100.37300.37600.38100.39100.40500.41500.66300.948600 | Internal Plaster | 12d | 2026-05-28 | 2026-06-08 | 2379FS+0.25d |  | 120240 |
| 2396 | 37100.37300.37600.38100.39100.40500.41500.66300.948700 | IPS flooring work | 12d | 2026-08-03 | 2026-08-15 | 2380, 2392, 2394, 2395 |  | 120250 |
| 2397 | 37100.37300.37600.38100.39100.40500.41500.66300.948800 | Toilet dado work | 12d | 2026-08-03 | 2026-08-15 | 2381, 2394, 2395 |  | 120260 |
| 2398 | 37100.37300.37600.38100.39100.40500.41500.66300.948900 | Toilet flooring work | 12d | 2026-08-15 | 2026-08-27 | 2382, 2397 |  | 120270 |
| 2399 | 37100.37300.37600.38100.39100.40500.41500.66300.949000 | Living dinning flooring | 7d | 2026-08-27 | 2026-09-03 | 2383, 2392, 2398 |  | 120280 |
| 2400 | 37100.37300.37600.38100.39100.40500.41500.66300.949100 | Aluminium door-window fixing | 18d | 2026-09-15 | 2026-10-02 | 2384, 2396, 2399 |  | 120290 |
| 2401 | 37100.37300.37600.38100.39100.40500.41500.66300.949200 | Putty primer coat | 5.94d | 2026-09-03 | 2026-09-09 | 2385, 2399 |  | 120300 |
| 2402 | 37100.37300.37600.38100.39100.40500.41500.66300.949300 | Door shutter fixing | 7.94d | 2026-09-03 | 2026-09-11 | 2386, 2399 |  | 120310 |
| 2403 | 37100.37300.37600.38100.39100.40500.41500.66300.949400 | Electrical wiring work | 11.94d | 2027-08-28 | 2027-09-09 | 2387, 2402 |  | 120320 |
| 2404 | 37100.37300.37600.38100.39100.40500.41500.66300.949500 | Painting 1st coat | 11.94d | 2027-09-09 | 2027-09-21 | 2388, 2401, 2402, 2403 |  | 120330 |
| 2405 | 37100.37300.37600.38100.39100.40500.41500.66300.949600 | False ceiling | 9.94d | 2027-09-21 | 2027-10-01 | 2389, 2404 |  | 120340 |
| 2406 | 37100.37300.37600.38100.39100.40500.41500.66400 | **20th Floor** | 462d | 2026-05-24 | 2027-10-12 |  | start no earlier than 2026-05-24 | 7568613 |
| 2407 | 37100.37300.37600.38100.39100.40500.41500.66400.949700 | Block Work | 12d | 2026-05-24 | 2026-06-04 | 2391FS+0.25d |  | 120350 |
| 2408 | 37100.37300.37600.38100.39100.40500.41500.66400.949800 | Door Frame Fixing | 9d | 2026-06-06 | 2026-06-15 | 2392, 2407 |  | 120370 |
| 2409 | 37100.37300.37600.38100.39100.40500.41500.66400.949900 | Internal Plumbing Works | 15d | 2026-07-03 | 2026-07-18 | 2393, 2407 |  | 120380 |
| 2410 | 37100.37300.37600.38100.39100.40500.41500.66400.950000 | Waterproofing | 15d | 2026-08-03 | 2026-08-18 | 2394, 2409 |  | 120390 |
| 2411 | 37100.37300.37600.38100.39100.40500.41500.66400.950100 | Internal Plaster | 12d | 2026-06-09 | 2026-06-21 | 2395FS+0.25d |  | 120400 |
| 2412 | 37100.37300.37600.38100.39100.40500.41500.66400.950200 | IPS flooring work | 12d | 2026-08-18 | 2026-08-30 | 2396, 2408, 2410, 2411 |  | 120410 |
| 2413 | 37100.37300.37600.38100.39100.40500.41500.66400.950300 | Toilet dado work | 12d | 2026-08-18 | 2026-08-30 | 2397, 2410, 2411 |  | 120420 |
| 2414 | 37100.37300.37600.38100.39100.40500.41500.66400.950400 | Toilet flooring work | 12d | 2026-08-30 | 2026-09-11 | 2398, 2413 |  | 120430 |
| 2415 | 37100.37300.37600.38100.39100.40500.41500.66400.950500 | Living dinning flooring | 7d | 2026-09-11 | 2026-09-18 | 2399, 2408, 2414 |  | 120440 |
| 2416 | 37100.37300.37600.38100.39100.40500.41500.66400.950600 | Aluminium door-window fixing | 18d | 2026-10-03 | 2026-10-20 | 2400, 2412, 2415 |  | 120450 |
| 2417 | 37100.37300.37600.38100.39100.40500.41500.66400.950700 | Putty primer coat | 5.94d | 2026-09-18 | 2026-09-24 | 2401, 2415 |  | 120460 |
| 2418 | 37100.37300.37600.38100.39100.40500.41500.66400.950800 | Door shutter fixing | 7.94d | 2026-09-18 | 2026-09-26 | 2402, 2415 |  | 120470 |
| 2419 | 37100.37300.37600.38100.39100.40500.41500.66400.950900 | Electrical wiring work | 11.94d | 2027-09-09 | 2027-09-21 | 2403, 2418 |  | 120480 |
| 2420 | 37100.37300.37600.38100.39100.40500.41500.66400.951000 | Painting 1st coat | 11.94d | 2027-09-21 | 2027-10-03 | 2404, 2417, 2418, 2419 |  | 120490 |
| 2421 | 37100.37300.37600.38100.39100.40500.41500.66400.951100 | False ceiling | 9.94d | 2027-10-03 | 2027-10-12 | 2405, 2420 |  | 120500 |

| ID | WBS | Task | Duration | Start | Finish | Predecessors | Constraint | Unique_Task_ID |
| --- | --- | --- | --- | --- | --- | --- | --- | --- |
| 2422 | 37100.37300.37600.38100.39100.40500.41500.66500 | **21st Floor** | 461.69d | 2026-06-05 | 2027-10-24 |  | start no earlier than 2026-06-05 | 7568623 |
| 2423 | 37100.37300.37600.38100.39100.40500.41500.66500.951200 | Block Work | 7.94d | 2026-06-05 | 2026-06-13 | 2080FS+0.25d, 2407FS+0.25d |  | 120510 |
| 2424 | 37100.37300.37600.38100.39100.40500.41500.66500.951300 | Door Frame Fixing | 8.94d | 2026-06-15 | 2026-06-24 | 2408, 2423 |  | 120530 |
| 2425 | 37100.37300.37600.38100.39100.40500.41500.66500.951400 | Internal Plumbing Works | 9.94d | 2026-06-13 | 2026-06-23 | 2423FS+0.25d |  | 120540 |
| 2426 | 37100.37300.37600.38100.39100.40500.41500.66500.951500 | Waterproofing | 11.94d | 2026-08-18 | 2026-08-30 | 2410, 2425 |  | 120550 |
| 2427 | 37100.37300.37600.38100.39100.40500.41500.66500.951600 | Internal Plaster | 8.94d | 2026-06-23 | 2026-07-02 | 2411FS+0.25d, 2423FS+10d |  | 120560 |
| 2428 | 37100.37300.37600.38100.39100.40500.41500.66500.951700 | IPS flooring work | 8.94d | 2026-08-30 | 2026-09-08 | 2412, 2424, 2426, 2427 |  | 120570 |
| 2429 | 37100.37300.37600.38100.39100.40500.41500.66500.951800 | Toilet dado work | 7.94d | 2026-08-30 | 2026-09-07 | 2413, 2426, 2427 |  | 120580 |
| 2430 | 37100.37300.37600.38100.39100.40500.41500.66500.951900 | Toilet flooring work | 6.94d | 2026-09-11 | 2026-09-18 | 2414, 2429 |  | 120590 |
| 2431 | 37100.37300.37600.38100.39100.40500.41500.66500.952000 | Living dinning flooring | 11.94d | 2026-09-18 | 2026-09-30 | 2415, 2424, 2430 |  | 120600 |
| 2432 | 37100.37300.37600.38100.39100.40500.41500.66500.952100 | Aluminium door-window fixing | 11.94d | 2026-10-21 | 2026-12-16 | 2416, 2428, 2431 |  | 120610 |
| 2433 | 37100.37300.37600.38100.39100.40500.41500.66500.952200 | Putty primer coat | 5.94d | 2026-09-30 | 2026-10-06 | 2417, 2431 |  | 120620 |
| 2434 | 37100.37300.37600.38100.39100.40500.41500.66500.952300 | Door shutter fixing | 7.94d | 2026-09-30 | 2026-10-08 | 2418, 2431 |  | 120630 |
| 2435 | 37100.37300.37600.38100.39100.40500.41500.66500.952400 | Electrical wiring work | 11.94d | 2027-09-21 | 2027-10-03 | 2419, 2434 |  | 120640 |
| 2436 | 37100.37300.37600.38100.39100.40500.41500.66500.952500 | Painting 1st coat | 11.94d | 2027-10-03 | 2027-10-14 | 2420, 2433, 2434, 2435 |  | 120650 |
| 2437 | 37100.37300.37600.38100.39100.40500.41500.66500.952600 | False ceiling | 9.94d | 2027-10-15 | 2027-10-24 | 2421, 2436 |  | 120660 |
| 2438 | 37100.37300.37600.38100.39100.40500.41500.66600 | **22nd Floor** | 425.88d | 2026-07-23 | 2027-11-05 |  | start no earlier than 2026-07-23 | 7568633 |
| 2439 | 37100.37300.37600.38100.39100.40500.41500.66600.952700 | Block Work | 7.94d | 2026-07-23 | 2026-07-30 | 2086, 2423 |  | 120670 |
| 2440 | 37100.37300.37600.38100.39100.40500.41500.66600.952800 | Door Frame Fixing | 8.94d | 2026-07-30 | 2026-08-08 | 2424, 2439 |  | 120690 |
| 2441 | 37100.37300.37600.38100.39100.40500.41500.66600.952900 | Internal Plumbing Works | 9.94d | 2026-07-30 | 2026-08-09 | 2425, 2439 |  | 120700 |
| 2442 | 37100.37300.37600.38100.39100.40500.41500.66600.953000 | Waterproofing | 11.94d | 2026-08-30 | 2026-09-11 | 2426, 2441 |  | 120710 |
| 2443 | 37100.37300.37600.38100.39100.40500.41500.66600.953100 | Internal Plaster | 8.94d | 2026-09-11 | 2026-09-20 | 2427, 2440, 2441, 2442 |  | 120720 |
| 2444 | 37100.37300.37600.38100.39100.40500.41500.66600.953200 | IPS flooring work | 8.94d | 2026-09-20 | 2026-09-28 | 2428, 2440, 2442, 2443 |  | 120730 |
| 2445 | 37100.37300.37600.38100.39100.40500.41500.66600.953300 | Toilet dado work | 7.94d | 2026-09-20 | 2026-09-27 | 2429, 2442, 2443 |  | 120740 |
| 2446 | 37100.37300.37600.38100.39100.40500.41500.66600.953400 | Toilet flooring work | 6.94d | 2026-09-28 | 2026-10-04 | 2430, 2445 |  | 120750 |
| 2447 | 37100.37300.37600.38100.39100.40500.41500.66600.953500 | Living dinning flooring | 11.94d | 2026-10-04 | 2026-10-16 | 2431, 2440, 2446 |  | 120760 |
| 2448 | 37100.37300.37600.38100.39100.40500.41500.66600.953600 | Aluminium door-window fixing | 11.94d | 2026-12-16 | 2026-12-28 | 2432, 2444, 2447 |  | 120770 |
| 2449 | 37100.37300.37600.38100.39100.40500.41500.66600.953700 | Putty primer coat | 5.94d | 2026-10-16 | 2026-10-22 | 2433, 2447 |  | 120780 |
| 2450 | 37100.37300.37600.38100.39100.40500.41500.66600.953800 | Door shutter fixing | 7.94d | 2026-10-16 | 2026-10-24 | 2434, 2447 |  | 120790 |
| 2451 | 37100.37300.37600.38100.39100.40500.41500.66600.953900 | Electrical wiring work | 11.94d | 2027-10-03 | 2027-10-14 | 2435, 2450 |  | 120800 |
| 2452 | 37100.37300.37600.38100.39100.40500.41500.66600.954000 | Painting 1st coat | 11.94d | 2027-10-15 | 2027-10-26 | 2436, 2449, 2450, 2451 |  | 120810 |
| 2453 | 37100.37300.37600.38100.39100.40500.41500.66600.954100 | False ceiling | 9.94d | 2027-10-26 | 2027-11-05 | 2437, 2452 |  | 120820 |

| ID | WBS | Task | Duration | Start | Finish | Predecessors | Constraint | Unique_Task_ID |
| --- | --- | --- | --- | --- | --- | --- | --- | --- |
| 2454 | 37100.37300.37600.38100.39100.40500.41500.66700 | **23rd Floor** | 423.81d | 2026-08-06 | 2027-11-17 |  | start no earlier than 2026-08-06 | 7568643 |
| 2455 | 37100.37300.37600.38100.39100.40500.41500.66700.954200 | Block Work | 7.94d | 2026-08-06 | 2026-08-13 | 2087, 2439 |  | 120830 |
| 2456 | 37100.37300.37600.38100.39100.40500.41500.66700.954300 | Door Frame Fixing | 8.94d | 2026-08-13 | 2026-08-22 | 2440, 2455 |  | 120850 |
| 2457 | 37100.37300.37600.38100.39100.40500.41500.66700.954400 | Internal Plumbing Works | 9.94d | 2026-08-13 | 2026-08-23 | 2441, 2455 |  | 120860 |
| 2458 | 37100.37300.37600.38100.39100.40500.41500.66700.954500 | Waterproofing | 11.94d | 2026-09-11 | 2026-09-23 | 2442, 2457 |  | 120870 |
| 2459 | 37100.37300.37600.38100.39100.40500.41500.66700.954600 | Internal Plaster | 8.94d | 2026-09-23 | 2026-10-01 | 2443, 2456, 2457, 2458 |  | 120880 |
| 2460 | 37100.37300.37600.38100.39100.40500.41500.66700.954700 | IPS flooring work | 8.94d | 2026-10-02 | 2026-10-10 | 2444, 2456, 2458, 2459 |  | 120890 |
| 2461 | 37100.37300.37600.38100.39100.40500.41500.66700.954800 | Toilet dado work | 7.94d | 2026-10-02 | 2026-10-09 | 2445, 2458, 2459 |  | 120900 |
| 2462 | 37100.37300.37600.38100.39100.40500.41500.66700.954900 | Toilet flooring work | 6.94d | 2026-10-09 | 2026-10-16 | 2446, 2461 |  | 120910 |
| 2463 | 37100.37300.37600.38100.39100.40500.41500.66700.955000 | Living dinning flooring | 14.94d | 2026-10-16 | 2026-10-31 | 2447, 2456, 2462 |  | 120920 |
| 2464 | 37100.37300.37600.38100.39100.40500.41500.66700.955100 | Aluminium door-window fixing | 14.94d | 2026-12-28 | 2027-01-12 | 2448, 2460, 2463 |  | 120930 |
| 2465 | 37100.37300.37600.38100.39100.40500.41500.66700.955200 | Putty primer coat | 5.94d | 2026-10-31 | 2026-12-21 | 2449, 2463 |  | 120940 |
| 2466 | 37100.37300.37600.38100.39100.40500.41500.66700.955300 | Door shutter fixing | 7.94d | 2026-10-31 | 2026-12-23 | 2450, 2463 |  | 120950 |
| 2467 | 37100.37300.37600.38100.39100.40500.41500.66700.955400 | Electrical wiring work | 11.94d | 2027-10-15 | 2027-10-26 | 2451, 2466 |  | 120960 |
| 2468 | 37100.37300.37600.38100.39100.40500.41500.66700.955500 | Painting 1st coat | 11.94d | 2027-10-26 | 2027-11-07 | 2452, 2465, 2466, 2467 |  | 120970 |
| 2469 | 37100.37300.37600.38100.39100.40500.41500.66700.955600 | False ceiling | 9.94d | 2027-11-07 | 2027-11-17 | 2453, 2468 |  | 120980 |
| 2470 | 37100.37300.37600.38100.39100.40500.41500.66800 | **24th Floor** | 420.88d | 2026-08-20 | 2027-11-29 |  | start no earlier than 2026-08-20 | 7568653 |
| 2471 | 37100.37300.37600.38100.39100.40500.41500.66800.955700 | Block Work | 7.94d | 2026-08-20 | 2026-08-28 | 2088, 2455 |  | 120990 |
| 2472 | 37100.37300.37600.38100.39100.40500.41500.66800.955800 | Door Frame Fixing | 8.94d | 2026-08-28 | 2026-09-06 | 2456, 2471 |  | 121010 |
| 2473 | 37100.37300.37600.38100.39100.40500.41500.66800.955900 | Internal Plumbing Works | 9.94d | 2026-08-28 | 2026-09-07 | 2457, 2471 |  | 121020 |
| 2474 | 37100.37300.37600.38100.39100.40500.41500.66800.956000 | Waterproofing | 11.94d | 2026-09-23 | 2026-10-04 | 2458, 2473 |  | 121030 |
| 2475 | 37100.37300.37600.38100.39100.40500.41500.66800.956100 | Internal Plaster | 8.94d | 2026-10-05 | 2026-10-13 | 2459, 2472, 2473, 2474 |  | 121040 |
| 2476 | 37100.37300.37600.38100.39100.40500.41500.66800.956200 | IPS flooring work | 8.94d | 2026-10-13 | 2026-10-22 | 2460, 2472, 2474, 2475 |  | 121050 |
| 2477 | 37100.37300.37600.38100.39100.40500.41500.66800.956300 | Toilet dado work | 7.94d | 2026-10-13 | 2026-10-21 | 2461, 2474, 2475 |  | 121060 |
| 2478 | 37100.37300.37600.38100.39100.40500.41500.66800.956400 | Toilet flooring work | 6.94d | 2026-10-21 | 2026-10-28 | 2462, 2477 |  | 121070 |
| 2479 | 37100.37300.37600.38100.39100.40500.41500.66800.956500 | Living dinning flooring | 14.94d | 2026-10-31 | 2026-12-30 | 2463, 2472, 2478 |  | 121080 |
| 2480 | 37100.37300.37600.38100.39100.40500.41500.66800.956600 | Aluminium door-window fixing | 14.94d | 2027-01-12 | 2027-01-27 | 2464, 2476, 2479 |  | 121090 |
| 2481 | 37100.37300.37600.38100.39100.40500.41500.66800.956700 | Putty primer coat | 5.94d | 2026-12-30 | 2027-01-05 | 2465, 2479 |  | 121100 |
| 2482 | 37100.37300.37600.38100.39100.40500.41500.66800.956800 | Door shutter fixing | 7.94d | 2026-12-30 | 2027-01-07 | 2466, 2479 |  | 121110 |
| 2483 | 37100.37300.37600.38100.39100.40500.41500.66800.956900 | Electrical wiring work | 11.94d | 2027-10-26 | 2027-11-07 | 2467, 2482 |  | 121120 |
| 2484 | 37100.37300.37600.38100.39100.40500.41500.66800.957000 | Painting 1st coat | 11.94d | 2027-11-07 | 2027-11-19 | 2468, 2481, 2482, 2483 |  | 121130 |
| 2485 | 37100.37300.37600.38100.39100.40500.41500.66800.957100 | False ceiling | 9.94d | 2027-11-19 | 2027-11-29 | 2469, 2484 |  | 121140 |

| ID | WBS | Task | Duration | Start | Finish | Predecessors | Constraint | Unique_Task_ID |
| --- | --- | --- | --- | --- | --- | --- | --- | --- |
| 2486 | 37100.37300.37600.38100.39100.40500.41500.66900 | **25th Floor** | 416.06d | 2026-09-06 | 2027-12-11 |  | start no earlier than 2026-09-06 | 7568663 |
| 2487 | 37100.37300.37600.38100.39100.40500.41500.66900.957200 | Block Work | 7.94d | 2026-09-06 | 2026-09-14 | 2089, 2471 |  | 121150 |
| 2488 | 37100.37300.37600.38100.39100.40500.41500.66900.957300 | Door Frame Fixing | 8.94d | 2026-09-14 | 2026-09-23 | 2472, 2487 |  | 121170 |
| 2489 | 37100.37300.37600.38100.39100.40500.41500.66900.957400 | Internal Plumbing Works | 9.94d | 2026-09-14 | 2026-09-24 | 2473, 2487 |  | 121180 |
| 2490 | 37100.37300.37600.38100.39100.40500.41500.66900.957500 | Waterproofing | 11.94d | 2026-10-05 | 2026-10-16 | 2474, 2489 |  | 121190 |
| 2491 | 37100.37300.37600.38100.39100.40500.41500.66900.957600 | Internal Plaster | 8.94d | 2026-10-16 | 2026-10-25 | 2475, 2488, 2489, 2490 |  | 121200 |
| 2492 | 37100.37300.37600.38100.39100.40500.41500.66900.957700 | IPS flooring work | 8.94d | 2026-10-25 | 2026-12-18 | 2476, 2488, 2490, 2491 |  | 121210 |
| 2493 | 37100.37300.37600.38100.39100.40500.41500.66900.957800 | Toilet dado work | 7.94d | 2026-10-25 | 2026-12-17 | 2477, 2490, 2491 |  | 121220 |
| 2494 | 37100.37300.37600.38100.39100.40500.41500.66900.957900 | Toilet flooring work | 6.94d | 2026-12-17 | 2026-12-24 | 2478, 2493 |  | 121230 |
| 2495 | 37100.37300.37600.38100.39100.40500.41500.66900.958000 | Living dinning flooring | 14.94d | 2026-12-30 | 2027-01-14 | 2479, 2488, 2494 |  | 121240 |
| 2496 | 37100.37300.37600.38100.39100.40500.41500.66900.958100 | Aluminium door-window fixing | 14.94d | 2027-01-27 | 2027-02-11 | 2480, 2492, 2495 |  | 121250 |
| 2497 | 37100.37300.37600.38100.39100.40500.41500.66900.958200 | Putty primer coat | 5.94d | 2027-01-14 | 2027-01-20 | 2481, 2495 |  | 121260 |
| 2498 | 37100.37300.37600.38100.39100.40500.41500.66900.958300 | Door shutter fixing | 7.94d | 2027-01-14 | 2027-01-22 | 2482, 2495 |  | 121270 |
| 2499 | 37100.37300.37600.38100.39100.40500.41500.66900.958400 | Electrical wiring work | 11.94d | 2027-11-07 | 2027-11-19 | 2483, 2498 |  | 121280 |
| 2500 | 37100.37300.37600.38100.39100.40500.41500.66900.958500 | Painting 1st coat | 11.94d | 2027-11-19 | 2027-12-01 | 2484, 2497, 2498, 2499 |  | 121290 |
| 2501 | 37100.37300.37600.38100.39100.40500.41500.66900.958600 | False ceiling | 9.94d | 2027-12-01 | 2027-12-11 | 2485, 2500 |  | 121300 |
| 2502 | 37100.37300.37600.38100.39100.40500.41500.67000 | **26th Floor** | 414.12d | 2026-09-20 | 2027-12-23 |  | start no earlier than 2026-09-20 | 7568673 |
| 2503 | 37100.37300.37600.38100.39100.40500.41500.67000.958700 | Block Work | 7.94d | 2026-09-20 | 2026-09-28 | 2090, 2487 |  | 121310 |
| 2504 | 37100.37300.37600.38100.39100.40500.41500.67000.958800 | Door Frame Fixing | 8.94d | 2026-09-28 | 2026-10-07 | 2488, 2503 |  | 121330 |
| 2505 | 37100.37300.37600.38100.39100.40500.41500.67000.958900 | Internal Plumbing Works | 9.94d | 2026-09-28 | 2026-10-08 | 2489, 2503 |  | 121340 |
| 2506 | 37100.37300.37600.38100.39100.40500.41500.67000.959000 | Waterproofing | 11.94d | 2026-10-16 | 2026-10-28 | 2490, 2505 |  | 121350 |
| 2507 | 37100.37300.37600.38100.39100.40500.41500.67000.959100 | Internal Plaster | 8.94d | 2026-10-28 | 2026-12-21 | 2491, 2504, 2505, 2506 |  | 121360 |
| 2508 | 37100.37300.37600.38100.39100.40500.41500.67000.959200 | IPS flooring work | 8.94d | 2026-12-21 | 2026-12-30 | 2492, 2504, 2506, 2507 |  | 121370 |
| 2509 | 37100.37300.37600.38100.39100.40500.41500.67000.959300 | Toilet dado work | 7.94d | 2026-12-21 | 2026-12-29 | 2493, 2506, 2507 |  | 121380 |
| 2510 | 37100.37300.37600.38100.39100.40500.41500.67000.959400 | Toilet flooring work | 6.94d | 2026-12-29 | 2027-01-05 | 2494, 2509 |  | 121390 |
| 2511 | 37100.37300.37600.38100.39100.40500.41500.67000.959500 | Living dinning flooring | 14.94d | 2027-01-14 | 2027-01-29 | 2495, 2504, 2510 |  | 121400 |
| 2512 | 37100.37300.37600.38100.39100.40500.41500.67000.959600 | Aluminium door-window fixing | 14.94d | 2027-02-11 | 2027-02-26 | 2496, 2508, 2511 |  | 121410 |
| 2513 | 37100.37300.37600.38100.39100.40500.41500.67000.959700 | Putty primer coat | 5.94d | 2027-01-29 | 2027-02-04 | 2497, 2511 |  | 121420 |
| 2514 | 37100.37300.37600.38100.39100.40500.41500.67000.959800 | Door shutter fixing | 7.94d | 2027-01-29 | 2027-02-06 | 2498, 2511 |  | 121430 |
| 2515 | 37100.37300.37600.38100.39100.40500.41500.67000.959900 | Electrical wiring work | 11.94d | 2027-11-19 | 2027-12-01 | 2499, 2514 |  | 121440 |
| 2516 | 37100.37300.37600.38100.39100.40500.41500.67000.960000 | Painting 1st coat | 11.94d | 2027-12-01 | 2027-12-13 | 2500, 2513, 2514, 2515 |  | 121450 |
| 2517 | 37100.37300.37600.38100.39100.40500.41500.67000.960100 | False ceiling | 9.94d | 2027-12-13 | 2027-12-23 | 2501, 2516 |  | 121460 |

| ID | WBS | Task | Duration | Start | Finish | Predecessors | Constraint | Unique_Task_ID |
| --- | --- | --- | --- | --- | --- | --- | --- | --- |
| 2518 | 37100.37300.37600.38100.39100.40500.41500.67100 | **27th Floor** | 412.31d | 2026-10-04 | 2028-01-04 |  | start no earlier than 2026-10-04 | 7568683 |
| 2519 | 37100.37300.37600.38100.39100.40500.41500.67100.960200 | Block Work | 7.94d | 2026-10-04 | 2026-10-12 | 2091, 2503 |  | 121470 |
| 2520 | 37100.37300.37600.38100.39100.40500.41500.67100.960300 | Door Frame Fixing | 8.94d | 2026-10-12 | 2026-10-21 | 2504, 2519 |  | 121490 |
| 2521 | 37100.37300.37600.38100.39100.40500.41500.67100.960400 | Internal Plumbing Works | 9.94d | 2026-10-12 | 2026-10-22 | 2505, 2519 |  | 121500 |
| 2522 | 37100.37300.37600.38100.39100.40500.41500.67100.960500 | Waterproofing | 11.94d | 2026-10-28 | 2026-12-24 | 2506, 2521 |  | 121510 |
| 2523 | 37100.37300.37600.38100.39100.40500.41500.67100.960600 | Internal Plaster | 8.94d | 2026-12-24 | 2027-01-02 | 2507, 2520, 2521, 2522 |  | 121520 |
| 2524 | 37100.37300.37600.38100.39100.40500.41500.67100.960700 | IPS flooring work | 8.94d | 2027-01-02 | 2027-01-11 | 2508, 2520, 2522, 2523 |  | 121530 |
| 2525 | 37100.37300.37600.38100.39100.40500.41500.67100.960800 | Toilet dado work | 7.94d | 2027-01-02 | 2027-01-10 | 2509, 2522, 2523 |  | 121540 |
| 2526 | 37100.37300.37600.38100.39100.40500.41500.67100.960900 | Toilet flooring work | 6.94d | 2027-01-10 | 2027-01-17 | 2510, 2525 |  | 121550 |
| 2527 | 37100.37300.37600.38100.39100.40500.41500.67100.961000 | Living dinning flooring | 14.94d | 2027-01-29 | 2027-02-13 | 2511, 2520, 2526 |  | 121560 |
| 2528 | 37100.37300.37600.38100.39100.40500.41500.67100.961100 | Aluminium door-window fixing | 14.94d | 2027-02-26 | 2027-03-13 | 2512, 2524, 2527 |  | 121570 |
| 2529 | 37100.37300.37600.38100.39100.40500.41500.67100.961200 | Putty primer coat | 5.94d | 2027-02-13 | 2027-02-19 | 2513, 2527 |  | 121580 |
| 2530 | 37100.37300.37600.38100.39100.40500.41500.67100.961300 | Door shutter fixing | 7.94d | 2027-02-13 | 2027-02-21 | 2514, 2527 |  | 121590 |
| 2531 | 37100.37300.37600.38100.39100.40500.41500.67100.961400 | Electrical wiring work | 11.94d | 2027-12-01 | 2027-12-13 | 2515, 2530 |  | 121600 |
| 2532 | 37100.37300.37600.38100.39100.40500.41500.67100.961500 | Painting 1st coat | 11.94d | 2027-12-13 | 2027-12-25 | 2516, 2529, 2530, 2531 |  | 121610 |
| 2533 | 37100.37300.37600.38100.39100.40500.41500.67100.961600 | False ceiling | 9.94d | 2027-12-25 | 2028-01-04 | 2517, 2532 |  | 121620 |
| 2534 | 37100.37300.37600.38100.39100.40500.41500.67200 | **28th Floor** | 410.5d | 2026-10-18 | 2028-01-16 |  | start no earlier than 2026-10-18 | 7568693 |
| 2535 | 37100.37300.37600.38100.39100.40500.41500.67200.961700 | Block Work | 7.94d | 2026-10-18 | 2026-10-25 | 2092, 2519 |  | 121630 |
| 2536 | 37100.37300.37600.38100.39100.40500.41500.67200.961800 | Door Frame Fixing | 8.94d | 2026-10-25 | 2026-12-18 | 2520, 2535 |  | 121650 |
| 2537 | 37100.37300.37600.38100.39100.40500.41500.67200.961900 | Internal Plumbing Works | 9.94d | 2026-10-25 | 2026-12-19 | 2521, 2535 |  | 121660 |
| 2538 | 37100.37300.37600.38100.39100.40500.41500.67200.962000 | Waterproofing | 11.94d | 2026-12-24 | 2027-01-05 | 2522, 2537 |  | 121670 |
| 2539 | 37100.37300.37600.38100.39100.40500.41500.67200.962100 | Internal Plaster | 8.94d | 2027-01-05 | 2027-01-14 | 2523, 2536, 2537, 2538 |  | 121680 |
| 2540 | 37100.37300.37600.38100.39100.40500.41500.67200.962200 | IPS flooring work | 8.94d | 2027-01-14 | 2027-01-23 | 2524, 2536, 2538, 2539 |  | 121690 |
| 2541 | 37100.37300.37600.38100.39100.40500.41500.67200.962300 | Toilet dado work | 7.94d | 2027-01-14 | 2027-01-22 | 2525, 2538, 2539 |  | 121700 |
| 2542 | 37100.37300.37600.38100.39100.40500.41500.67200.962400 | Toilet flooring work | 6.94d | 2027-01-22 | 2027-01-29 | 2526, 2541 |  | 121710 |
| 2543 | 37100.37300.37600.38100.39100.40500.41500.67200.962500 | Living dinning flooring | 14.94d | 2027-02-13 | 2027-02-28 | 2527, 2536, 2542 |  | 121720 |
| 2544 | 37100.37300.37600.38100.39100.40500.41500.67200.962600 | Aluminium door-window fixing | 14.94d | 2027-03-13 | 2027-03-28 | 2528, 2540, 2543 |  | 121730 |
| 2545 | 37100.37300.37600.38100.39100.40500.41500.67200.962700 | Putty primer coat | 5.94d | 2027-02-28 | 2027-03-06 | 2529, 2543 |  | 121740 |
| 2546 | 37100.37300.37600.38100.39100.40500.41500.67200.962800 | Door shutter fixing | 7.94d | 2027-02-28 | 2027-03-08 | 2530, 2543 |  | 121750 |
| 2547 | 37100.37300.37600.38100.39100.40500.41500.67200.962900 | Electrical wiring work | 11.94d | 2027-12-13 | 2027-12-25 | 2531, 2546 |  | 121760 |
| 2548 | 37100.37300.37600.38100.39100.40500.41500.67200.963000 | Painting 1st coat | 11.94d | 2027-12-25 | 2028-01-06 | 2532, 2545, 2546, 2547 |  | 121770 |
| 2549 | 37100.37300.37600.38100.39100.40500.41500.67200.963100 | False ceiling | 9.94d | 2028-01-06 | 2028-01-16 | 2533, 2548 |  | 121780 |

| ID | WBS | Task | Duration | Start | Finish | Predecessors | Constraint | Unique_Task_ID |
| --- | --- | --- | --- | --- | --- | --- | --- | --- |
| 2550 | 37100.37300.37600.38100.39100.40500.41500.67300 | **29th Floor** | 404.56d | 2026-12-19 | 2028-01-28 |  | start no earlier than 2026-12-19 | 7568703 |
| 2551 | 37100.37300.37600.38100.39100.40500.41500.67300.963200 | Block Work | 7.94d | 2026-12-19 | 2026-12-27 | 2093, 2535 |  | 121790 |
| 2552 | 37100.37300.37600.38100.39100.40500.41500.67300.963300 | Door Frame Fixing | 8.94d | 2026-12-27 | 2027-01-05 | 2536, 2551 |  | 121810 |
| 2553 | 37100.37300.37600.38100.39100.40500.41500.67300.963400 | Internal Plumbing Works | 9.94d | 2026-12-27 | 2027-01-06 | 2537, 2551 |  | 121820 |
| 2554 | 37100.37300.37600.38100.39100.40500.41500.67300.963500 | Waterproofing | 11.94d | 2027-01-06 | 2027-01-18 | 2538, 2553 |  | 121830 |
| 2555 | 37100.37300.37600.38100.39100.40500.41500.67300.963600 | Internal Plaster | 8.94d | 2027-01-18 | 2027-01-27 | 2539, 2552, 2553, 2554 |  | 121840 |
| 2556 | 37100.37300.37600.38100.39100.40500.41500.67300.963700 | IPS flooring work | 8.94d | 2027-01-27 | 2027-02-05 | 2540, 2552, 2554, 2555 |  | 121850 |
| 2557 | 37100.37300.37600.38100.39100.40500.41500.67300.963800 | Toilet dado work | 7.94d | 2027-01-27 | 2027-02-04 | 2541, 2554, 2555 |  | 121860 |
| 2558 | 37100.37300.37600.38100.39100.40500.41500.67300.963900 | Toilet flooring work | 6.94d | 2027-02-04 | 2027-02-11 | 2542, 2557 |  | 121870 |
| 2559 | 37100.37300.37600.38100.39100.40500.41500.67300.964000 | Living dinning flooring | 14.94d | 2027-02-28 | 2027-03-15 | 2543, 2552, 2558 |  | 121880 |
| 2560 | 37100.37300.37600.38100.39100.40500.41500.67300.964100 | Aluminium door-window fixing | 14.94d | 2027-03-28 | 2027-04-12 | 2544, 2556, 2559 |  | 121890 |
| 2561 | 37100.37300.37600.38100.39100.40500.41500.67300.964200 | Putty primer coat | 5.94d | 2027-03-15 | 2027-03-21 | 2545, 2559 |  | 121900 |
| 2562 | 37100.37300.37600.38100.39100.40500.41500.67300.964300 | Door shutter fixing | 7.94d | 2027-03-15 | 2027-03-23 | 2546, 2559 |  | 121910 |
| 2563 | 37100.37300.37600.38100.39100.40500.41500.67300.964400 | Electrical wiring work | 11.94d | 2027-12-25 | 2028-01-06 | 2547, 2562 |  | 121920 |
| 2564 | 37100.37300.37600.38100.39100.40500.41500.67300.964500 | Painting 1st coat | 11.94d | 2028-01-06 | 2028-01-18 | 2548, 2561, 2562, 2563 |  | 121930 |
| 2565 | 37100.37300.37600.38100.39100.40500.41500.67300.964600 | False ceiling | 9.94d | 2028-01-18 | 2028-01-28 | 2549, 2564 |  | 121940 |
| 2566 | 37100.37300.37600.38100.39100.40500.41500.67400 | **30th Floor** | 381d | 2027-01-30 | 2028-02-15 |  | start no earlier than 2027-01-30 | 7568713 |
| 2567 | 37100.37300.37600.38100.39100.40500.41500.67400.964700 | Block Work | 7.94d | 2027-01-30 | 2027-02-07 | 2094, 2551 |  | 121950 |
| 2568 | 37100.37300.37600.38100.39100.40500.41500.67400.964800 | Door Frame Fixing | 8.94d | 2027-02-07 | 2027-02-16 | 2552, 2567 |  | 121970 |
| 2569 | 37100.37300.37600.38100.39100.40500.41500.67400.964900 | Internal Plumbing Works | 9.94d | 2027-02-07 | 2027-02-17 | 2553, 2567 |  | 121980 |
| 2570 | 37100.37300.37600.38100.39100.40500.41500.67400.965000 | Waterproofing | 11.94d | 2027-02-17 | 2027-03-01 | 2554, 2569 |  | 121990 |
| 2571 | 37100.37300.37600.38100.39100.40500.41500.67400.965100 | Internal Plaster | 15d | 2027-03-01 | 2027-03-16 | 2555, 2568, 2569, 2570 |  | 122000 |
| 2572 | 37100.37300.37600.38100.39100.40500.41500.67400.965200 | IPS flooring work | 8.94d | 2027-03-16 | 2027-03-25 | 2556, 2568, 2570, 2571 |  | 122010 |
| 2573 | 37100.37300.37600.38100.39100.40500.41500.67400.965300 | Toilet dado work | 7.94d | 2027-03-16 | 2027-03-24 | 2557, 2570, 2571 |  | 122020 |
| 2574 | 37100.37300.37600.38100.39100.40500.41500.67400.965400 | Toilet flooring work | 6.94d | 2027-03-24 | 2027-03-31 | 2558, 2573 |  | 122030 |
| 2575 | 37100.37300.37600.38100.39100.40500.41500.67400.965500 | Living dinning flooring | 20d | 2027-03-31 | 2027-04-20 | 2559, 2568, 2574 |  | 122040 |
| 2576 | 37100.37300.37600.38100.39100.40500.41500.67400.965600 | Aluminium door-window fixing | 14.94d | 2027-04-20 | 2027-05-04 | 2560, 2572, 2575 |  | 122050 |
| 2577 | 37100.37300.37600.38100.39100.40500.41500.67400.965700 | Putty primer coat | 5.94d | 2027-04-20 | 2027-04-25 | 2561, 2575 |  | 122060 |
| 2578 | 37100.37300.37600.38100.39100.40500.41500.67400.965800 | Door shutter fixing | 7.94d | 2027-04-20 | 2027-04-27 | 2562, 2575 |  | 122070 |
| 2579 | 37100.37300.37600.38100.39100.40500.41500.67400.965900 | Electrical wiring work | 14.94d | 2028-01-06 | 2028-01-21 | 2563, 2578 |  | 122080 |
| 2580 | 37100.37300.37600.38100.39100.40500.41500.67400.966000 | Painting 1st coat | 14.94d | 2028-01-21 | 2028-02-05 | 2564, 2577, 2578, 2579 |  | 122090 |
| 2581 | 37100.37300.37600.38100.39100.40500.41500.67400.966100 | False ceiling | 9.94d | 2028-02-05 | 2028-02-15 | 2565, 2580 |  | 122100 |

| ID | WBS | Task | Duration | Start | Finish | Predecessors | Constraint | Unique_Task_ID |
| --- | --- | --- | --- | --- | --- | --- | --- | --- |
| 2582 | 37100.37300.37600.38100.39100.40500.41500.67500 | **31st Floor** | 388d | 2027-02-07 | 2028-03-01 |  | start no earlier than 2027-02-07 | 7568723 |
| 2583 | 37100.37300.37600.38100.39100.40500.41500.67500.966200 | Block Work | 7.94d | 2027-02-07 | 2027-02-15 | 2095, 2567 |  | 122110 |
| 2584 | 37100.37300.37600.38100.39100.40500.41500.67500.966300 | Door Frame Fixing | 8.94d | 2027-02-16 | 2027-02-25 | 2568, 2583 |  | 122130 |
| 2585 | 37100.37300.37600.38100.39100.40500.41500.67500.966400 | Internal Plumbing Works | 9.94d | 2027-02-17 | 2027-02-27 | 2569, 2583 |  | 122140 |
| 2586 | 37100.37300.37600.38100.39100.40500.41500.67500.966500 | Waterproofing | 11.94d | 2027-03-01 | 2027-03-13 | 2570, 2585 |  | 122150 |
| 2587 | 37100.37300.37600.38100.39100.40500.41500.67500.966600 | Internal Plaster | 15d | 2027-03-16 | 2027-03-31 | 2571, 2584, 2585, 2586 |  | 122160 |
| 2588 | 37100.37300.37600.38100.39100.40500.41500.67500.966700 | IPS flooring work | 8.94d | 2027-03-31 | 2027-04-09 | 2572, 2584, 2586, 2587 |  | 122170 |
| 2589 | 37100.37300.37600.38100.39100.40500.41500.67500.966800 | Toilet dado work | 7.94d | 2027-03-31 | 2027-04-08 | 2573, 2586, 2587 |  | 122180 |
| 2590 | 37100.37300.37600.38100.39100.40500.41500.67500.966900 | Toilet flooring work | 6.94d | 2027-04-08 | 2027-04-15 | 2574, 2589 |  | 122190 |
| 2591 | 37100.37300.37600.38100.39100.40500.41500.67500.967000 | Living dinning flooring | 20d | 2027-04-20 | 2027-05-10 | 2575, 2584, 2590 |  | 122200 |
| 2592 | 37100.37300.37600.38100.39100.40500.41500.67500.967100 | Aluminium door-window fixing | 11.94d | 2027-05-10 | 2027-05-21 | 2576, 2588, 2591 |  | 122210 |
| 2593 | 37100.37300.37600.38100.39100.40500.41500.67500.967200 | Putty primer coat | 5.94d | 2027-05-10 | 2027-05-15 | 2577, 2591 |  | 122220 |
| 2594 | 37100.37300.37600.38100.39100.40500.41500.67500.967300 | Door shutter fixing | 7.94d | 2027-05-10 | 2027-05-17 | 2578, 2591 |  | 122230 |
| 2595 | 37100.37300.37600.38100.39100.40500.41500.67500.967400 | Electrical wiring work | 14.94d | 2028-01-21 | 2028-02-05 | 2579, 2594 |  | 122240 |
| 2596 | 37100.37300.37600.38100.39100.40500.41500.67500.967500 | Painting 1st coat | 14.94d | 2028-02-05 | 2028-02-20 | 2580, 2593, 2594, 2595 |  | 122250 |
| 2597 | 37100.37300.37600.38100.39100.40500.41500.67500.967600 | False ceiling | 9.94d | 2028-02-20 | 2028-03-01 | 2581, 2596 |  | 122260 |
| 2598 | 37100.37300.37600.38100.39100.40500.41500.67600 | **32nd Floor** | 395d | 2027-02-15 | 2028-03-16 |  | start no earlier than 2027-02-15 | 7568733 |
| 2599 | 37100.37300.37600.38100.39100.40500.41500.67600.967700 | Block Work | 7.94d | 2027-02-15 | 2027-02-23 | 2096, 2583 |  | 122270 |
| 2600 | 37100.37300.37600.38100.39100.40500.41500.67600.967800 | Door Frame Fixing | 8.94d | 2027-02-25 | 2027-03-06 | 2584, 2599 |  | 122290 |
| 2601 | 37100.37300.37600.38100.39100.40500.41500.67600.967900 | Internal Plumbing Works | 9.94d | 2027-02-27 | 2027-03-09 | 2585, 2599 |  | 122300 |
| 2602 | 37100.37300.37600.38100.39100.40500.41500.67600.968000 | Waterproofing | 11.94d | 2027-03-13 | 2027-03-25 | 2586, 2601 |  | 122310 |
| 2603 | 37100.37300.37600.38100.39100.40500.41500.67600.968100 | Internal Plaster | 8d | 2027-03-31 | 2027-04-08 | 2587, 2600, 2601, 2602 |  | 122320 |
| 2604 | 37100.37300.37600.38100.39100.40500.41500.67600.968200 | IPS flooring work | 8.94d | 2027-04-09 | 2027-04-18 | 2588, 2600, 2602, 2603 |  | 122330 |
| 2605 | 37100.37300.37600.38100.39100.40500.41500.67600.968300 | Toilet dado work | 7.94d | 2027-04-08 | 2027-04-16 | 2589, 2602, 2603 |  | 122340 |
| 2606 | 37100.37300.37600.38100.39100.40500.41500.67600.968400 | Toilet flooring work | 6.94d | 2027-04-16 | 2027-04-23 | 2590, 2605 |  | 122350 |
| 2607 | 37100.37300.37600.38100.39100.40500.41500.67600.968500 | Living dinning flooring | 12d | 2027-05-10 | 2027-05-22 | 2591, 2600, 2606 |  | 122360 |
| 2608 | 37100.37300.37600.38100.39100.40500.41500.67600.968600 | Aluminium door-window fixing | 11.94d | 2027-05-22 | 2027-06-02 | 2592, 2604, 2607 |  | 122370 |
| 2609 | 37100.37300.37600.38100.39100.40500.41500.67600.968700 | Putty primer coat | 5.94d | 2027-05-22 | 2027-05-27 | 2593, 2607 |  | 122380 |
| 2610 | 37100.37300.37600.38100.39100.40500.41500.67600.968800 | Door shutter fixing | 7.94d | 2027-05-22 | 2027-05-29 | 2594, 2607 |  | 122390 |
| 2611 | 37100.37300.37600.38100.39100.40500.41500.67600.968900 | Electrical wiring work | 14.94d | 2028-02-05 | 2028-02-20 | 2595, 2610 |  | 122400 |
| 2612 | 37100.37300.37600.38100.39100.40500.41500.67600.969000 | Painting 1st coat | 14.94d | 2028-02-20 | 2028-03-06 | 2596, 2609, 2610, 2611 |  | 122410 |
| 2613 | 37100.37300.37600.38100.39100.40500.41500.67600.969100 | False ceiling | 9.94d | 2028-03-06 | 2028-03-16 | 2597, 2612 |  | 122420 |

| ID | WBS | Task | Duration | Start | Finish | Predecessors | Constraint | Unique_Task_ID |
| --- | --- | --- | --- | --- | --- | --- | --- | --- |
| 2614 | 37100.37300.37600.38100.39100.40500.41500.67700 | **33rd Floor** | 399d | 2027-02-23 | 2028-03-28 |  | start no earlier than 2027-02-23 | 7568743 |
| 2615 | 37100.37300.37600.38100.39100.40500.41500.67700.969200 | Block Work | 7.94d | 2027-02-23 | 2027-03-03 | 2097, 2599 |  | 122430 |
| 2616 | 37100.37300.37600.38100.39100.40500.41500.67700.969300 | Door Frame Fixing | 8.94d | 2027-03-06 | 2027-03-15 | 2600, 2615 |  | 122450 |
| 2617 | 37100.37300.37600.38100.39100.40500.41500.67700.969400 | Internal Plumbing Works | 9.94d | 2027-03-09 | 2027-03-19 | 2601, 2615 |  | 122460 |
| 2618 | 37100.37300.37600.38100.39100.40500.41500.67700.969500 | Waterproofing | 11.94d | 2027-03-25 | 2027-04-05 | 2602, 2617 |  | 122470 |
| 2619 | 37100.37300.37600.38100.39100.40500.41500.67700.969600 | Internal Plaster | 20d | 2027-04-08 | 2027-04-28 | 2603, 2616, 2617, 2618 |  | 122480 |
| 2620 | 37100.37300.37600.38100.39100.40500.41500.67700.969700 | IPS flooring work | 8.94d | 2027-04-28 | 2027-05-07 | 2604, 2616, 2618, 2619 |  | 122490 |
| 2621 | 37100.37300.37600.38100.39100.40500.41500.67700.969800 | Toilet dado work | 7.94d | 2027-04-28 | 2027-05-06 | 2605, 2618, 2619 |  | 122500 |
| 2622 | 37100.37300.37600.38100.39100.40500.41500.67700.969900 | Toilet flooring work | 6.94d | 2027-05-06 | 2027-05-13 | 2606, 2621 |  | 122510 |
| 2623 | 37100.37300.37600.38100.39100.40500.41500.67700.970000 | Living dinning flooring | 14.94d | 2027-05-22 | 2027-06-05 | 2607, 2616, 2622 |  | 122520 |
| 2624 | 37100.37300.37600.38100.39100.40500.41500.67700.970100 | Aluminium door-window fixing | 14.94d | 2027-06-06 | 2027-06-20 | 2608, 2620, 2623 |  | 122530 |
| 2625 | 37100.37300.37600.38100.39100.40500.41500.67700.970200 | Putty primer coat | 5.94d | 2027-06-06 | 2027-06-11 | 2609, 2623 |  | 122540 |
| 2626 | 37100.37300.37600.38100.39100.40500.41500.67700.970300 | Door shutter fixing | 7.94d | 2027-06-06 | 2027-06-13 | 2610, 2623 |  | 122550 |
| 2627 | 37100.37300.37600.38100.39100.40500.41500.67700.970400 | Electrical wiring work | 11.94d | 2028-02-20 | 2028-03-03 | 2611, 2626 |  | 122560 |
| 2628 | 37100.37300.37600.38100.39100.40500.41500.67700.970500 | Painting 1st coat | 11.94d | 2028-03-06 | 2028-03-18 | 2612, 2625, 2626, 2627 |  | 122570 |
| 2629 | 37100.37300.37600.38100.39100.40500.41500.67700.970600 | False ceiling | 9.94d | 2028-03-18 | 2028-03-28 | 2613, 2628 |  | 122580 |
| 2630 | 37100.37300.37600.38100.39100.40500.41500.67800 | **34th Floor** | 403d | 2027-03-03 | 2028-04-09 |  | start no earlier than 2027-03-03 | 7568753 |
| 2631 | 37100.37300.37600.38100.39100.40500.41500.67800.970700 | Block Work | 7.94d | 2027-03-03 | 2027-03-11 | 2098, 2615 |  | 122590 |
| 2632 | 37100.37300.37600.38100.39100.40500.41500.67800.970800 | Door Frame Fixing | 8.94d | 2027-03-15 | 2027-03-23 | 2616, 2631 |  | 122610 |
| 2633 | 37100.37300.37600.38100.39100.40500.41500.67800.970900 | Internal Plumbing Works | 9.94d | 2027-03-19 | 2027-03-28 | 2617, 2631 |  | 122620 |
| 2634 | 37100.37300.37600.38100.39100.40500.41500.67800.971000 | Waterproofing | 11.94d | 2027-04-06 | 2027-04-17 | 2618, 2633 |  | 122630 |
| 2635 | 37100.37300.37600.38100.39100.40500.41500.67800.971100 | Internal Plaster | 8.94d | 2027-04-28 | 2027-05-07 | 2619, 2632, 2633, 2634 |  | 122640 |
| 2636 | 37100.37300.37600.38100.39100.40500.41500.67800.971200 | IPS flooring work | 8.94d | 2027-05-07 | 2027-05-16 | 2620, 2632, 2634, 2635 |  | 122650 |
| 2637 | 37100.37300.37600.38100.39100.40500.41500.67800.971300 | Toilet dado work | 7.94d | 2027-05-07 | 2027-05-15 | 2621, 2634, 2635 |  | 122660 |
| 2638 | 37100.37300.37600.38100.39100.40500.41500.67800.971400 | Toilet flooring work | 6.94d | 2027-05-15 | 2027-05-21 | 2622, 2637 |  | 122670 |
| 2639 | 37100.37300.37600.38100.39100.40500.41500.67800.971500 | Living dinning flooring | 9d | 2027-06-06 | 2027-06-14 | 2623, 2632, 2638 |  | 122680 |
| 2640 | 37100.37300.37600.38100.39100.40500.41500.67800.971600 | Aluminium door-window fixing | 14.94d | 2027-06-20 | 2027-07-05 | 2624, 2636, 2639 |  | 122690 |
| 2641 | 37100.37300.37600.38100.39100.40500.41500.67800.971700 | Putty primer coat | 5.94d | 2027-06-15 | 2027-06-20 | 2625, 2639 |  | 122700 |
| 2642 | 37100.37300.37600.38100.39100.40500.41500.67800.971800 | Door shutter fixing | 7.94d | 2027-06-15 | 2027-06-22 | 2626, 2639 |  | 122710 |
| 2643 | 37100.37300.37600.38100.39100.40500.41500.67800.971900 | Electrical wiring work | 11.94d | 2028-03-03 | 2028-03-15 | 2627, 2642 |  | 122720 |
| 2644 | 37100.37300.37600.38100.39100.40500.41500.67800.972000 | Painting 1st coat | 11.94d | 2028-03-18 | 2028-03-30 | 2628, 2641, 2642, 2643 |  | 122730 |
| 2645 | 37100.37300.37600.38100.39100.40500.41500.67800.972100 | False ceiling | 9.94d | 2028-03-30 | 2028-04-09 | 2629, 2644 |  | 122740 |

| ID | WBS | Task | Duration | Start | Finish | Predecessors | Constraint | Unique_Task_ID |
| --- | --- | --- | --- | --- | --- | --- | --- | --- |
| 2646 | 37100.37300.37600.38100.39100.40500.41500.67900 | **35th Floor** | 407d | 2027-03-11 | 2028-04-21 |  | start no earlier than 2027-03-11 | 7568763 |
| 2647 | 37100.37300.37600.38100.39100.40500.41500.67900.972200 | Block Work | 7.94d | 2027-03-11 | 2027-03-18 | 2099, 2631 |  | 122750 |
| 2648 | 37100.37300.37600.38100.39100.40500.41500.67900.972300 | Door Frame Fixing | 8.94d | 2027-03-24 | 2027-04-01 | 2632, 2647 |  | 122770 |
| 2649 | 37100.37300.37600.38100.39100.40500.41500.67900.972400 | Internal Plumbing Works | 9.94d | 2027-03-29 | 2027-04-07 | 2633, 2647 |  | 122780 |
| 2650 | 37100.37300.37600.38100.39100.40500.41500.67900.972500 | Waterproofing | 11.94d | 2027-04-17 | 2027-04-29 | 2634, 2649 |  | 122790 |
| 2651 | 37100.37300.37600.38100.39100.40500.41500.67900.972600 | Internal Plaster | 11d | 2027-05-07 | 2027-05-18 | 2635, 2648, 2649, 2650 |  | 122800 |
| 2652 | 37100.37300.37600.38100.39100.40500.41500.67900.972700 | IPS flooring work | 8.94d | 2027-05-18 | 2027-05-27 | 2636, 2648, 2650, 2651 |  | 122810 |
| 2653 | 37100.37300.37600.38100.39100.40500.41500.67900.972800 | Toilet dado work | 7.94d | 2027-05-18 | 2027-05-26 | 2637, 2650, 2651 |  | 122820 |
| 2654 | 37100.37300.37600.38100.39100.40500.41500.67900.972900 | Toilet flooring work | 6.94d | 2027-05-26 | 2027-06-01 | 2638, 2653 |  | 122830 |
| 2655 | 37100.37300.37600.38100.39100.40500.41500.67900.973000 | Living dinning flooring | 9d | 2027-06-15 | 2027-06-23 | 2639, 2648, 2654 |  | 122840 |
| 2656 | 37100.37300.37600.38100.39100.40500.41500.67900.973100 | Aluminium door-window fixing | 14.94d | 2027-07-05 | 2027-07-20 | 2640, 2652, 2655 |  | 122850 |
| 2657 | 37100.37300.37600.38100.39100.40500.41500.67900.973200 | Putty primer coat | 5.94d | 2027-06-24 | 2027-06-29 | 2641, 2655 |  | 122860 |
| 2658 | 37100.37300.37600.38100.39100.40500.41500.67900.973300 | Door shutter fixing | 7.94d | 2027-06-24 | 2027-07-01 | 2642, 2655 |  | 122870 |
| 2659 | 37100.37300.37600.38100.39100.40500.41500.67900.973400 | Electrical wiring work | 11.94d | 2028-03-15 | 2028-03-27 | 2643, 2658 |  | 122880 |
| 2660 | 37100.37300.37600.38100.39100.40500.41500.67900.973500 | Painting 1st coat | 11.94d | 2028-03-30 | 2028-04-11 | 2644, 2657, 2658, 2659 |  | 122890 |
| 2661 | 37100.37300.37600.38100.39100.40500.41500.67900.973600 | False ceiling | 9.94d | 2028-04-11 | 2028-04-21 | 2645, 2660 |  | 122900 |
| 2662 | 37100.37300.37600.38100.39100.40500.191100 | **Terrace Finishing** | 79.88d | 2026-10-28 | 2027-03-02 |  | start no earlier than 2026-10-28 | 7571263 |
| 2663 | 37100.37300.37600.38100.39100.40500.191100.451100 | Terrace waterproofing | 39.94d | 2026-10-28 | 2027-01-21 | 2056 |  | 7579833 |
| 2664 | 37100.37300.37600.38100.39100.40500.191100.451200 | Terrace finishing | 39.94d | 2027-01-21 | 2027-03-02 | 2663 |  | 7579843 |
| 2665 | 37100.37300.37600.38100.39100.40500.100800 | **Common Area Finishing** | 279.31d | 2026-01-13 | 2026-10-19 |  | start no earlier than 2026-01-13 | 7569243 |
| 2666 | 37100.37300.37600.38100.39100.40500.100800.451300 | Block Work | 39.94d | 2026-01-13 | 2026-02-22 | 2067FS+0.25d |  | 7579853 |
| 2667 | 37100.37300.37600.38100.39100.40500.100800.451400 | Internal Plaster | 119.94d | 2026-02-18 | 2026-06-18 | 2672SS+17.88d |  | 7579863 |
| 2668 | 37100.37300.37600.38100.39100.40500.100800.451500 | Staircase railing fixing | 149.94d | 2026-05-22 | 2026-10-19 | 2670SS+26.75d, 2669SS+26.75d |  | 7579873 |
| 2669 | 37100.37300.37600.38100.39100.40500.100800.451600 | Main staircase flooring | 149.94d | 2026-04-26 | 2026-09-23 | 2670SS+13.38d |  | 7579883 |
| 2670 | 37100.37300.37600.38100.39100.40500.100800.451700 | Fire staircase flooring | 149.94d | 2026-04-12 | 2026-09-09 | 2667SS+13.38d, 2674SS+26.75d |  | 7579893 |
| 2671 | 37100.37300.37600.38100.39100.40500.100800.451800 | Fire door work | 59.94d | 2026-05-22 | 2026-07-21 | 2669SS+26.75d, 2670SS+26.75d |  | 7579903 |
| 2672 | 37100.37300.37600.38100.39100.40500.100800.451900 | Electrical wiring work | 119.94d | 2026-01-31 | 2026-05-31 | 2666SS+17.88d |  | 7579913 |
| 2673 | 37100.37300.37600.38100.39100.40500.100800.452000 | Lobby flooring | 150d | 2026-02-03 | 2026-07-03 | 2672SS+3.38d |  | 7579923 |
| 2674 | 37100.37300.37600.38100.39100.40500.100800.452100 | Ceiling & wall putty-primer | 109.94d | 2026-03-17 | 2026-07-04 | 2667SS+26.75d |  | 7579933 |
| 2675 | 37100.37300.37600.38100.39100.40500.100800.452200 | Ceiling & wall painting | 99.94d | 2026-04-03 | 2026-07-12 | 2674SS+17.88d |  | 7579943 |
| 2676 | 37100.37300.37600.38100.39100.40500.100800.452300 | Light fixture supply & installation | 44.94d | 2026-05-27 | 2026-07-11 | 2675SS+53.38d |  | 7579953 |

| ID | WBS | Task | Duration | Start | Finish | Predecessors | Constraint | Unique_Task_ID |
| --- | --- | --- | --- | --- | --- | --- | --- | --- |
| 2677 | 37100.37300.37600.38100.39100.40500.46500 | **Balcony Glass Railing** | 58.12d | 2027-09-04 | 2027-11-01 |  | start no earlier than 2027-09-04 | 133870 |
| 2678 | 37100.37300.37600.38100.39100.40500.46500.452400 | 1st Floor | 1.94d | 2027-09-04 | 2027-09-06 | 2746 |  | 133880 |
| 2679 | 37100.37300.37600.38100.39100.40500.46500.452500 | 2nd Floor | 1.94d | 2027-09-06 | 2027-09-07 | 2678 |  | 133890 |
| 2680 | 37100.37300.37600.38100.39100.40500.46500.452600 | 3rd Floor | 1.94d | 2027-09-08 | 2027-09-09 | 2679 |  | 133900 |
| 2681 | 37100.37300.37600.38100.39100.40500.46500.452700 | 4th Floor | 1.94d | 2027-09-09 | 2027-09-11 | 2680 |  | 133910 |
| 2682 | 37100.37300.37600.38100.39100.40500.46500.452800 | 5th Floor | 1.94d | 2027-09-11 | 2027-09-13 | 2681 |  | 133920 |
| 2683 | 37100.37300.37600.38100.39100.40500.46500.452900 | 6th Floor | 1.94d | 2027-09-13 | 2027-09-15 | 2682 |  | 133930 |
| 2684 | 37100.37300.37600.38100.39100.40500.46500.453000 | 7th Floor | 1.94d | 2027-09-15 | 2027-09-17 | 2683 |  | 133940 |
| 2685 | 37100.37300.37600.38100.39100.40500.46500.453100 | 8th Floor | 1.94d | 2027-09-17 | 2027-09-19 | 2684 |  | 133950 |
| 2686 | 37100.37300.37600.38100.39100.40500.46500.453200 | 9th Floor | 1.94d | 2027-09-19 | 2027-09-21 | 2685 |  | 133960 |
| 2687 | 37100.37300.37600.38100.39100.40500.46500.453300 | 10th Floor | 1.94d | 2027-09-21 | 2027-09-23 | 2686 |  | 133970 |
| 2688 | 37100.37300.37600.38100.39100.40500.46500.453400 | 11th Floor | 1.94d | 2027-09-23 | 2027-09-25 | 2687 |  | 133980 |
| 2689 | 37100.37300.37600.38100.39100.40500.46500.453500 | 12th Floor | 1.94d | 2027-09-25 | 2027-09-27 | 2688 |  | 133990 |
| 2690 | 37100.37300.37600.38100.39100.40500.46500.453600 | 13th Floor | 1.94d | 2027-09-27 | 2027-09-29 | 2689 |  | 134000 |
| 2691 | 37100.37300.37600.38100.39100.40500.46500.453700 | 14th Floor | 1.94d | 2027-09-29 | 2027-10-01 | 2690 |  | 134010 |
| 2692 | 37100.37300.37600.38100.39100.40500.46500.453800 | 15th Floor | 1.94d | 2027-10-01 | 2027-10-03 | 2691 |  | 134020 |
| 2693 | 37100.37300.37600.38100.39100.40500.46500.453900 | 16th Floor | 1.94d | 2027-10-03 | 2027-10-05 | 2692 |  | 134030 |
| 2694 | 37100.37300.37600.38100.39100.40500.46500.454000 | 17th Floor | 1.94d | 2027-10-05 | 2027-10-07 | 2693 |  | 134040 |
| 2695 | 37100.37300.37600.38100.39100.40500.46500.454100 | 18th Floor | 1.94d | 2027-10-07 | 2027-10-08 | 2694 |  | 134050 |
| 2696 | 37100.37300.37600.38100.39100.40500.46500.454200 | 19th Floor | 1.94d | 2027-10-09 | 2027-10-10 | 2695 |  | 134060 |
| 2697 | 37100.37300.37600.38100.39100.40500.46500.454300 | 20th Floor | 1.94d | 2027-10-10 | 2027-10-12 | 2696 |  | 134070 |
| 2698 | 37100.37300.37600.38100.39100.40500.46500.454400 | 21st Floor | 1.94d | 2027-10-12 | 2027-10-14 | 2697 |  | 134080 |
| 2699 | 37100.37300.37600.38100.39100.40500.46500.454500 | 22nd Floor | 1.94d | 2027-10-14 | 2027-10-16 | 2698 |  | 134090 |
| 2700 | 37100.37300.37600.38100.39100.40500.46500.454600 | 23rd Floor | 1.94d | 2027-10-16 | 2027-10-18 | 2699 |  | 134100 |
| 2701 | 37100.37300.37600.38100.39100.40500.46500.454700 | 24th Floor | 1.94d | 2027-10-18 | 2027-10-20 | 2700 |  | 134110 |
| 2702 | 37100.37300.37600.38100.39100.40500.46500.454800 | 25th Floor | 1.94d | 2027-10-20 | 2027-10-22 | 2701 |  | 134120 |
| 2703 | 37100.37300.37600.38100.39100.40500.46500.454900 | 26th Floor | 1.94d | 2027-10-22 | 2027-10-24 | 2702 |  | 134130 |
| 2704 | 37100.37300.37600.38100.39100.40500.46500.455000 | 27th Floor | 1.94d | 2027-10-24 | 2027-10-26 | 2703 |  | 134140 |
| 2705 | 37100.37300.37600.38100.39100.40500.46500.455100 | 28th Floor | 1.94d | 2027-10-26 | 2027-10-28 | 2704 |  | 134150 |
| 2706 | 37100.37300.37600.38100.39100.40500.46500.455200 | 29th Floor | 1.94d | 2027-10-28 | 2027-10-30 | 2705 |  | 134160 |
| 2707 | 37100.37300.37600.38100.39100.40500.46500.455300 | 30th Floor | 1.94d | 2027-10-30 | 2027-11-01 | 2706 |  | 134170 |
| 2708 | 37100.37300.37600.38100.39100.40500.46500.455400 | 31st Floor | 0d | 2027-11-01 | 2027-11-01 | 2707 |  | 134180 |
| 2709 | 37100.37300.37600.38100.39100.40500.46500.455500 | 32nd Floor | 0d | 2027-11-01 | 2027-11-01 | 2708 |  | 134190 |
| 2710 | 37100.37300.37600.38100.39100.40500.46500.455600 | 33rd Floor | 0d | 2027-11-01 | 2027-11-01 | 2709 |  | 134200 |
| 2711 | 37100.37300.37600.38100.39100.40500.46500.455700 | 34th Floor | 0d | 2027-11-01 | 2027-11-01 | 2710 |  | 134210 |
| 2712 | 37100.37300.37600.38100.39100.40500.46500.455800 | 35th Floor | 0d | 2027-11-01 | 2027-11-01 | 2711 |  | 134220 |

| ID | WBS | Task | Duration | Start | Finish | Predecessors | Constraint | Unique_Task_ID |
| --- | --- | --- | --- | --- | --- | --- | --- | --- |
| 2713 | 37100.37300.37600.38100.95400 | **MEP work** | 964.69d | 2026-04-12 | 2029-01-16 |  | start no earlier than 2026-04-12 | 7569133 |
| 2714 | 37100.37300.37600.38100.95400.98100 | **Electrical work** | 233.25d | 2027-01-23 | 2027-09-13 |  | start no earlier than 2027-01-23 | 7569183 |
| 2715 | 37100.37300.37600.38100.95400.98100.316700 | Cable Tray | 89.94d | 2027-01-23 | 2027-04-23 | 2061 |  | 7573683 |
| 2716 | 37100.37300.37600.38100.95400.98100.316800 | Cable, main & sub main | 79.94d | 2027-03-04 | 2027-05-23 | 2715SS+40d |  | 7573693 |
| 2717 | 37100.37300.37600.38100.95400.98100.316900 | LT panel & DB | 119.94d | 2027-04-23 | 2027-08-21 | 2715 |  | 7573703 |
| 2718 | 37100.37300.37600.38100.95400.98100.317000 | Rising main | 89.94d | 2027-06-15 | 2027-09-13 | 2715FS+53.38d |  | 7573713 |
| 2719 | 37100.37300.37600.38100.95400.98100.317100 | EARTHING Works | 59.94d | 2027-05-06 | 2027-07-05 | 2715FS+13.38d |  | 7573723 |
| 2720 | 37100.37300.37600.38100.95400.98100.317200 | Advance lightening protection | 59.94d | 2027-03-02 | 2027-05-01 | 2664 |  | 7573733 |
| 2721 | 37100.37300.37600.38100.95400.98100.317300 | Inverter | 34.94d | 2027-07-05 | 2027-08-09 | 2719 |  | 7573743 |
| 2722 | 37100.37300.37600.38100.95400.98100.317400 | Energy meter | 59.94d | 2027-05-23 | 2027-07-22 | 2716 |  | 7573753 |
| 2723 | 37100.37300.37600.38100.95400.98100.317500 | Exhast fan | 59.94d | 2027-05-26 | 2027-07-25 | 2656FF+4.5d |  | 7573763 |
| 2724 | 37100.37300.37600.38100.95400.98100.317600 | FTTH | 59.94d | 2027-06-26 | 2027-08-25 | 2719FS-9d |  | 7573773 |
| 2725 | 37100.37300.37600.38100.95400.98100.317700 | Security System - FA & PA | 54.94d | 2027-07-01 | 2027-08-25 | 2724FF |  | 7573783 |
| 2726 | 37100.37300.37600.38100.95400.98100.317800 | Solar water heater | 59.94d | 2027-03-02 | 2027-05-01 | 2664 |  | 7573793 |
| 2727 | 37100.37300.37600.38100.95400.128900 | **Plumbing wrok** | 397.31d | 2027-01-21 | 2028-02-23 |  | start no earlier than 2027-01-21 | 7569423 |
| 2728 | 37100.37300.37600.38100.95400.128900.317900 | Terrace looping | 44.94d | 2027-01-21 | 2027-03-07 | 2663 |  | 7573803 |
| 2729 | 37100.37300.37600.38100.95400.128900.318000 | Shaft Plumbing | 119.94d | 2027-03-07 | 2027-07-05 | 2728 |  | 7573813 |
| 2730 | 37100.37300.37600.38100.95400.128900.318100 | CP sanitary fixture supply | 74.94d | 2027-07-25 | 2027-10-08 | 2651, 2654FS+53.38d |  | 7573823 |
| 2731 | 37100.37300.37600.38100.95400.128900.318200 | Cold & flushing water supply | 89.94d | 2027-04-19 | 2027-07-18 | 2667SS+380d |  | 7573833 |
| 2732 | 37100.37300.37600.38100.95400.128900.318300 | Misc work | 29.94d | 2028-01-24 | 2028-02-23 | 2731FS+190d |  | 7573843 |
| 2733 | 37100.37300.37600.38100.95400.172600 | **Fire fighting work** | 437.94d | 2026-04-12 | 2027-08-08 |  | start no earlier than 2026-04-12 | 7569533 |
| 2734 | 37100.37300.37600.38100.95400.172600.318400 | Fire hydrant work | 89.94d | 2026-04-12 | 2026-07-11 | 2667SS+53.38d |  | 7573853 |
| 2735 | 37100.37300.37600.38100.95400.172600.318500 | Sprinkler & piping work | 88d | 2027-05-12 | 2027-08-08 | 2734FS+260d |  | 7573863 |
| 2736 | 37100.37300.37600.38100.95400.172600.318600 | Shaft Downtake works | 89.94d | 2027-01-21 | 2027-04-21 | 2663 |  | 7573873 |
| 2737 | 37100.37300.37600.38100.95400.172600.318700 | Connection to pump room | 29.94d | 2027-04-21 | 2027-05-21 | 2736 |  | 7573883 |

| ID | WBS | Task | Duration | Start | Finish | Predecessors | Complete | Constraint | Unique_Task_ID |
| --- | --- | --- | --- | --- | --- | --- | --- | --- | --- |
| 2738 | 37100.37300.37600.38100.95400.186300 | **Lift work** | 304.88d | 2027-01-23 | 2027-11-24 |  |  | start no earlier than 2027-01-23 | 7571183 |
| 2739 | 37100.37300.37600.38100.95400.186300.318800 | Lift Shaft Handover | 39.94d | 2027-01-23 | 2027-03-04 | 2061 |  |  | 7573893 |
| 2740 | 37100.37300.37600.38100.95400.186300.318900 | Lift installation work | 180d | 2027-03-04 | 2027-08-31 | 2739 |  |  | 7573903 |
| 2741 | 37100.37300.37600.38100.95400.186300.319000 | Lift testing and commissioning | 84.94d | 2027-08-31 | 2027-11-24 | 2740 |  |  | 7573913 |
| 2742 | 37100.37300.37600.38100.95400.194700 | **AC work** | 96.94d | 2028-10-11 | 2029-01-16 |  |  | start no earlier than 2028-10-11 | 7571303 |
| 2743 | 37100.37300.37600.38100.95400.194700.319100 | Split AC | 96.94d | 2028-10-11 | 2029-01-16 | 2759FS+119d |  |  | 7573923 |
| 2744 | 37100.37300.37600.38100.169000 | **Tower Completion** | 239.88d | 2027-03-08 | 2027-11-03 |  |  | start no earlier than 2027-03-08 | 7569463 |
| 2745 | 37100.37300.37600.38100.169000.264200 | SURFACE PREPARATION | 79.94d | 2027-03-08 | 2027-05-27 | 2099FS+1.88d |  |  | 7571663 |
| 2746 | 37100.37300.37600.38100.169000.264300 | External Painting | 99.94d | 2027-05-27 | 2027-09-04 | 2745 |  |  | 7571673 |
| 2747 | 37100.37300.37600.38100.169000.264400 | Final coat of painting | 60d | 2027-09-04 | 2027-11-03 | 2746 |  |  | 7571683 |
| 2748 | 37100.37300.37600.38100.169000.264500 | Misc. work | 59.94d | 2027-09-04 | 2027-11-03 | 2746 |  |  | 7571693 |
| 2749 | 37100.37300.37600.38100.194400 | **Basement lobby** | 60d | 2026-07-03 | 2026-09-01 |  |  | start no earlier than 2026-07-03 | 7571343 |
| 2750 | 37100.37300.37600.38100.194400.264600 | Basement lobby | 60d | 2026-07-03 | 2026-09-01 | 2673 |  |  | 7571703 |
| 2751 | 37100.37300.37600.38100.107200 | **Post OC activities** | 465.31d | 2028-03-27 | 2029-07-05 |  |  | start no earlier than 2028-03-27 | 7569333 |
| 2752 | 37100.37300.37600.38100.107200.264700 | Wardrobe installation | 176.94d | 2028-05-18 | 2028-11-11 | 2759FS-26.75d |  |  | 7571713 |
| 2753 | 37100.37300.37600.38100.107200.264800 | CP & SANITARYWARE | 116.94d | 2028-05-18 | 2028-09-12 | 2759FS-26.75d, 2730 |  |  | 7571723 |
| 2754 | 37100.37300.37600.38100.107200.264900 | Wooden Flooring | 176.94d | 2028-05-18 | 2028-11-11 | 2759FS-26.75d |  |  | 7571733 |
| 2755 | 37100.37300.37600.38100.107200.265000 | Electrical Fixtures And Fittings | 74.94d | 2028-03-27 | 2028-06-10 | 2659 |  |  | 7571743 |
| 2756 | 37100.37300.37600.38100.107200.265100 | Modular Kitchen | 176.94d | 2029-01-09 | 2029-07-05 | 2753FS+119d |  |  | 114831 |
| 2757 | 37100.37300.37600.38100.107200.265200 | External Elevation Façade | 89.94d | 2028-10-11 | 2029-01-09 | 2759FS+119d |  |  | 7571753 |
| 2758 | 37100.37300.37600.38100.255200 | OC Application/Readiness | 0d | 2028-04-21 | 2028-04-21 | 2061, 2668FS+7.12d, 1873, 1874, 2059, 2671, 2661, 2712, 2717, 2718, 2720, 2721, 2722, 2723, 2725, 2726, 2729, 2732, 2735, 2737, 2741 |  |  | 7571413 |
| 2759 | 37100.37300.37600.38100.255300 | OC Receipt | 0.94d | 2028-06-13 | 2028-06-14 | 2758FS+53.38d, 2747, 2748 |  |  | 7571423 |
| 2760 | 37100.37300.37600.38100.255400 | Offer To Possession | 29.94d | 2029-07-05 | 2029-08-04 | 2752, 2753, 2754, 2755, 2756, 2757 |  |  | 132360 |
| 2761 | 37100.37300.37600.38200 | **Tower 2** | 1728d | 2024-01-10 | 2029-01-08 |  | 6% | start no earlier than 2024-01-10 | 7567513 |
| 2762 | 37100.37300.37600.38200.97900 | **Substructure** | 776.69d | 2024-01-10 | 2026-04-18 |  | 62% | start no earlier than 2024-01-10 | 7569223 |
| 2763 | 37100.37300.37600.38200.97900.108300 | **Soil Bed Preparation** | 706.81d | 2024-01-10 | 2026-02-07 |  | 78% | start no earlier than 2024-01-10 | 7569343 |
| 2764 | 37100.37300.37600.38200.97900.108300.235200 | Test Piling | 24.94d | 2024-02-01 | 2024-02-25 |  | 100% | start no earlier than 2024-02-01 | 7573933 |
| 2765 | 37100.37300.37600.38200.97900.108300.235100 | Excavation | 29.94d | 2024-01-10 | 2024-02-08 | 7SS+36.74d | 100% | start no earlier than 2024-01-10 | 7573943 |
| 2766 | 37100.37300.37600.38200.97900.108300.235000 | Main Piling Work | 169.06d | 2024-04-12 | 2024-10-11 | 7FS-12.45d | 100% | start no earlier than 2024-04-12 | 7573953 |
| 2767 | 37100.37300.37600.38200.97900.108300.319200 | Anti-termite | 4.94d | 2025-11-30 | 2025-12-04 | 2765FS-14.7d, 2766FS+1.94d |  |  | 7573963 |
| 2768 | 37100.37300.37600.38200.97900.108300.234800 | PCC | 9.69d | 2024-10-18 | 2024-10-27 | 2767SS+21.89d | 100% | start no earlier than 2024-10-18 | 7573973 |
| 2769 | 37100.37300.37600.38200.97900.108300.319300 | Backfilling | 59.94d | 2025-11-30 | 2026-02-07 | 2782FS-8d |  |  | 7573983 |

| ID | WBS | Task | Duration | Start | Finish | Predecessors | Complete | Constraint | Unique_Task_ID |
| --- | --- | --- | --- | --- | --- | --- | --- | --- | --- |
| 2770 | 37100.37300.37600.38200.97900.103400 | **RCC Structure** | 142d | 2024-12-16 | 2025-05-06 |  | 100% | start no earlier than 2024-12-16 | 7569313 |
| 2771 | 37100.37300.37600.38200.97900.103400.174200 | **Raft Foundation** | 32d | 2024-12-16 | 2025-01-16 |  | 100% | start no earlier than 2024-12-16 | 7571103 |
| 2772 | 37100.37300.37600.38200.97900.103400.174200.216000 | Reinforcement | 26d | 2024-12-16 | 2025-01-11 | 2768SS+5d | 100% | start no earlier than 2024-12-16 | 7579963 |
| 2773 | 37100.37300.37600.38200.97900.103400.174200.216100 | Formwork | 21d | 2024-12-24 | 2025-01-13 | 2772FF | 100% | start no earlier than 2024-12-24 | 7579973 |
| 2774 | 37100.37300.37600.38200.97900.103400.174200.216200 | Concreting | 4d | 2025-01-13 | 2025-01-16 | 2773FS+2d | 100% | start no earlier than 2025-01-13 | 7579983 |
| 2775 | 37100.37300.37600.38200.97900.103400.174100 | **Basement 1 Slab** | 40d | 2025-01-17 | 2025-02-25 |  | 100% | start no earlier than 2025-01-17 | 7571113 |
| 2776 | 37100.37300.37600.38200.97900.103400.174100.216300 | Reinforcement | 21d | 2025-01-17 | 2025-02-20 | 2774 | 100% | start no earlier than 2025-01-17 | 7579993 |
| 2777 | 37100.37300.37600.38200.97900.103400.174100.216400 | Formwork | 21d | 2025-01-20 | 2025-02-24 | 2776SS+3d | 100% | start no earlier than 2025-01-20 | 7580003 |
| 2778 | 37100.37300.37600.38200.97900.103400.174100.216500 | Concreting | 1d | 2025-02-25 | 2025-02-25 | 2777 | 100% | start no earlier than 2025-02-25 | 7580013 |
| 2779 | 37100.37300.37600.38200.97900.103400.174000 | **Basement 2 Slab/GF** | 25d | 2025-02-13 | 2025-03-09 |  | 100% | start no earlier than 2025-02-13 | 7571123 |
| 2780 | 37100.37300.37600.38200.97900.103400.174000.216600 | Reinforcement | 16d | 2025-02-13 | 2025-03-06 | 2778 | 100% | start no earlier than 2025-02-13 | 7580023 |
| 2781 | 37100.37300.37600.38200.97900.103400.174000.216700 | Formwork | 14d | 2025-02-17 | 2025-03-07 | 2780SS+3d | 100% | start no earlier than 2025-02-17 | 7580033 |
| 2782 | 37100.37300.37600.38200.97900.103400.174000.216800 | Concreting | 3d | 2025-03-01 | 2025-03-09 | 2781FS-6d | 100% | start no earlier than 2025-03-01 | 7580043 |
| 2783 | 37100.37300.37600.38200.97900.103400.173900 | **Podium** | 67d | 2025-03-01 | 2025-05-06 |  | 100% | start no earlier than 2025-03-01 | 7571133 |
| 2784 | 37100.37300.37600.38200.97900.103400.173900.216900 | Reinforcement | 36d | 2025-03-01 | 2025-05-05 | 2782FS-8d | 100% | start no earlier than 2025-03-01 | 7580053 |
| 2785 | 37100.37300.37600.38200.97900.103400.173900.217000 | Formwork | 33d | 2025-03-04 | 2025-05-05 | 2784SS+3d | 100% | start no earlier than 2025-03-04 | 7580063 |
| 2786 | 37100.37300.37600.38200.97900.103400.173900.217100 | Concreting | 1d | 2025-05-06 | 2025-05-06 | 2785 | 100% | start no earlier than 2025-05-06 | 7580073 |
| 2787 | 37100.37300.37600.38200.97900.170600 | **Substructure Finishing** | 129.81d | 2025-11-30 | 2026-04-18 |  |  | start no earlier than 2025-11-30 | 7569543 |
| 2788 | 37100.37300.37600.38200.97900.170600.319400 | Masonary work | 44.94d | 2025-11-30 | 2026-01-23 | 2786FS+26.75d |  |  | 7573993 |
| 2789 | 37100.37300.37600.38200.97900.170600.319500 | Plaster | 39.94d | 2026-01-23 | 2026-03-04 | 2788 |  |  | 7574003 |
| 2790 | 37100.37300.37600.38200.97900.170600.319600 | Structural steel | 59.94d | 2025-11-30 | 2026-02-07 | 2786FS+53.38d |  |  | 7574013 |
| 2791 | 37100.37300.37600.38200.97900.170600.319700 | White Wash | 44.94d | 2026-03-04 | 2026-04-18 | 2789 |  |  | 7574023 |
| 2792 | 37100.37300.37600.38200.39200 | **Superstructure** | 1008.94d | 2025-05-06 | 2028-04-15 |  | 4% | start no earlier than 2025-05-06 | 7567553 |
| 2793 | 37100.37300.37600.38200.39200.43600 | **RCC structure** | 550.12d | 2025-05-06 | 2027-01-12 |  | 33% | start no earlier than 2025-05-06 | 7567673 |
| 2794 | 37100.37300.37600.38200.39200.43600.131000 | **1st floor slab** | 59d | 2025-05-06 | 2025-07-03 |  | 100% | start no earlier than 2025-05-06 | 7570673 |
| 2795 | 37100.37300.37600.38200.39200.43600.131000.217200 | Reinforcement | 28d | 2025-05-06 | 2025-06-29 | 2786FS+1d | 100% | start no earlier than 2025-05-06 | 7580083 |
| 2796 | 37100.37300.37600.38200.39200.43600.131000.217300 | Wall conduiting | 22d | 2025-05-08 | 2025-07-01 | 2795SS+2.75d | 100% | start no earlier than 2025-05-08 | 7580093 |
| 2797 | 37100.37300.37600.38200.39200.43600.131000.217400 | Formwork | 26d | 2025-05-09 | 2025-07-02 | 2795SS+3d | 100% | start no earlier than 2025-05-09 | 7580103 |
| 2798 | 37100.37300.37600.38200.39200.43600.131000.217500 | Concreting | 13d | 2025-06-13 | 2025-07-03 | 2797FS-13d | 100% | start no earlier than 2025-06-13 | 7580113 |

| ID | WBS | Task | Duration | Start | Finish | Predecessors | Complete | Constraint | Unique_Task_ID |
| --- | --- | --- | --- | --- | --- | --- | --- | --- | --- |
| 2799 | 37100.37300.37600.38200.39200.43600.131100 | **2nd floor slab** | 49d | 2025-07-07 | 2025-08-24 |  | 100% | start no earlier than 2025-07-07 | 7570683 |
| 2800 | 37100.37300.37600.38200.39200.43600.131100.217600 | Reinforcement | 15d | 2025-07-07 | 2025-08-24 | 2798FS+1d | 100% | start no earlier than 2025-07-07 | 7580123 |
| 2801 | 37100.37300.37600.38200.39200.43600.131100.217700 | Wall conduiting | 8d | 2025-07-09 | 2025-08-24 | 2796, 2800SS+2.75d | 100% | start no earlier than 2025-07-09 | 7580133 |
| 2802 | 37100.37300.37600.38200.39200.43600.131100.217800 | Formwork | 20d | 2025-07-07 | 2025-08-24 | 2800SS | 100% | start no earlier than 2025-07-07 | 7580143 |
| 2803 | 37100.37300.37600.38200.39200.43600.131100.217900 | Concreting | 3d | 2025-08-08 | 2025-08-24 | 2802FS-15d | 100% | start no earlier than 2025-08-08 | 7580153 |
| 2804 | 37100.37300.37600.38200.39200.43600.131200 | **3rd floor slab** | 30d | 2025-08-10 | 2025-09-08 |  | 100% | start no earlier than 2025-08-10 | 7570693 |
| 2805 | 37100.37300.37600.38200.39200.43600.131200.218000 | Reinforcement | 11d | 2025-08-10 | 2025-09-08 | 2803FS-15d | 100% | start no earlier than 2025-08-10 | 7580163 |
| 2806 | 37100.37300.37600.38200.39200.43600.131200.218100 | Wall conduiting | 6d | 2025-08-16 | 2025-09-07 | 2805SS+14.75d, 2801FS-8.25d | 100% | start no earlier than 2025-08-16 | 7580173 |
| 2807 | 37100.37300.37600.38200.39200.43600.131200.218200 | Formwork | 14d | 2025-08-16 | 2025-09-08 | 2805SS | 100% | start no earlier than 2025-08-16 | 7580183 |
| 2808 | 37100.37300.37600.38200.39200.43600.131200.218300 | Concreting | 1d | 2025-09-08 | 2025-09-08 | 2807 | 100% | start no earlier than 2025-09-08 | 7580193 |
| 2809 | 37100.37300.37600.38200.39200.43600.128200 | **4th floor slab** | 14d | 2025-09-09 | 2025-09-22 |  | 100% | start no earlier than 2025-09-09 | 7570703 |
| 2810 | 37100.37300.37600.38200.39200.43600.128200.218400 | Reinforcement | 8d | 2025-09-09 | 2025-09-21 | 2808FS+1d | 100% | start no earlier than 2025-09-09 | 7580203 |
| 2811 | 37100.37300.37600.38200.39200.43600.128200.218500 | Wall conduiting | 8d | 2025-09-09 | 2025-09-21 | 2806, 2810SS+1d | 100% | start no earlier than 2025-09-09 | 7580213 |
| 2812 | 37100.37300.37600.38200.39200.43600.128200.218600 | Formwork | 7d | 2025-09-09 | 2025-09-21 | 2810SS+1d | 100% | start no earlier than 2025-09-09 | 7580223 |
| 2813 | 37100.37300.37600.38200.39200.43600.128200.218700 | Concreting | 4d | 2025-09-14 | 2025-09-22 | 2812FS-7d | 100% | start no earlier than 2025-09-14 | 7580233 |
| 2814 | 37100.37300.37600.38200.39200.43600.128300 | **5th floor slab** | 12d | 2025-09-18 | 2025-09-29 |  | 100% | start no earlier than 2025-09-18 | 7570713 |
| 2815 | 37100.37300.37600.38200.39200.43600.128300.218800 | Reinforcement | 8d | 2025-09-18 | 2025-09-28 | 2813FS+1d | 100% | start no earlier than 2025-09-18 | 7580243 |
| 2816 | 37100.37300.37600.38200.39200.43600.128300.219400 | Wall conduiting | 3d | 2025-09-18 | 2025-09-28 | 2811, 2815SS+1d | 100% | start no earlier than 2025-09-18 | 7580253 |
| 2817 | 37100.37300.37600.38200.39200.43600.128300.219500 | Formwork | 7d | 2025-09-18 | 2025-09-28 | 2815SS+1d | 100% | start no earlier than 2025-09-18 | 7580263 |
| 2818 | 37100.37300.37600.38200.39200.43600.128300.219600 | Concreting | 1d | 2025-09-29 | 2025-09-29 | 2817 | 100% | start no earlier than 2025-09-29 | 7580273 |
| 2819 | 37100.37300.37600.38200.39200.43600.128400 | **6th floor slab** | 13d | 2025-09-28 | 2025-10-10 |  | 100% | start no earlier than 2025-09-28 | 7570723 |
| 2820 | 37100.37300.37600.38200.39200.43600.128400.219700 | Reinforcement | 8d | 2025-09-28 | 2025-10-09 | 2818FS+1d | 100% | start no earlier than 2025-09-28 | 7580283 |
| 2821 | 37100.37300.37600.38200.39200.43600.128400.219800 | Wall conduiting | 7d | 2025-09-28 | 2025-10-09 | 2816, 2820SS+1d | 100% | start no earlier than 2025-09-28 | 7580293 |
| 2822 | 37100.37300.37600.38200.39200.43600.128400.219900 | Formwork | 7d | 2025-09-28 | 2025-10-09 | 2820SS+1d | 100% | start no earlier than 2025-09-28 | 7580303 |
| 2823 | 37100.37300.37600.38200.39200.43600.128400.220000 | Concreting | 3d | 2025-10-06 | 2025-10-10 | 2822 | 100% | start no earlier than 2025-10-06 | 7580313 |

| ID | WBS | Task | Duration | Start | Finish | Predecessors | Complete | Constraint | Unique_Task_ID |
| --- | --- | --- | --- | --- | --- | --- | --- | --- | --- |
| 2824 | 37100.37300.37600.38200.39200.43600.128500 | **7th floor slab** | 14d | 2025-10-07 | 2025-10-20 |  | 100% | start no earlier than 2025-10-07 | 7570733 |
| 2825 | 37100.37300.37600.38200.39200.43600.128500.220100 | Reinforcement | 8d | 2025-10-07 | 2025-10-18 | 2823FS+1d | 100% | start no earlier than 2025-10-07 | 7580323 |
| 2826 | 37100.37300.37600.38200.39200.43600.128500.220200 | Wall conduiting | 6d | 2025-10-07 | 2025-10-18 | 2821, 2825SS+1d | 100% | start no earlier than 2025-10-07 | 7580333 |
| 2827 | 37100.37300.37600.38200.39200.43600.128500.220300 | Formwork | 7d | 2025-10-07 | 2025-10-18 | 2825SS+1d | 100% | start no earlier than 2025-10-07 | 7580343 |
| 2828 | 37100.37300.37600.38200.39200.43600.128500.220400 | Concreting | 3d | 2025-10-16 | 2025-10-20 | 2827 | 100% | start no earlier than 2025-10-16 | 7580353 |
| 2829 | 37100.37300.37600.38200.39200.43600.128600 | **8th floor slab** | 22.69d | 2025-10-20 | 2025-11-09 |  | 100% | start no earlier than 2025-10-20 | 7570743 |
| 2830 | 37100.37300.37600.38200.39200.43600.128600.220500 | Reinforcement | 10d | 2025-10-20 | 2025-11-09 | 2828FS+1d | 100% | start no earlier than 2025-10-20 | 7580363 |
| 2831 | 37100.37300.37600.38200.39200.43600.128600.220600 | Wall conduiting | 6d | 2025-10-20 | 2025-11-09 | 2826, 2830SS+1d | 100% | start no earlier than 2025-10-20 | 7580373 |
| 2832 | 37100.37300.37600.38200.39200.43600.128600.220700 | Formwork | 10d | 2025-10-20 | 2025-11-09 | 2830SS+1d | 100% | start no earlier than 2025-10-20 | 7580383 |
| 2833 | 37100.37300.37600.38200.39200.43600.128600.220800 | Concreting | 9.94d | 2025-10-31 | 2025-11-09 | 2832FS-15.06d | 100% | start no earlier than 2025-10-31 | 7580393 |
| 2834 | 37100.37300.37600.38200.39200.43600.128700 | **9th floor slab** | 8.12d | 2025-11-06 | 2025-11-27 |  | 100% | start no earlier than 2025-11-06 | 7570753 |
| 2835 | 37100.37300.37600.38200.39200.43600.128700.220900 | Reinforcement | 7d | 2025-11-06 | 2025-11-26 | 2833FS-2.5d | 100% | start no earlier than 2025-11-06 | 7580403 |
| 2836 | 37100.37300.37600.38200.39200.43600.128700.221000 | Wall conduiting | 3d | 2025-11-06 | 2025-11-26 | 2831, 2835SS+1d | 100% | start no earlier than 2025-11-06 | 7580413 |
| 2837 | 37100.37300.37600.38200.39200.43600.128700.221100 | Formwork | 7d | 2025-11-06 | 2025-11-26 | 2835SS+1d | 100% | start no earlier than 2025-11-06 | 7580423 |
| 2838 | 37100.37300.37600.38200.39200.43600.128700.221200 | Concreting | 3.25d | 2025-11-10 | 2025-11-27 | 2837 | 100% | start no earlier than 2025-11-10 | 7580433 |
| 2839 | 37100.37300.37600.38200.39200.43600.173600 | **10th floor slab** | 8.25d | 2025-11-28 | 2025-12-05 |  | 26% | start no earlier than 2025-11-28 | 7570763 |
| 2840 | 37100.37300.37600.38200.39200.43600.173600.221300 | Reinforcement | 8d | 2025-11-28 | 2025-12-05 | 2838FS+1d | 25% | start no earlier than 2025-11-28 | 7580443 |
| 2841 | 37100.37300.37600.38200.39200.43600.173600.221400 | Wall conduiting | 3d | 2025-11-28 | 2025-12-01 | 2836, 2840SS+1d | 33% | start no earlier than 2025-11-28 | 7580453 |
| 2842 | 37100.37300.37600.38200.39200.43600.173600.221500 | Formwork | 7d | 2025-11-28 | 2025-12-05 | 2840SS+1d | 28% | start no earlier than 2025-11-28 | 7580463 |
| 2843 | 37100.37300.37600.38200.39200.43600.173600.455900 | Concreting | 1d | 2025-12-04 | 2025-12-05 | 2842 |  |  | 7580473 |
| 2844 | 37100.37300.37600.38200.39200.43600.173500 | **11th floor slab** | 9d | 2025-12-24 | 2026-01-02 |  |  | start no earlier than 2025-12-24 | 7570773 |
| 2845 | 37100.37300.37600.38200.39200.43600.173500.456000 | Reinforcement | 8d | 2025-12-24 | 2026-01-01 | 2843FS+1d |  |  | 7580483 |
| 2846 | 37100.37300.37600.38200.39200.43600.173500.456100 | Wall conduiting | 3d | 2025-12-25 | 2025-12-28 | 2841, 2845SS+1d |  |  | 7580493 |
| 2847 | 37100.37300.37600.38200.39200.43600.173500.456200 | Formwork | 7d | 2025-12-25 | 2026-01-01 | 2845SS+1d |  |  | 7580503 |
| 2848 | 37100.37300.37600.38200.39200.43600.173500.456300 | Concreting | 1d | 2026-01-01 | 2026-01-02 | 2847 |  |  | 7580513 |

| ID | WBS | Task | Duration | Start | Finish | Predecessors | Constraint | Unique_Task_ID |
| --- | --- | --- | --- | --- | --- | --- | --- | --- |
| 2849 | 37100.37300.37600.38200.39200.43600.173400 | **12th floor slab** | 9d | 2026-01-03 | 2026-01-12 |  | start no earlier than 2026-01-03 | 7570783 |
| 2850 | 37100.37300.37600.38200.39200.43600.173400.456400 | Reinforcement | 8d | 2026-01-03 | 2026-01-11 | 2848FS+1d |  | 7580523 |
| 2851 | 37100.37300.37600.38200.39200.43600.173400.456500 | Wall conduiting | 3d | 2026-01-04 | 2026-01-07 | 2846, 2850SS+1d |  | 7580533 |
| 2852 | 37100.37300.37600.38200.39200.43600.173400.456600 | Formwork | 7d | 2026-01-04 | 2026-01-11 | 2850SS+1d |  | 7580543 |
| 2853 | 37100.37300.37600.38200.39200.43600.173400.456700 | Concreting | 1d | 2026-01-11 | 2026-01-12 | 2852 |  | 7580553 |
| 2854 | 37100.37300.37600.38200.39200.43600.173300 | **13th floor slab** | 9d | 2026-01-08 | 2026-01-17 |  | start no earlier than 2026-01-08 | 7570793 |
| 2855 | 37100.37300.37600.38200.39200.43600.173300.456800 | Reinforcement | 8d | 2026-01-08 | 2026-01-16 | 2853FS-4d |  | 7580563 |
| 2856 | 37100.37300.37600.38200.39200.43600.173300.456900 | Wall conduiting | 3d | 2026-01-09 | 2026-01-12 | 2851, 2855SS+1d |  | 7580573 |
| 2857 | 37100.37300.37600.38200.39200.43600.173300.457000 | Formwork | 7d | 2026-01-09 | 2026-01-16 | 2855SS+1d |  | 7580583 |
| 2858 | 37100.37300.37600.38200.39200.43600.173300.457100 | Concreting | 1d | 2026-01-16 | 2026-01-17 | 2857 |  | 7580593 |
| 2859 | 37100.37300.37600.38200.39200.43600.173200 | **14th floor slab** | 9d | 2026-01-12 | 2026-01-21 |  | start no earlier than 2026-01-12 | 7570803 |
| 2860 | 37100.37300.37600.38200.39200.43600.173200.457200 | Reinforcement | 8d | 2026-01-12 | 2026-01-20 | 2858FS-5d |  | 7580603 |
| 2861 | 37100.37300.37600.38200.39200.43600.173200.457300 | Wall conduiting | 3d | 2026-01-13 | 2026-01-16 | 2856, 2860SS+1d |  | 7580613 |
| 2862 | 37100.37300.37600.38200.39200.43600.173200.457400 | Formwork | 7d | 2026-01-13 | 2026-01-20 | 2860SS+1d |  | 7580623 |
| 2863 | 37100.37300.37600.38200.39200.43600.173200.457500 | Concreting | 1d | 2026-01-20 | 2026-01-21 | 2862 |  | 7580633 |
| 2864 | 37100.37300.37600.38200.39200.43600.173100 | **15th floor slab** | 9d | 2026-01-20 | 2026-01-29 |  | start no earlier than 2026-01-20 | 7570813 |
| 2865 | 37100.37300.37600.38200.39200.43600.173100.457600 | Reinforcement | 8d | 2026-01-20 | 2026-01-28 | 2863FS-1d |  | 7580643 |
| 2866 | 37100.37300.37600.38200.39200.43600.173100.457700 | Wall conduiting | 3d | 2026-01-21 | 2026-01-24 | 2861, 2865SS+1d |  | 7580653 |
| 2867 | 37100.37300.37600.38200.39200.43600.173100.457800 | Formwork | 7d | 2026-01-21 | 2026-01-28 | 2865SS+1d |  | 7580663 |
| 2868 | 37100.37300.37600.38200.39200.43600.173100.457900 | Concreting | 1d | 2026-01-28 | 2026-01-29 | 2867 |  | 7580673 |
| 2869 | 37100.37300.37600.38200.39200.43600.173000 | **16th floor slab** | 7d | 2026-01-30 | 2026-02-06 |  | start no earlier than 2026-01-30 | 7570823 |
| 2870 | 37100.37300.37600.38200.39200.43600.173000.458000 | Reinforcement | 6d | 2026-01-30 | 2026-02-05 | 2868FS+1d |  | 7580683 |
| 2871 | 37100.37300.37600.38200.39200.43600.173000.458100 | Wall conduiting | 3d | 2026-01-31 | 2026-02-03 | 2866, 2870SS+1d |  | 7580693 |
| 2872 | 37100.37300.37600.38200.39200.43600.173000.458200 | Formwork | 5d | 2026-01-31 | 2026-02-05 | 2870SS+1d |  | 7580703 |
| 2873 | 37100.37300.37600.38200.39200.43600.173000.458300 | Concreting | 1d | 2026-02-05 | 2026-02-06 | 2872 |  | 7580713 |

| ID | WBS | Task | Duration | Start | Finish | Predecessors | Constraint | Unique_Task_ID |
| --- | --- | --- | --- | --- | --- | --- | --- | --- |
| 2874 | 37100.37300.37600.38200.39200.43600.172900 | **17th floor slab** | 7d | 2026-02-06 | 2026-02-13 |  | start no earlier than 2026-02-06 | 7570833 |
| 2875 | 37100.37300.37600.38200.39200.43600.172900.458400 | Reinforcement | 6d | 2026-02-06 | 2026-02-12 | 2873 |  | 7580723 |
| 2876 | 37100.37300.37600.38200.39200.43600.172900.458500 | Wall conduiting | 3d | 2026-02-07 | 2026-02-10 | 2871, 2875SS+1d |  | 7580733 |
| 2877 | 37100.37300.37600.38200.39200.43600.172900.458600 | Formwork | 5d | 2026-02-07 | 2026-02-12 | 2875SS+1d |  | 7580743 |
| 2878 | 37100.37300.37600.38200.39200.43600.172900.458700 | Concreting | 1d | 2026-02-12 | 2026-02-13 | 2877 |  | 7580753 |
| 2879 | 37100.37300.37600.38200.39200.43600.172700 | **18th floor slab** | 7d | 2026-02-12 | 2026-02-19 |  | start no earlier than 2026-02-12 | 7570843 |
| 2880 | 37100.37300.37600.38200.39200.43600.172700.458800 | Reinforcement | 6d | 2026-02-12 | 2026-02-18 | 2878FS-1d |  | 7580763 |
| 2881 | 37100.37300.37600.38200.39200.43600.172700.458900 | Wall conduiting | 3d | 2026-02-13 | 2026-02-16 | 2876, 2880SS+1d |  | 7580773 |
| 2882 | 37100.37300.37600.38200.39200.43600.172700.459000 | Formwork | 5d | 2026-02-13 | 2026-02-18 | 2880SS+1d |  | 7580783 |
| 2883 | 37100.37300.37600.38200.39200.43600.172700.459100 | Concreting | 1d | 2026-02-18 | 2026-02-19 | 2882 |  | 7580793 |
| 2884 | 37100.37300.37600.38200.39200.43600.172500 | **19th floor slab** | 7d | 2026-02-18 | 2026-02-25 |  | start no earlier than 2026-02-18 | 7570853 |
| 2885 | 37100.37300.37600.38200.39200.43600.172500.459200 | Reinforcement | 6d | 2026-02-18 | 2026-02-24 | 2883FS-1d |  | 7580803 |
| 2886 | 37100.37300.37600.38200.39200.43600.172500.459300 | Wall conduiting | 3d | 2026-02-19 | 2026-02-22 | 2881, 2885SS+1d |  | 7580813 |
| 2887 | 37100.37300.37600.38200.39200.43600.172500.459400 | Formwork | 5d | 2026-02-19 | 2026-02-24 | 2885SS+1d |  | 7580823 |
| 2888 | 37100.37300.37600.38200.39200.43600.172500.459500 | Concreting | 1d | 2026-02-24 | 2026-02-25 | 2887 |  | 7580833 |
| 2889 | 37100.37300.37600.38200.39200.43600.172400 | **20th floor slab** | 8d | 2026-02-26 | 2026-03-06 |  | start no earlier than 2026-02-26 | 7570863 |
| 2890 | 37100.37300.37600.38200.39200.43600.172400.459600 | Reinforcement | 6d | 2026-02-26 | 2026-03-04 | 2888FS+1d |  | 7580843 |
| 2891 | 37100.37300.37600.38200.39200.43600.172400.459700 | Wall conduiting | 3d | 2026-02-27 | 2026-03-02 | 2886, 2890SS+1d |  | 7580853 |
| 2892 | 37100.37300.37600.38200.39200.43600.172400.459800 | Formwork | 5d | 2026-02-27 | 2026-03-04 | 2890SS+1d |  | 7580863 |
| 2893 | 37100.37300.37600.38200.39200.43600.172400.463900 | Concreting | 2d | 2026-03-04 | 2026-03-06 | 2892 |  | 7580873 |
| 2894 | 37100.37300.37600.38200.39200.43600.172300 | **21st floor slab** | 10d | 2026-03-10 | 2026-03-20 |  | start no earlier than 2026-03-10 | 7570873 |
| 2895 | 37100.37300.37600.38200.39200.43600.172300.464000 | Reinforcement | 9d | 2026-03-10 | 2026-03-19 | 2893FS+4d |  | 7580883 |
| 2896 | 37100.37300.37600.38200.39200.43600.172300.464100 | Wall conduiting | 3d | 2026-03-11 | 2026-03-14 | 2891, 2895SS+1d |  | 7580893 |
| 2897 | 37100.37300.37600.38200.39200.43600.172300.464200 | Formwork | 8d | 2026-03-11 | 2026-03-19 | 2895SS+1d |  | 7580903 |
| 2898 | 37100.37300.37600.38200.39200.43600.172300.464300 | Concreting | 1d | 2026-03-19 | 2026-03-20 | 2897 |  | 7580913 |

| ID | WBS | Task | Duration | Start | Finish | Predecessors | Constraint | Unique_Task_ID |
| --- | --- | --- | --- | --- | --- | --- | --- | --- |
| 2899 | 37100.37300.37600.38200.39200.43600.172200 | **22nd floor slab** | 10d | 2026-03-24 | 2026-04-03 |  | start no earlier than 2026-03-24 | 7570883 |
| 2900 | 37100.37300.37600.38200.39200.43600.172200.464400 | Reinforcement | 9d | 2026-03-24 | 2026-04-02 | 2898FS+4d |  | 7580923 |
| 2901 | 37100.37300.37600.38200.39200.43600.172200.464500 | Wall conduiting | 3d | 2026-03-25 | 2026-03-28 | 2896, 2900SS+1d |  | 7580933 |
| 2902 | 37100.37300.37600.38200.39200.43600.172200.464600 | Formwork | 8d | 2026-03-25 | 2026-04-02 | 2900SS+1d |  | 7580943 |
| 2903 | 37100.37300.37600.38200.39200.43600.172200.464700 | Concreting | 1d | 2026-04-02 | 2026-04-03 | 2902 |  | 7580953 |
| 2904 | 37100.37300.37600.38200.39200.43600.172100 | **23rd floor slab** | 10d | 2026-04-07 | 2026-04-17 |  | start no earlier than 2026-04-07 | 7570893 |
| 2905 | 37100.37300.37600.38200.39200.43600.172100.464800 | Reinforcement | 9d | 2026-04-07 | 2026-04-16 | 2903FS+4d |  | 7580963 |
| 2906 | 37100.37300.37600.38200.39200.43600.172100.464900 | Wall conduiting | 3d | 2026-04-08 | 2026-04-11 | 2901, 2905SS+1d |  | 7580973 |
| 2907 | 37100.37300.37600.38200.39200.43600.172100.465000 | Formwork | 8d | 2026-04-08 | 2026-04-16 | 2905SS+1d |  | 7580983 |
| 2908 | 37100.37300.37600.38200.39200.43600.172100.465100 | Concreting | 1d | 2026-04-16 | 2026-04-17 | 2907 |  | 7580993 |
| 2909 | 37100.37300.37600.38200.39200.43600.172000 | **24th floor slab** | 12d | 2026-04-19 | 2026-05-01 |  | start no earlier than 2026-04-19 | 7570903 |
| 2910 | 37100.37300.37600.38200.39200.43600.172000.465200 | Reinforcement | 10d | 2026-04-19 | 2026-04-29 | 2908FS+2d |  | 7581003 |
| 2911 | 37100.37300.37600.38200.39200.43600.172000.465300 | Wall conduiting | 3d | 2026-04-20 | 2026-04-23 | 2906, 2910SS+1d |  | 7581013 |
| 2912 | 37100.37300.37600.38200.39200.43600.172000.465400 | Formwork | 10d | 2026-04-20 | 2026-04-30 | 2910SS+1d |  | 7581023 |
| 2913 | 37100.37300.37600.38200.39200.43600.172000.465500 | Concreting | 1d | 2026-04-30 | 2026-05-01 | 2912 |  | 7581033 |
| 2914 | 37100.37300.37600.38200.39200.43600.171900 | **25th floor slab** | 13d | 2026-05-02 | 2026-05-15 |  | start no earlier than 2026-05-02 | 7570913 |
| 2915 | 37100.37300.37600.38200.39200.43600.171900.465600 | Reinforcement | 10d | 2026-05-02 | 2026-05-12 | 2913FS+1d |  | 7581043 |
| 2916 | 37100.37300.37600.38200.39200.43600.171900.465700 | Wall conduiting | 3d | 2026-05-03 | 2026-05-06 | 2911, 2915SS+1d |  | 7581053 |
| 2917 | 37100.37300.37600.38200.39200.43600.171900.465800 | Formwork | 10d | 2026-05-03 | 2026-05-13 | 2915SS+1d |  | 7581063 |
| 2918 | 37100.37300.37600.38200.39200.43600.171900.465900 | Concreting | 2d | 2026-05-13 | 2026-05-15 | 2917 |  | 7581073 |
| 2919 | 37100.37300.37600.38200.39200.43600.171800 | **26th floor slab** | 10d | 2026-05-16 | 2026-05-26 |  | start no earlier than 2026-05-16 | 7570923 |
| 2920 | 37100.37300.37600.38200.39200.43600.171800.466000 | Reinforcement | 9d | 2026-05-16 | 2026-05-25 | 2918FS+1d |  | 7581083 |
| 2921 | 37100.37300.37600.38200.39200.43600.171800.466100 | Wall conduiting | 3d | 2026-05-17 | 2026-05-20 | 2916, 2920SS+1d |  | 7581093 |
| 2922 | 37100.37300.37600.38200.39200.43600.171800.466200 | Formwork | 8d | 2026-05-17 | 2026-05-25 | 2920SS+1d |  | 7581103 |
| 2923 | 37100.37300.37600.38200.39200.43600.171800.466300 | Concreting | 1d | 2026-05-25 | 2026-05-26 | 2922 |  | 7581113 |

| ID | WBS | Task | Duration | Start | Finish | Predecessors | Constraint | Unique_Task_ID |
| --- | --- | --- | --- | --- | --- | --- | --- | --- |
| 2924 | 37100.37300.37600.38200.39200.43600.171700 | **27th floor slab** | 10d | 2026-05-26 | 2026-06-05 |  | start no earlier than 2026-05-26 | 7570933 |
| 2925 | 37100.37300.37600.38200.39200.43600.171700.466400 | Reinforcement | 9d | 2026-05-26 | 2026-06-04 | 2923 |  | 7581123 |
| 2926 | 37100.37300.37600.38200.39200.43600.171700.466500 | Wall conduiting | 3d | 2026-05-27 | 2026-05-30 | 2921, 2925SS+1d |  | 7581133 |
| 2927 | 37100.37300.37600.38200.39200.43600.171700.466600 | Formwork | 8d | 2026-05-27 | 2026-06-04 | 2925SS+1d |  | 7581143 |
| 2928 | 37100.37300.37600.38200.39200.43600.171700.466700 | Concreting | 1d | 2026-06-04 | 2026-06-05 | 2927 |  | 7581153 |
| 2929 | 37100.37300.37600.38200.39200.43600.171600 | **28th floor slab** | 10d | 2026-06-05 | 2026-06-15 |  | start no earlier than 2026-06-05 | 7570943 |
| 2930 | 37100.37300.37600.38200.39200.43600.171600.466800 | Reinforcement | 9d | 2026-06-05 | 2026-06-14 | 2928 |  | 7581163 |
| 2931 | 37100.37300.37600.38200.39200.43600.171600.466900 | Wall conduiting | 3d | 2026-06-06 | 2026-06-09 | 2926, 2930SS+1d |  | 7581173 |
| 2932 | 37100.37300.37600.38200.39200.43600.171600.467000 | Formwork | 8d | 2026-06-06 | 2026-06-14 | 2930SS+1d |  | 7581183 |
| 2933 | 37100.37300.37600.38200.39200.43600.171600.467100 | Concreting | 1d | 2026-06-14 | 2026-06-15 | 2932 |  | 7581193 |
| 2934 | 37100.37300.37600.38200.39200.43600.171500 | **29th floor slab** | 10d | 2026-06-18 | 2026-06-28 |  | start no earlier than 2026-06-18 | 7570953 |
| 2935 | 37100.37300.37600.38200.39200.43600.171500.467200 | Reinforcement | 9d | 2026-06-18 | 2026-06-27 | 2933FS+3d |  | 7581203 |
| 2936 | 37100.37300.37600.38200.39200.43600.171500.467300 | Wall conduiting | 3d | 2026-06-19 | 2026-06-22 | 2931, 2935SS+1d |  | 7581213 |
| 2937 | 37100.37300.37600.38200.39200.43600.171500.467400 | Formwork | 8d | 2026-06-19 | 2026-06-27 | 2935SS+1d |  | 7581223 |
| 2938 | 37100.37300.37600.38200.39200.43600.171500.467500 | Concreting | 1d | 2026-06-27 | 2026-06-28 | 2937 |  | 7581233 |
| 2939 | 37100.37300.37600.38200.39200.43600.171400 | **30th floor slab** | 10d | 2026-06-30 | 2026-07-10 |  | start no earlier than 2026-06-30 | 7570963 |
| 2940 | 37100.37300.37600.38200.39200.43600.171400.467600 | Reinforcement | 9d | 2026-06-30 | 2026-07-09 | 2938FS+2d |  | 7581243 |
| 2941 | 37100.37300.37600.38200.39200.43600.171400.467700 | Wall conduiting | 3d | 2026-07-01 | 2026-07-04 | 2936, 2940SS+1d |  | 7581253 |
| 2942 | 37100.37300.37600.38200.39200.43600.171400.467800 | Formwork | 8d | 2026-07-01 | 2026-07-09 | 2940SS+1d |  | 7581263 |
| 2943 | 37100.37300.37600.38200.39200.43600.171400.467900 | Concreting | 1d | 2026-07-09 | 2026-07-10 | 2942 |  | 7581273 |
| 2944 | 37100.37300.37600.38200.39200.43600.171300 | **31st floor slab** | 10d | 2026-07-14 | 2026-07-24 |  | start no earlier than 2026-07-14 | 7570973 |
| 2945 | 37100.37300.37600.38200.39200.43600.171300.468000 | Reinforcement | 9d | 2026-07-14 | 2026-07-23 | 2943FS+4d |  | 7581283 |
| 2946 | 37100.37300.37600.38200.39200.43600.171300.468100 | Wall conduiting | 3d | 2026-07-15 | 2026-07-18 | 2941, 2945SS+1d |  | 7581293 |
| 2947 | 37100.37300.37600.38200.39200.43600.171300.468200 | Formwork | 8d | 2026-07-15 | 2026-07-23 | 2945SS+1d |  | 7581303 |
| 2948 | 37100.37300.37600.38200.39200.43600.171300.468300 | Concreting | 1d | 2026-07-23 | 2026-07-24 | 2947 |  | 7581313 |

| ID | WBS | Task | Duration | Start | Finish | Predecessors | Constraint | Unique_Task_ID |
| --- | --- | --- | --- | --- | --- | --- | --- | --- |
| 2949 | 37100.37300.37600.38200.39200.43600.171200 | **32nd floor slab** | 18d | 2026-07-27 | 2026-08-14 |  | start no earlier than 2026-07-27 | 7570983 |
| 2950 | 37100.37300.37600.38200.39200.43600.171200.468400 | Reinforcement | 18d | 2026-07-27 | 2026-08-14 | 2948FS+3d |  | 7581323 |
| 2951 | 37100.37300.37600.38200.39200.43600.171200.468500 | Wall conduiting | 9d | 2026-07-28 | 2026-08-06 | 2946, 2950SS+1d |  | 7581333 |
| 2952 | 37100.37300.37600.38200.39200.43600.171200.468600 | Formwork | 12d | 2026-07-29 | 2026-08-10 | 2950SS+1.88d |  | 7581343 |
| 2953 | 37100.37300.37600.38200.39200.43600.171200.468700 | Concreting | 1d | 2026-08-10 | 2026-08-11 | 2952 |  | 7581353 |
| 2954 | 37100.37300.37600.38200.39200.43600.171100 | **33rd floor slab** | 11.88d | 2026-08-14 | 2026-08-25 |  | start no earlier than 2026-08-14 | 7570993 |
| 2955 | 37100.37300.37600.38200.39200.43600.171100.468800 | Reinforcement | 9d | 2026-08-14 | 2026-08-23 | 2953FS+3d |  | 7581363 |
| 2956 | 37100.37300.37600.38200.39200.43600.171100.468900 | Wall conduiting | 5d | 2026-08-15 | 2026-08-20 | 2951, 2955SS+1d |  | 7581373 |
| 2957 | 37100.37300.37600.38200.39200.43600.171100.469000 | Formwork | 9d | 2026-08-16 | 2026-08-24 | 2955SS+1.88d |  | 7581383 |
| 2958 | 37100.37300.37600.38200.39200.43600.171100.469100 | Concreting | 1d | 2026-08-25 | 2026-08-25 | 2957 |  | 7581393 |
| 2959 | 37100.37300.37600.38200.39200.43600.171000 | **34th floor slab** | 12.75d | 2026-08-30 | 2026-09-11 |  | start no earlier than 2026-08-30 | 7571003 |
| 2960 | 37100.37300.37600.38200.39200.43600.171000.469200 | Reinforcement | 9.94d | 2026-08-30 | 2026-09-08 | 2958FS+4d |  | 7581403 |
| 2961 | 37100.37300.37600.38200.39200.43600.171000.469300 | Wall conduiting | 1.94d | 2026-08-31 | 2026-09-01 | 2956, 2960SS+1d |  | 7581413 |
| 2962 | 37100.37300.37600.38200.39200.43600.171000.469400 | Formwork | 9.94d | 2026-08-31 | 2026-09-10 | 2960SS+1.88d |  | 7581423 |
| 2963 | 37100.37300.37600.38200.39200.43600.171000.469500 | Concreting | 0.94d | 2026-09-10 | 2026-09-11 | 2962 |  | 7581433 |
| 2964 | 37100.37300.37600.38200.39200.43600.170900 | **35th floor slab** | 14.88d | 2026-09-15 | 2026-09-30 |  | start no earlier than 2026-09-15 | 7571013 |
| 2965 | 37100.37300.37600.38200.39200.43600.170900.469600 | Reinforcement | 12d | 2026-09-15 | 2026-09-27 | 2963FS+4d |  | 7581443 |
| 2966 | 37100.37300.37600.38200.39200.43600.170900.469700 | Wall conduiting | 3d | 2026-09-16 | 2026-09-19 | 2961, 2965SS+1d |  | 7581453 |
| 2967 | 37100.37300.37600.38200.39200.43600.170900.469800 | Formwork | 11d | 2026-09-18 | 2026-09-29 | 2966SS+1.88d |  | 7581463 |
| 2968 | 37100.37300.37600.38200.39200.43600.170900.469900 | Concreting | 1d | 2026-09-29 | 2026-09-30 | 2967 |  | 7581473 |
| 2969 | 37100.37300.37600.38200.39200.43600.170800 | **Terrace floor slab** | 19.88d | 2026-09-30 | 2026-10-20 |  | start no earlier than 2026-09-30 | 7571023 |
| 2970 | 37100.37300.37600.38200.39200.43600.170800.470000 | Reinforcement | 16d | 2026-09-30 | 2026-10-16 | 2968 |  | 7581483 |
| 2971 | 37100.37300.37600.38200.39200.43600.170800.470100 | Wall conduiting | 4d | 2026-10-01 | 2026-10-05 | 2966, 2970SS+1d |  | 7581493 |
| 2972 | 37100.37300.37600.38200.39200.43600.170800.470200 | Formwork | 16d | 2026-10-02 | 2026-10-18 | 2970SS+1.88d |  | 7581503 |
| 2973 | 37100.37300.37600.38200.39200.43600.170800.470300 | Concreting | 2d | 2026-10-18 | 2026-10-20 | 2972 |  | 7581513 |

| ID | WBS | Task | Duration | Start | Finish | Predecessors | Constraint | Unique_Task_ID |
| --- | --- | --- | --- | --- | --- | --- | --- | --- |
| 2974 | 37100.37300.37600.38200.39200.43600.170700 | **OHT & Mumty** | 39.5d | 2026-10-20 | 2027-01-12 |  | start no earlier than 2026-10-20 | 7571033 |
| 2975 | 37100.37300.37600.38200.39200.43600.170700.470400 | Reinforcement | 29.94d | 2026-10-20 | 2027-01-03 | 2973 |  | 7581523 |
| 2976 | 37100.37300.37600.38200.39200.43600.170700.470500 | Wall conduiting | 4.94d | 2026-10-21 | 2026-10-26 | 2971, 2975SS+1d |  | 7581533 |
| 2977 | 37100.37300.37600.38200.39200.43600.170700.470600 | Formwork | 32.94d | 2026-10-24 | 2027-01-10 | 2975SS+3.62d |  | 7581543 |
| 2978 | 37100.37300.37600.38200.39200.43600.170700.470700 | Concreting | 2.94d | 2027-01-10 | 2027-01-12 | 2977 |  | 7581553 |
| 2979 | 37100.37300.37600.38200.39200.45600 | **Post Pour Activities** | 396.75d | 2025-11-30 | 2027-02-23 |  | start no earlier than 2025-11-30 | 7567713 |
| 2980 | 37100.37300.37600.38200.39200.45600.319800 | 1st Floor | 7d | 2025-11-30 | 2025-12-16 | 2818 |  | 7574033 |
| 2981 | 37100.37300.37600.38200.39200.45600.319900 | 2nd Floor | 7d | 2025-12-16 | 2025-12-23 | 2980, 2828 |  | 7574043 |
| 2982 | 37100.37300.37600.38200.39200.45600.320000 | 3rd Floor | 7d | 2025-12-23 | 2025-12-30 | 2981, 2833 |  | 7574053 |
| 2983 | 37100.37300.37600.38200.39200.45600.320100 | 4th Floor | 7d | 2025-12-30 | 2026-01-06 | 2982, 2838 |  | 7574063 |
| 2984 | 37100.37300.37600.38200.39200.45600.320200 | 5th Floor | 7d | 2026-01-06 | 2026-01-13 | 2983, 2843 |  | 7574073 |
| 2985 | 37100.37300.37600.38200.39200.45600.320300 | 6th Floor | 7d | 2026-01-13 | 2026-01-20 | 2984, 2848 |  | 7574083 |
| 2986 | 37100.37300.37600.38200.39200.45600.320400 | 7th Floor | 7d | 2026-01-20 | 2026-01-27 | 2985, 2853 |  | 7574093 |
| 2987 | 37100.37300.37600.38200.39200.45600.320500 | 8th Floor | 7d | 2026-01-27 | 2026-02-03 | 2986, 2858 |  | 7574103 |
| 2988 | 37100.37300.37600.38200.39200.45600.320600 | 9th Floor | 7d | 2026-02-03 | 2026-02-10 | 2987, 2863 |  | 7574113 |
| 2989 | 37100.37300.37600.38200.39200.45600.320700 | 10th Floor | 7d | 2026-02-10 | 2026-02-17 | 2988, 2868 |  | 7574123 |
| 2990 | 37100.37300.37600.38200.39200.45600.320800 | 11th Floor | 7d | 2026-02-17 | 2026-02-24 | 2989, 2873 |  | 7574133 |
| 2991 | 37100.37300.37600.38200.39200.45600.320900 | 12th Floor | 7d | 2026-02-24 | 2026-03-03 | 2990, 2878 |  | 7574143 |
| 2992 | 37100.37300.37600.38200.39200.45600.321000 | 13th Floor | 7d | 2026-03-03 | 2026-03-10 | 2991, 2883 |  | 7574153 |
| 2993 | 37100.37300.37600.38200.39200.45600.321100 | 14th Floor | 7d | 2026-03-10 | 2026-03-17 | 2992, 2888 |  | 7574163 |
| 2994 | 37100.37300.37600.38200.39200.45600.321200 | 15th Floor | 7d | 2026-03-17 | 2026-03-24 | 2993, 2893 |  | 7574173 |
| 2995 | 37100.37300.37600.38200.39200.45600.321300 | 16th Floor | 7d | 2026-03-24 | 2026-03-31 | 2994, 2898 |  | 7574183 |
| 2996 | 37100.37300.37600.38200.39200.45600.321400 | 17th Floor | 7d | 2026-04-03 | 2026-04-10 | 2995, 2903 |  | 7574193 |
| 2997 | 37100.37300.37600.38200.39200.45600.321500 | 18th Floor | 7d | 2026-04-17 | 2026-04-24 | 2996, 2908 |  | 7574203 |
| 2998 | 37100.37300.37600.38200.39200.45600.321600 | 19th Floor | 7d | 2026-05-01 | 2026-05-08 | 2997, 2913 |  | 7574213 |
| 2999 | 37100.37300.37600.38200.39200.45600.321700 | 20th Floor | 7d | 2026-05-15 | 2026-05-22 | 2998, 2918 |  | 7574223 |
| 3000 | 37100.37300.37600.38200.39200.45600.321800 | 21st Floor | 7d | 2026-05-26 | 2026-06-02 | 2999, 2923 |  | 7574233 |
| 3001 | 37100.37300.37600.38200.39200.45600.321900 | 22nd Floor | 7d | 2026-06-05 | 2026-06-12 | 3000, 2928 |  | 7574243 |
| 3002 | 37100.37300.37600.38200.39200.45600.322000 | 23rd Floor | 7d | 2026-06-15 | 2026-06-22 | 3001, 2933 |  | 7574253 |
| 3003 | 37100.37300.37600.38200.39200.45600.322100 | 24th Floor | 7d | 2026-06-28 | 2026-07-05 | 3002, 2938 |  | 7574263 |
| 3004 | 37100.37300.37600.38200.39200.45600.322200 | 25th Floor | 7d | 2026-07-10 | 2026-07-17 | 3003, 2943 |  | 7574273 |
| 3005 | 37100.37300.37600.38200.39200.45600.322300 | 26th Floor | 7d | 2026-07-24 | 2026-07-31 | 3004, 2948 |  | 7574283 |
| 3006 | 37100.37300.37600.38200.39200.45600.322400 | 27th Floor | 7d | 2026-08-11 | 2026-08-18 | 3005, 2953 |  | 7574293 |
| 3007 | 37100.37300.37600.38200.39200.45600.322500 | 28th Floor | 7d | 2026-08-26 | 2026-09-01 | 3006, 2958 |  | 7574303 |
| 3008 | 37100.37300.37600.38200.39200.45600.322600 | 29th Floor | 7d | 2026-09-11 | 2026-09-18 | 3007, 2963 |  | 7574313 |
| 3009 | 37100.37300.37600.38200.39200.45600.322700 | 30th Floor | 7d | 2026-09-30 | 2026-10-07 | 3008, 2968 |  | 7574323 |
| 3010 | 37100.37300.37600.38200.39200.45600.322800 | 31st Floor | 7d | 2026-10-20 | 2026-10-27 | 3009, 2973 |  | 7574333 |
| 3011 | 37100.37300.37600.38200.39200.45600.322900 | 32nd Flood | 7d | 2027-01-13 | 2027-01-19 | 3010, 2978 |  | 7574343 |
| 3012 | 37100.37300.37600.38200.39200.45600.323000 | 33rd Floor | 7d | 2027-01-20 | 2027-01-26 | 3011 |  | 7574353 |
| 3013 | 37100.37300.37600.38200.39200.45600.323100 | 34th Floor | 7d | 2027-01-27 | 2027-02-02 | 3012 |  | 7574363 |
| 3014 | 37100.37300.37600.38200.39200.45600.323200 | 35th Floor | 7d | 2027-02-03 | 2027-02-09 | 3013 |  | 7574373 |
| 3015 | 37100.37300.37600.38200.39200.45600.323300 | Terrace | 7d | 2027-02-10 | 2027-02-16 | 3014 |  | 7574383 |
| 3016 | 37100.37300.37600.38200.39200.45600.323400 | Mumty & Machine Room | 7d | 2027-02-17 | 2027-02-23 | 3015 |  | 7574393 |

| ID | WBS | Task | Duration | Start | Finish | Predecessors | Constraint | Unique_Task_ID |
| --- | --- | --- | --- | --- | --- | --- | --- | --- |
| 3017 | 37100.37300.37600.38200.39200.40600 | **Finishing work** | 806.31d | 2025-12-16 | 2028-04-15 |  | start no earlier than 2025-12-16 | 7567593 |
| 3018 | 37100.37300.37600.38200.39200.40600.41600 | **Flat finishing** | 806.31d | 2025-12-16 | 2028-04-15 |  | start no earlier than 2025-12-16 | 7567633 |
| 3019 | 37100.37300.37600.38200.39200.40600.41600.68100 | **1st Floor** | 421.25d | 2025-12-16 | 2027-03-27 |  | start no earlier than 2025-12-16 | 7568773 |
| 3020 | 37100.37300.37600.38200.39200.40600.41600.68100.973700 | Block Work | 8d | 2025-12-16 | 2025-12-24 | 2980FS+0.25d |  | 7592943 |
| 3021 | 37100.37300.37600.38200.39200.40600.41600.68100.973800 | Door Frame Fixing | 9d | 2025-12-24 | 2026-01-02 | 3020 |  | 7592953 |
| 3022 | 37100.37300.37600.38200.39200.40600.41600.68100.973900 | Internal Plumbing Works | 8d | 2025-12-24 | 2026-01-01 | 3020 |  | 7592963 |
| 3023 | 37100.37300.37600.38200.39200.40600.41600.68100.974000 | Waterproofing | 10d | 2026-01-01 | 2026-01-11 | 3022 |  | 7592973 |
| 3024 | 37100.37300.37600.38200.39200.40600.41600.68100.974100 | Internal Plaster | 8d | 2026-01-12 | 2026-01-20 | 3020FS+1d, 3022FS+1d, 3023FS+1d |  | 7592983 |
| 3025 | 37100.37300.37600.38200.39200.40600.41600.68100.974200 | IPS flooring work | 10d | 2026-01-11 | 2026-01-21 | 3021, 3022, 3023 |  | 7592993 |
| 3026 | 37100.37300.37600.38200.39200.40600.41600.68100.974300 | Toilet dado work | 8d | 2026-01-21 | 2026-01-29 | 2828, 3024FS+1d |  | 7593003 |
| 3027 | 37100.37300.37600.38200.39200.40600.41600.68100.974400 | Toilet flooring work | 8d | 2026-01-29 | 2026-02-06 | 3026 |  | 7593013 |
| 3028 | 37100.37300.37600.38200.39200.40600.41600.68100.974500 | Living dinning flooring | 12d | 2026-01-02 | 2026-01-14 | 3021FS+0.25d |  | 7593023 |
| 3029 | 37100.37300.37600.38200.39200.40600.41600.68100.974600 | Aluminium door-window fixing | 12d | 2026-01-21 | 2026-02-02 | 3025FS+0.25d |  | 7593033 |
| 3030 | 37100.37300.37600.38200.39200.40600.41600.68100.974700 | Putty primer coat | 6d | 2026-01-14 | 2026-01-20 | 3028 |  | 7593043 |
| 3031 | 37100.37300.37600.38200.39200.40600.41600.68100.974800 | Door shutter fixing | 8d | 2026-01-14 | 2026-01-22 | 3028 |  | 7593053 |
| 3032 | 37100.37300.37600.38200.39200.40600.41600.68100.974900 | Electrical wiring work | 8d | 2027-03-03 | 2027-03-11 | 3031FS+360d |  | 7593063 |
| 3033 | 37100.37300.37600.38200.39200.40600.41600.68100.975000 | Painting 1st coat | 8d | 2027-03-11 | 2027-03-19 | 3030, 3031, 3032 |  | 7593073 |
| 3034 | 37100.37300.37600.38200.39200.40600.41600.68100.975100 | False ceiling | 8d | 2027-03-19 | 2027-03-27 | 3033 |  | 7593083 |
| 3035 | 37100.37300.37600.38200.39200.40600.41600.68200 | **2nd Floor** | 445.25d | 2025-12-24 | 2027-04-28 |  | start no earlier than 2025-12-24 | 7568783 |
| 3036 | 37100.37300.37600.38200.39200.40600.41600.68200.975200 | Block Work | 8d | 2025-12-24 | 2026-01-01 | 3020FS+0.25d |  | 7593093 |
| 3037 | 37100.37300.37600.38200.39200.40600.41600.68200.975300 | Door Frame Fixing | 9d | 2026-01-02 | 2026-01-11 | 3021, 3036 |  | 7593103 |
| 3038 | 37100.37300.37600.38200.39200.40600.41600.68200.975400 | Internal Plumbing Works | 8d | 2026-01-01 | 2026-01-09 | 3022, 3036 |  | 7593113 |
| 3039 | 37100.37300.37600.38200.39200.40600.41600.68200.975500 | Waterproofing | 10d | 2026-01-11 | 2026-01-21 | 3023, 3038 |  | 7593123 |
| 3040 | 37100.37300.37600.38200.39200.40600.41600.68200.975600 | Internal Plaster | 8d | 2026-01-02 | 2026-01-09 | 3036FS+0.25d |  | 7593133 |
| 3041 | 37100.37300.37600.38200.39200.40600.41600.68200.975700 | IPS flooring work | 10d | 2026-01-21 | 2026-01-31 | 3025, 3037, 3038, 3039 |  | 7593143 |
| 3042 | 37100.37300.37600.38200.39200.40600.41600.68200.975800 | Toilet dado work | 8d | 2026-01-29 | 2026-02-06 | 3026FS+0.25d |  | 7593153 |
| 3043 | 37100.37300.37600.38200.39200.40600.41600.68200.975900 | Toilet flooring work | 8d | 2026-02-06 | 2026-02-14 | 3027, 3042 |  | 7593163 |
| 3044 | 37100.37300.37600.38200.39200.40600.41600.68200.976000 | Living dinning flooring | 12d | 2026-01-15 | 2026-01-26 | 3028FS+0.25d |  | 7593173 |
| 3045 | 37100.37300.37600.38200.39200.40600.41600.68200.976100 | Aluminium door-window fixing | 12d | 2026-02-03 | 2026-02-14 | 3029FS+0.25d |  | 7593183 |
| 3046 | 37100.37300.37600.38200.39200.40600.41600.68200.976200 | Putty primer coat | 6d | 2026-01-27 | 2026-02-01 | 3030, 3044 |  | 7593193 |
| 3047 | 37100.37300.37600.38200.39200.40600.41600.68200.976300 | Door shutter fixing | 8d | 2026-01-27 | 2026-02-03 | 3031, 3044 |  | 7593203 |
| 3048 | 37100.37300.37600.38200.39200.40600.41600.68200.976400 | Electrical wiring work | 20d | 2027-03-12 | 2027-03-31 | 3032FS+0.25d, 3047FS+300d |  | 7593213 |
| 3049 | 37100.37300.37600.38200.39200.40600.41600.68200.976500 | Painting 1st coat | 20d | 2027-04-01 | 2027-04-20 | 3033, 3046, 3047, 3048 |  | 7593223 |
| 3050 | 37100.37300.37600.38200.39200.40600.41600.68200.976600 | False ceiling | 8d | 2027-04-21 | 2027-04-28 | 3034, 3049 |  | 7593233 |

| ID | WBS | Task | Duration | Start | Finish | Predecessors | Constraint | Unique_Task_ID |
| --- | --- | --- | --- | --- | --- | --- | --- | --- |
| 3051 | 37100.37300.37600.38200.39200.40600.41600.68300 | **3rd Floor** | 445d | 2026-01-02 | 2027-05-06 |  | start no earlier than 2026-01-02 | 7568793 |
| 3052 | 37100.37300.37600.38200.39200.40600.41600.68300.976700 | Block Work | 8d | 2026-01-02 | 2026-01-09 | 3036FS+0.25d |  | 7593243 |
| 3053 | 37100.37300.37600.38200.39200.40600.41600.68300.976800 | Door Frame Fixing | 9d | 2026-01-11 | 2026-01-20 | 3037, 3052 |  | 7593253 |
| 3054 | 37100.37300.37600.38200.39200.40600.41600.68300.976900 | Internal Plumbing Works | 8d | 2026-01-10 | 2026-01-17 | 3038, 3052 |  | 7593263 |
| 3055 | 37100.37300.37600.38200.39200.40600.41600.68300.977000 | Waterproofing | 10d | 2026-01-21 | 2026-01-31 | 3039, 3054 |  | 7593273 |
| 3056 | 37100.37300.37600.38200.39200.40600.41600.68300.977100 | Internal Plaster | 8d | 2026-01-10 | 2026-01-18 | 3040FS+0.25d |  | 7593283 |
| 3057 | 37100.37300.37600.38200.39200.40600.41600.68300.977200 | IPS flooring work | 10d | 2026-01-31 | 2026-02-10 | 3041, 3053, 3055, 3056 |  | 7593293 |
| 3058 | 37100.37300.37600.38200.39200.40600.41600.68300.977300 | Toilet dado work | 8d | 2026-02-07 | 2026-02-14 | 3042FS+0.25d |  | 7593303 |
| 3059 | 37100.37300.37600.38200.39200.40600.41600.68300.977400 | Toilet flooring work | 8d | 2026-02-15 | 2026-02-22 | 3043, 3058 |  | 7593313 |
| 3060 | 37100.37300.37600.38200.39200.40600.41600.68300.977500 | Living dinning flooring | 12d | 2026-01-27 | 2026-02-08 | 3044FS+0.25d |  | 7593323 |
| 3061 | 37100.37300.37600.38200.39200.40600.41600.68300.977600 | Aluminium door-window fixing | 12d | 2026-02-15 | 2026-02-27 | 3045FS+0.25d |  | 7593333 |
| 3062 | 37100.37300.37600.38200.39200.40600.41600.68300.977700 | Putty primer coat | 6d | 2026-02-08 | 2026-02-14 | 3046, 3060 |  | 7593343 |
| 3063 | 37100.37300.37600.38200.39200.40600.41600.68300.977800 | Door shutter fixing | 8d | 2026-02-08 | 2026-02-16 | 3047, 3060 |  | 7593353 |
| 3064 | 37100.37300.37600.38200.39200.40600.41600.68300.977900 | Electrical wiring work | 8d | 2027-04-01 | 2027-04-08 | 3048, 3063 |  | 7593363 |
| 3065 | 37100.37300.37600.38200.39200.40600.41600.68300.978000 | Painting 1st coat | 8d | 2027-04-21 | 2027-04-28 | 3049, 3062, 3063, 3064 |  | 7593373 |
| 3066 | 37100.37300.37600.38200.39200.40600.41600.68300.978100 | False ceiling | 8d | 2027-04-29 | 2027-05-06 | 3050, 3065 |  | 7593383 |
| 3067 | 37100.37300.37600.38200.39200.40600.41600.68400 | **4th Floor** | 444.75d | 2026-01-10 | 2027-05-14 |  | start no earlier than 2026-01-10 | 7568803 |
| 3068 | 37100.37300.37600.38200.39200.40600.41600.68400.978200 | Block Work | 8d | 2026-01-10 | 2026-01-18 | 3052FS+0.25d |  | 7593393 |
| 3069 | 37100.37300.37600.38200.39200.40600.41600.68400.978300 | Door Frame Fixing | 9d | 2026-01-20 | 2026-01-29 | 3053, 3068 |  | 7593403 |
| 3070 | 37100.37300.37600.38200.39200.40600.41600.68400.978400 | Internal Plumbing Works | 8d | 2026-01-18 | 2026-01-26 | 3054, 3068 |  | 7593413 |
| 3071 | 37100.37300.37600.38200.39200.40600.41600.68400.978500 | Waterproofing | 10d | 2026-01-31 | 2026-02-10 | 3055, 3070 |  | 7593423 |
| 3072 | 37100.37300.37600.38200.39200.40600.41600.68400.978600 | Internal Plaster | 8d | 2026-01-18 | 2026-01-26 | 3056FS+0.25d |  | 7593433 |
| 3073 | 37100.37300.37600.38200.39200.40600.41600.68400.978700 | IPS flooring work | 10d | 2026-02-10 | 2026-02-20 | 3057, 3069, 3071, 3072 |  | 7593443 |
| 3074 | 37100.37300.37600.38200.39200.40600.41600.68400.978800 | Toilet dado work | 8d | 2026-02-15 | 2026-02-23 | 3058FS+0.25d |  | 7593453 |
| 3075 | 37100.37300.37600.38200.39200.40600.41600.68400.978900 | Toilet flooring work | 8d | 2026-02-23 | 2026-03-03 | 3059, 3074 |  | 7593463 |
| 3076 | 37100.37300.37600.38200.39200.40600.41600.68400.979000 | Living dinning flooring | 12d | 2026-02-08 | 2026-02-20 | 3060FS+0.25d |  | 7593473 |
| 3077 | 37100.37300.37600.38200.39200.40600.41600.68400.979100 | Aluminium door-window fixing | 12d | 2026-02-27 | 2026-03-11 | 3061FS+0.25d |  | 7593483 |
| 3078 | 37100.37300.37600.38200.39200.40600.41600.68400.979200 | Putty primer coat | 6d | 2026-02-20 | 2026-02-26 | 3062, 3076 |  | 7593493 |
| 3079 | 37100.37300.37600.38200.39200.40600.41600.68400.979300 | Door shutter fixing | 8d | 2026-02-20 | 2026-02-28 | 3063, 3076 |  | 7593503 |
| 3080 | 37100.37300.37600.38200.39200.40600.41600.68400.979400 | Electrical wiring work | 8d | 2027-04-09 | 2027-04-16 | 3064, 3079 |  | 7593513 |
| 3081 | 37100.37300.37600.38200.39200.40600.41600.68400.979500 | Painting 1st coat | 8d | 2027-04-29 | 2027-05-06 | 3065, 3078, 3079, 3080 |  | 7593523 |
| 3082 | 37100.37300.37600.38200.39200.40600.41600.68400.979600 | False ceiling | 8d | 2027-05-07 | 2027-05-14 | 3066, 3081 |  | 7593533 |

| ID | WBS | Task | Duration | Start | Finish | Predecessors | Constraint | Unique_Task_ID |
| --- | --- | --- | --- | --- | --- | --- | --- | --- |
| 3083 | 37100.37300.37600.38200.39200.40600.41600.68500 | **5th Floor** | 444.5d | 2026-01-18 | 2027-05-22 |  | start no earlier than 2026-01-18 | 7568813 |
| 3084 | 37100.37300.37600.38200.39200.40600.41600.68500.979700 | Block Work | 8d | 2026-01-18 | 2026-01-26 | 3068FS+0.25d |  | 7593543 |
| 3085 | 37100.37300.37600.38200.39200.40600.41600.68500.979800 | Door Frame Fixing | 9d | 2026-01-29 | 2026-02-07 | 3069, 3084 |  | 7593553 |
| 3086 | 37100.37300.37600.38200.39200.40600.41600.68500.979900 | Internal Plumbing Works | 8d | 2026-01-26 | 2026-02-03 | 3070, 3084 |  | 7593563 |
| 3087 | 37100.37300.37600.38200.39200.40600.41600.68500.980000 | Waterproofing | 10d | 2026-02-10 | 2026-02-20 | 3071, 3086 |  | 7593573 |
| 3088 | 37100.37300.37600.38200.39200.40600.41600.68500.980100 | Internal Plaster | 8d | 2026-01-26 | 2026-02-03 | 3072FS+0.25d |  | 7593583 |
| 3089 | 37100.37300.37600.38200.39200.40600.41600.68500.980200 | IPS flooring work | 10d | 2026-02-20 | 2026-03-02 | 3073, 3085, 3087, 3088 |  | 7593593 |
| 3090 | 37100.37300.37600.38200.39200.40600.41600.68500.980300 | Toilet dado work | 8d | 2026-02-23 | 2026-03-03 | 3074, 3087, 3088 |  | 7593603 |
| 3091 | 37100.37300.37600.38200.39200.40600.41600.68500.980400 | Toilet flooring work | 8d | 2026-03-03 | 2026-03-11 | 3075, 3090 |  | 7593613 |
| 3092 | 37100.37300.37600.38200.39200.40600.41600.68500.980500 | Living dinning flooring | 12d | 2026-02-20 | 2026-03-04 | 3076FS+0.25d |  | 7593623 |
| 3093 | 37100.37300.37600.38200.39200.40600.41600.68500.980600 | Aluminium door-window fixing | 12d | 2026-03-11 | 2026-03-23 | 3077FS+0.25d |  | 7593633 |
| 3094 | 37100.37300.37600.38200.39200.40600.41600.68500.980700 | Putty primer coat | 6d | 2026-03-04 | 2026-03-10 | 3078, 3092 |  | 7593643 |
| 3095 | 37100.37300.37600.38200.39200.40600.41600.68500.980800 | Door shutter fixing | 8d | 2026-03-04 | 2026-03-12 | 3079, 3092 |  | 7593653 |
| 3096 | 37100.37300.37600.38200.39200.40600.41600.68500.980900 | Electrical wiring work | 8d | 2027-04-17 | 2027-04-24 | 3080, 3095 |  | 7593663 |
| 3097 | 37100.37300.37600.38200.39200.40600.41600.68500.981000 | Painting 1st coat | 8d | 2027-05-07 | 2027-05-14 | 3081, 3094, 3095, 3096 |  | 7593673 |
| 3098 | 37100.37300.37600.38200.39200.40600.41600.68500.981100 | False ceiling | 8d | 2027-05-15 | 2027-05-22 | 3082, 3097 |  | 7593683 |
| 3099 | 37100.37300.37600.38200.39200.40600.41600.68600 | **6th Floor** | 444.25d | 2026-01-26 | 2027-05-30 |  | start no earlier than 2026-01-26 | 7568823 |
| 3100 | 37100.37300.37600.38200.39200.40600.41600.68600.981200 | Block Work | 8d | 2026-01-26 | 2026-02-03 | 3084FS+0.25d |  | 7593693 |
| 3101 | 37100.37300.37600.38200.39200.40600.41600.68600.981300 | Door Frame Fixing | 9d | 2026-02-07 | 2026-02-16 | 2833, 3085 |  | 7593703 |
| 3102 | 37100.37300.37600.38200.39200.40600.41600.68600.981400 | Internal Plumbing Works | 8d | 2026-02-03 | 2026-02-11 | 3086, 3100 |  | 7593713 |
| 3103 | 37100.37300.37600.38200.39200.40600.41600.68600.981500 | Waterproofing | 10d | 2026-02-20 | 2026-03-02 | 3087, 3102 |  | 7593723 |
| 3104 | 37100.37300.37600.38200.39200.40600.41600.68600.981600 | Internal Plaster | 8d | 2026-02-04 | 2026-02-11 | 3088FS+0.25d |  | 7593733 |
| 3105 | 37100.37300.37600.38200.39200.40600.41600.68600.981700 | IPS flooring work | 10d | 2026-03-02 | 2026-03-12 | 3089, 3101, 3103, 3104 |  | 7593743 |
| 3106 | 37100.37300.37600.38200.39200.40600.41600.68600.981800 | Toilet dado work | 8d | 2026-03-03 | 2026-03-11 | 3090, 3103, 3104 |  | 7593753 |
| 3107 | 37100.37300.37600.38200.39200.40600.41600.68600.981900 | Toilet flooring work | 8d | 2026-03-11 | 2026-03-19 | 3091, 3106 |  | 7593763 |
| 3108 | 37100.37300.37600.38200.39200.40600.41600.68600.982000 | Living dinning flooring | 12d | 2026-03-05 | 2026-03-16 | 3092FS+0.25d |  | 7593773 |
| 3109 | 37100.37300.37600.38200.39200.40600.41600.68600.982100 | Aluminium door-window fixing | 12d | 2026-03-24 | 2026-04-04 | 3093FS+0.25d |  | 7593783 |
| 3110 | 37100.37300.37600.38200.39200.40600.41600.68600.982200 | Putty primer coat | 6d | 2026-03-17 | 2026-03-22 | 3094, 3108 |  | 7593793 |
| 3111 | 37100.37300.37600.38200.39200.40600.41600.68600.982300 | Door shutter fixing | 8d | 2026-03-17 | 2026-03-24 | 3095, 3108 |  | 7593803 |
| 3112 | 37100.37300.37600.38200.39200.40600.41600.68600.982400 | Electrical wiring work | 8d | 2027-04-25 | 2027-05-02 | 3096, 3111 |  | 7593813 |
| 3113 | 37100.37300.37600.38200.39200.40600.41600.68600.982500 | Painting 1st coat | 8d | 2027-05-15 | 2027-05-22 | 3097, 3110, 3111, 3112 |  | 7593823 |
| 3114 | 37100.37300.37600.38200.39200.40600.41600.68600.982600 | False ceiling | 8d | 2027-05-23 | 2027-05-30 | 3098, 3113 |  | 7593833 |

| ID | WBS | Task | Duration | Start | Finish | Predecessors | Constraint | Unique_Task_ID |
| --- | --- | --- | --- | --- | --- | --- | --- | --- |
| 3115 | 37100.37300.37600.38200.39200.40600.41600.68700 | **7th Floor** | 451d | 2026-02-04 | 2027-06-14 |  | start no earlier than 2026-02-04 | 7568833 |
| 3116 | 37100.37300.37600.38200.39200.40600.41600.68700.982700 | Block Work | 8d | 2026-02-04 | 2026-02-11 | 3100FS+0.25d |  | 7593843 |
| 3117 | 37100.37300.37600.38200.39200.40600.41600.68700.982800 | Door Frame Fixing | 9d | 2026-02-16 | 2026-02-25 | 3101, 3116 |  | 7593853 |
| 3118 | 37100.37300.37600.38200.39200.40600.41600.68700.982900 | Internal Plumbing Works | 8d | 2026-02-12 | 2026-02-19 | 3102, 3116 |  | 7593863 |
| 3119 | 37100.37300.37600.38200.39200.40600.41600.68700.983000 | Waterproofing | 10d | 2026-03-02 | 2026-03-12 | 3103, 3118 |  | 7593873 |
| 3120 | 37100.37300.37600.38200.39200.40600.41600.68700.983100 | Internal Plaster | 8d | 2026-02-12 | 2026-02-20 | 3104FS+0.25d |  | 7593883 |
| 3121 | 37100.37300.37600.38200.39200.40600.41600.68700.983200 | IPS flooring work | 10d | 2026-03-12 | 2026-03-22 | 3105, 3117, 3119, 3120 |  | 7593893 |
| 3122 | 37100.37300.37600.38200.39200.40600.41600.68700.983300 | Toilet dado work | 8d | 2026-03-12 | 2026-03-20 | 3106, 3119, 3120 |  | 7593903 |
| 3123 | 37100.37300.37600.38200.39200.40600.41600.68700.983400 | Toilet flooring work | 8d | 2026-03-20 | 2026-03-28 | 3107, 3122 |  | 7593913 |
| 3124 | 37100.37300.37600.38200.39200.40600.41600.68700.983500 | Living dinning flooring | 12d | 2026-03-17 | 2026-03-29 | 3108FS+0.25d |  | 7593923 |
| 3125 | 37100.37300.37600.38200.39200.40600.41600.68700.983600 | Aluminium door-window fixing | 12d | 2026-04-05 | 2026-04-17 | 3109FS+0.25d |  | 7593933 |
| 3126 | 37100.37300.37600.38200.39200.40600.41600.68700.983700 | Putty primer coat | 6d | 2026-03-29 | 2026-04-04 | 3110, 3124 |  | 7593943 |
| 3127 | 37100.37300.37600.38200.39200.40600.41600.68700.983800 | Door shutter fixing | 8d | 2026-03-29 | 2026-04-06 | 3111, 3124 |  | 7593953 |
| 3128 | 37100.37300.37600.38200.39200.40600.41600.68700.983900 | Electrical wiring work | 15d | 2027-05-03 | 2027-05-17 | 3112, 3127 |  | 7593963 |
| 3129 | 37100.37300.37600.38200.39200.40600.41600.68700.984000 | Painting 1st coat | 15d | 2027-05-23 | 2027-06-06 | 3113, 3126, 3127, 3128 |  | 7593973 |
| 3130 | 37100.37300.37600.38200.39200.40600.41600.68700.984100 | False ceiling | 8d | 2027-06-07 | 2027-06-14 | 3114, 3129 |  | 7593983 |
| 3131 | 37100.37300.37600.38200.39200.40600.41600.68800 | **8th Floor** | 450.75d | 2026-02-12 | 2027-06-22 |  | start no earlier than 2026-02-12 | 7568843 |
| 3132 | 37100.37300.37600.38200.39200.40600.41600.68800.984200 | Block Work | 8d | 2026-02-12 | 2026-02-20 | 3116FS+0.25d |  | 7593993 |
| 3133 | 37100.37300.37600.38200.39200.40600.41600.68800.984300 | Door Frame Fixing | 9d | 2026-02-25 | 2026-03-06 | 3117, 3132 |  | 7594003 |
| 3134 | 37100.37300.37600.38200.39200.40600.41600.68800.984400 | Internal Plumbing Works | 8d | 2026-02-20 | 2026-02-28 | 3118, 3132 |  | 7594013 |
| 3135 | 37100.37300.37600.38200.39200.40600.41600.68800.984500 | Waterproofing | 10d | 2026-03-12 | 2026-03-22 | 3119, 3134 |  | 7594023 |
| 3136 | 37100.37300.37600.38200.39200.40600.41600.68800.984600 | Internal Plaster | 8d | 2026-02-20 | 2026-02-28 | 3120FS+0.25d |  | 7594033 |
| 3137 | 37100.37300.37600.38200.39200.40600.41600.68800.984700 | IPS flooring work | 10d | 2026-03-22 | 2026-04-01 | 3121, 3133, 3135, 3136 |  | 7594043 |
| 3138 | 37100.37300.37600.38200.39200.40600.41600.68800.984800 | Toilet dado work | 8d | 2026-03-22 | 2026-03-30 | 3122, 3135, 3136 |  | 7594053 |
| 3139 | 37100.37300.37600.38200.39200.40600.41600.68800.984900 | Toilet flooring work | 8d | 2026-03-30 | 2026-04-07 | 3123, 3138 |  | 7594063 |
| 3140 | 37100.37300.37600.38200.39200.40600.41600.68800.985000 | Living dinning flooring | 12d | 2026-03-29 | 2026-04-10 | 3124FS+0.25d |  | 7594073 |
| 3141 | 37100.37300.37600.38200.39200.40600.41600.68800.985100 | Aluminium door-window fixing | 12d | 2026-04-17 | 2026-04-29 | 3125FS+0.25d |  | 7594083 |
| 3142 | 37100.37300.37600.38200.39200.40600.41600.68800.985200 | Putty primer coat | 6d | 2026-04-10 | 2026-04-16 | 3126, 3140 |  | 7594093 |
| 3143 | 37100.37300.37600.38200.39200.40600.41600.68800.985300 | Door shutter fixing | 8d | 2026-04-10 | 2026-04-18 | 3127, 3140 |  | 7594103 |
| 3144 | 37100.37300.37600.38200.39200.40600.41600.68800.985400 | Electrical wiring work | 8d | 2027-05-18 | 2027-05-25 | 3128, 3143 |  | 7594113 |
| 3145 | 37100.37300.37600.38200.39200.40600.41600.68800.985500 | Painting 1st coat | 8d | 2027-06-07 | 2027-06-14 | 3129, 3142, 3143, 3144 |  | 7594123 |
| 3146 | 37100.37300.37600.38200.39200.40600.41600.68800.985600 | False ceiling | 8d | 2027-06-15 | 2027-06-22 | 3130, 3145 |  | 7594133 |

| ID | WBS | Task | Duration | Start | Finish | Predecessors | Constraint | Unique_Task_ID |
| --- | --- | --- | --- | --- | --- | --- | --- | --- |
| 3147 | 37100.37300.37600.38200.39200.40600.41600.68900 | **9th Floor** | 450.5d | 2026-02-20 | 2027-06-30 |  | start no earlier than 2026-02-20 | 7568853 |
| 3148 | 37100.37300.37600.38200.39200.40600.41600.68900.985700 | Block Work | 8d | 2026-02-20 | 2026-02-28 | 3132FS+0.25d |  | 7594143 |
| 3149 | 37100.37300.37600.38200.39200.40600.41600.68900.985800 | Door Frame Fixing | 9d | 2026-03-06 | 2026-03-15 | 3133, 3148 |  | 7594153 |
| 3150 | 37100.37300.37600.38200.39200.40600.41600.68900.985900 | Internal Plumbing Works | 8d | 2026-02-28 | 2026-03-08 | 3134, 3148 |  | 7594163 |
| 3151 | 37100.37300.37600.38200.39200.40600.41600.68900.986000 | Waterproofing | 10d | 2026-03-22 | 2026-04-01 | 3135, 3150 |  | 7594173 |
| 3152 | 37100.37300.37600.38200.39200.40600.41600.68900.986100 | Internal Plaster | 8d | 2026-02-28 | 2026-03-08 | 3136FS+0.25d |  | 7594183 |
| 3153 | 37100.37300.37600.38200.39200.40600.41600.68900.986200 | IPS flooring work | 10d | 2026-04-01 | 2026-04-11 | 3137, 3149, 3151, 3152 |  | 7594193 |
| 3154 | 37100.37300.37600.38200.39200.40600.41600.68900.986300 | Toilet dado work | 8d | 2026-04-01 | 2026-04-09 | 3138, 3151, 3152 |  | 7594203 |
| 3155 | 37100.37300.37600.38200.39200.40600.41600.68900.986400 | Toilet flooring work | 8d | 2026-04-09 | 2026-04-17 | 3139, 3154 |  | 7594213 |
| 3156 | 37100.37300.37600.38200.39200.40600.41600.68900.986500 | Living dinning flooring | 12d | 2026-04-10 | 2026-04-22 | 3140FS+0.25d |  | 7594223 |
| 3157 | 37100.37300.37600.38200.39200.40600.41600.68900.986600 | Aluminium door-window fixing | 12d | 2026-04-29 | 2026-05-11 | 3141FS+0.25d |  | 7594233 |
| 3158 | 37100.37300.37600.38200.39200.40600.41600.68900.986700 | Putty primer coat | 6d | 2026-04-22 | 2026-04-28 | 3142, 3156 |  | 7594243 |
| 3159 | 37100.37300.37600.38200.39200.40600.41600.68900.986800 | Door shutter fixing | 8d | 2026-04-22 | 2026-04-30 | 3143, 3156 |  | 7594253 |
| 3160 | 37100.37300.37600.38200.39200.40600.41600.68900.986900 | Electrical wiring work | 8d | 2027-05-26 | 2027-06-02 | 3144, 3159 |  | 7594263 |
| 3161 | 37100.37300.37600.38200.39200.40600.41600.68900.987000 | Painting 1st coat | 8d | 2027-06-15 | 2027-06-22 | 3145, 3158, 3159, 3160 |  | 7594273 |
| 3162 | 37100.37300.37600.38200.39200.40600.41600.68900.987100 | False ceiling | 8d | 2027-06-23 | 2027-06-30 | 3146, 3161 |  | 7594283 |
| 3163 | 37100.37300.37600.38200.39200.40600.41600.69000 | **10th Floor** | 450.25d | 2026-02-28 | 2027-07-08 |  | start no earlier than 2026-02-28 | 7568863 |
| 3164 | 37100.37300.37600.38200.39200.40600.41600.69000.987200 | Block Work | 8d | 2026-02-28 | 2026-03-08 | 3148FS+0.25d |  | 7594293 |
| 3165 | 37100.37300.37600.38200.39200.40600.41600.69000.987300 | Door Frame Fixing | 9d | 2026-03-15 | 2026-03-24 | 3149, 3164 |  | 7594303 |
| 3166 | 37100.37300.37600.38200.39200.40600.41600.69000.987400 | Internal Plumbing Works | 8d | 2026-03-08 | 2026-03-16 | 3150, 3164 |  | 7594313 |
| 3167 | 37100.37300.37600.38200.39200.40600.41600.69000.987500 | Waterproofing | 10d | 2026-04-01 | 2026-04-11 | 3151, 3166 |  | 7594323 |
| 3168 | 37100.37300.37600.38200.39200.40600.41600.69000.987600 | Internal Plaster | 8d | 2026-03-09 | 2026-03-16 | 3152FS+0.25d |  | 7594333 |
| 3169 | 37100.37300.37600.38200.39200.40600.41600.69000.987700 | IPS flooring work | 10d | 2026-04-11 | 2026-04-21 | 3153, 3165, 3167, 3168 |  | 7594343 |
| 3170 | 37100.37300.37600.38200.39200.40600.41600.69000.987800 | Toilet dado work | 8d | 2026-04-11 | 2026-04-19 | 3154, 3167, 3168 |  | 7594353 |
| 3171 | 37100.37300.37600.38200.39200.40600.41600.69000.987900 | Toilet flooring work | 8d | 2026-04-19 | 2026-04-27 | 3155, 3170 |  | 7594363 |
| 3172 | 37100.37300.37600.38200.39200.40600.41600.69000.988000 | Living dinning flooring | 12d | 2026-04-23 | 2026-05-04 | 3156FS+0.25d |  | 7594373 |
| 3173 | 37100.37300.37600.38200.39200.40600.41600.69000.988100 | Aluminium door-window fixing | 12d | 2026-05-12 | 2026-05-23 | 3157FS+0.25d |  | 7594383 |
| 3174 | 37100.37300.37600.38200.39200.40600.41600.69000.988200 | Putty primer coat | 6d | 2026-05-05 | 2026-05-10 | 3158, 3172 |  | 7594393 |
| 3175 | 37100.37300.37600.38200.39200.40600.41600.69000.988300 | Door shutter fixing | 8d | 2026-05-05 | 2026-05-12 | 3159, 3172 |  | 7594403 |
| 3176 | 37100.37300.37600.38200.39200.40600.41600.69000.988400 | Electrical wiring work | 8d | 2027-06-03 | 2027-06-10 | 3160, 3175 |  | 7594413 |
| 3177 | 37100.37300.37600.38200.39200.40600.41600.69000.988500 | Painting 1st coat | 8d | 2027-06-23 | 2027-06-30 | 3161, 3174, 3175, 3176 |  | 7594423 |
| 3178 | 37100.37300.37600.38200.39200.40600.41600.69000.988600 | False ceiling | 8d | 2027-07-01 | 2027-07-08 | 3162, 3177 |  | 7594433 |

| ID | WBS | Task | Duration | Start | Finish | Predecessors | Constraint | Unique_Task_ID |
| --- | --- | --- | --- | --- | --- | --- | --- | --- |
| 3179 | 37100.37300.37600.38200.39200.40600.41600.69100 | **11th Floor** | 450d | 2026-03-09 | 2027-07-16 |  | start no earlier than 2026-03-09 | 7568873 |
| 3180 | 37100.37300.37600.38200.39200.40600.41600.69100.988700 | Block Work | 8d | 2026-03-09 | 2026-03-16 | 3164FS+0.25d |  | 7594443 |
| 3181 | 37100.37300.37600.38200.39200.40600.41600.69100.988800 | Door Frame Fixing | 9d | 2026-03-24 | 2026-04-02 | 3165, 3180 |  | 7594453 |
| 3182 | 37100.37300.37600.38200.39200.40600.41600.69100.988900 | Internal Plumbing Works | 8d | 2026-03-17 | 2026-03-24 | 3166, 3180 |  | 7594463 |
| 3183 | 37100.37300.37600.38200.39200.40600.41600.69100.989000 | Waterproofing | 10d | 2026-04-11 | 2026-04-21 | 3167, 3182 |  | 7594473 |
| 3184 | 37100.37300.37600.38200.39200.40600.41600.69100.989100 | Internal Plaster | 8d | 2026-03-17 | 2026-03-25 | 3168FS+0.25d |  | 7594483 |
| 3185 | 37100.37300.37600.38200.39200.40600.41600.69100.989200 | IPS flooring work | 10d | 2026-04-21 | 2026-05-01 | 3169, 3181, 3182, 3183 |  | 7594493 |
| 3186 | 37100.37300.37600.38200.39200.40600.41600.69100.989300 | Toilet dado work | 8d | 2026-04-21 | 2026-04-29 | 3170, 3183, 3184 |  | 7594503 |
| 3187 | 37100.37300.37600.38200.39200.40600.41600.69100.989400 | Toilet flooring work | 8d | 2026-04-29 | 2026-05-07 | 3171, 3186 |  | 7594513 |
| 3188 | 37100.37300.37600.38200.39200.40600.41600.69100.989500 | Living dinning flooring | 7d | 2026-05-05 | 2026-05-12 | 3172FS+0.25d |  | 7594523 |
| 3189 | 37100.37300.37600.38200.39200.40600.41600.69100.989600 | Aluminium door-window fixing | 12d | 2026-05-24 | 2026-06-05 | 3173FS+0.25d |  | 7594533 |
| 3190 | 37100.37300.37600.38200.39200.40600.41600.69100.989700 | Putty primer coat | 6d | 2026-05-12 | 2026-05-18 | 3174, 3188 |  | 7594543 |
| 3191 | 37100.37300.37600.38200.39200.40600.41600.69100.989800 | Door shutter fixing | 8d | 2026-05-13 | 2026-05-20 | 3175, 3188 |  | 7594553 |
| 3192 | 37100.37300.37600.38200.39200.40600.41600.69100.989900 | Electrical wiring work | 8d | 2027-06-11 | 2027-06-18 | 3176, 3191 |  | 7594563 |
| 3193 | 37100.37300.37600.38200.39200.40600.41600.69100.990000 | Painting 1st coat | 8d | 2027-07-01 | 2027-07-08 | 3177, 3190, 3191, 3192 |  | 7594573 |
| 3194 | 37100.37300.37600.38200.39200.40600.41600.69100.990100 | False ceiling | 8d | 2027-07-09 | 2027-07-16 | 3178, 3193 |  | 7594583 |
| 3195 | 37100.37300.37600.38200.39200.40600.41600.69200 | **12th Floor** | 449.75d | 2026-03-17 | 2027-07-24 |  | start no earlier than 2026-03-17 | 7568883 |
| 3196 | 37100.37300.37600.38200.39200.40600.41600.69200.990200 | Block Work | 8d | 2026-03-17 | 2026-03-25 | 3180FS+0.25d |  | 7594593 |
| 3197 | 37100.37300.37600.38200.39200.40600.41600.69200.990300 | Door Frame Fixing | 9d | 2026-04-02 | 2026-04-11 | 3181, 3196 |  | 7594603 |
| 3198 | 37100.37300.37600.38200.39200.40600.41600.69200.990400 | Internal Plumbing Works | 8d | 2026-03-25 | 2026-04-02 | 3182, 3196 |  | 7594613 |
| 3199 | 37100.37300.37600.38200.39200.40600.41600.69200.990500 | Waterproofing | 10d | 2026-04-21 | 2026-05-01 | 3183, 3198 |  | 7594623 |
| 3200 | 37100.37300.37600.38200.39200.40600.41600.69200.990600 | Internal Plaster | 8d | 2026-03-25 | 2026-04-02 | 3184FS+0.25d |  | 7594633 |
| 3201 | 37100.37300.37600.38200.39200.40600.41600.69200.990700 | IPS flooring work | 10d | 2026-05-01 | 2026-05-11 | 3185, 3197, 3198, 3199 |  | 7594643 |
| 3202 | 37100.37300.37600.38200.39200.40600.41600.69200.990800 | Toilet dado work | 8d | 2026-05-01 | 2026-05-09 | 3186, 3199, 3200 |  | 7594653 |
| 3203 | 37100.37300.37600.38200.39200.40600.41600.69200.990900 | Toilet flooring work | 8d | 2026-05-09 | 2026-05-17 | 3187, 3202 |  | 7594663 |
| 3204 | 37100.37300.37600.38200.39200.40600.41600.69200.991000 | Living dinning flooring | 12d | 2026-05-12 | 2026-05-24 | 3188FS+0.25d |  | 7594673 |
| 3205 | 37100.37300.37600.38200.39200.40600.41600.69200.991100 | Aluminium door-window fixing | 12d | 2026-06-05 | 2026-06-17 | 3189FS+0.25d |  | 7594683 |
| 3206 | 37100.37300.37600.38200.39200.40600.41600.69200.991200 | Putty primer coat | 6d | 2026-05-24 | 2026-05-30 | 3190, 3204 |  | 7594693 |
| 3207 | 37100.37300.37600.38200.39200.40600.41600.69200.991300 | Door shutter fixing | 8d | 2026-05-24 | 2026-06-01 | 3191, 3204 |  | 7594703 |
| 3208 | 37100.37300.37600.38200.39200.40600.41600.69200.991400 | Electrical wiring work | 8d | 2027-06-19 | 2027-06-26 | 3192, 3207 |  | 7594713 |
| 3209 | 37100.37300.37600.38200.39200.40600.41600.69200.991500 | Painting 1st coat | 8d | 2027-07-09 | 2027-07-16 | 3193, 3206, 3207, 3208 |  | 7594723 |
| 3210 | 37100.37300.37600.38200.39200.40600.41600.69200.991600 | False ceiling | 8d | 2027-07-17 | 2027-07-24 | 3194, 3209 |  | 7594733 |

| ID | WBS | Task | Duration | Start | Finish | Predecessors | Constraint | Unique_Task_ID |
| --- | --- | --- | --- | --- | --- | --- | --- | --- |
| 3211 | 37100.37300.37600.38200.39200.40600.41600.69300 | **13th Floor** | 449.5d | 2026-03-25 | 2027-08-01 |  | start no earlier than 2026-03-25 | 7568893 |
| 3212 | 37100.37300.37600.38200.39200.40600.41600.69300.991700 | Block Work | 8d | 2026-03-25 | 2026-04-02 | 3196FS+0.25d |  | 7594743 |
| 3213 | 37100.37300.37600.38200.39200.40600.41600.69300.991800 | Door Frame Fixing | 9d | 2026-04-11 | 2026-04-20 | 3197, 3212 |  | 7594753 |
| 3214 | 37100.37300.37600.38200.39200.40600.41600.69300.991900 | Internal Plumbing Works | 8d | 2026-04-02 | 2026-04-10 | 3198, 3212 |  | 7594763 |
| 3215 | 37100.37300.37600.38200.39200.40600.41600.69300.992000 | Waterproofing | 10d | 2026-05-01 | 2026-05-11 | 3199, 3214 |  | 7594773 |
| 3216 | 37100.37300.37600.38200.39200.40600.41600.69300.992100 | Internal Plaster | 8d | 2026-04-02 | 2026-04-10 | 3200FS+0.25d |  | 7594783 |
| 3217 | 37100.37300.37600.38200.39200.40600.41600.69300.992200 | IPS flooring work | 10d | 2026-05-11 | 2026-05-21 | 3201, 3213, 3215, 3216 |  | 7594793 |
| 3218 | 37100.37300.37600.38200.39200.40600.41600.69300.992300 | Toilet dado work | 8d | 2026-05-11 | 2026-05-19 | 3202, 3215, 3216 |  | 7594803 |
| 3219 | 37100.37300.37600.38200.39200.40600.41600.69300.992400 | Toilet flooring work | 8d | 2026-05-19 | 2026-05-27 | 3203, 3218 |  | 7594813 |
| 3220 | 37100.37300.37600.38200.39200.40600.41600.69300.992500 | Living dinning flooring | 8d | 2026-05-24 | 2026-06-01 | 3204FS+0.25d |  | 7594823 |
| 3221 | 37100.37300.37600.38200.39200.40600.41600.69300.992600 | Aluminium door-window fixing | 11d | 2026-06-17 | 2026-06-28 | 3205FS+0.25d |  | 7594833 |
| 3222 | 37100.37300.37600.38200.39200.40600.41600.69300.992700 | Putty primer coat | 6d | 2026-06-01 | 2026-06-07 | 3206, 3220 |  | 7594843 |
| 3223 | 37100.37300.37600.38200.39200.40600.41600.69300.992800 | Door shutter fixing | 8d | 2026-06-01 | 2026-06-09 | 3207, 3220 |  | 7594853 |
| 3224 | 37100.37300.37600.38200.39200.40600.41600.69300.992900 | Electrical wiring work | 8d | 2027-06-27 | 2027-07-04 | 3208, 3223 |  | 7594863 |
| 3225 | 37100.37300.37600.38200.39200.40600.41600.69300.993000 | Painting 1st coat | 8d | 2027-07-17 | 2027-07-24 | 3209, 3222, 3223, 3224 |  | 7594873 |
| 3226 | 37100.37300.37600.38200.39200.40600.41600.69300.993100 | False ceiling | 8d | 2027-07-25 | 2027-08-01 | 3210, 3225 |  | 7594883 |
| 3227 | 37100.37300.37600.38200.39200.40600.41600.69400 | **14th Floor** | 449.25d | 2026-04-02 | 2027-08-09 |  | start no earlier than 2026-04-02 | 7568903 |
| 3228 | 37100.37300.37600.38200.39200.40600.41600.69400.993200 | Block Work | 8d | 2026-04-02 | 2026-04-10 | 3212FS+0.25d |  | 7594893 |
| 3229 | 37100.37300.37600.38200.39200.40600.41600.69400.993300 | Door Frame Fixing | 9d | 2026-04-20 | 2026-04-29 | 3213, 3228 |  | 7594903 |
| 3230 | 37100.37300.37600.38200.39200.40600.41600.69400.993400 | Internal Plumbing Works | 8d | 2026-04-10 | 2026-04-18 | 3214, 3228 |  | 7594913 |
| 3231 | 37100.37300.37600.38200.39200.40600.41600.69400.993500 | Waterproofing | 10d | 2026-05-11 | 2026-05-21 | 3215, 3230 |  | 7594923 |
| 3232 | 37100.37300.37600.38200.39200.40600.41600.69400.993600 | Internal Plaster | 8d | 2026-04-11 | 2026-04-18 | 3216FS+0.25d |  | 7594933 |
| 3233 | 37100.37300.37600.38200.39200.40600.41600.69400.993700 | IPS flooring work | 10d | 2026-05-21 | 2026-05-31 | 3217, 3229, 3230, 3231 |  | 7594943 |
| 3234 | 37100.37300.37600.38200.39200.40600.41600.69400.993800 | Toilet dado work | 8d | 2026-05-21 | 2026-05-29 | 3218, 3231, 3232 |  | 7594953 |
| 3235 | 37100.37300.37600.38200.39200.40600.41600.69400.993900 | Toilet flooring work | 8d | 2026-05-29 | 2026-06-06 | 3219, 3234 |  | 7594963 |
| 3236 | 37100.37300.37600.38200.39200.40600.41600.69400.994000 | Living dinning flooring | 8d | 2026-06-02 | 2026-06-09 | 3220FS+0.25d |  | 7594973 |
| 3237 | 37100.37300.37600.38200.39200.40600.41600.69400.994100 | Aluminium door-window fixing | 12d | 2026-06-29 | 2026-07-10 | 3221FS+0.25d |  | 7594983 |
| 3238 | 37100.37300.37600.38200.39200.40600.41600.69400.994200 | Putty primer coat | 6d | 2026-06-10 | 2026-06-15 | 3222, 3236 |  | 7594993 |
| 3239 | 37100.37300.37600.38200.39200.40600.41600.69400.994300 | Door shutter fixing | 8d | 2026-06-10 | 2026-06-17 | 3223, 3236 |  | 7595003 |
| 3240 | 37100.37300.37600.38200.39200.40600.41600.69400.994400 | Electrical wiring work | 8d | 2027-07-05 | 2027-07-12 | 3224, 3239 |  | 7595013 |
| 3241 | 37100.37300.37600.38200.39200.40600.41600.69400.994500 | Painting 1st coat | 8d | 2027-07-25 | 2027-08-01 | 3225, 3238, 3239, 3240 |  | 7595023 |
| 3242 | 37100.37300.37600.38200.39200.40600.41600.69400.994600 | False ceiling | 8d | 2027-08-02 | 2027-08-09 | 3226, 3241 |  | 7595033 |

| ID | WBS | Task | Duration | Start | Finish | Predecessors | Constraint | Unique_Task_ID |
| --- | --- | --- | --- | --- | --- | --- | --- | --- |
| 3243 | 37100.37300.37600.38200.39200.40600.41600.69500 | **15th Floor** | 449d | 2026-04-11 | 2027-08-17 |  | start no earlier than 2026-04-11 | 7568913 |
| 3244 | 37100.37300.37600.38200.39200.40600.41600.69500.994700 | Block Work | 8d | 2026-04-11 | 2026-04-18 | 3228FS+0.25d |  | 7595043 |
| 3245 | 37100.37300.37600.38200.39200.40600.41600.69500.994800 | Door Frame Fixing | 9d | 2026-04-29 | 2026-05-08 | 3229, 3244 |  | 7595053 |
| 3246 | 37100.37300.37600.38200.39200.40600.41600.69500.994900 | Internal Plumbing Works | 8d | 2026-04-19 | 2026-04-26 | 3230, 3244 |  | 7595063 |
| 3247 | 37100.37300.37600.38200.39200.40600.41600.69500.995000 | Waterproofing | 10d | 2026-05-21 | 2026-05-31 | 3231, 3246 |  | 7595073 |
| 3248 | 37100.37300.37600.38200.39200.40600.41600.69500.995100 | Internal Plaster | 8d | 2026-04-19 | 2026-04-27 | 3232FS+0.25d |  | 7595083 |
| 3249 | 37100.37300.37600.38200.39200.40600.41600.69500.995200 | IPS flooring work | 10d | 2026-05-31 | 2026-06-10 | 3233, 3245, 3246, 3247 |  | 7595093 |
| 3250 | 37100.37300.37600.38200.39200.40600.41600.69500.995300 | Toilet dado work | 8d | 2026-05-31 | 2026-06-08 | 3234, 3247, 3248 |  | 7595103 |
| 3251 | 37100.37300.37600.38200.39200.40600.41600.69500.995400 | Toilet flooring work | 8d | 2026-06-08 | 2026-06-16 | 3235, 3250 |  | 7595113 |
| 3252 | 37100.37300.37600.38200.39200.40600.41600.69500.995500 | Living dinning flooring | 8d | 2026-06-10 | 2026-06-18 | 3236FS+0.25d |  | 7595123 |
| 3253 | 37100.37300.37600.38200.39200.40600.41600.69500.995600 | Aluminium door-window fixing | 12d | 2026-07-11 | 2026-07-22 | 3237, 3249, 3252 |  | 7595133 |
| 3254 | 37100.37300.37600.38200.39200.40600.41600.69500.995700 | Putty primer coat | 6d | 2026-06-18 | 2026-06-24 | 3238, 3252 |  | 7595143 |
| 3255 | 37100.37300.37600.38200.39200.40600.41600.69500.995800 | Door shutter fixing | 8d | 2026-06-18 | 2026-06-26 | 3239, 3252 |  | 7595153 |
| 3256 | 37100.37300.37600.38200.39200.40600.41600.69500.995900 | Electrical wiring work | 8d | 2027-07-13 | 2027-07-20 | 3240, 3255 |  | 7595163 |
| 3257 | 37100.37300.37600.38200.39200.40600.41600.69500.996000 | Painting 1st coat | 8d | 2027-08-02 | 2027-08-09 | 3241, 3254, 3255, 3256 |  | 7595173 |
| 3258 | 37100.37300.37600.38200.39200.40600.41600.69500.996100 | False ceiling | 8d | 2027-08-10 | 2027-08-17 | 3242, 3257 |  | 7595183 |
| 3259 | 37100.37300.37600.38200.39200.40600.41600.69600 | **16th Floor** | 448.75d | 2026-04-19 | 2027-08-25 |  | start no earlier than 2026-04-19 | 7568923 |
| 3260 | 37100.37300.37600.38200.39200.40600.41600.69600.996200 | Block Work | 8d | 2026-04-19 | 2026-04-27 | 3244FS+0.25d |  | 7595193 |
| 3261 | 37100.37300.37600.38200.39200.40600.41600.69600.996300 | Door Frame Fixing | 9d | 2026-05-08 | 2026-05-17 | 3245, 3260 |  | 7595203 |
| 3262 | 37100.37300.37600.38200.39200.40600.41600.69600.996400 | Internal Plumbing Works | 8d | 2026-04-27 | 2026-05-05 | 3246, 3260 |  | 7595213 |
| 3263 | 37100.37300.37600.38200.39200.40600.41600.69600.996500 | Waterproofing | 10d | 2026-05-31 | 2026-06-10 | 3247, 3262 |  | 7595223 |
| 3264 | 37100.37300.37600.38200.39200.40600.41600.69600.996600 | Internal Plaster | 8d | 2026-04-27 | 2026-05-05 | 3248FS+0.25d |  | 7595233 |
| 3265 | 37100.37300.37600.38200.39200.40600.41600.69600.996700 | IPS flooring work | 10d | 2026-06-10 | 2026-06-20 | 3249, 3261, 3262, 3263 |  | 7595243 |
| 3266 | 37100.37300.37600.38200.39200.40600.41600.69600.996800 | Toilet dado work | 8d | 2026-06-10 | 2026-06-18 | 3250, 3263, 3264 |  | 7595253 |
| 3267 | 37100.37300.37600.38200.39200.40600.41600.69600.996900 | Toilet flooring work | 8d | 2026-06-18 | 2026-06-26 | 3251, 3266 |  | 7595263 |
| 3268 | 37100.37300.37600.38200.39200.40600.41600.69600.997000 | Living dinning flooring | 6d | 2026-06-18 | 2026-06-24 | 3252FS+0.25d |  | 7595273 |
| 3269 | 37100.37300.37600.38200.39200.40600.41600.69600.997100 | Aluminium door-window fixing | 12d | 2026-07-23 | 2026-08-03 | 3253, 3265, 3268 |  | 7595283 |
| 3270 | 37100.37300.37600.38200.39200.40600.41600.69600.997200 | Putty primer coat | 6d | 2026-06-24 | 2026-06-30 | 3254, 3268 |  | 7595293 |
| 3271 | 37100.37300.37600.38200.39200.40600.41600.69600.997300 | Door shutter fixing | 8d | 2026-06-26 | 2026-07-04 | 3255, 3268 |  | 7595303 |
| 3272 | 37100.37300.37600.38200.39200.40600.41600.69600.997400 | Electrical wiring work | 8d | 2027-07-21 | 2027-07-28 | 3256, 3271 |  | 7595313 |
| 3273 | 37100.37300.37600.38200.39200.40600.41600.69600.997500 | Painting 1st coat | 8d | 2027-08-10 | 2027-08-17 | 3257, 3270, 3271, 3272 |  | 7595323 |
| 3274 | 37100.37300.37600.38200.39200.40600.41600.69600.997600 | False ceiling | 8d | 2027-08-18 | 2027-08-25 | 3258, 3273 |  | 7595333 |

| ID | WBS | Task | Duration | Start | Finish | Predecessors | Constraint | Unique_Task_ID |
| --- | --- | --- | --- | --- | --- | --- | --- | --- |
| 3275 | 37100.37300.37600.38200.39200.40600.41600.69700 | **17th Floor** | 448.5d | 2026-04-27 | 2027-09-02 |  | start no earlier than 2026-04-27 | 7568933 |
| 3276 | 37100.37300.37600.38200.39200.40600.41600.69700.997700 | Block Work | 8d | 2026-04-27 | 2026-05-05 | 3260FS+0.25d |  | 7595343 |
| 3277 | 37100.37300.37600.38200.39200.40600.41600.69700.997800 | Door Frame Fixing | 9d | 2026-05-17 | 2026-05-26 | 3261, 3276 |  | 7595353 |
| 3278 | 37100.37300.37600.38200.39200.40600.41600.69700.997900 | Internal Plumbing Works | 8d | 2026-05-05 | 2026-05-13 | 3262, 3276 |  | 7595363 |
| 3279 | 37100.37300.37600.38200.39200.40600.41600.69700.998000 | Waterproofing | 10d | 2026-06-10 | 2026-06-20 | 3263, 3278 |  | 7595373 |
| 3280 | 37100.37300.37600.38200.39200.40600.41600.69700.998100 | Internal Plaster | 8d | 2026-05-05 | 2026-05-13 | 3264FS+0.25d |  | 7595383 |
| 3281 | 37100.37300.37600.38200.39200.40600.41600.69700.998200 | IPS flooring work | 10d | 2026-06-20 | 2026-06-30 | 3265, 3277, 3278, 3279 |  | 7595393 |
| 3282 | 37100.37300.37600.38200.39200.40600.41600.69700.998300 | Toilet dado work | 8d | 2026-06-20 | 2026-06-28 | 3266, 3279, 3280 |  | 7595403 |
| 3283 | 37100.37300.37600.38200.39200.40600.41600.69700.998400 | Toilet flooring work | 8d | 2026-06-28 | 2026-07-06 | 3267, 3282 |  | 7595413 |
| 3284 | 37100.37300.37600.38200.39200.40600.41600.69700.998500 | Living dinning flooring | 7d | 2026-06-24 | 2026-07-01 | 3268FS+0.25d |  | 7595423 |
| 3285 | 37100.37300.37600.38200.39200.40600.41600.69700.998600 | Aluminium door-window fixing | 12d | 2026-08-04 | 2026-08-15 | 3269, 3281, 3284 |  | 7595433 |
| 3286 | 37100.37300.37600.38200.39200.40600.41600.69700.998700 | Putty primer coat | 6d | 2026-07-01 | 2026-07-07 | 3270, 3284 |  | 7595443 |
| 3287 | 37100.37300.37600.38200.39200.40600.41600.69700.998800 | Door shutter fixing | 8d | 2026-07-04 | 2026-07-12 | 3271, 3284 |  | 7595453 |
| 3288 | 37100.37300.37600.38200.39200.40600.41600.69700.998900 | Electrical wiring work | 8d | 2027-07-29 | 2027-08-05 | 3272, 3287 |  | 7595463 |
| 3289 | 37100.37300.37600.38200.39200.40600.41600.69700.999000 | Painting 1st coat | 8d | 2027-08-18 | 2027-08-25 | 3273, 3286, 3287, 3288 |  | 7595473 |
| 3290 | 37100.37300.37600.38200.39200.40600.41600.69700.999100 | False ceiling | 8d | 2027-08-26 | 2027-09-02 | 3274, 3289 |  | 7595483 |
| 3291 | 37100.37300.37600.38200.39200.40600.41600.69800 | **18th Floor** | 454.12d | 2026-05-05 | 2027-09-16 |  | start no earlier than 2026-05-05 | 7568943 |
| 3292 | 37100.37300.37600.38200.39200.40600.41600.69800.999200 | Block Work | 7.94d | 2026-05-05 | 2026-05-13 | 3276FS+0.25d |  | 7595493 |
| 3293 | 37100.37300.37600.38200.39200.40600.41600.69800.999300 | Door Frame Fixing | 8.94d | 2026-05-26 | 2026-06-04 | 3277, 3292 |  | 7595503 |
| 3294 | 37100.37300.37600.38200.39200.40600.41600.69800.999400 | Internal Plumbing Works | 9.94d | 2026-05-13 | 2026-05-23 | 3278, 3292 |  | 7595513 |
| 3295 | 37100.37300.37600.38200.39200.40600.41600.69800.999500 | Waterproofing | 11.94d | 2026-06-20 | 2026-07-02 | 3279, 3294 |  | 7595523 |
| 3296 | 37100.37300.37600.38200.39200.40600.41600.69800.999600 | Internal Plaster | 8.94d | 2026-05-14 | 2026-05-22 | 3280FS+0.25d |  | 7595533 |
| 3297 | 37100.37300.37600.38200.39200.40600.41600.69800.999700 | IPS flooring work | 8.94d | 2026-07-02 | 2026-07-11 | 3281, 3293, 3294, 3295 |  | 7595543 |
| 3298 | 37100.37300.37600.38200.39200.40600.41600.69800.999800 | Toilet dado work | 7.94d | 2026-07-02 | 2026-07-10 | 3282, 3295, 3296 |  | 7595553 |
| 3299 | 37100.37300.37600.38200.39200.40600.41600.69800.999900 | Toilet flooring work | 6.94d | 2026-07-10 | 2026-07-17 | 3283, 3298 |  | 7595563 |
| 3300 | 37100.37300.37600.38200.39200.40600.41600.69800.1000000 | Living dinning flooring | 11.94d | 2026-07-17 | 2026-07-29 | 3284, 3293, 3299 |  | 7595573 |
| 3301 | 37100.37300.37600.38200.39200.40600.41600.69800.1000100 | Aluminium door-window fixing | 11.94d | 2026-08-16 | 2026-08-27 | 3285, 3297, 3300 |  | 7595583 |
| 3302 | 37100.37300.37600.38200.39200.40600.41600.69800.1000200 | Putty primer coat | 5.94d | 2026-07-29 | 2026-08-04 | 3286, 3300 |  | 7595593 |
| 3303 | 37100.37300.37600.38200.39200.40600.41600.69800.1000300 | Door shutter fixing | 7.94d | 2026-07-29 | 2026-08-06 | 3287, 3300 |  | 7595603 |
| 3304 | 37100.37300.37600.38200.39200.40600.41600.69800.1000400 | Electrical wiring work | 11.94d | 2027-08-06 | 2027-08-17 | 3288, 3303 |  | 7595613 |
| 3305 | 37100.37300.37600.38200.39200.40600.41600.69800.1000500 | Painting 1st coat | 11.94d | 2027-08-26 | 2027-09-06 | 3289, 3302, 3303, 3304 |  | 7595623 |
| 3306 | 37100.37300.37600.38200.39200.40600.41600.69800.1000600 | False ceiling | 9.94d | 2027-09-06 | 2027-09-16 | 3290, 3305 |  | 7595633 |

| ID | WBS | Task | Duration | Start | Finish | Predecessors | Constraint | Unique_Task_ID |
| --- | --- | --- | --- | --- | --- | --- | --- | --- |
| 3307 | 37100.37300.37600.38200.39200.40600.41600.69900 | **19th Floor** | 457.88d | 2026-05-13 | 2027-09-28 |  | start no earlier than 2026-05-13 | 7568953 |
| 3308 | 37100.37300.37600.38200.39200.40600.41600.69900.1000700 | Block Work | 7.94d | 2026-05-13 | 2026-05-21 | 3292FS+0.25d |  | 7595643 |
| 3309 | 37100.37300.37600.38200.39200.40600.41600.69900.1000800 | Door Frame Fixing | 8.94d | 2026-06-04 | 2026-06-13 | 3293, 3308 |  | 7595653 |
| 3310 | 37100.37300.37600.38200.39200.40600.41600.69900.1000900 | Internal Plumbing Works | 9.94d | 2026-05-23 | 2026-06-02 | 3294, 3308 |  | 7595663 |
| 3311 | 37100.37300.37600.38200.39200.40600.41600.69900.1001000 | Waterproofing | 11.94d | 2026-07-02 | 2026-07-14 | 3295, 3310 |  | 7595673 |
| 3312 | 37100.37300.37600.38200.39200.40600.41600.69900.1001100 | Internal Plaster | 8.94d | 2026-05-23 | 2026-06-01 | 3296FS+0.25d |  | 7595683 |
| 3313 | 37100.37300.37600.38200.39200.40600.41600.69900.1001200 | IPS flooring work | 8.94d | 2026-07-14 | 2026-07-23 | 3297, 3309, 3311, 3312 |  | 7595693 |
| 3314 | 37100.37300.37600.38200.39200.40600.41600.69900.1001300 | Toilet dado work | 7.94d | 2026-07-14 | 2026-07-22 | 3298, 3311, 3312 |  | 7595703 |
| 3315 | 37100.37300.37600.38200.39200.40600.41600.69900.1001400 | Toilet flooring work | 6.94d | 2026-07-22 | 2026-07-29 | 3299, 3314 |  | 7595713 |
| 3316 | 37100.37300.37600.38200.39200.40600.41600.69900.1001500 | Living dinning flooring | 11.94d | 2026-07-29 | 2026-08-10 | 3300, 3309, 3315 |  | 7595723 |
| 3317 | 37100.37300.37600.38200.39200.40600.41600.69900.1001600 | Aluminium door-window fixing | 11.94d | 2026-08-27 | 2026-09-08 | 3301, 3313, 3316 |  | 7595733 |
| 3318 | 37100.37300.37600.38200.39200.40600.41600.69900.1001700 | Putty primer coat | 5.94d | 2026-08-10 | 2026-08-16 | 3302, 3316 |  | 7595743 |
| 3319 | 37100.37300.37600.38200.39200.40600.41600.69900.1001800 | Door shutter fixing | 7.94d | 2026-08-10 | 2026-08-18 | 3303, 3316 |  | 7595753 |
| 3320 | 37100.37300.37600.38200.39200.40600.41600.69900.1001900 | Electrical wiring work | 11.94d | 2027-08-17 | 2027-08-29 | 3304, 3319 |  | 7595763 |
| 3321 | 37100.37300.37600.38200.39200.40600.41600.69900.1002000 | Painting 1st coat | 11.94d | 2027-09-06 | 2027-09-18 | 3305, 3318, 3319, 3320 |  | 7595773 |
| 3322 | 37100.37300.37600.38200.39200.40600.41600.69900.1002100 | False ceiling | 9.94d | 2027-09-18 | 2027-09-28 | 3306, 3321 |  | 7595783 |
| 3323 | 37100.37300.37600.38200.39200.40600.41600.70000 | **20th Floor** | 461.62d | 2026-05-22 | 2027-10-10 |  | start no earlier than 2026-05-22 | 7568963 |
| 3324 | 37100.37300.37600.38200.39200.40600.41600.70000.1002200 | Block Work | 7.94d | 2026-05-22 | 2026-05-30 | 3308FS+0.25d |  | 7595793 |
| 3325 | 37100.37300.37600.38200.39200.40600.41600.70000.1002300 | Door Frame Fixing | 8.94d | 2026-06-13 | 2026-06-22 | 3309, 3324 |  | 7595803 |
| 3326 | 37100.37300.37600.38200.39200.40600.41600.70000.1002400 | Internal Plumbing Works | 9.94d | 2026-06-02 | 2026-06-12 | 3310, 3324 |  | 7595813 |
| 3327 | 37100.37300.37600.38200.39200.40600.41600.70000.1002500 | Waterproofing | 11.94d | 2026-07-14 | 2026-07-26 | 3311, 3326 |  | 7595823 |
| 3328 | 37100.37300.37600.38200.39200.40600.41600.70000.1002600 | Internal Plaster | 8.94d | 2026-07-26 | 2026-08-04 | 3312, 3325, 3326, 3327 |  | 7595833 |
| 3329 | 37100.37300.37600.38200.39200.40600.41600.70000.1002700 | IPS flooring work | 8.94d | 2026-08-04 | 2026-08-13 | 3313, 3325, 3327, 3328 |  | 7595843 |
| 3330 | 37100.37300.37600.38200.39200.40600.41600.70000.1002800 | Toilet dado work | 7.94d | 2026-08-04 | 2026-08-12 | 3314, 3327, 3328 |  | 7595853 |
| 3331 | 37100.37300.37600.38200.39200.40600.41600.70000.1002900 | Toilet flooring work | 6.94d | 2026-08-12 | 2026-08-19 | 3315, 3330 |  | 7595863 |
| 3332 | 37100.37300.37600.38200.39200.40600.41600.70000.1003000 | Living dinning flooring | 11.94d | 2026-08-19 | 2026-08-31 | 3316, 3325, 3331 |  | 7595873 |
| 3333 | 37100.37300.37600.38200.39200.40600.41600.70000.1003100 | Aluminium door-window fixing | 11.94d | 2026-09-08 | 2026-09-20 | 3317, 3329, 3332 |  | 7595883 |
| 3334 | 37100.37300.37600.38200.39200.40600.41600.70000.1003200 | Putty primer coat | 5.94d | 2026-08-31 | 2026-09-05 | 3318, 3332 |  | 7595893 |
| 3335 | 37100.37300.37600.38200.39200.40600.41600.70000.1003300 | Door shutter fixing | 7.94d | 2026-08-31 | 2026-09-07 | 3319, 3332 |  | 7595903 |
| 3336 | 37100.37300.37600.38200.39200.40600.41600.70000.1003400 | Electrical wiring work | 11.94d | 2027-08-29 | 2027-09-10 | 3320, 3335 |  | 7595913 |
| 3337 | 37100.37300.37600.38200.39200.40600.41600.70000.1003500 | Painting 1st coat | 11.94d | 2027-09-18 | 2027-09-30 | 3321, 3334, 3335, 3336 |  | 7595923 |
| 3338 | 37100.37300.37600.38200.39200.40600.41600.70000.1003600 | False ceiling | 9.94d | 2027-09-30 | 2027-10-10 | 3322, 3337 |  | 7595933 |

| ID | WBS | Task | Duration | Start | Finish | Predecessors | Constraint | Unique_Task_ID |
| --- | --- | --- | --- | --- | --- | --- | --- | --- |
| 3339 | 37100.37300.37600.38200.39200.40600.41600.70100 | **21st Floor** | 442.44d | 2026-06-22 | 2027-10-22 |  | start no earlier than 2026-06-22 | 7568973 |
| 3340 | 37100.37300.37600.38200.39200.40600.41600.70100.1003700 | Block Work | 7.94d | 2026-06-22 | 2026-06-30 | 3002, 3324 |  | 7595943 |
| 3341 | 37100.37300.37600.38200.39200.40600.41600.70100.1003800 | Door Frame Fixing | 8.94d | 2026-06-30 | 2026-07-09 | 3325, 3340 |  | 7595953 |
| 3342 | 37100.37300.37600.38200.39200.40600.41600.70100.1003900 | Internal Plumbing Works | 9.94d | 2026-06-30 | 2026-07-10 | 3326, 3340 |  | 7595963 |
| 3343 | 37100.37300.37600.38200.39200.40600.41600.70100.1004000 | Waterproofing | 11.94d | 2026-07-26 | 2026-08-07 | 3327, 3342 |  | 7595973 |
| 3344 | 37100.37300.37600.38200.39200.40600.41600.70100.1004100 | Internal Plaster | 8.94d | 2026-08-07 | 2026-08-16 | 3328, 3341, 3342, 3343 |  | 7595983 |
| 3345 | 37100.37300.37600.38200.39200.40600.41600.70100.1004200 | IPS flooring work | 8.94d | 2026-08-16 | 2026-08-25 | 3329, 3341, 3343, 3344 |  | 7595993 |
| 3346 | 37100.37300.37600.38200.39200.40600.41600.70100.1004300 | Toilet dado work | 7.94d | 2026-08-16 | 2026-08-24 | 3330, 3343, 3344 |  | 7596003 |
| 3347 | 37100.37300.37600.38200.39200.40600.41600.70100.1004400 | Toilet flooring work | 6.94d | 2026-08-24 | 2026-08-31 | 3331, 3346 |  | 7596013 |
| 3348 | 37100.37300.37600.38200.39200.40600.41600.70100.1004500 | Living dinning flooring | 11.94d | 2026-08-31 | 2026-09-11 | 3332, 3341, 3347 |  | 7596023 |
| 3349 | 37100.37300.37600.38200.39200.40600.41600.70100.1004600 | Aluminium door-window fixing | 11.94d | 2026-09-20 | 2026-10-02 | 3333, 3345, 3348 |  | 7596033 |
| 3350 | 37100.37300.37600.38200.39200.40600.41600.70100.1004700 | Putty primer coat | 5.94d | 2026-09-12 | 2026-09-17 | 3334, 3348 |  | 7596043 |
| 3351 | 37100.37300.37600.38200.39200.40600.41600.70100.1004800 | Door shutter fixing | 7.94d | 2026-09-12 | 2026-09-19 | 3335, 3348 |  | 7596053 |
| 3352 | 37100.37300.37600.38200.39200.40600.41600.70100.1004900 | Electrical wiring work | 11.94d | 2027-09-10 | 2027-09-22 | 3336, 3351 |  | 7596063 |
| 3353 | 37100.37300.37600.38200.39200.40600.41600.70100.1005000 | Painting 1st coat | 11.94d | 2027-09-30 | 2027-10-12 | 3337, 3350, 3351, 3352 |  | 7596073 |
| 3354 | 37100.37300.37600.38200.39200.40600.41600.70100.1005100 | False ceiling | 9.94d | 2027-10-12 | 2027-10-22 | 3338, 3353 |  | 7596083 |
| 3355 | 37100.37300.37600.38200.39200.40600.41600.70200 | **22nd Floor** | 441.38d | 2026-07-05 | 2027-11-03 |  | start no earlier than 2026-07-05 | 7568983 |
| 3356 | 37100.37300.37600.38200.39200.40600.41600.70200.1005200 | Block Work | 7.94d | 2026-07-05 | 2026-07-13 | 3003, 3340 |  | 7596093 |
| 3357 | 37100.37300.37600.38200.39200.40600.41600.70200.1005300 | Door Frame Fixing | 8.94d | 2026-07-13 | 2026-07-22 | 3341, 3356 |  | 7596103 |
| 3358 | 37100.37300.37600.38200.39200.40600.41600.70200.1005400 | Internal Plumbing Works | 9.94d | 2026-07-13 | 2026-07-23 | 3342, 3356 |  | 7596113 |
| 3359 | 37100.37300.37600.38200.39200.40600.41600.70200.1005500 | Waterproofing | 11.94d | 2026-08-07 | 2026-08-19 | 3343, 3358 |  | 7596123 |
| 3360 | 37100.37300.37600.38200.39200.40600.41600.70200.1005600 | Internal Plaster | 8.94d | 2026-08-19 | 2026-08-28 | 3344, 3357, 3358, 3359 |  | 7596133 |
| 3361 | 37100.37300.37600.38200.39200.40600.41600.70200.1005700 | IPS flooring work | 8.94d | 2026-08-28 | 2026-09-06 | 3345, 3357, 3359, 3360 |  | 7596143 |
| 3362 | 37100.37300.37600.38200.39200.40600.41600.70200.1005800 | Toilet dado work | 7.94d | 2026-08-28 | 2026-09-05 | 3346, 3359, 3360 |  | 7596153 |
| 3363 | 37100.37300.37600.38200.39200.40600.41600.70200.1005900 | Toilet flooring work | 6.94d | 2026-09-05 | 2026-09-11 | 3347, 3362 |  | 7596163 |
| 3364 | 37100.37300.37600.38200.39200.40600.41600.70200.1006000 | Living dinning flooring | 11.94d | 2026-09-12 | 2026-09-23 | 3348, 3357, 3363 |  | 7596173 |
| 3365 | 37100.37300.37600.38200.39200.40600.41600.70200.1006100 | Aluminium door-window fixing | 11.94d | 2026-10-02 | 2026-10-14 | 3349, 3361, 3364 |  | 7596183 |
| 3366 | 37100.37300.37600.38200.39200.40600.41600.70200.1006200 | Putty primer coat | 5.94d | 2026-09-23 | 2026-09-29 | 3350, 3364 |  | 7596193 |
| 3367 | 37100.37300.37600.38200.39200.40600.41600.70200.1006300 | Door shutter fixing | 7.94d | 2026-09-23 | 2026-10-01 | 3351, 3364 |  | 7596203 |
| 3368 | 37100.37300.37600.38200.39200.40600.41600.70200.1006400 | Electrical wiring work | 11.94d | 2027-09-22 | 2027-10-04 | 3352, 3367 |  | 7596213 |
| 3369 | 37100.37300.37600.38200.39200.40600.41600.70200.1006500 | Painting 1st coat | 11.94d | 2027-10-12 | 2027-10-24 | 3353, 3366, 3367, 3368 |  | 7596223 |
| 3370 | 37100.37300.37600.38200.39200.40600.41600.70200.1006600 | False ceiling | 9.94d | 2027-10-24 | 2027-11-03 | 3354, 3369 |  | 7596233 |

| ID | WBS | Task | Duration | Start | Finish | Predecessors | Constraint | Unique_Task_ID |
| --- | --- | --- | --- | --- | --- | --- | --- | --- |
| 3371 | 37100.37300.37600.38200.39200.40600.41600.70300 | **23rd Floor** | 441.31d | 2026-07-17 | 2027-11-15 |  | start no earlier than 2026-07-17 | 7568993 |
| 3372 | 37100.37300.37600.38200.39200.40600.41600.70300.1006700 | Block Work | 7.94d | 2026-07-17 | 2026-07-25 | 3004, 3356 |  | 7596243 |
| 3373 | 37100.37300.37600.38200.39200.40600.41600.70300.1006800 | Door Frame Fixing | 8.94d | 2026-07-25 | 2026-08-03 | 3357, 3372 |  | 7596253 |
| 3374 | 37100.37300.37600.38200.39200.40600.41600.70300.1006900 | Internal Plumbing Works | 9.94d | 2026-07-25 | 2026-08-04 | 3358, 3372 |  | 7596263 |
| 3375 | 37100.37300.37600.38200.39200.40600.41600.70300.1007000 | Waterproofing | 11.94d | 2026-08-19 | 2026-08-31 | 3359, 3374 |  | 7596273 |
| 3376 | 37100.37300.37600.38200.39200.40600.41600.70300.1007100 | Internal Plaster | 8.94d | 2026-08-31 | 2026-09-09 | 3360, 3373, 3374, 3375 |  | 7596283 |
| 3377 | 37100.37300.37600.38200.39200.40600.41600.70300.1007200 | IPS flooring work | 8.94d | 2026-09-09 | 2026-09-17 | 3361, 3373, 3375, 3376 |  | 7596293 |
| 3378 | 37100.37300.37600.38200.39200.40600.41600.70300.1007300 | Toilet dado work | 7.94d | 2026-09-09 | 2026-09-16 | 3362, 3375, 3376 |  | 7596303 |
| 3379 | 37100.37300.37600.38200.39200.40600.41600.70300.1007400 | Toilet flooring work | 6.94d | 2026-09-17 | 2026-09-23 | 3363, 3378 |  | 7596313 |
| 3380 | 37100.37300.37600.38200.39200.40600.41600.70300.1007500 | Living dinning flooring | 14.94d | 2026-09-23 | 2026-10-08 | 3364, 3373, 3379 |  | 7596323 |
| 3381 | 37100.37300.37600.38200.39200.40600.41600.70300.1007600 | Aluminium door-window fixing | 14.94d | 2026-10-14 | 2026-10-29 | 3365, 3377, 3380 |  | 7596333 |
| 3382 | 37100.37300.37600.38200.39200.40600.41600.70300.1007700 | Putty primer coat | 5.94d | 2026-10-08 | 2026-10-14 | 3366, 3380 |  | 7596343 |
| 3383 | 37100.37300.37600.38200.39200.40600.41600.70300.1007800 | Door shutter fixing | 7.94d | 2026-10-08 | 2026-10-16 | 3367, 3380 |  | 7596353 |
| 3384 | 37100.37300.37600.38200.39200.40600.41600.70300.1007900 | Electrical wiring work | 11.94d | 2027-10-04 | 2027-10-16 | 3368, 3383 |  | 7596363 |
| 3385 | 37100.37300.37600.38200.39200.40600.41600.70300.1008000 | Painting 1st coat | 11.94d | 2027-10-24 | 2027-11-05 | 3369, 3382, 3383, 3384 |  | 7596373 |
| 3386 | 37100.37300.37600.38200.39200.40600.41600.70300.1008100 | False ceiling | 9.94d | 2027-11-05 | 2027-11-15 | 3370, 3385 |  | 7596383 |
| 3387 | 37100.37300.37600.38200.39200.40600.41600.70400 | **24th Floor** | 439.25d | 2026-07-31 | 2027-11-27 |  | start no earlier than 2026-07-31 | 7569003 |
| 3388 | 37100.37300.37600.38200.39200.40600.41600.70400.1008200 | Block Work | 7.94d | 2026-07-31 | 2026-08-08 | 3005, 3372 |  | 7596393 |
| 3389 | 37100.37300.37600.38200.39200.40600.41600.70400.1008300 | Door Frame Fixing | 8.94d | 2026-08-08 | 2026-08-17 | 3373, 3388 |  | 7596403 |
| 3390 | 37100.37300.37600.38200.39200.40600.41600.70400.1008400 | Internal Plumbing Works | 9.94d | 2026-08-08 | 2026-08-18 | 3374, 3388 |  | 7596413 |
| 3391 | 37100.37300.37600.38200.39200.40600.41600.70400.1008500 | Waterproofing | 11.94d | 2026-08-31 | 2026-09-12 | 3375, 3390 |  | 7596423 |
| 3392 | 37100.37300.37600.38200.39200.40600.41600.70400.1008600 | Internal Plaster | 8.94d | 2026-09-12 | 2026-09-20 | 3376, 3389, 3390, 3391 |  | 7596433 |
| 3393 | 37100.37300.37600.38200.39200.40600.41600.70400.1008700 | IPS flooring work | 8.94d | 2026-09-21 | 2026-09-29 | 3377, 3389, 3391, 3392 |  | 7596443 |
| 3394 | 37100.37300.37600.38200.39200.40600.41600.70400.1008800 | Toilet dado work | 7.94d | 2026-09-21 | 2026-09-28 | 3378, 3391, 3392 |  | 7596453 |
| 3395 | 37100.37300.37600.38200.39200.40600.41600.70400.1008900 | Toilet flooring work | 6.94d | 2026-09-28 | 2026-10-05 | 3379, 3394 |  | 7596463 |
| 3396 | 37100.37300.37600.38200.39200.40600.41600.70400.1009000 | Living dinning flooring | 14.94d | 2026-10-08 | 2026-10-23 | 3380, 3389, 3395 |  | 7596473 |
| 3397 | 37100.37300.37600.38200.39200.40600.41600.70400.1009100 | Aluminium door-window fixing | 14.94d | 2026-10-29 | 2026-12-28 | 3381, 3393, 3396 |  | 7596483 |
| 3398 | 37100.37300.37600.38200.39200.40600.41600.70400.1009200 | Putty primer coat | 5.94d | 2026-10-23 | 2026-10-29 | 3382, 3396 |  | 7596493 |
| 3399 | 37100.37300.37600.38200.39200.40600.41600.70400.1009300 | Door shutter fixing | 7.94d | 2026-10-23 | 2026-10-31 | 3383, 3396 |  | 7596503 |
| 3400 | 37100.37300.37600.38200.39200.40600.41600.70400.1009400 | Electrical wiring work | 11.94d | 2027-10-16 | 2027-10-28 | 3384, 3399 |  | 7596513 |
| 3401 | 37100.37300.37600.38200.39200.40600.41600.70400.1009500 | Painting 1st coat | 11.94d | 2027-11-05 | 2027-11-17 | 3385, 3398, 3399, 3400 |  | 7596523 |
| 3402 | 37100.37300.37600.38200.39200.40600.41600.70400.1009600 | False ceiling | 9.94d | 2027-11-17 | 2027-11-27 | 3386, 3401 |  | 7596533 |

| ID | WBS | Task | Duration | Start | Finish | Predecessors | Constraint | Unique_Task_ID |
| --- | --- | --- | --- | --- | --- | --- | --- | --- |
| 3403 | 37100.37300.37600.38200.39200.40600.41600.70500 | **25th Floor** | 433.31d | 2026-08-18 | 2027-12-09 |  | start no earlier than 2026-08-18 | 7569013 |
| 3404 | 37100.37300.37600.38200.39200.40600.41600.70500.1009700 | Block Work | 7.94d | 2026-08-18 | 2026-08-26 | 3006, 3388 |  | 7596543 |
| 3405 | 37100.37300.37600.38200.39200.40600.41600.70500.1009800 | Door Frame Fixing | 8.94d | 2026-08-26 | 2026-09-03 | 3389, 3404 |  | 7596553 |
| 3406 | 37100.37300.37600.38200.39200.40600.41600.70500.1009900 | Internal Plumbing Works | 9.94d | 2026-08-26 | 2026-09-04 | 3390, 3404 |  | 7596563 |
| 3407 | 37100.37300.37600.38200.39200.40600.41600.70500.1010000 | Waterproofing | 11.94d | 2026-09-12 | 2026-09-23 | 3391, 3406 |  | 7596573 |
| 3408 | 37100.37300.37600.38200.39200.40600.41600.70500.1010100 | Internal Plaster | 8.94d | 2026-09-24 | 2026-10-02 | 3392, 3405, 3406, 3407 |  | 7596583 |
| 3409 | 37100.37300.37600.38200.39200.40600.41600.70500.1010200 | IPS flooring work | 8.94d | 2026-10-02 | 2026-10-11 | 3393, 3405, 3407, 3408 |  | 7596593 |
| 3410 | 37100.37300.37600.38200.39200.40600.41600.70500.1010300 | Toilet dado work | 7.94d | 2026-10-02 | 2026-10-10 | 3394, 3407, 3408 |  | 7596603 |
| 3411 | 37100.37300.37600.38200.39200.40600.41600.70500.1010400 | Toilet flooring work | 6.94d | 2026-10-10 | 2026-10-17 | 3395, 3410 |  | 7596613 |
| 3412 | 37100.37300.37600.38200.39200.40600.41600.70500.1010500 | Living dinning flooring | 14.94d | 2026-10-23 | 2026-12-22 | 3396, 3405, 3411 |  | 7596623 |
| 3413 | 37100.37300.37600.38200.39200.40600.41600.70500.1010600 | Aluminium door-window fixing | 14.94d | 2026-12-28 | 2027-01-12 | 3397, 3409, 3412 |  | 7596633 |
| 3414 | 37100.37300.37600.38200.39200.40600.41600.70500.1010700 | Putty primer coat | 5.94d | 2026-12-22 | 2026-12-28 | 3398, 3412 |  | 7596643 |
| 3415 | 37100.37300.37600.38200.39200.40600.41600.70500.1010800 | Door shutter fixing | 7.94d | 2026-12-22 | 2026-12-30 | 3399, 3412 |  | 7596653 |
| 3416 | 37100.37300.37600.38200.39200.40600.41600.70500.1010900 | Electrical wiring work | 11.94d | 2027-10-28 | 2027-11-09 | 3400, 3415 |  | 7596663 |
| 3417 | 37100.37300.37600.38200.39200.40600.41600.70500.1011000 | Painting 1st coat | 11.94d | 2027-11-17 | 2027-11-29 | 3401, 3414, 3415, 3416 |  | 7596673 |
| 3418 | 37100.37300.37600.38200.39200.40600.41600.70500.1011100 | False ceiling | 9.94d | 2027-11-29 | 2027-12-09 | 3402, 3417 |  | 7596683 |
| 3419 | 37100.37300.37600.38200.39200.40600.41600.70600 | **26th Floor** | 430.38d | 2026-09-02 | 2027-12-21 |  | start no earlier than 2026-09-02 | 7569023 |
| 3420 | 37100.37300.37600.38200.39200.40600.41600.70600.1011200 | Block Work | 7.94d | 2026-09-02 | 2026-09-09 | 3007, 3404 |  | 7596693 |
| 3421 | 37100.37300.37600.38200.39200.40600.41600.70600.1011300 | Door Frame Fixing | 8.94d | 2026-09-09 | 2026-09-18 | 3405, 3420 |  | 7596703 |
| 3422 | 37100.37300.37600.38200.39200.40600.41600.70600.1011400 | Internal Plumbing Works | 9.94d | 2026-09-09 | 2026-09-19 | 3406, 3420 |  | 7596713 |
| 3423 | 37100.37300.37600.38200.39200.40600.41600.70600.1011500 | Waterproofing | 11.94d | 2026-09-24 | 2026-10-05 | 3407, 3422 |  | 7596723 |
| 3424 | 37100.37300.37600.38200.39200.40600.41600.70600.1011600 | Internal Plaster | 8.94d | 2026-10-05 | 2026-10-14 | 3408, 3421, 3422, 3423 |  | 7596733 |
| 3425 | 37100.37300.37600.38200.39200.40600.41600.70600.1011700 | IPS flooring work | 8.94d | 2026-10-14 | 2026-10-23 | 3409, 3421, 3423, 3424 |  | 7596743 |
| 3426 | 37100.37300.37600.38200.39200.40600.41600.70600.1011800 | Toilet dado work | 7.94d | 2026-10-14 | 2026-10-22 | 3410, 3423, 3424 |  | 7596753 |
| 3427 | 37100.37300.37600.38200.39200.40600.41600.70600.1011900 | Toilet flooring work | 6.94d | 2026-10-22 | 2026-10-29 | 3411, 3426 |  | 7596763 |
| 3428 | 37100.37300.37600.38200.39200.40600.41600.70600.1012000 | Living dinning flooring | 14.94d | 2026-12-22 | 2027-01-06 | 3412, 3421, 3427 |  | 7596773 |
| 3429 | 37100.37300.37600.38200.39200.40600.41600.70600.1012100 | Aluminium door-window fixing | 14.94d | 2027-01-12 | 2027-01-27 | 3413, 3425, 3428 |  | 7596783 |
| 3430 | 37100.37300.37600.38200.39200.40600.41600.70600.1012200 | Putty primer coat | 5.94d | 2027-01-06 | 2027-01-12 | 3414, 3428 |  | 7596793 |
| 3431 | 37100.37300.37600.38200.39200.40600.41600.70600.1012300 | Door shutter fixing | 7.94d | 2027-01-06 | 2027-01-14 | 3415, 3428 |  | 7596803 |
| 3432 | 37100.37300.37600.38200.39200.40600.41600.70600.1012400 | Electrical wiring work | 11.94d | 2027-11-09 | 2027-11-21 | 3416, 3431 |  | 7596813 |
| 3433 | 37100.37300.37600.38200.39200.40600.41600.70600.1012500 | Painting 1st coat | 11.94d | 2027-11-29 | 2027-12-11 | 3417, 3430, 3431, 3432 |  | 7596823 |
| 3434 | 37100.37300.37600.38200.39200.40600.41600.70600.1012600 | False ceiling | 9.94d | 2027-12-11 | 2027-12-21 | 3418, 3433 |  | 7596833 |

| ID | WBS | Task | Duration | Start | Finish | Predecessors | Constraint | Unique_Task_ID |
| --- | --- | --- | --- | --- | --- | --- | --- | --- |
| 3435 | 37100.37300.37600.38200.39200.40600.41600.70700 | **27th Floor** | 425.56d | 2026-09-18 | 2028-01-02 |  | start no earlier than 2026-09-18 | 7569033 |
| 3436 | 37100.37300.37600.38200.39200.40600.41600.70700.1012700 | Block Work | 7.94d | 2026-09-18 | 2026-09-26 | 3008, 3420 |  | 7596843 |
| 3437 | 37100.37300.37600.38200.39200.40600.41600.70700.1012800 | Door Frame Fixing | 8.94d | 2026-09-26 | 2026-10-05 | 3421, 3436 |  | 7596853 |
| 3438 | 37100.37300.37600.38200.39200.40600.41600.70700.1012900 | Internal Plumbing Works | 9.94d | 2026-09-26 | 2026-10-06 | 3422, 3436 |  | 7596863 |
| 3439 | 37100.37300.37600.38200.39200.40600.41600.70700.1013000 | Waterproofing | 11.94d | 2026-10-06 | 2026-10-18 | 3423, 3438 |  | 7596873 |
| 3440 | 37100.37300.37600.38200.39200.40600.41600.70700.1013100 | Internal Plaster | 8.94d | 2026-10-18 | 2026-10-27 | 3424, 3437, 3438, 3439 |  | 7596883 |
| 3441 | 37100.37300.37600.38200.39200.40600.41600.70700.1013200 | IPS flooring work | 8.94d | 2026-10-27 | 2026-12-20 | 3425, 3437, 3439, 3440 |  | 7596893 |
| 3442 | 37100.37300.37600.38200.39200.40600.41600.70700.1013300 | Toilet dado work | 7.94d | 2026-10-27 | 2026-12-19 | 3426, 3439, 3440 |  | 7596903 |
| 3443 | 37100.37300.37600.38200.39200.40600.41600.70700.1013400 | Toilet flooring work | 6.94d | 2026-12-19 | 2026-12-26 | 3427, 3442 |  | 7596913 |
| 3444 | 37100.37300.37600.38200.39200.40600.41600.70700.1013500 | Living dinning flooring | 14.94d | 2027-01-06 | 2027-01-21 | 3428, 3437, 3443 |  | 7596923 |
| 3445 | 37100.37300.37600.38200.39200.40600.41600.70700.1013600 | Aluminium door-window fixing | 14.94d | 2027-01-27 | 2027-02-11 | 3429, 3441, 3444 |  | 7596933 |
| 3446 | 37100.37300.37600.38200.39200.40600.41600.70700.1013700 | Putty primer coat | 5.94d | 2027-01-21 | 2027-01-27 | 3430, 3444 |  | 7596943 |
| 3447 | 37100.37300.37600.38200.39200.40600.41600.70700.1013800 | Door shutter fixing | 7.94d | 2027-01-21 | 2027-01-29 | 3431, 3444 |  | 7596953 |
| 3448 | 37100.37300.37600.38200.39200.40600.41600.70700.1013900 | Electrical wiring work | 11.94d | 2027-11-21 | 2027-12-03 | 3432, 3447 |  | 7596963 |
| 3449 | 37100.37300.37600.38200.39200.40600.41600.70700.1014000 | Painting 1st coat | 11.94d | 2027-12-11 | 2027-12-23 | 3433, 3446, 3447, 3448 |  | 7596973 |
| 3450 | 37100.37300.37600.38200.39200.40600.41600.70700.1014100 | False ceiling | 9.94d | 2027-12-23 | 2028-01-02 | 3434, 3449 |  | 7596983 |
| 3451 | 37100.37300.37600.38200.39200.40600.41600.70800 | **28th Floor** | 418.62d | 2026-10-07 | 2028-01-14 |  | start no earlier than 2026-10-07 | 7569043 |
| 3452 | 37100.37300.37600.38200.39200.40600.41600.70800.1014200 | Block Work | 7.94d | 2026-10-07 | 2026-10-15 | 3009, 3436 |  | 7596993 |
| 3453 | 37100.37300.37600.38200.39200.40600.41600.70800.1014300 | Door Frame Fixing | 8.94d | 2026-10-15 | 2026-10-24 | 3437, 3452 |  | 7597003 |
| 3454 | 37100.37300.37600.38200.39200.40600.41600.70800.1014400 | Internal Plumbing Works | 9.94d | 2026-10-15 | 2026-10-25 | 3438, 3452 |  | 7597013 |
| 3455 | 37100.37300.37600.38200.39200.40600.41600.70800.1014500 | Waterproofing | 11.94d | 2026-10-25 | 2026-12-21 | 3439, 3454 |  | 7597023 |
| 3456 | 37100.37300.37600.38200.39200.40600.41600.70800.1014600 | Internal Plaster | 8.94d | 2026-12-21 | 2026-12-30 | 3440, 3453, 3454, 3455 |  | 7597033 |
| 3457 | 37100.37300.37600.38200.39200.40600.41600.70800.1014700 | IPS flooring work | 8.94d | 2026-12-30 | 2027-01-08 | 3441, 3453, 3455, 3456 |  | 7597043 |
| 3458 | 37100.37300.37600.38200.39200.40600.41600.70800.1014800 | Toilet dado work | 7.94d | 2026-12-30 | 2027-01-07 | 3442, 3455, 3456 |  | 7597053 |
| 3459 | 37100.37300.37600.38200.39200.40600.41600.70800.1014900 | Toilet flooring work | 6.94d | 2027-01-07 | 2027-01-14 | 3443, 3458 |  | 7597063 |
| 3460 | 37100.37300.37600.38200.39200.40600.41600.70800.1015000 | Living dinning flooring | 14.94d | 2027-01-21 | 2027-02-05 | 3444, 3453, 3459 |  | 7597073 |
| 3461 | 37100.37300.37600.38200.39200.40600.41600.70800.1015100 | Aluminium door-window fixing | 14.94d | 2027-02-11 | 2027-02-26 | 3445, 3457, 3460 |  | 7597083 |
| 3462 | 37100.37300.37600.38200.39200.40600.41600.70800.1015200 | Putty primer coat | 5.94d | 2027-02-05 | 2027-02-11 | 3446, 3460 |  | 7597093 |
| 3463 | 37100.37300.37600.38200.39200.40600.41600.70800.1015300 | Door shutter fixing | 7.94d | 2027-02-05 | 2027-02-13 | 3447, 3460 |  | 7597103 |
| 3464 | 37100.37300.37600.38200.39200.40600.41600.70800.1015400 | Electrical wiring work | 11.94d | 2027-12-03 | 2027-12-15 | 3448, 3463 |  | 7597113 |
| 3465 | 37100.37300.37600.38200.39200.40600.41600.70800.1015500 | Painting 1st coat | 11.94d | 2027-12-23 | 2028-01-04 | 3449, 3462, 3463, 3464 |  | 7597123 |
| 3466 | 37100.37300.37600.38200.39200.40600.41600.70800.1015600 | False ceiling | 9.94d | 2028-01-04 | 2028-01-14 | 3450, 3465 |  | 7597133 |

| ID | WBS | Task | Duration | Start | Finish | Predecessors | Constraint | Unique_Task_ID |
| --- | --- | --- | --- | --- | --- | --- | --- | --- |
| 3467 | 37100.37300.37600.38200.39200.40600.41600.70900 | **29th Floor** | 410.69d | 2026-10-27 | 2028-01-26 |  | start no earlier than 2026-10-27 | 7569053 |
| 3468 | 37100.37300.37600.38200.39200.40600.41600.70900.1015700 | Block Work | 7.94d | 2026-10-27 | 2026-12-19 | 3010, 3452 |  | 7597143 |
| 3469 | 37100.37300.37600.38200.39200.40600.41600.70900.1015800 | Door Frame Fixing | 8.94d | 2026-12-19 | 2026-12-28 | 3453, 3468 |  | 7597153 |
| 3470 | 37100.37300.37600.38200.39200.40600.41600.70900.1015900 | Internal Plumbing Works | 9.94d | 2026-12-19 | 2026-12-29 | 3454, 3468 |  | 7597163 |
| 3471 | 37100.37300.37600.38200.39200.40600.41600.70900.1016000 | Waterproofing | 11.94d | 2026-12-29 | 2027-01-10 | 3455, 3470 |  | 7597173 |
| 3472 | 37100.37300.37600.38200.39200.40600.41600.70900.1016100 | Internal Plaster | 8.94d | 2027-01-10 | 2027-01-19 | 3456, 3469, 3470, 3471 |  | 7597183 |
| 3473 | 37100.37300.37600.38200.39200.40600.41600.70900.1016200 | IPS flooring work | 8.94d | 2027-01-19 | 2027-01-28 | 3457, 3469, 3471, 3472 |  | 7597193 |
| 3474 | 37100.37300.37600.38200.39200.40600.41600.70900.1016300 | Toilet dado work | 7.94d | 2027-01-19 | 2027-01-27 | 3458, 3471, 3472 |  | 7597203 |
| 3475 | 37100.37300.37600.38200.39200.40600.41600.70900.1016400 | Toilet flooring work | 6.94d | 2027-01-27 | 2027-02-03 | 3459, 3474 |  | 7597213 |
| 3476 | 37100.37300.37600.38200.39200.40600.41600.70900.1016500 | Living dinning flooring | 14.94d | 2027-02-05 | 2027-02-20 | 3460, 3469, 3475 |  | 7597223 |
| 3477 | 37100.37300.37600.38200.39200.40600.41600.70900.1016600 | Aluminium door-window fixing | 14.94d | 2027-02-26 | 2027-03-13 | 3461, 3473, 3476 |  | 7597233 |
| 3478 | 37100.37300.37600.38200.39200.40600.41600.70900.1016700 | Putty primer coat | 5.94d | 2027-02-20 | 2027-02-26 | 3462, 3476 |  | 7597243 |
| 3479 | 37100.37300.37600.38200.39200.40600.41600.70900.1016800 | Door shutter fixing | 7.94d | 2027-02-20 | 2027-02-28 | 3463, 3476 |  | 7597253 |
| 3480 | 37100.37300.37600.38200.39200.40600.41600.70900.1016900 | Electrical wiring work | 11.94d | 2027-12-15 | 2027-12-27 | 3464, 3479 |  | 7597263 |
| 3481 | 37100.37300.37600.38200.39200.40600.41600.70900.1017000 | Painting 1st coat | 11.94d | 2028-01-04 | 2028-01-16 | 3465, 3478, 3479, 3480 |  | 7597273 |
| 3482 | 37100.37300.37600.38200.39200.40600.41600.70900.1017100 | False ceiling | 9.94d | 2028-01-16 | 2028-01-26 | 3466, 3481 |  | 7597283 |
| 3483 | 37100.37300.37600.38200.39200.40600.41600.71000 | **30th Floor** | 386.12d | 2027-01-20 | 2028-02-10 |  | start no earlier than 2027-01-20 | 7569063 |
| 3484 | 37100.37300.37600.38200.39200.40600.41600.71000.1017200 | Block Work | 7.94d | 2027-01-20 | 2027-01-27 | 3011, 3468 |  | 7597293 |
| 3485 | 37100.37300.37600.38200.39200.40600.41600.71000.1017300 | Door Frame Fixing | 8.94d | 2027-01-27 | 2027-02-05 | 3469, 3484 |  | 7597303 |
| 3486 | 37100.37300.37600.38200.39200.40600.41600.71000.1017400 | Internal Plumbing Works | 9.94d | 2027-01-27 | 2027-02-06 | 3470, 3484 |  | 7597313 |
| 3487 | 37100.37300.37600.38200.39200.40600.41600.71000.1017500 | Waterproofing | 11.94d | 2027-02-06 | 2027-02-18 | 3471, 3486 |  | 7597323 |
| 3488 | 37100.37300.37600.38200.39200.40600.41600.71000.1017600 | Internal Plaster | 3d | 2027-02-18 | 2027-02-21 | 3472, 3485, 3486, 3487 |  | 7597333 |
| 3489 | 37100.37300.37600.38200.39200.40600.41600.71000.1017700 | IPS flooring work | 8.94d | 2027-02-21 | 2027-03-02 | 3473, 3485, 3487, 3488 |  | 7597343 |
| 3490 | 37100.37300.37600.38200.39200.40600.41600.71000.1017800 | Toilet dado work | 7.94d | 2027-02-21 | 2027-03-01 | 3474, 3487, 3488 |  | 7597353 |
| 3491 | 37100.37300.37600.38200.39200.40600.41600.71000.1017900 | Toilet flooring work | 6.94d | 2027-03-01 | 2027-03-08 | 3475, 3490 |  | 7597363 |
| 3492 | 37100.37300.37600.38200.39200.40600.41600.71000.1018000 | Living dinning flooring | 7d | 2027-03-08 | 2027-03-15 | 3476, 3485, 3491 |  | 7597373 |
| 3493 | 37100.37300.37600.38200.39200.40600.41600.71000.1018100 | Aluminium door-window fixing | 14.94d | 2027-03-15 | 2027-03-30 | 3477, 3489, 3492 |  | 7597383 |
| 3494 | 37100.37300.37600.38200.39200.40600.41600.71000.1018200 | Putty primer coat | 5.94d | 2027-03-15 | 2027-03-21 | 3478, 3492 |  | 7597393 |
| 3495 | 37100.37300.37600.38200.39200.40600.41600.71000.1018300 | Door shutter fixing | 7.94d | 2027-03-15 | 2027-03-23 | 3479, 3492 |  | 7597403 |
| 3496 | 37100.37300.37600.38200.39200.40600.41600.71000.1018400 | Electrical wiring work | 14.94d | 2027-12-27 | 2028-01-11 | 3480, 3495 |  | 7597413 |
| 3497 | 37100.37300.37600.38200.39200.40600.41600.71000.1018500 | Painting 1st coat | 14.94d | 2028-01-16 | 2028-01-31 | 3481, 3494, 3495, 3496 |  | 7597423 |
| 3498 | 37100.37300.37600.38200.39200.40600.41600.71000.1018600 | False ceiling | 9.94d | 2028-01-31 | 2028-02-10 | 3482, 3497 |  | 7597433 |

| ID | WBS | Task | Duration | Start | Finish | Predecessors | Constraint | Unique_Task_ID |
| --- | --- | --- | --- | --- | --- | --- | --- | --- |
| 3499 | 37100.37300.37600.38200.39200.40600.41600.71100 | **31st Floor** | 393.12d | 2027-01-27 | 2028-02-25 |  | start no earlier than 2027-01-27 | 7569073 |
| 3500 | 37100.37300.37600.38200.39200.40600.41600.71100.1018700 | Block Work | 7.94d | 2027-01-27 | 2027-02-04 | 3012, 3484 |  | 7597443 |
| 3501 | 37100.37300.37600.38200.39200.40600.41600.71100.1018800 | Door Frame Fixing | 8.94d | 2027-02-05 | 2027-02-14 | 3485, 3500 |  | 7597453 |
| 3502 | 37100.37300.37600.38200.39200.40600.41600.71100.1018900 | Internal Plumbing Works | 9.94d | 2027-02-06 | 2027-02-16 | 3486, 3500 |  | 7597463 |
| 3503 | 37100.37300.37600.38200.39200.40600.41600.71100.1019000 | Waterproofing | 11.94d | 2027-02-18 | 2027-03-02 | 3487, 3502 |  | 7597473 |
| 3504 | 37100.37300.37600.38200.39200.40600.41600.71100.1019100 | Internal Plaster | 8.94d | 2027-03-02 | 2027-03-11 | 3488, 3501, 3502, 3503 |  | 7597483 |
| 3505 | 37100.37300.37600.38200.39200.40600.41600.71100.1019200 | IPS flooring work | 8.94d | 2027-03-11 | 2027-03-20 | 3489, 3501, 3503, 3504 |  | 7597493 |
| 3506 | 37100.37300.37600.38200.39200.40600.41600.71100.1019300 | Toilet dado work | 7.94d | 2027-03-11 | 2027-03-19 | 3490, 3503, 3504 |  | 7597503 |
| 3507 | 37100.37300.37600.38200.39200.40600.41600.71100.1019400 | Toilet flooring work | 6.94d | 2027-03-19 | 2027-03-26 | 3491, 3506 |  | 7597513 |
| 3508 | 37100.37300.37600.38200.39200.40600.41600.71100.1019500 | Living dinning flooring | 14.94d | 2027-03-26 | 2027-04-10 | 3492, 3501, 3507 |  | 7597523 |
| 3509 | 37100.37300.37600.38200.39200.40600.41600.71100.1019600 | Aluminium door-window fixing | 11.94d | 2027-04-10 | 2027-04-22 | 3493, 3505, 3508 |  | 7597533 |
| 3510 | 37100.37300.37600.38200.39200.40600.41600.71100.1019700 | Putty primer coat | 5.94d | 2027-04-10 | 2027-04-16 | 3494, 3508 |  | 7597543 |
| 3511 | 37100.37300.37600.38200.39200.40600.41600.71100.1019800 | Door shutter fixing | 7.94d | 2027-04-10 | 2027-04-18 | 3495, 3508 |  | 7597553 |
| 3512 | 37100.37300.37600.38200.39200.40600.41600.71100.1019900 | Electrical wiring work | 14.94d | 2028-01-11 | 2028-01-26 | 3496, 3511 |  | 7597563 |
| 3513 | 37100.37300.37600.38200.39200.40600.41600.71100.1020000 | Painting 1st coat | 14.94d | 2028-01-31 | 2028-02-15 | 3497, 3510, 3511, 3512 |  | 7597573 |
| 3514 | 37100.37300.37600.38200.39200.40600.41600.71100.1020100 | False ceiling | 9.94d | 2028-02-15 | 2028-02-25 | 3498, 3513 |  | 7597583 |
| 3515 | 37100.37300.37600.38200.39200.40600.41600.71200 | **32nd Floor** | 400.12d | 2027-02-04 | 2028-03-10 |  | start no earlier than 2027-02-04 | 7569083 |
| 3516 | 37100.37300.37600.38200.39200.40600.41600.71200.1020200 | Block Work | 7.94d | 2027-02-04 | 2027-02-12 | 3013, 3500 |  | 7597593 |
| 3517 | 37100.37300.37600.38200.39200.40600.41600.71200.1020300 | Door Frame Fixing | 8.94d | 2027-02-14 | 2027-02-23 | 3501, 3516 |  | 7597603 |
| 3518 | 37100.37300.37600.38200.39200.40600.41600.71200.1020400 | Internal Plumbing Works | 9.94d | 2027-02-16 | 2027-02-26 | 3502, 3516 |  | 7597613 |
| 3519 | 37100.37300.37600.38200.39200.40600.41600.71200.1020500 | Waterproofing | 11.94d | 2027-03-02 | 2027-03-14 | 3503, 3518 |  | 7597623 |
| 3520 | 37100.37300.37600.38200.39200.40600.41600.71200.1020600 | Internal Plaster | 8.94d | 2027-03-14 | 2027-03-23 | 3504, 3517, 3518, 3519 |  | 7597633 |
| 3521 | 37100.37300.37600.38200.39200.40600.41600.71200.1020700 | IPS flooring work | 8.94d | 2027-03-23 | 2027-04-01 | 3505, 3517, 3519, 3520 |  | 7597643 |
| 3522 | 37100.37300.37600.38200.39200.40600.41600.71200.1020800 | Toilet dado work | 7.94d | 2027-03-23 | 2027-03-31 | 3506, 3519, 3520 |  | 7597653 |
| 3523 | 37100.37300.37600.38200.39200.40600.41600.71200.1020900 | Toilet flooring work | 6.94d | 2027-03-31 | 2027-04-07 | 3507, 3522 |  | 7597663 |
| 3524 | 37100.37300.37600.38200.39200.40600.41600.71200.1021000 | Living dinning flooring | 14.94d | 2027-04-10 | 2027-04-25 | 3508, 3517, 3523 |  | 7597673 |
| 3525 | 37100.37300.37600.38200.39200.40600.41600.71200.1021100 | Aluminium door-window fixing | 11.94d | 2027-04-25 | 2027-05-07 | 3509, 3521, 3524 |  | 7597683 |
| 3526 | 37100.37300.37600.38200.39200.40600.41600.71200.1021200 | Putty primer coat | 5.94d | 2027-04-25 | 2027-05-01 | 3510, 3524 |  | 7597693 |
| 3527 | 37100.37300.37600.38200.39200.40600.41600.71200.1021300 | Door shutter fixing | 7.94d | 2027-04-25 | 2027-05-03 | 3511, 3524 |  | 7597703 |
| 3528 | 37100.37300.37600.38200.39200.40600.41600.71200.1021400 | Electrical wiring work | 14.94d | 2028-01-26 | 2028-02-10 | 3512, 3527 |  | 7597713 |
| 3529 | 37100.37300.37600.38200.39200.40600.41600.71200.1021500 | Painting 1st coat | 14.94d | 2028-02-15 | 2028-03-01 | 3513, 3526, 3527, 3528 |  | 7597723 |
| 3530 | 37100.37300.37600.38200.39200.40600.41600.71200.1021600 | False ceiling | 9.94d | 2028-03-01 | 2028-03-10 | 3514, 3529 |  | 7597733 |

| ID | WBS | Task | Duration | Start | Finish | Predecessors | Constraint | Unique_Task_ID |
| --- | --- | --- | --- | --- | --- | --- | --- | --- |
| 3531 | 37100.37300.37600.38200.39200.40600.41600.71300 | **33rd Floor** | 404.12d | 2027-02-12 | 2028-03-22 |  | start no earlier than 2027-02-12 | 7569093 |
| 3532 | 37100.37300.37600.38200.39200.40600.41600.71300.1021700 | Block Work | 7.94d | 2027-02-12 | 2027-02-20 | 3014, 3516 |  | 7597743 |
| 3533 | 37100.37300.37600.38200.39200.40600.41600.71300.1021800 | Door Frame Fixing | 8.94d | 2027-02-23 | 2027-03-04 | 3517, 3532 |  | 7597753 |
| 3534 | 37100.37300.37600.38200.39200.40600.41600.71300.1021900 | Internal Plumbing Works | 9.94d | 2027-02-26 | 2027-03-08 | 3518, 3532 |  | 7597763 |
| 3535 | 37100.37300.37600.38200.39200.40600.41600.71300.1022000 | Waterproofing | 11.94d | 2027-03-14 | 2027-03-26 | 3519, 3534 |  | 7597773 |
| 3536 | 37100.37300.37600.38200.39200.40600.41600.71300.1022100 | Internal Plaster | 3d | 2027-03-26 | 2027-03-29 | 3520, 3533, 3534, 3535 |  | 7597783 |
| 3537 | 37100.37300.37600.38200.39200.40600.41600.71300.1022200 | IPS flooring work | 8.94d | 2027-04-01 | 2027-04-10 | 3521, 3533, 3535, 3536 |  | 7597793 |
| 3538 | 37100.37300.37600.38200.39200.40600.41600.71300.1022300 | Toilet dado work | 7.94d | 2027-03-31 | 2027-04-08 | 3522, 3535, 3536 |  | 7597803 |
| 3539 | 37100.37300.37600.38200.39200.40600.41600.71300.1022400 | Toilet flooring work | 6.94d | 2027-04-08 | 2027-04-15 | 3523, 3538 |  | 7597813 |
| 3540 | 37100.37300.37600.38200.39200.40600.41600.71300.1022500 | Living dinning flooring | 14.94d | 2027-04-25 | 2027-05-10 | 3524, 3533, 3539 |  | 7597823 |
| 3541 | 37100.37300.37600.38200.39200.40600.41600.71300.1022600 | Aluminium door-window fixing | 14.94d | 2027-05-10 | 2027-05-25 | 3525, 3537, 3540 |  | 7597833 |
| 3542 | 37100.37300.37600.38200.39200.40600.41600.71300.1022700 | Putty primer coat | 5.94d | 2027-05-10 | 2027-05-16 | 3526, 3540 |  | 7597843 |
| 3543 | 37100.37300.37600.38200.39200.40600.41600.71300.1022800 | Door shutter fixing | 7.94d | 2027-05-10 | 2027-05-18 | 3527, 3540 |  | 7597853 |
| 3544 | 37100.37300.37600.38200.39200.40600.41600.71300.1022900 | Electrical wiring work | 11.94d | 2028-02-10 | 2028-02-21 | 3528, 3543 |  | 7597863 |
| 3545 | 37100.37300.37600.38200.39200.40600.41600.71300.1023000 | Painting 1st coat | 11.94d | 2028-03-01 | 2028-03-12 | 3529, 3542, 3543, 3544 |  | 7597873 |
| 3546 | 37100.37300.37600.38200.39200.40600.41600.71300.1023100 | False ceiling | 9.94d | 2028-03-13 | 2028-03-22 | 3530, 3545 |  | 7597883 |
| 3547 | 37100.37300.37600.38200.39200.40600.41600.71400 | **34th Floor** | 408.12d | 2027-02-20 | 2028-04-03 |  | start no earlier than 2027-02-20 | 7569103 |
| 3548 | 37100.37300.37600.38200.39200.40600.41600.71400.1023200 | Block Work | 7.94d | 2027-02-20 | 2027-02-28 | 3015, 3532 |  | 7597893 |
| 3549 | 37100.37300.37600.38200.39200.40600.41600.71400.1023300 | Door Frame Fixing | 8.94d | 2027-03-04 | 2027-03-13 | 3533, 3548 |  | 7597903 |
| 3550 | 37100.37300.37600.38200.39200.40600.41600.71400.1023400 | Internal Plumbing Works | 9.94d | 2027-03-08 | 2027-03-18 | 3534, 3548 |  | 7597913 |
| 3551 | 37100.37300.37600.38200.39200.40600.41600.71400.1023500 | Waterproofing | 11.94d | 2027-03-26 | 2027-04-07 | 3535, 3550 |  | 7597923 |
| 3552 | 37100.37300.37600.38200.39200.40600.41600.71400.1023600 | Internal Plaster | 3d | 2027-03-29 | 2027-04-01 | 3536FS+0.25d |  | 7597933 |
| 3553 | 37100.37300.37600.38200.39200.40600.41600.71400.1023700 | IPS flooring work | 8.94d | 2027-04-10 | 2027-04-19 | 3537, 3549, 3551, 3552 |  | 7597943 |
| 3554 | 37100.37300.37600.38200.39200.40600.41600.71400.1023800 | Toilet dado work | 7.94d | 2027-04-08 | 2027-04-16 | 3538, 3551, 3552 |  | 7597953 |
| 3555 | 37100.37300.37600.38200.39200.40600.41600.71400.1023900 | Toilet flooring work | 6.94d | 2027-04-16 | 2027-04-23 | 3539, 3554 |  | 7597963 |
| 3556 | 37100.37300.37600.38200.39200.40600.41600.71400.1024000 | Living dinning flooring | 8d | 2027-05-10 | 2027-05-18 | 3540, 3549, 3555 |  | 7597973 |
| 3557 | 37100.37300.37600.38200.39200.40600.41600.71400.1024100 | Aluminium door-window fixing | 14.94d | 2027-05-25 | 2027-06-09 | 3541, 3553, 3556 |  | 7597983 |
| 3558 | 37100.37300.37600.38200.39200.40600.41600.71400.1024200 | Putty primer coat | 5.94d | 2027-05-18 | 2027-05-24 | 3542, 3556 |  | 7597993 |
| 3559 | 37100.37300.37600.38200.39200.40600.41600.71400.1024300 | Door shutter fixing | 7.94d | 2027-05-18 | 2027-05-26 | 3543, 3556 |  | 7598003 |
| 3560 | 37100.37300.37600.38200.39200.40600.41600.71400.1024400 | Electrical wiring work | 11.94d | 2028-02-22 | 2028-03-04 | 3544, 3559 |  | 7598013 |
| 3561 | 37100.37300.37600.38200.39200.40600.41600.71400.1024500 | Painting 1st coat | 11.94d | 2028-03-13 | 2028-03-24 | 3545, 3558, 3559, 3560 |  | 7598023 |
| 3562 | 37100.37300.37600.38200.39200.40600.41600.71400.1024600 | False ceiling | 9.94d | 2028-03-24 | 2028-04-03 | 3546, 3561 |  | 7598033 |

| ID | WBS | Task | Duration | Start | Finish | Predecessors | Constraint | Unique_Task_ID |
| --- | --- | --- | --- | --- | --- | --- | --- | --- |
| 3563 | 37100.37300.37600.38200.39200.40600.41600.71500 | **35th Floor** | 412.12d | 2027-02-28 | 2028-04-15 |  | start no earlier than 2027-02-28 | 7569113 |
| 3564 | 37100.37300.37600.38200.39200.40600.41600.71500.1024700 | Block Work | 7.94d | 2027-02-28 | 2027-03-08 | 3016, 3548 |  | 7598043 |
| 3565 | 37100.37300.37600.38200.39200.40600.41600.71500.1024800 | Door Frame Fixing | 8.94d | 2027-03-13 | 2027-03-22 | 3549, 3564 |  | 7598053 |
| 3566 | 37100.37300.37600.38200.39200.40600.41600.71500.1024900 | Internal Plumbing Works | 9.94d | 2027-03-18 | 2027-03-28 | 3550, 3564 |  | 7598063 |
| 3567 | 37100.37300.37600.38200.39200.40600.41600.71500.1025000 | Waterproofing | 11.94d | 2027-04-07 | 2027-04-19 | 3551, 3566 |  | 7598073 |
| 3568 | 37100.37300.37600.38200.39200.40600.41600.71500.1025100 | Internal Plaster | 3d | 2027-04-02 | 2027-04-05 | 3552FS+0.25d |  | 7598083 |
| 3569 | 37100.37300.37600.38200.39200.40600.41600.71500.1025200 | IPS flooring work | 8.94d | 2027-04-19 | 2027-04-28 | 3553, 3565, 3567, 3568 |  | 7598093 |
| 3570 | 37100.37300.37600.38200.39200.40600.41600.71500.1025300 | Toilet dado work | 7.94d | 2027-04-19 | 2027-04-27 | 3554, 3567, 3568 |  | 7598103 |
| 3571 | 37100.37300.37600.38200.39200.40600.41600.71500.1025400 | Toilet flooring work | 6.94d | 2027-04-27 | 2027-05-04 | 3555, 3570 |  | 7598113 |
| 3572 | 37100.37300.37600.38200.39200.40600.41600.71500.1025500 | Living dinning flooring | 5d | 2027-05-18 | 2027-05-23 | 3556FS+0.25d |  | 7598123 |
| 3573 | 37100.37300.37600.38200.39200.40600.41600.71500.1025600 | Aluminium door-window fixing | 14.94d | 2027-06-09 | 2027-06-24 | 3557, 3569, 3572 |  | 7598133 |
| 3574 | 37100.37300.37600.38200.39200.40600.41600.71500.1025700 | Putty primer coat | 5.94d | 2027-05-24 | 2027-05-30 | 3558, 3572 |  | 7598143 |
| 3575 | 37100.37300.37600.38200.39200.40600.41600.71500.1025800 | Door shutter fixing | 7.94d | 2027-05-26 | 2027-06-03 | 3559, 3572 |  | 7598153 |
| 3576 | 37100.37300.37600.38200.39200.40600.41600.71500.1025900 | Electrical wiring work | 11.94d | 2028-03-04 | 2028-03-16 | 3560, 3575 |  | 7598163 |
| 3577 | 37100.37300.37600.38200.39200.40600.41600.71500.1026000 | Painting 1st coat | 11.94d | 2028-03-24 | 2028-04-05 | 3561, 3574, 3575, 3576 |  | 7598173 |
| 3578 | 37100.37300.37600.38200.39200.40600.41600.71500.1026100 | False ceiling | 9.94d | 2028-04-05 | 2028-04-15 | 3562, 3577 |  | 7598183 |
| 3579 | 37100.37300.37600.38200.39200.40600.191000 | **Terrace Finishing** | 79.88d | 2026-10-20 | 2027-02-22 |  | start no earlier than 2026-10-20 | 7571243 |
| 3580 | 37100.37300.37600.38200.39200.40600.191000.470800 | Terrace waterproofing | 39.94d | 2026-10-20 | 2027-01-13 | 2973 |  | 7581563 |
| 3581 | 37100.37300.37600.38200.39200.40600.191000.470900 | Terrace finishing | 39.94d | 2027-01-13 | 2027-02-22 | 3580 |  | 7581573 |
| 3582 | 37100.37300.37600.38200.39200.40600.100700 | **Common Area Finishing** | 573.38d | 2026-01-13 | 2027-09-23 |  | start no earlier than 2026-01-13 | 7569273 |
| 3583 | 37100.37300.37600.38200.39200.40600.100700.471000 | Block Work | 39.94d | 2026-01-13 | 2026-02-22 | 2984FS+0.25d |  | 7581583 |
| 3584 | 37100.37300.37600.38200.39200.40600.100700.471100 | Internal Plaster | 119.94d | 2026-02-18 | 2026-06-18 | 3589SS+17.88d |  | 7581593 |
| 3585 | 37100.37300.37600.38200.39200.40600.100700.471200 | Staircase railing fixing | 149.94d | 2026-05-22 | 2026-10-19 | 3587SS+26.75d, 3586SS+26.75d |  | 7581603 |
| 3586 | 37100.37300.37600.38200.39200.40600.100700.471300 | Main staircase flooring | 149.94d | 2026-04-26 | 2026-09-23 | 3587SS+13.38d |  | 7581613 |
| 3587 | 37100.37300.37600.38200.39200.40600.100700.471400 | Fire staircase flooring | 149.94d | 2026-04-12 | 2026-09-09 | 3584SS+13.38d, 3591SS+26.75d |  | 7581623 |
| 3588 | 37100.37300.37600.38200.39200.40600.100700.471500 | Fire door work | 59.94d | 2026-05-22 | 2026-07-21 | 3586SS+26.75d, 3587SS+26.75d |  | 7581633 |
| 3589 | 37100.37300.37600.38200.39200.40600.100700.471600 | Electrical wiring work | 119.94d | 2026-01-31 | 2026-05-31 | 3583SS+17.88d |  | 7581643 |
| 3590 | 37100.37300.37600.38200.39200.40600.100700.471700 | Lobby flooring | 150d | 2026-02-03 | 2026-07-03 | 3589SS+3.38d |  | 7581653 |
| 3591 | 37100.37300.37600.38200.39200.40600.100700.471800 | Ceiling & wall putty-primer | 109.94d | 2026-03-17 | 2026-07-04 | 3584SS+26.75d |  | 7581663 |
| 3592 | 37100.37300.37600.38200.39200.40600.100700.471900 | Ceiling & wall painting | 99.94d | 2026-04-03 | 2026-07-12 | 3591SS+17.88d |  | 7581673 |
| 3593 | 37100.37300.37600.38200.39200.40600.100700.472000 | Light fixture supply & installation | 240d | 2027-01-26 | 2027-09-23 | 3592SS+253d |  | 7581683 |

| ID | WBS | Task | Duration | Start | Finish | Predecessors | Constraint | Unique_Task_ID |
| --- | --- | --- | --- | --- | --- | --- | --- | --- |
| 3594 | 37100.37300.37600.38200.39200.40600.46600 | **Balcony Glass Railing** | 67.81d | 2027-08-24 | 2027-10-31 |  | start no earlier than 2027-08-24 | 134230 |
| 3595 | 37100.37300.37600.38200.39200.40600.46600.472100 | 1st Floor | 1.94d | 2027-08-24 | 2027-08-26 | 3663 |  | 134240 |
| 3596 | 37100.37300.37600.38200.39200.40600.46600.472200 | 2nd Floor | 1.94d | 2027-08-26 | 2027-08-28 | 3595 |  | 134250 |
| 3597 | 37100.37300.37600.38200.39200.40600.46600.472300 | 3rd Floor | 1.94d | 2027-08-28 | 2027-08-30 | 3596 |  | 134260 |
| 3598 | 37100.37300.37600.38200.39200.40600.46600.472400 | 4th Floor | 1.94d | 2027-08-30 | 2027-09-01 | 3597 |  | 134270 |
| 3599 | 37100.37300.37600.38200.39200.40600.46600.472500 | 5th Floor | 1.94d | 2027-09-01 | 2027-09-03 | 3598 |  | 134280 |
| 3600 | 37100.37300.37600.38200.39200.40600.46600.472600 | 6th Floor | 1.94d | 2027-09-03 | 2027-09-05 | 3599 |  | 134290 |
| 3601 | 37100.37300.37600.38200.39200.40600.46600.472700 | 7th Floor | 1.94d | 2027-09-05 | 2027-09-07 | 3600 |  | 134300 |
| 3602 | 37100.37300.37600.38200.39200.40600.46600.472800 | 8th Floor | 1.94d | 2027-09-07 | 2027-09-09 | 3601 |  | 134310 |
| 3603 | 37100.37300.37600.38200.39200.40600.46600.472900 | 9th Floor | 1.94d | 2027-09-09 | 2027-09-11 | 3602 |  | 134320 |
| 3604 | 37100.37300.37600.38200.39200.40600.46600.473000 | 10th Floor | 1.94d | 2027-09-11 | 2027-09-13 | 3603 |  | 134330 |
| 3605 | 37100.37300.37600.38200.39200.40600.46600.473100 | 11th Floor | 1.94d | 2027-09-13 | 2027-09-15 | 3604 |  | 134340 |
| 3606 | 37100.37300.37600.38200.39200.40600.46600.473200 | 12th Floor | 1.94d | 2027-09-15 | 2027-09-16 | 3605 |  | 134350 |
| 3607 | 37100.37300.37600.38200.39200.40600.46600.473300 | 13th Floor | 1.94d | 2027-09-17 | 2027-09-18 | 3606 |  | 134360 |
| 3608 | 37100.37300.37600.38200.39200.40600.46600.473400 | 14th Floor | 1.94d | 2027-09-18 | 2027-09-20 | 3607 |  | 134370 |
| 3609 | 37100.37300.37600.38200.39200.40600.46600.473500 | 15th Floor | 1.94d | 2027-09-20 | 2027-09-22 | 3608 |  | 134380 |
| 3610 | 37100.37300.37600.38200.39200.40600.46600.473600 | 16th Floor | 1.94d | 2027-09-22 | 2027-09-24 | 3609 |  | 134390 |
| 3611 | 37100.37300.37600.38200.39200.40600.46600.473700 | 17th Floor | 1.94d | 2027-09-24 | 2027-09-26 | 3610 |  | 134400 |
| 3612 | 37100.37300.37600.38200.39200.40600.46600.473800 | 18th Floor | 1.94d | 2027-09-26 | 2027-09-28 | 3611 |  | 134410 |
| 3613 | 37100.37300.37600.38200.39200.40600.46600.473900 | 19th Floor | 1.94d | 2027-09-28 | 2027-09-30 | 3612 |  | 134420 |
| 3614 | 37100.37300.37600.38200.39200.40600.46600.474000 | 20th Floor | 1.94d | 2027-09-30 | 2027-10-02 | 3613 |  | 134430 |
| 3615 | 37100.37300.37600.38200.39200.40600.46600.474100 | 21st Floor | 1.94d | 2027-10-02 | 2027-10-04 | 3614 |  | 134440 |
| 3616 | 37100.37300.37600.38200.39200.40600.46600.474200 | 22nd Floor | 1.94d | 2027-10-04 | 2027-10-06 | 3615 |  | 134450 |
| 3617 | 37100.37300.37600.38200.39200.40600.46600.474300 | 23rd Floor | 1.94d | 2027-10-06 | 2027-10-08 | 3616 |  | 134460 |
| 3618 | 37100.37300.37600.38200.39200.40600.46600.474400 | 24th Floor | 1.94d | 2027-10-08 | 2027-10-10 | 3617 |  | 134470 |
| 3619 | 37100.37300.37600.38200.39200.40600.46600.474500 | 25th Floor | 1.94d | 2027-10-10 | 2027-10-12 | 3618 |  | 134480 |
| 3620 | 37100.37300.37600.38200.39200.40600.46600.474600 | 26th Floor | 1.94d | 2027-10-12 | 2027-10-14 | 3619 |  | 134490 |
| 3621 | 37100.37300.37600.38200.39200.40600.46600.474700 | 27th Floor | 1.94d | 2027-10-14 | 2027-10-16 | 3620 |  | 134500 |
| 3622 | 37100.37300.37600.38200.39200.40600.46600.474800 | 28th Floor | 1.94d | 2027-10-16 | 2027-10-17 | 3621 |  | 134510 |
| 3623 | 37100.37300.37600.38200.39200.40600.46600.474900 | 29th Floor | 1.94d | 2027-10-18 | 2027-10-19 | 3622 |  | 134520 |
| 3624 | 37100.37300.37600.38200.39200.40600.46600.475000 | 30th Floor | 1.94d | 2027-10-19 | 2027-10-21 | 3623 |  | 134530 |
| 3625 | 37100.37300.37600.38200.39200.40600.46600.475100 | 31st Floor | 1.94d | 2027-10-21 | 2027-10-23 | 3624 |  | 134540 |
| 3626 | 37100.37300.37600.38200.39200.40600.46600.475200 | 32nd Floor | 1.94d | 2027-10-23 | 2027-10-25 | 3625 |  | 134550 |
| 3627 | 37100.37300.37600.38200.39200.40600.46600.475300 | 33rd Floor | 1.94d | 2027-10-25 | 2027-10-27 | 3626 |  | 134560 |
| 3628 | 37100.37300.37600.38200.39200.40600.46600.475400 | 34th Floor | 1.94d | 2027-10-27 | 2027-10-29 | 3627 |  | 134570 |
| 3629 | 37100.37300.37600.38200.39200.40600.46600.475500 | 35th Floor | 1.94d | 2027-10-29 | 2027-10-31 | 3628 |  | 134580 |

| ID | WBS | Task | Duration | Start | Finish | Predecessors | Constraint | Unique_Task_ID |
| --- | --- | --- | --- | --- | --- | --- | --- | --- |
| 3630 | 37100.37300.37600.38200.95500 | **MEP work** | 956.75d | 2026-04-12 | 2029-01-08 |  | start no earlier than 2026-04-12 | 7569123 |
| 3631 | 37100.37300.37600.38200.95500.98000 | **Electrical work** | 233.25d | 2027-01-13 | 2027-09-03 |  | start no earlier than 2027-01-13 | 7569193 |
| 3632 | 37100.37300.37600.38200.95500.98000.323500 | Cable Tray | 89.94d | 2027-01-13 | 2027-04-12 | 2978 |  | 7574403 |
| 3633 | 37100.37300.37600.38200.95500.98000.323600 | Cable, main & sub main | 79.94d | 2027-02-22 | 2027-05-12 | 3632SS+40d |  | 7574413 |
| 3634 | 37100.37300.37600.38200.95500.98000.323700 | LT panel & DB | 119.94d | 2027-04-12 | 2027-08-10 | 3632 |  | 7574423 |
| 3635 | 37100.37300.37600.38200.95500.98000.323800 | Rising main | 89.94d | 2027-06-05 | 2027-09-03 | 3632FS+53.38d |  | 7574433 |
| 3636 | 37100.37300.37600.38200.95500.98000.323900 | EARTHING Works | 59.94d | 2027-04-26 | 2027-06-25 | 3632FS+13.38d |  | 7574443 |
| 3637 | 37100.37300.37600.38200.95500.98000.324000 | Advance lightening protection | 59.94d | 2027-02-22 | 2027-04-23 | 3581 |  | 7574453 |
| 3638 | 37100.37300.37600.38200.95500.98000.324100 | Inverter | 34.94d | 2027-06-25 | 2027-07-30 | 3636 |  | 7574463 |
| 3639 | 37100.37300.37600.38200.95500.98000.324200 | Energy meter | 59.94d | 2027-05-12 | 2027-07-11 | 3633 |  | 7574473 |
| 3640 | 37100.37300.37600.38200.95500.98000.324300 | Exhast fan | 59.94d | 2027-04-29 | 2027-06-28 | 3573FF+4.5d |  | 7574483 |
| 3641 | 37100.37300.37600.38200.95500.98000.324400 | FTTH | 59.94d | 2027-06-16 | 2027-08-15 | 3636FS-9d |  | 7574493 |
| 3642 | 37100.37300.37600.38200.95500.98000.324500 | Security System - FA & PA | 54.94d | 2027-06-21 | 2027-08-15 | 3641FF |  | 7574503 |
| 3643 | 37100.37300.37600.38200.95500.98000.324600 | Solar water heater | 59.94d | 2027-02-22 | 2027-04-23 | 3581 |  | 7574513 |
| 3644 | 37100.37300.37600.38200.95500.129400 | **Plumbing wrok** | 415.69d | 2027-01-13 | 2028-03-04 |  | start no earlier than 2027-01-13 | 7569433 |
| 3645 | 37100.37300.37600.38200.95500.129400.324700 | Terrace looping | 44.94d | 2027-01-13 | 2027-02-27 | 3580 |  | 7574523 |
| 3646 | 37100.37300.37600.38200.95500.129400.324800 | Shaft Plumbing | 119.94d | 2027-02-27 | 2027-06-27 | 3645 |  | 7574533 |
| 3647 | 37100.37300.37600.38200.95500.129400.324900 | CP sanitary fixture supply | 74.94d | 2027-06-26 | 2027-09-09 | 3568, 3571FS+53.38d |  | 7574543 |
| 3648 | 37100.37300.37600.38200.95500.129400.325000 | Cold & flushing water supply | 89.94d | 2027-04-19 | 2027-07-18 | 3584SS+380d |  | 7574553 |
| 3649 | 37100.37300.37600.38200.95500.129400.325100 | Misc work | 29.94d | 2028-02-03 | 2028-03-04 | 3648FS+200d |  | 7574563 |
| 3650 | 37100.37300.37600.38200.95500.170500 | **Fire fighting work** | 439.88d | 2026-04-12 | 2027-08-10 |  | start no earlier than 2026-04-12 | 7569553 |
| 3651 | 37100.37300.37600.38200.95500.170500.325200 | Fire hydrant work | 89.94d | 2026-04-12 | 2026-07-11 | 3584SS+53.38d |  | 7574573 |
| 3652 | 37100.37300.37600.38200.95500.170500.325300 | Sprinkler & piping work | 89.94d | 2027-05-12 | 2027-08-10 | 3651FS+260d |  | 7574583 |
| 3653 | 37100.37300.37600.38200.95500.170500.325400 | Shaft Downtake works | 89.94d | 2027-01-13 | 2027-04-13 | 3580 |  | 7574593 |
| 3654 | 37100.37300.37600.38200.95500.170500.325500 | Connection to pump room | 29.94d | 2027-04-13 | 2027-05-13 | 3653 |  | 7574603 |

| ID | WBS | Task | Duration | Start | Finish | Predecessors | Complete | Constraint | Unique_Task_ID |
| --- | --- | --- | --- | --- | --- | --- | --- | --- | --- |
| 3655 | 37100.37300.37600.38200.95500.187500 | **Lift work** | 304.88d | 2027-01-13 | 2027-11-13 |  |  | start no earlier than 2027-01-13 | 7571223 |
| 3656 | 37100.37300.37600.38200.95500.187500.325600 | Lift Shaft Handover | 39.94d | 2027-01-13 | 2027-02-21 | 2978 |  |  | 7574613 |
| 3657 | 37100.37300.37600.38200.95500.187500.325700 | Lift installation work | 180d | 2027-02-21 | 2027-08-20 | 3656 |  |  | 7574623 |
| 3658 | 37100.37300.37600.38200.95500.187500.325800 | Lift testing and commissioning | 84.94d | 2027-08-20 | 2027-11-13 | 3657 |  |  | 7574633 |
| 3659 | 37100.37300.37600.38200.95500.194600 | **AC work** | 240d | 2028-05-13 | 2029-01-08 |  |  | start no earlier than 2028-05-13 | 7571333 |
| 3660 | 37100.37300.37600.38200.95500.194600.325900 | Split AC | 240d | 2028-05-13 | 2029-01-08 | 3676FS-26.75d |  |  | 7574643 |
| 3661 | 37100.37300.37600.38200.131400 | **Tower Completion** | 253.88d | 2027-02-25 | 2027-11-06 |  |  | start no earlier than 2027-02-25 | 7569473 |
| 3662 | 37100.37300.37600.38200.131400.265300 | SURFACE PREPARATION | 79.94d | 2027-02-25 | 2027-05-16 | 3016FS+1.88d |  |  | 7571763 |
| 3663 | 37100.37300.37600.38200.131400.265400 | External Painting | 99.94d | 2027-05-16 | 2027-08-24 | 3662 |  |  | 7571773 |
| 3664 | 37100.37300.37600.38200.131400.265500 | Final coat of painting | 74d | 2027-08-24 | 2027-11-06 | 3663 |  |  | 7571783 |
| 3665 | 37100.37300.37600.38200.131400.265600 | Misc. work | 59.94d | 2027-08-24 | 2027-10-23 | 3663 |  |  | 7571793 |
| 3666 | 37100.37300.37600.38200.193000 | **Entrance lobby** | 60d | 2027-08-26 | 2027-10-25 |  |  | start no earlier than 2027-08-26 | 7571353 |
| 3667 | 37100.37300.37600.38200.193000.265700 | Entrance lobby | 60d | 2027-08-26 | 2027-10-25 | 3665SS+2d |  |  | 7571803 |
| 3668 | 37100.37300.37600.38200.107100 | **Post OC activities** | 250.88d | 2028-03-16 | 2028-11-22 |  |  | start no earlier than 2028-03-16 | 7569323 |
| 3669 | 37100.37300.37600.38200.107100.265800 | Wardrobe installation | 179.94d | 2028-05-13 | 2028-11-09 | 3676FS-26.75d |  |  | 7571813 |
| 3670 | 37100.37300.37600.38200.107100.265900 | CP & SANITARYWARE | 119.94d | 2028-05-13 | 2028-09-10 | 3676FS-26.75d |  |  | 7571823 |
| 3671 | 37100.37300.37600.38200.107100.266000 | Wooden Flooring | 179.94d | 2028-05-13 | 2028-11-09 | 3676FS-26.75d |  |  | 7571833 |
| 3672 | 37100.37300.37600.38200.107100.266100 | Electrical Fixtures And Fittings | 119.94d | 2028-03-16 | 2028-07-14 | 3576 |  |  | 7571843 |
| 3673 | 37100.37300.37600.38200.107100.266200 | Modular Kitchen | 179.94d | 2028-05-13 | 2028-11-09 | 3669SS |  |  | 7571853 |
| 3674 | 37100.37300.37600.38200.107100.266300 | External Elevation Façade | 180d | 2028-05-26 | 2028-11-22 | 3676FS-13.38d |  |  | 7571863 |
| 3675 | 37100.37300.37600.38200.255500 | OC Application/Readiness | 0d | 2028-04-15 | 2028-04-15 | 2978, 3585FS+7.12d, 3647, 3593, 3578, 3588, 3629, 3634, 3635, 3637, 3638, 3639, 3640, 3642, 3643, 3646, 3649, 3652, 3654, 3658, 3664, 3665, 3667 |  |  | 7571433 |
| 3676 | 37100.37300.37600.38200.255600 | OC Receipt | 0.94d | 2028-06-08 | 2028-06-09 | 3675FS+53.38d |  |  | 7571443 |
| 3677 | 37100.37300.37600.38200.255700 | Offer To Possession | 29.94d | 2028-11-22 | 2028-12-22 | 3669, 3670, 3671, 3672, 3673, 3674 |  |  | 7571453 |
| 3678 | 37100.37300.37600.38300 | **Tower 1** | 1908.44d | 2023-09-30 | 2029-05-11 |  | 7% | start no earlier than 2023-09-30 | 122910 |
| 3679 | 37100.37300.37600.38300.98400 | **Substructure** | 833.69d | 2023-09-30 | 2026-04-18 |  | 63% | start no earlier than 2023-09-30 | 123350 |
| 3680 | 37100.37300.37600.38300.98400.108400 | **Soil Bed Preparation** | 783.88d | 2023-09-30 | 2026-02-27 |  | 77% | start no earlier than 2023-09-30 | 123370 |
| 3681 | 37100.37300.37600.38300.98400.108400.233200 | Test Piling | 74.94d | 2023-09-30 | 2024-01-27 |  | 100% | start no earlier than 2023-09-30 | 124030 |
| 3682 | 37100.37300.37600.38300.98400.108400.233100 | Excavation | 29.94d | 2024-01-10 | 2024-02-08 | 7SS+36.74d | 100% | start no earlier than 2024-01-10 | 124040 |
| 3683 | 37100.37300.37600.38300.98400.108400.233000 | Main Piling Work | 182.56d | 2024-04-12 | 2024-10-11 | 7FS+227.55d | 100% | start no earlier than 2024-04-12 | 124050 |
| 3684 | 37100.37300.37600.38300.98400.108400.326000 | Anti-termite | 4.94d | 2025-11-30 | 2025-12-04 | 3683FF-92.8d |  |  | 124060 |
| 3685 | 37100.37300.37600.38300.98400.108400.232900 | PCC | 9.81d | 2024-10-18 | 2024-10-27 | 3682FS+55.05d, 3684SS+12.95d | 100% | start no earlier than 2024-10-18 | 124070 |
| 3686 | 37100.37300.37600.38300.98400.108400.1343000 | Backfilling | 20.06d | 2025-11-30 | 2025-12-29 |  |  | start no earlier than 2025-11-30 | 124071 |
| 3687 | 37100.37300.37600.38300.98400.108400.326100 | Backfilling | 59.94d | 2025-12-29 | 2026-02-27 | 3700, 3686 |  |  | 124080 |

| ID | WBS | Task | Duration | Start | Finish | Predecessors | Complete | Constraint | Unique_Task_ID |
| --- | --- | --- | --- | --- | --- | --- | --- | --- | --- |
| 3688 | 37100.37300.37600.38300.98400.103500 | **RCC Structure** | 118.5d | 2024-12-05 | 2025-03-29 |  | 100% | start no earlier than 2024-12-05 | 123360 |
| 3689 | 37100.37300.37600.38300.98400.103500.170400 | **Raft Foundation** | 30.5d | 2024-12-05 | 2024-12-31 |  | 100% | start no earlier than 2024-12-05 | 123840 |
| 3690 | 37100.37300.37600.38300.98400.103500.170400.222700 | Reinforcement | 30d | 2024-12-05 | 2024-12-31 | 3685FS-29.5d | 100% | start no earlier than 2024-12-05 | 124750 |
| 3691 | 37100.37300.37600.38300.98400.103500.170400.222800 | Formwork | 11d | 2024-12-17 | 2024-12-29 | 3690FF+5d | 100% | start no earlier than 2024-12-17 | 124760 |
| 3692 | 37100.37300.37600.38300.98400.103500.170400.222900 | Concreting | 4d | 2024-12-28 | 2024-12-31 | 3691FF-2d | 100% | start no earlier than 2024-12-28 | 124770 |
| 3693 | 37100.37300.37600.38300.98400.103500.170300 | **Basement 1 Slab** | 32d | 2025-01-01 | 2025-02-01 |  | 100% | start no earlier than 2025-01-01 | 123830 |
| 3694 | 37100.37300.37600.38300.98400.103500.170300.223000 | Reinforcement | 23d | 2025-01-01 | 2025-02-01 | 3692FS+1d | 100% | start no earlier than 2025-01-01 | 124780 |
| 3695 | 37100.37300.37600.38300.98400.103500.170300.223100 | Formwork | 23d | 2025-01-03 | 2025-02-01 | 3694FF | 100% | start no earlier than 2025-01-03 | 124790 |
| 3696 | 37100.37300.37600.38300.98400.103500.170300.223200 | Concreting | 1.25d | 2025-01-25 | 2025-02-01 | 3695FF-0.75d | 100% | start no earlier than 2025-01-25 | 124800 |
| 3697 | 37100.37300.37600.38300.98400.103500.170200 | **Basement 2 Slab/GF** | 26d | 2025-01-26 | 2025-02-20 |  | 100% | start no earlier than 2025-01-26 | 123820 |
| 3698 | 37100.37300.37600.38300.98400.103500.170200.223300 | Reinforcement | 22d | 2025-01-26 | 2025-02-16 | 3696FS-6.25d | 100% | start no earlier than 2025-01-26 | 124810 |
| 3699 | 37100.37300.37600.38300.98400.103500.170200.223400 | Formwork | 22d | 2025-01-29 | 2025-02-19 | 3698FF+3d | 100% | start no earlier than 2025-01-29 | 124820 |
| 3700 | 37100.37300.37600.38300.98400.103500.170200.223500 | Concreting | 2d | 2025-02-19 | 2025-02-20 | 3699FS-1d | 100% | start no earlier than 2025-02-19 | 124830 |
| 3701 | 37100.37300.37600.38300.98400.103500.170100 | **Podium /Ground Floor Slab** | 38d | 2025-02-20 | 2025-03-29 |  | 100% | start no earlier than 2025-02-20 | 123810 |
| 3702 | 37100.37300.37600.38300.98400.103500.170100.223600 | Reinforcement | 20d | 2025-02-20 | 2025-03-27 | 3700 | 100% | start no earlier than 2025-02-20 | 124840 |
| 3703 | 37100.37300.37600.38300.98400.103500.170100.223700 | Formwork | 18d | 2025-02-26 | 2025-03-28 | 3702FF+0.75d | 100% | start no earlier than 2025-02-26 | 124850 |
| 3704 | 37100.37300.37600.38300.98400.103500.170100.223800 | Concreting | 2d | 2025-03-28 | 2025-03-29 | 3703 | 100% | start no earlier than 2025-03-28 | 124860 |
| 3705 | 37100.37300.37600.38300.98400.170000 | **Substructure Finishing** | 129.81d | 2025-11-30 | 2026-04-18 |  |  | start no earlier than 2025-11-30 | 123410 |
| 3706 | 37100.37300.37600.38300.98400.170000.326200 | Masonary work | 44.94d | 2025-11-30 | 2026-01-23 | 3704FS+26.75d |  |  | 124090 |
| 3707 | 37100.37300.37600.38300.98400.170000.326300 | Plaster | 39.94d | 2026-01-23 | 2026-03-04 | 3706 |  |  | 124100 |
| 3708 | 37100.37300.37600.38300.98400.170000.326400 | Structural steel | 59.94d | 2025-11-30 | 2026-02-07 | 3704FS+53.38d |  |  | 124110 |
| 3709 | 37100.37300.37600.38300.98400.170000.326500 | White Wash | 44.94d | 2026-03-04 | 2026-04-18 | 3707 |  |  | 124120 |
| 3710 | 37100.37300.37600.38300.39300 | **Superstructure** | 1260.06d | 2025-03-31 | 2028-11-16 |  | 4% | start no earlier than 2025-03-31 | 122920 |
| 3711 | 37100.37300.37600.38300.39300.43700 | **RCC structure** | 582.12d | 2025-03-31 | 2027-01-08 |  | 35% | start no earlier than 2025-03-31 | 122950 |
| 3712 | 37100.37300.37600.38300.39300.43700.130600 | **1st floor slab** | 55d | 2025-03-31 | 2025-05-24 |  | 100% | start no earlier than 2025-03-31 | 123430 |
| 3713 | 37100.37300.37600.38300.39300.43700.130600.223900 | Reinforcement | 20d | 2025-03-31 | 2025-05-04 | 3704FS+1d | 100% | start no earlier than 2025-03-31 | 124870 |
| 3714 | 37100.37300.37600.38300.39300.43700.130600.224000 | Wall conduiting | 4d | 2025-04-01 | 2025-05-01 | 3713SS+2.75d | 100% | start no earlier than 2025-04-01 | 124880 |
| 3715 | 37100.37300.37600.38300.39300.43700.130600.224100 | Formwork | 21d | 2025-04-14 | 2025-05-21 | 3713SS+3d | 100% | start no earlier than 2025-04-14 | 124890 |
| 3716 | 37100.37300.37600.38300.39300.43700.130600.224200 | Concreting | 8d | 2025-05-09 | 2025-05-24 | 3715FS-13d | 100% | start no earlier than 2025-05-09 | 124900 |

| ID | WBS | Task | Duration | Start | Finish | Predecessors | Complete | Constraint | Unique_Task_ID |
| --- | --- | --- | --- | --- | --- | --- | --- | --- | --- |
| 3717 | 37100.37300.37600.38300.39300.43700.130700 | **2nd floor slab** | 64d | 2025-05-11 | 2025-07-13 |  | 100% | start no earlier than 2025-05-11 | 123440 |
| 3718 | 37100.37300.37600.38300.39300.43700.130700.224300 | Reinforcement | 30d | 2025-05-11 | 2025-06-30 | 3716FS-16d | 100% | start no earlier than 2025-05-11 | 124910 |
| 3719 | 37100.37300.37600.38300.39300.43700.130700.224400 | Wall conduiting | 15d | 2025-05-13 | 2025-06-23 | 3714, 3718SS+2.75d | 100% | start no earlier than 2025-05-13 | 124920 |
| 3720 | 37100.37300.37600.38300.39300.43700.130700.224500 | Formwork | 19d | 2025-05-14 | 2025-07-02 | 3718SS+3d | 100% | start no earlier than 2025-05-14 | 124930 |
| 3721 | 37100.37300.37600.38300.39300.43700.130700.224600 | Concreting | 11d | 2025-07-03 | 2025-07-13 | 3720 | 100% | start no earlier than 2025-07-03 | 124940 |
| 3722 | 37100.37300.37600.38300.39300.43700.130900 | **3rd floor slab** | 21d | 2025-07-14 | 2025-08-03 |  | 100% | start no earlier than 2025-07-14 | 123450 |
| 3723 | 37100.37300.37600.38300.39300.43700.130900.224700 | Reinforcement | 12d | 2025-07-14 | 2025-07-30 | 3721 | 100% | start no earlier than 2025-07-14 | 124950 |
| 3724 | 37100.37300.37600.38300.39300.43700.130900.224800 | Wall conduiting | 10d | 2025-07-16 | 2025-07-29 | 3719, 3723SS+1.75d | 100% | start no earlier than 2025-07-16 | 124960 |
| 3725 | 37100.37300.37600.38300.39300.43700.130900.224900 | Formwork | 11d | 2025-07-15 | 2025-07-30 | 3723SS+3d | 100% | start no earlier than 2025-07-15 | 124970 |
| 3726 | 37100.37300.37600.38300.39300.43700.130900.225000 | Concreting | 5d | 2025-07-27 | 2025-08-03 | 3725FS-3d | 100% | start no earlier than 2025-07-27 | 124980 |
| 3727 | 37100.37300.37600.38300.39300.43700.128100 | **4th floor slab** | 18d | 2025-08-04 | 2025-08-21 |  | 100% | start no earlier than 2025-08-04 | 123460 |
| 3728 | 37100.37300.37600.38300.39300.43700.128100.225100 | Reinforcement | 6d | 2025-08-04 | 2025-08-18 | 3726FS+1d | 100% | start no earlier than 2025-08-04 | 124990 |
| 3729 | 37100.37300.37600.38300.39300.43700.128100.225200 | Wall conduiting | 3d | 2025-08-11 | 2025-08-18 | 3724, 3728SS+1d | 100% | start no earlier than 2025-08-11 | 125000 |
| 3730 | 37100.37300.37600.38300.39300.43700.128100.225300 | Formwork | 7d | 2025-08-11 | 2025-08-18 | 3728SS+1d | 100% | start no earlier than 2025-08-11 | 125010 |
| 3731 | 37100.37300.37600.38300.39300.43700.128100.225400 | Concreting | 6d | 2025-08-13 | 2025-08-21 | 3730FS-6d | 100% | start no earlier than 2025-08-13 | 125020 |
| 3732 | 37100.37300.37600.38300.39300.43700.128000 | **5th floor slab** | 12d | 2025-08-21 | 2025-09-01 |  | 100% | start no earlier than 2025-08-21 | 123470 |
| 3733 | 37100.37300.37600.38300.39300.43700.128000.225500 | Reinforcement | 8d | 2025-08-21 | 2025-08-30 | 3731FS+1d | 100% | start no earlier than 2025-08-21 | 125030 |
| 3734 | 37100.37300.37600.38300.39300.43700.128000.225600 | Wall conduiting | 3d | 2025-08-21 | 2025-08-30 | 3729, 3733SS+1d | 100% | start no earlier than 2025-08-21 | 125040 |
| 3735 | 37100.37300.37600.38300.39300.43700.128000.225700 | Formwork | 7d | 2025-08-21 | 2025-08-30 | 3733SS+1d | 100% | start no earlier than 2025-08-21 | 125050 |
| 3736 | 37100.37300.37600.38300.39300.43700.128000.225800 | Concreting | 2d | 2025-08-31 | 2025-09-01 | 3735 | 100% | start no earlier than 2025-08-31 | 125060 |
| 3737 | 37100.37300.37600.38300.39300.43700.127900 | **6th floor slab** | 17d | 2025-08-30 | 2025-09-15 |  | 100% | start no earlier than 2025-08-30 | 123480 |
| 3738 | 37100.37300.37600.38300.39300.43700.127900.225900 | Reinforcement | 8d | 2025-08-30 | 2025-09-14 | 3736FS+1d | 100% | start no earlier than 2025-08-30 | 125070 |
| 3739 | 37100.37300.37600.38300.39300.43700.127900.226000 | Wall conduiting | 3d | 2025-08-30 | 2025-09-14 | 3734, 3738SS+1d | 100% | start no earlier than 2025-08-30 | 125080 |
| 3740 | 37100.37300.37600.38300.39300.43700.127900.226100 | Formwork | 7d | 2025-08-30 | 2025-09-14 | 3738SS+1d | 100% | start no earlier than 2025-08-30 | 125090 |
| 3741 | 37100.37300.37600.38300.39300.43700.127900.226200 | Concreting | 5d | 2025-09-11 | 2025-09-15 | 3740 | 100% | start no earlier than 2025-09-11 | 125100 |

| ID | WBS | Task | Duration | Start | Finish | Predecessors | Complete | Constraint | Unique_Task_ID |
| --- | --- | --- | --- | --- | --- | --- | --- | --- | --- |
| 3742 | 37100.37300.37600.38300.39300.43700.127800 | **7th floor slab** | 17d | 2025-09-12 | 2025-09-28 |  | 100% | start no earlier than 2025-09-12 | 123490 |
| 3743 | 37100.37300.37600.38300.39300.43700.127800.226300 | Reinforcement | 8d | 2025-09-12 | 2025-09-22 | 3741FS+1d | 100% | start no earlier than 2025-09-12 | 125110 |
| 3744 | 37100.37300.37600.38300.39300.43700.127800.226400 | Wall conduiting | 3d | 2025-09-12 | 2025-09-22 | 3739, 3743SS+1d | 100% | start no earlier than 2025-09-12 | 125120 |
| 3745 | 37100.37300.37600.38300.39300.43700.127800.226500 | Formwork | 7d | 2025-09-12 | 2025-09-22 | 3743SS+1d | 100% | start no earlier than 2025-09-12 | 125130 |
| 3746 | 37100.37300.37600.38300.39300.43700.127800.226600 | Concreting | 8d | 2025-09-16 | 2025-09-28 | 3745 | 100% | start no earlier than 2025-09-16 | 125140 |
| 3747 | 37100.37300.37600.38300.39300.43700.127700 | **8th floor slab** | 18d | 2025-09-26 | 2025-10-13 |  | 100% | start no earlier than 2025-09-26 | 123500 |
| 3748 | 37100.37300.37600.38300.39300.43700.127700.226800 | Reinforcement | 10d | 2025-09-26 | 2025-10-12 | 3746FS+1d | 100% | start no earlier than 2025-09-26 | 125150 |
| 3749 | 37100.37300.37600.38300.39300.43700.127700.226900 | Wall conduiting | 8d | 2025-09-26 | 2025-10-12 | 3744, 3748SS+1d | 100% | start no earlier than 2025-09-26 | 125160 |
| 3750 | 37100.37300.37600.38300.39300.43700.127700.227000 | Formwork | 10d | 2025-09-26 | 2025-10-12 | 3748SS+1d | 100% | start no earlier than 2025-09-26 | 125170 |
| 3751 | 37100.37300.37600.38300.39300.43700.127700.227100 | Concreting | 3d | 2025-10-10 | 2025-10-13 | 3750 | 100% | start no earlier than 2025-10-10 | 125180 |
| 3752 | 37100.37300.37600.38300.39300.43700.127600 | **9th floor slab** | 17d | 2025-10-14 | 2025-10-30 |  | 100% | start no earlier than 2025-10-14 | 123510 |
| 3753 | 37100.37300.37600.38300.39300.43700.127600.227200 | Reinforcement | 13d | 2025-10-14 | 2025-10-29 | 3751FS-1d | 100% | start no earlier than 2025-10-14 | 125190 |
| 3754 | 37100.37300.37600.38300.39300.43700.127600.227400 | Wall conduiting | 10d | 2025-10-19 | 2025-10-29 | 3749, 3753SS+1d | 100% | start no earlier than 2025-10-19 | 125200 |
| 3755 | 37100.37300.37600.38300.39300.43700.127600.227500 | Formwork | 7d | 2025-10-20 | 2025-10-30 | 3753SS+1d | 100% | start no earlier than 2025-10-20 | 125210 |
| 3756 | 37100.37300.37600.38300.39300.43700.127600.227600 | Concreting | 5d | 2025-10-25 | 2025-10-30 | 3755 | 100% | start no earlier than 2025-10-25 | 125220 |
| 3757 | 37100.37300.37600.38300.39300.43700.127500 | **10th floor slab** | 18d | 2025-10-27 | 2025-11-26 |  | 100% | start no earlier than 2025-10-27 | 123520 |
| 3758 | 37100.37300.37600.38300.39300.43700.127500.227700 | Reinforcement | 8d | 2025-10-27 | 2025-11-26 | 3756FS+1d | 100% | start no earlier than 2025-10-27 | 125230 |
| 3759 | 37100.37300.37600.38300.39300.43700.127500.227900 | Wall conduiting | 3d | 2025-10-27 | 2025-11-26 | 3754, 3758SS+1d | 100% | start no earlier than 2025-10-27 | 125240 |
| 3760 | 37100.37300.37600.38300.39300.43700.127500.228200 | Formwork | 7d | 2025-10-27 | 2025-11-26 | 3758SS+1d | 100% | start no earlier than 2025-10-27 | 125250 |
| 3761 | 37100.37300.37600.38300.39300.43700.127500.228600 | Concreting | 1d | 2025-11-10 | 2025-11-26 | 3760 | 100% | start no earlier than 2025-11-10 | 125260 |
| 3762 | 37100.37300.37600.38300.39300.43700.169900 | **11th floor slab** | 8.12d | 2025-11-26 | 2025-12-03 |  | 47% | start no earlier than 2025-11-26 | 123530 |
| 3763 | 37100.37300.37600.38300.39300.43700.169900.228700 | Reinforcement | 8d | 2025-11-26 | 2025-12-03 | 3761FS-1d | 50% | start no earlier than 2025-11-26 | 125270 |
| 3764 | 37100.37300.37600.38300.39300.43700.169900.228900 | Wall conduiting | 3d | 2025-11-26 | 2025-12-01 | 3759, 3763SS+1d | 33% | start no earlier than 2025-11-26 | 125280 |
| 3765 | 37100.37300.37600.38300.39300.43700.169900.229000 | Formwork | 7d | 2025-11-26 | 2025-12-02 | 3763SS+1d | 57% | start no earlier than 2025-11-26 | 125290 |
| 3766 | 37100.37300.37600.38300.39300.43700.169900.475600 | Concreting | 1d | 2025-12-02 | 2025-12-03 | 3765 |  |  | 125300 |

| ID | WBS | Task | Duration | Start | Finish | Predecessors | Constraint | Unique_Task_ID |
| --- | --- | --- | --- | --- | --- | --- | --- | --- |
| 3767 | 37100.37300.37600.38300.39300.43700.169800 | **12th floor slab** | 9d | 2025-12-18 | 2025-12-27 |  | start no earlier than 2025-12-18 | 123540 |
| 3768 | 37100.37300.37600.38300.39300.43700.169800.475700 | Reinforcement | 8d | 2025-12-18 | 2025-12-26 | 3766FS-1d |  | 125310 |
| 3769 | 37100.37300.37600.38300.39300.43700.169800.475800 | Wall conduiting | 3d | 2025-12-19 | 2025-12-22 | 3764, 3768SS+1d |  | 125320 |
| 3770 | 37100.37300.37600.38300.39300.43700.169800.475900 | Formwork | 7d | 2025-12-19 | 2025-12-26 | 3768SS+1d |  | 125330 |
| 3771 | 37100.37300.37600.38300.39300.43700.169800.476000 | Concreting | 1d | 2025-12-26 | 2025-12-27 | 3770 |  | 125340 |
| 3772 | 37100.37300.37600.38300.39300.43700.169700 | **13th floor slab** | 9d | 2025-12-28 | 2026-01-06 |  | start no earlier than 2025-12-28 | 123550 |
| 3773 | 37100.37300.37600.38300.39300.43700.169700.476100 | Reinforcement | 8d | 2025-12-28 | 2026-01-05 | 3771FS+1d |  | 125350 |
| 3774 | 37100.37300.37600.38300.39300.43700.169700.476200 | Wall conduiting | 3d | 2025-12-29 | 2026-01-01 | 3769, 3773SS+1d |  | 125360 |
| 3775 | 37100.37300.37600.38300.39300.43700.169700.476300 | Formwork | 7d | 2025-12-29 | 2026-01-05 | 3773SS+1d |  | 125370 |
| 3776 | 37100.37300.37600.38300.39300.43700.169700.476400 | Concreting | 1d | 2026-01-05 | 2026-01-06 | 3775 |  | 125380 |
| 3777 | 37100.37300.37600.38300.39300.43700.169600 | **14th floor slab** | 9d | 2026-01-05 | 2026-01-14 |  | start no earlier than 2026-01-05 | 123560 |
| 3778 | 37100.37300.37600.38300.39300.43700.169600.476500 | Reinforcement | 8d | 2026-01-05 | 2026-01-13 | 3776FS-1d |  | 125390 |
| 3779 | 37100.37300.37600.38300.39300.43700.169600.476600 | Wall conduiting | 3d | 2026-01-06 | 2026-01-09 | 3774, 3778SS+1d |  | 125400 |
| 3780 | 37100.37300.37600.38300.39300.43700.169600.476700 | Formwork | 7d | 2026-01-06 | 2026-01-13 | 3778SS+1d |  | 125410 |
| 3781 | 37100.37300.37600.38300.39300.43700.169600.476800 | Concreting | 1d | 2026-01-13 | 2026-01-14 | 3780 |  | 125420 |
| 3782 | 37100.37300.37600.38300.39300.43700.169500 | **15th floor slab** | 9d | 2026-01-15 | 2026-01-24 |  | start no earlier than 2026-01-15 | 123570 |
| 3783 | 37100.37300.37600.38300.39300.43700.169500.476900 | Reinforcement | 8d | 2026-01-15 | 2026-01-23 | 3781FS+1d |  | 125430 |
| 3784 | 37100.37300.37600.38300.39300.43700.169500.477000 | Wall conduiting | 3d | 2026-01-16 | 2026-01-19 | 3779, 3783SS+1d |  | 125440 |
| 3785 | 37100.37300.37600.38300.39300.43700.169500.477100 | Formwork | 7d | 2026-01-16 | 2026-01-23 | 3783SS+1d |  | 125450 |
| 3786 | 37100.37300.37600.38300.39300.43700.169500.477200 | Concreting | 1d | 2026-01-23 | 2026-01-24 | 3785 |  | 125460 |
| 3787 | 37100.37300.37600.38300.39300.43700.169300 | **16th floor slab** | 12d | 2026-01-21 | 2026-02-02 |  | start no earlier than 2026-01-21 | 123580 |
| 3788 | 37100.37300.37600.38300.39300.43700.169300.477300 | Reinforcement | 10d | 2026-01-21 | 2026-01-31 | 3786FS-3d |  | 125470 |
| 3789 | 37100.37300.37600.38300.39300.43700.169300.477400 | Wall conduiting | 3d | 2026-01-22 | 2026-01-25 | 3784, 3788SS+1d |  | 125480 |
| 3790 | 37100.37300.37600.38300.39300.43700.169300.477500 | Formwork | 10d | 2026-01-22 | 2026-02-01 | 3788SS+1d |  | 125490 |
| 3791 | 37100.37300.37600.38300.39300.43700.169300.477600 | Concreting | 1d | 2026-02-01 | 2026-02-02 | 3790 |  | 125500 |

| ID | WBS | Task | Duration | Start | Finish | Predecessors | Constraint | Unique_Task_ID |
| --- | --- | --- | --- | --- | --- | --- | --- | --- |
| 3792 | 37100.37300.37600.38300.39300.43700.169200 | **17th floor slab** | 9d | 2026-02-01 | 2026-02-10 |  | start no earlier than 2026-02-01 | 123590 |
| 3793 | 37100.37300.37600.38300.39300.43700.169200.477700 | Reinforcement | 7d | 2026-02-01 | 2026-02-08 | 3791FS-1d |  | 125510 |
| 3794 | 37100.37300.37600.38300.39300.43700.169200.477800 | Wall conduiting | 3d | 2026-02-02 | 2026-02-05 | 3789, 3793SS+1d |  | 125520 |
| 3795 | 37100.37300.37600.38300.39300.43700.169200.477900 | Formwork | 7d | 2026-02-02 | 2026-02-09 | 3793SS+1d |  | 125530 |
| 3796 | 37100.37300.37600.38300.39300.43700.169200.478000 | Concreting | 1d | 2026-02-09 | 2026-02-10 | 3795 |  | 125540 |
| 3797 | 37100.37300.37600.38300.39300.43700.169100 | **18th floor slab** | 9d | 2026-02-09 | 2026-02-18 |  | start no earlier than 2026-02-09 | 123600 |
| 3798 | 37100.37300.37600.38300.39300.43700.169100.478100 | Reinforcement | 7d | 2026-02-09 | 2026-02-16 | 3796FS-1d |  | 125550 |
| 3799 | 37100.37300.37600.38300.39300.43700.169100.478200 | Wall conduiting | 3d | 2026-02-10 | 2026-02-13 | 3794, 3798SS+1d |  | 125560 |
| 3800 | 37100.37300.37600.38300.39300.43700.169100.478300 | Formwork | 7d | 2026-02-10 | 2026-02-17 | 3798SS+1d |  | 125570 |
| 3801 | 37100.37300.37600.38300.39300.43700.169100.478400 | Concreting | 1d | 2026-02-17 | 2026-02-18 | 3800 |  | 125580 |
| 3802 | 37100.37300.37600.38300.39300.43700.168900 | **19th floor slab** | 8d | 2026-02-17 | 2026-02-25 |  | start no earlier than 2026-02-17 | 123610 |
| 3803 | 37100.37300.37600.38300.39300.43700.168900.478500 | Reinforcement | 7d | 2026-02-17 | 2026-02-24 | 3801FS-1d |  | 125590 |
| 3804 | 37100.37300.37600.38300.39300.43700.168900.478600 | Wall conduiting | 3d | 2026-02-18 | 2026-02-21 | 3799, 3803SS+1d |  | 125600 |
| 3805 | 37100.37300.37600.38300.39300.43700.168900.478700 | Formwork | 6d | 2026-02-18 | 2026-02-24 | 3803SS+1d |  | 125610 |
| 3806 | 37100.37300.37600.38300.39300.43700.168900.478800 | Concreting | 1d | 2026-02-24 | 2026-02-25 | 3805 |  | 125620 |
| 3807 | 37100.37300.37600.38300.39300.43700.168800 | **20th floor slab** | 8d | 2026-02-25 | 2026-03-05 |  | start no earlier than 2026-02-25 | 123620 |
| 3808 | 37100.37300.37600.38300.39300.43700.168800.478900 | Reinforcement | 7d | 2026-02-25 | 2026-03-04 | 3806 |  | 125630 |
| 3809 | 37100.37300.37600.38300.39300.43700.168800.479000 | Wall conduiting | 3d | 2026-02-26 | 2026-03-01 | 3804, 3808SS+1d |  | 125640 |
| 3810 | 37100.37300.37600.38300.39300.43700.168800.479100 | Formwork | 6d | 2026-02-26 | 2026-03-04 | 3808SS+1d |  | 125650 |
| 3811 | 37100.37300.37600.38300.39300.43700.168800.479200 | Concreting | 1d | 2026-03-04 | 2026-03-05 | 3810 |  | 125660 |
| 3812 | 37100.37300.37600.38300.39300.43700.168700 | **21st floor slab** | 10d | 2026-03-10 | 2026-03-20 |  | start no earlier than 2026-03-10 | 123630 |
| 3813 | 37100.37300.37600.38300.39300.43700.168700.479300 | Reinforcement | 9d | 2026-03-10 | 2026-03-19 | 3811FS+5d |  | 125670 |
| 3814 | 37100.37300.37600.38300.39300.43700.168700.479400 | Wall conduiting | 3d | 2026-03-11 | 2026-03-14 | 3809, 3813SS+1d |  | 125680 |
| 3815 | 37100.37300.37600.38300.39300.43700.168700.479500 | Formwork | 7d | 2026-03-11 | 2026-03-18 | 3813SS+1d |  | 125690 |
| 3816 | 37100.37300.37600.38300.39300.43700.168700.479600 | Concreting | 2d | 2026-03-18 | 2026-03-20 | 3815 |  | 125700 |

| ID | WBS | Task | Duration | Start | Finish | Predecessors | Constraint | Unique_Task_ID |
| --- | --- | --- | --- | --- | --- | --- | --- | --- |
| 3817 | 37100.37300.37600.38300.39300.43700.168500 | **22nd floor slab** | 10d | 2026-03-24 | 2026-04-03 |  | start no earlier than 2026-03-24 | 123640 |
| 3818 | 37100.37300.37600.38300.39300.43700.168500.479700 | Reinforcement | 9d | 2026-03-24 | 2026-04-02 | 3816FS+4d |  | 125710 |
| 3819 | 37100.37300.37600.38300.39300.43700.168500.479800 | Wall conduiting | 3d | 2026-03-25 | 2026-03-28 | 3814, 3818SS+1d |  | 125720 |
| 3820 | 37100.37300.37600.38300.39300.43700.168500.479900 | Formwork | 7d | 2026-03-25 | 2026-04-01 | 3818SS+1d |  | 125730 |
| 3821 | 37100.37300.37600.38300.39300.43700.168500.480000 | Concreting | 2d | 2026-04-01 | 2026-04-03 | 3820 |  | 125740 |
| 3822 | 37100.37300.37600.38300.39300.43700.168400 | **23rd floor slab** | 10d | 2026-04-07 | 2026-04-17 |  | start no earlier than 2026-04-07 | 123650 |
| 3823 | 37100.37300.37600.38300.39300.43700.168400.480100 | Reinforcement | 9d | 2026-04-07 | 2026-04-16 | 3821FS+4d |  | 125750 |
| 3824 | 37100.37300.37600.38300.39300.43700.168400.480200 | Wall conduiting | 3d | 2026-04-08 | 2026-04-11 | 3819, 3823SS+1d |  | 125760 |
| 3825 | 37100.37300.37600.38300.39300.43700.168400.480300 | Formwork | 7d | 2026-04-08 | 2026-04-15 | 3823SS+1d |  | 125770 |
| 3826 | 37100.37300.37600.38300.39300.43700.168400.480400 | Concreting | 2d | 2026-04-15 | 2026-04-17 | 3825 |  | 125780 |
| 3827 | 37100.37300.37600.38300.39300.43700.168300 | **24th floor slab** | 12d | 2026-04-19 | 2026-05-01 |  | start no earlier than 2026-04-19 | 123660 |
| 3828 | 37100.37300.37600.38300.39300.43700.168300.480500 | Reinforcement | 10d | 2026-04-19 | 2026-04-29 | 3826FS+2d |  | 125790 |
| 3829 | 37100.37300.37600.38300.39300.43700.168300.480600 | Wall conduiting | 3d | 2026-04-20 | 2026-04-23 | 3824, 3828SS+1d |  | 125800 |
| 3830 | 37100.37300.37600.38300.39300.43700.168300.480700 | Formwork | 10d | 2026-04-20 | 2026-04-30 | 3828SS+1d |  | 125810 |
| 3831 | 37100.37300.37600.38300.39300.43700.168300.480800 | Concreting | 1d | 2026-04-30 | 2026-05-01 | 3830 |  | 125820 |
| 3832 | 37100.37300.37600.38300.39300.43700.168200 | **25th floor slab** | 12d | 2026-05-02 | 2026-05-14 |  | start no earlier than 2026-05-02 | 123670 |
| 3833 | 37100.37300.37600.38300.39300.43700.168200.480900 | Reinforcement | 10d | 2026-05-02 | 2026-05-12 | 3831FS+1d |  | 125830 |
| 3834 | 37100.37300.37600.38300.39300.43700.168200.481000 | Wall conduiting | 3d | 2026-05-03 | 2026-05-06 | 3829, 3833SS+1d |  | 125840 |
| 3835 | 37100.37300.37600.38300.39300.43700.168200.481100 | Formwork | 10d | 2026-05-03 | 2026-05-13 | 3833SS+1d |  | 125850 |
| 3836 | 37100.37300.37600.38300.39300.43700.168200.481200 | Concreting | 1d | 2026-05-13 | 2026-05-14 | 3835 |  | 125860 |
| 3837 | 37100.37300.37600.38300.39300.43700.168100 | **26th floor slab** | 10d | 2026-05-15 | 2026-05-25 |  | start no earlier than 2026-05-15 | 123680 |
| 3838 | 37100.37300.37600.38300.39300.43700.168100.481300 | Reinforcement | 9d | 2026-05-15 | 2026-05-24 | 3836FS+1d |  | 125870 |
| 3839 | 37100.37300.37600.38300.39300.43700.168100.481400 | Wall conduiting | 3d | 2026-05-16 | 2026-05-19 | 3834, 3838SS+1d |  | 125880 |
| 3840 | 37100.37300.37600.38300.39300.43700.168100.481500 | Formwork | 7d | 2026-05-16 | 2026-05-23 | 3838SS+1d |  | 125890 |
| 3841 | 37100.37300.37600.38300.39300.43700.168100.481600 | Concreting | 2d | 2026-05-23 | 2026-05-25 | 3840 |  | 125900 |

| ID | WBS | Task | Duration | Start | Finish | Predecessors | Constraint | Unique_Task_ID |
| --- | --- | --- | --- | --- | --- | --- | --- | --- |
| 3842 | 37100.37300.37600.38300.39300.43700.168000 | **27th floor slab** | 10d | 2026-05-30 | 2026-06-09 |  | start no earlier than 2026-05-30 | 123690 |
| 3843 | 37100.37300.37600.38300.39300.43700.168000.481700 | Reinforcement | 9d | 2026-05-30 | 2026-06-08 | 3841FS+5d |  | 125910 |
| 3844 | 37100.37300.37600.38300.39300.43700.168000.481800 | Wall conduiting | 3d | 2026-05-31 | 2026-06-03 | 3839, 3843SS+1d |  | 125920 |
| 3845 | 37100.37300.37600.38300.39300.43700.168000.481900 | Formwork | 7d | 2026-05-31 | 2026-06-07 | 3843SS+1d |  | 125930 |
| 3846 | 37100.37300.37600.38300.39300.43700.168000.482000 | Concreting | 2d | 2026-06-07 | 2026-06-09 | 3845 |  | 125940 |
| 3847 | 37100.37300.37600.38300.39300.43700.167900 | **28th floor slab** | 10d | 2026-06-14 | 2026-06-24 |  | start no earlier than 2026-06-14 | 123700 |
| 3848 | 37100.37300.37600.38300.39300.43700.167900.482100 | Reinforcement | 9d | 2026-06-14 | 2026-06-23 | 3846FS+5d |  | 125950 |
| 3849 | 37100.37300.37600.38300.39300.43700.167900.482200 | Wall conduiting | 3d | 2026-06-15 | 2026-06-18 | 3844, 3848SS+1d |  | 125960 |
| 3850 | 37100.37300.37600.38300.39300.43700.167900.482300 | Formwork | 7d | 2026-06-15 | 2026-06-22 | 3848SS+1d |  | 125970 |
| 3851 | 37100.37300.37600.38300.39300.43700.167900.482400 | Concreting | 2d | 2026-06-22 | 2026-06-24 | 3850 |  | 125980 |
| 3852 | 37100.37300.37600.38300.39300.43700.167800 | **29th floor slab** | 10d | 2026-06-28 | 2026-07-08 |  | start no earlier than 2026-06-28 | 123710 |
| 3853 | 37100.37300.37600.38300.39300.43700.167800.482500 | Reinforcement | 7d | 2026-06-28 | 2026-07-05 | 3851FS+4d |  | 125990 |
| 3854 | 37100.37300.37600.38300.39300.43700.167800.482600 | Wall conduiting | 3d | 2026-06-29 | 2026-07-02 | 3849, 3853SS+1d |  | 126000 |
| 3855 | 37100.37300.37600.38300.39300.43700.167800.482700 | Formwork | 8d | 2026-06-29 | 2026-07-07 | 3853SS+1d |  | 126010 |
| 3856 | 37100.37300.37600.38300.39300.43700.167800.482800 | Concreting | 1d | 2026-07-07 | 2026-07-08 | 3855 |  | 126020 |
| 3857 | 37100.37300.37600.38300.39300.43700.167700 | **30th floor slab** | 10d | 2026-07-12 | 2026-07-22 |  | start no earlier than 2026-07-12 | 123720 |
| 3858 | 37100.37300.37600.38300.39300.43700.167700.482900 | Reinforcement | 7d | 2026-07-12 | 2026-07-19 | 3856FS+4d |  | 126030 |
| 3859 | 37100.37300.37600.38300.39300.43700.167700.483000 | Wall conduiting | 3d | 2026-07-13 | 2026-07-16 | 3854, 3858SS+1d |  | 126040 |
| 3860 | 37100.37300.37600.38300.39300.43700.167700.483100 | Formwork | 8d | 2026-07-13 | 2026-07-21 | 3858SS+1d |  | 126050 |
| 3861 | 37100.37300.37600.38300.39300.43700.167700.483200 | Concreting | 1d | 2026-07-21 | 2026-07-22 | 3860 |  | 126060 |
| 3862 | 37100.37300.37600.38300.39300.43700.167600 | **31st floor slab** | 10d | 2026-07-22 | 2026-08-01 |  | start no earlier than 2026-07-22 | 123730 |
| 3863 | 37100.37300.37600.38300.39300.43700.167600.483300 | Reinforcement | 7d | 2026-07-22 | 2026-07-29 | 3861 |  | 126070 |
| 3864 | 37100.37300.37600.38300.39300.43700.167600.483400 | Wall conduiting | 3d | 2026-07-23 | 2026-07-26 | 3859, 3863SS+1d |  | 126080 |
| 3865 | 37100.37300.37600.38300.39300.43700.167600.483500 | Formwork | 8d | 2026-07-23 | 2026-07-31 | 3863SS+1d |  | 126090 |
| 3866 | 37100.37300.37600.38300.39300.43700.167600.483600 | Concreting | 1d | 2026-07-31 | 2026-08-01 | 3865 |  | 126100 |

| ID | WBS | Task | Duration | Start | Finish | Predecessors | Constraint | Unique_Task_ID |
| --- | --- | --- | --- | --- | --- | --- | --- | --- |
| 3867 | 37100.37300.37600.38300.39300.43700.167500 | **32nd floor slab** | 11d | 2026-08-05 | 2026-08-16 |  | start no earlier than 2026-08-05 | 123740 |
| 3868 | 37100.37300.37600.38300.39300.43700.167500.483700 | Reinforcement | 10d | 2026-08-05 | 2026-08-15 | 3866FS+4d |  | 126110 |
| 3869 | 37100.37300.37600.38300.39300.43700.167500.483800 | Wall conduiting | 7d | 2026-08-06 | 2026-08-13 | 3864, 3868SS+1d |  | 126120 |
| 3870 | 37100.37300.37600.38300.39300.43700.167500.483900 | Formwork | 8d | 2026-08-06 | 2026-08-14 | 3868SS+1d |  | 126130 |
| 3871 | 37100.37300.37600.38300.39300.43700.167500.484000 | Concreting | 2d | 2026-08-14 | 2026-08-16 | 3870 |  | 126140 |
| 3872 | 37100.37300.37600.38300.39300.43700.167400 | **33rd floor slab** | 10.88d | 2026-08-20 | 2026-08-31 |  | start no earlier than 2026-08-20 | 123750 |
| 3873 | 37100.37300.37600.38300.39300.43700.167400.484100 | Reinforcement | 8.94d | 2026-08-20 | 2026-08-29 | 3871FS+4d |  | 126150 |
| 3874 | 37100.37300.37600.38300.39300.43700.167400.484200 | Wall conduiting | 1.94d | 2026-08-21 | 2026-08-23 | 3869, 3873SS+1d |  | 126160 |
| 3875 | 37100.37300.37600.38300.39300.43700.167400.484300 | Formwork | 8.94d | 2026-08-21 | 2026-08-30 | 3873SS+1d |  | 126170 |
| 3876 | 37100.37300.37600.38300.39300.43700.167400.484400 | Concreting | 0.94d | 2026-08-30 | 2026-08-31 | 3875 |  | 126180 |
| 3877 | 37100.37300.37600.38300.39300.43700.167300 | **34th floor slab** | 11d | 2026-09-04 | 2026-09-15 |  | start no earlier than 2026-09-04 | 123760 |
| 3878 | 37100.37300.37600.38300.39300.43700.167300.484500 | Reinforcement | 10d | 2026-09-04 | 2026-09-14 | 3876FS+4d |  | 126190 |
| 3879 | 37100.37300.37600.38300.39300.43700.167300.484600 | Wall conduiting | 7d | 2026-09-05 | 2026-09-12 | 3874, 3878SS+1d |  | 126200 |
| 3880 | 37100.37300.37600.38300.39300.43700.167300.484700 | Formwork | 8d | 2026-09-05 | 2026-09-13 | 3878SS+1d |  | 126210 |
| 3881 | 37100.37300.37600.38300.39300.43700.167300.484800 | Concreting | 2d | 2026-09-13 | 2026-09-15 | 3880 |  | 126220 |
| 3882 | 37100.37300.37600.38300.39300.43700.167200 | **35th floor slab** | 12d | 2026-09-19 | 2026-10-01 |  | start no earlier than 2026-09-19 | 123770 |
| 3883 | 37100.37300.37600.38300.39300.43700.167200.484900 | Reinforcement | 10d | 2026-09-19 | 2026-09-29 | 3881FS+4d |  | 126230 |
| 3884 | 37100.37300.37600.38300.39300.43700.167200.485000 | Wall conduiting | 7d | 2026-09-20 | 2026-09-27 | 3879, 3883SS+1d |  | 126240 |
| 3885 | 37100.37300.37600.38300.39300.43700.167200.485100 | Formwork | 8d | 2026-09-21 | 2026-09-29 | 3884SS+1d |  | 126250 |
| 3886 | 37100.37300.37600.38300.39300.43700.167200.485200 | Concreting | 2d | 2026-09-29 | 2026-10-01 | 3885 |  | 126260 |
| 3887 | 37100.37300.37600.38300.39300.43700.167100 | **Terrace floor slab** | 19d | 2026-10-01 | 2026-10-20 |  | start no earlier than 2026-10-01 | 123780 |
| 3888 | 37100.37300.37600.38300.39300.43700.167100.485300 | Reinforcement | 19d | 2026-10-01 | 2026-10-20 | 3886 |  | 126270 |
| 3889 | 37100.37300.37600.38300.39300.43700.167100.485400 | Wall conduiting | 10d | 2026-10-02 | 2026-10-12 | 3884, 3888SS+1d |  | 126280 |
| 3890 | 37100.37300.37600.38300.39300.43700.167100.485500 | Formwork | 13d | 2026-10-02 | 2026-10-15 | 3888SS+1d |  | 126290 |
| 3891 | 37100.37300.37600.38300.39300.43700.167100.485600 | Concreting | 2d | 2026-10-15 | 2026-10-17 | 3890 |  | 126300 |

| ID | WBS | Task | Duration | Start | Finish | Predecessors | Constraint | Unique_Task_ID |
| --- | --- | --- | --- | --- | --- | --- | --- | --- |
| 3892 | 37100.37300.37600.38300.39300.43700.167000 | **OHT & Mumty** | 38.88d | 2026-10-17 | 2027-01-08 |  | start no earlier than 2026-10-17 | 123790 |
| 3893 | 37100.37300.37600.38300.39300.43700.167000.485700 | Reinforcement | 29.94d | 2026-10-17 | 2026-12-31 | 3891 |  | 126310 |
| 3894 | 37100.37300.37600.38300.39300.43700.167000.485800 | Wall conduiting | 4.94d | 2026-10-18 | 2026-10-23 | 3889, 3893SS+1d |  | 126320 |
| 3895 | 37100.37300.37600.38300.39300.43700.167000.485900 | Formwork | 32.94d | 2026-10-20 | 2027-01-06 | 3893SS+3d |  | 126330 |
| 3896 | 37100.37300.37600.38300.39300.43700.167000.486000 | Concreting | 2.94d | 2027-01-06 | 2027-01-08 | 3895 |  | 126340 |
| 3897 | 37100.37300.37600.38300.39300.45500 | **Post Pour Activities** | 392.75d | 2025-11-30 | 2027-02-19 |  | start no earlier than 2025-11-30 | 122960 |
| 3898 | 37100.37300.37600.38300.39300.45500.326600 | 1st Floor | 7d | 2025-11-30 | 2025-12-16 | 3726FS+0.25d |  | 124130 |
| 3899 | 37100.37300.37600.38300.39300.45500.326700 | 2nd Floor | 7d | 2025-12-16 | 2025-12-23 | 3898, 3746 |  | 124140 |
| 3900 | 37100.37300.37600.38300.39300.45500.326800 | 3rd Floor | 7d | 2025-12-23 | 2025-12-30 | 3899, 3751 |  | 124150 |
| 3901 | 37100.37300.37600.38300.39300.45500.326900 | 4th Floor | 7d | 2025-12-30 | 2026-01-06 | 3900, 3756 |  | 124160 |
| 3902 | 37100.37300.37600.38300.39300.45500.327000 | 5th Floor | 7d | 2026-01-06 | 2026-01-13 | 3901, 3761 |  | 124170 |
| 3903 | 37100.37300.37600.38300.39300.45500.327100 | 6th Floor | 7d | 2026-01-13 | 2026-01-20 | 3902, 3766 |  | 124180 |
| 3904 | 37100.37300.37600.38300.39300.45500.327200 | 7th Floor | 7d | 2026-01-20 | 2026-01-27 | 3903, 3771 |  | 124190 |
| 3905 | 37100.37300.37600.38300.39300.45500.327300 | 8th Floor | 7d | 2026-01-27 | 2026-02-03 | 3904, 3776 |  | 124200 |
| 3906 | 37100.37300.37600.38300.39300.45500.327400 | 9th Floor | 7d | 2026-02-03 | 2026-02-10 | 3905, 3781 |  | 124210 |
| 3907 | 37100.37300.37600.38300.39300.45500.327500 | 10th Floor | 7d | 2026-02-10 | 2026-02-17 | 3906, 3786 |  | 124220 |
| 3908 | 37100.37300.37600.38300.39300.45500.327600 | 11th Floor | 7d | 2026-02-17 | 2026-02-24 | 3907, 3791 |  | 124230 |
| 3909 | 37100.37300.37600.38300.39300.45500.327700 | 12th Floor | 7d | 2026-02-24 | 2026-03-03 | 3908, 3796 |  | 124240 |
| 3910 | 37100.37300.37600.38300.39300.45500.327800 | 13th Floor | 7d | 2026-03-03 | 2026-03-10 | 3909, 3801 |  | 124250 |
| 3911 | 37100.37300.37600.38300.39300.45500.327900 | 14th Floor | 7d | 2026-03-10 | 2026-03-17 | 3910, 3806 |  | 124260 |
| 3912 | 37100.37300.37600.38300.39300.45500.328000 | 15th Floor | 7d | 2026-03-17 | 2026-03-24 | 3911, 3811 |  | 124270 |
| 3913 | 37100.37300.37600.38300.39300.45500.328100 | 16th Floor | 7d | 2026-03-24 | 2026-03-31 | 3912, 3816 |  | 124280 |
| 3914 | 37100.37300.37600.38300.39300.45500.328200 | 17th Floor | 7d | 2026-04-03 | 2026-04-10 | 3913, 3821 |  | 124290 |
| 3915 | 37100.37300.37600.38300.39300.45500.328300 | 18th Floor | 7d | 2026-04-17 | 2026-04-24 | 3914, 3826 |  | 124300 |
| 3916 | 37100.37300.37600.38300.39300.45500.328400 | 19th Floor | 7d | 2026-05-01 | 2026-05-08 | 3915, 3831 |  | 124310 |
| 3917 | 37100.37300.37600.38300.39300.45500.328500 | 20th Floor | 7d | 2026-05-14 | 2026-05-21 | 3916, 3836 |  | 124320 |
| 3918 | 37100.37300.37600.38300.39300.45500.328600 | 21st Floor | 7d | 2026-05-25 | 2026-06-01 | 3917, 3841 |  | 124330 |
| 3919 | 37100.37300.37600.38300.39300.45500.328700 | 22nd Floor | 7d | 2026-06-09 | 2026-06-16 | 3918, 3846 |  | 124340 |
| 3920 | 37100.37300.37600.38300.39300.45500.328800 | 23rd Floor | 7d | 2026-06-24 | 2026-07-01 | 3919, 3851 |  | 124350 |
| 3921 | 37100.37300.37600.38300.39300.45500.328900 | 24th Floor | 7d | 2026-07-08 | 2026-07-15 | 3920, 3856 |  | 124360 |
| 3922 | 37100.37300.37600.38300.39300.45500.329000 | 25th Floor | 7d | 2026-07-22 | 2026-07-29 | 3921, 3861 |  | 124370 |
| 3923 | 37100.37300.37600.38300.39300.45500.329100 | 26th Floor | 7d | 2026-08-01 | 2026-08-08 | 3922, 3866 |  | 124380 |
| 3924 | 37100.37300.37600.38300.39300.45500.329200 | 27th Floor | 7d | 2026-08-16 | 2026-08-23 | 3923, 3871 |  | 124390 |
| 3925 | 37100.37300.37600.38300.39300.45500.329300 | 28th Floor | 7d | 2026-08-31 | 2026-09-07 | 3924, 3876 |  | 124400 |
| 3926 | 37100.37300.37600.38300.39300.45500.329400 | 29th Floor | 7d | 2026-09-15 | 2026-09-22 | 3925, 3881 |  | 124410 |
| 3927 | 37100.37300.37600.38300.39300.45500.329500 | 30th Floor | 7d | 2026-10-01 | 2026-10-08 | 3926, 3886 |  | 124420 |
| 3928 | 37100.37300.37600.38300.39300.45500.329600 | 31st Floor | 7d | 2026-10-17 | 2026-10-24 | 3927, 3891 |  | 124430 |
| 3929 | 37100.37300.37600.38300.39300.45500.329700 | 32nd Flood | 7d | 2027-01-09 | 2027-01-15 | 3928, 3896 |  | 124440 |
| 3930 | 37100.37300.37600.38300.39300.45500.329800 | 33rd Floor | 7d | 2027-01-16 | 2027-01-22 | 3929 |  | 124450 |
| 3931 | 37100.37300.37600.38300.39300.45500.329900 | 34th Floor | 7d | 2027-01-23 | 2027-01-29 | 3930 |  | 124460 |
| 3932 | 37100.37300.37600.38300.39300.45500.330000 | 35th Floor | 7d | 2027-01-30 | 2027-02-05 | 3931 |  | 124470 |
| 3933 | 37100.37300.37600.38300.39300.45500.330100 | Terrace | 7d | 2027-02-06 | 2027-02-12 | 3932 |  | 124480 |
| 3934 | 37100.37300.37600.38300.39300.45500.330200 | Mumty & Machine Room | 7d | 2027-02-13 | 2027-02-19 | 3933, 3894 |  | 124490 |

| ID | WBS | Task | Duration | Start | Finish | Predecessors | Constraint | Unique_Task_ID |
| --- | --- | --- | --- | --- | --- | --- | --- | --- |
| 3935 | 37100.37300.37600.38300.39300.40700 | **Finishing work** | 1021.44d | 2025-12-16 | 2028-11-16 |  | start no earlier than 2025-12-16 | 122930 |
| 3936 | 37100.37300.37600.38300.39300.40700.41700 | **Flat finishing** | 833.12d | 2025-12-16 | 2028-05-12 |  | start no earlier than 2025-12-16 | 122940 |
| 3937 | 37100.37300.37600.38300.39300.40700.41700.71600 | **1st Floor** | 480d | 2025-12-16 | 2027-05-25 |  | start no earlier than 2025-12-16 | 122980 |
| 3938 | 37100.37300.37600.38300.39300.40700.41700.71600.1026200 | Block Work | 8d | 2025-12-16 | 2025-12-24 | 3898FS+0.25d |  | 126480 |
| 3939 | 37100.37300.37600.38300.39300.40700.41700.71600.1026300 | Door Frame Fixing | 9d | 2025-12-24 | 2026-01-02 | 3938 |  | 126500 |
| 3940 | 37100.37300.37600.38300.39300.40700.41700.71600.1026400 | Internal Plumbing Works | 8d | 2025-12-24 | 2026-01-01 | 3938 |  | 126510 |
| 3941 | 37100.37300.37600.38300.39300.40700.41700.71600.1026500 | Waterproofing | 10d | 2026-01-01 | 2026-01-11 | 3940 |  | 126520 |
| 3942 | 37100.37300.37600.38300.39300.40700.41700.71600.1026600 | Internal Plaster | 8d | 2025-12-25 | 2026-01-02 | 3938FS+1d |  | 126530 |
| 3943 | 37100.37300.37600.38300.39300.40700.41700.71600.1026700 | IPS flooring work | 10d | 2026-01-11 | 2026-01-21 | 3939, 3940, 3941 |  | 126540 |
| 3944 | 37100.37300.37600.38300.39300.40700.41700.71600.1026800 | Toilet dado work | 8d | 2026-01-11 | 2026-01-19 | 3941, 3942 |  | 126550 |
| 3945 | 37100.37300.37600.38300.39300.40700.41700.71600.1026900 | Toilet flooring work | 8d | 2026-01-19 | 2026-01-27 | 3944 |  | 126560 |
| 3946 | 37100.37300.37600.38300.39300.40700.41700.71600.1027000 | Living dinning flooring | 12d | 2026-01-27 | 2026-02-08 | 3939, 3945 |  | 126570 |
| 3947 | 37100.37300.37600.38300.39300.40700.41700.71600.1027100 | Aluminium door-window fixing | 12d | 2026-02-08 | 2026-02-20 | 3943, 3946 |  | 126580 |
| 3948 | 37100.37300.37600.38300.39300.40700.41700.71600.1027200 | Putty primer coat | 6d | 2026-02-08 | 2026-02-14 | 3946 |  | 126590 |
| 3949 | 37100.37300.37600.38300.39300.40700.41700.71600.1027300 | Door shutter fixing | 8d | 2026-02-08 | 2026-02-16 | 3946 |  | 126600 |
| 3950 | 37100.37300.37600.38300.39300.40700.41700.71600.1027400 | Electrical wiring work | 15d | 2027-04-17 | 2027-05-02 | 3949FS+380d |  | 126610 |
| 3951 | 37100.37300.37600.38300.39300.40700.41700.71600.1027500 | Painting 1st coat | 15d | 2027-05-02 | 2027-05-17 | 3948, 3949, 3950 |  | 126620 |
| 3952 | 37100.37300.37600.38300.39300.40700.41700.71600.1027600 | False ceiling | 8d | 2027-05-17 | 2027-05-25 | 3951 |  | 126630 |
| 3953 | 37100.37300.37600.38300.39300.40700.41700.71700 | **2nd Floor** | 491.75d | 2025-12-24 | 2027-06-14 |  | start no earlier than 2025-12-24 | 122990 |
| 3954 | 37100.37300.37600.38300.39300.40700.41700.71700.1027700 | Block Work | 8d | 2025-12-24 | 2026-01-01 | 3938FS+0.25d |  | 126640 |
| 3955 | 37100.37300.37600.38300.39300.40700.41700.71700.1027800 | Door Frame Fixing | 9d | 2026-01-02 | 2026-01-11 | 3939, 3954 |  | 126660 |
| 3956 | 37100.37300.37600.38300.39300.40700.41700.71700.1027900 | Internal Plumbing Works | 8d | 2026-01-01 | 2026-01-09 | 3940, 3954 |  | 126670 |
| 3957 | 37100.37300.37600.38300.39300.40700.41700.71700.1028000 | Waterproofing | 10d | 2026-01-11 | 2026-01-21 | 3941, 3956 |  | 126680 |
| 3958 | 37100.37300.37600.38300.39300.40700.41700.71700.1028100 | Internal Plaster | 8d | 2026-01-02 | 2026-01-10 | 3942FS+0.25d |  | 126690 |
| 3959 | 37100.37300.37600.38300.39300.40700.41700.71700.1028200 | IPS flooring work | 10d | 2026-01-21 | 2026-01-31 | 3943, 3955, 3956, 3957 |  | 126700 |
| 3960 | 37100.37300.37600.38300.39300.40700.41700.71700.1028300 | Toilet dado work | 8d | 2026-01-21 | 2026-01-29 | 3944, 3957, 3958 |  | 126710 |
| 3961 | 37100.37300.37600.38300.39300.40700.41700.71700.1028400 | Toilet flooring work | 8d | 2026-01-29 | 2026-02-06 | 3945, 3960 |  | 126720 |
| 3962 | 37100.37300.37600.38300.39300.40700.41700.71700.1028500 | Living dinning flooring | 8d | 2026-02-08 | 2026-02-16 | 3946FS+0.25d |  | 126730 |
| 3963 | 37100.37300.37600.38300.39300.40700.41700.71700.1028600 | Aluminium door-window fixing | 8d | 2026-04-06 | 2026-04-14 | 3947FS+45d |  | 126740 |
| 3964 | 37100.37300.37600.38300.39300.40700.41700.71700.1028700 | Putty primer coat | 6d | 2026-02-16 | 2026-02-22 | 3948, 3962 |  | 126750 |
| 3965 | 37100.37300.37600.38300.39300.40700.41700.71700.1028800 | Door shutter fixing | 8d | 2026-02-16 | 2026-02-24 | 3949, 3962 |  | 126760 |
| 3966 | 37100.37300.37600.38300.39300.40700.41700.71700.1028900 | Electrical wiring work | 20d | 2027-05-02 | 2027-05-22 | 3950, 3965 |  | 126770 |
| 3967 | 37100.37300.37600.38300.39300.40700.41700.71700.1029000 | Painting 1st coat | 15d | 2027-05-22 | 2027-06-06 | 3951, 3964, 3965, 3966 |  | 126780 |
| 3968 | 37100.37300.37600.38300.39300.40700.41700.71700.1029100 | False ceiling | 8d | 2027-06-06 | 2027-06-14 | 3952, 3967 |  | 126790 |

| ID | WBS | Task | Duration | Start | Finish | Predecessors | Constraint | Unique_Task_ID |
| --- | --- | --- | --- | --- | --- | --- | --- | --- |
| 3969 | 37100.37300.37600.38300.39300.40700.41700.71800 | **3rd Floor** | 495.5d | 2026-01-02 | 2027-06-26 |  | start no earlier than 2026-01-02 | 123000 |
| 3970 | 37100.37300.37600.38300.39300.40700.41700.71800.1029200 | Block Work | 8d | 2026-01-02 | 2026-01-09 | 3954FS+0.25d |  | 126800 |
| 3971 | 37100.37300.37600.38300.39300.40700.41700.71800.1029300 | Door Frame Fixing | 9d | 2026-01-11 | 2026-01-20 | 3955, 3970 |  | 126820 |
| 3972 | 37100.37300.37600.38300.39300.40700.41700.71800.1029400 | Internal Plumbing Works | 8d | 2026-01-10 | 2026-01-17 | 3956, 3970 |  | 126830 |
| 3973 | 37100.37300.37600.38300.39300.40700.41700.71800.1029500 | Waterproofing | 10d | 2026-01-21 | 2026-01-31 | 3957, 3972 |  | 126840 |
| 3974 | 37100.37300.37600.38300.39300.40700.41700.71800.1029600 | Internal Plaster | 8d | 2026-01-11 | 2026-01-18 | 3958FS+0.25d |  | 126850 |
| 3975 | 37100.37300.37600.38300.39300.40700.41700.71800.1029700 | IPS flooring work | 10d | 2026-01-31 | 2026-02-10 | 3959, 3971, 3973, 3974 |  | 126860 |
| 3976 | 37100.37300.37600.38300.39300.40700.41700.71800.1029800 | Toilet dado work | 8d | 2026-01-31 | 2026-02-08 | 3960, 3973, 3974 |  | 126870 |
| 3977 | 37100.37300.37600.38300.39300.40700.41700.71800.1029900 | Toilet flooring work | 8d | 2026-02-08 | 2026-02-16 | 3961, 3976 |  | 126880 |
| 3978 | 37100.37300.37600.38300.39300.40700.41700.71800.1030000 | Living dinning flooring | 8d | 2026-02-17 | 2026-02-24 | 3962FS+0.25d |  | 126890 |
| 3979 | 37100.37300.37600.38300.39300.40700.41700.71800.1030100 | Aluminium door-window fixing | 8d | 2026-04-14 | 2026-04-22 | 3963FS+0.25d |  | 126900 |
| 3980 | 37100.37300.37600.38300.39300.40700.41700.71800.1030200 | Putty primer coat | 6d | 2026-02-25 | 2026-03-02 | 3964, 3978 |  | 126910 |
| 3981 | 37100.37300.37600.38300.39300.40700.41700.71800.1030300 | Door shutter fixing | 8d | 2026-02-25 | 2026-03-04 | 3965, 3978 |  | 126920 |
| 3982 | 37100.37300.37600.38300.39300.40700.41700.71800.1030400 | Electrical wiring work | 19d | 2027-05-22 | 2027-06-10 | 3966, 3981 |  | 126930 |
| 3983 | 37100.37300.37600.38300.39300.40700.41700.71800.1030500 | Painting 1st coat | 8d | 2027-06-10 | 2027-06-18 | 3967, 3980, 3981, 3982 |  | 126940 |
| 3984 | 37100.37300.37600.38300.39300.40700.41700.71800.1030600 | False ceiling | 8d | 2027-06-18 | 2027-06-26 | 3968, 3983 |  | 126950 |
| 3985 | 37100.37300.37600.38300.39300.40700.41700.71900 | **4th Floor** | 495.25d | 2026-01-10 | 2027-07-04 |  | start no earlier than 2026-01-10 | 123010 |
| 3986 | 37100.37300.37600.38300.39300.40700.41700.71900.1030700 | Block Work | 8d | 2026-01-10 | 2026-01-18 | 3970FS+0.25d |  | 126960 |
| 3987 | 37100.37300.37600.38300.39300.40700.41700.71900.1030800 | Door Frame Fixing | 9d | 2026-01-20 | 2026-01-29 | 3971, 3986 |  | 126980 |
| 3988 | 37100.37300.37600.38300.39300.40700.41700.71900.1030900 | Internal Plumbing Works | 8d | 2026-01-18 | 2026-01-26 | 3972, 3986 |  | 126990 |
| 3989 | 37100.37300.37600.38300.39300.40700.41700.71900.1031000 | Waterproofing | 10d | 2026-01-31 | 2026-02-10 | 3973, 3988 |  | 127000 |
| 3990 | 37100.37300.37600.38300.39300.40700.41700.71900.1031100 | Internal Plaster | 8d | 2026-01-19 | 2026-01-27 | 3974FS+0.25d |  | 127010 |
| 3991 | 37100.37300.37600.38300.39300.40700.41700.71900.1031200 | IPS flooring work | 10d | 2026-02-10 | 2026-02-20 | 3975, 3987, 3989, 3990 |  | 127020 |
| 3992 | 37100.37300.37600.38300.39300.40700.41700.71900.1031300 | Toilet dado work | 8d | 2026-02-10 | 2026-02-18 | 3976, 3989, 3990 |  | 127030 |
| 3993 | 37100.37300.37600.38300.39300.40700.41700.71900.1031400 | Toilet flooring work | 8d | 2026-02-18 | 2026-02-26 | 3977, 3992 |  | 127040 |
| 3994 | 37100.37300.37600.38300.39300.40700.41700.71900.1031500 | Living dinning flooring | 12d | 2026-02-25 | 2026-03-09 | 3978FS+0.25d |  | 127050 |
| 3995 | 37100.37300.37600.38300.39300.40700.41700.71900.1031600 | Aluminium door-window fixing | 12d | 2026-04-23 | 2026-05-04 | 3979FS+0.25d |  | 127060 |
| 3996 | 37100.37300.37600.38300.39300.40700.41700.71900.1031700 | Putty primer coat | 6d | 2026-03-09 | 2026-03-15 | 3980, 3994 |  | 127070 |
| 3997 | 37100.37300.37600.38300.39300.40700.41700.71900.1031800 | Door shutter fixing | 8d | 2026-03-09 | 2026-03-17 | 3981, 3994 |  | 127080 |
| 3998 | 37100.37300.37600.38300.39300.40700.41700.71900.1031900 | Electrical wiring work | 8d | 2027-06-10 | 2027-06-18 | 3982, 3997 |  | 127090 |
| 3999 | 37100.37300.37600.38300.39300.40700.41700.71900.1032000 | Painting 1st coat | 8d | 2027-06-18 | 2027-06-26 | 3983, 3996, 3997, 3998 |  | 127100 |
| 4000 | 37100.37300.37600.38300.39300.40700.41700.71900.1032100 | False ceiling | 8d | 2027-06-26 | 2027-07-04 | 3984, 3999 |  | 127110 |

| ID | WBS | Task | Duration | Start | Finish | Predecessors | Constraint | Unique_Task_ID |
| --- | --- | --- | --- | --- | --- | --- | --- | --- |
| 4001 | 37100.37300.37600.38300.39300.40700.41700.72000 | **5th Floor** | 495d | 2026-01-18 | 2027-07-12 |  | start no earlier than 2026-01-18 | 123020 |
| 4002 | 37100.37300.37600.38300.39300.40700.41700.72000.1032200 | Block Work | 8d | 2026-01-18 | 2026-01-26 | 3986FS+0.25d |  | 127120 |
| 4003 | 37100.37300.37600.38300.39300.40700.41700.72000.1032300 | Door Frame Fixing | 9d | 2026-01-29 | 2026-02-07 | 3987, 4002 |  | 127140 |
| 4004 | 37100.37300.37600.38300.39300.40700.41700.72000.1032400 | Internal Plumbing Works | 8d | 2026-01-26 | 2026-02-03 | 3988, 4002 |  | 127150 |
| 4005 | 37100.37300.37600.38300.39300.40700.41700.72000.1032500 | Waterproofing | 10d | 2026-02-10 | 2026-02-20 | 3989, 4004 |  | 127160 |
| 4006 | 37100.37300.37600.38300.39300.40700.41700.72000.1032600 | Internal Plaster | 8d | 2026-01-27 | 2026-02-04 | 3990FS+0.25d |  | 127170 |
| 4007 | 37100.37300.37600.38300.39300.40700.41700.72000.1032700 | IPS flooring work | 10d | 2026-02-20 | 2026-03-02 | 3991, 4003, 4005, 4006 |  | 127180 |
| 4008 | 37100.37300.37600.38300.39300.40700.41700.72000.1032800 | Toilet dado work | 8d | 2026-02-20 | 2026-02-28 | 3992, 4005, 4006 |  | 127190 |
| 4009 | 37100.37300.37600.38300.39300.40700.41700.72000.1032900 | Toilet flooring work | 8d | 2026-02-28 | 2026-03-08 | 3993, 4008 |  | 127200 |
| 4010 | 37100.37300.37600.38300.39300.40700.41700.72000.1033000 | Living dinning flooring | 12d | 2026-03-09 | 2026-03-21 | 3994FS+0.25d |  | 127210 |
| 4011 | 37100.37300.37600.38300.39300.40700.41700.72000.1033100 | Aluminium door-window fixing | 12d | 2026-05-05 | 2026-05-17 | 3995FS+0.25d |  | 127220 |
| 4012 | 37100.37300.37600.38300.39300.40700.41700.72000.1033200 | Putty primer coat | 6d | 2026-03-21 | 2026-03-27 | 3996, 4010 |  | 127230 |
| 4013 | 37100.37300.37600.38300.39300.40700.41700.72000.1033300 | Door shutter fixing | 8d | 2026-03-21 | 2026-03-29 | 3997, 4010 |  | 127240 |
| 4014 | 37100.37300.37600.38300.39300.40700.41700.72000.1033400 | Electrical wiring work | 8d | 2027-06-18 | 2027-06-26 | 3998, 4013 |  | 127250 |
| 4015 | 37100.37300.37600.38300.39300.40700.41700.72000.1033500 | Painting 1st coat | 8d | 2027-06-26 | 2027-07-04 | 3999, 4012, 4013, 4014 |  | 127260 |
| 4016 | 37100.37300.37600.38300.39300.40700.41700.72000.1033600 | False ceiling | 8d | 2027-07-04 | 2027-07-12 | 4000, 4015 |  | 127270 |
| 4017 | 37100.37300.37600.38300.39300.40700.41700.72100 | **6th Floor** | 494.75d | 2026-01-26 | 2027-07-20 |  | start no earlier than 2026-01-26 | 123030 |
| 4018 | 37100.37300.37600.38300.39300.40700.41700.72100.1033700 | Block Work | 8d | 2026-01-26 | 2026-02-03 | 4002FS+0.25d |  | 127280 |
| 4019 | 37100.37300.37600.38300.39300.40700.41700.72100.1033800 | Door Frame Fixing | 9d | 2026-02-07 | 2026-02-16 | 3751, 4003 |  | 127300 |
| 4020 | 37100.37300.37600.38300.39300.40700.41700.72100.1033900 | Internal Plumbing Works | 8d | 2026-02-03 | 2026-02-11 | 4004, 4018 |  | 127310 |
| 4021 | 37100.37300.37600.38300.39300.40700.41700.72100.1034000 | Waterproofing | 10d | 2026-02-20 | 2026-03-02 | 4005, 4020 |  | 127320 |
| 4022 | 37100.37300.37600.38300.39300.40700.41700.72100.1034100 | Internal Plaster | 8d | 2026-02-04 | 2026-02-12 | 4006FS+0.25d |  | 127330 |
| 4023 | 37100.37300.37600.38300.39300.40700.41700.72100.1034200 | IPS flooring work | 10d | 2026-03-02 | 2026-03-12 | 4007, 4019, 4021, 4022 |  | 127340 |
| 4024 | 37100.37300.37600.38300.39300.40700.41700.72100.1034300 | Toilet dado work | 8d | 2026-03-02 | 2026-03-10 | 4008, 4021, 4022 |  | 127350 |
| 4025 | 37100.37300.37600.38300.39300.40700.41700.72100.1034400 | Toilet flooring work | 8d | 2026-03-10 | 2026-03-18 | 4009, 4024 |  | 127360 |
| 4026 | 37100.37300.37600.38300.39300.40700.41700.72100.1034500 | Living dinning flooring | 12d | 2026-03-21 | 2026-04-02 | 4010FS+0.25d |  | 127370 |
| 4027 | 37100.37300.37600.38300.39300.40700.41700.72100.1034600 | Aluminium door-window fixing | 12d | 2026-05-17 | 2026-05-29 | 4011FS+0.25d |  | 127380 |
| 4028 | 37100.37300.37600.38300.39300.40700.41700.72100.1034700 | Putty primer coat | 6d | 2026-04-02 | 2026-04-08 | 4012, 4026 |  | 127390 |
| 4029 | 37100.37300.37600.38300.39300.40700.41700.72100.1034800 | Door shutter fixing | 8d | 2026-04-02 | 2026-04-10 | 4013, 4026 |  | 127400 |
| 4030 | 37100.37300.37600.38300.39300.40700.41700.72100.1034900 | Electrical wiring work | 8d | 2027-06-26 | 2027-07-04 | 4014, 4029 |  | 127410 |
| 4031 | 37100.37300.37600.38300.39300.40700.41700.72100.1035000 | Painting 1st coat | 8d | 2027-07-04 | 2027-07-12 | 4015, 4028, 4029, 4030 |  | 127420 |
| 4032 | 37100.37300.37600.38300.39300.40700.41700.72100.1035100 | False ceiling | 8d | 2027-07-12 | 2027-07-20 | 4016, 4031 |  | 127430 |

| ID | WBS | Task | Duration | Start | Finish | Predecessors | Constraint | Unique_Task_ID |
| --- | --- | --- | --- | --- | --- | --- | --- | --- |
| 4033 | 37100.37300.37600.38300.39300.40700.41700.72200 | **7th Floor** | 494.5d | 2026-02-04 | 2027-07-28 |  | start no earlier than 2026-02-04 | 123040 |
| 4034 | 37100.37300.37600.38300.39300.40700.41700.72200.1035200 | Block Work | 8d | 2026-02-04 | 2026-02-11 | 4018FS+0.25d |  | 127440 |
| 4035 | 37100.37300.37600.38300.39300.40700.41700.72200.1035300 | Door Frame Fixing | 9d | 2026-02-16 | 2026-02-25 | 4019, 4034 |  | 127460 |
| 4036 | 37100.37300.37600.38300.39300.40700.41700.72200.1035400 | Internal Plumbing Works | 8d | 2026-02-12 | 2026-02-19 | 4020, 4034 |  | 127470 |
| 4037 | 37100.37300.37600.38300.39300.40700.41700.72200.1035500 | Waterproofing | 10d | 2026-03-02 | 2026-03-12 | 4021, 4036 |  | 127480 |
| 4038 | 37100.37300.37600.38300.39300.40700.41700.72200.1035600 | Internal Plaster | 8d | 2026-02-13 | 2026-02-20 | 4022FS+0.25d |  | 127490 |
| 4039 | 37100.37300.37600.38300.39300.40700.41700.72200.1035700 | IPS flooring work | 10d | 2026-03-12 | 2026-03-22 | 4023, 4035, 4037, 4038 |  | 127500 |
| 4040 | 37100.37300.37600.38300.39300.40700.41700.72200.1035800 | Toilet dado work | 8d | 2026-03-12 | 2026-03-20 | 4024, 4037, 4038 |  | 127510 |
| 4041 | 37100.37300.37600.38300.39300.40700.41700.72200.1035900 | Toilet flooring work | 8d | 2026-03-20 | 2026-03-28 | 4025, 4040 |  | 127520 |
| 4042 | 37100.37300.37600.38300.39300.40700.41700.72200.1036000 | Living dinning flooring | 12d | 2026-04-03 | 2026-04-14 | 4026FS+0.25d |  | 127530 |
| 4043 | 37100.37300.37600.38300.39300.40700.41700.72200.1036100 | Aluminium door-window fixing | 12d | 2026-05-29 | 2026-06-10 | 4027FS+0.25d |  | 127540 |
| 4044 | 37100.37300.37600.38300.39300.40700.41700.72200.1036200 | Putty primer coat | 6d | 2026-04-15 | 2026-04-20 | 4028, 4042 |  | 127550 |
| 4045 | 37100.37300.37600.38300.39300.40700.41700.72200.1036300 | Door shutter fixing | 8d | 2026-04-15 | 2026-04-22 | 4029, 4042 |  | 127560 |
| 4046 | 37100.37300.37600.38300.39300.40700.41700.72200.1036400 | Electrical wiring work | 8d | 2027-07-04 | 2027-07-12 | 4030, 4045 |  | 127570 |
| 4047 | 37100.37300.37600.38300.39300.40700.41700.72200.1036500 | Painting 1st coat | 8d | 2027-07-12 | 2027-07-20 | 4031, 4044, 4045, 4046 |  | 127580 |
| 4048 | 37100.37300.37600.38300.39300.40700.41700.72200.1036600 | False ceiling | 8d | 2027-07-20 | 2027-07-28 | 4032, 4047 |  | 127590 |
| 4049 | 37100.37300.37600.38300.39300.40700.41700.72300 | **8th Floor** | 494.25d | 2026-02-12 | 2027-08-05 |  | start no earlier than 2026-02-12 | 123050 |
| 4050 | 37100.37300.37600.38300.39300.40700.41700.72300.1036700 | Block Work | 8d | 2026-02-12 | 2026-02-20 | 4034FS+0.25d |  | 127600 |
| 4051 | 37100.37300.37600.38300.39300.40700.41700.72300.1036800 | Door Frame Fixing | 9d | 2026-02-25 | 2026-03-06 | 4035, 4050 |  | 127620 |
| 4052 | 37100.37300.37600.38300.39300.40700.41700.72300.1036900 | Internal Plumbing Works | 8d | 2026-02-20 | 2026-02-28 | 4036, 4050 |  | 127630 |
| 4053 | 37100.37300.37600.38300.39300.40700.41700.72300.1037000 | Waterproofing | 10d | 2026-03-12 | 2026-03-22 | 4037, 4052 |  | 127640 |
| 4054 | 37100.37300.37600.38300.39300.40700.41700.72300.1037100 | Internal Plaster | 8d | 2026-02-21 | 2026-03-01 | 4038FS+0.25d |  | 127650 |
| 4055 | 37100.37300.37600.38300.39300.40700.41700.72300.1037200 | IPS flooring work | 10d | 2026-03-22 | 2026-04-01 | 4039, 4051, 4053, 4054 |  | 127660 |
| 4056 | 37100.37300.37600.38300.39300.40700.41700.72300.1037300 | Toilet dado work | 8d | 2026-03-22 | 2026-03-30 | 4040, 4053, 4054 |  | 127670 |
| 4057 | 37100.37300.37600.38300.39300.40700.41700.72300.1037400 | Toilet flooring work | 8d | 2026-03-30 | 2026-04-07 | 4041, 4056 |  | 127680 |
| 4058 | 37100.37300.37600.38300.39300.40700.41700.72300.1037500 | Living dinning flooring | 12d | 2026-04-15 | 2026-04-27 | 4042FS+0.25d |  | 127690 |
| 4059 | 37100.37300.37600.38300.39300.40700.41700.72300.1037600 | Aluminium door-window fixing | 12d | 2026-06-11 | 2026-06-22 | 4043FS+0.25d |  | 127700 |
| 4060 | 37100.37300.37600.38300.39300.40700.41700.72300.1037700 | Putty primer coat | 6d | 2026-04-27 | 2026-05-03 | 4044, 4058 |  | 127710 |
| 4061 | 37100.37300.37600.38300.39300.40700.41700.72300.1037800 | Door shutter fixing | 8d | 2026-04-27 | 2026-05-05 | 4045, 4058 |  | 127720 |
| 4062 | 37100.37300.37600.38300.39300.40700.41700.72300.1037900 | Electrical wiring work | 8d | 2027-07-12 | 2027-07-20 | 4046, 4061 |  | 127730 |
| 4063 | 37100.37300.37600.38300.39300.40700.41700.72300.1038000 | Painting 1st coat | 8d | 2027-07-20 | 2027-07-28 | 4047, 4060, 4061, 4062 |  | 127740 |
| 4064 | 37100.37300.37600.38300.39300.40700.41700.72300.1038100 | False ceiling | 8d | 2027-07-28 | 2027-08-05 | 4048, 4063 |  | 127750 |

| ID | WBS | Task | Duration | Start | Finish | Predecessors | Constraint | Unique_Task_ID |
| --- | --- | --- | --- | --- | --- | --- | --- | --- |
| 4065 | 37100.37300.37600.38300.39300.40700.41700.72400 | **9th Floor** | 494d | 2026-02-20 | 2027-08-13 |  | start no earlier than 2026-02-20 | 123060 |
| 4066 | 37100.37300.37600.38300.39300.40700.41700.72400.1038200 | Block Work | 7d | 2026-02-20 | 2026-02-27 | 4050FS+0.25d |  | 127760 |
| 4067 | 37100.37300.37600.38300.39300.40700.41700.72400.1038300 | Door Frame Fixing | 9d | 2026-03-06 | 2026-03-15 | 4051, 4066 |  | 127780 |
| 4068 | 37100.37300.37600.38300.39300.40700.41700.72400.1038400 | Internal Plumbing Works | 8d | 2026-02-28 | 2026-03-08 | 4052, 4066 |  | 127790 |
| 4069 | 37100.37300.37600.38300.39300.40700.41700.72400.1038500 | Waterproofing | 10d | 2026-03-22 | 2026-04-01 | 4053, 4068 |  | 127800 |
| 4070 | 37100.37300.37600.38300.39300.40700.41700.72400.1038600 | Internal Plaster | 7d | 2026-03-01 | 2026-03-08 | 4054FS+0.25d |  | 127810 |
| 4071 | 37100.37300.37600.38300.39300.40700.41700.72400.1038700 | IPS flooring work | 10d | 2026-04-01 | 2026-04-11 | 4055, 4067, 4069, 4070 |  | 127820 |
| 4072 | 37100.37300.37600.38300.39300.40700.41700.72400.1038800 | Toilet dado work | 8d | 2026-04-01 | 2026-04-09 | 4056, 4069, 4070 |  | 127830 |
| 4073 | 37100.37300.37600.38300.39300.40700.41700.72400.1038900 | Toilet flooring work | 8d | 2026-04-09 | 2026-04-17 | 4057, 4072 |  | 127840 |
| 4074 | 37100.37300.37600.38300.39300.40700.41700.72400.1039000 | Living dinning flooring | 8d | 2026-04-27 | 2026-05-05 | 4058FS+0.25d |  | 127850 |
| 4075 | 37100.37300.37600.38300.39300.40700.41700.72400.1039100 | Aluminium door-window fixing | 8d | 2026-06-23 | 2026-07-01 | 4059FS+0.25d |  | 127860 |
| 4076 | 37100.37300.37600.38300.39300.40700.41700.72400.1039200 | Putty primer coat | 6d | 2026-05-05 | 2026-05-11 | 4060, 4074 |  | 127870 |
| 4077 | 37100.37300.37600.38300.39300.40700.41700.72400.1039300 | Door shutter fixing | 8d | 2026-05-05 | 2026-05-13 | 4061, 4074 |  | 127880 |
| 4078 | 37100.37300.37600.38300.39300.40700.41700.72400.1039400 | Electrical wiring work | 8d | 2027-07-20 | 2027-07-28 | 4062, 4077 |  | 127890 |
| 4079 | 37100.37300.37600.38300.39300.40700.41700.72400.1039500 | Painting 1st coat | 8d | 2027-07-28 | 2027-08-05 | 4063, 4076, 4077, 4078 |  | 127900 |
| 4080 | 37100.37300.37600.38300.39300.40700.41700.72400.1039600 | False ceiling | 8d | 2027-08-05 | 2027-08-13 | 4064, 4079 |  | 127910 |
| 4081 | 37100.37300.37600.38300.39300.40700.41700.72500 | **10th Floor** | 494.75d | 2026-02-27 | 2027-08-21 |  | start no earlier than 2026-02-27 | 123070 |
| 4082 | 37100.37300.37600.38300.39300.40700.41700.72500.1039700 | Block Work | 7d | 2026-02-27 | 2026-03-06 | 4066FS+0.25d |  | 127920 |
| 4083 | 37100.37300.37600.38300.39300.40700.41700.72500.1039800 | Door Frame Fixing | 9d | 2026-03-15 | 2026-03-24 | 4067, 4082 |  | 127940 |
| 4084 | 37100.37300.37600.38300.39300.40700.41700.72500.1039900 | Internal Plumbing Works | 8d | 2026-03-08 | 2026-03-16 | 4068, 4082 |  | 127950 |
| 4085 | 37100.37300.37600.38300.39300.40700.41700.72500.1040000 | Waterproofing | 10d | 2026-04-01 | 2026-04-11 | 4069, 4084 |  | 127960 |
| 4086 | 37100.37300.37600.38300.39300.40700.41700.72500.1040100 | Internal Plaster | 7d | 2026-03-08 | 2026-03-15 | 4070FS+0.25d |  | 127970 |
| 4087 | 37100.37300.37600.38300.39300.40700.41700.72500.1040200 | IPS flooring work | 10d | 2026-04-11 | 2026-04-21 | 4071, 4083, 4085, 4086 |  | 127980 |
| 4088 | 37100.37300.37600.38300.39300.40700.41700.72500.1040300 | Toilet dado work | 8d | 2026-04-11 | 2026-04-19 | 4072, 4085, 4086 |  | 127990 |
| 4089 | 37100.37300.37600.38300.39300.40700.41700.72500.1040400 | Toilet flooring work | 8d | 2026-04-19 | 2026-04-27 | 4073, 4088 |  | 128000 |
| 4090 | 37100.37300.37600.38300.39300.40700.41700.72500.1040500 | Living dinning flooring | 8d | 2026-05-05 | 2026-05-13 | 4074FS+0.25d |  | 128010 |
| 4091 | 37100.37300.37600.38300.39300.40700.41700.72500.1040600 | Aluminium door-window fixing | 8d | 2026-07-01 | 2026-07-09 | 4075FS+0.25d |  | 128020 |
| 4092 | 37100.37300.37600.38300.39300.40700.41700.72500.1040700 | Putty primer coat | 6d | 2026-05-13 | 2026-05-19 | 4076, 4090 |  | 128030 |
| 4093 | 37100.37300.37600.38300.39300.40700.41700.72500.1040800 | Door shutter fixing | 8d | 2026-05-13 | 2026-05-21 | 4077, 4090 |  | 128040 |
| 4094 | 37100.37300.37600.38300.39300.40700.41700.72500.1040900 | Electrical wiring work | 8d | 2027-07-28 | 2027-08-05 | 4078, 4093 |  | 128050 |
| 4095 | 37100.37300.37600.38300.39300.40700.41700.72500.1041000 | Painting 1st coat | 8d | 2027-08-05 | 2027-08-13 | 4079, 4092, 4093, 4094 |  | 128060 |
| 4096 | 37100.37300.37600.38300.39300.40700.41700.72500.1041100 | False ceiling | 8d | 2027-08-13 | 2027-08-21 | 4080, 4095 |  | 128070 |

| ID | WBS | Task | Duration | Start | Finish | Predecessors | Constraint | Unique_Task_ID |
| --- | --- | --- | --- | --- | --- | --- | --- | --- |
| 4097 | 37100.37300.37600.38300.39300.40700.41700.72600 | **11th Floor** | 495.5d | 2026-03-07 | 2027-08-29 |  | start no earlier than 2026-03-07 | 123080 |
| 4098 | 37100.37300.37600.38300.39300.40700.41700.72600.1041200 | Block Work | 7d | 2026-03-07 | 2026-03-13 | 4082FS+0.25d |  | 128080 |
| 4099 | 37100.37300.37600.38300.39300.40700.41700.72600.1041300 | Door Frame Fixing | 9d | 2026-03-24 | 2026-04-02 | 4083, 4098 |  | 128100 |
| 4100 | 37100.37300.37600.38300.39300.40700.41700.72600.1041400 | Internal Plumbing Works | 8d | 2026-03-16 | 2026-03-24 | 4084, 4098 |  | 128110 |
| 4101 | 37100.37300.37600.38300.39300.40700.41700.72600.1041500 | Waterproofing | 10d | 2026-04-11 | 2026-04-21 | 4085, 4100 |  | 128120 |
| 4102 | 37100.37300.37600.38300.39300.40700.41700.72600.1041600 | Internal Plaster | 7d | 2026-03-16 | 2026-03-22 | 4086FS+0.25d |  | 128130 |
| 4103 | 37100.37300.37600.38300.39300.40700.41700.72600.1041700 | IPS flooring work | 10d | 2026-04-21 | 2026-05-01 | 4087, 4099, 4100, 4101 |  | 128140 |
| 4104 | 37100.37300.37600.38300.39300.40700.41700.72600.1041800 | Toilet dado work | 8d | 2026-04-21 | 2026-04-29 | 4088, 4101, 4102 |  | 128150 |
| 4105 | 37100.37300.37600.38300.39300.40700.41700.72600.1041900 | Toilet flooring work | 8d | 2026-04-29 | 2026-05-07 | 4089, 4104 |  | 128160 |
| 4106 | 37100.37300.37600.38300.39300.40700.41700.72600.1042000 | Living dinning flooring | 8d | 2026-05-14 | 2026-05-21 | 4090FS+0.25d |  | 128170 |
| 4107 | 37100.37300.37600.38300.39300.40700.41700.72600.1042100 | Aluminium door-window fixing | 8d | 2026-07-09 | 2026-07-17 | 4091FS+0.25d |  | 128180 |
| 4108 | 37100.37300.37600.38300.39300.40700.41700.72600.1042200 | Putty primer coat | 6d | 2026-05-22 | 2026-05-27 | 4092, 4106 |  | 128190 |
| 4109 | 37100.37300.37600.38300.39300.40700.41700.72600.1042300 | Door shutter fixing | 8d | 2026-05-22 | 2026-05-29 | 4093, 4106 |  | 128200 |
| 4110 | 37100.37300.37600.38300.39300.40700.41700.72600.1042400 | Electrical wiring work | 8d | 2027-08-05 | 2027-08-13 | 4094, 4109 |  | 128210 |
| 4111 | 37100.37300.37600.38300.39300.40700.41700.72600.1042500 | Painting 1st coat | 8d | 2027-08-13 | 2027-08-21 | 4095, 4108, 4109, 4110 |  | 128220 |
| 4112 | 37100.37300.37600.38300.39300.40700.41700.72600.1042600 | False ceiling | 8d | 2027-08-21 | 2027-08-29 | 4096, 4111 |  | 128230 |
| 4113 | 37100.37300.37600.38300.39300.40700.41700.72700 | **12th Floor** | 496.25d | 2026-03-14 | 2027-09-06 |  | start no earlier than 2026-03-14 | 123090 |
| 4114 | 37100.37300.37600.38300.39300.40700.41700.72700.1042700 | Block Work | 7d | 2026-03-14 | 2026-03-21 | 4098FS+0.25d |  | 128240 |
| 4115 | 37100.37300.37600.38300.39300.40700.41700.72700.1042800 | Door Frame Fixing | 9d | 2026-04-02 | 2026-04-11 | 4099, 4114 |  | 128260 |
| 4116 | 37100.37300.37600.38300.39300.40700.41700.72700.1042900 | Internal Plumbing Works | 8d | 2026-03-24 | 2026-04-01 | 4100, 4114 |  | 128270 |
| 4117 | 37100.37300.37600.38300.39300.40700.41700.72700.1043000 | Waterproofing | 10d | 2026-04-21 | 2026-05-01 | 4101, 4116 |  | 128280 |
| 4118 | 37100.37300.37600.38300.39300.40700.41700.72700.1043100 | Internal Plaster | 7d | 2026-03-23 | 2026-03-30 | 4102FS+0.25d |  | 128290 |
| 4119 | 37100.37300.37600.38300.39300.40700.41700.72700.1043200 | IPS flooring work | 10d | 2026-05-01 | 2026-05-11 | 4103, 4115, 4116, 4117 |  | 128300 |
| 4120 | 37100.37300.37600.38300.39300.40700.41700.72700.1043300 | Toilet dado work | 8d | 2026-05-01 | 2026-05-09 | 4104, 4117, 4118 |  | 128310 |
| 4121 | 37100.37300.37600.38300.39300.40700.41700.72700.1043400 | Toilet flooring work | 8d | 2026-05-09 | 2026-05-17 | 4105, 4120 |  | 128320 |
| 4122 | 37100.37300.37600.38300.39300.40700.41700.72700.1043500 | Living dinning flooring | 8d | 2026-05-22 | 2026-05-30 | 4106FS+0.25d |  | 128330 |
| 4123 | 37100.37300.37600.38300.39300.40700.41700.72700.1043600 | Aluminium door-window fixing | 8d | 2026-07-18 | 2026-07-25 | 4107FS+0.25d |  | 128340 |
| 4124 | 37100.37300.37600.38300.39300.40700.41700.72700.1043700 | Putty primer coat | 6d | 2026-05-30 | 2026-06-05 | 4108, 4122 |  | 128350 |
| 4125 | 37100.37300.37600.38300.39300.40700.41700.72700.1043800 | Door shutter fixing | 8d | 2026-05-30 | 2026-06-07 | 4109, 4122 |  | 128360 |
| 4126 | 37100.37300.37600.38300.39300.40700.41700.72700.1043900 | Electrical wiring work | 8d | 2027-08-13 | 2027-08-21 | 4110, 4125 |  | 128370 |
| 4127 | 37100.37300.37600.38300.39300.40700.41700.72700.1044000 | Painting 1st coat | 8d | 2027-08-21 | 2027-08-29 | 4111, 4124, 4125, 4126 |  | 128380 |
| 4128 | 37100.37300.37600.38300.39300.40700.41700.72700.1044100 | False ceiling | 8d | 2027-08-29 | 2027-09-06 | 4112, 4127 |  | 128390 |

| ID | WBS | Task | Duration | Start | Finish | Predecessors | Constraint | Unique_Task_ID |
| --- | --- | --- | --- | --- | --- | --- | --- | --- |
| 4129 | 37100.37300.37600.38300.39300.40700.41700.72800 | **13th Floor** | 497d | 2026-03-21 | 2027-09-14 |  | start no earlier than 2026-03-21 | 123100 |
| 4130 | 37100.37300.37600.38300.39300.40700.41700.72800.1044200 | Block Work | 7d | 2026-03-21 | 2026-03-28 | 4114FS+0.25d |  | 128400 |
| 4131 | 37100.37300.37600.38300.39300.40700.41700.72800.1044300 | Door Frame Fixing | 9d | 2026-04-11 | 2026-04-20 | 4115, 4130 |  | 128420 |
| 4132 | 37100.37300.37600.38300.39300.40700.41700.72800.1044400 | Internal Plumbing Works | 8d | 2026-04-01 | 2026-04-09 | 4116, 4130 |  | 128430 |
| 4133 | 37100.37300.37600.38300.39300.40700.41700.72800.1044500 | Waterproofing | 10d | 2026-05-01 | 2026-05-11 | 4117, 4132 |  | 128440 |
| 4134 | 37100.37300.37600.38300.39300.40700.41700.72800.1044600 | Internal Plaster | 7d | 2026-03-30 | 2026-04-06 | 4118FS+0.25d |  | 128450 |
| 4135 | 37100.37300.37600.38300.39300.40700.41700.72800.1044700 | IPS flooring work | 10d | 2026-05-11 | 2026-05-21 | 4119, 4131, 4133, 4134 |  | 128460 |
| 4136 | 37100.37300.37600.38300.39300.40700.41700.72800.1044800 | Toilet dado work | 8d | 2026-05-11 | 2026-05-19 | 4120, 4133, 4134 |  | 128470 |
| 4137 | 37100.37300.37600.38300.39300.40700.41700.72800.1044900 | Toilet flooring work | 8d | 2026-05-19 | 2026-05-27 | 4121, 4136 |  | 128480 |
| 4138 | 37100.37300.37600.38300.39300.40700.41700.72800.1045000 | Living dinning flooring | 8d | 2026-05-30 | 2026-06-07 | 4122FS+0.25d |  | 128490 |
| 4139 | 37100.37300.37600.38300.39300.40700.41700.72800.1045100 | Aluminium door-window fixing | 8d | 2026-07-26 | 2026-08-03 | 4123FS+0.25d |  | 128500 |
| 4140 | 37100.37300.37600.38300.39300.40700.41700.72800.1045200 | Putty primer coat | 6d | 2026-06-07 | 2026-06-13 | 4124, 4138 |  | 128510 |
| 4141 | 37100.37300.37600.38300.39300.40700.41700.72800.1045300 | Door shutter fixing | 8d | 2026-06-07 | 2026-06-15 | 4125, 4138 |  | 128520 |
| 4142 | 37100.37300.37600.38300.39300.40700.41700.72800.1045400 | Electrical wiring work | 8d | 2027-08-21 | 2027-08-29 | 4126, 4141 |  | 128530 |
| 4143 | 37100.37300.37600.38300.39300.40700.41700.72800.1045500 | Painting 1st coat | 8d | 2027-08-29 | 2027-09-06 | 4127, 4140, 4141, 4142 |  | 128540 |
| 4144 | 37100.37300.37600.38300.39300.40700.41700.72800.1045600 | False ceiling | 8d | 2027-09-06 | 2027-09-14 | 4128, 4143 |  | 128550 |
| 4145 | 37100.37300.37600.38300.39300.40700.41700.72900 | **14th Floor** | 497.75d | 2026-03-28 | 2027-09-22 |  | start no earlier than 2026-03-28 | 123110 |
| 4146 | 37100.37300.37600.38300.39300.40700.41700.72900.1045700 | Block Work | 8d | 2026-03-28 | 2026-04-05 | 4130FS+0.25d |  | 128560 |
| 4147 | 37100.37300.37600.38300.39300.40700.41700.72900.1045800 | Door Frame Fixing | 9d | 2026-04-20 | 2026-04-29 | 4131, 4146 |  | 128580 |
| 4148 | 37100.37300.37600.38300.39300.40700.41700.72900.1045900 | Internal Plumbing Works | 8d | 2026-04-09 | 2026-04-17 | 4132, 4146 |  | 128590 |
| 4149 | 37100.37300.37600.38300.39300.40700.41700.72900.1046000 | Waterproofing | 10d | 2026-05-11 | 2026-05-21 | 4133, 4148 |  | 128600 |
| 4150 | 37100.37300.37600.38300.39300.40700.41700.72900.1046100 | Internal Plaster | 8d | 2026-04-06 | 2026-04-14 | 4134FS+0.25d |  | 128610 |
| 4151 | 37100.37300.37600.38300.39300.40700.41700.72900.1046200 | IPS flooring work | 10d | 2026-05-21 | 2026-05-31 | 4135, 4147, 4148, 4149 |  | 128620 |
| 4152 | 37100.37300.37600.38300.39300.40700.41700.72900.1046300 | Toilet dado work | 8d | 2026-05-21 | 2026-05-29 | 4136, 4149, 4150 |  | 128630 |
| 4153 | 37100.37300.37600.38300.39300.40700.41700.72900.1046400 | Toilet flooring work | 8d | 2026-05-29 | 2026-06-06 | 4137, 4152 |  | 128640 |
| 4154 | 37100.37300.37600.38300.39300.40700.41700.72900.1046500 | Living dinning flooring | 8d | 2026-06-07 | 2026-06-15 | 4138FS+0.25d |  | 128650 |
| 4155 | 37100.37300.37600.38300.39300.40700.41700.72900.1046600 | Aluminium door-window fixing | 8d | 2026-08-03 | 2026-08-11 | 4139FS+0.25d |  | 128660 |
| 4156 | 37100.37300.37600.38300.39300.40700.41700.72900.1046700 | Putty primer coat | 6d | 2026-06-15 | 2026-06-21 | 4140, 4154 |  | 128670 |
| 4157 | 37100.37300.37600.38300.39300.40700.41700.72900.1046800 | Door shutter fixing | 8d | 2026-06-15 | 2026-06-23 | 4141, 4154 |  | 128680 |
| 4158 | 37100.37300.37600.38300.39300.40700.41700.72900.1046900 | Electrical wiring work | 8d | 2027-08-29 | 2027-09-06 | 4142, 4157 |  | 128690 |
| 4159 | 37100.37300.37600.38300.39300.40700.41700.72900.1047000 | Painting 1st coat | 8d | 2027-09-06 | 2027-09-14 | 4143, 4156, 4157, 4158 |  | 128700 |
| 4160 | 37100.37300.37600.38300.39300.40700.41700.72900.1047100 | False ceiling | 8d | 2027-09-14 | 2027-09-22 | 4144, 4159 |  | 128710 |

| ID | WBS | Task | Duration | Start | Finish | Predecessors | Constraint | Unique_Task_ID |
| --- | --- | --- | --- | --- | --- | --- | --- | --- |
| 4161 | 37100.37300.37600.38300.39300.40700.41700.73000 | **15th Floor** | 497.5d | 2026-04-06 | 2027-09-30 |  | start no earlier than 2026-04-06 | 123120 |
| 4162 | 37100.37300.37600.38300.39300.40700.41700.73000.1047200 | Block Work | 8d | 2026-04-06 | 2026-04-13 | 4146FS+0.25d |  | 128720 |
| 4163 | 37100.37300.37600.38300.39300.40700.41700.73000.1047300 | Door Frame Fixing | 9d | 2026-04-29 | 2026-05-08 | 4147, 4162 |  | 128740 |
| 4164 | 37100.37300.37600.38300.39300.40700.41700.73000.1047400 | Internal Plumbing Works | 8d | 2026-04-17 | 2026-04-25 | 4148, 4162 |  | 128750 |
| 4165 | 37100.37300.37600.38300.39300.40700.41700.73000.1047500 | Waterproofing | 10d | 2026-05-21 | 2026-05-31 | 4149, 4164 |  | 128760 |
| 4166 | 37100.37300.37600.38300.39300.40700.41700.73000.1047600 | Internal Plaster | 8d | 2026-04-15 | 2026-04-22 | 4150FS+0.25d |  | 128770 |
| 4167 | 37100.37300.37600.38300.39300.40700.41700.73000.1047700 | IPS flooring work | 10d | 2026-05-31 | 2026-06-10 | 4151, 4163, 4164, 4165 |  | 128780 |
| 4168 | 37100.37300.37600.38300.39300.40700.41700.73000.1047800 | Toilet dado work | 8d | 2026-05-31 | 2026-06-08 | 4152, 4165, 4166 |  | 128790 |
| 4169 | 37100.37300.37600.38300.39300.40700.41700.73000.1047900 | Toilet flooring work | 8d | 2026-06-08 | 2026-06-16 | 4153, 4168 |  | 128800 |
| 4170 | 37100.37300.37600.38300.39300.40700.41700.73000.1048000 | Living dinning flooring | 8d | 2026-06-16 | 2026-06-23 | 4154FS+0.25d |  | 128810 |
| 4171 | 37100.37300.37600.38300.39300.40700.41700.73000.1048100 | Aluminium door-window fixing | 8d | 2026-08-11 | 2026-08-19 | 4155FS+0.25d |  | 128820 |
| 4172 | 37100.37300.37600.38300.39300.40700.41700.73000.1048200 | Putty primer coat | 6d | 2026-06-24 | 2026-06-29 | 4156, 4170 |  | 128830 |
| 4173 | 37100.37300.37600.38300.39300.40700.41700.73000.1048300 | Door shutter fixing | 8d | 2026-06-24 | 2026-07-01 | 4157, 4170 |  | 128840 |
| 4174 | 37100.37300.37600.38300.39300.40700.41700.73000.1048400 | Electrical wiring work | 8d | 2027-09-06 | 2027-09-14 | 4158, 4173 |  | 128850 |
| 4175 | 37100.37300.37600.38300.39300.40700.41700.73000.1048500 | Painting 1st coat | 8d | 2027-09-14 | 2027-09-22 | 4159, 4172, 4173, 4174 |  | 128860 |
| 4176 | 37100.37300.37600.38300.39300.40700.41700.73000.1048600 | False ceiling | 8d | 2027-09-22 | 2027-09-30 | 4160, 4175 |  | 128870 |
| 4177 | 37100.37300.37600.38300.39300.40700.41700.73100 | **16th Floor** | 497.25d | 2026-04-14 | 2027-10-08 |  | start no earlier than 2026-04-14 | 123130 |
| 4178 | 37100.37300.37600.38300.39300.40700.41700.73100.1048700 | Block Work | 8d | 2026-04-14 | 2026-04-22 | 4162FS+0.25d |  | 128880 |
| 4179 | 37100.37300.37600.38300.39300.40700.41700.73100.1048800 | Door Frame Fixing | 9d | 2026-05-08 | 2026-05-17 | 4163, 4178 |  | 128900 |
| 4180 | 37100.37300.37600.38300.39300.40700.41700.73100.1048900 | Internal Plumbing Works | 8d | 2026-04-25 | 2026-05-03 | 4164, 4178 |  | 128910 |
| 4181 | 37100.37300.37600.38300.39300.40700.41700.73100.1049000 | Waterproofing | 10d | 2026-05-31 | 2026-06-10 | 4165, 4180 |  | 128920 |
| 4182 | 37100.37300.37600.38300.39300.40700.41700.73100.1049100 | Internal Plaster | 8d | 2026-04-23 | 2026-05-01 | 4166FS+0.25d |  | 128930 |
| 4183 | 37100.37300.37600.38300.39300.40700.41700.73100.1049200 | IPS flooring work | 10d | 2026-06-10 | 2026-06-20 | 4167, 4179, 4180, 4181 |  | 128940 |
| 4184 | 37100.37300.37600.38300.39300.40700.41700.73100.1049300 | Toilet dado work | 12d | 2026-06-10 | 2026-06-22 | 4168, 4181, 4182 |  | 128950 |
| 4185 | 37100.37300.37600.38300.39300.40700.41700.73100.1049400 | Toilet flooring work | 12d | 2026-06-22 | 2026-07-04 | 4169, 4184 |  | 128960 |
| 4186 | 37100.37300.37600.38300.39300.40700.41700.73100.1049500 | Living dinning flooring | 8d | 2026-06-24 | 2026-07-02 | 4170FS+0.25d |  | 128970 |
| 4187 | 37100.37300.37600.38300.39300.40700.41700.73100.1049600 | Aluminium door-window fixing | 8d | 2026-08-20 | 2026-08-27 | 4171FS+0.25d |  | 128980 |
| 4188 | 37100.37300.37600.38300.39300.40700.41700.73100.1049700 | Putty primer coat | 6d | 2026-07-02 | 2026-07-08 | 4172, 4186 |  | 128990 |
| 4189 | 37100.37300.37600.38300.39300.40700.41700.73100.1049800 | Door shutter fixing | 8d | 2026-07-02 | 2026-07-10 | 4173, 4186 |  | 129000 |
| 4190 | 37100.37300.37600.38300.39300.40700.41700.73100.1049900 | Electrical wiring work | 8d | 2027-09-14 | 2027-09-22 | 4174, 4189 |  | 129010 |
| 4191 | 37100.37300.37600.38300.39300.40700.41700.73100.1050000 | Painting 1st coat | 8d | 2027-09-22 | 2027-09-30 | 4175, 4188, 4189, 4190 |  | 129020 |
| 4192 | 37100.37300.37600.38300.39300.40700.41700.73100.1050100 | False ceiling | 8d | 2027-09-30 | 2027-10-08 | 4176, 4191 |  | 129030 |

| ID | WBS | Task | Duration | Start | Finish | Predecessors | Constraint | Unique_Task_ID |
| --- | --- | --- | --- | --- | --- | --- | --- | --- |
| 4193 | 37100.37300.37600.38300.39300.40700.41700.73200 | **17th Floor** | 497d | 2026-04-22 | 2027-10-16 |  | start no earlier than 2026-04-22 | 123140 |
| 4194 | 37100.37300.37600.38300.39300.40700.41700.73200.1050200 | Block Work | 7d | 2026-04-22 | 2026-04-29 | 4178FS+0.25d |  | 129040 |
| 4195 | 37100.37300.37600.38300.39300.40700.41700.73200.1050300 | Door Frame Fixing | 9d | 2026-04-29 | 2026-05-08 | 4194FS+0.25d |  | 129060 |
| 4196 | 37100.37300.37600.38300.39300.40700.41700.73200.1050400 | Internal Plumbing Works | 8d | 2026-05-03 | 2026-05-11 | 4180, 4194 |  | 129070 |
| 4197 | 37100.37300.37600.38300.39300.40700.41700.73200.1050500 | Waterproofing | 10d | 2026-06-10 | 2026-06-20 | 4181, 4196 |  | 129080 |
| 4198 | 37100.37300.37600.38300.39300.40700.41700.73200.1050600 | Internal Plaster | 7d | 2026-05-01 | 2026-05-08 | 4182FS+0.25d |  | 129090 |
| 4199 | 37100.37300.37600.38300.39300.40700.41700.73200.1050700 | IPS flooring work | 10d | 2026-06-20 | 2026-06-30 | 4183, 4195, 4196, 4197 |  | 129100 |
| 4200 | 37100.37300.37600.38300.39300.40700.41700.73200.1050800 | Toilet dado work | 8d | 2026-06-22 | 2026-06-30 | 4184, 4197, 4198 |  | 129110 |
| 4201 | 37100.37300.37600.38300.39300.40700.41700.73200.1050900 | Toilet flooring work | 8d | 2026-07-04 | 2026-07-12 | 4185, 4200 |  | 129120 |
| 4202 | 37100.37300.37600.38300.39300.40700.41700.73200.1051000 | Living dinning flooring | 8d | 2026-07-02 | 2026-07-10 | 4186FS+0.25d |  | 129130 |
| 4203 | 37100.37300.37600.38300.39300.40700.41700.73200.1051100 | Aluminium door-window fixing | 8d | 2026-08-28 | 2026-09-05 | 4187FS+0.25d |  | 129140 |
| 4204 | 37100.37300.37600.38300.39300.40700.41700.73200.1051200 | Putty primer coat | 6d | 2026-07-10 | 2026-07-16 | 4188, 4202 |  | 129150 |
| 4205 | 37100.37300.37600.38300.39300.40700.41700.73200.1051300 | Door shutter fixing | 8d | 2026-07-10 | 2026-07-18 | 4189, 4202 |  | 129160 |
| 4206 | 37100.37300.37600.38300.39300.40700.41700.73200.1051400 | Electrical wiring work | 8d | 2027-09-22 | 2027-09-30 | 4190, 4205 |  | 129170 |
| 4207 | 37100.37300.37600.38300.39300.40700.41700.73200.1051500 | Painting 1st coat | 8d | 2027-09-30 | 2027-10-08 | 4191, 4204, 4205, 4206 |  | 129180 |
| 4208 | 37100.37300.37600.38300.39300.40700.41700.73200.1051600 | False ceiling | 8d | 2027-10-08 | 2027-10-16 | 4192, 4207 |  | 129190 |
| 4209 | 37100.37300.37600.38300.39300.40700.41700.73300 | **18th Floor** | 497.75d | 2026-04-29 | 2027-10-24 |  | start no earlier than 2026-04-29 | 122970 |
| 4210 | 37100.37300.37600.38300.39300.40700.41700.73300.1051700 | Block Work | 8d | 2026-04-29 | 2026-05-07 | 4194FS+0.25d |  | 129200 |
| 4211 | 37100.37300.37600.38300.39300.40700.41700.73300.1051800 | Door Frame Fixing | 9d | 2026-05-08 | 2026-05-17 | 4195, 4210 |  | 129230 |
| 4212 | 37100.37300.37600.38300.39300.40700.41700.73300.1051900 | Internal Plumbing Works | 8d | 2026-05-11 | 2026-05-19 | 4196, 4210 |  | 129240 |
| 4213 | 37100.37300.37600.38300.39300.40700.41700.73300.1052000 | Waterproofing | 10d | 2026-06-20 | 2026-06-30 | 4197, 4212 |  | 129250 |
| 4214 | 37100.37300.37600.38300.39300.40700.41700.73300.1052100 | Internal Plaster | 8d | 2026-05-08 | 2026-05-16 | 4198FS+0.25d |  | 129260 |
| 4215 | 37100.37300.37600.38300.39300.40700.41700.73300.1052200 | IPS flooring work | 10d | 2026-06-30 | 2026-07-10 | 4199, 4211, 4212, 4213 |  | 129270 |
| 4216 | 37100.37300.37600.38300.39300.40700.41700.73300.1052300 | Toilet dado work | 8d | 2026-06-30 | 2026-07-08 | 4200, 4213, 4214 |  | 129280 |
| 4217 | 37100.37300.37600.38300.39300.40700.41700.73300.1052400 | Toilet flooring work | 8d | 2026-07-12 | 2026-07-20 | 4201, 4216 |  | 129290 |
| 4218 | 37100.37300.37600.38300.39300.40700.41700.73300.1052500 | Living dinning flooring | 12d | 2026-07-10 | 2026-07-22 | 4202FS+0.25d |  | 129300 |
| 4219 | 37100.37300.37600.38300.39300.40700.41700.73300.1052600 | Aluminium door-window fixing | 12d | 2026-09-05 | 2026-09-17 | 4203FS+0.25d |  | 129310 |
| 4220 | 37100.37300.37600.38300.39300.40700.41700.73300.1052700 | Putty primer coat | 6d | 2026-07-22 | 2026-07-28 | 4204, 4218 |  | 129320 |
| 4221 | 37100.37300.37600.38300.39300.40700.41700.73300.1052800 | Door shutter fixing | 8d | 2026-07-22 | 2026-07-30 | 4205, 4218 |  | 129330 |
| 4222 | 37100.37300.37600.38300.39300.40700.41700.73300.1052900 | Electrical wiring work | 8d | 2027-09-30 | 2027-10-08 | 4206, 4221 |  | 129340 |
| 4223 | 37100.37300.37600.38300.39300.40700.41700.73300.1053000 | Painting 1st coat | 8d | 2027-10-08 | 2027-10-16 | 4207, 4220, 4221, 4222 |  | 129350 |
| 4224 | 37100.37300.37600.38300.39300.40700.41700.73300.1053100 | False ceiling | 8d | 2027-10-16 | 2027-10-24 | 4208, 4223 |  | 129360 |

| ID | WBS | Task | Duration | Start | Finish | Predecessors | Constraint | Unique_Task_ID |
| --- | --- | --- | --- | --- | --- | --- | --- | --- |
| 4225 | 37100.37300.37600.38300.39300.40700.41700.73400 | **19th Floor** | 497.5d | 2026-05-08 | 2027-11-01 |  | start no earlier than 2026-05-08 | 123150 |
| 4226 | 37100.37300.37600.38300.39300.40700.41700.73400.1053200 | Block Work | 8d | 2026-05-08 | 2026-05-15 | 4210FS+0.25d |  | 129370 |
| 4227 | 37100.37300.37600.38300.39300.40700.41700.73400.1053300 | Door Frame Fixing | 9d | 2026-05-17 | 2026-05-26 | 4211, 4226 |  | 129390 |
| 4228 | 37100.37300.37600.38300.39300.40700.41700.73400.1053400 | Internal Plumbing Works | 8d | 2026-05-19 | 2026-05-27 | 4212, 4226 |  | 129400 |
| 4229 | 37100.37300.37600.38300.39300.40700.41700.73400.1053500 | Waterproofing | 10d | 2026-06-30 | 2026-07-10 | 4213, 4228 |  | 129410 |
| 4230 | 37100.37300.37600.38300.39300.40700.41700.73400.1053600 | Internal Plaster | 8d | 2026-05-17 | 2026-05-24 | 4214FS+0.25d |  | 129420 |
| 4231 | 37100.37300.37600.38300.39300.40700.41700.73400.1053700 | IPS flooring work | 10d | 2026-07-10 | 2026-07-20 | 4215, 4227, 4229, 4230 |  | 129430 |
| 4232 | 37100.37300.37600.38300.39300.40700.41700.73400.1053800 | Toilet dado work | 8d | 2026-07-10 | 2026-07-18 | 4216, 4229, 4230 |  | 129440 |
| 4233 | 37100.37300.37600.38300.39300.40700.41700.73400.1053900 | Toilet flooring work | 8d | 2026-07-20 | 2026-07-28 | 4217, 4232 |  | 129450 |
| 4234 | 37100.37300.37600.38300.39300.40700.41700.73400.1054000 | Living dinning flooring | 7d | 2026-07-23 | 2026-07-29 | 4218FS+0.25d |  | 129460 |
| 4235 | 37100.37300.37600.38300.39300.40700.41700.73400.1054100 | Aluminium door-window fixing | 12d | 2026-09-17 | 2026-09-29 | 4219, 4231, 4234 |  | 129470 |
| 4236 | 37100.37300.37600.38300.39300.40700.41700.73400.1054200 | Putty primer coat | 6d | 2026-07-30 | 2026-08-04 | 4220, 4234 |  | 129480 |
| 4237 | 37100.37300.37600.38300.39300.40700.41700.73400.1054300 | Door shutter fixing | 8d | 2026-07-30 | 2026-08-07 | 4221, 4234 |  | 129490 |
| 4238 | 37100.37300.37600.38300.39300.40700.41700.73400.1054400 | Electrical wiring work | 8d | 2027-10-08 | 2027-10-16 | 4222, 4237 |  | 129500 |
| 4239 | 37100.37300.37600.38300.39300.40700.41700.73400.1054500 | Painting 1st coat | 8d | 2027-10-16 | 2027-10-24 | 4223, 4236, 4237, 4238 |  | 129510 |
| 4240 | 37100.37300.37600.38300.39300.40700.41700.73400.1054600 | False ceiling | 8d | 2027-10-24 | 2027-11-01 | 4224, 4239 |  | 129520 |
| 4241 | 37100.37300.37600.38300.39300.40700.41700.73500 | **20th Floor** | 497.25d | 2026-05-16 | 2027-11-09 |  | start no earlier than 2026-05-16 | 123160 |
| 4242 | 37100.37300.37600.38300.39300.40700.41700.73500.1054700 | Block Work | 8d | 2026-05-16 | 2026-05-24 | 4226FS+0.25d |  | 129530 |
| 4243 | 37100.37300.37600.38300.39300.40700.41700.73500.1054800 | Door Frame Fixing | 9d | 2026-05-26 | 2026-06-04 | 4227, 4242 |  | 129550 |
| 4244 | 37100.37300.37600.38300.39300.40700.41700.73500.1054900 | Internal Plumbing Works | 8d | 2026-05-27 | 2026-06-04 | 4228, 4242 |  | 129560 |
| 4245 | 37100.37300.37600.38300.39300.40700.41700.73500.1055000 | Waterproofing | 10d | 2026-07-10 | 2026-07-20 | 4229, 4244 |  | 129570 |
| 4246 | 37100.37300.37600.38300.39300.40700.41700.73500.1055100 | Internal Plaster | 8d | 2026-05-25 | 2026-06-02 | 4230FS+0.25d |  | 129580 |
| 4247 | 37100.37300.37600.38300.39300.40700.41700.73500.1055200 | IPS flooring work | 10d | 2026-07-20 | 2026-07-30 | 4231, 4243, 4245, 4246 |  | 129590 |
| 4248 | 37100.37300.37600.38300.39300.40700.41700.73500.1055300 | Toilet dado work | 8d | 2026-07-20 | 2026-07-28 | 4232, 4245, 4246 |  | 129600 |
| 4249 | 37100.37300.37600.38300.39300.40700.41700.73500.1055400 | Toilet flooring work | 8d | 2026-07-28 | 2026-08-05 | 4233, 4248 |  | 129610 |
| 4250 | 37100.37300.37600.38300.39300.40700.41700.73500.1055500 | Living dinning flooring | 8d | 2026-07-30 | 2026-08-07 | 4234FS+0.25d |  | 129620 |
| 4251 | 37100.37300.37600.38300.39300.40700.41700.73500.1055600 | Aluminium door-window fixing | 12d | 2026-09-29 | 2026-10-11 | 4235, 4247, 4250 |  | 129630 |
| 4252 | 37100.37300.37600.38300.39300.40700.41700.73500.1055700 | Putty primer coat | 6d | 2026-08-07 | 2026-08-13 | 4236, 4250 |  | 129640 |
| 4253 | 37100.37300.37600.38300.39300.40700.41700.73500.1055800 | Door shutter fixing | 8d | 2026-08-07 | 2026-08-15 | 4237, 4250 |  | 129650 |
| 4254 | 37100.37300.37600.38300.39300.40700.41700.73500.1055900 | Electrical wiring work | 8d | 2027-10-16 | 2027-10-24 | 4238, 4253 |  | 129660 |
| 4255 | 37100.37300.37600.38300.39300.40700.41700.73500.1056000 | Painting 1st coat | 8d | 2027-10-24 | 2027-11-01 | 4239, 4252, 4253, 4254 |  | 129670 |
| 4256 | 37100.37300.37600.38300.39300.40700.41700.73500.1056100 | False ceiling | 8d | 2027-11-01 | 2027-11-09 | 4240, 4255 |  | 129680 |

| ID | WBS | Task | Duration | Start | Finish | Predecessors | Constraint | Unique_Task_ID |
| --- | --- | --- | --- | --- | --- | --- | --- | --- |
| 4257 | 37100.37300.37600.38300.39300.40700.41700.73600 | **21st Floor** | 497d | 2026-05-24 | 2027-11-17 |  | start no earlier than 2026-05-24 | 123170 |
| 4258 | 37100.37300.37600.38300.39300.40700.41700.73600.1056200 | Block Work | 8d | 2026-05-24 | 2026-06-01 | 4242FS+0.25d |  | 129690 |
| 4259 | 37100.37300.37600.38300.39300.40700.41700.73600.1056300 | Door Frame Fixing | 9d | 2026-06-04 | 2026-06-13 | 4243, 4258 |  | 129710 |
| 4260 | 37100.37300.37600.38300.39300.40700.41700.73600.1056400 | Internal Plumbing Works | 8d | 2026-06-04 | 2026-06-12 | 4244, 4258 |  | 129720 |
| 4261 | 37100.37300.37600.38300.39300.40700.41700.73600.1056500 | Waterproofing | 10d | 2026-07-20 | 2026-07-30 | 4245, 4260 |  | 129730 |
| 4262 | 37100.37300.37600.38300.39300.40700.41700.73600.1056600 | Internal Plaster | 8d | 2026-06-02 | 2026-06-10 | 4246FS+0.25d |  | 129740 |
| 4263 | 37100.37300.37600.38300.39300.40700.41700.73600.1056700 | IPS flooring work | 10d | 2026-07-30 | 2026-08-09 | 4247, 4259, 4261, 4262 |  | 129750 |
| 4264 | 37100.37300.37600.38300.39300.40700.41700.73600.1056800 | Toilet dado work | 8d | 2026-07-30 | 2026-08-07 | 4248, 4261, 4262 |  | 129760 |
| 4265 | 37100.37300.37600.38300.39300.40700.41700.73600.1056900 | Toilet flooring work | 8d | 2026-08-07 | 2026-08-15 | 4249, 4264 |  | 129770 |
| 4266 | 37100.37300.37600.38300.39300.40700.41700.73600.1057000 | Living dinning flooring | 7d | 2026-08-07 | 2026-08-14 | 4250FS+0.25d |  | 129780 |
| 4267 | 37100.37300.37600.38300.39300.40700.41700.73600.1057100 | Aluminium door-window fixing | 12d | 2026-10-11 | 2026-10-23 | 4251, 4263, 4266 |  | 129790 |
| 4268 | 37100.37300.37600.38300.39300.40700.41700.73600.1057200 | Putty primer coat | 6d | 2026-08-14 | 2026-08-20 | 4252, 4266 |  | 129800 |
| 4269 | 37100.37300.37600.38300.39300.40700.41700.73600.1057300 | Door shutter fixing | 8d | 2026-08-15 | 2026-08-23 | 4253, 4266 |  | 129810 |
| 4270 | 37100.37300.37600.38300.39300.40700.41700.73600.1057400 | Electrical wiring work | 8d | 2027-10-24 | 2027-11-01 | 4254, 4269 |  | 129820 |
| 4271 | 37100.37300.37600.38300.39300.40700.41700.73600.1057500 | Painting 1st coat | 8d | 2027-11-01 | 2027-11-09 | 4255, 4268, 4269, 4270 |  | 129830 |
| 4272 | 37100.37300.37600.38300.39300.40700.41700.73600.1057600 | False ceiling | 8d | 2027-11-09 | 2027-11-17 | 4256, 4271 |  | 129840 |
| 4273 | 37100.37300.37600.38300.39300.40700.41700.73700 | **22nd Floor** | 496.75d | 2026-06-01 | 2027-11-25 |  | start no earlier than 2026-06-01 | 123180 |
| 4274 | 37100.37300.37600.38300.39300.40700.41700.73700.1057700 | Block Work | 8d | 2026-06-01 | 2026-06-09 | 4258FS+0.25d |  | 129850 |
| 4275 | 37100.37300.37600.38300.39300.40700.41700.73700.1057800 | Door Frame Fixing | 9d | 2026-06-13 | 2026-06-22 | 4259, 4274 |  | 129870 |
| 4276 | 37100.37300.37600.38300.39300.40700.41700.73700.1057900 | Internal Plumbing Works | 8d | 2026-06-12 | 2026-06-20 | 4260, 4274 |  | 129880 |
| 4277 | 37100.37300.37600.38300.39300.40700.41700.73700.1058000 | Waterproofing | 10d | 2026-07-30 | 2026-08-09 | 4261, 4276 |  | 129890 |
| 4278 | 37100.37300.37600.38300.39300.40700.41700.73700.1058100 | Internal Plaster | 8d | 2026-06-10 | 2026-06-18 | 4262FS+0.25d |  | 129900 |
| 4279 | 37100.37300.37600.38300.39300.40700.41700.73700.1058200 | IPS flooring work | 10d | 2026-08-09 | 2026-08-19 | 4263, 4275, 4277, 4278 |  | 129910 |
| 4280 | 37100.37300.37600.38300.39300.40700.41700.73700.1058300 | Toilet dado work | 8d | 2026-08-09 | 2026-08-17 | 4264, 4277, 4278 |  | 129920 |
| 4281 | 37100.37300.37600.38300.39300.40700.41700.73700.1058400 | Toilet flooring work | 8d | 2026-08-17 | 2026-08-25 | 4265, 4280 |  | 129930 |
| 4282 | 37100.37300.37600.38300.39300.40700.41700.73700.1058500 | Living dinning flooring | 8d | 2026-08-14 | 2026-08-22 | 4266FS+0.25d |  | 129940 |
| 4283 | 37100.37300.37600.38300.39300.40700.41700.73700.1058600 | Aluminium door-window fixing | 12d | 2026-10-23 | 2026-12-19 | 4267, 4279, 4282 |  | 129950 |
| 4284 | 37100.37300.37600.38300.39300.40700.41700.73700.1058700 | Putty primer coat | 6d | 2026-08-22 | 2026-08-28 | 4268, 4282 |  | 129960 |
| 4285 | 37100.37300.37600.38300.39300.40700.41700.73700.1058800 | Door shutter fixing | 8d | 2026-08-23 | 2026-08-31 | 4269, 4282 |  | 129970 |
| 4286 | 37100.37300.37600.38300.39300.40700.41700.73700.1058900 | Electrical wiring work | 8d | 2027-11-01 | 2027-11-09 | 4270, 4285 |  | 129980 |
| 4287 | 37100.37300.37600.38300.39300.40700.41700.73700.1059000 | Painting 1st coat | 8d | 2027-11-09 | 2027-11-17 | 4271, 4284, 4285, 4286 |  | 129990 |
| 4288 | 37100.37300.37600.38300.39300.40700.41700.73700.1059100 | False ceiling | 8d | 2027-11-17 | 2027-11-25 | 4272, 4287 |  | 130000 |

| ID | WBS | Task | Duration | Start | Finish | Predecessors | Constraint | Unique_Task_ID |
| --- | --- | --- | --- | --- | --- | --- | --- | --- |
| 4289 | 37100.37300.37600.38300.39300.40700.41700.73800 | **23rd Floor** | 496.5d | 2026-06-10 | 2027-12-03 |  | start no earlier than 2026-06-10 | 123190 |
| 4290 | 37100.37300.37600.38300.39300.40700.41700.73800.1059200 | Block Work | 8d | 2026-06-10 | 2026-06-17 | 4274FS+0.25d |  | 130010 |
| 4291 | 37100.37300.37600.38300.39300.40700.41700.73800.1059300 | Door Frame Fixing | 9d | 2026-06-22 | 2026-07-01 | 4275, 4290 |  | 7598193 |
| 4292 | 37100.37300.37600.38300.39300.40700.41700.73800.1059400 | Internal Plumbing Works | 8d | 2026-06-20 | 2026-06-28 | 4276, 4290 |  | 7598203 |
| 4293 | 37100.37300.37600.38300.39300.40700.41700.73800.1059500 | Waterproofing | 10d | 2026-08-09 | 2026-08-19 | 4277, 4292 |  | 7598213 |
| 4294 | 37100.37300.37600.38300.39300.40700.41700.73800.1059600 | Internal Plaster | 8d | 2026-06-19 | 2026-06-26 | 4278FS+0.25d |  | 130060 |
| 4295 | 37100.37300.37600.38300.39300.40700.41700.73800.1059700 | IPS flooring work | 10d | 2026-08-19 | 2026-08-29 | 4279, 4291, 4293, 4294 |  | 130070 |
| 4296 | 37100.37300.37600.38300.39300.40700.41700.73800.1059800 | Toilet dado work | 8d | 2026-08-19 | 2026-08-27 | 4280, 4293, 4294 |  | 130080 |
| 4297 | 37100.37300.37600.38300.39300.40700.41700.73800.1059900 | Toilet flooring work | 8d | 2026-08-27 | 2026-09-04 | 4281, 4296 |  | 130090 |
| 4298 | 37100.37300.37600.38300.39300.40700.41700.73800.1060000 | Living dinning flooring | 12d | 2026-09-04 | 2026-09-16 | 4282, 4291, 4297 |  | 130100 |
| 4299 | 37100.37300.37600.38300.39300.40700.41700.73800.1060100 | Aluminium door-window fixing | 12d | 2026-12-19 | 2026-12-31 | 4283, 4295, 4298 |  | 130110 |
| 4300 | 37100.37300.37600.38300.39300.40700.41700.73800.1060200 | Putty primer coat | 6d | 2026-09-16 | 2026-09-22 | 4284, 4298 |  | 130120 |
| 4301 | 37100.37300.37600.38300.39300.40700.41700.73800.1060300 | Door shutter fixing | 8d | 2026-09-16 | 2026-09-24 | 4285, 4298 |  | 130130 |
| 4302 | 37100.37300.37600.38300.39300.40700.41700.73800.1060400 | Electrical wiring work | 8d | 2027-11-09 | 2027-11-17 | 4286, 4301 |  | 130140 |
| 4303 | 37100.37300.37600.38300.39300.40700.41700.73800.1060500 | Painting 1st coat | 8d | 2027-11-17 | 2027-11-25 | 4287, 4300, 4301, 4302 |  | 130150 |
| 4304 | 37100.37300.37600.38300.39300.40700.41700.73800.1060600 | False ceiling | 8d | 2027-11-25 | 2027-12-03 | 4288, 4303 |  | 130160 |
| 4305 | 37100.37300.37600.38300.39300.40700.41700.73900 | **24th Floor** | 506.06d | 2026-06-18 | 2027-12-21 |  | start no earlier than 2026-06-18 | 123200 |
| 4306 | 37100.37300.37600.38300.39300.40700.41700.73900.1060700 | Block Work | 7.94d | 2026-06-18 | 2026-06-26 | 4290FS+0.25d |  | 130170 |
| 4307 | 37100.37300.37600.38300.39300.40700.41700.73900.1060800 | Door Frame Fixing | 8.94d | 2026-07-01 | 2026-07-10 | 4291, 4306 |  | 130190 |
| 4308 | 37100.37300.37600.38300.39300.40700.41700.73900.1060900 | Internal Plumbing Works | 9.94d | 2026-06-28 | 2026-07-08 | 4292, 4306 |  | 130200 |
| 4309 | 37100.37300.37600.38300.39300.40700.41700.73900.1061000 | Waterproofing | 11.94d | 2026-08-19 | 2026-08-31 | 4293, 4308 |  | 130210 |
| 4310 | 37100.37300.37600.38300.39300.40700.41700.73900.1061100 | Internal Plaster | 8.94d | 2026-06-27 | 2026-07-06 | 4294FS+0.25d |  | 130220 |
| 4311 | 37100.37300.37600.38300.39300.40700.41700.73900.1061200 | IPS flooring work | 8.94d | 2026-08-31 | 2026-09-09 | 4295, 4307, 4309, 4310 |  | 130230 |
| 4312 | 37100.37300.37600.38300.39300.40700.41700.73900.1061300 | Toilet dado work | 7.94d | 2026-08-31 | 2026-09-08 | 4296, 4309, 4310 |  | 130240 |
| 4313 | 37100.37300.37600.38300.39300.40700.41700.73900.1061400 | Toilet flooring work | 6.94d | 2026-09-08 | 2026-09-15 | 4297, 4312 |  | 130250 |
| 4314 | 37100.37300.37600.38300.39300.40700.41700.73900.1061500 | Living dinning flooring | 14.94d | 2026-09-16 | 2026-10-01 | 4298, 4307, 4313 |  | 130260 |
| 4315 | 37100.37300.37600.38300.39300.40700.41700.73900.1061600 | Aluminium door-window fixing | 14.94d | 2026-12-31 | 2027-01-15 | 4299, 4311, 4314 |  | 130270 |
| 4316 | 37100.37300.37600.38300.39300.40700.41700.73900.1061700 | Putty primer coat | 5.94d | 2026-10-01 | 2026-10-07 | 4300, 4314 |  | 130280 |
| 4317 | 37100.37300.37600.38300.39300.40700.41700.73900.1061800 | Door shutter fixing | 7.94d | 2026-10-01 | 2026-10-09 | 4301, 4314 |  | 130290 |
| 4318 | 37100.37300.37600.38300.39300.40700.41700.73900.1061900 | Electrical wiring work | 11.94d | 2027-11-17 | 2027-11-29 | 4302, 4317 |  | 130300 |
| 4319 | 37100.37300.37600.38300.39300.40700.41700.73900.1062000 | Painting 1st coat | 11.94d | 2027-11-29 | 2027-12-11 | 4303, 4316, 4317, 4318 |  | 130310 |
| 4320 | 37100.37300.37600.38300.39300.40700.41700.73900.1062100 | False ceiling | 9.94d | 2027-12-11 | 2027-12-21 | 4304, 4319 |  | 130320 |

| ID | WBS | Task | Duration | Start | Finish | Predecessors | Constraint | Unique_Task_ID |
| --- | --- | --- | --- | --- | --- | --- | --- | --- |
| 4321 | 37100.37300.37600.38300.39300.40700.41700.74000 | **25th Floor** | 509.81d | 2026-06-26 | 2028-01-02 |  | start no earlier than 2026-06-26 | 123210 |
| 4322 | 37100.37300.37600.38300.39300.40700.41700.74000.1062200 | Block Work | 7.94d | 2026-06-26 | 2026-07-04 | 4306FS+0.25d |  | 130330 |
| 4323 | 37100.37300.37600.38300.39300.40700.41700.74000.1062300 | Door Frame Fixing | 8.94d | 2026-07-10 | 2026-07-19 | 4307, 4322 |  | 130350 |
| 4324 | 37100.37300.37600.38300.39300.40700.41700.74000.1062400 | Internal Plumbing Works | 9.94d | 2026-07-08 | 2026-07-18 | 4308, 4322 |  | 130360 |
| 4325 | 37100.37300.37600.38300.39300.40700.41700.74000.1062500 | Waterproofing | 11.94d | 2026-08-31 | 2026-09-12 | 4309, 4324 |  | 130370 |
| 4326 | 37100.37300.37600.38300.39300.40700.41700.74000.1062600 | Internal Plaster | 8.94d | 2026-07-06 | 2026-07-15 | 4310FS+0.25d |  | 130380 |
| 4327 | 37100.37300.37600.38300.39300.40700.41700.74000.1062700 | IPS flooring work | 8.94d | 2026-09-12 | 2026-09-21 | 4311, 4323, 4325, 4326 |  | 130390 |
| 4328 | 37100.37300.37600.38300.39300.40700.41700.74000.1062800 | Toilet dado work | 7.94d | 2026-09-12 | 2026-09-20 | 4312, 4325, 4326 |  | 130400 |
| 4329 | 37100.37300.37600.38300.39300.40700.41700.74000.1062900 | Toilet flooring work | 6.94d | 2026-09-20 | 2026-09-27 | 4313, 4328 |  | 130410 |
| 4330 | 37100.37300.37600.38300.39300.40700.41700.74000.1063000 | Living dinning flooring | 14.94d | 2026-10-01 | 2026-10-16 | 4314, 4323, 4329 |  | 130420 |
| 4331 | 37100.37300.37600.38300.39300.40700.41700.74000.1063100 | Aluminium door-window fixing | 14.94d | 2027-01-15 | 2027-01-30 | 4315, 4327, 4330 |  | 130430 |
| 4332 | 37100.37300.37600.38300.39300.40700.41700.74000.1063200 | Putty primer coat | 5.94d | 2026-10-16 | 2026-10-22 | 4316, 4330 |  | 130440 |
| 4333 | 37100.37300.37600.38300.39300.40700.41700.74000.1063300 | Door shutter fixing | 7.94d | 2026-10-16 | 2026-10-24 | 4317, 4330 |  | 130450 |
| 4334 | 37100.37300.37600.38300.39300.40700.41700.74000.1063400 | Electrical wiring work | 11.94d | 2027-11-29 | 2027-12-11 | 4318, 4333 |  | 130460 |
| 4335 | 37100.37300.37600.38300.39300.40700.41700.74000.1063500 | Painting 1st coat | 11.94d | 2027-12-11 | 2027-12-23 | 4319, 4332, 4333, 4334 |  | 130470 |
| 4336 | 37100.37300.37600.38300.39300.40700.41700.74000.1063600 | False ceiling | 9.94d | 2027-12-23 | 2028-01-02 | 4320, 4335 |  | 130480 |
| 4337 | 37100.37300.37600.38300.39300.40700.41700.74100 | **26th Floor** | 502.56d | 2026-07-15 | 2028-01-14 |  | start no earlier than 2026-07-15 | 123220 |
| 4338 | 37100.37300.37600.38300.39300.40700.41700.74100.1063700 | Block Work | 7.94d | 2026-09-07 | 2026-09-15 | 3925FS+0.25d, 4322FS+0.25d |  | 130490 |
| 4339 | 37100.37300.37600.38300.39300.40700.41700.74100.1063800 | Door Frame Fixing | 8.94d | 2026-09-15 | 2026-09-24 | 4323, 4338 |  | 130510 |
| 4340 | 37100.37300.37600.38300.39300.40700.41700.74100.1063900 | Internal Plumbing Works | 9.94d | 2026-09-15 | 2026-09-25 | 4324, 4338 |  | 130520 |
| 4341 | 37100.37300.37600.38300.39300.40700.41700.74100.1064000 | Waterproofing | 11.94d | 2026-09-25 | 2026-10-07 | 4325, 4340 |  | 130530 |
| 4342 | 37100.37300.37600.38300.39300.40700.41700.74100.1064100 | Internal Plaster | 8.94d | 2026-07-15 | 2026-07-24 | 4326FS+0.25d |  | 130540 |
| 4343 | 37100.37300.37600.38300.39300.40700.41700.74100.1064200 | IPS flooring work | 8.94d | 2026-10-07 | 2026-10-16 | 4327, 4339, 4341, 4342 |  | 130550 |
| 4344 | 37100.37300.37600.38300.39300.40700.41700.74100.1064300 | Toilet dado work | 7.94d | 2026-10-07 | 2026-10-15 | 4328, 4341, 4342 |  | 130560 |
| 4345 | 37100.37300.37600.38300.39300.40700.41700.74100.1064400 | Toilet flooring work | 6.94d | 2026-10-15 | 2026-10-22 | 4329, 4344 |  | 130570 |
| 4346 | 37100.37300.37600.38300.39300.40700.41700.74100.1064500 | Living dinning flooring | 14.94d | 2026-10-22 | 2026-12-20 | 4330, 4339, 4345 |  | 130580 |
| 4347 | 37100.37300.37600.38300.39300.40700.41700.74100.1064600 | Aluminium door-window fixing | 14.94d | 2027-01-30 | 2027-02-14 | 4331, 4343, 4346 |  | 130590 |
| 4348 | 37100.37300.37600.38300.39300.40700.41700.74100.1064700 | Putty primer coat | 5.94d | 2026-12-21 | 2026-12-26 | 4332, 4346 |  | 130600 |
| 4349 | 37100.37300.37600.38300.39300.40700.41700.74100.1064800 | Door shutter fixing | 7.94d | 2026-12-21 | 2026-12-28 | 4333, 4346 |  | 130610 |
| 4350 | 37100.37300.37600.38300.39300.40700.41700.74100.1064900 | Electrical wiring work | 11.94d | 2027-12-11 | 2027-12-23 | 4334, 4349 |  | 130620 |
| 4351 | 37100.37300.37600.38300.39300.40700.41700.74100.1065000 | Painting 1st coat | 11.94d | 2027-12-23 | 2028-01-04 | 4335, 4348, 4349, 4350 |  | 130630 |
| 4352 | 37100.37300.37600.38300.39300.40700.41700.74100.1065100 | False ceiling | 9.94d | 2028-01-04 | 2028-01-14 | 4336, 4351 |  | 130640 |

| ID | WBS | Task | Duration | Start | Finish | Predecessors | Constraint | Unique_Task_ID |
| --- | --- | --- | --- | --- | --- | --- | --- | --- |
| 4353 | 37100.37300.37600.38300.39300.40700.41700.74200 | **27th Floor** | 446d | 2026-09-22 | 2028-01-26 |  | start no earlier than 2026-09-22 | 123230 |
| 4354 | 37100.37300.37600.38300.39300.40700.41700.74200.1065200 | Block Work | 7.94d | 2026-09-22 | 2026-09-30 | 3926, 4338 |  | 130650 |
| 4355 | 37100.37300.37600.38300.39300.40700.41700.74200.1065300 | Door Frame Fixing | 8.94d | 2026-09-30 | 2026-10-08 | 4339, 4354 |  | 130670 |
| 4356 | 37100.37300.37600.38300.39300.40700.41700.74200.1065400 | Internal Plumbing Works | 9.94d | 2026-09-30 | 2026-10-09 | 4340, 4354 |  | 130680 |
| 4357 | 37100.37300.37600.38300.39300.40700.41700.74200.1065500 | Waterproofing | 11.94d | 2026-10-10 | 2026-10-21 | 4341, 4356 |  | 130690 |
| 4358 | 37100.37300.37600.38300.39300.40700.41700.74200.1065600 | Internal Plaster | 8.94d | 2026-10-21 | 2026-10-30 | 4342, 4355, 4356, 4357 |  | 130700 |
| 4359 | 37100.37300.37600.38300.39300.40700.41700.74200.1065700 | IPS flooring work | 8.94d | 2026-10-30 | 2026-12-23 | 4343, 4355, 4357, 4358 |  | 130710 |
| 4360 | 37100.37300.37600.38300.39300.40700.41700.74200.1065800 | Toilet dado work | 7.94d | 2026-10-30 | 2026-12-22 | 4344, 4357, 4358 |  | 130720 |
| 4361 | 37100.37300.37600.38300.39300.40700.41700.74200.1065900 | Toilet flooring work | 6.94d | 2026-12-22 | 2026-12-29 | 4345, 4360 |  | 130730 |
| 4362 | 37100.37300.37600.38300.39300.40700.41700.74200.1066000 | Living dinning flooring | 14.94d | 2026-12-29 | 2027-01-13 | 4346, 4355, 4361 |  | 130740 |
| 4363 | 37100.37300.37600.38300.39300.40700.41700.74200.1066100 | Aluminium door-window fixing | 14.94d | 2027-02-14 | 2027-03-01 | 4347, 4359, 4362 |  | 130750 |
| 4364 | 37100.37300.37600.38300.39300.40700.41700.74200.1066200 | Putty primer coat | 5.94d | 2027-01-13 | 2027-01-19 | 4348, 4362 |  | 130760 |
| 4365 | 37100.37300.37600.38300.39300.40700.41700.74200.1066300 | Door shutter fixing | 7.94d | 2027-01-13 | 2027-01-21 | 4349, 4362 |  | 130770 |
| 4366 | 37100.37300.37600.38300.39300.40700.41700.74200.1066400 | Electrical wiring work | 11.94d | 2027-12-23 | 2028-01-04 | 4350, 4365 |  | 130780 |
| 4367 | 37100.37300.37600.38300.39300.40700.41700.74200.1066500 | Painting 1st coat | 11.94d | 2028-01-04 | 2028-01-16 | 4351, 4364, 4365, 4366 |  | 130790 |
| 4368 | 37100.37300.37600.38300.39300.40700.41700.74200.1066600 | False ceiling | 9.94d | 2028-01-16 | 2028-01-26 | 4352, 4367 |  | 130800 |
| 4369 | 37100.37300.37600.38300.39300.40700.41700.74300 | **28th Floor** | 441.94d | 2026-10-08 | 2028-02-07 |  | start no earlier than 2026-10-08 | 123240 |
| 4370 | 37100.37300.37600.38300.39300.40700.41700.74300.1066700 | Block Work | 7.94d | 2026-10-08 | 2026-10-16 | 3927, 4354 |  | 130810 |
| 4371 | 37100.37300.37600.38300.39300.40700.41700.74300.1066800 | Door Frame Fixing | 8.94d | 2026-10-16 | 2026-10-24 | 4355, 4370 |  | 130830 |
| 4372 | 37100.37300.37600.38300.39300.40700.41700.74300.1066900 | Internal Plumbing Works | 9.94d | 2026-10-16 | 2026-10-25 | 4356, 4370 |  | 130840 |
| 4373 | 37100.37300.37600.38300.39300.40700.41700.74300.1067000 | Waterproofing | 11.94d | 2026-10-26 | 2026-12-21 | 4357, 4372 |  | 130850 |
| 4374 | 37100.37300.37600.38300.39300.40700.41700.74300.1067100 | Internal Plaster | 8.94d | 2026-12-21 | 2026-12-30 | 4358, 4371, 4372, 4373 |  | 130860 |
| 4375 | 37100.37300.37600.38300.39300.40700.41700.74300.1067200 | IPS flooring work | 8.94d | 2026-12-30 | 2027-01-08 | 4359, 4371, 4373, 4374 |  | 130870 |
| 4376 | 37100.37300.37600.38300.39300.40700.41700.74300.1067300 | Toilet dado work | 7.94d | 2026-12-30 | 2027-01-07 | 4360, 4373, 4374 |  | 130880 |
| 4377 | 37100.37300.37600.38300.39300.40700.41700.74300.1067400 | Toilet flooring work | 6.94d | 2027-01-07 | 2027-01-14 | 4361, 4376 |  | 130890 |
| 4378 | 37100.37300.37600.38300.39300.40700.41700.74300.1067500 | Living dinning flooring | 14.94d | 2027-01-14 | 2027-01-29 | 4362, 4371, 4377 |  | 130900 |
| 4379 | 37100.37300.37600.38300.39300.40700.41700.74300.1067600 | Aluminium door-window fixing | 14.94d | 2027-03-01 | 2027-03-16 | 4363, 4375, 4378 |  | 130910 |
| 4380 | 37100.37300.37600.38300.39300.40700.41700.74300.1067700 | Putty primer coat | 5.94d | 2027-01-29 | 2027-02-04 | 4364, 4378 |  | 130920 |
| 4381 | 37100.37300.37600.38300.39300.40700.41700.74300.1067800 | Door shutter fixing | 7.94d | 2027-01-29 | 2027-02-06 | 4365, 4378 |  | 130930 |
| 4382 | 37100.37300.37600.38300.39300.40700.41700.74300.1067900 | Electrical wiring work | 11.94d | 2028-01-04 | 2028-01-16 | 4366, 4381 |  | 130940 |
| 4383 | 37100.37300.37600.38300.39300.40700.41700.74300.1068000 | Painting 1st coat | 11.94d | 2028-01-16 | 2028-01-28 | 4367, 4380, 4381, 4382 |  | 130950 |
| 4384 | 37100.37300.37600.38300.39300.40700.41700.74300.1068100 | False ceiling | 9.94d | 2028-01-28 | 2028-02-07 | 4368, 4383 |  | 130960 |

| ID | WBS | Task | Duration | Start | Finish | Predecessors | Constraint | Unique_Task_ID |
| --- | --- | --- | --- | --- | --- | --- | --- | --- |
| 4385 | 37100.37300.37600.38300.39300.40700.41700.74400 | **29th Floor** | 437.88d | 2026-10-24 | 2028-02-18 |  | start no earlier than 2026-10-24 | 123250 |
| 4386 | 37100.37300.37600.38300.39300.40700.41700.74400.1068200 | Block Work | 7.94d | 2026-10-24 | 2026-12-16 | 3928, 4370 |  | 130970 |
| 4387 | 37100.37300.37600.38300.39300.40700.41700.74400.1068300 | Door Frame Fixing | 8.94d | 2026-12-16 | 2026-12-24 | 4371, 4386 |  | 130990 |
| 4388 | 37100.37300.37600.38300.39300.40700.41700.74400.1068400 | Internal Plumbing Works | 9.94d | 2026-12-16 | 2026-12-25 | 4372, 4386 |  | 131000 |
| 4389 | 37100.37300.37600.38300.39300.40700.41700.74400.1068500 | Waterproofing | 11.94d | 2026-12-26 | 2027-01-06 | 4373, 4388 |  | 131010 |
| 4390 | 37100.37300.37600.38300.39300.40700.41700.74400.1068600 | Internal Plaster | 8.94d | 2027-01-06 | 2027-01-15 | 4374, 4387, 4388, 4389 |  | 131020 |
| 4391 | 37100.37300.37600.38300.39300.40700.41700.74400.1068700 | IPS flooring work | 8.94d | 2027-01-15 | 2027-01-24 | 4375, 4387, 4389, 4390 |  | 131030 |
| 4392 | 37100.37300.37600.38300.39300.40700.41700.74400.1068800 | Toilet dado work | 7.94d | 2027-01-15 | 2027-01-23 | 4376, 4389, 4390 |  | 131040 |
| 4393 | 37100.37300.37600.38300.39300.40700.41700.74400.1068900 | Toilet flooring work | 6.94d | 2027-01-23 | 2027-01-30 | 4377, 4392 |  | 131050 |
| 4394 | 37100.37300.37600.38300.39300.40700.41700.74400.1069000 | Living dinning flooring | 14.94d | 2027-01-30 | 2027-02-14 | 4378, 4387, 4393 |  | 131060 |
| 4395 | 37100.37300.37600.38300.39300.40700.41700.74400.1069100 | Aluminium door-window fixing | 14.94d | 2027-03-16 | 2027-03-31 | 4379, 4391, 4394 |  | 131070 |
| 4396 | 37100.37300.37600.38300.39300.40700.41700.74400.1069200 | Putty primer coat | 5.94d | 2027-02-14 | 2027-02-20 | 4380, 4394 |  | 131080 |
| 4397 | 37100.37300.37600.38300.39300.40700.41700.74400.1069300 | Door shutter fixing | 7.94d | 2027-02-14 | 2027-02-22 | 4381, 4394 |  | 131090 |
| 4398 | 37100.37300.37600.38300.39300.40700.41700.74400.1069400 | Electrical wiring work | 11.94d | 2028-01-16 | 2028-01-28 | 4382, 4397 |  | 131100 |
| 4399 | 37100.37300.37600.38300.39300.40700.41700.74400.1069500 | Painting 1st coat | 11.94d | 2028-01-28 | 2028-02-09 | 4383, 4396, 4397, 4398 |  | 131110 |
| 4400 | 37100.37300.37600.38300.39300.40700.41700.74400.1069600 | False ceiling | 9.94d | 2028-02-09 | 2028-02-18 | 4384, 4399 |  | 131120 |
| 4401 | 37100.37300.37600.38300.39300.40700.41700.74500 | **30th Floor** | 416.94d | 2027-01-16 | 2028-03-07 |  | start no earlier than 2027-01-16 | 123260 |
| 4402 | 37100.37300.37600.38300.39300.40700.41700.74500.1069700 | Block Work | 7.94d | 2027-01-16 | 2027-01-23 | 3929, 4386 |  | 131130 |
| 4403 | 37100.37300.37600.38300.39300.40700.41700.74500.1069800 | Door Frame Fixing | 8.94d | 2027-01-23 | 2027-02-01 | 4387, 4402 |  | 131150 |
| 4404 | 37100.37300.37600.38300.39300.40700.41700.74500.1069900 | Internal Plumbing Works | 9.94d | 2027-01-23 | 2027-02-02 | 4388, 4402 |  | 131160 |
| 4405 | 37100.37300.37600.38300.39300.40700.41700.74500.1070000 | Waterproofing | 11.94d | 2027-02-02 | 2027-02-14 | 4389, 4404 |  | 131170 |
| 4406 | 37100.37300.37600.38300.39300.40700.41700.74500.1070100 | Internal Plaster | 8.94d | 2027-02-14 | 2027-02-23 | 4390, 4403, 4404, 4405 |  | 131180 |
| 4407 | 37100.37300.37600.38300.39300.40700.41700.74500.1070200 | IPS flooring work | 8.94d | 2027-02-23 | 2027-03-04 | 4391, 4403, 4405, 4406 |  | 131190 |
| 4408 | 37100.37300.37600.38300.39300.40700.41700.74500.1070300 | Toilet dado work | 7.94d | 2027-02-23 | 2027-03-03 | 4392, 4405, 4406 |  | 131200 |
| 4409 | 37100.37300.37600.38300.39300.40700.41700.74500.1070400 | Toilet flooring work | 6.94d | 2027-03-03 | 2027-03-10 | 4393, 4408 |  | 131210 |
| 4410 | 37100.37300.37600.38300.39300.40700.41700.74500.1070500 | Living dinning flooring | 14.94d | 2027-03-10 | 2027-03-25 | 4394, 4403, 4409 |  | 131220 |
| 4411 | 37100.37300.37600.38300.39300.40700.41700.74500.1070600 | Aluminium door-window fixing | 14.94d | 2027-03-31 | 2027-04-15 | 4395, 4407, 4410 |  | 131230 |
| 4412 | 37100.37300.37600.38300.39300.40700.41700.74500.1070700 | Putty primer coat | 5.94d | 2027-03-25 | 2027-03-31 | 4396, 4410 |  | 131240 |
| 4413 | 37100.37300.37600.38300.39300.40700.41700.74500.1070800 | Door shutter fixing | 7.94d | 2027-03-25 | 2027-04-02 | 4397, 4410 |  | 131250 |
| 4414 | 37100.37300.37600.38300.39300.40700.41700.74500.1070900 | Electrical wiring work | 14.94d | 2028-01-28 | 2028-02-12 | 4398, 4413 |  | 131260 |
| 4415 | 37100.37300.37600.38300.39300.40700.41700.74500.1071000 | Painting 1st coat | 14.94d | 2028-02-12 | 2028-02-26 | 4399, 4412, 4413, 4414 |  | 131270 |
| 4416 | 37100.37300.37600.38300.39300.40700.41700.74500.1071100 | False ceiling | 9.94d | 2028-02-27 | 2028-03-07 | 4400, 4415 |  | 131280 |

| ID | WBS | Task | Duration | Start | Finish | Predecessors | Constraint | Unique_Task_ID |
| --- | --- | --- | --- | --- | --- | --- | --- | --- |
| 4417 | 37100.37300.37600.38300.39300.40700.41700.74600 | **31st Floor** | 423.94d | 2027-01-23 | 2028-03-22 |  | start no earlier than 2027-01-23 | 123270 |
| 4418 | 37100.37300.37600.38300.39300.40700.41700.74600.1071200 | Block Work | 7.94d | 2027-01-23 | 2027-01-31 | 3930, 4402 |  | 131290 |
| 4419 | 37100.37300.37600.38300.39300.40700.41700.74600.1071300 | Door Frame Fixing | 8.94d | 2027-02-01 | 2027-02-10 | 4403, 4418 |  | 131310 |
| 4420 | 37100.37300.37600.38300.39300.40700.41700.74600.1071400 | Internal Plumbing Works | 9.94d | 2027-02-02 | 2027-02-12 | 4404, 4418 |  | 131320 |
| 4421 | 37100.37300.37600.38300.39300.40700.41700.74600.1071500 | Waterproofing | 11.94d | 2027-02-14 | 2027-02-26 | 4405, 4420 |  | 131330 |
| 4422 | 37100.37300.37600.38300.39300.40700.41700.74600.1071600 | Internal Plaster | 8.94d | 2027-02-26 | 2027-03-07 | 4406, 4419, 4420, 4421 |  | 131340 |
| 4423 | 37100.37300.37600.38300.39300.40700.41700.74600.1071700 | IPS flooring work | 8.94d | 2027-03-07 | 2027-03-16 | 4407, 4419, 4421, 4422 |  | 131350 |
| 4424 | 37100.37300.37600.38300.39300.40700.41700.74600.1071800 | Toilet dado work | 7.94d | 2027-03-07 | 2027-03-15 | 4408, 4421, 4422 |  | 131360 |
| 4425 | 37100.37300.37600.38300.39300.40700.41700.74600.1071900 | Toilet flooring work | 6.94d | 2027-03-15 | 2027-03-22 | 4409, 4424 |  | 131370 |
| 4426 | 37100.37300.37600.38300.39300.40700.41700.74600.1072000 | Living dinning flooring | 14.94d | 2027-03-25 | 2027-04-09 | 4410, 4419, 4425 |  | 131380 |
| 4427 | 37100.37300.37600.38300.39300.40700.41700.74600.1072100 | Aluminium door-window fixing | 11.94d | 2027-04-15 | 2027-04-26 | 4411, 4423, 4426 |  | 131390 |
| 4428 | 37100.37300.37600.38300.39300.40700.41700.74600.1072200 | Putty primer coat | 5.94d | 2027-04-09 | 2027-04-15 | 4412, 4426 |  | 131400 |
| 4429 | 37100.37300.37600.38300.39300.40700.41700.74600.1072300 | Door shutter fixing | 7.94d | 2027-04-09 | 2027-04-17 | 4413, 4426 |  | 131410 |
| 4430 | 37100.37300.37600.38300.39300.40700.41700.74600.1072400 | Electrical wiring work | 14.94d | 2028-02-12 | 2028-02-26 | 4414, 4429 |  | 131420 |
| 4431 | 37100.37300.37600.38300.39300.40700.41700.74600.1072500 | Painting 1st coat | 14.94d | 2028-02-27 | 2028-03-12 | 4415, 4428, 4429, 4430 |  | 131430 |
| 4432 | 37100.37300.37600.38300.39300.40700.41700.74600.1072600 | False ceiling | 9.94d | 2028-03-12 | 2028-03-22 | 4416, 4431 |  | 131440 |
| 4433 | 37100.37300.37600.38300.39300.40700.41700.74700 | **32nd Floor** | 430.94d | 2027-01-31 | 2028-04-06 |  | start no earlier than 2027-01-31 | 123280 |
| 4434 | 37100.37300.37600.38300.39300.40700.41700.74700.1072700 | Block Work | 7.94d | 2027-01-31 | 2027-02-08 | 3931, 4418 |  | 131450 |
| 4435 | 37100.37300.37600.38300.39300.40700.41700.74700.1072800 | Door Frame Fixing | 8.94d | 2027-02-10 | 2027-02-19 | 4419, 4434 |  | 131470 |
| 4436 | 37100.37300.37600.38300.39300.40700.41700.74700.1072900 | Internal Plumbing Works | 9.94d | 2027-02-12 | 2027-02-22 | 4420, 4434 |  | 131480 |
| 4437 | 37100.37300.37600.38300.39300.40700.41700.74700.1073000 | Waterproofing | 11.94d | 2027-02-26 | 2027-03-10 | 4421, 4436 |  | 131490 |
| 4438 | 37100.37300.37600.38300.39300.40700.41700.74700.1073100 | Internal Plaster | 8.94d | 2027-03-07 | 2027-03-16 | 4422FS+0.25d |  | 131500 |
| 4439 | 37100.37300.37600.38300.39300.40700.41700.74700.1073200 | IPS flooring work | 8.94d | 2027-03-16 | 2027-03-25 | 4423, 4435, 4437, 4438 |  | 131510 |
| 4440 | 37100.37300.37600.38300.39300.40700.41700.74700.1073300 | Toilet dado work | 7.94d | 2027-03-16 | 2027-03-24 | 4424, 4437, 4438 |  | 131520 |
| 4441 | 37100.37300.37600.38300.39300.40700.41700.74700.1073400 | Toilet flooring work | 6.94d | 2027-03-24 | 2027-03-31 | 4425, 4440 |  | 131530 |
| 4442 | 37100.37300.37600.38300.39300.40700.41700.74700.1073500 | Living dinning flooring | 14.94d | 2027-04-09 | 2027-04-24 | 4426, 4435, 4441 |  | 131540 |
| 4443 | 37100.37300.37600.38300.39300.40700.41700.74700.1073600 | Aluminium door-window fixing | 11.94d | 2027-04-27 | 2027-05-08 | 4427, 4439, 4442 |  | 131550 |
| 4444 | 37100.37300.37600.38300.39300.40700.41700.74700.1073700 | Putty primer coat | 5.94d | 2027-04-24 | 2027-04-30 | 4428, 4442 |  | 131560 |
| 4445 | 37100.37300.37600.38300.39300.40700.41700.74700.1073800 | Door shutter fixing | 7.94d | 2027-04-24 | 2027-05-02 | 4429, 4442 |  | 131570 |
| 4446 | 37100.37300.37600.38300.39300.40700.41700.74700.1073900 | Electrical wiring work | 14.94d | 2028-02-27 | 2028-03-12 | 4430, 4445 |  | 131580 |
| 4447 | 37100.37300.37600.38300.39300.40700.41700.74700.1074000 | Painting 1st coat | 14.94d | 2028-03-12 | 2028-03-27 | 4431, 4444, 4445, 4446 |  | 131590 |
| 4448 | 37100.37300.37600.38300.39300.40700.41700.74700.1074100 | False ceiling | 9.94d | 2028-03-27 | 2028-04-06 | 4432, 4447 |  | 131600 |

| ID | WBS | Task | Duration | Start | Finish | Predecessors | Constraint | Unique_Task_ID |
| --- | --- | --- | --- | --- | --- | --- | --- | --- |
| 4449 | 37100.37300.37600.38300.39300.40700.41700.74800 | **33rd Floor** | 434.94d | 2027-02-08 | 2028-04-18 |  | start no earlier than 2027-02-08 | 123290 |
| 4450 | 37100.37300.37600.38300.39300.40700.41700.74800.1074200 | Block Work | 7.94d | 2027-02-08 | 2027-02-16 | 3932, 4434 |  | 131610 |
| 4451 | 37100.37300.37600.38300.39300.40700.41700.74800.1074300 | Door Frame Fixing | 8.94d | 2027-02-19 | 2027-02-28 | 4435, 4450 |  | 131630 |
| 4452 | 37100.37300.37600.38300.39300.40700.41700.74800.1074400 | Internal Plumbing Works | 9.94d | 2027-02-22 | 2027-03-04 | 4436, 4450 |  | 131640 |
| 4453 | 37100.37300.37600.38300.39300.40700.41700.74800.1074500 | Waterproofing | 11.94d | 2027-03-10 | 2027-03-22 | 4437, 4452 |  | 131650 |
| 4454 | 37100.37300.37600.38300.39300.40700.41700.74800.1074600 | Internal Plaster | 4d | 2027-03-22 | 2027-03-26 | 4438, 4451, 4452, 4453 |  | 131660 |
| 4455 | 37100.37300.37600.38300.39300.40700.41700.74800.1074700 | IPS flooring work | 8.94d | 2027-03-26 | 2027-04-04 | 4439, 4451, 4453, 4454 |  | 131670 |
| 4456 | 37100.37300.37600.38300.39300.40700.41700.74800.1074800 | Toilet dado work | 7.94d | 2027-03-26 | 2027-04-03 | 4440, 4453, 4454 |  | 131680 |
| 4457 | 37100.37300.37600.38300.39300.40700.41700.74800.1074900 | Toilet flooring work | 6.94d | 2027-04-03 | 2027-04-10 | 4441, 4456 |  | 131690 |
| 4458 | 37100.37300.37600.38300.39300.40700.41700.74800.1075000 | Living dinning flooring | 8d | 2027-04-24 | 2027-05-02 | 4442, 4451, 4457 |  | 131700 |
| 4459 | 37100.37300.37600.38300.39300.40700.41700.74800.1075100 | Aluminium door-window fixing | 14.94d | 2027-05-08 | 2027-05-23 | 4443, 4455, 4458 |  | 131710 |
| 4460 | 37100.37300.37600.38300.39300.40700.41700.74800.1075200 | Putty primer coat | 5.94d | 2027-05-02 | 2027-05-08 | 4444, 4458 |  | 131720 |
| 4461 | 37100.37300.37600.38300.39300.40700.41700.74800.1075300 | Door shutter fixing | 7.94d | 2027-05-02 | 2027-05-10 | 4445, 4458 |  | 131730 |
| 4462 | 37100.37300.37600.38300.39300.40700.41700.74800.1075400 | Electrical wiring work | 11.94d | 2028-03-12 | 2028-03-24 | 4446, 4461 |  | 131740 |
| 4463 | 37100.37300.37600.38300.39300.40700.41700.74800.1075500 | Painting 1st coat | 11.94d | 2028-03-27 | 2028-04-08 | 4447, 4460, 4461, 4462 |  | 131750 |
| 4464 | 37100.37300.37600.38300.39300.40700.41700.74800.1075600 | False ceiling | 9.94d | 2028-04-08 | 2028-04-18 | 4448, 4463 |  | 131760 |
| 4465 | 37100.37300.37600.38300.39300.40700.41700.74900 | **34th Floor** | 438.94d | 2027-02-16 | 2028-04-30 |  | start no earlier than 2027-02-16 | 123300 |
| 4466 | 37100.37300.37600.38300.39300.40700.41700.74900.1075700 | Block Work | 7.94d | 2027-02-16 | 2027-02-24 | 3933, 4450 |  | 131770 |
| 4467 | 37100.37300.37600.38300.39300.40700.41700.74900.1075800 | Door Frame Fixing | 8.94d | 2027-02-28 | 2027-03-09 | 4451, 4466 |  | 131790 |
| 4468 | 37100.37300.37600.38300.39300.40700.41700.74900.1075900 | Internal Plumbing Works | 9.94d | 2027-03-04 | 2027-03-14 | 4452, 4466 |  | 131800 |
| 4469 | 37100.37300.37600.38300.39300.40700.41700.74900.1076000 | Waterproofing | 11.94d | 2027-03-22 | 2027-04-03 | 4453, 4468 |  | 131810 |
| 4470 | 37100.37300.37600.38300.39300.40700.41700.74900.1076100 | Internal Plaster | 4d | 2027-03-26 | 2027-03-30 | 4454FS+0.25d |  | 131820 |
| 4471 | 37100.37300.37600.38300.39300.40700.41700.74900.1076200 | IPS flooring work | 8.94d | 2027-04-04 | 2027-04-13 | 4455, 4467, 4469, 4470 |  | 131830 |
| 4472 | 37100.37300.37600.38300.39300.40700.41700.74900.1076300 | Toilet dado work | 7.94d | 2027-04-03 | 2027-04-11 | 4456, 4469, 4470 |  | 131840 |
| 4473 | 37100.37300.37600.38300.39300.40700.41700.74900.1076400 | Toilet flooring work | 6.94d | 2027-04-11 | 2027-04-18 | 4457, 4472 |  | 131850 |
| 4474 | 37100.37300.37600.38300.39300.40700.41700.74900.1076500 | Living dinning flooring | 8d | 2027-05-02 | 2027-05-10 | 4458, 4467, 4473 |  | 131860 |
| 4475 | 37100.37300.37600.38300.39300.40700.41700.74900.1076600 | Aluminium door-window fixing | 14.94d | 2027-05-23 | 2027-06-07 | 4459, 4471, 4474 |  | 131870 |
| 4476 | 37100.37300.37600.38300.39300.40700.41700.74900.1076700 | Putty primer coat | 5.94d | 2027-05-10 | 2027-05-16 | 4460, 4474 |  | 131880 |
| 4477 | 37100.37300.37600.38300.39300.40700.41700.74900.1076800 | Door shutter fixing | 7.94d | 2027-05-10 | 2027-05-18 | 4461, 4474 |  | 131890 |
| 4478 | 37100.37300.37600.38300.39300.40700.41700.74900.1076900 | Electrical wiring work | 11.94d | 2028-03-24 | 2028-04-05 | 4462, 4477 |  | 131900 |
| 4479 | 37100.37300.37600.38300.39300.40700.41700.74900.1077000 | Painting 1st coat | 11.94d | 2028-04-08 | 2028-04-20 | 4463, 4476, 4477, 4478 |  | 131910 |
| 4480 | 37100.37300.37600.38300.39300.40700.41700.74900.1077100 | False ceiling | 9.94d | 2028-04-20 | 2028-04-30 | 4464, 4479 |  | 131920 |

| ID | WBS | Task | Duration | Start | Finish | Predecessors | Constraint | Unique_Task_ID |
| --- | --- | --- | --- | --- | --- | --- | --- | --- |
| 4481 | 37100.37300.37600.38300.39300.40700.41700.75000 | **35th Floor** | 442.94d | 2027-02-24 | 2028-05-12 |  | start no earlier than 2027-02-24 | 123310 |
| 4482 | 37100.37300.37600.38300.39300.40700.41700.75000.1077200 | Block Work | 7.94d | 2027-02-24 | 2027-03-04 | 3934, 4466 |  | 131930 |
| 4483 | 37100.37300.37600.38300.39300.40700.41700.75000.1077300 | Door Frame Fixing | 8.94d | 2027-03-09 | 2027-03-18 | 4467, 4482 |  | 131950 |
| 4484 | 37100.37300.37600.38300.39300.40700.41700.75000.1077400 | Internal Plumbing Works | 9.94d | 2027-03-14 | 2027-03-24 | 4468, 4482 |  | 131960 |
| 4485 | 37100.37300.37600.38300.39300.40700.41700.75000.1077500 | Waterproofing | 11.94d | 2027-04-03 | 2027-04-15 | 4469, 4484 |  | 131970 |
| 4486 | 37100.37300.37600.38300.39300.40700.41700.75000.1077600 | Internal Plaster | 3d | 2027-03-31 | 2027-04-03 | 4470FS+0.25d |  | 131980 |
| 4487 | 37100.37300.37600.38300.39300.40700.41700.75000.1077700 | IPS flooring work | 8.94d | 2027-04-15 | 2027-04-24 | 4471, 4483, 4485, 4486 |  | 131990 |
| 4488 | 37100.37300.37600.38300.39300.40700.41700.75000.1077800 | Toilet dado work | 7.94d | 2027-04-15 | 2027-04-23 | 4472, 4485, 4486 |  | 132000 |
| 4489 | 37100.37300.37600.38300.39300.40700.41700.75000.1077900 | Toilet flooring work | 6.94d | 2027-04-23 | 2027-04-30 | 4473, 4488 |  | 132010 |
| 4490 | 37100.37300.37600.38300.39300.40700.41700.75000.1078000 | Living dinning flooring | 12d | 2027-05-10 | 2027-05-22 | 4474, 4483, 4489 |  | 132020 |
| 4491 | 37100.37300.37600.38300.39300.40700.41700.75000.1078100 | Aluminium door-window fixing | 14.94d | 2027-06-07 | 2027-06-22 | 4475, 4487, 4490 |  | 132030 |
| 4492 | 37100.37300.37600.38300.39300.40700.41700.75000.1078200 | Putty primer coat | 5.94d | 2027-05-22 | 2027-05-28 | 4476, 4490 |  | 132040 |
| 4493 | 37100.37300.37600.38300.39300.40700.41700.75000.1078300 | Door shutter fixing | 7.94d | 2027-05-22 | 2027-05-30 | 4477, 4490 |  | 132050 |
| 4494 | 37100.37300.37600.38300.39300.40700.41700.75000.1078400 | Electrical wiring work | 11.94d | 2028-04-05 | 2028-04-17 | 4478, 4493 |  | 132060 |
| 4495 | 37100.37300.37600.38300.39300.40700.41700.75000.1078500 | Painting 1st coat | 11.94d | 2028-04-20 | 2028-05-02 | 4479, 4492, 4493, 4494 |  | 132070 |
| 4496 | 37100.37300.37600.38300.39300.40700.41700.75000.1078600 | False ceiling | 9.94d | 2028-05-02 | 2028-05-12 | 4480, 4495 |  | 132080 |
| 4497 | 37100.37300.37600.38300.39300.40700.190700 | **Terrace Finishing** | 79.88d | 2026-10-17 | 2027-02-18 |  | start no earlier than 2026-10-17 | 123850 |
| 4498 | 37100.37300.37600.38300.39300.40700.190700.486100 | Terrace waterproofing | 39.94d | 2026-10-17 | 2027-01-10 | 3891 |  | 126350 |
| 4499 | 37100.37300.37600.38300.39300.40700.190700.486200 | Terrace finishing | 39.94d | 2027-01-10 | 2027-02-18 | 4498 |  | 126360 |
| 4500 | 37100.37300.37600.38300.39300.40700.100600 | **Common Area Finishing** | 993.44d | 2026-01-13 | 2028-11-16 |  | start no earlier than 2026-01-13 | 123340 |
| 4501 | 37100.37300.37600.38300.39300.40700.100600.486300 | Block Work | 39.94d | 2026-01-13 | 2026-02-22 | 3902FS+0.25d |  | 126370 |
| 4502 | 37100.37300.37600.38300.39300.40700.100600.486400 | Internal Plaster | 119.94d | 2026-02-18 | 2026-06-18 | 4507SS+17.88d |  | 126380 |
| 4503 | 37100.37300.37600.38300.39300.40700.100600.486500 | Staircase railing fixing | 149.94d | 2026-05-22 | 2026-10-19 | 4505SS+26.75d, 4504SS+26.75d |  | 126390 |
| 4504 | 37100.37300.37600.38300.39300.40700.100600.486600 | Main staircase flooring | 149.94d | 2026-04-26 | 2026-09-23 | 4505SS+13.38d |  | 126400 |
| 4505 | 37100.37300.37600.38300.39300.40700.100600.486700 | Fire staircase flooring | 149.94d | 2026-04-12 | 2026-09-09 | 4502SS+13.38d, 4509SS+26.75d |  | 126410 |
| 4506 | 37100.37300.37600.38300.39300.40700.100600.486800 | Fire door work | 59.94d | 2026-05-22 | 2026-07-21 | 4504SS+26.75d, 4505SS+26.75d |  | 126420 |
| 4507 | 37100.37300.37600.38300.39300.40700.100600.486900 | Electrical wiring work | 119.94d | 2026-01-31 | 2026-05-31 | 4501SS+17.88d |  | 126430 |
| 4508 | 37100.37300.37600.38300.39300.40700.100600.487000 | Lobby flooring | 150d | 2026-02-03 | 2026-07-03 | 4507SS+3.38d |  | 126440 |
| 4509 | 37100.37300.37600.38300.39300.40700.100600.487100 | Ceiling & wall putty-primer | 109.94d | 2026-03-17 | 2026-07-04 | 4502SS+26.75d |  | 126450 |
| 4510 | 37100.37300.37600.38300.39300.40700.100600.487200 | Ceiling & wall painting | 99.94d | 2026-04-03 | 2026-07-12 | 4509SS+17.88d |  | 126460 |
| 4511 | 37100.37300.37600.38300.39300.40700.100600.487300 | Light fixture supply & installation | 44.94d | 2028-10-03 | 2028-11-16 | 4594SS+90d |  | 126470 |

| ID | WBS | Task | Duration | Start | Finish | Predecessors | Constraint | Unique_Task_ID |
| --- | --- | --- | --- | --- | --- | --- | --- | --- |
| 4512 | 37100.37300.37600.38300.39300.40700.46700 | **Balcony Glass Railing** | 67.81d | 2027-08-20 | 2027-10-27 |  | start no earlier than 2027-08-20 | 134590 |
| 4513 | 37100.37300.37600.38300.39300.40700.46700.487400 | 1st Floor | 1.94d | 2027-08-20 | 2027-08-22 | 4581 |  | 134600 |
| 4514 | 37100.37300.37600.38300.39300.40700.46700.487500 | 2nd Floor | 1.94d | 2027-08-22 | 2027-08-24 | 4513 |  | 134610 |
| 4515 | 37100.37300.37600.38300.39300.40700.46700.487600 | 3rd Floor | 1.94d | 2027-08-24 | 2027-08-26 | 4514 |  | 134620 |
| 4516 | 37100.37300.37600.38300.39300.40700.46700.487700 | 4th Floor | 1.94d | 2027-08-26 | 2027-08-28 | 4515 |  | 134630 |
| 4517 | 37100.37300.37600.38300.39300.40700.46700.487800 | 5th Floor | 1.94d | 2027-08-28 | 2027-08-30 | 4516 |  | 134640 |
| 4518 | 37100.37300.37600.38300.39300.40700.46700.487900 | 6th Floor | 1.94d | 2027-08-30 | 2027-09-01 | 4517 |  | 134650 |
| 4519 | 37100.37300.37600.38300.39300.40700.46700.488000 | 7th Floor | 1.94d | 2027-09-01 | 2027-09-03 | 4518 |  | 134660 |
| 4520 | 37100.37300.37600.38300.39300.40700.46700.488100 | 8th Floor | 1.94d | 2027-09-03 | 2027-09-05 | 4519 |  | 134670 |
| 4521 | 37100.37300.37600.38300.39300.40700.46700.488200 | 9th Floor | 1.94d | 2027-09-05 | 2027-09-07 | 4520 |  | 134680 |
| 4522 | 37100.37300.37600.38300.39300.40700.46700.488300 | 10th Floor | 1.94d | 2027-09-07 | 2027-09-09 | 4521 |  | 134690 |
| 4523 | 37100.37300.37600.38300.39300.40700.46700.488400 | 11th Floor | 1.94d | 2027-09-09 | 2027-09-11 | 4522 |  | 134700 |
| 4524 | 37100.37300.37600.38300.39300.40700.46700.488500 | 12th Floor | 1.94d | 2027-09-11 | 2027-09-12 | 4523 |  | 134710 |
| 4525 | 37100.37300.37600.38300.39300.40700.46700.488600 | 13th Floor | 1.94d | 2027-09-13 | 2027-09-14 | 4524 |  | 134720 |
| 4526 | 37100.37300.37600.38300.39300.40700.46700.488700 | 14th Floor | 1.94d | 2027-09-14 | 2027-09-16 | 4525 |  | 134730 |
| 4527 | 37100.37300.37600.38300.39300.40700.46700.488800 | 15th Floor | 1.94d | 2027-09-16 | 2027-09-18 | 4526 |  | 134740 |
| 4528 | 37100.37300.37600.38300.39300.40700.46700.488900 | 16th Floor | 1.94d | 2027-09-18 | 2027-09-20 | 4527 |  | 134750 |
| 4529 | 37100.37300.37600.38300.39300.40700.46700.489000 | 17th Floor | 1.94d | 2027-09-20 | 2027-09-22 | 4528 |  | 134760 |
| 4530 | 37100.37300.37600.38300.39300.40700.46700.489100 | 18th Floor | 1.94d | 2027-09-22 | 2027-09-24 | 4529 |  | 134770 |
| 4531 | 37100.37300.37600.38300.39300.40700.46700.489200 | 19th Floor | 1.94d | 2027-09-24 | 2027-09-26 | 4530 |  | 134780 |
| 4532 | 37100.37300.37600.38300.39300.40700.46700.489300 | 20th Floor | 1.94d | 2027-09-26 | 2027-09-28 | 4531 |  | 134790 |
| 4533 | 37100.37300.37600.38300.39300.40700.46700.489400 | 21st Floor | 1.94d | 2027-09-28 | 2027-09-30 | 4532 |  | 134800 |
| 4534 | 37100.37300.37600.38300.39300.40700.46700.489500 | 22nd Floor | 1.94d | 2027-09-30 | 2027-10-02 | 4533 |  | 134810 |
| 4535 | 37100.37300.37600.38300.39300.40700.46700.489600 | 23rd Floor | 1.94d | 2027-10-02 | 2027-10-04 | 4534 |  | 134820 |
| 4536 | 37100.37300.37600.38300.39300.40700.46700.489700 | 24th Floor | 1.94d | 2027-10-04 | 2027-10-06 | 4535 |  | 134830 |
| 4537 | 37100.37300.37600.38300.39300.40700.46700.489800 | 25th Floor | 1.94d | 2027-10-06 | 2027-10-08 | 4536 |  | 134840 |
| 4538 | 37100.37300.37600.38300.39300.40700.46700.489900 | 26th Floor | 1.94d | 2027-10-08 | 2027-10-10 | 4537 |  | 134850 |
| 4539 | 37100.37300.37600.38300.39300.40700.46700.490000 | 27th Floor | 1.94d | 2027-10-10 | 2027-10-12 | 4538 |  | 134860 |
| 4540 | 37100.37300.37600.38300.39300.40700.46700.490100 | 28th Floor | 1.94d | 2027-10-12 | 2027-10-13 | 4539 |  | 134870 |
| 4541 | 37100.37300.37600.38300.39300.40700.46700.490200 | 29th Floor | 1.94d | 2027-10-14 | 2027-10-15 | 4540 |  | 134880 |
| 4542 | 37100.37300.37600.38300.39300.40700.46700.490300 | 30th Floor | 1.94d | 2027-10-15 | 2027-10-17 | 4541 |  | 134890 |
| 4543 | 37100.37300.37600.38300.39300.40700.46700.490400 | 31st Floor | 1.94d | 2027-10-17 | 2027-10-19 | 4542 |  | 134900 |
| 4544 | 37100.37300.37600.38300.39300.40700.46700.490500 | 32nd Floor | 1.94d | 2027-10-19 | 2027-10-21 | 4543 |  | 134910 |
| 4545 | 37100.37300.37600.38300.39300.40700.46700.490600 | 33rd Floor | 1.94d | 2027-10-21 | 2027-10-23 | 4544 |  | 134920 |
| 4546 | 37100.37300.37600.38300.39300.40700.46700.490700 | 34th Floor | 1.94d | 2027-10-23 | 2027-10-25 | 4545 |  | 134930 |
| 4547 | 37100.37300.37600.38300.39300.40700.46700.490800 | 35th Floor | 1.94d | 2027-10-25 | 2027-10-27 | 4546 |  | 134940 |

| ID | WBS | Task | Duration | Start | Finish | Predecessors | Constraint | Unique_Task_ID |
| --- | --- | --- | --- | --- | --- | --- | --- | --- |
| 4548 | 37100.37300.37600.38300.95600 | **MEP work** | 970.25d | 2026-04-12 | 2029-01-21 |  | start no earlier than 2026-04-12 | 123320 |
| 4549 | 37100.37300.37600.38300.95600.97500 | **Electrical work** | 233.25d | 2027-01-09 | 2027-08-30 |  | start no earlier than 2027-01-09 | 123330 |
| 4550 | 37100.37300.37600.38300.95600.97500.330300 | Cable Tray | 89.94d | 2027-01-09 | 2027-04-08 | 3896 |  | 124500 |
| 4551 | 37100.37300.37600.38300.95600.97500.330400 | Cable, main & sub main | 79.94d | 2027-02-18 | 2027-05-08 | 4550SS+40d |  | 124510 |
| 4552 | 37100.37300.37600.38300.95600.97500.330500 | LT panel & DB | 119.94d | 2027-04-08 | 2027-08-06 | 4550 |  | 124520 |
| 4553 | 37100.37300.37600.38300.95600.97500.330600 | Rising main | 89.94d | 2027-06-01 | 2027-08-30 | 4550FS+53.38d |  | 124530 |
| 4554 | 37100.37300.37600.38300.95600.97500.330700 | EARTHING Works | 59.94d | 2027-04-22 | 2027-06-21 | 4550FS+13.38d |  | 124540 |
| 4555 | 37100.37300.37600.38300.95600.97500.330800 | Advance lightening protection | 59.94d | 2027-02-19 | 2027-04-19 | 4499 |  | 124550 |
| 4556 | 37100.37300.37600.38300.95600.97500.330900 | Inverter | 34.94d | 2027-06-21 | 2027-07-26 | 4554 |  | 124560 |
| 4557 | 37100.37300.37600.38300.95600.97500.331000 | Energy meter | 59.94d | 2027-05-08 | 2027-07-07 | 4551 |  | 124570 |
| 4558 | 37100.37300.37600.38300.95600.97500.331100 | Exhast fan | 59.94d | 2027-04-28 | 2027-06-27 | 4491FF+4.5d |  | 124580 |
| 4559 | 37100.37300.37600.38300.95600.97500.331200 | FTTH | 59.94d | 2027-06-12 | 2027-08-11 | 4554FS-9d |  | 124590 |
| 4560 | 37100.37300.37600.38300.95600.97500.331300 | Security System - FA & PA | 54.94d | 2027-06-17 | 2027-08-11 | 4559FF |  | 124600 |
| 4561 | 37100.37300.37600.38300.95600.97500.331400 | Solar water heater | 59.94d | 2027-02-19 | 2027-04-19 | 4499 |  | 124610 |
| 4562 | 37100.37300.37600.38300.95600.126900 | **Plumbing wrok** | 238.62d | 2027-01-10 | 2027-09-05 |  | start no earlier than 2027-01-10 | 123380 |
| 4563 | 37100.37300.37600.38300.95600.126900.331500 | Terrace looping | 44.94d | 2027-01-10 | 2027-02-23 | 4498 |  | 124620 |
| 4564 | 37100.37300.37600.38300.95600.126900.331600 | Shaft Plumbing | 119.94d | 2027-02-24 | 2027-06-23 | 4563 |  | 124630 |
| 4565 | 37100.37300.37600.38300.95600.126900.331700 | CP sanitary fixture supply | 74.94d | 2027-06-22 | 2027-09-05 | 4486, 4489FS+53.38d |  | 124640 |
| 4566 | 37100.37300.37600.38300.95600.126900.331800 | Cold & flushing water supply | 89.94d | 2027-04-19 | 2027-07-18 | 4502SS+380d |  | 124650 |
| 4567 | 37100.37300.37600.38300.95600.126900.331900 | Misc work | 29.94d | 2027-07-09 | 2027-08-08 | 4566FS-9d |  | 124660 |
| 4568 | 37100.37300.37600.38300.95600.169400 | **Fire fighting work** | 439.88d | 2026-04-12 | 2027-08-10 |  | start no earlier than 2026-04-12 | 123420 |
| 4569 | 37100.37300.37600.38300.95600.169400.332000 | Fire hydrant work | 89.94d | 2026-04-12 | 2026-07-11 | 4502SS+53.38d |  | 124670 |
| 4570 | 37100.37300.37600.38300.95600.169400.332100 | Sprinkler & piping work | 89.94d | 2027-05-12 | 2027-08-10 | 4569FS+260d |  | 124680 |
| 4571 | 37100.37300.37600.38300.95600.169400.332200 | Shaft Downtake works | 89.94d | 2027-01-10 | 2027-04-09 | 4498 |  | 124690 |
| 4572 | 37100.37300.37600.38300.95600.169400.332300 | Connection to pump room | 29.94d | 2027-04-10 | 2027-05-09 | 4571 |  | 124700 |

| ID | WBS | Task | Duration | Start | Finish | Predecessors | Constraint | Unique_Task_ID |
| --- | --- | --- | --- | --- | --- | --- | --- | --- |
| 4573 | 37100.37300.37600.38300.95600.187800 | **Lift work** | 304.88d | 2027-01-09 | 2027-11-09 |  | start no earlier than 2027-01-09 | 123800 |
| 4574 | 37100.37300.37600.38300.95600.187800.332400 | Lift Shaft Handover | 39.94d | 2027-01-09 | 2027-02-17 | 3896 |  | 124710 |
| 4575 | 37100.37300.37600.38300.95600.187800.332500 | Lift installation work | 180d | 2027-02-17 | 2027-08-16 | 4574 |  | 124720 |
| 4576 | 37100.37300.37600.38300.95600.187800.332600 | Lift testing and commissioning | 84.94d | 2027-08-16 | 2027-11-09 | 4575 |  | 124730 |
| 4577 | 37100.37300.37600.38300.95600.194500 | **AC work** | 89.94d | 2028-10-23 | 2029-01-21 |  | start no earlier than 2028-10-23 | 123870 |
| 4578 | 37100.37300.37600.38300.95600.194500.332700 | Split AC | 89.94d | 2028-10-23 | 2029-01-21 | 4594FS+110d |  | 124740 |
| 4579 | 37100.37300.37600.38300.131500 | **Tower Completion** | 266.88d | 2027-02-21 | 2027-11-15 |  | start no earlier than 2027-02-21 | 123400 |
| 4580 | 37100.37300.37600.38300.131500.266400 | SURFACE PREPARATION | 79.94d | 2027-02-21 | 2027-05-12 | 3934FS+1.88d |  | 123910 |
| 4581 | 37100.37300.37600.38300.131500.266500 | External Painting | 99.94d | 2027-05-12 | 2027-08-20 | 4580 |  | 123920 |
| 4582 | 37100.37300.37600.38300.131500.266600 | Final coat of painting | 87d | 2027-08-20 | 2027-11-15 | 4581 |  | 123930 |
| 4583 | 37100.37300.37600.38300.131500.266700 | Misc. work | 59.94d | 2027-08-20 | 2027-10-19 | 4581 |  | 123940 |
| 4584 | 37100.37300.37600.38300.192900 | **Entrance lobby** | 60d | 2027-03-05 | 2027-05-04 |  | start no earlier than 2027-03-05 | 123880 |
| 4585 | 37100.37300.37600.38300.192900.266800 | Entrance lobby | 60d | 2027-03-05 | 2027-05-04 | 4508FS+200d |  | 123970 |
| 4586 | 37100.37300.37600.38300.107000 | **Post OC activities** | 359.12d | 2028-04-17 | 2029-04-11 |  | start no earlier than 2028-04-17 | 123390 |
| 4587 | 37100.37300.37600.38300.107000.266900 | Wardrobe installation | 169.94d | 2028-06-09 | 2028-11-26 | 4594FS-26.75d |  | 123980 |
| 4588 | 37100.37300.37600.38300.107000.267000 | CP & SANITARYWARE | 109.94d | 2028-06-09 | 2028-09-27 | 4594FS-26.75d |  | 123990 |
| 4589 | 37100.37300.37600.38300.107000.267100 | Wooden Flooring | 169.94d | 2028-06-09 | 2028-11-26 | 4594FS-26.75d |  | 124000 |
| 4590 | 37100.37300.37600.38300.107000.267200 | Electrical Fixtures And Fittings | 86d | 2028-04-17 | 2028-07-12 | 4494 |  | 124010 |
| 4591 | 37100.37300.37600.38300.107000.267300 | Modular Kitchen | 169.94d | 2028-10-23 | 2029-04-11 | 4594FS+110d |  | 124011 |
| 4592 | 37100.37300.37600.38300.107000.267400 | External Elevation Façade | 89.94d | 2028-11-17 | 2029-02-15 | 4594FS+10d, 4511FS+0.25d |  | 124020 |
| 4593 | 37100.37300.37600.38300.255800 | OC Application/Readiness | 0d | 2028-05-12 | 2028-05-12 | 3896, 4503FS+7.12d, 4565, 4623, 3687, 3708, 3709, 4585, 4582, 4583, 4576, 4572, 4570, 4567, 4564, 4561, 4560, 4558, 4557, 4556, 4555, 4553, 4552, 4547, 4506, 4496 |  | 123890 |
| 4594 | 37100.37300.37600.38300.255900 | OC Receipt | 0.94d | 2028-07-05 | 2028-07-05 | 4593FS+53.38d |  | 123900 |
| 4595 | 37100.37300.37600.38300.256000 | Offer To Possession | 29.94d | 2029-04-11 | 2029-05-11 | 4587, 4588, 4589, 4590, 4591, 4592, 4578 |  | 132370 |
| 4596 | 37100.37300.37600.101900 | **External Infrastructure** | 794.88d | 2026-10-17 | 2029-02-02 |  | start no earlier than 2026-10-17 | 132100 |
| 4597 | 37100.37300.37600.101900.192800 | **External Firefightning Work** | 365d | 2027-02-01 | 2028-02-01 |  | start no earlier than 2027-02-01 | 132110 |
| 4598 | 37100.37300.37600.101900.192800.267500 | Excavation, Pipe Laying, Hydrant errection , Fitting , Testing & Commissioning | 365d | 2027-02-01 | 2028-02-01 | 4605FF+200d |  | 7571873 |

| ID | WBS | Task | Duration | Start | Finish | Predecessors | Complete | Constraint | Unique_Task_ID |
| --- | --- | --- | --- | --- | --- | --- | --- | --- | --- |
| 4599 | 37100.37300.37600.101900.106900 | **External Plumbing** | 436.81d | 2026-10-17 | 2028-02-10 |  |  | start no earlier than 2026-10-17 | 132120 |
| 4600 | 37100.37300.37600.101900.106900.194300 | **External Plumbing - Sewer** | 209.94d | 2026-10-17 | 2027-06-29 |  |  | start no earlier than 2026-10-17 | 132130 |
| 4601 | 37100.37300.37600.101900.106900.194300.332800 | Excavation, Pipe Laying, Filling , Testing & Commissioning | 209.94d | 2026-10-17 | 2027-06-29 | 3891 |  |  | 7574653 |
| 4602 | 37100.37300.37600.101900.106900.194200 | **External Plumbing - Watersupply** | 209.94d | 2027-07-16 | 2028-02-10 |  |  | start no earlier than 2027-07-16 | 132140 |
| 4603 | 37100.37300.37600.101900.106900.194200.332900 | Excavation, Pipe Laying, Filling , Testing & Commissioning | 209.94d | 2027-07-16 | 2028-02-10 | 4598FF+9d |  |  | 7574663 |
| 4604 | 37100.37300.37600.101900.106900.194100 | **External Plumbing - Storm Water** | 209.94d | 2026-12-19 | 2027-07-16 |  |  | start no earlier than 2026-12-19 | 132150 |
| 4605 | 37100.37300.37600.101900.106900.194100.333000 | Excavation, PCC, BBM , IPS, Cover fixing, Curing | 209.94d | 2026-12-19 | 2027-07-16 | 4601SS+17.88d |  |  | 7574673 |
| 4606 | 37100.37300.37600.101900.106900.194000 | **Rain water Harvesting work** | 209.94d | 2026-12-19 | 2027-07-16 |  |  | start no earlier than 2026-12-19 | 132160 |
| 4607 | 37100.37300.37600.101900.106900.194000.333100 | Rain water Harvesting work | 209.94d | 2026-12-19 | 2027-07-16 | 4605FF |  |  | 7574683 |
| 4608 | 37100.37300.37600.101900.106800 | **External Electrical Work** | 409.81d | 2027-06-25 | 2028-08-07 |  |  | start no earlier than 2027-06-25 | 132170 |
| 4609 | 37100.37300.37600.101900.106800.267600 | HV INSTALLATION | 150d | 2027-06-25 | 2027-11-22 | 3891FS+206d |  |  | 7571883 |
| 4610 | 37100.37300.37600.101900.106800.267700 | HT CABLES & LT CONTROL CABLES | 89.94d | 2027-11-22 | 2028-02-20 | 4609 |  |  | 132172 |
| 4611 | 37100.37300.37600.101900.106800.267800 | Street Light Fixing | 37.44d | 2027-12-01 | 2028-01-07 | 4610SS+9d |  |  | 132173 |
| 4612 | 37100.37300.37600.101900.106800.267900 | Street Light Fixing | 37.38d | 2028-01-07 | 2028-02-13 | 4611 |  |  | 8112234 |
| 4613 | 37100.37300.37600.101900.106800.268000 | External Road | 89.94d | 2028-05-09 | 2028-08-06 | 4697FF, 12, 934, 1852 |  |  | 132176 |
| 4614 | 37100.37300.37600.101900.106800.268100 | Completion of External Infrastructure | 0.94d | 2028-08-07 | 2028-08-07 | 4696, 4613, 4603, 4607 |  |  | 132177 |
| 4615 | 37100.37300.37600.101900.106800.268200 | D.G Set supply and installation | 240d | 2027-10-01 | 2028-05-28 |  |  | start no earlier than 2027-10-01 | 132187 |
| 4616 | 37100.37300.37600.101900.256100 | STP | 160d | 2028-08-07 | 2029-01-13 | 4613 |  |  | 132188 |
| 4617 | 37100.37300.37600.101900.256200 | WTP | 160d | 2028-08-07 | 2029-01-13 | 4613 |  |  | 132197 |
| 4618 | 37100.37300.37600.101900.256300 | Water body plumbing & electrical works | 180d | 2028-08-07 | 2029-02-02 | 4613 |  |  | 132207 |
| 4619 | 37100.37300.37600.47400 | **NTA works** | 1337.28d | 2024-06-01 | 2028-05-05 |  | 37% | start no earlier than 2024-06-01 | 132180 |
| 4620 | 37100.37300.37600.47400.209300 | Excavation | 139.94d | 2024-06-01 | 2026-02-23 |  | 50% | start no earlier than 2024-06-01 | 7571463 |
| 4621 | 37100.37300.37600.47400.256400 | Main Pile Work | 199.94d | 2025-11-30 | 2026-06-27 | 3683SS+30d |  |  | 7571473 |
| 4622 | 37100.37300.37600.47400.256500 | Backfilling | 89.94d | 2025-12-22 | 2026-03-22 | 4635SS+6.25d |  |  | 132182 |
| 4623 | 37100.37300.37600.47400.256600 | Boundary Wall | 210d | 2026-02-20 | 2026-09-18 | 4622FS-30d |  |  | 132183 |

| ID | WBS | Task | Duration | Start | Finish | Predecessors | Complete | Constraint | Unique_Task_ID |
| --- | --- | --- | --- | --- | --- | --- | --- | --- | --- |
| 4624 | 37100.37300.37600.47400.101800 | **RCC Works - Nontower area** | 1053.42d | 2024-07-01 | 2027-08-25 |  | 68% | start no earlier than 2024-07-01 | 132190 |
| 4625 | 37100.37300.37600.47400.101800.108500 | **NTA Raft/Footing** | 771.51d | 2024-07-01 | 2026-10-02 |  | 96% | start no earlier than 2024-07-01 | 132200 |
| 4626 | 37100.37300.37600.47400.101800.108500.333200 | Anti Termite | 14.94d | 2025-11-30 | 2025-12-24 | 4620FS-510.56d |  |  | 7574693 |
| 4627 | 37100.37300.37600.47400.101800.108500.231600 | PCC | 589.06d | 2024-07-01 | 2026-09-12 | 4620FS-602.26d | 94% | start no earlier than 2024-07-01 | 132202 |
| 4628 | 37100.37300.37600.47400.101800.108500.231500 | Reinforcement | 693.06d | 2024-08-06 | 2026-09-30 | 4627SS+25d | 98% | start no earlier than 2024-08-06 | 132203 |
| 4629 | 37100.37300.37600.47400.101800.108500.231300 | Shuttering | 685.85d | 2024-08-23 | 2026-10-02 | 4628SS+44.6d | 96% | start no earlier than 2024-08-23 | 132204 |
| 4630 | 37100.37300.37600.47400.101800.108500.231200 | Concreting | 501.88d | 2024-09-17 | 2026-04-04 | 4629SS+25d, 4630FS-511.84d | 96% | start no earlier than 2024-09-17 | 132205 |
| 4631 | 37100.37300.37600.47400.101800.126000 | **Retaining wall** | 575.06d | 2025-02-01 | 2026-09-20 |  | 51% | start no earlier than 2025-02-01 | 132210 |
| 4632 | 37100.37300.37600.47400.101800.126000.231000 | Reinforcement | 413.06d | 2025-02-01 | 2026-08-06 | 4627SS+30d | 64% | must start on 2025-07-22 | 7574703 |
| 4633 | 37100.37300.37600.47400.101800.126000.230900 | Shuttering | 363.06d | 2025-03-03 | 2026-06-11 | 4632SS+20d | 66% | must start on 2025-07-14 | 132212 |
| 4634 | 37100.37300.37600.47400.101800.126000.230800 | Concreting | 321.94d | 2025-03-10 | 2026-04-22 | 4627SS+20d, 4633SS+5d | 60% | start no earlier than 2025-03-10 | 132213 |
| 4635 | 37100.37300.37600.47400.101800.126000.230700 | Retaining wall waterproofing | 278.94d | 2025-12-16 | 2026-09-20 | 4634SS+9d | 1% | start no earlier than 2025-12-16 | 132214 |
| 4636 | 37100.37300.37600.47400.101800.166300 | **NTA Basement B2 slab** | 694.55d | 2024-09-30 | 2026-10-16 |  | 91% | start no earlier than 2024-09-30 | 132220 |
| 4637 | 37100.37300.37600.47400.101800.166300.230600 | Reinforcement | 251.06d | 2025-02-13 | 2026-04-03 |  | 100% | start no earlier than 2025-02-13 | 8023154 |
| 4638 | 37100.37300.37600.47400.101800.166300.230500 | Reinforcement | 77.25d | 2024-10-02 | 2026-06-12 | 4630SS-37.1d, 4634SS-474.38d, 4637 | 70% |  | 7574713 |
| 4639 | 37100.37300.37600.47400.101800.166300.230400 | Shuttering | 391.06d | 2024-09-30 | 2026-07-23 |  | 100% | start no earlier than 2024-09-30 | 132222 |
| 4640 | 37100.37300.37600.47400.101800.166300.230300 | Shuttering | 55.94d | 2026-07-23 | 2026-09-17 | 4637FF+26.75d, 4639 | 60% |  | 8112244 |
| 4641 | 37100.37300.37600.47400.101800.166300.230200 | Concreting | 101.4d | 2024-10-16 | 2026-09-04 |  | 100% | start no earlier than 2024-10-16 | 132223 |
| 4642 | 37100.37300.37600.47400.101800.166300.230100 | Concreting | 77.94d | 2025-07-15 | 2026-09-13 | 4641 | 88% |  | 8023174 |
| 4643 | 37100.37300.37600.47400.101800.166300.230000 | Concreting | 41.94d | 2025-12-24 | 2026-10-16 | 4640FF+4.5d, 4642 | 20% |  | 9446464 |
| 4644 | 37100.37300.37600.47400.101800.165400 | **NTA Basement B1 slab** | 485.97d | 2025-07-01 | 2027-01-04 |  | 36% | start no earlier than 2025-07-01 | 132230 |
| 4645 | 37100.37300.37600.47400.101800.165400.229900 | Reinforcement | 5.2d | 2026-07-06 | 2026-07-11 |  | 100% | start no earlier than 2026-07-06 | 9514486 |
| 4646 | 37100.37300.37600.47400.101800.165400.229800 | Reinforcement | 41.94d | 2025-07-01 | 2026-07-12 | 4643FS-373.25d, 4645 | 97% |  | 7574723 |
| 4647 | 37100.37300.37600.47400.101800.165400.229700 | Reinforcement | 50.64d | 2026-05-13 | 2026-07-27 | 4646 | 70% |  | 9446444 |
| 4648 | 37100.37300.37600.47400.101800.165400.229600 | Reinforcement | 3.16d | 2026-07-27 | 2026-07-31 | 4647 | 10% |  | 9514496 |
| 4649 | 37100.37300.37600.47400.101800.165400.229500 | Reinforcement | 111.3d | 2026-08-01 | 2027-01-04 | 4648 | 17% |  | 9446454 |
| 4650 | 37100.37300.37600.47400.101800.165400.229400 | Shuttering | 210.94d | 2026-01-23 | 2026-12-24 | 4649FF-1.88d | 40% |  | 132232 |
| 4651 | 37100.37300.37600.47400.101800.165400.229300 | Concreting | 44.14d | 2025-07-01 | 2025-10-15 |  | 100% | must start on 2025-06-30 | 132233 |
| 4652 | 37100.37300.37600.47400.101800.165400.229200 | Concreting | 35.37d | 2025-10-06 | 2026-01-06 | 4651 | 60% |  | 9446434 |
| 4653 | 37100.37300.37600.47400.101800.165400.333300 | Concreting | 67d | 2026-01-06 | 2026-03-14 | 4652 |  |  | 9514476 |
| 4654 | 37100.37300.37600.47400.101800.165400.333400 | Concreting | 10d | 2026-03-14 | 2026-03-24 | 4653 |  |  | 9514506 |
| 4655 | 37100.37300.37600.47400.101800.165400.333500 | Concreting | 100d | 2026-07-26 | 2026-12-18 | 4650FF+4.5d, 4654 |  |  | 9514466 |

| ID | WBS | Task | Duration | Start | Finish | Predecessors | Complete | Constraint | Unique_Task_ID |
| --- | --- | --- | --- | --- | --- | --- | --- | --- | --- |
| 4656 | 37100.37300.37600.47400.101800.164400 | **NTA Podium slab** | 731.8d | 2025-06-18 | 2027-08-25 |  | 7% | start no earlier than 2025-06-18 | 132240 |
| 4657 | 37100.37300.37600.47400.101800.164400.228800 | Reinforcement | 240d | 2025-06-18 | 2027-06-22 | 4655SS-424.18d | 11% |  | 7574733 |
| 4658 | 37100.37300.37600.47400.101800.164400.228500 | Shuttering | 240d | 2026-09-10 | 2027-06-22 | 4657FF+0.62d | 9% |  | 132242 |
| 4659 | 37100.37300.37600.47400.101800.164400.228400 | Concreting | 310d | 2026-09-04 | 2027-08-25 | 4658FF+5d | 2% |  | 132243 |
| 4660 | 37100.37300.37600.47400.131600 | **Basement and Podium Block work and Plaster finishing** | 605.03d | 2025-11-30 | 2027-09-20 |  |  | start no earlier than 2025-11-30 | 132250 |
| 4661 | 37100.37300.37600.47400.131600.268300 | Brick work/plaster | 100d | 2026-01-11 | 2026-04-21 | 4653SS+5.43d |  |  | 7571893 |
| 4662 | 37100.37300.37600.47400.131600.268400 | Finishing work-White Goods | 60d | 2027-07-22 | 2027-09-20 | 4663 |  |  | 132252 |
| 4663 | 37100.37300.37600.47400.131600.268500 | Painting (1st Coat) | 60d | 2027-05-23 | 2027-07-22 | 4664, 4659 |  |  | 132253 |
| 4664 | 37100.37300.37600.47400.131600.268600 | Vacuum Dewatered Flooring | 450d | 2025-11-30 | 2027-04-18 | 4659FS+26.75d |  | must start on 2025-07-01 | 132254 |
| 4665 | 37100.37300.37600.47400.48200 | **Basement and Podium services** | 830d | 2025-12-03 | 2028-05-05 |  |  | start no earlier than 2025-12-03 | 132260 |
| 4666 | 37100.37300.37600.47400.48200.268700 | Waterproofing | 150d | 2026-01-16 | 2026-06-15 | 4661SS+5d |  |  | 132280 |
| 4667 | 37100.37300.37600.47400.48200.268800 | Plumbing | 90d | 2026-01-21 | 2026-04-21 | 4661SS+10d |  |  | 7571903 |
| 4668 | 37100.37300.37600.47400.48200.268900 | Fire fighting | 365d | 2026-04-21 | 2027-06-05 | 4661 |  |  | 132270 |
| 4669 | 37100.37300.37600.47400.48200.269000 | Ventilation | 90d | 2027-09-20 | 2027-12-19 | 4663SS+120d |  |  | 132290 |
| 4670 | 37100.37300.37600.47400.48200.269100 | Electric conduiting and wiring work | 250d | 2025-12-03 | 2026-08-19 | 4668SS-130d |  |  | 132300 |
| 4671 | 37100.37300.37600.47400.48200.269200 | Security system FA-PA | 90d | 2026-08-19 | 2027-01-01 | 4670 |  |  | 132310 |
| 4672 | 37100.37300.37600.47400.48200.269300 | Stack parking (no of car parks) | 240d | 2027-05-31 | 2028-01-26 | 4670FS+240d |  |  | 132320 |
| 4673 | 37100.37300.37600.47400.48200.269400 | Completion of NTA | 1d | 2028-01-26 | 2028-01-27 | 4662, 4666, 4667, 4669, 4671, 4672 |  |  | 132330 |
| 4674 | 37100.37300.37600.47400.48200.269500 | Cable, main & sub main | 400d | 2027-04-01 | 2028-05-05 | 4681SS+10d |  |  | 10340788 |
| 4675 | 37100.37300.37600.47400.48200.269600 | Cable tray | 180d | 2026-01-30 | 2026-07-29 | 4667SS+9d |  |  | 10340798 |
| 4676 | 37100.37300.37600.47400.48200.269700 | LT panel & DB | 120d | 2027-10-08 | 2028-02-05 | 4681SS+200d |  |  | 10340808 |
| 4677 | 37100.37300.37600.47400.48200.269800 | Bus duct | 90d | 2026-01-16 | 2026-04-16 | 4666SS |  |  | 10340818 |
| 4678 | 37100.37300.37600.47400.48200.269900 | Earthing work | 150d | 2026-02-15 | 2026-07-15 | 4666SS+30d |  |  | 10340828 |
| 4679 | 37100.37300.37600.47400.48200.270000 | Fire fighting work | 120d | 2026-01-31 | 2026-05-31 | 4667SS+10d |  |  | 10340838 |
| 4680 | 37100.37300.37600.47400.48200.270100 | Fire hydrant system | 180d | 2026-01-30 | 2026-07-29 | 4667SS+9d |  |  | 10340839 |
| 4681 | 37100.37300.37600.47400.48200.270200 | Sprikler & piping | 270d | 2027-03-22 | 2027-12-17 | 4667FS+290d |  |  | 10340848 |
| 4682 | 37100.37300.37600.47400.48200.270300 | Fire pump & acc. | 210d | 2027-04-01 | 2027-10-28 | 4667SS+390d |  |  | 10340858 |
| 4683 | 37100.37300.37600.47400.48200.270400 | Gas flooding system | 210d | 2026-01-25 | 2026-08-23 | 4667SS+9d |  | must finish on 2026-08-23 | 10340868 |
| 4684 | 37100.37300.37600.47400.48200.270500 | Fire fighting work | 210d | 2026-01-30 | 2026-08-28 | 4667SS+9d |  |  | 10340878 |
| 4685 | 37100.37300.37600.47400.48200.270600 | Fire hydrant system | 240d | 2026-01-30 | 2026-09-27 | 4667SS+9d |  |  | 10340888 |
| 4686 | 37100.37300.37600.47400.48200.270700 | Lift work | 280d | 2027-01-26 | 2027-11-02 | 4666FS+180d |  |  | 10340898 |

| ID | WBS | Task | Duration | Start | Finish | Predecessors | Complete | Constraint | Calendar | Unique_Task_ID |
| --- | --- | --- | --- | --- | --- | --- | --- | --- | --- | --- |
| 4687 | 37100.37300.37600.189300 | **CLUB HOUSE** | 932.12d | 2025-07-07 | 2028-03-31 |  | 16% | start no earlier than 2025-07-07 |  | 8023144 |
| 4688 | 37100.37300.37600.189300.209100 | Club house Structure | 79.6d | 2025-07-07 | 2025-10-20 |  | 100% | start no earlier than 2025-07-07 |  | 8278224 |
| 4689 | 37100.37300.37600.189300.209000 | Club house Structure | 77.57d | 2026-04-05 | 2026-06-21 | 4688 | 50% |  |  | 8278225 |
| 4690 | 37100.37300.37600.189300.256700 | Club house Structure | 41.77d | 2028-01-10 | 2028-02-20 | 4689 |  |  |  | 8278226 |
| 4691 | 37100.37300.37600.189300.256800 | Club Finishing | 225d | 2026-02-01 | 2026-09-14 |  |  | start no earlier than 2026-02-01 |  | 8278234 |
| 4692 | 37100.37300.37600.189300.256900 | Club Finishing | 225d | 2027-08-20 | 2028-03-31 | 4691 |  |  |  | 8278235 |
| 4693 | 37100.37300.37600.189300.257000 | Club Mumty and Mchine room | 90d | 2025-12-16 | 2026-03-15 |  |  | start no earlier than 2025-12-16 |  | 10340918 |
| 4695 | 37100.37300.248300 | Soft Scape Work | 200d | 2027-04-02 | 2027-10-18 |  |  | start no earlier than 2027-04-02 |  | 132175 |
| 4696 | 37100.37300.248400 | Soft Scape Work | 200d | 2027-10-19 | 2028-05-05 | 4612FF+26.75d, 4695 |  |  |  | 132185 |
| 4697 | 37100.37300.248500 | Hard Scape Work | 590d | 2026-12-26 | 2028-08-06 | 4643FS+26.75d |  | start no earlier than 2026-12-26 |  | 132174 |
| 4698 | 37100.37300.107900 | **OC of Whole Project** | 1226.31d | 2025-12-16 | 2029-06-09 |  |  | start no earlier than 2025-12-16 |  | 132790 |
| 4699 | 37100.37300.107900.254100 | OC of Plot A all 5 Towers | 1d | 2028-08-07 | 2028-08-08 | 924, 1842, 2759, 3676, 4594, 4673, 4614 |  |  |  | 132800 |
| 4700 | 37100.37300.107900.1343600 | OC Reciept | 24.56d | 2025-12-16 | 2026-01-09 |  |  | start no earlier than 2025-12-16 |  | 8852454 |
| 4701 | 37100.37300.107900.254200 | OC Reciept | 1d | 2028-10-01 | 2028-10-02 | 4699FS+53.38d, 4700 |  |  |  | 132810 |
| 4702 | 37100.37300.107900.254300 | Possession | 90d | 2029-03-11 | 2029-06-09 | 4701FS+160d |  |  |  | 132820 |
| 4703 | 37100.37300.107900.1343500 | On Completion of MEP Services for retail Unit (Installation of unit electric points) | 5.44d | 2025-12-16 | 2025-12-21 |  |  | start no earlier than 2025-12-16 |  | 9323714 |
| 4704 | 37100.37300.107900.1343400 | On Application of Occupancy Certificate | 9.94d | 2025-12-16 | 2025-12-25 |  |  | start no earlier than 2025-12-16 |  | 9323724 |
| 4705 | 37100.37300.107900.1343300 | On Notice of Possession | 21.19d | 2025-12-16 | 2026-01-06 |  |  | start no earlier than 2025-12-16 |  | 9323734 |
| 4706 | 37100.37300.107900.1343200 | On completion of Retail structure | 9.94d | 2025-12-16 | 2025-12-25 |  |  | start no earlier than 2025-12-16 |  | 9323744 |
| 4707 | 37100.37300.248600 | Escalation | 51.94d | 2025-11-30 | 2026-01-30 |  |  | start no earlier than 2025-11-30 |  | 8852424 |
| 4708 | 37100.37300.248700 | Additional Pile | 99.81d | 2024-09-03 | 2026-01-28 | 4707SS-409.88d | 49% |  |  | 8852434 |
| 4709 | 37100.37300.248800 | Additional Pile | 4.94d | 2026-02-03 | 2026-02-08 | 4708 |  |  |  | 8852435 |
| 4710 | 37100.37300.215100 | Soilder Piling | 552.44d | 2024-10-10 | 2027-07-06 | 4708SS+37d | 4% | must start on 2025-07-15 |  | 8852444 |
| 4711 | 37100.37300.215000 | MS Bucket Work | 90d | 2025-01-01 | 2025-12-31 |  | 70% | start no earlier than 2025-01-01 | Indian Calendar | 9726456 |
| 4712 | 37100.37300.248900 | Misc. Heads - Labor Retention, Contractor Bonus, IGBC | 730d | 2027-04-01 | 2029-07-30 |  |  | start no earlier than 2027-04-01 | Indian Calendar | 9726457 |

| ID | WBS | Task | Duration | Start | Finish | Predecessors | Constraint | Calendar | Unique_Task_ID |
| --- | --- | --- | --- | --- | --- | --- | --- | --- | --- |
| 4715 | 37100.40200 | **Milestones** | 1d | 2025-12-01 | 2025-12-01 |  | start no earlier than 2025-12-01 | Yashwantpur Finshing | 10014170 |
| 4716 | 37100.40200.249000 | On Completion of Tower Raft for Tower 1 | 1d | 2025-12-01 | 2025-12-01 | 17 |  | Indian Calendar | 10014179 |
| 4717 | 37100.40200.1349200 | On Completion of Ground Floor for Tower 1 | 1d | 2025-12-01 | 2025-12-01 |  | start no earlier than 2025-12-01 | Indian Calendar | 10014189 |
| 4718 | 37100.40200.1349100 | On Completion of 10th Floor Slab for Tower 1 | 1d | 2025-12-01 | 2025-12-01 |  | start no earlier than 2025-12-01 | Indian Calendar | 10014199 |
| 4719 | 37100.40200.1349000 | On Completion of 15th Floor slab for Tower 1 | 1d | 2025-12-01 | 2025-12-01 |  | start no earlier than 2025-12-01 | Indian Calendar | 10014209 |
| 4720 | 37100.40200.1348900 | On Completion of 20th Floor slab for Tower 1 | 1d | 2025-12-01 | 2025-12-01 |  | start no earlier than 2025-12-01 | Indian Calendar | 10014219 |
| 4721 | 37100.40200.1348800 | On Completion of 25th Floor Slab for Tower 1 | 1d | 2025-12-01 | 2025-12-01 |  | start no earlier than 2025-12-01 | Indian Calendar | 10014229 |
| 4722 | 37100.40200.1348700 | On Completion of Terrace Slab for Tower 1 | 1d | 2025-12-01 | 2025-12-01 |  | start no earlier than 2025-12-01 | Indian Calendar | 10014239 |
| 4723 | 37100.40200.1348600 | On Completion of Unit Internal plaster for Tower 1 | 1d | 2025-12-01 | 2025-12-01 |  | start no earlier than 2025-12-01 | Indian Calendar | 10014249 |
| 4724 | 37100.40200.1348500 | On Completion of unit Flooring for Tower 1 | 1d | 2025-12-01 | 2025-12-01 |  | start no earlier than 2025-12-01 | Indian Calendar | 10014259 |
| 4725 | 37100.40200.1348400 | On Application of Occupancy Certificate for Tower 1 | 1d | 2025-12-01 | 2025-12-01 |  | start no earlier than 2025-12-01 | Indian Calendar | 10014269 |
| 4726 | 37100.40200.1348300 | On Offer of Possession for Tower 1 | 1d | 2025-12-01 | 2025-12-01 |  | start no earlier than 2025-12-01 | Indian Calendar | 10014279 |
| 4727 | 37100.40200.1348200 | On Completion of Tower Raft for Tower 2 | 1d | 2025-12-01 | 2025-12-01 |  | start no earlier than 2025-12-01 | Indian Calendar | 10014289 |
| 4728 | 37100.40200.1348100 | On Completion of Ground Floor for Tower 2 | 1d | 2025-12-01 | 2025-12-01 |  | start no earlier than 2025-12-01 | Indian Calendar | 10014299 |
| 4729 | 37100.40200.1348000 | On Completion of 10th Floor Slab for Tower 2 | 1d | 2025-12-01 | 2025-12-01 |  | start no earlier than 2025-12-01 | Indian Calendar | 10014309 |
| 4730 | 37100.40200.1347900 | On Completion of 15th Floor slab for Tower 2 | 1d | 2025-12-01 | 2025-12-01 |  | start no earlier than 2025-12-01 | Indian Calendar | 10014319 |
| 4731 | 37100.40200.1347800 | On Completion of 20th Floor slab for Tower 2 | 1d | 2025-12-01 | 2025-12-01 |  | start no earlier than 2025-12-01 | Indian Calendar | 10014329 |
| 4732 | 37100.40200.1347700 | On Completion of 25th Floor Slab for Tower 2 | 1d | 2025-12-01 | 2025-12-01 |  | start no earlier than 2025-12-01 | Indian Calendar | 10014339 |
| 4733 | 37100.40200.1347600 | On Completion of Terrace Slab for Tower 2 | 1d | 2025-12-01 | 2025-12-01 |  | start no earlier than 2025-12-01 | Indian Calendar | 10014349 |
| 4734 | 37100.40200.1347500 | On Completion of Unit Internal plaster for Tower 2 | 1d | 2025-12-01 | 2025-12-01 |  | start no earlier than 2025-12-01 | Indian Calendar | 10014359 |
| 4735 | 37100.40200.1347400 | On Completion of unit Flooring for Tower 2 | 1d | 2025-12-01 | 2025-12-01 |  | start no earlier than 2025-12-01 | Indian Calendar | 10014369 |
| 4736 | 37100.40200.1347300 | On Application of Occupancy Certificate for Tower 2 | 1d | 2025-12-01 | 2025-12-01 |  | start no earlier than 2025-12-01 | Indian Calendar | 10014379 |
| 4737 | 37100.40200.1347200 | On Offer of Possession for Tower 2 | 1d | 2025-12-01 | 2025-12-01 |  | start no earlier than 2025-12-01 | Indian Calendar | 10014389 |
| 4738 | 37100.40200.1347100 | On Completion of Tower Raft for Tower 3 | 1d | 2025-12-01 | 2025-12-01 |  | start no earlier than 2025-12-01 | Indian Calendar | 10014399 |
| 4739 | 37100.40200.1347000 | On Completion of Ground Floor for Tower 3 | 1d | 2025-12-01 | 2025-12-01 |  | start no earlier than 2025-12-01 | Indian Calendar | 10014409 |
| 4740 | 37100.40200.1346900 | On Completion of 10th Floor Slab for Tower 3 | 1d | 2025-12-01 | 2025-12-01 |  | start no earlier than 2025-12-01 | Indian Calendar | 10014419 |
| 4741 | 37100.40200.1346800 | On Completion of 15th Floor slab for Tower 3 | 1d | 2025-12-01 | 2025-12-01 |  | start no earlier than 2025-12-01 | Indian Calendar | 10014429 |
| 4742 | 37100.40200.1346700 | On Completion of 20th Floor slab for Tower 3 | 1d | 2025-12-01 | 2025-12-01 |  | start no earlier than 2025-12-01 | Indian Calendar | 10014439 |
| 4743 | 37100.40200.1346600 | On Completion of 25th Floor Slab for Tower 3 | 1d | 2025-12-01 | 2025-12-01 |  | start no earlier than 2025-12-01 | Indian Calendar | 10014449 |
| 4744 | 37100.40200.1346500 | On Completion of Terrace Slab for Tower 3 | 1d | 2025-12-01 | 2025-12-01 |  | start no earlier than 2025-12-01 | Indian Calendar | 10014459 |
| 4745 | 37100.40200.1346400 | On Completion of Unit Internal plaster for Tower 3 | 1d | 2025-12-01 | 2025-12-01 |  | start no earlier than 2025-12-01 | Indian Calendar | 10014469 |
| 4746 | 37100.40200.1346300 | On Completion of unit Flooring for Tower 3 | 1d | 2025-12-01 | 2025-12-01 |  | start no earlier than 2025-12-01 | Indian Calendar | 10014479 |
| 4747 | 37100.40200.1346200 | On Application of Occupancy Certificate for Tower 3 | 1d | 2025-12-01 | 2025-12-01 |  | start no earlier than 2025-12-01 | Indian Calendar | 10014489 |
| 4748 | 37100.40200.1346100 | On Offer of Possession for Tower 3 | 1d | 2025-12-01 | 2025-12-01 |  | start no earlier than 2025-12-01 | Indian Calendar | 10014499 |
| 4749 | 37100.40200.1346000 | On Completion of Tower Raft for Tower 4 | 1d | 2025-12-01 | 2025-12-01 |  | start no earlier than 2025-12-01 | Indian Calendar | 10014509 |
| 4750 | 37100.40200.1345900 | On Completion of Ground Floor for Tower 4 | 1d | 2025-12-01 | 2025-12-01 |  | start no earlier than 2025-12-01 | Indian Calendar | 10014519 |
| 4751 | 37100.40200.1345800 | On Completion of 10th Floor Slab for Tower 4 | 1d | 2025-12-01 | 2025-12-01 |  | start no earlier than 2025-12-01 | Indian Calendar | 10014529 |
| 4752 | 37100.40200.1345700 | On Completion of 15th Floor slab for Tower 4 | 1d | 2025-12-01 | 2025-12-01 |  | start no earlier than 2025-12-01 | Indian Calendar | 10014539 |
| 4753 | 37100.40200.1345600 | On Completion of 20th Floor slab for Tower 4 | 1d | 2025-12-01 | 2025-12-01 |  | start no earlier than 2025-12-01 | Indian Calendar | 10014549 |
| 4754 | 37100.40200.1345500 | On Completion of 25th Floor Slab for Tower 4 | 1d | 2025-12-01 | 2025-12-01 |  | start no earlier than 2025-12-01 | Indian Calendar | 10014559 |
| 4755 | 37100.40200.1345400 | On Completion of Terrace Slab for Tower 4 | 1d | 2025-12-01 | 2025-12-01 |  | start no earlier than 2025-12-01 | Indian Calendar | 10014569 |
| 4756 | 37100.40200.1345300 | On Completion of Unit Internal plaster for Tower 4 | 1d | 2025-12-01 | 2025-12-01 |  | start no earlier than 2025-12-01 | Indian Calendar | 10014579 |
| 4757 | 37100.40200.1345200 | On Completion of unit Flooring for Tower 4 | 1d | 2025-12-01 | 2025-12-01 |  | start no earlier than 2025-12-01 | Indian Calendar | 10014589 |
| 4758 | 37100.40200.1345100 | On Application of Occupancy Certificate for Tower 4 | 1d | 2025-12-01 | 2025-12-01 |  | start no earlier than 2025-12-01 | Indian Calendar | 10014599 |
| 4759 | 37100.40200.1345000 | On Offer of Possession for Tower 4 | 1d | 2025-12-01 | 2025-12-01 |  | start no earlier than 2025-12-01 | Indian Calendar | 10014609 |
| 4760 | 37100.40200.1344900 | On Completion of Tower Raft for Tower 5 | 1d | 2025-12-01 | 2025-12-01 |  | start no earlier than 2025-12-01 | Indian Calendar | 10014619 |
| 4761 | 37100.40200.1344800 | On Completion of Ground Floor for Tower 5 | 1d | 2025-12-01 | 2025-12-01 |  | start no earlier than 2025-12-01 | Indian Calendar | 10014629 |
| 4762 | 37100.40200.1344700 | On Completion of 10th Floor Slab for Tower 5 | 1d | 2025-12-01 | 2025-12-01 |  | start no earlier than 2025-12-01 | Indian Calendar | 10014639 |
| 4763 | 37100.40200.1344600 | On Completion of 15th Floor slab for Tower 5 | 1d | 2025-12-01 | 2025-12-01 |  | start no earlier than 2025-12-01 | Indian Calendar | 10014649 |
| 4764 | 37100.40200.1344500 | On Completion of 20th Floor slab for Tower 5 | 1d | 2025-12-01 | 2025-12-01 |  | start no earlier than 2025-12-01 | Indian Calendar | 10014659 |
| 4765 | 37100.40200.1344400 | On Completion of 25th Floor Slab for Tower 5 | 1d | 2025-12-01 | 2025-12-01 |  | start no earlier than 2025-12-01 | Indian Calendar | 10014669 |
| 4766 | 37100.40200.1344300 | On Completion of Terrace Slab for Tower 5 | 1d | 2025-12-01 | 2025-12-01 |  | start no earlier than 2025-12-01 | Indian Calendar | 10014679 |
| 4767 | 37100.40200.1344200 | On Completion of Unit Internal plaster for Tower 5 | 1d | 2025-12-01 | 2025-12-01 |  | start no earlier than 2025-12-01 | Indian Calendar | 10014689 |
| 4768 | 37100.40200.1344100 | On Completion of unit Flooring for Tower 5 | 1d | 2025-12-01 | 2025-12-01 |  | start no earlier than 2025-12-01 | Indian Calendar | 10014699 |
| 4769 | 37100.40200.1344000 | On Application of Occupancy Certificate for Tower 5 | 1d | 2025-12-01 | 2025-12-01 |  | start no earlier than 2025-12-01 | Indian Calendar | 10014709 |
| 4770 | 37100.40200.1343900 | On Offer of Possession for Tower 5 | 1d | 2025-12-01 | 2025-12-01 |  | start no earlier than 2025-12-01 | Indian Calendar | 10014719 |
