Schedule from MS Project XML, 2024-03-23 to 2031-09-17, A marks actual dates.

## Calendars

- Standard: Mon-Fri 08:00-12:00, 13:00-17:00; Sat-Sun off. Exceptions (off unless hours are given): 2024-03-29 to 2024-04-01, 2024-05-06, 2024-05-27, 2024-08-26, 2024-12-23 to 2025-01-05, 2025-04-18 to 2025-04-21, 2025-05-05, 2025-05-26, 2025-08-25, 2025-12-22 to 2026-01-04, 2026-03-27 to 2026-03-30, 2026-05-04, 2026-05-23 to 2026-05-25, 2026-08-29 to 2026-08-31, 2026-12-21 to 2027-01-03, 2027-04-16 to 2027-04-19, 2027-05-01 to 2027-05-03, 2027-05-29 to 2027-05-31, 2027-08-30, 2027-12-25 to 2028-01-09, 2028-03-31 to 2028-04-03, 2028-04-29 to 2028-05-01, 2028-05-27 to 2028-05-29, 2028-08-26 to 2028-08-28, 2028-12-23 to 2029-01-07, 2029-03-23 to 2029-03-26, 2029-05-07, 2029-05-28, 2029-08-27, 2029-12-24 to 2030-01-06, 2030-04-12 to 2030-04-15, 2030-05-06, 2030-05-27, 2030-08-26, 2030-12-23 to 2031-01-05, 2031-03-28 to 2031-03-31, 2031-05-05, 2031-05-26, 2031-08-25.
- 7 day week No holidays: Mon-Sun 08:00-12:00, 13:00-17:00.
- Indian Calendar: Mon-Sat 08:00-12:00, 13:00-17:00; Sun off. Exceptions (off unless hours are given): 2024-07-01 to 2024-07-06 08:00-10:00, 14:00-17:00, 2024-07-07, 2024-07-08 to 2024-07-13 08:00-10:00, 14:00-17:00, 2024-07-14, 2024-07-15 to 2024-07-20 08:00-10:00, 14:00-17:00, 2024-07-21, 2024-07-22 to 2024-07-27 08:00-10:00, 14:00-17:00, 2024-07-28, 2024-07-29 to 2024-07-31 08:00-10:00, 14:00-17:00, 2024-08-01 to 2024-08-03 08:00-10:00, 11:00-12:00, 13:00-17:00, 2024-08-04, 2024-08-05 to 2024-08-10 08:00-10:00, 11:00-12:00, 13:00-17:00, 2024-08-11, 2024-08-12 to 2024-08-17 08:00-10:00, 11:00-12:00, 13:00-17:00, 2024-08-18, 2024-08-19 to 2024-08-24 08:00-10:00, 11:00-12:00, 13:00-17:00, 2024-08-25, 2024-08-26 to 2024-08-31 08:00-10:00, 11:00-12:00, 13:00-17:00, 2024-09-01, 2024-09-02 to 2024-09-07 08:00-10:00, 11:00-12:00, 13:00-17:00, 2024-09-08, 2024-09-09 to 2024-09-14 08:00-10:00, 11:00-12:00, 13:00-17:00, 2024-09-15, 2024-09-16 to 2024-09-21 08:00-10:00, 11:00-12:00, 13:00-17:00, 2024-09-22, 2024-09-23 to 2024-09-28 08:00-10:00, 11:00-12:00, 13:00-17:00, 2024-09-29, 2024-09-30 08:00-10:00, 11:00-12:00, 13:00-17:00.
- Zenith: Mon-Sun 08:00-12:00, 13:00-17:00. Exceptions (off unless hours are given): 2024-11-01 to 2024-12-15, 2025-12-01 to 2025-12-15, 2026-11-01 to 2026-12-15, 2027-11-01 to 2027-12-15, 2028-11-01 to 2028-12-15, 2029-11-01 to 2029-12-15, 2030-11-01 to 2030-12-15.
- Yashwantpur Finshing: Mon-Fri 08:00-12:00, 13:00-17:00; Sat-Sun off.

## Resources

| Resource |
| --- |
| Project Costs |
| Zenith |
| Project Costs |
| Aristocrat |
| GPL Revenue |

## Schedule

| ID | WBS | Task | Duration | Start | Finish | Predecessors | Complete | Constraint | Calendar | Unique_Task_ID |
| --- | --- | --- | --- | --- | --- | --- | --- | --- | --- | --- |
| 1 | 36900 | **Zenith / Sec 89** | 2734.38ed | 2024-03-23 | 2031-09-17 |  | 4% | start no earlier than 2024-03-23 |  | 8647514 |
| 2 | 36900.37000 | **Godrej Zenith** | 2450d | 2024-03-23 | 2031-09-17 |  | 4% | start no earlier than 2024-03-23 | Zenith | 8647524 |
| 3 | 36900.37000.37100 | **Phase 01** | 1935.25d | 2024-03-23 | 2030-03-07 |  | 5% | start no earlier than 2024-03-23 | Zenith | 8647534 |
| 4 | 36900.37000.37100.142900 | **Pre-Contract Work** | 112d | 2024-05-30 | 2024-09-18 |  | 100% | start no earlier than 2024-05-30 | Zenith | 8652824 |
| 5 | 36900.37000.37100.142900.222900 | **Tender Drawing Release** | 1d | 2024-05-30 | 2024-05-30 |  | 100% | start no earlier than 2024-05-30 | Zenith | 8656934 |
| 6 | 36900.37000.37100.142900.222900.239500 | Core & Shell | 1d | 2024-05-30 | 2024-05-30 |  | 100% | start no earlier than 2024-05-30 | Zenith | 8731954 |
| 7 | 36900.37000.37100.142900.222800 | **BOQ Release** | 22d | 2024-05-31 | 2024-06-21 |  | 100% | start no earlier than 2024-05-31 | Zenith | 8656944 |
| 8 | 36900.37000.37100.142900.222800.239400 | Core & Shell | 22d | 2024-05-31 | 2024-06-21 | 6 | 100% | start no earlier than 2024-05-31 | Zenith | 8731944 |
| 9 | 36900.37000.37100.142900.222700 | **Work Award** | 87d | 2024-06-24 | 2024-09-18 |  | 100% | start no earlier than 2024-06-24 | Zenith | 8656954 |
| 10 | 36900.37000.37100.142900.222700.239300 | Core & Shell | 87d | 2024-06-24 | 2024-09-18 | 8FS+1d | 100% | start no earlier than 2024-06-24 | Zenith | 8731934 |
| 11 | 36900.37000.37100.37900 | **Tower 04** | 1644.25d | 2024-04-01 | 2029-04-14 |  | 5% | start no earlier than 2024-04-01 | Zenith | 8647594 |
| 12 | 36900.37000.37100.37900.63300 | **Sub-Structure Works** | 662d | 2024-04-01 | 2026-03-23 |  | 78% | start no earlier than 2024-04-01 | Zenith | 8648354 |
| 13 | 36900.37000.37100.37900.63300.140500 | **Soil Bed Preparation** | 196d | 2024-04-01 | 2024-10-13 |  | 100% | start no earlier than 2024-04-01 | Zenith | 8652804 |
| 14 | 36900.37000.37100.37900.63300.140500.228200 | Excavation (2m) | 71d | 2024-04-01 | 2024-06-10 |  | 100% | must start on 2024-04-01 | Zenith | 8726684 |
| 15 | 36900.37000.37100.37900.63300.140500.228100 | Soldier Piling shop drawing approval | 21d | 2024-04-15 | 2024-07-09 | 14FF+25d | 100% | start no earlier than 2024-04-15 | Zenith | 8726674 |
| 16 | 36900.37000.37100.37900.63300.140500.228000 | Mobilization & Soldier Piling with Excavation (4m) | 102d | 2024-06-14 | 2024-09-28 | 15FS+87d | 100% | start no earlier than 2024-06-14 | Zenith | 8726664 |
| 17 | 36900.37000.37100.37900.63300.140500.227900 | Balance B3 bulk Excavation | 57d | 2024-05-15 | 2024-09-29 | 16FS-133d | 100% | start no earlier than 2024-05-15 | Zenith | 8726654 |
| 18 | 36900.37000.37100.37900.63300.140500.227800 | Soil dressing & ATT | 10d | 2024-10-04 | 2024-10-13 | 17FS+8d | 100% | start no earlier than 2024-10-04 | Zenith | 8726644 |
| 19 | 36900.37000.37100.37900.63300.116700 | **Structure Works** | 292d | 2024-10-11 | 2025-09-12 |  | 100% | start no earlier than 2024-10-11 | Zenith | 8651744 |
| 20 | 36900.37000.37100.37900.63300.116700.143500 | **Raft Foundation** | 62d | 2024-10-11 | 2025-01-25 |  | 100% | start no earlier than 2024-10-11 | Zenith | 8652624 |
| 21 | 36900.37000.37100.37900.63300.116700.143500.276300 | PCC | 7d | 2024-10-11 | 2024-10-23 | 10FS+15d, 18 | 100% | start no earlier than 2024-10-11 | Zenith | 8696184 |
| 22 | 36900.37000.37100.37900.63300.116700.143500.276200 | Column/SW layout marking | 1d | 2024-10-31 | 2024-11-10 | 21 | 100% | start no earlier than 2024-10-31 | Zenith | 8696174 |
| 23 | 36900.37000.37100.37900.63300.116700.143500.276100 | Reinforcement | 59d | 2024-10-12 | 2025-01-23 | 22FS+2d | 100% | start no earlier than 2024-10-12 | Zenith | 8696164 |
| 24 | 36900.37000.37100.37900.63300.116700.143500.276000 | Formwork (Conventional) | 3d | 2025-01-21 | 2025-01-23 | 23FF+3d | 100% | start no earlier than 2025-01-21 | Zenith | 8696154 |
| 25 | 36900.37000.37100.37900.63300.116700.143500.275900 | Concreting | 3d | 2025-01-23 | 2025-01-25 | 24FF+3d | 100% | start no earlier than 2025-01-23 | Zenith | 8696144 |

| ID | WBS | Task | Duration | Start | Finish | Predecessors | Complete | Constraint | Calendar | Unique_Task_ID |
| --- | --- | --- | --- | --- | --- | --- | --- | --- | --- | --- |
| 26 | 36900.37000.37100.37900.63300.116700.134600 | **Basement 03 Roof Slab (Dummy/Stitch Slab)** | 6d | 2025-03-24 | 2025-03-29 |  | 100% | start no earlier than 2025-03-24 | Zenith | 8652584 |
| 27 | 36900.37000.37100.37900.63300.116700.134600.275800 | Column/SW Reinforcement | 1d | 2025-03-24 | 2025-03-24 | 25 | 100% | start no earlier than 2025-03-24 | Zenith | 8696134 |
| 28 | 36900.37000.37100.37900.63300.116700.134600.275700 | SW Formwork (Conventional) | 1d | 2025-03-25 | 2025-03-25 | 27SS+1d | 100% | start no earlier than 2025-03-25 | Zenith | 8696124 |
| 29 | 36900.37000.37100.37900.63300.116700.134600.275600 | Column/SW Concreting | 1d | 2025-03-26 | 2025-03-26 | 28SS+1d | 100% | start no earlier than 2025-03-26 | Zenith | 8696114 |
| 30 | 36900.37000.37100.37900.63300.116700.134600.275500 | Slab Formwork (Conventional) | 1d | 2025-03-27 | 2025-03-27 | 29SS+1d | 100% | start no earlier than 2025-03-27 | Zenith | 8696104 |
| 31 | 36900.37000.37100.37900.63300.116700.134600.275400 | Slab Reinforcement + Conduting | 1d | 2025-03-28 | 2025-03-28 | 30 | 100% | start no earlier than 2025-03-28 | Zenith | 8696094 |
| 32 | 36900.37000.37100.37900.63300.116700.134600.275300 | Concreting | 1d | 2025-03-29 | 2025-03-29 | 31 | 100% | start no earlier than 2025-03-29 | Zenith | 8696084 |
| 33 | 36900.37000.37100.37900.63300.116700.134700 | **Basement 02 Roof Slab** | 64.6d | 2025-02-06 | 2025-04-11 |  | 100% | start no earlier than 2025-02-06 | Zenith | 8652574 |
| 34 | 36900.37000.37100.37900.63300.116700.134700.275200 | Column/SW Reinforcement | 13d | 2025-02-06 | 2025-03-02 | 32FS-21d | 100% | start no earlier than 2025-02-06 | Zenith | 8696074 |
| 35 | 36900.37000.37100.37900.63300.116700.134700.275100 | SW Formwork (Conventional) | 12d | 2025-02-19 | 2025-03-19 | 34SS+11d | 100% | start no earlier than 2025-02-19 | Zenith | 8696064 |
| 36 | 36900.37000.37100.37900.63300.116700.134700.275000 | Column/SW Concreting | 10d | 2025-02-25 | 2025-03-20 | 35SS+6d | 100% | start no earlier than 2025-02-25 | Zenith | 8696054 |
| 37 | 36900.37000.37100.37900.63300.116700.134700.274900 | Slab Formwork (Conventional) | 10d | 2025-03-02 | 2025-03-30 | 36SS+5d | 100% | start no earlier than 2025-03-02 | Zenith | 8696044 |
| 38 | 36900.37000.37100.37900.63300.116700.134700.274800 | Slab Reinforcement + Conduting | 14d | 2025-03-24 | 2025-04-10 | 37 | 100% | start no earlier than 2025-03-24 | Zenith | 8696034 |
| 39 | 36900.37000.37100.37900.63300.116700.134700.274700 | Concreting | 3d | 2025-03-30 | 2025-04-11 | 38FS-9.4d | 100% | start no earlier than 2025-03-30 | Zenith | 8696024 |
| 40 | 36900.37000.37100.37900.63300.116700.134800 | **Basement 01 Roof/ GFSlab** | 70d | 2025-04-08 | 2025-06-16 |  | 100% | start no earlier than 2025-04-08 | Zenith | 8652564 |
| 41 | 36900.37000.37100.37900.63300.116700.134800.274600 | Column/SW Reinforcement | 16d | 2025-04-08 | 2025-05-09 | 39 | 100% | start no earlier than 2025-04-08 | Zenith | 8696014 |
| 42 | 36900.37000.37100.37900.63300.116700.134800.274500 | SW Formwork (Conventional) | 12d | 2025-04-20 | 2025-05-25 | 41SS+12d | 100% | start no earlier than 2025-04-20 | Zenith | 8696004 |
| 43 | 36900.37000.37100.37900.63300.116700.134800.274400 | Column/SW Concreting | 17d | 2025-04-23 | 2025-06-08 | 42SS+3d | 100% | start no earlier than 2025-04-23 | Zenith | 8695994 |
| 44 | 36900.37000.37100.37900.63300.116700.134800.274300 | Slab Formwork (Conventional) | 10d | 2025-05-10 | 2025-06-12 | 43SS+14d | 100% | start no earlier than 2025-05-10 | Zenith | 8695984 |
| 45 | 36900.37000.37100.37900.63300.116700.134800.274200 | Slab Reinforcement + Conduting | 3d | 2025-05-27 | 2025-06-15 | 44FS-18d | 100% | start no earlier than 2025-05-27 | Zenith | 8695974 |
| 46 | 36900.37000.37100.37900.63300.116700.134800.274100 | Concreting | 5d | 2025-06-01 | 2025-06-16 | 45FS-13d | 100% | start no earlier than 2025-06-01 | Zenith | 8695964 |
| 47 | 36900.37000.37100.37900.63300.116700.134900 | **Podium Slab/Ground Roof Floor Slab** | 96d | 2025-06-09 | 2025-09-12 |  | 100% | start no earlier than 2025-06-09 | Zenith | 8652554 |
| 48 | 36900.37000.37100.37900.63300.116700.134900.274000 | Column/SW Reinforcement | 24d | 2025-06-09 | 2025-08-10 | 46 | 100% | start no earlier than 2025-06-09 | Zenith | 8695954 |
| 49 | 36900.37000.37100.37900.63300.116700.134900.273900 | SW Formwork (Conventional) | 13d | 2025-06-28 | 2025-08-27 | 48SS+19d | 100% | start no earlier than 2025-06-28 | Zenith | 8695944 |
| 50 | 36900.37000.37100.37900.63300.116700.134900.273800 | Column/SW Concreting | 12d | 2025-06-29 | 2025-08-27 | 49SS+2d | 100% | start no earlier than 2025-06-29 | Zenith | 8695934 |
| 51 | 36900.37000.37100.37900.63300.116700.134900.273700 | Slab Formwork (Conventional) | 12d | 2025-07-26 | 2025-09-09 | 50SS+22d | 100% | start no earlier than 2025-07-26 | Zenith | 8695924 |
| 52 | 36900.37000.37100.37900.63300.116700.134900.273600 | Slab Reinforcement + Conduting | 19d | 2025-07-29 | 2025-09-09 | 51FS-42d | 100% | start no earlier than 2025-07-29 | Zenith | 8695914 |
| 53 | 36900.37000.37100.37900.63300.116700.134900.273500 | Concreting | 1d | 2025-09-12 | 2025-09-12 | 52 | 100% | start no earlier than 2025-09-12 | Zenith | 8695904 |

| ID | WBS | Task | Duration | Start | Finish | Predecessors | Complete | Constraint | Calendar | Unique_Task_ID |
| --- | --- | --- | --- | --- | --- | --- | --- | --- | --- | --- |
| 54 | 36900.37000.37100.37900.63300.212200 | **Substructure Finishes** | 110d | 2025-11-19 | 2026-03-23 |  |  | start no earlier than 2025-11-19 | Zenith | 8654544 |
| 55 | 36900.37000.37100.37900.63300.212200.801300 | Masonary Work | 35d | 2025-11-19 | 2026-01-07 | 53FS+30d |  |  | Zenith | 8726634 |
| 56 | 36900.37000.37100.37900.63300.212200.801400 | Plaster Work | 30d | 2026-01-08 | 2026-02-06 | 55 |  |  | Zenith | 8726624 |
| 57 | 36900.37000.37100.37900.63300.212200.801500 | Structural Steel work | 50d | 2025-11-19 | 2026-01-22 | 53FS+60d |  |  | Zenith | 8726614 |
| 58 | 36900.37000.37100.37900.63300.212200.801600 | White Wash & Misc. | 35d | 2026-02-17 | 2026-03-23 | 56FS+10d |  |  | Zenith | 8726604 |
| 59 | 36900.37000.37100.37900.39000 | **Superstructure** | 779d | 2025-09-18 | 2028-02-18 |  |  | start no earlier than 2025-09-18 | Zenith | 8647684 |
| 60 | 36900.37000.37100.37900.39000.44600 | **RCC structure** | 503.25d | 2025-09-18 | 2027-04-04 |  | 6% | start no earlier than 2025-09-18 | Zenith | 8647954 |
| 61 | 36900.37000.37100.37900.39000.44600.144000 | **1st Floor Roof slab** | 78d | 2025-09-18 | 2025-12-19 |  | 85% | start no earlier than 2025-09-18 | Zenith | 8655934 |
| 62 | 36900.37000.37100.37900.39000.44600.144000.273400 | Reinforcement | 18d | 2025-09-18 | 2025-12-19 | 53 | 83% | start no earlier than 2025-09-18 | Zenith | 8695894 |
| 63 | 36900.37000.37100.37900.39000.44600.144000.273300 | Conduiting | 22d | 2025-09-22 | 2025-11-20 | 62SS+3d | 90% | start no earlier than 2025-09-22 | Zenith | 8695884 |
| 64 | 36900.37000.37100.37900.39000.44600.144000.273200 | Formwork | 21d | 2025-09-21 | 2025-11-20 | 62SS+4d | 90% | start no earlier than 2025-09-21 | Zenith | 8695874 |
| 65 | 36900.37000.37100.37900.39000.44600.144000.273100 | Concreting | 14d | 2025-09-23 | 2025-11-25 | 63FS-59d, 64FS-60d | 71% |  | Zenith | 8695864 |
| 66 | 36900.37000.37100.37900.39000.44600.166300 | **2nd Floor Roof slab** | 23d | 2025-11-26 | 2026-01-02 |  |  | start no earlier than 2025-11-26 | Zenith | 8655914 |
| 67 | 36900.37000.37100.37900.39000.44600.166300.899700 | Reinforcement | 18d | 2025-11-26 | 2025-12-28 | 65 |  |  | Zenith | 8695854 |
| 68 | 36900.37000.37100.37900.39000.44600.166300.899800 | Conduiting | 18d | 2025-11-29 | 2025-12-31 | 67SS+3d |  |  | Zenith | 8695844 |
| 69 | 36900.37000.37100.37900.39000.44600.166300.899900 | Formwork | 18d | 2025-11-30 | 2026-01-01 | 67SS+4d |  |  | Zenith | 8695834 |
| 70 | 36900.37000.37100.37900.39000.44600.166300.900000 | Concreting | 1d | 2026-01-02 | 2026-01-02 | 68FS+1d, 69 |  |  | Zenith | 8695824 |
| 71 | 36900.37000.37100.37900.39000.44600.166400 | **3rd Floor Roof slab** | 15d | 2026-01-03 | 2026-01-17 |  |  | start no earlier than 2026-01-03 | Zenith | 8655904 |
| 72 | 36900.37000.37100.37900.39000.44600.166400.900100 | Reinforcement | 10d | 2026-01-03 | 2026-01-12 | 70 |  |  | Zenith | 8695814 |
| 73 | 36900.37000.37100.37900.39000.44600.166400.900200 | Conduiting | 10d | 2026-01-06 | 2026-01-15 | 72SS+3d |  |  | Zenith | 8695804 |
| 74 | 36900.37000.37100.37900.39000.44600.166400.900300 | Formwork | 10d | 2026-01-07 | 2026-01-16 | 72SS+4d |  |  | Zenith | 8695794 |
| 75 | 36900.37000.37100.37900.39000.44600.166400.900400 | Concreting | 1d | 2026-01-17 | 2026-01-17 | 73FS+1d, 74 |  |  | Zenith | 8695784 |
| 76 | 36900.37000.37100.37900.39000.44600.166500 | **4th floor roof slab** | 9d | 2026-01-18 | 2026-01-26 |  |  | start no earlier than 2026-01-18 | Zenith | 8655884 |
| 77 | 36900.37000.37100.37900.39000.44600.166500.900500 | Reinforcement | 6d | 2026-01-18 | 2026-01-23 | 75 |  |  | Zenith | 8695774 |
| 78 | 36900.37000.37100.37900.39000.44600.166500.900600 | Conduiting | 6d | 2026-01-19 | 2026-01-24 | 77SS+1d |  |  | Zenith | 8695764 |
| 79 | 36900.37000.37100.37900.39000.44600.166500.900700 | Formwork | 6d | 2026-01-20 | 2026-01-25 | 77SS+2d |  |  | Zenith | 8695754 |
| 80 | 36900.37000.37100.37900.39000.44600.166500.900800 | Concreting | 1d | 2026-01-26 | 2026-01-26 | 78FS+1d, 79 |  |  | Zenith | 8695744 |

| ID | WBS | Task | Duration | Start | Finish | Predecessors | Constraint | Calendar | Unique_Task_ID |
| --- | --- | --- | --- | --- | --- | --- | --- | --- | --- |
| 81 | 36900.37000.37100.37900.39000.44600.166600 | **5th floor roof slab** | 9d | 2026-01-27 | 2026-02-04 |  | start no earlier than 2026-01-27 | Zenith | 8655874 |
| 82 | 36900.37000.37100.37900.39000.44600.166600.900900 | Reinforcement | 6d | 2026-01-27 | 2026-02-01 | 80 |  | Zenith | 8695734 |
| 83 | 36900.37000.37100.37900.39000.44600.166600.901000 | Conduiting | 6d | 2026-01-28 | 2026-02-02 | 82SS+1d |  | Zenith | 8695724 |
| 84 | 36900.37000.37100.37900.39000.44600.166600.901100 | Formwork | 6d | 2026-01-29 | 2026-02-03 | 82SS+2d |  | Zenith | 8695714 |
| 85 | 36900.37000.37100.37900.39000.44600.166600.901200 | Concreting | 1d | 2026-02-04 | 2026-02-04 | 83FS+1d, 84 |  | Zenith | 8695704 |
| 86 | 36900.37000.37100.37900.39000.44600.166700 | **6th floor roof slab** | 9d | 2026-02-05 | 2026-02-13 |  | start no earlier than 2026-02-05 | Zenith | 8655864 |
| 87 | 36900.37000.37100.37900.39000.44600.166700.901300 | Reinforcement | 6d | 2026-02-05 | 2026-02-10 | 85 |  | Zenith | 8695694 |
| 88 | 36900.37000.37100.37900.39000.44600.166700.901400 | Conduiting | 6d | 2026-02-06 | 2026-02-11 | 87SS+1d |  | Zenith | 8695684 |
| 89 | 36900.37000.37100.37900.39000.44600.166700.901500 | Formwork | 6d | 2026-02-07 | 2026-02-12 | 87SS+2d |  | Zenith | 8695674 |
| 90 | 36900.37000.37100.37900.39000.44600.166700.901600 | Concreting | 1d | 2026-02-13 | 2026-02-13 | 88FS+1d, 89 |  | Zenith | 8695664 |
| 91 | 36900.37000.37100.37900.39000.44600.166800 | **7th floor roof slab** | 9d | 2026-02-14 | 2026-02-22 |  | start no earlier than 2026-02-14 | Zenith | 8655854 |
| 92 | 36900.37000.37100.37900.39000.44600.166800.901700 | Reinforcement | 6d | 2026-02-14 | 2026-02-19 | 90 |  | Zenith | 8695654 |
| 93 | 36900.37000.37100.37900.39000.44600.166800.901800 | Conduiting | 6d | 2026-02-15 | 2026-02-20 | 92SS+1d |  | Zenith | 8695644 |
| 94 | 36900.37000.37100.37900.39000.44600.166800.901900 | Formwork | 6d | 2026-02-16 | 2026-02-21 | 92SS+2d |  | Zenith | 8695634 |
| 95 | 36900.37000.37100.37900.39000.44600.166800.902000 | Concreting | 1d | 2026-02-22 | 2026-02-22 | 93FS+1d, 94 |  | Zenith | 8695624 |
| 96 | 36900.37000.37100.37900.39000.44600.166900 | **8th floor roof slab** | 9d | 2026-02-23 | 2026-03-03 |  | start no earlier than 2026-02-23 | Zenith | 8655844 |
| 97 | 36900.37000.37100.37900.39000.44600.166900.902100 | Reinforcement | 6d | 2026-02-23 | 2026-02-28 | 95 |  | Zenith | 8695614 |
| 98 | 36900.37000.37100.37900.39000.44600.166900.902200 | Conduiting | 6d | 2026-02-24 | 2026-03-01 | 97SS+1d |  | Zenith | 8695604 |
| 99 | 36900.37000.37100.37900.39000.44600.166900.902300 | Formwork | 6d | 2026-02-25 | 2026-03-02 | 97SS+2d |  | Zenith | 8695594 |
| 100 | 36900.37000.37100.37900.39000.44600.166900.902400 | Concreting | 1d | 2026-03-03 | 2026-03-03 | 98FS+1d, 99 |  | Zenith | 8695584 |
| 101 | 36900.37000.37100.37900.39000.44600.167000 | **9th floor roof slab** | 10d | 2026-03-02 | 2026-03-12 |  | start no earlier than 2026-03-02 | Zenith | 8655834 |
| 102 | 36900.37000.37100.37900.39000.44600.167000.902500 | Reinforcement | 7d | 2026-03-02 | 2026-03-09 | 100FS-1.75d |  | Zenith | 8695574 |
| 103 | 36900.37000.37100.37900.39000.44600.167000.902600 | Conduiting | 7d | 2026-03-03 | 2026-03-10 | 102SS+1d |  | Zenith | 8695564 |
| 104 | 36900.37000.37100.37900.39000.44600.167000.902700 | Formwork | 7d | 2026-03-04 | 2026-03-11 | 102SS+2d |  | Zenith | 8695554 |
| 105 | 36900.37000.37100.37900.39000.44600.167000.902800 | Concreting | 1d | 2026-03-11 | 2026-03-12 | 103FS+1d, 104 |  | Zenith | 8695544 |

| ID | WBS | Task | Duration | Start | Finish | Predecessors | Constraint | Calendar | Unique_Task_ID |
| --- | --- | --- | --- | --- | --- | --- | --- | --- | --- |
| 106 | 36900.37000.37100.37900.39000.44600.167100 | **10th floor roof slab** | 11d | 2026-03-12 | 2026-03-23 |  | start no earlier than 2026-03-12 | Zenith | 8655824 |
| 107 | 36900.37000.37100.37900.39000.44600.167100.902900 | Reinforcement | 8d | 2026-03-12 | 2026-03-20 | 105 |  | Zenith | 8695534 |
| 108 | 36900.37000.37100.37900.39000.44600.167100.903000 | Conduiting | 8d | 2026-03-13 | 2026-03-21 | 107SS+1d |  | Zenith | 8695524 |
| 109 | 36900.37000.37100.37900.39000.44600.167100.903100 | Formwork | 8d | 2026-03-14 | 2026-03-22 | 107SS+2d |  | Zenith | 8695514 |
| 110 | 36900.37000.37100.37900.39000.44600.167100.903200 | Concreting | 1d | 2026-03-22 | 2026-03-23 | 108FS+1d, 109 |  | Zenith | 8695504 |
| 111 | 36900.37000.37100.37900.39000.44600.167200 | **11th floor roof slab** | 11d | 2026-03-23 | 2026-04-03 |  | start no earlier than 2026-03-23 | Zenith | 8655804 |
| 112 | 36900.37000.37100.37900.39000.44600.167200.903300 | Reinforcement | 8d | 2026-03-23 | 2026-03-31 | 110 |  | Zenith | 8695494 |
| 113 | 36900.37000.37100.37900.39000.44600.167200.903400 | Conduiting | 8d | 2026-03-24 | 2026-04-01 | 112SS+1d |  | Zenith | 8695484 |
| 114 | 36900.37000.37100.37900.39000.44600.167200.903500 | Formwork | 8d | 2026-03-25 | 2026-04-02 | 112SS+2d |  | Zenith | 8695474 |
| 115 | 36900.37000.37100.37900.39000.44600.167200.903600 | Concreting | 1d | 2026-04-02 | 2026-04-03 | 113FS+1d, 114 |  | Zenith | 8695464 |
| 116 | 36900.37000.37100.37900.39000.44600.167300 | **12th floor roof slab** | 11d | 2026-04-03 | 2026-04-14 |  | start no earlier than 2026-04-03 | Zenith | 8655794 |
| 117 | 36900.37000.37100.37900.39000.44600.167300.903700 | Reinforcement | 8d | 2026-04-03 | 2026-04-11 | 115 |  | Zenith | 8695454 |
| 118 | 36900.37000.37100.37900.39000.44600.167300.903800 | Conduiting | 8d | 2026-04-04 | 2026-04-12 | 117SS+1d |  | Zenith | 8695444 |
| 119 | 36900.37000.37100.37900.39000.44600.167300.903900 | Formwork | 8d | 2026-04-05 | 2026-04-13 | 117SS+2d |  | Zenith | 8695434 |
| 120 | 36900.37000.37100.37900.39000.44600.167300.904000 | Concreting | 1d | 2026-04-13 | 2026-04-14 | 118FS+1d, 119 |  | Zenith | 8695424 |
| 121 | 36900.37000.37100.37900.39000.44600.167400 | **13th floor roof slab** | 11d | 2026-04-14 | 2026-04-25 |  | start no earlier than 2026-04-14 | Zenith | 8655784 |
| 122 | 36900.37000.37100.37900.39000.44600.167400.904100 | Reinforcement | 8d | 2026-04-14 | 2026-04-22 | 120 |  | Zenith | 8695414 |
| 123 | 36900.37000.37100.37900.39000.44600.167400.904200 | Conduiting | 8d | 2026-04-15 | 2026-04-23 | 122SS+1d |  | Zenith | 8695404 |
| 124 | 36900.37000.37100.37900.39000.44600.167400.904300 | Formwork | 8d | 2026-04-16 | 2026-04-24 | 122SS+2d |  | Zenith | 8695394 |
| 125 | 36900.37000.37100.37900.39000.44600.167400.904400 | Concreting | 1d | 2026-04-24 | 2026-04-25 | 123FS+1d, 124 |  | Zenith | 8695384 |
| 126 | 36900.37000.37100.37900.39000.44600.167500 | **14th floor roof slab** | 11d | 2026-04-25 | 2026-05-06 |  | start no earlier than 2026-04-25 | Zenith | 8655774 |
| 127 | 36900.37000.37100.37900.39000.44600.167500.904500 | Reinforcement | 8d | 2026-04-25 | 2026-05-03 | 125 |  | Zenith | 8695374 |
| 128 | 36900.37000.37100.37900.39000.44600.167500.904600 | Conduiting | 8d | 2026-04-26 | 2026-05-04 | 127SS+1d |  | Zenith | 8695364 |
| 129 | 36900.37000.37100.37900.39000.44600.167500.904700 | Formwork | 8d | 2026-04-27 | 2026-05-05 | 127SS+2d |  | Zenith | 8695354 |
| 130 | 36900.37000.37100.37900.39000.44600.167500.904800 | Concreting | 1d | 2026-05-05 | 2026-05-06 | 128FS+1d, 129 |  | Zenith | 8695344 |

| ID | WBS | Task | Duration | Start | Finish | Predecessors | Constraint | Calendar | Unique_Task_ID |
| --- | --- | --- | --- | --- | --- | --- | --- | --- | --- |
| 131 | 36900.37000.37100.37900.39000.44600.167600 | **15th floor roof slab** | 15d | 2026-05-06 | 2026-05-21 |  | start no earlier than 2026-05-06 | Zenith | 8655764 |
| 132 | 36900.37000.37100.37900.39000.44600.167600.904900 | Reinforcement | 12d | 2026-05-06 | 2026-05-18 | 130 |  | Zenith | 8695334 |
| 133 | 36900.37000.37100.37900.39000.44600.167600.905000 | Conduiting | 12d | 2026-05-07 | 2026-05-19 | 132SS+1d |  | Zenith | 8695324 |
| 134 | 36900.37000.37100.37900.39000.44600.167600.905100 | Formwork | 12d | 2026-05-08 | 2026-05-20 | 132SS+2d |  | Zenith | 8695314 |
| 135 | 36900.37000.37100.37900.39000.44600.167600.905200 | Concreting | 1d | 2026-05-20 | 2026-05-21 | 133FS+1d, 134 |  | Zenith | 8695304 |
| 136 | 36900.37000.37100.37900.39000.44600.167700 | **16th floor roof slab** | 11d | 2026-05-21 | 2026-06-01 |  | start no earlier than 2026-05-21 | Zenith | 8655754 |
| 137 | 36900.37000.37100.37900.39000.44600.167700.905300 | Reinforcement | 8d | 2026-05-21 | 2026-05-29 | 135 |  | Zenith | 8695294 |
| 138 | 36900.37000.37100.37900.39000.44600.167700.905400 | Conduiting | 8d | 2026-05-22 | 2026-05-30 | 137SS+1d |  | Zenith | 8695284 |
| 139 | 36900.37000.37100.37900.39000.44600.167700.905500 | Formwork | 8d | 2026-05-23 | 2026-05-31 | 137SS+2d |  | Zenith | 8695274 |
| 140 | 36900.37000.37100.37900.39000.44600.167700.905600 | Concreting | 1d | 2026-05-31 | 2026-06-01 | 138, 139 |  | Zenith | 8695264 |
| 141 | 36900.37000.37100.37900.39000.44600.167800 | **17th floor roof slab** | 11d | 2026-06-01 | 2026-06-12 |  | start no earlier than 2026-06-01 | Zenith | 8655744 |
| 142 | 36900.37000.37100.37900.39000.44600.167800.905700 | Reinforcement | 8d | 2026-06-01 | 2026-06-09 | 140 |  | Zenith | 8695254 |
| 143 | 36900.37000.37100.37900.39000.44600.167800.905800 | Conduiting | 8d | 2026-06-02 | 2026-06-10 | 142SS+1d |  | Zenith | 8695244 |
| 144 | 36900.37000.37100.37900.39000.44600.167800.905900 | Formwork | 8d | 2026-06-03 | 2026-06-11 | 142SS+2d |  | Zenith | 8695234 |
| 145 | 36900.37000.37100.37900.39000.44600.167800.906000 | Concreting | 1d | 2026-06-11 | 2026-06-12 | 143FS+1d, 144 |  | Zenith | 8695224 |
| 146 | 36900.37000.37100.37900.39000.44600.167900 | **18th floor roof slab** | 11d | 2026-06-12 | 2026-06-23 |  | start no earlier than 2026-06-12 | Zenith | 8655724 |
| 147 | 36900.37000.37100.37900.39000.44600.167900.906100 | Reinforcement | 8d | 2026-06-12 | 2026-06-20 | 145 |  | Zenith | 8695214 |
| 148 | 36900.37000.37100.37900.39000.44600.167900.906200 | Conduiting | 8d | 2026-06-13 | 2026-06-21 | 147SS+1d |  | Zenith | 8695204 |
| 149 | 36900.37000.37100.37900.39000.44600.167900.906300 | Formwork | 8d | 2026-06-14 | 2026-06-22 | 147SS+2d |  | Zenith | 8695194 |
| 150 | 36900.37000.37100.37900.39000.44600.167900.906400 | Concreting | 1d | 2026-06-22 | 2026-06-23 | 148FS+1d, 149 |  | Zenith | 8695184 |
| 151 | 36900.37000.37100.37900.39000.44600.168000 | **19th floor roof slab** | 11d | 2026-06-23 | 2026-07-04 |  | start no earlier than 2026-06-23 | Zenith | 8655714 |
| 152 | 36900.37000.37100.37900.39000.44600.168000.906500 | Reinforcement | 8d | 2026-06-23 | 2026-07-01 | 150 |  | Zenith | 8695174 |
| 153 | 36900.37000.37100.37900.39000.44600.168000.906600 | Conduiting | 8d | 2026-06-24 | 2026-07-02 | 152SS+1d |  | Zenith | 8695164 |
| 154 | 36900.37000.37100.37900.39000.44600.168000.906700 | Formwork | 8d | 2026-06-25 | 2026-07-03 | 152SS+2d |  | Zenith | 8695154 |
| 155 | 36900.37000.37100.37900.39000.44600.168000.906800 | Concreting | 1d | 2026-07-03 | 2026-07-04 | 153FS+1d, 154 |  | Zenith | 8695144 |

| ID | WBS | Task | Duration | Start | Finish | Predecessors | Constraint | Calendar | Unique_Task_ID |
| --- | --- | --- | --- | --- | --- | --- | --- | --- | --- |
| 156 | 36900.37000.37100.37900.39000.44600.168100 | **20th floor roof slab** | 11d | 2026-07-04 | 2026-07-15 |  | start no earlier than 2026-07-04 | Zenith | 8655704 |
| 157 | 36900.37000.37100.37900.39000.44600.168100.906900 | Reinforcement | 8d | 2026-07-04 | 2026-07-12 | 155 |  | Zenith | 8695134 |
| 158 | 36900.37000.37100.37900.39000.44600.168100.907000 | Conduiting | 8d | 2026-07-05 | 2026-07-13 | 157SS+1d |  | Zenith | 8695124 |
| 159 | 36900.37000.37100.37900.39000.44600.168100.907100 | Formwork | 8d | 2026-07-06 | 2026-07-14 | 157SS+2d |  | Zenith | 8695114 |
| 160 | 36900.37000.37100.37900.39000.44600.168100.907200 | Concreting | 1d | 2026-07-14 | 2026-07-15 | 158FS+1d, 159 |  | Zenith | 8695104 |
| 161 | 36900.37000.37100.37900.39000.44600.168200 | **21st floor roof slab** | 11d | 2026-07-15 | 2026-07-26 |  | start no earlier than 2026-07-15 | Zenith | 8655584 |
| 162 | 36900.37000.37100.37900.39000.44600.168200.907300 | Reinforcement | 8d | 2026-07-15 | 2026-07-23 | 160 |  | Zenith | 8695094 |
| 163 | 36900.37000.37100.37900.39000.44600.168200.907400 | Conduiting | 8d | 2026-07-16 | 2026-07-24 | 162SS+1d |  | Zenith | 8695084 |
| 164 | 36900.37000.37100.37900.39000.44600.168200.907500 | Formwork | 8d | 2026-07-17 | 2026-07-25 | 162SS+2d |  | Zenith | 8695074 |
| 165 | 36900.37000.37100.37900.39000.44600.168200.907600 | Concreting | 1d | 2026-07-25 | 2026-07-26 | 163FS+1d, 164 |  | Zenith | 8695064 |
| 166 | 36900.37000.37100.37900.39000.44600.168300 | **22nd floor roof slab** | 11d | 2026-07-26 | 2026-08-06 |  | start no earlier than 2026-07-26 | Zenith | 8655484 |
| 167 | 36900.37000.37100.37900.39000.44600.168300.907700 | Reinforcement | 8d | 2026-07-26 | 2026-08-03 | 165 |  | Zenith | 8695054 |
| 168 | 36900.37000.37100.37900.39000.44600.168300.907800 | Conduiting | 8d | 2026-07-27 | 2026-08-04 | 167SS+1d |  | Zenith | 8695044 |
| 169 | 36900.37000.37100.37900.39000.44600.168300.907900 | Formwork | 8d | 2026-07-28 | 2026-08-05 | 167SS+2d |  | Zenith | 8695034 |
| 170 | 36900.37000.37100.37900.39000.44600.168300.908000 | Concreting | 1d | 2026-08-05 | 2026-08-06 | 168FS+1d, 169 |  | Zenith | 8695024 |
| 171 | 36900.37000.37100.37900.39000.44600.168400 | **23rd floor roof slab** | 11d | 2026-08-06 | 2026-08-17 |  | start no earlier than 2026-08-06 | Zenith | 8655464 |
| 172 | 36900.37000.37100.37900.39000.44600.168400.908100 | Reinforcement | 8d | 2026-08-06 | 2026-08-14 | 170 |  | Zenith | 8695014 |
| 173 | 36900.37000.37100.37900.39000.44600.168400.908200 | Conduiting | 8d | 2026-08-07 | 2026-08-15 | 172SS+1d |  | Zenith | 8695004 |
| 174 | 36900.37000.37100.37900.39000.44600.168400.908300 | Formwork | 8d | 2026-08-08 | 2026-08-16 | 172SS+2d |  | Zenith | 8694994 |
| 175 | 36900.37000.37100.37900.39000.44600.168400.908400 | Concreting | 1d | 2026-08-16 | 2026-08-17 | 173FS+1d, 174 |  | Zenith | 8694984 |
| 176 | 36900.37000.37100.37900.39000.44600.168500 | **24th floor roof slab** | 11d | 2026-08-17 | 2026-08-28 |  | start no earlier than 2026-08-17 | Zenith | 8655454 |
| 177 | 36900.37000.37100.37900.39000.44600.168500.908500 | Reinforcement | 8d | 2026-08-17 | 2026-08-25 | 175 |  | Zenith | 8694974 |
| 178 | 36900.37000.37100.37900.39000.44600.168500.908600 | Conduiting | 8d | 2026-08-18 | 2026-08-26 | 177SS+1d |  | Zenith | 8694964 |
| 179 | 36900.37000.37100.37900.39000.44600.168500.908700 | Formwork | 8d | 2026-08-19 | 2026-08-27 | 177SS+2d |  | Zenith | 8694954 |
| 180 | 36900.37000.37100.37900.39000.44600.168500.908800 | Concreting | 1d | 2026-08-27 | 2026-08-28 | 178FS+1d, 179 |  | Zenith | 8694944 |

| ID | WBS | Task | Duration | Start | Finish | Predecessors | Constraint | Calendar | Unique_Task_ID |
| --- | --- | --- | --- | --- | --- | --- | --- | --- | --- |
| 181 | 36900.37000.37100.37900.39000.44600.168600 | **25th floor roof slab** | 11d | 2026-08-28 | 2026-09-08 |  | start no earlier than 2026-08-28 | Zenith | 8655424 |
| 182 | 36900.37000.37100.37900.39000.44600.168600.908900 | Reinforcement | 8d | 2026-08-28 | 2026-09-05 | 180 |  | Zenith | 8694934 |
| 183 | 36900.37000.37100.37900.39000.44600.168600.909000 | Conduiting | 8d | 2026-08-29 | 2026-09-06 | 182SS+1d |  | Zenith | 8694924 |
| 184 | 36900.37000.37100.37900.39000.44600.168600.909100 | Formwork | 8d | 2026-08-30 | 2026-09-07 | 182SS+2d |  | Zenith | 8694914 |
| 185 | 36900.37000.37100.37900.39000.44600.168600.909200 | Concreting | 1d | 2026-09-07 | 2026-09-08 | 183FS+1d, 184 |  | Zenith | 8694904 |
| 186 | 36900.37000.37100.37900.39000.44600.168700 | **26th floor roof slab** | 11d | 2026-09-08 | 2026-09-19 |  | start no earlier than 2026-09-08 | Zenith | 8654804 |
| 187 | 36900.37000.37100.37900.39000.44600.168700.909300 | Reinforcement | 8d | 2026-09-08 | 2026-09-16 | 185 |  | Zenith | 8694894 |
| 188 | 36900.37000.37100.37900.39000.44600.168700.909400 | Conduiting | 8d | 2026-09-09 | 2026-09-17 | 187SS+1d |  | Zenith | 8694884 |
| 189 | 36900.37000.37100.37900.39000.44600.168700.909500 | Formwork | 8d | 2026-09-10 | 2026-09-18 | 187SS+2d |  | Zenith | 8694874 |
| 190 | 36900.37000.37100.37900.39000.44600.168700.909600 | Concreting | 1d | 2026-09-18 | 2026-09-19 | 188FS+1d, 189 |  | Zenith | 8694864 |
| 191 | 36900.37000.37100.37900.39000.44600.168800 | **27th floor roof slab** | 11d | 2026-09-19 | 2026-09-30 |  | start no earlier than 2026-09-19 | Zenith | 8654794 |
| 192 | 36900.37000.37100.37900.39000.44600.168800.909700 | Reinforcement | 8d | 2026-09-19 | 2026-09-27 | 190 |  | Zenith | 8694854 |
| 193 | 36900.37000.37100.37900.39000.44600.168800.909800 | Conduiting | 8d | 2026-09-20 | 2026-09-28 | 192SS+1d |  | Zenith | 8694844 |
| 194 | 36900.37000.37100.37900.39000.44600.168800.909900 | Formwork | 8d | 2026-09-21 | 2026-09-29 | 192SS+2d |  | Zenith | 8694834 |
| 195 | 36900.37000.37100.37900.39000.44600.168800.910000 | Concreting | 1d | 2026-09-29 | 2026-09-30 | 193FS+1d, 194 |  | Zenith | 8694824 |
| 196 | 36900.37000.37100.37900.39000.44600.168900 | **28th floor roof slab** | 11d | 2026-09-30 | 2026-10-11 |  | start no earlier than 2026-09-30 | Zenith | 8654754 |
| 197 | 36900.37000.37100.37900.39000.44600.168900.910100 | Reinforcement | 8d | 2026-09-30 | 2026-10-08 | 195 |  | Zenith | 8694814 |
| 198 | 36900.37000.37100.37900.39000.44600.168900.910200 | Conduiting | 8d | 2026-10-01 | 2026-10-09 | 197SS+1d |  | Zenith | 8694804 |
| 199 | 36900.37000.37100.37900.39000.44600.168900.910300 | Formwork | 8d | 2026-10-02 | 2026-10-10 | 197SS+2d |  | Zenith | 8694794 |
| 200 | 36900.37000.37100.37900.39000.44600.168900.910400 | Concreting | 1d | 2026-10-10 | 2026-10-11 | 198FS+1d, 199 |  | Zenith | 8694784 |
| 201 | 36900.37000.37100.37900.39000.44600.169000 | **29th floor roof slab** | 11d | 2026-10-11 | 2026-10-22 |  | start no earlier than 2026-10-11 | Zenith | 8654734 |
| 202 | 36900.37000.37100.37900.39000.44600.169000.910500 | Reinforcement | 8d | 2026-10-11 | 2026-10-19 | 200 |  | Zenith | 8694774 |
| 203 | 36900.37000.37100.37900.39000.44600.169000.910600 | Conduiting | 8d | 2026-10-12 | 2026-10-20 | 202SS+1d |  | Zenith | 8694764 |
| 204 | 36900.37000.37100.37900.39000.44600.169000.910700 | Formwork | 8d | 2026-10-13 | 2026-10-21 | 202SS+2d |  | Zenith | 8694754 |
| 205 | 36900.37000.37100.37900.39000.44600.169000.910800 | Concreting | 1d | 2026-10-21 | 2026-10-22 | 203FS+1d, 204 |  | Zenith | 8694744 |

| ID | WBS | Task | Duration | Start | Finish | Predecessors | Constraint | Calendar | Unique_Task_ID |
| --- | --- | --- | --- | --- | --- | --- | --- | --- | --- |
| 206 | 36900.37000.37100.37900.39000.44600.169100 | **30th floor roof slab** | 15d | 2026-10-22 | 2026-12-21 |  | start no earlier than 2026-10-22 | Zenith | 8654714 |
| 207 | 36900.37000.37100.37900.39000.44600.169100.910900 | Reinforcement | 12d | 2026-10-22 | 2026-12-18 | 205 |  | Zenith | 8694734 |
| 208 | 36900.37000.37100.37900.39000.44600.169100.911000 | Conduiting | 12d | 2026-10-23 | 2026-12-19 | 207SS+1d |  | Zenith | 8694724 |
| 209 | 36900.37000.37100.37900.39000.44600.169100.911100 | Formwork | 12d | 2026-10-24 | 2026-12-20 | 207SS+2d |  | Zenith | 8694714 |
| 210 | 36900.37000.37100.37900.39000.44600.169100.911200 | Concreting | 1d | 2026-12-20 | 2026-12-21 | 208FS+1d, 209 |  | Zenith | 8694704 |
| 211 | 36900.37000.37100.37900.39000.44600.169200 | **31st floor roof slab** | 11d | 2026-12-21 | 2027-01-01 |  | start no earlier than 2026-12-21 | Zenith | 8654704 |
| 212 | 36900.37000.37100.37900.39000.44600.169200.911300 | Reinforcement | 8d | 2026-12-21 | 2026-12-29 | 210 |  | Zenith | 8694694 |
| 213 | 36900.37000.37100.37900.39000.44600.169200.911400 | Conduiting | 8d | 2026-12-22 | 2026-12-30 | 212SS+1d |  | Zenith | 8694684 |
| 214 | 36900.37000.37100.37900.39000.44600.169200.911500 | Formwork | 8d | 2026-12-23 | 2026-12-31 | 212SS+2d |  | Zenith | 8694674 |
| 215 | 36900.37000.37100.37900.39000.44600.169200.911600 | Concreting | 1d | 2026-12-31 | 2027-01-01 | 213FS+1d, 214 |  | Zenith | 8694664 |
| 216 | 36900.37000.37100.37900.39000.44600.169300 | **32nd floor roof slab** | 11d | 2027-01-01 | 2027-01-12 |  | start no earlier than 2027-01-01 | Zenith | 8654694 |
| 217 | 36900.37000.37100.37900.39000.44600.169300.911700 | Reinforcement | 8d | 2027-01-01 | 2027-01-09 | 215 |  | Zenith | 8694654 |
| 218 | 36900.37000.37100.37900.39000.44600.169300.911800 | Conduiting | 8d | 2027-01-02 | 2027-01-10 | 217SS+1d |  | Zenith | 8694644 |
| 219 | 36900.37000.37100.37900.39000.44600.169300.911900 | Formwork | 8d | 2027-01-03 | 2027-01-11 | 217SS+2d |  | Zenith | 8694634 |
| 220 | 36900.37000.37100.37900.39000.44600.169300.912000 | Concreting | 1d | 2027-01-11 | 2027-01-12 | 218FS+1d, 219 |  | Zenith | 8694624 |
| 221 | 36900.37000.37100.37900.39000.44600.169400 | **33rd floor roof slab** | 11d | 2027-01-12 | 2027-01-23 |  | start no earlier than 2027-01-12 | Zenith | 8654664 |
| 222 | 36900.37000.37100.37900.39000.44600.169400.912100 | Reinforcement | 8d | 2027-01-12 | 2027-01-20 | 220 |  | Zenith | 8694614 |
| 223 | 36900.37000.37100.37900.39000.44600.169400.912200 | Conduiting | 8d | 2027-01-13 | 2027-01-21 | 222SS+1d |  | Zenith | 8694604 |
| 224 | 36900.37000.37100.37900.39000.44600.169400.912300 | Formwork | 8d | 2027-01-14 | 2027-01-22 | 222SS+2d |  | Zenith | 8694594 |
| 225 | 36900.37000.37100.37900.39000.44600.169400.912400 | Concreting | 1d | 2027-01-22 | 2027-01-23 | 223FS+1d, 224 |  | Zenith | 8694584 |
| 226 | 36900.37000.37100.37900.39000.44600.169500 | **34th floor roof slab** | 11d | 2027-01-23 | 2027-02-03 |  | start no earlier than 2027-01-23 | Zenith | 8654644 |
| 227 | 36900.37000.37100.37900.39000.44600.169500.912500 | Reinforcement | 8d | 2027-01-23 | 2027-01-31 | 225 |  | Zenith | 8694574 |
| 228 | 36900.37000.37100.37900.39000.44600.169500.912600 | Conduiting | 8d | 2027-01-24 | 2027-02-01 | 227SS+1d |  | Zenith | 8694564 |
| 229 | 36900.37000.37100.37900.39000.44600.169500.912700 | Formwork | 8d | 2027-01-25 | 2027-02-02 | 227SS+2d |  | Zenith | 8694554 |
| 230 | 36900.37000.37100.37900.39000.44600.169500.912800 | Concreting | 1d | 2027-02-02 | 2027-02-03 | 228FS+1d, 229 |  | Zenith | 8694544 |

| ID | WBS | Task | Duration | Start | Finish | Predecessors | Constraint | Calendar | Unique_Task_ID |
| --- | --- | --- | --- | --- | --- | --- | --- | --- | --- |
| 231 | 36900.37000.37100.37900.39000.44600.169600 | **Terrace floor slab** | 15d | 2027-02-03 | 2027-02-18 |  | start no earlier than 2027-02-03 | Zenith | 8654624 |
| 232 | 36900.37000.37100.37900.39000.44600.169600.912900 | Reinforcement | 10d | 2027-02-03 | 2027-02-13 | 230 |  | Zenith | 8694534 |
| 233 | 36900.37000.37100.37900.39000.44600.169600.913000 | Conduiting | 10d | 2027-02-05 | 2027-02-15 | 232SS+2d |  | Zenith | 8694524 |
| 234 | 36900.37000.37100.37900.39000.44600.169600.913100 | Formwork | 10d | 2027-02-06 | 2027-02-16 | 232SS+3d |  | Zenith | 8694514 |
| 235 | 36900.37000.37100.37900.39000.44600.169600.913200 | Concreting | 2d | 2027-02-16 | 2027-02-18 | 233FS+1d, 234 |  | Zenith | 8694504 |
| 236 | 36900.37000.37100.37900.39000.44600.169700 | **OHT, Mumty & Machine Room, Parapet** | 45d | 2027-02-18 | 2027-04-04 |  | start no earlier than 2027-02-18 | Zenith | 8654614 |
| 237 | 36900.37000.37100.37900.39000.44600.169700.913300 | Reinforcement | 30d | 2027-02-18 | 2027-03-20 | 235 |  | Zenith | 8694494 |
| 238 | 36900.37000.37100.37900.39000.44600.169700.913400 | Flanges fixing & Conduiting | 20d | 2027-02-19 | 2027-03-11 | 237SS+1d |  | Zenith | 8694484 |
| 239 | 36900.37000.37100.37900.39000.44600.169700.913500 | Formwork | 35d | 2027-02-24 | 2027-03-31 | 237SS+6d |  | Zenith | 8694474 |
| 240 | 36900.37000.37100.37900.39000.44600.169700.913600 | Concreting | 4d | 2027-03-31 | 2027-04-04 | 238FS+5d, 239 |  | Zenith | 8694464 |
| 241 | 36900.37000.37100.37900.39000.47200 | **Post Pour Activities** | 394.25d | 2026-01-27 | 2027-04-11 |  | start no earlier than 2026-01-27 | Zenith | 8648064 |
| 242 | 36900.37000.37100.37900.39000.47200.801700 | 1st Floor | 10d | 2026-01-27 | 2026-02-05 | 80 |  | Zenith | 8726594 |
| 243 | 36900.37000.37100.37900.39000.47200.801800 | 2nd Floor | 10d | 2026-02-06 | 2026-02-16 | 242FS+0.25d, 85FS+0.25d |  | Zenith | 8726584 |
| 244 | 36900.37000.37100.37900.39000.47200.801900 | 3rd Floor | 10d | 2026-02-16 | 2026-02-26 | 243FS+0.25d, 90FS+0.25d |  | Zenith | 8726574 |
| 245 | 36900.37000.37100.37900.39000.47200.802000 | 4th Floor | 10d | 2026-02-26 | 2026-03-08 | 244FS+0.25d, 95FS+0.25d |  | Zenith | 8726564 |
| 246 | 36900.37000.37100.37900.39000.47200.802100 | 5th Floor | 10d | 2026-03-09 | 2026-03-18 | 245FS+0.25d, 100FS+0.25d |  | Zenith | 8726554 |
| 247 | 36900.37000.37100.37900.39000.47200.802200 | 6th Floor | 10d | 2026-03-19 | 2026-03-29 | 246FS+0.25d, 105FS+0.25d |  | Zenith | 8726544 |
| 248 | 36900.37000.37100.37900.39000.47200.802300 | 7th Floor | 10d | 2026-03-29 | 2026-04-08 | 247FS+0.25d, 110FS+0.25d |  | Zenith | 8726534 |
| 249 | 36900.37000.37100.37900.39000.47200.802400 | 8th Floor | 10d | 2026-04-08 | 2026-04-18 | 248FS+0.25d, 115FS+0.25d |  | Zenith | 8726524 |
| 250 | 36900.37000.37100.37900.39000.47200.802500 | 9th Floor | 10d | 2026-04-19 | 2026-04-28 | 249FS+0.25d, 120FS+0.25d |  | Zenith | 8726514 |
| 251 | 36900.37000.37100.37900.39000.47200.802600 | 10th Floor | 10d | 2026-04-29 | 2026-05-09 | 250FS+0.25d, 125FS+0.25d |  | Zenith | 8726504 |
| 252 | 36900.37000.37100.37900.39000.47200.802700 | 11th Floor | 10d | 2026-05-09 | 2026-05-19 | 251FS+0.25d, 130FS+0.25d |  | Zenith | 8726494 |
| 253 | 36900.37000.37100.37900.39000.47200.802800 | 12th Floor | 10d | 2026-05-21 | 2026-05-31 | 252FS+0.25d, 135FS+0.25d |  | Zenith | 8726484 |
| 254 | 36900.37000.37100.37900.39000.47200.802900 | 13th Floor | 10d | 2026-06-01 | 2026-06-11 | 253FS+0.25d, 140FS+0.25d |  | Zenith | 8726474 |
| 255 | 36900.37000.37100.37900.39000.47200.803000 | 14th Floor | 10d | 2026-06-12 | 2026-06-22 | 254FS+0.25d, 145FS+0.25d |  | Zenith | 8726464 |
| 256 | 36900.37000.37100.37900.39000.47200.803100 | 15th Floor | 10d | 2026-06-23 | 2026-07-03 | 255FS+0.25d, 150FS+0.25d |  | Zenith | 8726454 |
| 257 | 36900.37000.37100.37900.39000.47200.803200 | 16th Floor | 10d | 2026-07-04 | 2026-07-14 | 256FS+0.25d, 155FS+0.25d |  | Zenith | 8726444 |
| 258 | 36900.37000.37100.37900.39000.47200.803300 | 17th Floor | 10d | 2026-07-15 | 2026-07-25 | 257FS+0.25d, 160FS+0.25d |  | Zenith | 8726434 |
| 259 | 36900.37000.37100.37900.39000.47200.803400 | 18th Floor | 10d | 2026-07-26 | 2026-08-05 | 258FS+0.25d, 165FS+0.25d |  | Zenith | 8726424 |
| 260 | 36900.37000.37100.37900.39000.47200.803500 | 19th Floor | 10d | 2026-08-06 | 2026-08-16 | 259FS+0.25d, 170FS+0.25d |  | Zenith | 8726414 |
| 261 | 36900.37000.37100.37900.39000.47200.803600 | 20th Floor | 10d | 2026-08-17 | 2026-08-27 | 260FS+0.25d, 175FS+0.25d |  | Zenith | 8726404 |
| 262 | 36900.37000.37100.37900.39000.47200.803700 | 21st Floor | 10d | 2026-08-28 | 2026-09-07 | 261FS+0.25d, 180FS+0.25d |  | Zenith | 8726394 |
| 263 | 36900.37000.37100.37900.39000.47200.803800 | 22nd Floor | 10d | 2026-09-08 | 2026-09-18 | 262FS+0.25d, 185FS+0.25d |  | Zenith | 8726384 |
| 264 | 36900.37000.37100.37900.39000.47200.803900 | 23rd Floor | 10d | 2026-09-19 | 2026-09-29 | 263FS+0.25d, 190FS+0.25d |  | Zenith | 8726374 |
| 265 | 36900.37000.37100.37900.39000.47200.804000 | 24th Floor | 10d | 2026-09-30 | 2026-10-10 | 264FS+0.25d, 195FS+0.25d |  | Zenith | 8726364 |
| 266 | 36900.37000.37100.37900.39000.47200.804100 | 25th Floor | 10d | 2026-10-11 | 2026-10-21 | 265FS+0.25d, 200FS+0.25d |  | Zenith | 8726354 |
| 267 | 36900.37000.37100.37900.39000.47200.804200 | 26th Floor | 10d | 2026-10-22 | 2026-12-16 | 266FS+0.25d, 205FS+0.25d |  | Zenith | 8726344 |
| 268 | 36900.37000.37100.37900.39000.47200.804300 | 27th Floor | 10d | 2026-12-21 | 2026-12-31 | 267FS+0.25d, 210FS+0.25d |  | Zenith | 8726334 |
| 269 | 36900.37000.37100.37900.39000.47200.804400 | 28th Floor | 10d | 2027-01-01 | 2027-01-11 | 268FS+0.25d, 215FS+0.25d |  | Zenith | 8726324 |
| 270 | 36900.37000.37100.37900.39000.47200.804500 | 29th Floor | 10d | 2027-01-12 | 2027-01-22 | 269FS+0.25d, 220FS+0.25d |  | Zenith | 8726314 |
| 271 | 36900.37000.37100.37900.39000.47200.804600 | 30th Floor | 10d | 2027-01-23 | 2027-02-02 | 270FS+0.25d, 225FS+0.25d |  | Zenith | 8726304 |
| 272 | 36900.37000.37100.37900.39000.47200.804700 | 31st Floor | 10d | 2027-02-03 | 2027-02-13 | 271FS+0.25d, 230FS+0.25d |  | Zenith | 8726294 |
| 273 | 36900.37000.37100.37900.39000.47200.804800 | 32nd Flood | 10d | 2027-02-18 | 2027-02-28 | 272FS+0.25d, 235 |  | Zenith | 8726284 |
| 274 | 36900.37000.37100.37900.39000.47200.804900 | 33rd Floor | 10d | 2027-02-28 | 2027-03-10 | 273 |  | Zenith | 8726274 |
| 275 | 36900.37000.37100.37900.39000.47200.805000 | 34th Floor | 10d | 2027-03-10 | 2027-03-20 | 274 |  | Zenith | 8726264 |
| 276 | 36900.37000.37100.37900.39000.47200.805100 | 35th Floor | 10d | 2027-03-20 | 2027-03-30 | 275 |  | Zenith | 8726254 |
| 277 | 36900.37000.37100.37900.39000.47200.805200 | Terrace | 6d | 2027-03-30 | 2027-04-05 | 276 |  | Zenith | 8726244 |
| 278 | 36900.37000.37100.37900.39000.47200.805300 | Mumty & Machine Room | 6d | 2027-04-05 | 2027-04-11 | 277 |  | Zenith | 8726234 |

| ID | WBS | Task | Duration | Start | Finish | Predecessors | Constraint | Calendar | Unique_Task_ID |
| --- | --- | --- | --- | --- | --- | --- | --- | --- | --- |
| 279 | 36900.37000.37100.37900.39000.40900 | **Finishing work** | 643d | 2026-02-16 | 2028-02-18 |  | start no earlier than 2026-02-16 | Zenith | 8647754 |
| 280 | 36900.37000.37100.37900.39000.40900.41600 | **Flat finishing** | 572d | 2026-02-16 | 2027-10-25 |  | start no earlier than 2026-02-16 | Zenith | 8647874 |
| 281 | 36900.37000.37100.37900.39000.40900.41600.82600 | **1st Floor roof** | 106d | 2026-02-16 | 2026-06-01 |  | start no earlier than 2026-02-16 | Zenith | 8648444 |
| 282 | 36900.37000.37100.37900.39000.40900.41600.82600.1285700 | Block Work | 12d | 2026-02-16 | 2026-02-27 | 242FS+10d |  | Zenith | 8656994 |
| 283 | 36900.37000.37100.37900.39000.40900.41600.82600.1285800 | Fire sprinkler pipe fixing | 5d | 2026-03-07 | 2026-03-11 | 282FS+7d |  | Zenith | 8657004 |
| 284 | 36900.37000.37100.37900.39000.40900.41600.82600.1285900 | Internal Plumbing Works | 5d | 2026-03-07 | 2026-03-11 | 282FS+7d |  | Zenith | 8657014 |
| 285 | 36900.37000.37100.37900.39000.40900.41600.82600.1286000 | Waterproofing | 5d | 2026-03-14 | 2026-03-18 | 284FS+2d |  | Zenith | 8657024 |
| 286 | 36900.37000.37100.37900.39000.40900.41600.82600.1286100 | Internal Plaster | 10d | 2026-03-14 | 2026-03-23 | 284, 285FF+5d |  | Zenith | 8657034 |
| 287 | 36900.37000.37100.37900.39000.40900.41600.82600.1286200 | IPS flooring work | 10d | 2026-04-03 | 2026-04-12 | 286FS+10d |  | Zenith | 8657044 |
| 288 | 36900.37000.37100.37900.39000.40900.41600.82600.1286300 | Toilet dado work | 9d | 2026-03-31 | 2026-04-08 | 285FS+0.25d, 286FS+7d |  | Zenith | 8657054 |
| 289 | 36900.37000.37100.37900.39000.40900.41600.82600.1286400 | Toilet flooring work | 9d | 2026-04-09 | 2026-04-17 | 288 |  | Zenith | 8657064 |
| 290 | 36900.37000.37100.37900.39000.40900.41600.82600.1286500 | False Cieling panel fixing | 7d | 2026-04-18 | 2026-04-24 | 289 |  | Zenith | 8657074 |
| 291 | 36900.37000.37100.37900.39000.40900.41600.82600.1286600 | Living dinning flooring | 7d | 2026-04-18 | 2026-04-24 | 289 |  | Zenith | 8657084 |
| 292 | 36900.37000.37100.37900.39000.40900.41600.82600.1286700 | Putty primer coat | 8d | 2026-04-25 | 2026-05-02 | 291 |  | Zenith | 8657094 |
| 293 | 36900.37000.37100.37900.39000.40900.41600.82600.1286800 | Aluminium door-window fixing | 12d | 2026-04-25 | 2026-05-06 | 287, 291 |  | Zenith | 8657104 |
| 294 | 36900.37000.37100.37900.39000.40900.41600.82600.1286900 | Door shutter fixing (Pre Hung) | 8d | 2026-05-03 | 2026-05-10 | 292 |  | Zenith | 8657114 |
| 295 | 36900.37000.37100.37900.39000.40900.41600.82600.1287000 | Electrical wiring work | 10d | 2026-05-11 | 2026-05-20 | 294 |  | Zenith | 8657124 |
| 296 | 36900.37000.37100.37900.39000.40900.41600.82600.1287100 | Painting 1st coat | 12d | 2026-05-21 | 2026-06-01 | 295 |  | Zenith | 8657134 |
| 297 | 36900.37000.37100.37900.39000.40900.41600.82700 | **2nd floor roof** | 106d | 2026-02-28 | 2026-06-13 |  | start no earlier than 2026-02-28 | Zenith | 8648454 |
| 298 | 36900.37000.37100.37900.39000.40900.41600.82700.1287200 | Block Work | 12d | 2026-02-28 | 2026-03-11 | 243, 282 |  | Zenith | 8657144 |
| 299 | 36900.37000.37100.37900.39000.40900.41600.82700.1287300 | Fire sprinkler pipe fixing | 5d | 2026-03-19 | 2026-03-23 | 283FS+0.25d, 298FS+7d |  | Zenith | 8657154 |
| 300 | 36900.37000.37100.37900.39000.40900.41600.82700.1287400 | Internal Plumbing Works | 5d | 2026-03-19 | 2026-03-23 | 284FS+0.25d, 298FS+7d |  | Zenith | 8657164 |
| 301 | 36900.37000.37100.37900.39000.40900.41600.82700.1287500 | Waterproofing | 5d | 2026-03-31 | 2026-04-04 | 285FS+0.25d, 300FS+7d |  | Zenith | 8657174 |
| 302 | 36900.37000.37100.37900.39000.40900.41600.82700.1287600 | Internal Plaster | 10d | 2026-03-31 | 2026-04-09 | 286, 300, 301FF+5d |  | Zenith | 8657184 |
| 303 | 36900.37000.37100.37900.39000.40900.41600.82700.1287700 | IPS flooring work | 10d | 2026-04-20 | 2026-04-29 | 287FS+0.25d, 302FS+10d |  | Zenith | 8657194 |
| 304 | 36900.37000.37100.37900.39000.40900.41600.82700.1287800 | Toilet dado work | 9d | 2026-04-10 | 2026-04-18 | 288, 301, 302 |  | Zenith | 8657204 |
| 305 | 36900.37000.37100.37900.39000.40900.41600.82700.1287900 | Toilet flooring work | 9d | 2026-04-19 | 2026-04-27 | 289, 304 |  | Zenith | 8657214 |
| 306 | 36900.37000.37100.37900.39000.40900.41600.82700.1288000 | False Cieling panel fixing | 7d | 2026-04-28 | 2026-05-04 | 290, 305 |  | Zenith | 8657224 |
| 307 | 36900.37000.37100.37900.39000.40900.41600.82700.1288100 | Living dinning flooring | 7d | 2026-04-28 | 2026-05-04 | 291, 305 |  | Zenith | 8657234 |
| 308 | 36900.37000.37100.37900.39000.40900.41600.82700.1288200 | Putty primer coat | 8d | 2026-05-05 | 2026-05-12 | 292, 307 |  | Zenith | 8657244 |
| 309 | 36900.37000.37100.37900.39000.40900.41600.82700.1288300 | Aluminium door-window fixing | 12d | 2026-05-07 | 2026-05-18 | 293, 303, 307 |  | Zenith | 8657254 |
| 310 | 36900.37000.37100.37900.39000.40900.41600.82700.1288400 | Door shutter fixing (Pre Hung) | 8d | 2026-05-13 | 2026-05-20 | 294, 308 |  | Zenith | 8657264 |
| 311 | 36900.37000.37100.37900.39000.40900.41600.82700.1288500 | Electrical wiring work | 10d | 2026-05-21 | 2026-05-30 | 295, 310 |  | Zenith | 8657274 |
| 312 | 36900.37000.37100.37900.39000.40900.41600.82700.1288600 | Painting 1st coat | 12d | 2026-06-02 | 2026-06-13 | 296, 311 |  | Zenith | 8657284 |

| ID | WBS | Task | Duration | Start | Finish | Predecessors | Constraint | Calendar | Unique_Task_ID |
| --- | --- | --- | --- | --- | --- | --- | --- | --- | --- |
| 313 | 36900.37000.37100.37900.39000.40900.41600.82800 | **3rd floor roof** | 110d | 2026-03-12 | 2026-06-29 |  | start no earlier than 2026-03-12 | Zenith | 8648464 |
| 314 | 36900.37000.37100.37900.39000.40900.41600.82800.1288700 | Block Work | 12d | 2026-03-12 | 2026-03-23 | 244, 298 |  | Zenith | 8657294 |
| 315 | 36900.37000.37100.37900.39000.40900.41600.82800.1288800 | Fire sprinkler pipe fixing | 5d | 2026-04-03 | 2026-04-07 | 299FS+0.25d, 314FS+10d |  | Zenith | 8657304 |
| 316 | 36900.37000.37100.37900.39000.40900.41600.82800.1288900 | Internal Plumbing Works | 5d | 2026-04-03 | 2026-04-07 | 300FS+0.25d, 314FS+10d |  | Zenith | 8657314 |
| 317 | 36900.37000.37100.37900.39000.40900.41600.82800.1289000 | Waterproofing | 5d | 2026-04-18 | 2026-04-22 | 301FS+0.25d, 316FS+10d |  | Zenith | 8657324 |
| 318 | 36900.37000.37100.37900.39000.40900.41600.82800.1289100 | Internal Plaster | 10d | 2026-04-18 | 2026-04-27 | 302, 316, 317FF+5d |  | Zenith | 8657334 |
| 319 | 36900.37000.37100.37900.39000.40900.41600.82800.1289200 | IPS flooring work | 10d | 2026-05-08 | 2026-05-17 | 303FS+0.25d, 318FS+10d |  | Zenith | 8657344 |
| 320 | 36900.37000.37100.37900.39000.40900.41600.82800.1289300 | Toilet dado work | 9d | 2026-04-28 | 2026-05-06 | 304, 317, 318 |  | Zenith | 8657354 |
| 321 | 36900.37000.37100.37900.39000.40900.41600.82800.1289400 | Toilet flooring work | 9d | 2026-05-07 | 2026-05-15 | 305, 320 |  | Zenith | 8657364 |
| 322 | 36900.37000.37100.37900.39000.40900.41600.82800.1289500 | False Cieling panel fixing | 7d | 2026-05-16 | 2026-05-22 | 306, 321 |  | Zenith | 8657374 |
| 323 | 36900.37000.37100.37900.39000.40900.41600.82800.1289600 | Living dinning flooring | 7d | 2026-05-16 | 2026-05-22 | 307, 321 |  | Zenith | 8657384 |
| 324 | 36900.37000.37100.37900.39000.40900.41600.82800.1289700 | Putty primer coat | 8d | 2026-05-23 | 2026-05-30 | 308, 323 |  | Zenith | 8657394 |
| 325 | 36900.37000.37100.37900.39000.40900.41600.82800.1289800 | Aluminium door-window fixing | 12d | 2026-05-23 | 2026-06-03 | 309, 319, 323 |  | Zenith | 8657404 |
| 326 | 36900.37000.37100.37900.39000.40900.41600.82800.1289900 | Door shutter fixing (Pre Hung) | 8d | 2026-05-31 | 2026-06-07 | 310, 324 |  | Zenith | 8657414 |
| 327 | 36900.37000.37100.37900.39000.40900.41600.82800.1290000 | Electrical wiring work | 10d | 2026-06-08 | 2026-06-17 | 311, 326 |  | Zenith | 8657424 |
| 328 | 36900.37000.37100.37900.39000.40900.41600.82800.1290100 | Painting 1st coat | 12d | 2026-06-18 | 2026-06-29 | 312, 327 |  | Zenith | 8657434 |
| 329 | 36900.37000.37100.37900.39000.40900.41600.82900 | **4th floor roof** | 110d | 2026-03-24 | 2026-07-11 |  | start no earlier than 2026-03-24 | Zenith | 8648474 |
| 330 | 36900.37000.37100.37900.39000.40900.41600.82900.1290200 | Block Work | 12d | 2026-03-24 | 2026-04-04 | 245, 314 |  | Zenith | 8657444 |
| 331 | 36900.37000.37100.37900.39000.40900.41600.82900.1290300 | Fire sprinkler pipe fixing | 5d | 2026-04-08 | 2026-04-12 | 315, 330 |  | Zenith | 8657454 |
| 332 | 36900.37000.37100.37900.39000.40900.41600.82900.1290400 | Internal Plumbing Works | 5d | 2026-04-15 | 2026-04-19 | 316FS+0.25d, 330FS+10d |  | Zenith | 8657464 |
| 333 | 36900.37000.37100.37900.39000.40900.41600.82900.1290500 | Waterproofing | 5d | 2026-04-30 | 2026-05-04 | 317FS+0.25d, 332FS+10d |  | Zenith | 8657474 |
| 334 | 36900.37000.37100.37900.39000.40900.41600.82900.1290600 | Internal Plaster | 10d | 2026-04-30 | 2026-05-09 | 318, 332, 333FF+5d |  | Zenith | 8657484 |
| 335 | 36900.37000.37100.37900.39000.40900.41600.82900.1290700 | IPS flooring work | 10d | 2026-05-18 | 2026-05-27 | 319, 334 |  | Zenith | 8657494 |
| 336 | 36900.37000.37100.37900.39000.40900.41600.82900.1290800 | Toilet dado work | 9d | 2026-05-10 | 2026-05-18 | 320, 333, 334 |  | Zenith | 8657504 |
| 337 | 36900.37000.37100.37900.39000.40900.41600.82900.1290900 | Toilet flooring work | 9d | 2026-05-19 | 2026-05-27 | 321, 336 |  | Zenith | 8657514 |
| 338 | 36900.37000.37100.37900.39000.40900.41600.82900.1291000 | False Cieling panel fixing | 7d | 2026-05-28 | 2026-06-03 | 322, 337 |  | Zenith | 8657524 |
| 339 | 36900.37000.37100.37900.39000.40900.41600.82900.1291100 | Living dinning flooring | 7d | 2026-05-28 | 2026-06-03 | 323, 337 |  | Zenith | 8657534 |
| 340 | 36900.37000.37100.37900.39000.40900.41600.82900.1291200 | Putty primer coat | 8d | 2026-06-04 | 2026-06-11 | 324, 339 |  | Zenith | 8657544 |
| 341 | 36900.37000.37100.37900.39000.40900.41600.82900.1291300 | Aluminium door-window fixing | 12d | 2026-06-04 | 2026-06-15 | 325, 335, 339 |  | Zenith | 8657554 |
| 342 | 36900.37000.37100.37900.39000.40900.41600.82900.1291400 | Door shutter fixing (Pre Hung) | 8d | 2026-06-12 | 2026-06-19 | 326, 340 |  | Zenith | 8657564 |
| 343 | 36900.37000.37100.37900.39000.40900.41600.82900.1291500 | Electrical wiring work | 10d | 2026-06-20 | 2026-06-29 | 327, 342 |  | Zenith | 8657574 |
| 344 | 36900.37000.37100.37900.39000.40900.41600.82900.1291600 | Painting 1st coat | 12d | 2026-06-30 | 2026-07-11 | 328, 343 |  | Zenith | 8657584 |

| ID | WBS | Task | Duration | Start | Finish | Predecessors | Constraint | Calendar | Unique_Task_ID |
| --- | --- | --- | --- | --- | --- | --- | --- | --- | --- |
| 345 | 36900.37000.37100.37900.39000.40900.41600.83000 | **5th floor roof** | 110d | 2026-04-05 | 2026-07-23 |  | start no earlier than 2026-04-05 | Zenith | 8648484 |
| 346 | 36900.37000.37100.37900.39000.40900.41600.83000.1291700 | Block Work | 12d | 2026-04-05 | 2026-04-16 | 246, 330 |  | Zenith | 8657594 |
| 347 | 36900.37000.37100.37900.39000.40900.41600.83000.1291800 | Fire sprinkler pipe fixing | 5d | 2026-04-17 | 2026-04-21 | 331, 346 |  | Zenith | 8657604 |
| 348 | 36900.37000.37100.37900.39000.40900.41600.83000.1291900 | Internal Plumbing Works | 5d | 2026-04-20 | 2026-04-24 | 332, 346 |  | Zenith | 8657614 |
| 349 | 36900.37000.37100.37900.39000.40900.41600.83000.1292000 | Waterproofing | 5d | 2026-05-05 | 2026-05-09 | 333, 348 |  | Zenith | 8657624 |
| 350 | 36900.37000.37100.37900.39000.40900.41600.83000.1292100 | Internal Plaster | 10d | 2026-05-10 | 2026-05-19 | 334, 348, 349FF+5d |  | Zenith | 8657634 |
| 351 | 36900.37000.37100.37900.39000.40900.41600.83000.1292200 | IPS flooring work | 10d | 2026-05-28 | 2026-06-06 | 335, 350 |  | Zenith | 8657644 |
| 352 | 36900.37000.37100.37900.39000.40900.41600.83000.1292300 | Toilet dado work | 9d | 2026-05-20 | 2026-05-28 | 336, 349, 350 |  | Zenith | 8657654 |
| 353 | 36900.37000.37100.37900.39000.40900.41600.83000.1292400 | Toilet flooring work | 9d | 2026-05-29 | 2026-06-06 | 337, 352 |  | Zenith | 8657664 |
| 354 | 36900.37000.37100.37900.39000.40900.41600.83000.1292500 | False Cieling panel fixing | 7d | 2026-06-07 | 2026-06-13 | 338, 353 |  | Zenith | 8657674 |
| 355 | 36900.37000.37100.37900.39000.40900.41600.83000.1292600 | Living dinning flooring | 7d | 2026-06-07 | 2026-06-13 | 339, 353 |  | Zenith | 8657684 |
| 356 | 36900.37000.37100.37900.39000.40900.41600.83000.1292700 | Putty primer coat | 8d | 2026-06-14 | 2026-06-21 | 340, 355 |  | Zenith | 8657694 |
| 357 | 36900.37000.37100.37900.39000.40900.41600.83000.1292800 | Aluminium door-window fixing | 12d | 2026-06-16 | 2026-06-27 | 341, 351, 355 |  | Zenith | 8657704 |
| 358 | 36900.37000.37100.37900.39000.40900.41600.83000.1292900 | Door shutter fixing (Pre Hung) | 8d | 2026-06-22 | 2026-06-29 | 342, 356 |  | Zenith | 8657714 |
| 359 | 36900.37000.37100.37900.39000.40900.41600.83000.1293000 | Electrical wiring work | 10d | 2026-06-30 | 2026-07-09 | 343, 358 |  | Zenith | 8657724 |
| 360 | 36900.37000.37100.37900.39000.40900.41600.83000.1293100 | Painting 1st coat | 12d | 2026-07-12 | 2026-07-23 | 344, 359 |  | Zenith | 8657734 |
| 361 | 36900.37000.37100.37900.39000.40900.41600.83100 | **6th floor roof** | 110d | 2026-04-17 | 2026-08-04 |  | start no earlier than 2026-04-17 | Zenith | 8648494 |
| 362 | 36900.37000.37100.37900.39000.40900.41600.83100.1293200 | Block Work | 12d | 2026-04-17 | 2026-04-28 | 247, 346 |  | Zenith | 8657744 |
| 363 | 36900.37000.37100.37900.39000.40900.41600.83100.1293300 | Fire sprinkler pipe fixing | 5d | 2026-04-29 | 2026-05-03 | 347, 362 |  | Zenith | 8657754 |
| 364 | 36900.37000.37100.37900.39000.40900.41600.83100.1293400 | Internal Plumbing Works | 5d | 2026-04-29 | 2026-05-03 | 348, 362 |  | Zenith | 8657764 |
| 365 | 36900.37000.37100.37900.39000.40900.41600.83100.1293500 | Waterproofing | 5d | 2026-05-10 | 2026-05-14 | 349, 364 |  | Zenith | 8657774 |
| 366 | 36900.37000.37100.37900.39000.40900.41600.83100.1293600 | Internal Plaster | 10d | 2026-05-20 | 2026-05-29 | 350, 364, 365FF+5d |  | Zenith | 8657784 |
| 367 | 36900.37000.37100.37900.39000.40900.41600.83100.1293700 | IPS flooring work | 10d | 2026-06-07 | 2026-06-16 | 351, 366 |  | Zenith | 8657794 |
| 368 | 36900.37000.37100.37900.39000.40900.41600.83100.1293800 | Toilet dado work | 9d | 2026-05-30 | 2026-06-07 | 352, 365, 366 |  | Zenith | 8657804 |
| 369 | 36900.37000.37100.37900.39000.40900.41600.83100.1293900 | Toilet flooring work | 9d | 2026-06-08 | 2026-06-16 | 353, 368 |  | Zenith | 8657814 |
| 370 | 36900.37000.37100.37900.39000.40900.41600.83100.1294000 | False Cieling panel fixing | 7d | 2026-06-17 | 2026-06-23 | 354, 369 |  | Zenith | 8657824 |
| 371 | 36900.37000.37100.37900.39000.40900.41600.83100.1294100 | Living dinning flooring | 7d | 2026-06-17 | 2026-06-23 | 355, 369 |  | Zenith | 8657834 |
| 372 | 36900.37000.37100.37900.39000.40900.41600.83100.1294200 | Putty primer coat | 8d | 2026-06-24 | 2026-07-01 | 356, 371 |  | Zenith | 8657844 |
| 373 | 36900.37000.37100.37900.39000.40900.41600.83100.1294300 | Aluminium door-window fixing | 12d | 2026-06-28 | 2026-07-09 | 357, 367, 371 |  | Zenith | 8657854 |
| 374 | 36900.37000.37100.37900.39000.40900.41600.83100.1294400 | Door shutter fixing (Pre Hung) | 8d | 2026-07-02 | 2026-07-09 | 358, 372 |  | Zenith | 8657864 |
| 375 | 36900.37000.37100.37900.39000.40900.41600.83100.1294500 | Electrical wiring work | 10d | 2026-07-10 | 2026-07-19 | 359, 374 |  | Zenith | 8657874 |
| 376 | 36900.37000.37100.37900.39000.40900.41600.83100.1294600 | Painting 1st coat | 12d | 2026-07-24 | 2026-08-04 | 360, 375 |  | Zenith | 8657884 |

| ID | WBS | Task | Duration | Start | Finish | Predecessors | Constraint | Calendar | Unique_Task_ID |
| --- | --- | --- | --- | --- | --- | --- | --- | --- | --- |
| 377 | 36900.37000.37100.37900.39000.40900.41600.83200 | **7th floor roof** | 110d | 2026-04-29 | 2026-08-16 |  | start no earlier than 2026-04-29 | Zenith | 8648504 |
| 378 | 36900.37000.37100.37900.39000.40900.41600.83200.1294700 | Block Work | 12d | 2026-04-29 | 2026-05-10 | 248, 362 |  | Zenith | 8657894 |
| 379 | 36900.37000.37100.37900.39000.40900.41600.83200.1294800 | Fire sprinkler pipe fixing | 5d | 2026-05-11 | 2026-05-15 | 363, 378 |  | Zenith | 8657904 |
| 380 | 36900.37000.37100.37900.39000.40900.41600.83200.1294900 | Internal Plumbing Works | 5d | 2026-05-11 | 2026-05-15 | 364, 378 |  | Zenith | 8657914 |
| 381 | 36900.37000.37100.37900.39000.40900.41600.83200.1295000 | Waterproofing | 5d | 2026-05-16 | 2026-05-20 | 365, 380 |  | Zenith | 8657924 |
| 382 | 36900.37000.37100.37900.39000.40900.41600.83200.1295100 | Internal Plaster | 10d | 2026-05-30 | 2026-06-08 | 366, 380, 381FF+5d |  | Zenith | 8657934 |
| 383 | 36900.37000.37100.37900.39000.40900.41600.83200.1295200 | IPS flooring work | 10d | 2026-06-17 | 2026-06-26 | 367, 382 |  | Zenith | 8657944 |
| 384 | 36900.37000.37100.37900.39000.40900.41600.83200.1295300 | Toilet dado work | 9d | 2026-06-09 | 2026-06-17 | 368, 381, 382 |  | Zenith | 8657954 |
| 385 | 36900.37000.37100.37900.39000.40900.41600.83200.1295400 | Toilet flooring work | 9d | 2026-06-18 | 2026-06-26 | 369, 384 |  | Zenith | 8657964 |
| 386 | 36900.37000.37100.37900.39000.40900.41600.83200.1295500 | False Cieling panel fixing | 7d | 2026-06-27 | 2026-07-03 | 370, 385 |  | Zenith | 8657974 |
| 387 | 36900.37000.37100.37900.39000.40900.41600.83200.1295600 | Living dinning flooring | 7d | 2026-06-27 | 2026-07-03 | 371, 385 |  | Zenith | 8657984 |
| 388 | 36900.37000.37100.37900.39000.40900.41600.83200.1295700 | Putty primer coat | 8d | 2026-07-04 | 2026-07-11 | 372, 387 |  | Zenith | 8657994 |
| 389 | 36900.37000.37100.37900.39000.40900.41600.83200.1295800 | Aluminium door-window fixing | 12d | 2026-07-10 | 2026-07-21 | 373, 383, 387 |  | Zenith | 8658004 |
| 390 | 36900.37000.37100.37900.39000.40900.41600.83200.1295900 | Door shutter fixing (Pre Hung) | 8d | 2026-07-12 | 2026-07-19 | 374, 388 |  | Zenith | 8658014 |
| 391 | 36900.37000.37100.37900.39000.40900.41600.83200.1296000 | Electrical wiring work | 10d | 2026-07-20 | 2026-07-29 | 375, 390 |  | Zenith | 8658024 |
| 392 | 36900.37000.37100.37900.39000.40900.41600.83200.1296100 | Painting 1st coat | 12d | 2026-08-05 | 2026-08-16 | 376, 391 |  | Zenith | 8658034 |
| 393 | 36900.37000.37100.37900.39000.40900.41600.83300 | **8th floor roof** | 110d | 2026-05-11 | 2026-08-28 |  | start no earlier than 2026-05-11 | Zenith | 8648514 |
| 394 | 36900.37000.37100.37900.39000.40900.41600.83300.1296200 | Block Work | 12d | 2026-05-11 | 2026-05-22 | 249, 378 |  | Zenith | 8658044 |
| 395 | 36900.37000.37100.37900.39000.40900.41600.83300.1296300 | Fire sprinkler pipe fixing | 5d | 2026-05-23 | 2026-05-27 | 379, 394 |  | Zenith | 8658054 |
| 396 | 36900.37000.37100.37900.39000.40900.41600.83300.1296400 | Internal Plumbing Works | 5d | 2026-05-23 | 2026-05-27 | 380, 394 |  | Zenith | 8658064 |
| 397 | 36900.37000.37100.37900.39000.40900.41600.83300.1296500 | Waterproofing | 5d | 2026-05-28 | 2026-06-01 | 381, 396 |  | Zenith | 8658074 |
| 398 | 36900.37000.37100.37900.39000.40900.41600.83300.1296600 | Internal Plaster | 10d | 2026-06-09 | 2026-06-18 | 382, 396, 397FF+5d |  | Zenith | 8658084 |
| 399 | 36900.37000.37100.37900.39000.40900.41600.83300.1296700 | IPS flooring work | 10d | 2026-06-27 | 2026-07-06 | 383, 398 |  | Zenith | 8658094 |
| 400 | 36900.37000.37100.37900.39000.40900.41600.83300.1296800 | Toilet dado work | 9d | 2026-06-19 | 2026-06-27 | 384, 397, 398 |  | Zenith | 8658104 |
| 401 | 36900.37000.37100.37900.39000.40900.41600.83300.1296900 | Toilet flooring work | 9d | 2026-06-28 | 2026-07-06 | 385, 400 |  | Zenith | 8658114 |
| 402 | 36900.37000.37100.37900.39000.40900.41600.83300.1297000 | False Cieling panel fixing | 7d | 2026-07-07 | 2026-07-13 | 386, 401 |  | Zenith | 8658124 |
| 403 | 36900.37000.37100.37900.39000.40900.41600.83300.1297100 | Living dinning flooring | 7d | 2026-07-07 | 2026-07-13 | 387, 401 |  | Zenith | 8658134 |
| 404 | 36900.37000.37100.37900.39000.40900.41600.83300.1297200 | Putty primer coat | 8d | 2026-07-14 | 2026-07-21 | 388, 403 |  | Zenith | 8658144 |
| 405 | 36900.37000.37100.37900.39000.40900.41600.83300.1297300 | Aluminium door-window fixing | 12d | 2026-07-22 | 2026-08-02 | 389, 399, 403 |  | Zenith | 8658154 |
| 406 | 36900.37000.37100.37900.39000.40900.41600.83300.1297400 | Door shutter fixing (Pre Hung) | 8d | 2026-07-22 | 2026-07-29 | 390, 404 |  | Zenith | 8658164 |
| 407 | 36900.37000.37100.37900.39000.40900.41600.83300.1297500 | Electrical wiring work | 10d | 2026-07-30 | 2026-08-08 | 391, 406 |  | Zenith | 8658174 |
| 408 | 36900.37000.37100.37900.39000.40900.41600.83300.1297600 | Painting 1st coat | 12d | 2026-08-17 | 2026-08-28 | 392, 407 |  | Zenith | 8658184 |

| ID | WBS | Task | Duration | Start | Finish | Predecessors | Constraint | Calendar | Unique_Task_ID |
| --- | --- | --- | --- | --- | --- | --- | --- | --- | --- |
| 409 | 36900.37000.37100.37900.39000.40900.41600.83400 | **9th floor roof** | 110d | 2026-05-23 | 2026-09-09 |  | start no earlier than 2026-05-23 | Zenith | 8648524 |
| 410 | 36900.37000.37100.37900.39000.40900.41600.83400.1297700 | Block Work | 12d | 2026-05-23 | 2026-06-03 | 250, 394 |  | Zenith | 8658194 |
| 411 | 36900.37000.37100.37900.39000.40900.41600.83400.1297800 | Fire sprinkler pipe fixing | 5d | 2026-06-04 | 2026-06-08 | 395, 410 |  | Zenith | 8658204 |
| 412 | 36900.37000.37100.37900.39000.40900.41600.83400.1297900 | Internal Plumbing Works | 5d | 2026-06-04 | 2026-06-08 | 396, 410 |  | Zenith | 8658214 |
| 413 | 36900.37000.37100.37900.39000.40900.41600.83400.1298000 | Waterproofing | 5d | 2026-06-09 | 2026-06-13 | 397, 412 |  | Zenith | 8658224 |
| 414 | 36900.37000.37100.37900.39000.40900.41600.83400.1298100 | Internal Plaster | 10d | 2026-06-19 | 2026-06-28 | 398, 412, 413FF+5d |  | Zenith | 8658234 |
| 415 | 36900.37000.37100.37900.39000.40900.41600.83400.1298200 | IPS flooring work | 10d | 2026-07-07 | 2026-07-16 | 399, 414 |  | Zenith | 8658244 |
| 416 | 36900.37000.37100.37900.39000.40900.41600.83400.1298300 | Toilet dado work | 9d | 2026-06-29 | 2026-07-07 | 400, 413, 414 |  | Zenith | 8658254 |
| 417 | 36900.37000.37100.37900.39000.40900.41600.83400.1298400 | Toilet flooring work | 9d | 2026-07-08 | 2026-07-16 | 401, 416 |  | Zenith | 8658264 |
| 418 | 36900.37000.37100.37900.39000.40900.41600.83400.1298500 | False Cieling panel fixing | 7d | 2026-07-17 | 2026-07-23 | 402, 417 |  | Zenith | 8658274 |
| 419 | 36900.37000.37100.37900.39000.40900.41600.83400.1298600 | Living dinning flooring | 7d | 2026-07-17 | 2026-07-23 | 403, 417 |  | Zenith | 8658284 |
| 420 | 36900.37000.37100.37900.39000.40900.41600.83400.1298700 | Putty primer coat | 8d | 2026-07-24 | 2026-07-31 | 404, 419 |  | Zenith | 8658294 |
| 421 | 36900.37000.37100.37900.39000.40900.41600.83400.1298800 | Aluminium door-window fixing | 12d | 2026-08-03 | 2026-08-14 | 405, 415, 419 |  | Zenith | 8658304 |
| 422 | 36900.37000.37100.37900.39000.40900.41600.83400.1298900 | Door shutter fixing (Pre Hung) | 8d | 2026-08-01 | 2026-08-08 | 406, 420 |  | Zenith | 8658314 |
| 423 | 36900.37000.37100.37900.39000.40900.41600.83400.1299000 | Electrical wiring work | 10d | 2026-08-09 | 2026-08-18 | 407, 422 |  | Zenith | 8658324 |
| 424 | 36900.37000.37100.37900.39000.40900.41600.83400.1299100 | Painting 1st coat | 12d | 2026-08-29 | 2026-09-09 | 408, 423 |  | Zenith | 8658334 |
| 425 | 36900.37000.37100.37900.39000.40900.41600.83500 | **10th floor roof** | 110d | 2026-06-04 | 2026-09-21 |  | start no earlier than 2026-06-04 | Zenith | 8648534 |
| 426 | 36900.37000.37100.37900.39000.40900.41600.83500.1299200 | Block Work | 12d | 2026-06-04 | 2026-06-15 | 251, 410 |  | Zenith | 8658344 |
| 427 | 36900.37000.37100.37900.39000.40900.41600.83500.1299300 | Fire sprinkler pipe fixing | 5d | 2026-06-16 | 2026-06-20 | 411, 426 |  | Zenith | 8658354 |
| 428 | 36900.37000.37100.37900.39000.40900.41600.83500.1299400 | Internal Plumbing Works | 5d | 2026-06-16 | 2026-06-20 | 412, 426 |  | Zenith | 8658364 |
| 429 | 36900.37000.37100.37900.39000.40900.41600.83500.1299500 | Waterproofing | 5d | 2026-06-21 | 2026-06-25 | 413, 428 |  | Zenith | 8658374 |
| 430 | 36900.37000.37100.37900.39000.40900.41600.83500.1299600 | Internal Plaster | 10d | 2026-06-29 | 2026-07-08 | 414, 428, 429FF+5d |  | Zenith | 8658384 |
| 431 | 36900.37000.37100.37900.39000.40900.41600.83500.1299700 | IPS flooring work | 10d | 2026-07-17 | 2026-07-26 | 415, 430 |  | Zenith | 8658394 |
| 432 | 36900.37000.37100.37900.39000.40900.41600.83500.1299800 | Toilet dado work | 9d | 2026-07-09 | 2026-07-17 | 416, 429, 430 |  | Zenith | 8658404 |
| 433 | 36900.37000.37100.37900.39000.40900.41600.83500.1299900 | Toilet flooring work | 9d | 2026-07-18 | 2026-07-26 | 417, 432 |  | Zenith | 8658414 |
| 434 | 36900.37000.37100.37900.39000.40900.41600.83500.1300000 | False Cieling panel fixing | 7d | 2026-07-27 | 2026-08-02 | 418, 433 |  | Zenith | 8658424 |
| 435 | 36900.37000.37100.37900.39000.40900.41600.83500.1300100 | Living dinning flooring | 7d | 2026-07-27 | 2026-08-02 | 419, 433 |  | Zenith | 8658434 |
| 436 | 36900.37000.37100.37900.39000.40900.41600.83500.1300200 | Putty primer coat | 8d | 2026-08-03 | 2026-08-10 | 420, 435 |  | Zenith | 8658444 |
| 437 | 36900.37000.37100.37900.39000.40900.41600.83500.1300300 | Aluminium door-window fixing | 12d | 2026-08-15 | 2026-08-26 | 421, 431, 435 |  | Zenith | 8658454 |
| 438 | 36900.37000.37100.37900.39000.40900.41600.83500.1300400 | Door shutter fixing (Pre Hung) | 8d | 2026-08-11 | 2026-08-18 | 422, 436 |  | Zenith | 8658464 |
| 439 | 36900.37000.37100.37900.39000.40900.41600.83500.1300500 | Electrical wiring work | 10d | 2026-08-19 | 2026-08-28 | 423, 438 |  | Zenith | 8658474 |
| 440 | 36900.37000.37100.37900.39000.40900.41600.83500.1300600 | Painting 1st coat | 12d | 2026-09-10 | 2026-09-21 | 424, 439 |  | Zenith | 8658484 |

| ID | WBS | Task | Duration | Start | Finish | Predecessors | Constraint | Calendar | Unique_Task_ID |
| --- | --- | --- | --- | --- | --- | --- | --- | --- | --- |
| 441 | 36900.37000.37100.37900.39000.40900.41600.83600 | **11th floor roof** | 110d | 2026-06-16 | 2026-10-03 |  | start no earlier than 2026-06-16 | Zenith | 8648544 |
| 442 | 36900.37000.37100.37900.39000.40900.41600.83600.1300700 | Block Work | 12d | 2026-06-16 | 2026-06-27 | 252, 426 |  | Zenith | 8658494 |
| 443 | 36900.37000.37100.37900.39000.40900.41600.83600.1300800 | Fire sprinkler pipe fixing | 5d | 2026-06-28 | 2026-07-02 | 427, 442 |  | Zenith | 8658504 |
| 444 | 36900.37000.37100.37900.39000.40900.41600.83600.1300900 | Internal Plumbing Works | 5d | 2026-06-28 | 2026-07-02 | 428, 442 |  | Zenith | 8658514 |
| 445 | 36900.37000.37100.37900.39000.40900.41600.83600.1301000 | Waterproofing | 5d | 2026-07-03 | 2026-07-07 | 429, 444 |  | Zenith | 8658524 |
| 446 | 36900.37000.37100.37900.39000.40900.41600.83600.1301100 | Internal Plaster | 10d | 2026-07-09 | 2026-07-18 | 430, 444, 445FF+5d |  | Zenith | 8658534 |
| 447 | 36900.37000.37100.37900.39000.40900.41600.83600.1301200 | IPS flooring work | 10d | 2026-07-27 | 2026-08-05 | 431, 446 |  | Zenith | 8658544 |
| 448 | 36900.37000.37100.37900.39000.40900.41600.83600.1301300 | Toilet dado work | 9d | 2026-07-19 | 2026-07-27 | 432, 445, 446 |  | Zenith | 8658554 |
| 449 | 36900.37000.37100.37900.39000.40900.41600.83600.1301400 | Toilet flooring work | 9d | 2026-07-28 | 2026-08-05 | 433, 448 |  | Zenith | 8658564 |
| 450 | 36900.37000.37100.37900.39000.40900.41600.83600.1301500 | False Cieling panel fixing | 7d | 2026-08-06 | 2026-08-12 | 434, 449 |  | Zenith | 8658574 |
| 451 | 36900.37000.37100.37900.39000.40900.41600.83600.1301600 | Living dinning flooring | 7d | 2026-08-06 | 2026-08-12 | 435, 449 |  | Zenith | 8658584 |
| 452 | 36900.37000.37100.37900.39000.40900.41600.83600.1301700 | Putty primer coat | 8d | 2026-08-13 | 2026-08-20 | 436, 451 |  | Zenith | 8658594 |
| 453 | 36900.37000.37100.37900.39000.40900.41600.83600.1301800 | Aluminium door-window fixing | 12d | 2026-08-27 | 2026-09-07 | 437, 447, 451 |  | Zenith | 8658604 |
| 454 | 36900.37000.37100.37900.39000.40900.41600.83600.1301900 | Door shutter fixing (Pre Hung) | 8d | 2026-08-21 | 2026-08-28 | 438, 452 |  | Zenith | 8658614 |
| 455 | 36900.37000.37100.37900.39000.40900.41600.83600.1302000 | Electrical wiring work | 10d | 2026-08-29 | 2026-09-07 | 439, 454 |  | Zenith | 8658624 |
| 456 | 36900.37000.37100.37900.39000.40900.41600.83600.1302100 | Painting 1st coat | 12d | 2026-09-22 | 2026-10-03 | 440, 455 |  | Zenith | 8658634 |
| 457 | 36900.37000.37100.37900.39000.40900.41600.83700 | **12th floor roof** | 110d | 2026-06-28 | 2026-10-15 |  | start no earlier than 2026-06-28 | Zenith | 8648554 |
| 458 | 36900.37000.37100.37900.39000.40900.41600.83700.1302200 | Block Work | 12d | 2026-06-28 | 2026-07-09 | 253, 442 |  | Zenith | 8658644 |
| 459 | 36900.37000.37100.37900.39000.40900.41600.83700.1302300 | Fire sprinkler pipe fixing | 5d | 2026-07-10 | 2026-07-14 | 443, 458 |  | Zenith | 8658654 |
| 460 | 36900.37000.37100.37900.39000.40900.41600.83700.1302400 | Internal Plumbing Works | 5d | 2026-07-10 | 2026-07-14 | 444, 458 |  | Zenith | 8658664 |
| 461 | 36900.37000.37100.37900.39000.40900.41600.83700.1302500 | Waterproofing | 5d | 2026-07-15 | 2026-07-19 | 445, 460 |  | Zenith | 8658674 |
| 462 | 36900.37000.37100.37900.39000.40900.41600.83700.1302600 | Internal Plaster | 10d | 2026-07-19 | 2026-07-28 | 446, 460, 461FF+5d |  | Zenith | 8658684 |
| 463 | 36900.37000.37100.37900.39000.40900.41600.83700.1302700 | IPS flooring work | 10d | 2026-08-06 | 2026-08-15 | 447, 462 |  | Zenith | 8658694 |
| 464 | 36900.37000.37100.37900.39000.40900.41600.83700.1302800 | Toilet dado work | 9d | 2026-07-29 | 2026-08-06 | 448, 461, 462 |  | Zenith | 8658704 |
| 465 | 36900.37000.37100.37900.39000.40900.41600.83700.1302900 | Toilet flooring work | 9d | 2026-08-07 | 2026-08-15 | 449, 464 |  | Zenith | 8658714 |
| 466 | 36900.37000.37100.37900.39000.40900.41600.83700.1303000 | False Cieling panel fixing | 7d | 2026-08-16 | 2026-08-22 | 450, 465 |  | Zenith | 8658724 |
| 467 | 36900.37000.37100.37900.39000.40900.41600.83700.1303100 | Living dinning flooring | 7d | 2026-08-16 | 2026-08-22 | 451, 465 |  | Zenith | 8658734 |
| 468 | 36900.37000.37100.37900.39000.40900.41600.83700.1303200 | Putty primer coat | 8d | 2026-08-23 | 2026-08-30 | 452, 467 |  | Zenith | 8658744 |
| 469 | 36900.37000.37100.37900.39000.40900.41600.83700.1303300 | Aluminium door-window fixing | 12d | 2026-09-08 | 2026-09-19 | 453, 463, 467 |  | Zenith | 8658754 |
| 470 | 36900.37000.37100.37900.39000.40900.41600.83700.1303400 | Door shutter fixing (Pre Hung) | 8d | 2026-08-31 | 2026-09-07 | 454, 468 |  | Zenith | 8658764 |
| 471 | 36900.37000.37100.37900.39000.40900.41600.83700.1303500 | Electrical wiring work | 10d | 2026-09-08 | 2026-09-17 | 455, 470 |  | Zenith | 8658774 |
| 472 | 36900.37000.37100.37900.39000.40900.41600.83700.1303600 | Painting 1st coat | 12d | 2026-10-04 | 2026-10-15 | 456, 471 |  | Zenith | 8658784 |

| ID | WBS | Task | Duration | Start | Finish | Predecessors | Constraint | Calendar | Unique_Task_ID |
| --- | --- | --- | --- | --- | --- | --- | --- | --- | --- |
| 473 | 36900.37000.37100.37900.39000.40900.41600.83800 | **13th floor roof** | 110d | 2026-07-10 | 2026-10-27 |  | start no earlier than 2026-07-10 | Zenith | 8648564 |
| 474 | 36900.37000.37100.37900.39000.40900.41600.83800.1303700 | Block Work | 12d | 2026-07-10 | 2026-07-21 | 254, 458 |  | Zenith | 8658794 |
| 475 | 36900.37000.37100.37900.39000.40900.41600.83800.1303800 | Fire sprinkler pipe fixing | 5d | 2026-07-22 | 2026-07-26 | 459, 474 |  | Zenith | 8658804 |
| 476 | 36900.37000.37100.37900.39000.40900.41600.83800.1303900 | Internal Plumbing Works | 5d | 2026-07-22 | 2026-07-26 | 460, 474 |  | Zenith | 8658814 |
| 477 | 36900.37000.37100.37900.39000.40900.41600.83800.1304000 | Waterproofing | 5d | 2026-07-27 | 2026-07-31 | 461, 476 |  | Zenith | 8658824 |
| 478 | 36900.37000.37100.37900.39000.40900.41600.83800.1304100 | Internal Plaster | 10d | 2026-07-29 | 2026-08-07 | 462, 476, 477FF+5d |  | Zenith | 8658834 |
| 479 | 36900.37000.37100.37900.39000.40900.41600.83800.1304200 | IPS flooring work | 10d | 2026-08-16 | 2026-08-25 | 463, 478 |  | Zenith | 8658844 |
| 480 | 36900.37000.37100.37900.39000.40900.41600.83800.1304300 | Toilet dado work | 9d | 2026-08-08 | 2026-08-16 | 464, 477, 478 |  | Zenith | 8658854 |
| 481 | 36900.37000.37100.37900.39000.40900.41600.83800.1304400 | Toilet flooring work | 9d | 2026-08-17 | 2026-08-25 | 465, 480 |  | Zenith | 8658864 |
| 482 | 36900.37000.37100.37900.39000.40900.41600.83800.1304500 | False Cieling panel fixing | 7d | 2026-08-26 | 2026-09-01 | 466, 481 |  | Zenith | 8658874 |
| 483 | 36900.37000.37100.37900.39000.40900.41600.83800.1304600 | Living dinning flooring | 7d | 2026-08-26 | 2026-09-01 | 467, 481 |  | Zenith | 8658884 |
| 484 | 36900.37000.37100.37900.39000.40900.41600.83800.1304700 | Putty primer coat | 8d | 2026-09-02 | 2026-09-09 | 468, 483 |  | Zenith | 8658894 |
| 485 | 36900.37000.37100.37900.39000.40900.41600.83800.1304800 | Aluminium door-window fixing | 12d | 2026-09-20 | 2026-10-01 | 469, 479, 483 |  | Zenith | 8658904 |
| 486 | 36900.37000.37100.37900.39000.40900.41600.83800.1304900 | Door shutter fixing (Pre Hung) | 8d | 2026-09-10 | 2026-09-17 | 470, 484 |  | Zenith | 8658914 |
| 487 | 36900.37000.37100.37900.39000.40900.41600.83800.1305000 | Electrical wiring work | 10d | 2026-09-18 | 2026-09-27 | 471, 486 |  | Zenith | 8658924 |
| 488 | 36900.37000.37100.37900.39000.40900.41600.83800.1305100 | Painting 1st coat | 12d | 2026-10-16 | 2026-10-27 | 472, 487 |  | Zenith | 8658934 |
| 489 | 36900.37000.37100.37900.39000.40900.41600.83900 | **14th floor roof** | 110d | 2026-07-22 | 2026-12-23 |  | start no earlier than 2026-07-22 | Zenith | 8648574 |
| 490 | 36900.37000.37100.37900.39000.40900.41600.83900.1305200 | Block Work | 12d | 2026-07-22 | 2026-08-02 | 255, 474 |  | Zenith | 8658944 |
| 491 | 36900.37000.37100.37900.39000.40900.41600.83900.1305300 | Fire sprinkler pipe fixing | 5d | 2026-08-03 | 2026-08-07 | 475, 490 |  | Zenith | 8658954 |
| 492 | 36900.37000.37100.37900.39000.40900.41600.83900.1305400 | Internal Plumbing Works | 5d | 2026-08-03 | 2026-08-07 | 476, 490 |  | Zenith | 8658964 |
| 493 | 36900.37000.37100.37900.39000.40900.41600.83900.1305500 | Waterproofing | 5d | 2026-08-08 | 2026-08-12 | 477, 492 |  | Zenith | 8658974 |
| 494 | 36900.37000.37100.37900.39000.40900.41600.83900.1305600 | Internal Plaster | 10d | 2026-08-08 | 2026-08-17 | 478, 492, 493FF+5d |  | Zenith | 8658984 |
| 495 | 36900.37000.37100.37900.39000.40900.41600.83900.1305700 | IPS flooring work | 10d | 2026-08-26 | 2026-09-04 | 479, 494 |  | Zenith | 8658994 |
| 496 | 36900.37000.37100.37900.39000.40900.41600.83900.1305800 | Toilet dado work | 9d | 2026-08-18 | 2026-08-26 | 480, 493, 494 |  | Zenith | 8659004 |
| 497 | 36900.37000.37100.37900.39000.40900.41600.83900.1305900 | Toilet flooring work | 9d | 2026-08-27 | 2026-09-04 | 481, 496 |  | Zenith | 8659014 |
| 498 | 36900.37000.37100.37900.39000.40900.41600.83900.1306000 | False Cieling panel fixing | 7d | 2026-09-05 | 2026-09-11 | 482, 497 |  | Zenith | 8659024 |
| 499 | 36900.37000.37100.37900.39000.40900.41600.83900.1306100 | Living dinning flooring | 7d | 2026-09-05 | 2026-09-11 | 483, 497 |  | Zenith | 8659034 |
| 500 | 36900.37000.37100.37900.39000.40900.41600.83900.1306200 | Putty primer coat | 8d | 2026-09-12 | 2026-09-19 | 484, 499 |  | Zenith | 8659044 |
| 501 | 36900.37000.37100.37900.39000.40900.41600.83900.1306300 | Aluminium door-window fixing | 12d | 2026-10-02 | 2026-10-13 | 485, 495, 499 |  | Zenith | 8659054 |
| 502 | 36900.37000.37100.37900.39000.40900.41600.83900.1306400 | Door shutter fixing (Pre Hung) | 8d | 2026-09-20 | 2026-09-27 | 486, 500 |  | Zenith | 8659064 |
| 503 | 36900.37000.37100.37900.39000.40900.41600.83900.1306500 | Electrical wiring work | 10d | 2026-09-28 | 2026-10-07 | 487, 502 |  | Zenith | 8659074 |
| 504 | 36900.37000.37100.37900.39000.40900.41600.83900.1306600 | Painting 1st coat | 12d | 2026-10-28 | 2026-12-23 | 488, 503 |  | Zenith | 8659084 |

| ID | WBS | Task | Duration | Start | Finish | Predecessors | Constraint | Calendar | Unique_Task_ID |
| --- | --- | --- | --- | --- | --- | --- | --- | --- | --- |
| 505 | 36900.37000.37100.37900.39000.40900.41600.84000 | **15th floor roof** | 110d | 2026-08-03 | 2027-01-04 |  | start no earlier than 2026-08-03 | Zenith | 8648584 |
| 506 | 36900.37000.37100.37900.39000.40900.41600.84000.1306700 | Block Work | 12d | 2026-08-03 | 2026-08-14 | 256, 490 |  | Zenith | 8659094 |
| 507 | 36900.37000.37100.37900.39000.40900.41600.84000.1306800 | Fire sprinkler pipe fixing | 5d | 2026-08-15 | 2026-08-19 | 491, 506 |  | Zenith | 8659104 |
| 508 | 36900.37000.37100.37900.39000.40900.41600.84000.1306900 | Internal Plumbing Works | 5d | 2026-08-15 | 2026-08-19 | 492, 506 |  | Zenith | 8659114 |
| 509 | 36900.37000.37100.37900.39000.40900.41600.84000.1307000 | Waterproofing | 5d | 2026-08-20 | 2026-08-24 | 493, 508 |  | Zenith | 8659124 |
| 510 | 36900.37000.37100.37900.39000.40900.41600.84000.1307100 | Internal Plaster | 10d | 2026-08-20 | 2026-08-29 | 494, 508, 509FF+5d |  | Zenith | 8659134 |
| 511 | 36900.37000.37100.37900.39000.40900.41600.84000.1307200 | IPS flooring work | 10d | 2026-09-05 | 2026-09-14 | 495, 510 |  | Zenith | 8659144 |
| 512 | 36900.37000.37100.37900.39000.40900.41600.84000.1307300 | Toilet dado work | 9d | 2026-08-30 | 2026-09-07 | 496, 509, 510 |  | Zenith | 8659154 |
| 513 | 36900.37000.37100.37900.39000.40900.41600.84000.1307400 | Toilet flooring work | 9d | 2026-09-08 | 2026-09-16 | 497, 512 |  | Zenith | 8659164 |
| 514 | 36900.37000.37100.37900.39000.40900.41600.84000.1307500 | False Cieling panel fixing | 7d | 2026-09-17 | 2026-09-23 | 498, 513 |  | Zenith | 8659174 |
| 515 | 36900.37000.37100.37900.39000.40900.41600.84000.1307600 | Living dinning flooring | 7d | 2026-09-17 | 2026-09-23 | 499, 513 |  | Zenith | 8659184 |
| 516 | 36900.37000.37100.37900.39000.40900.41600.84000.1307700 | Aluminium door-window fixing | 8d | 2026-10-14 | 2026-10-21 | 501, 511, 515 |  | Zenith | 8659194 |
| 517 | 36900.37000.37100.37900.39000.40900.41600.84000.1307800 | Putty primer coat | 12d | 2026-09-24 | 2026-10-05 | 500, 515 |  | Zenith | 8659204 |
| 518 | 36900.37000.37100.37900.39000.40900.41600.84000.1307900 | Door shutter fixing (Pre Hung) | 8d | 2026-10-06 | 2026-10-13 | 502, 517 |  | Zenith | 8659214 |
| 519 | 36900.37000.37100.37900.39000.40900.41600.84000.1308000 | Electrical wiring work | 10d | 2026-10-14 | 2026-10-23 | 503, 518 |  | Zenith | 8659224 |
| 520 | 36900.37000.37100.37900.39000.40900.41600.84000.1308100 | Painting 1st coat | 12d | 2026-12-24 | 2027-01-04 | 504, 519 |  | Zenith | 8659234 |
| 521 | 36900.37000.37100.37900.39000.40900.41600.84100 | **16th floor roof** | 110d | 2026-08-15 | 2027-01-16 |  | start no earlier than 2026-08-15 | Zenith | 8648594 |
| 522 | 36900.37000.37100.37900.39000.40900.41600.84100.1308200 | Block Work | 12d | 2026-08-15 | 2026-08-26 | 257, 506 |  | Zenith | 8659244 |
| 523 | 36900.37000.37100.37900.39000.40900.41600.84100.1308300 | Fire sprinkler pipe fixing | 5d | 2026-08-27 | 2026-08-31 | 507, 522 |  | Zenith | 8659254 |
| 524 | 36900.37000.37100.37900.39000.40900.41600.84100.1308400 | Internal Plumbing Works | 5d | 2026-08-27 | 2026-08-31 | 508, 522 |  | Zenith | 8659264 |
| 525 | 36900.37000.37100.37900.39000.40900.41600.84100.1308500 | Waterproofing | 5d | 2026-09-01 | 2026-09-05 | 509, 524 |  | Zenith | 8659274 |
| 526 | 36900.37000.37100.37900.39000.40900.41600.84100.1308600 | Internal Plaster | 10d | 2026-09-01 | 2026-09-10 | 510, 524, 525FF+5d |  | Zenith | 8659284 |
| 527 | 36900.37000.37100.37900.39000.40900.41600.84100.1308700 | IPS flooring work | 10d | 2026-09-15 | 2026-09-24 | 511, 526 |  | Zenith | 8659294 |
| 528 | 36900.37000.37100.37900.39000.40900.41600.84100.1308800 | Toilet dado work | 9d | 2026-09-11 | 2026-09-19 | 512, 525, 526 |  | Zenith | 8659304 |
| 529 | 36900.37000.37100.37900.39000.40900.41600.84100.1308900 | Toilet flooring work | 9d | 2026-09-20 | 2026-09-28 | 513, 528 |  | Zenith | 8659314 |
| 530 | 36900.37000.37100.37900.39000.40900.41600.84100.1309000 | False Cieling panel fixing | 7d | 2026-09-29 | 2026-10-05 | 514, 529 |  | Zenith | 8659324 |
| 531 | 36900.37000.37100.37900.39000.40900.41600.84100.1309100 | Living dinning flooring | 7d | 2026-09-29 | 2026-10-05 | 515, 529 |  | Zenith | 8659334 |
| 532 | 36900.37000.37100.37900.39000.40900.41600.84100.1309200 | Putty primer coat | 8d | 2026-10-06 | 2026-10-13 | 517, 531 |  | Zenith | 8659344 |
| 533 | 36900.37000.37100.37900.39000.40900.41600.84100.1309300 | Aluminium door-window fixing | 12d | 2026-10-22 | 2026-12-17 | 516, 527, 531 |  | Zenith | 8659354 |
| 534 | 36900.37000.37100.37900.39000.40900.41600.84100.1309400 | Door shutter fixing (Pre Hung) | 8d | 2026-10-14 | 2026-10-21 | 518, 532 |  | Zenith | 8659364 |
| 535 | 36900.37000.37100.37900.39000.40900.41600.84100.1309500 | Electrical wiring work | 10d | 2026-10-24 | 2026-12-17 | 519, 534 |  | Zenith | 8659374 |
| 536 | 36900.37000.37100.37900.39000.40900.41600.84100.1309600 | Painting 1st coat | 12d | 2027-01-05 | 2027-01-16 | 520, 535 |  | Zenith | 8659384 |

| ID | WBS | Task | Duration | Start | Finish | Predecessors | Constraint | Calendar | Unique_Task_ID |
| --- | --- | --- | --- | --- | --- | --- | --- | --- | --- |
| 537 | 36900.37000.37100.37900.39000.40900.41600.84200 | **17th floor roof** | 110d | 2026-08-27 | 2027-01-28 |  | start no earlier than 2026-08-27 | Zenith | 8648604 |
| 538 | 36900.37000.37100.37900.39000.40900.41600.84200.1309700 | Block Work | 12d | 2026-08-27 | 2026-09-07 | 258, 522 |  | Zenith | 8659394 |
| 539 | 36900.37000.37100.37900.39000.40900.41600.84200.1309800 | Fire sprinkler pipe fixing | 5d | 2026-09-08 | 2026-09-12 | 523, 538 |  | Zenith | 8659404 |
| 540 | 36900.37000.37100.37900.39000.40900.41600.84200.1309900 | Internal Plumbing Works | 5d | 2026-09-08 | 2026-09-12 | 524, 538 |  | Zenith | 8659414 |
| 541 | 36900.37000.37100.37900.39000.40900.41600.84200.1310000 | Waterproofing | 5d | 2026-09-13 | 2026-09-17 | 525, 540 |  | Zenith | 8659424 |
| 542 | 36900.37000.37100.37900.39000.40900.41600.84200.1310100 | Internal Plaster | 10d | 2026-09-13 | 2026-09-23 | 526FS-4d, 540FS+0.25d, 541FF+5d |  | Zenith | 8659434 |
| 543 | 36900.37000.37100.37900.39000.40900.41600.84200.1310200 | IPS flooring work | 10d | 2026-09-25 | 2026-10-04 | 527, 542 |  | Zenith | 8659444 |
| 544 | 36900.37000.37100.37900.39000.40900.41600.84200.1310300 | Toilet dado work | 9d | 2026-09-23 | 2026-10-02 | 528, 541, 542 |  | Zenith | 8659454 |
| 545 | 36900.37000.37100.37900.39000.40900.41600.84200.1310400 | Toilet flooring work | 9d | 2026-10-02 | 2026-10-11 | 529, 544 |  | Zenith | 8659464 |
| 546 | 36900.37000.37100.37900.39000.40900.41600.84200.1310500 | False Cieling panel fixing | 7d | 2026-10-11 | 2026-10-18 | 530, 545 |  | Zenith | 8659474 |
| 547 | 36900.37000.37100.37900.39000.40900.41600.84200.1310600 | Living dinning flooring | 7d | 2026-10-11 | 2026-10-18 | 531, 545 |  | Zenith | 8659484 |
| 548 | 36900.37000.37100.37900.39000.40900.41600.84200.1310700 | Putty primer coat | 8d | 2026-10-18 | 2026-10-26 | 532, 547 |  | Zenith | 8659494 |
| 549 | 36900.37000.37100.37900.39000.40900.41600.84200.1310800 | Aluminium door-window fixing | 12d | 2026-12-18 | 2026-12-29 | 533, 543, 547 |  | Zenith | 8659504 |
| 550 | 36900.37000.37100.37900.39000.40900.41600.84200.1310900 | Door shutter fixing (Pre Hung) | 8d | 2026-10-26 | 2026-12-18 | 534, 548 |  | Zenith | 8659514 |
| 551 | 36900.37000.37100.37900.39000.40900.41600.84200.1311000 | Electrical wiring work | 10d | 2026-12-18 | 2026-12-28 | 535, 550 |  | Zenith | 8659524 |
| 552 | 36900.37000.37100.37900.39000.40900.41600.84200.1311100 | Painting 1st coat | 12d | 2027-01-17 | 2027-01-28 | 536, 551 |  | Zenith | 8659534 |
| 553 | 36900.37000.37100.37900.39000.40900.41600.84300 | **18th floor roof** | 110d | 2026-09-08 | 2027-02-09 |  | start no earlier than 2026-09-08 | Zenith | 8648614 |
| 554 | 36900.37000.37100.37900.39000.40900.41600.84300.1311200 | Block Work | 12d | 2026-09-08 | 2026-09-19 | 259, 538 |  | Zenith | 8659544 |
| 555 | 36900.37000.37100.37900.39000.40900.41600.84300.1311300 | Fire sprinkler pipe fixing | 5d | 2026-09-20 | 2026-09-24 | 539, 554 |  | Zenith | 8659554 |
| 556 | 36900.37000.37100.37900.39000.40900.41600.84300.1311400 | Internal Plumbing Works | 5d | 2026-09-20 | 2026-09-24 | 540, 554 |  | Zenith | 8659564 |
| 557 | 36900.37000.37100.37900.39000.40900.41600.84300.1311500 | Waterproofing | 5d | 2026-09-25 | 2026-09-29 | 541, 556 |  | Zenith | 8659574 |
| 558 | 36900.37000.37100.37900.39000.40900.41600.84300.1311600 | Internal Plaster | 10d | 2026-09-25 | 2026-10-05 | 542FS-4d, 556FS+0.25d, 557FF+5d |  | Zenith | 8659584 |
| 559 | 36900.37000.37100.37900.39000.40900.41600.84300.1311700 | IPS flooring work | 10d | 2026-10-05 | 2026-10-15 | 543, 558 |  | Zenith | 8659594 |
| 560 | 36900.37000.37100.37900.39000.40900.41600.84300.1311800 | Toilet dado work | 9d | 2026-10-05 | 2026-10-14 | 544, 557, 558 |  | Zenith | 8659604 |
| 561 | 36900.37000.37100.37900.39000.40900.41600.84300.1311900 | Toilet flooring work | 9d | 2026-10-14 | 2026-10-23 | 545, 560 |  | Zenith | 8659614 |
| 562 | 36900.37000.37100.37900.39000.40900.41600.84300.1312000 | False Cieling panel fixing | 7d | 2026-10-23 | 2026-10-30 | 546, 561 |  | Zenith | 8659624 |
| 563 | 36900.37000.37100.37900.39000.40900.41600.84300.1312100 | Living dinning flooring | 7d | 2026-10-23 | 2026-10-30 | 547, 561 |  | Zenith | 8659634 |
| 564 | 36900.37000.37100.37900.39000.40900.41600.84300.1312200 | Putty primer coat | 8d | 2026-10-30 | 2026-12-22 | 548, 563 |  | Zenith | 8659644 |
| 565 | 36900.37000.37100.37900.39000.40900.41600.84300.1312300 | Aluminium door-window fixing | 12d | 2026-12-30 | 2027-01-10 | 549, 559, 563 |  | Zenith | 8659654 |
| 566 | 36900.37000.37100.37900.39000.40900.41600.84300.1312400 | Door shutter fixing (Pre Hung) | 8d | 2026-12-22 | 2026-12-30 | 550, 564 |  | Zenith | 8659664 |
| 567 | 36900.37000.37100.37900.39000.40900.41600.84300.1312500 | Electrical wiring work | 10d | 2026-12-30 | 2027-01-09 | 551, 566 |  | Zenith | 8659674 |
| 568 | 36900.37000.37100.37900.39000.40900.41600.84300.1312600 | Painting 1st coat | 12d | 2027-01-29 | 2027-02-09 | 552, 567 |  | Zenith | 8659684 |

| ID | WBS | Task | Duration | Start | Finish | Predecessors | Constraint | Calendar | Unique_Task_ID |
| --- | --- | --- | --- | --- | --- | --- | --- | --- | --- |
| 569 | 36900.37000.37100.37900.39000.40900.41600.84400 | **19th floor roof** | 110d | 2026-09-20 | 2027-02-21 |  | start no earlier than 2026-09-20 | Zenith | 8648624 |
| 570 | 36900.37000.37100.37900.39000.40900.41600.84400.1312700 | Block Work | 11d | 2026-09-20 | 2026-09-30 | 260, 554 |  | Zenith | 8659694 |
| 571 | 36900.37000.37100.37900.39000.40900.41600.84400.1312800 | Fire sprinkler pipe fixing | 4d | 2026-10-01 | 2026-10-04 | 555, 570 |  | Zenith | 8659704 |
| 572 | 36900.37000.37100.37900.39000.40900.41600.84400.1312900 | Internal Plumbing Works | 4d | 2026-10-01 | 2026-10-04 | 556, 570 |  | Zenith | 8659714 |
| 573 | 36900.37000.37100.37900.39000.40900.41600.84400.1313000 | Waterproofing | 4d | 2026-10-05 | 2026-10-08 | 557, 572 |  | Zenith | 8659724 |
| 574 | 36900.37000.37100.37900.39000.40900.41600.84400.1313100 | Internal Plaster | 10d | 2026-10-05 | 2026-10-15 | 558FS-4d, 572FS+0.25d, 573FF+5d |  | Zenith | 8659734 |
| 575 | 36900.37000.37100.37900.39000.40900.41600.84400.1313200 | IPS flooring work | 10d | 2026-10-15 | 2026-10-25 | 559, 574 |  | Zenith | 8659744 |
| 576 | 36900.37000.37100.37900.39000.40900.41600.84400.1313300 | Toilet dado work | 9d | 2026-10-15 | 2026-10-24 | 560, 573, 574 |  | Zenith | 8659754 |
| 577 | 36900.37000.37100.37900.39000.40900.41600.84400.1313400 | Toilet flooring work | 9d | 2026-10-24 | 2026-12-17 | 561, 576 |  | Zenith | 8659764 |
| 578 | 36900.37000.37100.37900.39000.40900.41600.84400.1313500 | False Cieling panel fixing | 7d | 2026-12-17 | 2026-12-24 | 562, 577 |  | Zenith | 8659774 |
| 579 | 36900.37000.37100.37900.39000.40900.41600.84400.1313600 | Living dinning flooring | 7d | 2026-12-17 | 2026-12-24 | 563, 577 |  | Zenith | 8659784 |
| 580 | 36900.37000.37100.37900.39000.40900.41600.84400.1313700 | Putty primer coat | 8d | 2026-12-24 | 2027-01-01 | 564, 579 |  | Zenith | 8659794 |
| 581 | 36900.37000.37100.37900.39000.40900.41600.84400.1313800 | Aluminium door-window fixing | 12d | 2027-01-11 | 2027-01-22 | 565, 575, 579 |  | Zenith | 8659804 |
| 582 | 36900.37000.37100.37900.39000.40900.41600.84400.1313900 | Door shutter fixing (Pre Hung) | 8d | 2027-01-01 | 2027-01-09 | 566, 580 |  | Zenith | 8659814 |
| 583 | 36900.37000.37100.37900.39000.40900.41600.84400.1314000 | Electrical wiring work | 10d | 2027-01-09 | 2027-01-19 | 567, 582 |  | Zenith | 8659824 |
| 584 | 36900.37000.37100.37900.39000.40900.41600.84400.1314100 | Painting 1st coat | 12d | 2027-02-10 | 2027-02-21 | 568, 583 |  | Zenith | 8659834 |
| 585 | 36900.37000.37100.37900.39000.40900.41600.84500 | **20th floor roof** | 111d | 2026-10-01 | 2027-03-05 |  | start no earlier than 2026-10-01 | Zenith | 8648634 |
| 586 | 36900.37000.37100.37900.39000.40900.41600.84500.1314200 | Block Work | 11d | 2026-10-01 | 2026-10-11 | 261, 570 |  | Zenith | 8659844 |
| 587 | 36900.37000.37100.37900.39000.40900.41600.84500.1314300 | Fire sprinkler pipe fixing | 4d | 2026-10-12 | 2026-10-15 | 571, 586 |  | Zenith | 8659854 |
| 588 | 36900.37000.37100.37900.39000.40900.41600.84500.1314400 | Internal Plumbing Works | 4d | 2026-10-12 | 2026-10-15 | 572, 586 |  | Zenith | 8659864 |
| 589 | 36900.37000.37100.37900.39000.40900.41600.84500.1314500 | Waterproofing | 4d | 2026-10-16 | 2026-10-19 | 573, 588 |  | Zenith | 8659874 |
| 590 | 36900.37000.37100.37900.39000.40900.41600.84500.1314600 | Internal Plaster | 10d | 2026-10-16 | 2026-10-26 | 574FS-4d, 588FS+0.25d, 589FF+5d |  | Zenith | 8659884 |
| 591 | 36900.37000.37100.37900.39000.40900.41600.84500.1314700 | IPS flooring work | 10d | 2026-10-26 | 2026-12-20 | 575, 590 |  | Zenith | 8659894 |
| 592 | 36900.37000.37100.37900.39000.40900.41600.84500.1314800 | Toilet dado work | 9d | 2026-10-26 | 2026-12-19 | 576, 589, 590 |  | Zenith | 8659904 |
| 593 | 36900.37000.37100.37900.39000.40900.41600.84500.1314900 | Toilet flooring work | 9d | 2026-12-19 | 2026-12-28 | 577, 592 |  | Zenith | 8659914 |
| 594 | 36900.37000.37100.37900.39000.40900.41600.84500.1315000 | False Cieling panel fixing | 7d | 2026-12-28 | 2027-01-04 | 578, 593 |  | Zenith | 8659924 |
| 595 | 36900.37000.37100.37900.39000.40900.41600.84500.1315100 | Living dinning flooring | 7d | 2026-12-28 | 2027-01-04 | 579, 593 |  | Zenith | 8659934 |
| 596 | 36900.37000.37100.37900.39000.40900.41600.84500.1315200 | Putty primer coat | 8d | 2027-01-04 | 2027-01-12 | 580, 595 |  | Zenith | 8659944 |
| 597 | 36900.37000.37100.37900.39000.40900.41600.84500.1315300 | Aluminium door-window fixing | 12d | 2027-01-23 | 2027-02-03 | 581, 591, 595 |  | Zenith | 8659954 |
| 598 | 36900.37000.37100.37900.39000.40900.41600.84500.1315400 | Door shutter fixing (Pre Hung) | 8d | 2027-01-12 | 2027-01-20 | 582, 596 |  | Zenith | 8659964 |
| 599 | 36900.37000.37100.37900.39000.40900.41600.84500.1315500 | Electrical wiring work | 10d | 2027-01-20 | 2027-01-30 | 583, 598 |  | Zenith | 8659974 |
| 600 | 36900.37000.37100.37900.39000.40900.41600.84500.1315600 | Painting 1st coat | 12d | 2027-02-22 | 2027-03-05 | 584, 599 |  | Zenith | 8659984 |

| ID | WBS | Task | Duration | Start | Finish | Predecessors | Constraint | Calendar | Unique_Task_ID |
| --- | --- | --- | --- | --- | --- | --- | --- | --- | --- |
| 601 | 36900.37000.37100.37900.39000.40900.41600.84600 | **21st floor roof** | 112d | 2026-10-12 | 2027-03-17 |  | start no earlier than 2026-10-12 | Zenith | 8648644 |
| 602 | 36900.37000.37100.37900.39000.40900.41600.84600.1315700 | Block Work | 11d | 2026-10-12 | 2026-10-22 | 262, 586 |  | Zenith | 8659994 |
| 603 | 36900.37000.37100.37900.39000.40900.41600.84600.1315800 | Fire sprinkler pipe fixing | 4d | 2026-10-23 | 2026-10-26 | 587, 602 |  | Zenith | 8660004 |
| 604 | 36900.37000.37100.37900.39000.40900.41600.84600.1315900 | Internal Plumbing Works | 4d | 2026-10-23 | 2026-10-26 | 588, 602 |  | Zenith | 8660014 |
| 605 | 36900.37000.37100.37900.39000.40900.41600.84600.1316000 | Waterproofing | 4d | 2026-10-27 | 2026-10-30 | 589, 604 |  | Zenith | 8660024 |
| 606 | 36900.37000.37100.37900.39000.40900.41600.84600.1316100 | Internal Plaster | 10d | 2026-10-26 | 2026-12-19 | 590FS-5d, 604FS-3d, 605FF+5d |  | Zenith | 8660034 |
| 607 | 36900.37000.37100.37900.39000.40900.41600.84600.1316200 | IPS flooring work | 10d | 2026-12-20 | 2026-12-30 | 591, 606 |  | Zenith | 8660044 |
| 608 | 36900.37000.37100.37900.39000.40900.41600.84600.1316300 | Toilet dado work | 9d | 2026-12-20 | 2026-12-28 | 592, 605, 606 |  | Zenith | 8660054 |
| 609 | 36900.37000.37100.37900.39000.40900.41600.84600.1316400 | Toilet flooring work | 9d | 2026-12-29 | 2027-01-06 | 593, 608 |  | Zenith | 8660064 |
| 610 | 36900.37000.37100.37900.39000.40900.41600.84600.1316500 | False Cieling panel fixing | 7d | 2027-01-07 | 2027-01-13 | 594, 609 |  | Zenith | 8660074 |
| 611 | 36900.37000.37100.37900.39000.40900.41600.84600.1316600 | Living dinning flooring | 7d | 2027-01-07 | 2027-01-13 | 595, 609 |  | Zenith | 8660084 |
| 612 | 36900.37000.37100.37900.39000.40900.41600.84600.1316700 | Putty primer coat | 8d | 2027-01-14 | 2027-01-21 | 596, 611 |  | Zenith | 8660094 |
| 613 | 36900.37000.37100.37900.39000.40900.41600.84600.1316800 | Aluminium door-window fixing | 12d | 2027-02-04 | 2027-02-15 | 597, 607, 611 |  | Zenith | 8660104 |
| 614 | 36900.37000.37100.37900.39000.40900.41600.84600.1316900 | Door shutter fixing (Pre Hung) | 8d | 2027-01-22 | 2027-01-29 | 598, 612 |  | Zenith | 8660114 |
| 615 | 36900.37000.37100.37900.39000.40900.41600.84600.1317000 | Electrical wiring work | 10d | 2027-01-30 | 2027-02-09 | 599, 614 |  | Zenith | 8660124 |
| 616 | 36900.37000.37100.37900.39000.40900.41600.84600.1317100 | Painting 1st coat | 12d | 2027-03-06 | 2027-03-17 | 600, 615 |  | Zenith | 8660134 |
| 617 | 36900.37000.37100.37900.39000.40900.41600.84700 | **22nd floor roof** | 113d | 2026-10-23 | 2027-03-29 |  | start no earlier than 2026-10-23 | Zenith | 8648654 |
| 618 | 36900.37000.37100.37900.39000.40900.41600.84700.1317200 | Block Work | 11d | 2026-10-23 | 2026-12-17 | 263, 602 |  | Zenith | 8660144 |
| 619 | 36900.37000.37100.37900.39000.40900.41600.84700.1317300 | Fire sprinkler pipe fixing | 4d | 2026-12-18 | 2026-12-21 | 603, 618 |  | Zenith | 8660154 |
| 620 | 36900.37000.37100.37900.39000.40900.41600.84700.1317400 | Internal Plumbing Works | 4d | 2026-12-18 | 2026-12-21 | 604, 618 |  | Zenith | 8660164 |
| 621 | 36900.37000.37100.37900.39000.40900.41600.84700.1317500 | Waterproofing | 4d | 2026-12-22 | 2026-12-25 | 605, 620 |  | Zenith | 8660174 |
| 622 | 36900.37000.37100.37900.39000.40900.41600.84700.1317600 | Internal Plaster | 10d | 2026-12-21 | 2026-12-30 | 606FS-4d, 620FS-3d, 621FF+5d |  | Zenith | 8660184 |
| 623 | 36900.37000.37100.37900.39000.40900.41600.84700.1317700 | IPS flooring work | 10d | 2026-12-31 | 2027-01-09 | 607, 622 |  | Zenith | 8660194 |
| 624 | 36900.37000.37100.37900.39000.40900.41600.84700.1317800 | Toilet dado work | 9d | 2026-12-31 | 2027-01-08 | 608, 621, 622 |  | Zenith | 8660204 |
| 625 | 36900.37000.37100.37900.39000.40900.41600.84700.1317900 | Toilet flooring work | 9d | 2027-01-09 | 2027-01-17 | 609, 624 |  | Zenith | 8660214 |
| 626 | 36900.37000.37100.37900.39000.40900.41600.84700.1318000 | False Cieling panel fixing | 7d | 2027-01-18 | 2027-01-24 | 610, 625 |  | Zenith | 8660224 |
| 627 | 36900.37000.37100.37900.39000.40900.41600.84700.1318100 | Living dinning flooring | 7d | 2027-01-18 | 2027-01-24 | 611, 625 |  | Zenith | 8660234 |
| 628 | 36900.37000.37100.37900.39000.40900.41600.84700.1318200 | Putty primer coat | 8d | 2027-01-25 | 2027-02-01 | 612, 627 |  | Zenith | 8660244 |
| 629 | 36900.37000.37100.37900.39000.40900.41600.84700.1318300 | Aluminium door-window fixing | 12d | 2027-02-16 | 2027-02-27 | 613, 623, 627 |  | Zenith | 8660254 |
| 630 | 36900.37000.37100.37900.39000.40900.41600.84700.1318400 | Door shutter fixing (Pre Hung) | 8d | 2027-02-02 | 2027-02-09 | 614, 628 |  | Zenith | 8660264 |
| 631 | 36900.37000.37100.37900.39000.40900.41600.84700.1318500 | Electrical wiring work | 10d | 2027-02-10 | 2027-02-19 | 615, 630 |  | Zenith | 8660274 |
| 632 | 36900.37000.37100.37900.39000.40900.41600.84700.1318600 | Painting 1st coat | 12d | 2027-03-18 | 2027-03-29 | 616, 631 |  | Zenith | 8660284 |

| ID | WBS | Task | Duration | Start | Finish | Predecessors | Constraint | Calendar | Unique_Task_ID |
| --- | --- | --- | --- | --- | --- | --- | --- | --- | --- |
| 633 | 36900.37000.37100.37900.39000.40900.41600.84800 | **23rd floor roof** | 114d | 2026-12-18 | 2027-04-10 |  | start no earlier than 2026-12-18 | Zenith | 8648664 |
| 634 | 36900.37000.37100.37900.39000.40900.41600.84800.1318700 | Block Work | 11d | 2026-12-18 | 2026-12-28 | 264, 618 |  | Zenith | 8660294 |
| 635 | 36900.37000.37100.37900.39000.40900.41600.84800.1318800 | Fire sprinkler pipe fixing | 5d | 2026-12-29 | 2027-01-02 | 619, 634 |  | Zenith | 8660304 |
| 636 | 36900.37000.37100.37900.39000.40900.41600.84800.1318900 | Internal Plumbing Works | 5d | 2026-12-29 | 2027-01-02 | 620, 634 |  | Zenith | 8660314 |
| 637 | 36900.37000.37100.37900.39000.40900.41600.84800.1319000 | Waterproofing | 5d | 2027-01-03 | 2027-01-07 | 621, 636 |  | Zenith | 8660324 |
| 638 | 36900.37000.37100.37900.39000.40900.41600.84800.1319100 | Internal Plaster | 10d | 2027-01-03 | 2027-01-12 | 622, 636, 637FF+5d |  | Zenith | 8660334 |
| 639 | 36900.37000.37100.37900.39000.40900.41600.84800.1319200 | IPS flooring work | 10d | 2027-01-13 | 2027-01-22 | 623, 638 |  | Zenith | 8660344 |
| 640 | 36900.37000.37100.37900.39000.40900.41600.84800.1319300 | Toilet dado work | 9d | 2027-01-13 | 2027-01-21 | 624, 637, 638 |  | Zenith | 8660354 |
| 641 | 36900.37000.37100.37900.39000.40900.41600.84800.1319400 | Toilet flooring work | 9d | 2027-01-22 | 2027-01-30 | 625, 640 |  | Zenith | 8660364 |
| 642 | 36900.37000.37100.37900.39000.40900.41600.84800.1319500 | False Cieling panel fixing | 7d | 2027-01-31 | 2027-02-06 | 626, 641 |  | Zenith | 8660374 |
| 643 | 36900.37000.37100.37900.39000.40900.41600.84800.1319600 | Living dinning flooring | 7d | 2027-01-31 | 2027-02-06 | 627, 641 |  | Zenith | 8660384 |
| 644 | 36900.37000.37100.37900.39000.40900.41600.84800.1319700 | Putty primer coat | 8d | 2027-02-07 | 2027-02-14 | 628, 643 |  | Zenith | 8660394 |
| 645 | 36900.37000.37100.37900.39000.40900.41600.84800.1319800 | Aluminium door-window fixing | 12d | 2027-02-28 | 2027-03-11 | 629, 639, 643 |  | Zenith | 8660404 |
| 646 | 36900.37000.37100.37900.39000.40900.41600.84800.1319900 | Door shutter fixing (Pre Hung) | 8d | 2027-02-15 | 2027-02-22 | 630, 644 |  | Zenith | 8660414 |
| 647 | 36900.37000.37100.37900.39000.40900.41600.84800.1320000 | Electrical wiring work | 10d | 2027-02-23 | 2027-03-04 | 631, 646 |  | Zenith | 8660424 |
| 648 | 36900.37000.37100.37900.39000.40900.41600.84800.1320100 | Painting 1st coat | 12d | 2027-03-30 | 2027-04-10 | 632, 647 |  | Zenith | 8660434 |
| 649 | 36900.37000.37100.37900.39000.40900.41600.84900 | **24th floor roof** | 115d | 2026-12-29 | 2027-04-22 |  | start no earlier than 2026-12-29 | Zenith | 8648674 |
| 650 | 36900.37000.37100.37900.39000.40900.41600.84900.1320200 | Block Work | 11d | 2026-12-29 | 2027-01-08 | 265, 634 |  | Zenith | 8660444 |
| 651 | 36900.37000.37100.37900.39000.40900.41600.84900.1320300 | Fire sprinkler pipe fixing | 5d | 2027-01-09 | 2027-01-13 | 635, 650 |  | Zenith | 8660454 |
| 652 | 36900.37000.37100.37900.39000.40900.41600.84900.1320400 | Internal Plumbing Works | 5d | 2027-01-09 | 2027-01-13 | 636, 650 |  | Zenith | 8660464 |
| 653 | 36900.37000.37100.37900.39000.40900.41600.84900.1320500 | Waterproofing | 5d | 2027-01-14 | 2027-01-18 | 637, 652 |  | Zenith | 8660474 |
| 654 | 36900.37000.37100.37900.39000.40900.41600.84900.1320600 | Internal Plaster | 10d | 2027-01-14 | 2027-01-23 | 638, 652, 653FF+5d |  | Zenith | 8660484 |
| 655 | 36900.37000.37100.37900.39000.40900.41600.84900.1320700 | IPS flooring work | 10d | 2027-01-24 | 2027-02-02 | 639, 654 |  | Zenith | 8660494 |
| 656 | 36900.37000.37100.37900.39000.40900.41600.84900.1320800 | Toilet dado work | 9d | 2027-01-24 | 2027-02-01 | 640, 653, 654 |  | Zenith | 8660504 |
| 657 | 36900.37000.37100.37900.39000.40900.41600.84900.1320900 | Toilet flooring work | 9d | 2027-02-02 | 2027-02-10 | 641, 656 |  | Zenith | 8660514 |
| 658 | 36900.37000.37100.37900.39000.40900.41600.84900.1321000 | False Cieling panel fixing | 7d | 2027-02-11 | 2027-02-17 | 642, 657 |  | Zenith | 8660524 |
| 659 | 36900.37000.37100.37900.39000.40900.41600.84900.1321100 | Living dinning flooring | 7d | 2027-02-11 | 2027-02-17 | 643, 657 |  | Zenith | 8660534 |
| 660 | 36900.37000.37100.37900.39000.40900.41600.84900.1321200 | Putty primer coat | 8d | 2027-02-18 | 2027-02-25 | 644, 659 |  | Zenith | 8660544 |
| 661 | 36900.37000.37100.37900.39000.40900.41600.84900.1321300 | Aluminium door-window fixing | 12d | 2027-03-12 | 2027-03-23 | 645, 655, 659 |  | Zenith | 8660554 |
| 662 | 36900.37000.37100.37900.39000.40900.41600.84900.1321400 | Door shutter fixing (Pre Hung) | 8d | 2027-02-26 | 2027-03-05 | 646, 660 |  | Zenith | 8660564 |
| 663 | 36900.37000.37100.37900.39000.40900.41600.84900.1321500 | Electrical wiring work | 10d | 2027-03-06 | 2027-03-15 | 647, 662 |  | Zenith | 8660574 |
| 664 | 36900.37000.37100.37900.39000.40900.41600.84900.1321600 | Painting 1st coat | 12d | 2027-04-11 | 2027-04-22 | 648, 663 |  | Zenith | 8660584 |

| ID | WBS | Task | Duration | Start | Finish | Predecessors | Constraint | Calendar | Unique_Task_ID |
| --- | --- | --- | --- | --- | --- | --- | --- | --- | --- |
| 665 | 36900.37000.37100.37900.39000.40900.41600.85000 | **25th floor roof** | 116d | 2027-01-09 | 2027-05-04 |  | start no earlier than 2027-01-09 | Zenith | 8648684 |
| 666 | 36900.37000.37100.37900.39000.40900.41600.85000.1321700 | Block Work | 11d | 2027-01-09 | 2027-01-19 | 266, 650 |  | Zenith | 8660594 |
| 667 | 36900.37000.37100.37900.39000.40900.41600.85000.1321800 | Fire sprinkler pipe fixing | 5d | 2027-01-20 | 2027-01-24 | 651, 666 |  | Zenith | 8660604 |
| 668 | 36900.37000.37100.37900.39000.40900.41600.85000.1321900 | Internal Plumbing Works | 5d | 2027-01-20 | 2027-01-24 | 652, 666 |  | Zenith | 8660614 |
| 669 | 36900.37000.37100.37900.39000.40900.41600.85000.1322000 | Waterproofing | 5d | 2027-01-25 | 2027-01-29 | 653, 668 |  | Zenith | 8660624 |
| 670 | 36900.37000.37100.37900.39000.40900.41600.85000.1322100 | Internal Plaster | 10d | 2027-01-25 | 2027-02-03 | 654, 668, 669FF+5d |  | Zenith | 8660634 |
| 671 | 36900.37000.37100.37900.39000.40900.41600.85000.1322200 | IPS flooring work | 10d | 2027-02-04 | 2027-02-13 | 655, 670 |  | Zenith | 8660644 |
| 672 | 36900.37000.37100.37900.39000.40900.41600.85000.1322300 | Toilet dado work | 9d | 2027-02-04 | 2027-02-12 | 656, 669, 670 |  | Zenith | 8660654 |
| 673 | 36900.37000.37100.37900.39000.40900.41600.85000.1322400 | Toilet flooring work | 9d | 2027-02-13 | 2027-02-21 | 657, 672 |  | Zenith | 8660664 |
| 674 | 36900.37000.37100.37900.39000.40900.41600.85000.1322500 | False Cieling panel fixing | 7d | 2027-02-22 | 2027-02-28 | 658, 673 |  | Zenith | 8660674 |
| 675 | 36900.37000.37100.37900.39000.40900.41600.85000.1322600 | Living dinning flooring | 7d | 2027-02-22 | 2027-02-28 | 659, 673 |  | Zenith | 8660684 |
| 676 | 36900.37000.37100.37900.39000.40900.41600.85000.1322700 | Putty primer coat | 8d | 2027-03-01 | 2027-03-08 | 660, 675 |  | Zenith | 8660694 |
| 677 | 36900.37000.37100.37900.39000.40900.41600.85000.1322800 | Aluminium door-window fixing | 12d | 2027-03-24 | 2027-04-04 | 661, 671, 675 |  | Zenith | 8660704 |
| 678 | 36900.37000.37100.37900.39000.40900.41600.85000.1322900 | Door shutter fixing (Pre Hung) | 8d | 2027-03-09 | 2027-03-16 | 662, 676 |  | Zenith | 8660714 |
| 679 | 36900.37000.37100.37900.39000.40900.41600.85000.1323000 | Electrical wiring work | 10d | 2027-03-17 | 2027-03-26 | 663, 678 |  | Zenith | 8660724 |
| 680 | 36900.37000.37100.37900.39000.40900.41600.85000.1323100 | Painting 1st coat | 12d | 2027-04-23 | 2027-05-04 | 664, 679 |  | Zenith | 8660734 |
| 681 | 36900.37000.37100.37900.39000.40900.41600.85100 | **26th floor roof** | 117d | 2027-01-20 | 2027-05-16 |  | start no earlier than 2027-01-20 | Zenith | 8648694 |
| 682 | 36900.37000.37100.37900.39000.40900.41600.85100.1323200 | Block Work | 11d | 2027-01-20 | 2027-01-30 | 267, 666 |  | Zenith | 8660744 |
| 683 | 36900.37000.37100.37900.39000.40900.41600.85100.1323300 | Fire sprinkler pipe fixing | 7d | 2027-01-31 | 2027-02-06 | 667, 682 |  | Zenith | 8660754 |
| 684 | 36900.37000.37100.37900.39000.40900.41600.85100.1323400 | Internal Plumbing Works | 7d | 2027-01-31 | 2027-02-06 | 668, 682 |  | Zenith | 8660764 |
| 685 | 36900.37000.37100.37900.39000.40900.41600.85100.1323500 | Waterproofing | 7d | 2027-02-07 | 2027-02-13 | 669, 684 |  | Zenith | 8660774 |
| 686 | 36900.37000.37100.37900.39000.40900.41600.85100.1323600 | Internal Plaster | 10d | 2027-02-09 | 2027-02-18 | 670, 684, 685FF+5d |  | Zenith | 8660784 |
| 687 | 36900.37000.37100.37900.39000.40900.41600.85100.1323700 | IPS flooring work | 10d | 2027-02-19 | 2027-02-28 | 671, 686 |  | Zenith | 8660794 |
| 688 | 36900.37000.37100.37900.39000.40900.41600.85100.1323800 | Toilet dado work | 9d | 2027-02-19 | 2027-02-27 | 672, 685, 686 |  | Zenith | 8660804 |
| 689 | 36900.37000.37100.37900.39000.40900.41600.85100.1323900 | Toilet flooring work | 9d | 2027-02-28 | 2027-03-08 | 673, 688 |  | Zenith | 8660814 |
| 690 | 36900.37000.37100.37900.39000.40900.41600.85100.1324000 | False Cieling panel fixing | 7d | 2027-03-09 | 2027-03-15 | 674, 689 |  | Zenith | 8660824 |
| 691 | 36900.37000.37100.37900.39000.40900.41600.85100.1324100 | Living dinning flooring | 7d | 2027-03-09 | 2027-03-15 | 675, 689 |  | Zenith | 8660834 |
| 692 | 36900.37000.37100.37900.39000.40900.41600.85100.1324200 | Putty primer coat | 8d | 2027-03-16 | 2027-03-23 | 676, 691 |  | Zenith | 8660844 |
| 693 | 36900.37000.37100.37900.39000.40900.41600.85100.1324300 | Aluminium door-window fixing | 12d | 2027-04-05 | 2027-04-16 | 677, 687, 691 |  | Zenith | 8660854 |
| 694 | 36900.37000.37100.37900.39000.40900.41600.85100.1324400 | Door shutter fixing (Pre Hung) | 8d | 2027-03-24 | 2027-03-31 | 678, 692 |  | Zenith | 8660864 |
| 695 | 36900.37000.37100.37900.39000.40900.41600.85100.1324500 | Electrical wiring work | 10d | 2027-04-01 | 2027-04-10 | 679, 694 |  | Zenith | 8660874 |
| 696 | 36900.37000.37100.37900.39000.40900.41600.85100.1324600 | Painting 1st coat | 12d | 2027-05-05 | 2027-05-16 | 680, 695 |  | Zenith | 8660884 |

| ID | WBS | Task | Duration | Start | Finish | Predecessors | Constraint | Calendar | Unique_Task_ID |
| --- | --- | --- | --- | --- | --- | --- | --- | --- | --- |
| 697 | 36900.37000.37100.37900.39000.40900.41600.85200 | **27th floor roof** | 118d | 2027-01-31 | 2027-05-28 |  | start no earlier than 2027-01-31 | Zenith | 8648704 |
| 698 | 36900.37000.37100.37900.39000.40900.41600.85200.1324700 | Block Work | 11d | 2027-01-31 | 2027-02-10 | 268, 682 |  | Zenith | 8660894 |
| 699 | 36900.37000.37100.37900.39000.40900.41600.85200.1324800 | Fire sprinkler pipe fixing | 7d | 2027-02-11 | 2027-02-17 | 683, 698 |  | Zenith | 8660904 |
| 700 | 36900.37000.37100.37900.39000.40900.41600.85200.1324900 | Internal Plumbing Works | 7d | 2027-02-11 | 2027-02-17 | 684, 698 |  | Zenith | 8660914 |
| 701 | 36900.37000.37100.37900.39000.40900.41600.85200.1325000 | Waterproofing | 7d | 2027-02-18 | 2027-02-24 | 685, 700 |  | Zenith | 8660924 |
| 702 | 36900.37000.37100.37900.39000.40900.41600.85200.1325100 | Internal Plaster | 10d | 2027-02-20 | 2027-03-01 | 686, 700, 701FF+5d |  | Zenith | 8660934 |
| 703 | 36900.37000.37100.37900.39000.40900.41600.85200.1325200 | IPS flooring work | 10d | 2027-03-02 | 2027-03-11 | 687, 702 |  | Zenith | 8660944 |
| 704 | 36900.37000.37100.37900.39000.40900.41600.85200.1325300 | Toilet dado work | 9d | 2027-03-02 | 2027-03-10 | 688, 701, 702 |  | Zenith | 8660954 |
| 705 | 36900.37000.37100.37900.39000.40900.41600.85200.1325400 | Toilet flooring work | 9d | 2027-03-11 | 2027-03-19 | 689, 704 |  | Zenith | 8660964 |
| 706 | 36900.37000.37100.37900.39000.40900.41600.85200.1325500 | False Cieling panel fixing | 7d | 2027-03-20 | 2027-03-26 | 690, 705 |  | Zenith | 8660974 |
| 707 | 36900.37000.37100.37900.39000.40900.41600.85200.1325600 | Living dinning flooring | 7d | 2027-03-20 | 2027-03-26 | 691, 705 |  | Zenith | 8660984 |
| 708 | 36900.37000.37100.37900.39000.40900.41600.85200.1325700 | Putty primer coat | 8d | 2027-03-27 | 2027-04-03 | 692, 707 |  | Zenith | 8660994 |
| 709 | 36900.37000.37100.37900.39000.40900.41600.85200.1325800 | Aluminium door-window fixing | 12d | 2027-04-17 | 2027-04-28 | 693, 703, 707 |  | Zenith | 8661004 |
| 710 | 36900.37000.37100.37900.39000.40900.41600.85200.1325900 | Door shutter fixing (Pre Hung) | 8d | 2027-04-04 | 2027-04-11 | 694, 708 |  | Zenith | 8661014 |
| 711 | 36900.37000.37100.37900.39000.40900.41600.85200.1326000 | Electrical wiring work | 10d | 2027-04-12 | 2027-04-21 | 695, 710 |  | Zenith | 8661024 |
| 712 | 36900.37000.37100.37900.39000.40900.41600.85200.1326100 | Painting 1st coat | 12d | 2027-05-17 | 2027-05-28 | 696, 711 |  | Zenith | 8661034 |
| 713 | 36900.37000.37100.37900.39000.40900.41600.85300 | **28th floor roof** | 119d | 2027-02-11 | 2027-06-09 |  | start no earlier than 2027-02-11 | Zenith | 8648714 |
| 714 | 36900.37000.37100.37900.39000.40900.41600.85300.1326200 | Block Work | 11d | 2027-02-11 | 2027-02-21 | 269, 698 |  | Zenith | 8661044 |
| 715 | 36900.37000.37100.37900.39000.40900.41600.85300.1326300 | Fire sprinkler pipe fixing | 7d | 2027-02-22 | 2027-02-28 | 699, 714 |  | Zenith | 8661054 |
| 716 | 36900.37000.37100.37900.39000.40900.41600.85300.1326400 | Internal Plumbing Works | 7d | 2027-02-22 | 2027-02-28 | 700, 714 |  | Zenith | 8661064 |
| 717 | 36900.37000.37100.37900.39000.40900.41600.85300.1326500 | Waterproofing | 7d | 2027-03-01 | 2027-03-07 | 701, 716 |  | Zenith | 8661074 |
| 718 | 36900.37000.37100.37900.39000.40900.41600.85300.1326600 | Internal Plaster | 10d | 2027-03-03 | 2027-03-12 | 702, 716, 717FF+5d |  | Zenith | 8661084 |
| 719 | 36900.37000.37100.37900.39000.40900.41600.85300.1326700 | IPS flooring work | 10d | 2027-03-13 | 2027-03-22 | 703, 718 |  | Zenith | 8661094 |
| 720 | 36900.37000.37100.37900.39000.40900.41600.85300.1326800 | Toilet dado work | 9d | 2027-03-13 | 2027-03-21 | 704, 717, 718 |  | Zenith | 8661104 |
| 721 | 36900.37000.37100.37900.39000.40900.41600.85300.1326900 | Toilet flooring work | 9d | 2027-03-22 | 2027-03-30 | 705, 720 |  | Zenith | 8661114 |
| 722 | 36900.37000.37100.37900.39000.40900.41600.85300.1327000 | False Cieling panel fixing | 7d | 2027-03-31 | 2027-04-06 | 706, 721 |  | Zenith | 8661124 |
| 723 | 36900.37000.37100.37900.39000.40900.41600.85300.1327100 | Living dinning flooring | 7d | 2027-03-31 | 2027-04-06 | 707, 721 |  | Zenith | 8661134 |
| 724 | 36900.37000.37100.37900.39000.40900.41600.85300.1327200 | Putty primer coat | 8d | 2027-04-07 | 2027-04-14 | 708, 723 |  | Zenith | 8661144 |
| 725 | 36900.37000.37100.37900.39000.40900.41600.85300.1327300 | Aluminium door-window fixing | 12d | 2027-04-29 | 2027-05-10 | 709, 719, 723 |  | Zenith | 8661154 |
| 726 | 36900.37000.37100.37900.39000.40900.41600.85300.1327400 | Door shutter fixing (Pre Hung) | 8d | 2027-04-15 | 2027-04-22 | 710, 724 |  | Zenith | 8661164 |
| 727 | 36900.37000.37100.37900.39000.40900.41600.85300.1327500 | Electrical wiring work | 10d | 2027-04-23 | 2027-05-02 | 711, 726 |  | Zenith | 8661174 |
| 728 | 36900.37000.37100.37900.39000.40900.41600.85300.1327600 | Painting 1st coat | 12d | 2027-05-29 | 2027-06-09 | 712, 727 |  | Zenith | 8661184 |

| ID | WBS | Task | Duration | Start | Finish | Predecessors | Constraint | Calendar | Unique_Task_ID |
| --- | --- | --- | --- | --- | --- | --- | --- | --- | --- |
| 729 | 36900.37000.37100.37900.39000.40900.41600.85400 | **29th floor roof** | 120d | 2027-02-22 | 2027-06-21 |  | start no earlier than 2027-02-22 | Zenith | 8648724 |
| 730 | 36900.37000.37100.37900.39000.40900.41600.85400.1327700 | Block Work | 11d | 2027-02-22 | 2027-03-04 | 270, 714 |  | Zenith | 8661194 |
| 731 | 36900.37000.37100.37900.39000.40900.41600.85400.1327800 | Fire sprinkler pipe fixing | 7d | 2027-03-05 | 2027-03-11 | 715, 730 |  | Zenith | 8661204 |
| 732 | 36900.37000.37100.37900.39000.40900.41600.85400.1327900 | Internal Plumbing Works | 7d | 2027-03-05 | 2027-03-11 | 716, 730 |  | Zenith | 8661214 |
| 733 | 36900.37000.37100.37900.39000.40900.41600.85400.1328000 | Waterproofing | 7d | 2027-03-12 | 2027-03-18 | 717, 732 |  | Zenith | 8661224 |
| 734 | 36900.37000.37100.37900.39000.40900.41600.85400.1328100 | Internal Plaster | 10d | 2027-03-14 | 2027-03-23 | 718, 732, 733FF+5d |  | Zenith | 8661234 |
| 735 | 36900.37000.37100.37900.39000.40900.41600.85400.1328200 | IPS flooring work | 10d | 2027-03-24 | 2027-04-02 | 719, 734 |  | Zenith | 8661244 |
| 736 | 36900.37000.37100.37900.39000.40900.41600.85400.1328300 | Toilet dado work | 9d | 2027-03-24 | 2027-04-01 | 720, 733, 734 |  | Zenith | 8661254 |
| 737 | 36900.37000.37100.37900.39000.40900.41600.85400.1328400 | Toilet flooring work | 9d | 2027-04-02 | 2027-04-10 | 721, 736 |  | Zenith | 8661264 |
| 738 | 36900.37000.37100.37900.39000.40900.41600.85400.1328500 | False Cieling panel fixing | 7d | 2027-04-11 | 2027-04-17 | 722, 737 |  | Zenith | 8661274 |
| 739 | 36900.37000.37100.37900.39000.40900.41600.85400.1328600 | Living dinning flooring | 7d | 2027-04-11 | 2027-04-17 | 723, 737 |  | Zenith | 8661284 |
| 740 | 36900.37000.37100.37900.39000.40900.41600.85400.1328700 | Putty primer coat | 8d | 2027-04-18 | 2027-04-25 | 724, 739 |  | Zenith | 8661294 |
| 741 | 36900.37000.37100.37900.39000.40900.41600.85400.1328800 | Aluminium door-window fixing | 12d | 2027-05-11 | 2027-05-22 | 725, 735, 739 |  | Zenith | 8661304 |
| 742 | 36900.37000.37100.37900.39000.40900.41600.85400.1328900 | Door shutter fixing (Pre Hung) | 8d | 2027-04-26 | 2027-05-03 | 726, 740 |  | Zenith | 8661314 |
| 743 | 36900.37000.37100.37900.39000.40900.41600.85400.1329000 | Electrical wiring work | 10d | 2027-05-04 | 2027-05-13 | 727, 742 |  | Zenith | 8661324 |
| 744 | 36900.37000.37100.37900.39000.40900.41600.85400.1329100 | Painting 1st coat | 12d | 2027-06-10 | 2027-06-21 | 728, 743 |  | Zenith | 8661334 |
| 745 | 36900.37000.37100.37900.39000.40900.41600.85500 | **30th floor roof** | 121d | 2027-03-05 | 2027-07-03 |  | start no earlier than 2027-03-05 | Zenith | 8648734 |
| 746 | 36900.37000.37100.37900.39000.40900.41600.85500.1329200 | Block Work | 11d | 2027-03-05 | 2027-03-15 | 271, 730 |  | Zenith | 8661344 |
| 747 | 36900.37000.37100.37900.39000.40900.41600.85500.1329300 | Fire sprinkler pipe fixing | 7d | 2027-03-16 | 2027-03-22 | 731, 746 |  | Zenith | 8661354 |
| 748 | 36900.37000.37100.37900.39000.40900.41600.85500.1329400 | Internal Plumbing Works | 7d | 2027-03-16 | 2027-03-22 | 732, 746 |  | Zenith | 8661364 |
| 749 | 36900.37000.37100.37900.39000.40900.41600.85500.1329500 | Waterproofing | 7d | 2027-03-23 | 2027-03-29 | 733, 748 |  | Zenith | 8661374 |
| 750 | 36900.37000.37100.37900.39000.40900.41600.85500.1329600 | Internal Plaster | 10d | 2027-03-25 | 2027-04-03 | 734, 748, 749FF+5d |  | Zenith | 8661384 |
| 751 | 36900.37000.37100.37900.39000.40900.41600.85500.1329700 | IPS flooring work | 10d | 2027-04-04 | 2027-04-13 | 735, 750 |  | Zenith | 8661394 |
| 752 | 36900.37000.37100.37900.39000.40900.41600.85500.1329800 | Toilet dado work | 9d | 2027-04-09 | 2027-04-17 | 736FS+0.25d, 749FS+0.25d, 750FS+5d |  | Zenith | 8661404 |
| 753 | 36900.37000.37100.37900.39000.40900.41600.85500.1329900 | Toilet flooring work | 9d | 2027-04-18 | 2027-04-26 | 737, 752 |  | Zenith | 8661414 |
| 754 | 36900.37000.37100.37900.39000.40900.41600.85500.1330000 | False Cieling panel fixing | 7d | 2027-04-27 | 2027-05-03 | 738, 753 |  | Zenith | 8661424 |
| 755 | 36900.37000.37100.37900.39000.40900.41600.85500.1330100 | Living dinning flooring | 7d | 2027-04-27 | 2027-05-03 | 739, 753 |  | Zenith | 8661434 |
| 756 | 36900.37000.37100.37900.39000.40900.41600.85500.1330200 | Putty primer coat | 8d | 2027-05-04 | 2027-05-11 | 740, 755 |  | Zenith | 8661444 |
| 757 | 36900.37000.37100.37900.39000.40900.41600.85500.1330300 | Aluminium door-window fixing | 12d | 2027-05-23 | 2027-06-03 | 741, 751, 755 |  | Zenith | 8661454 |
| 758 | 36900.37000.37100.37900.39000.40900.41600.85500.1330400 | Door shutter fixing (Pre Hung) | 8d | 2027-05-12 | 2027-05-19 | 742, 756 |  | Zenith | 8661464 |
| 759 | 36900.37000.37100.37900.39000.40900.41600.85500.1330500 | Electrical wiring work | 10d | 2027-05-20 | 2027-05-29 | 743, 758 |  | Zenith | 8661474 |
| 760 | 36900.37000.37100.37900.39000.40900.41600.85500.1330600 | Painting 1st coat | 12d | 2027-06-22 | 2027-07-03 | 744, 759 |  | Zenith | 8661484 |

| ID | WBS | Task | Duration | Start | Finish | Predecessors | Constraint | Calendar | Unique_Task_ID |
| --- | --- | --- | --- | --- | --- | --- | --- | --- | --- |
| 761 | 36900.37000.37100.37900.39000.40900.41600.85600 | **31st floor roof** | 122d | 2027-03-16 | 2027-07-15 |  | start no earlier than 2027-03-16 | Zenith | 8648744 |
| 762 | 36900.37000.37100.37900.39000.40900.41600.85600.1330700 | Block Work | 11d | 2027-03-16 | 2027-03-26 | 272, 746 |  | Zenith | 8661494 |
| 763 | 36900.37000.37100.37900.39000.40900.41600.85600.1330800 | Fire sprinkler pipe fixing | 7d | 2027-03-27 | 2027-04-02 | 747, 762 |  | Zenith | 8661504 |
| 764 | 36900.37000.37100.37900.39000.40900.41600.85600.1330900 | Internal Plumbing Works | 7d | 2027-03-27 | 2027-04-02 | 748, 762 |  | Zenith | 8661514 |
| 765 | 36900.37000.37100.37900.39000.40900.41600.85600.1331000 | Waterproofing | 7d | 2027-04-03 | 2027-04-09 | 749, 764 |  | Zenith | 8661524 |
| 766 | 36900.37000.37100.37900.39000.40900.41600.85600.1331100 | Internal Plaster | 10d | 2027-04-05 | 2027-04-14 | 750, 764, 765FF+5d |  | Zenith | 8661534 |
| 767 | 36900.37000.37100.37900.39000.40900.41600.85600.1331200 | IPS flooring work | 10d | 2027-04-25 | 2027-05-04 | 751FS+0.25d, 766FS+10d |  | Zenith | 8661544 |
| 768 | 36900.37000.37100.37900.39000.40900.41600.85600.1331300 | Toilet dado work | 9d | 2027-04-20 | 2027-04-28 | 752FS+0.25d, 765FS+0.25d, 766FS+5d |  | Zenith | 8661554 |
| 769 | 36900.37000.37100.37900.39000.40900.41600.85600.1331400 | Toilet flooring work | 9d | 2027-04-29 | 2027-05-07 | 753, 768 |  | Zenith | 8661564 |
| 770 | 36900.37000.37100.37900.39000.40900.41600.85600.1331500 | False Cieling panel fixing | 7d | 2027-05-08 | 2027-05-14 | 754, 769 |  | Zenith | 8661574 |
| 771 | 36900.37000.37100.37900.39000.40900.41600.85600.1331600 | Living dinning flooring | 7d | 2027-05-08 | 2027-05-14 | 755, 769 |  | Zenith | 8661584 |
| 772 | 36900.37000.37100.37900.39000.40900.41600.85600.1331700 | Putty primer coat | 8d | 2027-05-15 | 2027-05-22 | 756, 771 |  | Zenith | 8661594 |
| 773 | 36900.37000.37100.37900.39000.40900.41600.85600.1331800 | Aluminium door-window fixing | 12d | 2027-06-04 | 2027-06-15 | 757, 767, 771 |  | Zenith | 8661604 |
| 774 | 36900.37000.37100.37900.39000.40900.41600.85600.1331900 | Door shutter fixing (Pre Hung) | 8d | 2027-05-23 | 2027-05-30 | 758, 772 |  | Zenith | 8661614 |
| 775 | 36900.37000.37100.37900.39000.40900.41600.85600.1332000 | Electrical wiring work | 10d | 2027-05-31 | 2027-06-09 | 759, 774 |  | Zenith | 8661624 |
| 776 | 36900.37000.37100.37900.39000.40900.41600.85600.1332100 | Painting 1st coat | 12d | 2027-07-04 | 2027-07-15 | 760, 775 |  | Zenith | 8661634 |
| 777 | 36900.37000.37100.37900.39000.40900.41600.85700 | **32nd floor roof** | 123d | 2027-03-27 | 2027-07-27 |  | start no earlier than 2027-03-27 | Zenith | 8648754 |
| 778 | 36900.37000.37100.37900.39000.40900.41600.85700.1332200 | Block Work | 11d | 2027-03-27 | 2027-04-06 | 273, 762 |  | Zenith | 8661644 |
| 779 | 36900.37000.37100.37900.39000.40900.41600.85700.1332300 | Fire sprinkler pipe fixing | 7d | 2027-04-07 | 2027-04-13 | 763, 778 |  | Zenith | 8661654 |
| 780 | 36900.37000.37100.37900.39000.40900.41600.85700.1332400 | Internal Plumbing Works | 7d | 2027-04-07 | 2027-04-13 | 764, 778 |  | Zenith | 8661664 |
| 781 | 36900.37000.37100.37900.39000.40900.41600.85700.1332500 | Waterproofing | 7d | 2027-04-14 | 2027-04-20 | 765, 780 |  | Zenith | 8661674 |
| 782 | 36900.37000.37100.37900.39000.40900.41600.85700.1332600 | Internal Plaster | 10d | 2027-04-16 | 2027-04-25 | 766, 780, 781FF+5d |  | Zenith | 8661684 |
| 783 | 36900.37000.37100.37900.39000.40900.41600.85700.1332700 | IPS flooring work | 10d | 2027-05-06 | 2027-05-15 | 767FS+0.25d, 782FS+10d |  | Zenith | 8661694 |
| 784 | 36900.37000.37100.37900.39000.40900.41600.85700.1332800 | Toilet dado work | 9d | 2027-05-01 | 2027-05-09 | 768FS+0.25d, 781FS+0.25d, 782FS+5d |  | Zenith | 8661704 |
| 785 | 36900.37000.37100.37900.39000.40900.41600.85700.1332900 | Toilet flooring work | 9d | 2027-05-10 | 2027-05-18 | 769, 784 |  | Zenith | 8661714 |
| 786 | 36900.37000.37100.37900.39000.40900.41600.85700.1333000 | False Cieling panel fixing | 7d | 2027-05-19 | 2027-05-25 | 770, 785 |  | Zenith | 8661724 |
| 787 | 36900.37000.37100.37900.39000.40900.41600.85700.1333100 | Living dinning flooring | 7d | 2027-05-19 | 2027-05-25 | 771, 785 |  | Zenith | 8661734 |
| 788 | 36900.37000.37100.37900.39000.40900.41600.85700.1333200 | Putty primer coat | 8d | 2027-05-26 | 2027-06-02 | 772, 787 |  | Zenith | 8661744 |
| 789 | 36900.37000.37100.37900.39000.40900.41600.85700.1333300 | Aluminium door-window fixing | 12d | 2027-06-16 | 2027-06-27 | 773, 783, 787 |  | Zenith | 8661754 |
| 790 | 36900.37000.37100.37900.39000.40900.41600.85700.1333400 | Door shutter fixing (Pre Hung) | 8d | 2027-06-03 | 2027-06-10 | 774, 788 |  | Zenith | 8661764 |
| 791 | 36900.37000.37100.37900.39000.40900.41600.85700.1333500 | Electrical wiring work | 10d | 2027-06-11 | 2027-06-20 | 775, 790 |  | Zenith | 8661774 |
| 792 | 36900.37000.37100.37900.39000.40900.41600.85700.1333600 | Painting 1st coat | 12d | 2027-07-16 | 2027-07-27 | 776, 791 |  | Zenith | 8661784 |

| ID | WBS | Task | Duration | Start | Finish | Predecessors | Constraint | Calendar | Unique_Task_ID |
| --- | --- | --- | --- | --- | --- | --- | --- | --- | --- |
| 793 | 36900.37000.37100.37900.39000.40900.41600.85800 | **33rd floor roof** | 124d | 2027-04-07 | 2027-08-08 |  | start no earlier than 2027-04-07 | Zenith | 8648764 |
| 794 | 36900.37000.37100.37900.39000.40900.41600.85800.1333700 | Block Work | 11d | 2027-04-07 | 2027-04-17 | 274, 778 |  | Zenith | 8661794 |
| 795 | 36900.37000.37100.37900.39000.40900.41600.85800.1333800 | Fire sprinkler pipe fixing | 6d | 2027-04-18 | 2027-04-23 | 779, 794 |  | Zenith | 8661804 |
| 796 | 36900.37000.37100.37900.39000.40900.41600.85800.1333900 | Internal Plumbing Works | 8d | 2027-04-18 | 2027-04-25 | 780, 794 |  | Zenith | 8661814 |
| 797 | 36900.37000.37100.37900.39000.40900.41600.85800.1334000 | Waterproofing | 8d | 2027-04-26 | 2027-05-03 | 781, 796 |  | Zenith | 8661824 |
| 798 | 36900.37000.37100.37900.39000.40900.41600.85800.1334100 | Internal Plaster | 10d | 2027-04-29 | 2027-05-08 | 782, 796, 797FF+5d |  | Zenith | 8661834 |
| 799 | 36900.37000.37100.37900.39000.40900.41600.85800.1334200 | IPS flooring work | 10d | 2027-05-19 | 2027-05-28 | 783FS+0.25d, 798FS+10d |  | Zenith | 8661844 |
| 800 | 36900.37000.37100.37900.39000.40900.41600.85800.1334300 | Toilet dado work | 9d | 2027-05-14 | 2027-05-22 | 784FS+0.25d, 797FS+0.25d, 798FS+5d |  | Zenith | 8661854 |
| 801 | 36900.37000.37100.37900.39000.40900.41600.85800.1334400 | Toilet flooring work | 9d | 2027-05-23 | 2027-05-31 | 785, 800 |  | Zenith | 8661864 |
| 802 | 36900.37000.37100.37900.39000.40900.41600.85800.1334500 | False Cieling panel fixing | 8d | 2027-06-01 | 2027-06-08 | 786, 801 |  | Zenith | 8661874 |
| 803 | 36900.37000.37100.37900.39000.40900.41600.85800.1334600 | Living dinning flooring | 8d | 2027-06-01 | 2027-06-08 | 787, 801 |  | Zenith | 8661884 |
| 804 | 36900.37000.37100.37900.39000.40900.41600.85800.1334700 | Putty primer coat | 10d | 2027-06-09 | 2027-06-18 | 788, 803 |  | Zenith | 8661894 |
| 805 | 36900.37000.37100.37900.39000.40900.41600.85800.1334800 | Aluminium door-window fixing | 12d | 2027-06-28 | 2027-07-09 | 789, 799, 803 |  | Zenith | 8661904 |
| 806 | 36900.37000.37100.37900.39000.40900.41600.85800.1334900 | Door shutter fixing (Pre Hung) | 8d | 2027-06-19 | 2027-06-26 | 790, 804 |  | Zenith | 8661914 |
| 807 | 36900.37000.37100.37900.39000.40900.41600.85800.1335000 | Electrical wiring work | 10d | 2027-06-27 | 2027-07-06 | 791, 806 |  | Zenith | 8661924 |
| 808 | 36900.37000.37100.37900.39000.40900.41600.85800.1335100 | Painting 1st coat | 12d | 2027-07-28 | 2027-08-08 | 792, 807 |  | Zenith | 8661934 |
| 809 | 36900.37000.37100.37900.39000.40900.41600.85900 | **34th floor roof** | 125d | 2027-04-18 | 2027-08-20 |  | start no earlier than 2027-04-18 | Zenith | 8648774 |
| 810 | 36900.37000.37100.37900.39000.40900.41600.85900.1335200 | Block Work | 11d | 2027-04-18 | 2027-04-28 | 275, 794 |  | Zenith | 8661944 |
| 811 | 36900.37000.37100.37900.39000.40900.41600.85900.1335300 | Fire sprinkler pipe fixing | 6d | 2027-04-29 | 2027-05-04 | 795, 810 |  | Zenith | 8661954 |
| 812 | 36900.37000.37100.37900.39000.40900.41600.85900.1335400 | Internal Plumbing Works | 8d | 2027-04-29 | 2027-05-06 | 796, 810 |  | Zenith | 8661964 |
| 813 | 36900.37000.37100.37900.39000.40900.41600.85900.1335500 | Waterproofing | 8d | 2027-05-07 | 2027-05-14 | 797, 812 |  | Zenith | 8661974 |
| 814 | 36900.37000.37100.37900.39000.40900.41600.85900.1335600 | Internal Plaster | 10d | 2027-05-10 | 2027-05-19 | 798, 812, 813FF+5d |  | Zenith | 8661984 |
| 815 | 36900.37000.37100.37900.39000.40900.41600.85900.1335700 | IPS flooring work | 10d | 2027-05-30 | 2027-06-08 | 799FS+0.25d, 814FS+10d |  | Zenith | 8661994 |
| 816 | 36900.37000.37100.37900.39000.40900.41600.85900.1335800 | Toilet dado work | 9d | 2027-05-23 | 2027-06-01 | 800FS+0.25d, 813FS+0.25d, 814 |  | Zenith | 8662004 |
| 817 | 36900.37000.37100.37900.39000.40900.41600.85900.1335900 | Toilet flooring work | 9d | 2027-06-01 | 2027-06-10 | 801, 816 |  | Zenith | 8662014 |
| 818 | 36900.37000.37100.37900.39000.40900.41600.85900.1336000 | False Ceiling panel fixing | 8d | 2027-06-10 | 2027-06-18 | 802, 817 |  | Zenith | 8662024 |
| 819 | 36900.37000.37100.37900.39000.40900.41600.85900.1336100 | Living dinning flooring | 8d | 2027-06-10 | 2027-06-18 | 803, 817 |  | Zenith | 8662034 |
| 820 | 36900.37000.37100.37900.39000.40900.41600.85900.1336200 | Putty primer coat | 10d | 2027-06-19 | 2027-06-28 | 804, 819 |  | Zenith | 8662044 |
| 821 | 36900.37000.37100.37900.39000.40900.41600.85900.1336300 | Aluminium door-window fixing | 12d | 2027-07-10 | 2027-07-21 | 805, 815, 819 |  | Zenith | 8662054 |
| 822 | 36900.37000.37100.37900.39000.40900.41600.85900.1336400 | Door shutter fixing (Pre Hung) | 8d | 2027-06-29 | 2027-07-06 | 806, 820 |  | Zenith | 8662064 |
| 823 | 36900.37000.37100.37900.39000.40900.41600.85900.1336500 | Electrical wiring work | 10d | 2027-07-07 | 2027-07-16 | 807, 822 |  | Zenith | 8662074 |
| 824 | 36900.37000.37100.37900.39000.40900.41600.85900.1336600 | Painting 1st coat | 12d | 2027-08-09 | 2027-08-20 | 808, 823 |  | Zenith | 8662084 |

| ID | WBS | Task | Duration | Start | Finish | Predecessors | Constraint | Calendar | Unique_Task_ID |
| --- | --- | --- | --- | --- | --- | --- | --- | --- | --- |
| 825 | 36900.37000.37100.37900.39000.40900.41600.52500 | **35th Floor roof** | 180d | 2027-04-29 | 2027-10-25 |  | start no earlier than 2027-04-29 | Zenith | 8648264 |
| 826 | 36900.37000.37100.37900.39000.40900.41600.52500.1336700 | Block Work | 11d | 2027-04-29 | 2027-05-09 | 276, 810 |  | Zenith | 8662094 |
| 827 | 36900.37000.37100.37900.39000.40900.41600.52500.1336800 | Fire sprinkler pipe fixing | 12d | 2027-05-17 | 2027-05-28 | 811FS+0.25d, 826FS+7d |  | Zenith | 8662104 |
| 828 | 36900.37000.37100.37900.39000.40900.41600.52500.1336900 | Internal Plumbing Works | 14d | 2027-05-15 | 2027-05-28 | 812FS+0.25d, 826FS+5d |  | Zenith | 8662114 |
| 829 | 36900.37000.37100.37900.39000.40900.41600.52500.1337000 | Waterproofing | 14d | 2027-06-01 | 2027-06-14 | 813FS+0.25d, 828FS+3d |  | Zenith | 8662124 |
| 830 | 36900.37000.37100.37900.39000.40900.41600.52500.1337100 | Internal Plaster | 10d | 2027-06-09 | 2027-06-18 | 814FS+0.25d, 828FS+0.25d, 829FF+4d |  | Zenith | 8662134 |
| 831 | 36900.37000.37100.37900.39000.40900.41600.52500.1337200 | IPS flooring work | 10d | 2027-07-29 | 2027-08-07 | 815FS+0.25d, 829FS+0.25d, 830FS+40d |  | Zenith | 8662144 |
| 832 | 36900.37000.37100.37900.39000.40900.41600.52500.1337300 | Toilet dado work | 9d | 2027-07-07 | 2027-07-15 | 816FS+0.25d, 829, 830FS+18d |  | Zenith | 8662154 |
| 833 | 36900.37000.37100.37900.39000.40900.41600.52500.1337400 | Toilet flooring work | 9d | 2027-07-16 | 2027-07-24 | 817, 832 |  | Zenith | 8662164 |
| 834 | 36900.37000.37100.37900.39000.40900.41600.52500.1337500 | False ceiling | 8d | 2027-07-25 | 2027-08-01 | 818, 833 |  | Zenith | 8662174 |
| 835 | 36900.37000.37100.37900.39000.40900.41600.52500.1337600 | Living dinning flooring | 8d | 2027-07-25 | 2027-08-01 | 819, 833 |  | Zenith | 8662184 |
| 836 | 36900.37000.37100.37900.39000.40900.41600.52500.1337700 | Putty Primer coat | 10d | 2027-08-02 | 2027-08-11 | 820, 827, 834, 835 |  | Zenith | 8662194 |
| 837 | 36900.37000.37100.37900.39000.40900.41600.52500.1337800 | Aluminium door-window fixing | 12d | 2027-08-08 | 2027-08-19 | 821, 831, 835 |  | Zenith | 8662204 |
| 838 | 36900.37000.37100.37900.39000.40900.41600.52500.1337900 | Door shutter fixing (Pre Hung) | 8d | 2027-08-12 | 2027-08-19 | 822, 836 |  | Zenith | 8662214 |
| 839 | 36900.37000.37100.37900.39000.40900.41600.52500.1338000 | Electrical wiring work | 10d | 2027-08-20 | 2027-08-29 | 823, 838 |  | Zenith | 8662224 |
| 840 | 36900.37000.37100.37900.39000.40900.41600.52500.1338100 | Painting 1st coat | 12d | 2027-08-30 | 2027-09-10 | 824, 839 |  | Zenith | 8662234 |
| 841 | 36900.37000.37100.37900.39000.40900.41600.52500.1338200 | Misc. Works | 45d | 2027-09-11 | 2027-10-25 | 840 |  | Zenith | 8662244 |
| 842 | 36900.37000.37100.37900.39000.40900.224900 | **Terrace Finishing** | 116d | 2027-04-06 | 2027-07-31 |  | start no earlier than 2027-04-06 | Zenith | 8656664 |
| 843 | 36900.37000.37100.37900.39000.40900.224900.913700 | Terrace waterproofing | 40d | 2027-04-06 | 2027-05-16 | 240FS+2d |  | Zenith | 8694454 |
| 844 | 36900.37000.37100.37900.39000.40900.224900.913800 | Terrace finishing | 75d | 2027-05-17 | 2027-07-31 | 843FS+1d |  | Zenith | 8694444 |
| 845 | 36900.37000.37100.37900.39000.40900.48400 | **Balcony Railing** | 435d | 2026-04-27 | 2027-08-19 |  | start no earlier than 2026-04-27 | Zenith | 8648134 |
| 846 | 36900.37000.37100.37900.39000.40900.48400.913900 | 1st Floor | 8d | 2026-04-27 | 2026-05-04 | 307FF |  | Zenith | 8694434 |
| 847 | 36900.37000.37100.37900.39000.40900.48400.914000 | 2nd Floor | 8d | 2026-05-23 | 2026-05-30 | 846, 323 |  | Zenith | 8694424 |
| 848 | 36900.37000.37100.37900.39000.40900.48400.914100 | 3rd Floor | 8d | 2026-06-04 | 2026-06-11 | 847, 339 |  | Zenith | 8694414 |
| 849 | 36900.37000.37100.37900.39000.40900.48400.914200 | 4th Floor | 8d | 2026-06-14 | 2026-06-21 | 848, 355 |  | Zenith | 8694404 |
| 850 | 36900.37000.37100.37900.39000.40900.48400.914300 | 5th Floor | 8d | 2026-06-24 | 2026-07-01 | 849, 371 |  | Zenith | 8694394 |
| 851 | 36900.37000.37100.37900.39000.40900.48400.914400 | 6th Floor | 8d | 2026-07-04 | 2026-07-11 | 850, 387 |  | Zenith | 8694384 |
| 852 | 36900.37000.37100.37900.39000.40900.48400.914500 | 7th Floor | 8d | 2026-07-14 | 2026-07-21 | 851, 403 |  | Zenith | 8694374 |
| 853 | 36900.37000.37100.37900.39000.40900.48400.914600 | 8th Floor | 8d | 2026-07-24 | 2026-07-31 | 852, 419 |  | Zenith | 8694364 |
| 854 | 36900.37000.37100.37900.39000.40900.48400.914700 | 9th Floor | 8d | 2026-08-03 | 2026-08-10 | 853, 435 |  | Zenith | 8694354 |
| 855 | 36900.37000.37100.37900.39000.40900.48400.914800 | 10th Floor | 8d | 2026-08-13 | 2026-08-20 | 854, 451 |  | Zenith | 8694344 |
| 856 | 36900.37000.37100.37900.39000.40900.48400.914900 | 11th Floor | 8d | 2026-08-23 | 2026-08-30 | 855, 467 |  | Zenith | 8694334 |
| 857 | 36900.37000.37100.37900.39000.40900.48400.915000 | 12th Floor | 8d | 2026-09-02 | 2026-09-09 | 856, 483 |  | Zenith | 8694324 |
| 858 | 36900.37000.37100.37900.39000.40900.48400.915100 | 13th Floor | 8d | 2026-09-12 | 2026-09-19 | 857, 499 |  | Zenith | 8694314 |
| 859 | 36900.37000.37100.37900.39000.40900.48400.915200 | 14th Floor | 8d | 2026-09-24 | 2026-10-01 | 858, 515 |  | Zenith | 8694304 |
| 860 | 36900.37000.37100.37900.39000.40900.48400.915300 | 15th Floor | 8d | 2026-10-06 | 2026-10-13 | 859, 531 |  | Zenith | 8694294 |
| 861 | 36900.37000.37100.37900.39000.40900.48400.915400 | 16th Floor | 8d | 2026-10-18 | 2026-10-26 | 860, 547 |  | Zenith | 8694284 |
| 862 | 36900.37000.37100.37900.39000.40900.48400.915500 | 17th Floor | 8d | 2026-10-30 | 2026-12-22 | 861, 563 |  | Zenith | 8694274 |
| 863 | 36900.37000.37100.37900.39000.40900.48400.915600 | 18th Floor | 8d | 2026-12-24 | 2027-01-01 | 862, 579 |  | Zenith | 8694264 |
| 864 | 36900.37000.37100.37900.39000.40900.48400.915700 | 19th Floor | 8d | 2027-01-04 | 2027-01-12 | 863, 595 |  | Zenith | 8694254 |
| 865 | 36900.37000.37100.37900.39000.40900.48400.915800 | 20th Floor | 8d | 2027-01-14 | 2027-01-21 | 864, 611 |  | Zenith | 8694244 |
| 866 | 36900.37000.37100.37900.39000.40900.48400.915900 | 21st Floor | 8d | 2027-01-25 | 2027-02-01 | 865, 627 |  | Zenith | 8694234 |
| 867 | 36900.37000.37100.37900.39000.40900.48400.916000 | 22nd Floor | 8d | 2027-02-07 | 2027-02-14 | 866, 643 |  | Zenith | 8694224 |
| 868 | 36900.37000.37100.37900.39000.40900.48400.916100 | 23rd Floor | 8d | 2027-02-18 | 2027-02-25 | 867, 659 |  | Zenith | 8694214 |
| 869 | 36900.37000.37100.37900.39000.40900.48400.916200 | 24th Floor | 8d | 2027-03-01 | 2027-03-08 | 868, 675 |  | Zenith | 8694204 |
| 870 | 36900.37000.37100.37900.39000.40900.48400.916300 | 25th Floor | 8d | 2027-03-16 | 2027-03-23 | 869, 691 |  | Zenith | 8694194 |
| 871 | 36900.37000.37100.37900.39000.40900.48400.916400 | 26th Floor | 8d | 2027-03-27 | 2027-04-03 | 870, 707 |  | Zenith | 8694184 |
| 872 | 36900.37000.37100.37900.39000.40900.48400.916500 | 27th Floor | 8d | 2027-04-07 | 2027-04-14 | 871, 723 |  | Zenith | 8694174 |
| 873 | 36900.37000.37100.37900.39000.40900.48400.916600 | 28th Floor | 8d | 2027-04-18 | 2027-04-25 | 872, 739 |  | Zenith | 8694164 |
| 874 | 36900.37000.37100.37900.39000.40900.48400.916700 | 29th Floor | 8d | 2027-05-04 | 2027-05-11 | 873, 755 |  | Zenith | 8694154 |
| 875 | 36900.37000.37100.37900.39000.40900.48400.916800 | 30th Floor | 8d | 2027-05-15 | 2027-05-22 | 874, 771 |  | Zenith | 8694144 |
| 876 | 36900.37000.37100.37900.39000.40900.48400.916900 | 31st Floor | 8d | 2027-05-26 | 2027-06-02 | 875, 787 |  | Zenith | 8694134 |
| 877 | 36900.37000.37100.37900.39000.40900.48400.917000 | 32nd Floor | 8d | 2027-06-09 | 2027-06-16 | 876, 803 |  | Zenith | 8694124 |
| 878 | 36900.37000.37100.37900.39000.40900.48400.917100 | 33rd Floor | 8d | 2027-06-18 | 2027-06-26 | 877, 819 |  | Zenith | 8694114 |
| 879 | 36900.37000.37100.37900.39000.40900.48400.917200 | 34th Floor | 8d | 2027-08-02 | 2027-08-09 | 878, 835 |  | Zenith | 8694104 |
| 880 | 36900.37000.37100.37900.39000.40900.48400.917300 | 35th Floor | 10d | 2027-08-10 | 2027-08-19 | 879 |  | Zenith | 8694094 |

| ID | WBS | Task | Duration | Start | Finish | Predecessors | Constraint | Calendar | Unique_Task_ID |
| --- | --- | --- | --- | --- | --- | --- | --- | --- | --- |
| 881 | 36900.37000.37100.37900.39000.40900.119600 | **Common Area Finishing** | 423d | 2026-09-24 | 2028-02-18 |  | start no earlier than 2026-09-24 | Zenith | 8651784 |
| 882 | 36900.37000.37100.37900.39000.40900.119600.917400 | Masonary Work | 60d | 2026-09-24 | 2027-01-06 | 515 |  | Zenith | 8694084 |
| 883 | 36900.37000.37100.37900.39000.40900.119600.917500 | Fire sprinkler pipe fixing | 60d | 2027-01-07 | 2027-03-07 | 882 |  | Zenith | 8694074 |
| 884 | 36900.37000.37100.37900.39000.40900.119600.917600 | Corridoor, staircase, shaft Plaster & whitewash | 120d | 2027-01-07 | 2027-05-06 | 882 |  | Zenith | 8694064 |
| 885 | 36900.37000.37100.37900.39000.40900.119600.917700 | Staircase railing fixing | 100d | 2027-02-06 | 2027-05-16 | 882FS+30d |  | Zenith | 8694054 |
| 886 | 36900.37000.37100.37900.39000.40900.119600.917800 | Fire staircase flooring | 120d | 2027-03-03 | 2027-06-30 | 885FF+45d |  | Zenith | 8694044 |
| 887 | 36900.37000.37100.37900.39000.40900.119600.917900 | Main staircase flooring | 120d | 2027-03-03 | 2027-06-30 | 885FF+45d |  | Zenith | 8694034 |
| 888 | 36900.37000.37100.37900.39000.40900.119600.918000 | Fire door work | 45d | 2027-08-15 | 2027-09-28 | 886FS+45d |  | Zenith | 8694024 |
| 889 | 36900.37000.37100.37900.39000.40900.119600.918100 | Lobby flooring & Corridor | 150d | 2027-05-10 | 2027-10-06 | 887FF+98d |  | Zenith | 8694014 |
| 890 | 36900.37000.37100.37900.39000.40900.119600.918200 | Ceiling & wall putty | 150d | 2027-06-09 | 2027-12-20 | 888FF+15d, 889FF+30d, 836FF+30d |  | Zenith | 8694004 |
| 891 | 36900.37000.37100.37900.39000.40900.119600.918300 | Electrical wiring work | 150d | 2027-06-24 | 2028-01-04 | 890FF+15d |  | Zenith | 8693994 |
| 892 | 36900.37000.37100.37900.39000.40900.119600.918400 | Ceiling & wall painting | 120d | 2027-08-13 | 2028-01-24 | 883FS+20d, 890SS+20d, 891FF+20d |  | Zenith | 8693984 |
| 893 | 36900.37000.37100.37900.39000.40900.119600.918500 | Light fixture supply & installation | 45d | 2028-01-05 | 2028-02-18 | 890, 892FF+25d |  | Zenith | 8693974 |
| 894 | 36900.37000.37100.37900.121600 | **MEP work** | 282.25d | 2027-02-21 | 2028-01-14 |  | start no earlier than 2027-02-21 | Zenith | 8651854 |
| 895 | 36900.37000.37100.37900.121600.125700 | **Electrical work** | 240d | 2027-04-04 | 2028-01-14 |  | start no earlier than 2027-04-04 | Zenith | 8652034 |
| 896 | 36900.37000.37100.37900.121600.125700.805400 | Cable Tray | 90d | 2027-04-04 | 2027-07-03 | 240 |  | Zenith | 8726224 |
| 897 | 36900.37000.37100.37900.121600.125700.805500 | Cable, main & sub main | 60d | 2027-05-19 | 2027-07-18 | 896SS+45d |  | Zenith | 8726214 |
| 898 | 36900.37000.37100.37900.121600.125700.805600 | LT panel & DB | 90d | 2027-07-03 | 2027-10-01 | 896 |  | Zenith | 8726204 |
| 899 | 36900.37000.37100.37900.121600.125700.805700 | Rising main | 90d | 2027-07-18 | 2027-10-16 | 896FS+15d |  | Zenith | 8726194 |
| 900 | 36900.37000.37100.37900.121600.125700.805800 | Earthing Works | 60d | 2027-07-23 | 2027-09-21 | 896FS+20d |  | Zenith | 8726184 |
| 901 | 36900.37000.37100.37900.121600.125700.805900 | Energy meter | 60d | 2027-10-01 | 2028-01-14 | 897, 900FS+10d |  | Zenith | 8726174 |
| 902 | 36900.37000.37100.37900.121600.125700.806000 | HVAC & Exhast fan | 120d | 2027-06-28 | 2027-10-26 | 896FS-5d |  | Zenith | 8726164 |
| 903 | 36900.37000.37100.37900.121600.125700.806100 | FTTH | 60d | 2027-09-16 | 2027-12-30 | 898FS-15d |  | Zenith | 8726154 |
| 904 | 36900.37000.37100.37900.121600.125700.806200 | Security System - FA & PA | 60d | 2027-10-01 | 2028-01-14 | 898, 899FF+10d, 902FF+2d, 903FF |  | Zenith | 8726144 |

| ID | WBS | Task | Duration | Start | Finish | Predecessors | Constraint | Calendar | Unique_Task_ID |
| --- | --- | --- | --- | --- | --- | --- | --- | --- | --- |
| 905 | 36900.37000.37100.37900.121600.164000 | **Plumbing work** | 175d | 2027-05-16 | 2027-12-22 |  | start no earlier than 2027-05-16 | Zenith | 8652734 |
| 906 | 36900.37000.37100.37900.121600.164000.806300 | Terrace looping | 45d | 2027-05-16 | 2027-06-30 | 843 |  | Zenith | 8726134 |
| 907 | 36900.37000.37100.37900.121600.164000.806400 | Shaft Plumbing | 70d | 2027-06-30 | 2027-09-08 | 906, 884FS-30d |  | Zenith | 8726124 |
| 908 | 36900.37000.37100.37900.121600.164000.806500 | CP sanitary fixture base work | 45d | 2027-09-08 | 2027-10-23 | 907 |  | Zenith | 8726114 |
| 909 | 36900.37000.37100.37900.121600.164000.806600 | Cold & flushing water supply | 45d | 2027-09-08 | 2027-10-23 | 907 |  | Zenith | 8726104 |
| 910 | 36900.37000.37100.37900.121600.164000.806700 | Misc work | 30d | 2027-10-08 | 2027-12-22 | 908FS-15d, 909FS-15d |  | Zenith | 8726094 |
| 911 | 36900.37000.37100.37900.121600.212100 | **Fire fighting work** | 189.25d | 2027-02-21 | 2027-08-29 |  | start no earlier than 2027-02-21 | Zenith | 8654594 |
| 912 | 36900.37000.37100.37900.121600.212100.806800 | Fire hydrant work | 75d | 2027-02-21 | 2027-05-06 | 884SS+45d |  | Zenith | 8726084 |
| 913 | 36900.37000.37100.37900.121600.212100.806900 | Pipe connection & sprinkler installation | 45d | 2027-07-15 | 2027-08-29 | 912FS+1d, 915FF+15d |  | Zenith | 8726074 |
| 914 | 36900.37000.37100.37900.121600.212100.807000 | Shaft Downtake works | 60d | 2027-05-16 | 2027-07-15 | 843, 884FS-60d |  | Zenith | 8726064 |
| 915 | 36900.37000.37100.37900.121600.212100.807100 | Connection to pump room | 30d | 2027-07-15 | 2027-08-14 | 914 |  | Zenith | 8726054 |
| 916 | 36900.37000.37100.37900.121600.219700 | **Lift work** | 123.75d | 2027-04-16 | 2027-08-17 |  | start no earlier than 2027-04-16 | Zenith | 8656634 |
| 917 | 36900.37000.37100.37900.121600.219700.807200 | Lift Shaft/Pit Handover | 30d | 2027-04-16 | 2027-05-16 | 278FS+5d |  | Zenith | 8726044 |
| 918 | 36900.37000.37100.37900.121600.219700.807300 | Lift installation work | 45d | 2027-05-16 | 2027-06-30 | 917 |  | Zenith | 8726034 |
| 919 | 36900.37000.37100.37900.121600.219700.807400 | Lift testing and commissioning | 45d | 2027-07-04 | 2027-08-17 | 918FS+0.25d, 889SS+55d |  | Zenith | 8726024 |
| 920 | 36900.37000.37100.37900.225700 | **Basement lobby** | 90d | 2027-05-31 | 2027-08-29 |  | start no earlier than 2027-05-31 | Zenith | 8656984 |
| 921 | 36900.37000.37100.37900.225700.400900 | Basement lobby | 90d | 2027-05-31 | 2027-08-29 | 917FS+15d, 57FS+15d, 58FS+15d |  | Zenith | 8731924 |
| 922 | 36900.37000.37100.37900.222600 | **External Paint Works** | 90d | 2027-08-20 | 2028-01-01 |  | start no earlier than 2027-08-20 | Zenith | 8656844 |
| 923 | 36900.37000.37100.37900.222600.401000 | Surface prepration with Primer | 60d | 2027-08-20 | 2027-10-18 | 278FS+2d, 880 |  | Zenith | 8731914 |
| 924 | 36900.37000.37100.37900.222600.401100 | External Painting (Texture & first coat) | 90d | 2027-08-20 | 2028-01-01 | 923FF+10d, 837 |  | Zenith | 8731904 |
| 925 | 36900.37000.37100.37900.302000 | OC Application/Readiness | 2d | 2028-01-29 | 2028-01-31 | 235FF+302d, 924, 913FS+30d, 910, 921FS+30d, 919, 904, 901, 844FS+30d, 841FS+15d, 890FS+0.25d, 880, 837FS+0.25d |  | Zenith | 8735474 |
| 926 | 36900.37000.37100.37900.302100 | OC Receipt | 60d | 2028-01-31 | 2028-03-31 | 925 |  | Zenith | 8735464 |
| 927 | 36900.37000.37100.37900.126000 | **Post OC activities** | 336.25d | 2028-03-05 | 2029-03-21 |  | start no earlier than 2028-03-05 | Zenith | 8652014 |
| 928 | 36900.37000.37100.37900.126000.401200 | CP & Sanitaryware | 150d | 2028-03-31 | 2028-08-28 | 926 |  | Zenith | 8731894 |
| 929 | 36900.37000.37100.37900.126000.401300 | Electrical Fixtures And Fittings | 150d | 2028-03-31 | 2028-08-28 | 926 |  | Zenith | 8731884 |
| 930 | 36900.37000.37100.37900.126000.401400 | Final coat paint external | 100d | 2028-03-31 | 2028-07-09 | 926 |  | Zenith | 8731874 |
| 931 | 36900.37000.37100.37900.126000.401500 | Final Coat Paint Internal | 150d | 2028-03-31 | 2028-08-28 | 926, 840 |  | Zenith | 8731864 |
| 932 | 36900.37000.37100.37900.126000.401600 | Balcony Railing Glass Fixing | 120d | 2028-08-28 | 2029-02-09 | 931, 880FS+30d |  | Zenith | 8731854 |
| 933 | 36900.37000.37100.37900.126000.401700 | MEP other | 150d | 2028-03-05 | 2028-08-01 | 893FS+15d |  | Zenith | 8731844 |
| 934 | 36900.37000.37100.37900.126000.401800 | Wooden Flooring | 180d | 2028-03-16 | 2028-09-12 | 931FF+15d |  | Zenith | 8731834 |
| 935 | 36900.37000.37100.37900.126000.401900 | Split AC Units installation | 100d | 2028-09-27 | 2029-02-19 | 934FS+15d |  | Zenith | 8731824 |
| 936 | 36900.37000.37100.37900.126000.402000 | Misc. works (Modular kitchen & others) | 180d | 2028-08-08 | 2029-03-21 | 935FF+30d |  | Zenith | 8731814 |
| 937 | 36900.37000.37100.37900.302200 | Offer To Possession | 182d | 2028-08-30 | 2029-04-14 | 926FS+152d, 928FF+20d, 929FF+20d, 930FF+20d, 935FF+10d, 933FF+30d, 932FF+15d, 936FF+15d |  | Zenith | 8735454 |

| ID | WBS | Task | Duration | Start | Finish | Predecessors | Complete | Constraint | Calendar | Unique_Task_ID |
| --- | --- | --- | --- | --- | --- | --- | --- | --- | --- | --- |
| 938 | 36900.37000.37100.38000 | **Tower 02** | 1635d | 2024-04-11 | 2029-04-14 |  | 4% | start no earlier than 2024-04-11 | Zenith | 8647574 |
| 939 | 36900.37000.37100.38000.63500 | **Sub-Structure Works** | 703d | 2024-04-11 | 2026-05-13 |  | 75% | start no earlier than 2024-04-11 | Zenith | 8648364 |
| 940 | 36900.37000.37100.38000.63500.140600 | **Soil Bed Preparation** | 194d | 2024-04-11 | 2024-10-21 |  | 100% | start no earlier than 2024-04-11 | Zenith | 8652724 |
| 941 | 36900.37000.37100.38000.63500.140600.228300 | Excavation (2m) | 66d | 2024-04-11 | 2024-06-15 | 14SS+10d | 100% | start no earlier than 2024-04-11 | Zenith | 8726014 |
| 942 | 36900.37000.37100.38000.63500.140600.228400 | Soldier Piling shop drawing approval | 19d | 2024-04-15 | 2024-07-09 | 941 | 100% | start no earlier than 2024-04-15 | Zenith | 8726004 |
| 943 | 36900.37000.37100.38000.63500.140600.228500 | Mobilization & Soldier Piling with Excavation (4m) | 89d | 2024-05-19 | 2024-09-25 | 942FS+5d | 100% | start no earlier than 2024-05-19 | Zenith | 8725994 |
| 944 | 36900.37000.37100.38000.63500.140600.228600 | Balance B3 bulk Excavation | 51d | 2024-05-25 | 2024-09-26 | 943FS-111d | 100% | start no earlier than 2024-05-25 | Zenith | 8725984 |
| 945 | 36900.37000.37100.38000.63500.140600.228700 | Soil dressing & ATT | 5d | 2024-10-10 | 2024-10-21 | 944FS+8d | 100% | start no earlier than 2024-10-10 | Zenith | 8725974 |
| 946 | 36900.37000.37100.38000.63500.119100 | **Structure Works** | 375d | 2024-10-16 | 2025-12-24 |  | 92% | start no earlier than 2024-10-16 | Zenith | 8651824 |
| 947 | 36900.37000.37100.38000.63500.119100.143300 | **Raft Foundation** | 90.7d | 2024-10-16 | 2025-02-28 |  | 100% | start no earlier than 2024-10-16 | Zenith | 8652854 |
| 948 | 36900.37000.37100.38000.63500.119100.143300.273000 | PCC | 3d | 2024-10-24 | 2024-10-26 | 945, 21SS+16d | 100% | start no earlier than 2024-10-24 | Zenith | 8693964 |
| 949 | 36900.37000.37100.38000.63500.119100.143300.272900 | Column/SW layout marking | 24d | 2024-10-16 | 2025-01-06 | 948 | 100% | start no earlier than 2024-10-16 | Zenith | 8693954 |
| 950 | 36900.37000.37100.38000.63500.119100.143300.272800 | Reinforcement | 39d | 2024-12-30 | 2025-02-25 | 949FS-12.2d | 100% | start no earlier than 2024-12-30 | Zenith | 8693944 |
| 951 | 36900.37000.37100.38000.63500.119100.143300.272700 | Formwork (Conventional) | 59d | 2024-12-30 | 2025-02-26 | 950FF+3d | 100% | start no earlier than 2024-12-30 | Zenith | 8693934 |
| 952 | 36900.37000.37100.38000.63500.119100.143300.272600 | Concreting | 2d | 2025-02-26 | 2025-02-28 | 951 | 100% | start no earlier than 2025-02-26 | Zenith | 8693924 |
| 953 | 36900.37000.37100.38000.63500.119100.135000 | **Basement 03 Roof Slab (Dummy/Stitch Slab)** | 7d | 2025-03-24 | 2025-03-30 |  | 100% | start no earlier than 2025-03-24 | Zenith | 8652534 |
| 954 | 36900.37000.37100.38000.63500.119100.135000.272500 | Column/SW Reinforcement | 1d | 2025-03-24 | 2025-03-24 | 952 | 100% | start no earlier than 2025-03-24 | Zenith | 8693914 |
| 955 | 36900.37000.37100.38000.63500.119100.135000.272400 | SW Formwork (Conventional) | 1d | 2025-03-25 | 2025-03-25 | 954SS+1d | 100% | start no earlier than 2025-03-25 | Zenith | 8693904 |
| 956 | 36900.37000.37100.38000.63500.119100.135000.272300 | Column/SW Concreting | 1d | 2025-03-26 | 2025-03-26 | 955SS+1d | 100% | start no earlier than 2025-03-26 | Zenith | 8693894 |
| 957 | 36900.37000.37100.38000.63500.119100.135000.272200 | Slab Formwork (Conventional) | 1d | 2025-03-27 | 2025-03-27 | 956SS+1d | 100% | start no earlier than 2025-03-27 | Zenith | 8693884 |
| 958 | 36900.37000.37100.38000.63500.119100.135000.272100 | Slab Reinforcement + Conduting | 1d | 2025-03-28 | 2025-03-28 | 957 | 100% | start no earlier than 2025-03-28 | Zenith | 8693874 |
| 959 | 36900.37000.37100.38000.63500.119100.135000.272000 | Concreting | 2d | 2025-03-29 | 2025-03-30 | 958 | 100% | start no earlier than 2025-03-29 | Zenith | 8693864 |
| 960 | 36900.37000.37100.38000.63500.119100.135100 | **Basement 02 Roof Slab** | 131d | 2025-03-12 | 2025-07-20 |  | 100% | start no earlier than 2025-03-12 | Zenith | 8652524 |
| 961 | 36900.37000.37100.38000.63500.119100.135100.271900 | Column/SW Reinforcement | 16d | 2025-03-12 | 2025-04-06 | 959FS-17d | 100% | start no earlier than 2025-03-12 | Zenith | 8693854 |
| 962 | 36900.37000.37100.38000.63500.119100.135100.271800 | SW Formwork (Conventional) | 16d | 2025-04-06 | 2025-07-11 | 961SS+19d | 100% | start no earlier than 2025-04-06 | Zenith | 8693844 |
| 963 | 36900.37000.37100.38000.63500.119100.135100.271700 | Column/SW Concreting | 15d | 2025-04-12 | 2025-07-12 | 962SS+7d | 100% | start no earlier than 2025-04-12 | Zenith | 8693834 |
| 964 | 36900.37000.37100.38000.63500.119100.135100.271600 | Slab Formwork (Conventional) | 12d | 2025-05-09 | 2025-07-19 | 963SS+19d | 100% | start no earlier than 2025-05-09 | Zenith | 8693824 |
| 965 | 36900.37000.37100.38000.63500.119100.135100.271500 | Slab Reinforcement + Conduting | 10d | 2025-05-08 | 2025-07-19 | 964FS-72d | 100% | start no earlier than 2025-05-08 | Zenith | 8693814 |
| 966 | 36900.37000.37100.38000.63500.119100.135100.271400 | Concreting | 8d | 2025-06-03 | 2025-07-20 | 965FS-46d | 100% | start no earlier than 2025-06-03 | Zenith | 8693804 |

| ID | WBS | Task | Duration | Start | Finish | Predecessors | Complete | Constraint | Calendar | Unique_Task_ID |
| --- | --- | --- | --- | --- | --- | --- | --- | --- | --- | --- |
| 967 | 36900.37000.37100.38000.63500.119100.135200 | **Basement 01 Roof Slab** | 90d | 2025-07-01 | 2025-09-28 |  | 100% | start no earlier than 2025-07-01 | Zenith | 8652514 |
| 968 | 36900.37000.37100.38000.63500.119100.135200.271300 | Column/SW Reinforcement | 13d | 2025-07-01 | 2025-08-09 | 966FS-26d | 100% | start no earlier than 2025-07-01 | Zenith | 8693794 |
| 969 | 36900.37000.37100.38000.63500.119100.135200.271200 | SW Formwork (Conventional) | 13d | 2025-07-19 | 2025-09-15 | 968SS+4d | 100% | start no earlier than 2025-07-19 | Zenith | 8693784 |
| 970 | 36900.37000.37100.38000.63500.119100.135200.271100 | Column/SW Concreting | 18d | 2025-07-21 | 2025-09-17 | 969SS+3d | 100% | start no earlier than 2025-07-21 | Zenith | 8693774 |
| 971 | 36900.37000.37100.38000.63500.119100.135200.271000 | Slab Formwork (Conventional) | 10d | 2025-07-30 | 2025-09-26 | 970SS+10d | 100% | start no earlier than 2025-07-30 | Zenith | 8693764 |
| 972 | 36900.37000.37100.38000.63500.119100.135200.270900 | Slab Reinforcement + Conduting | 6d | 2025-08-17 | 2025-09-26 | 971FS-39d | 100% | start no earlier than 2025-08-17 | Zenith | 8693754 |
| 973 | 36900.37000.37100.38000.63500.119100.135200.270800 | Concreting | 4d | 2025-09-06 | 2025-09-28 | 972FS-21d | 100% | start no earlier than 2025-09-06 | Zenith | 8693744 |
| 974 | 36900.37000.37100.38000.63500.119100.143000 | **Podium Slab/Ground Roof Floor Slab** | 88d | 2025-09-13 | 2025-12-24 |  | 61% | start no earlier than 2025-09-13 | Zenith | 8652504 |
| 975 | 36900.37000.37100.38000.63500.119100.143000.270700 | Column/SW Reinforcement | 9d | 2025-09-13 | 2025-10-26 | 973FS-15d | 100% | start no earlier than 2025-09-13 | Zenith | 8693734 |
| 976 | 36900.37000.37100.38000.63500.119100.143000.270600 | SW Formwork (Conventional) | 18d | 2025-09-23 | 2025-12-20 | 975SS+16d | 83% | start no earlier than 2025-09-23 | Zenith | 8693724 |
| 977 | 36900.37000.37100.38000.63500.119100.143000.270500 | Column/SW Concreting | 18d | 2025-09-23 | 2025-12-20 | 976SS+4d | 83% | start no earlier than 2025-09-23 | Zenith | 8693714 |
| 978 | 36900.37000.37100.38000.63500.119100.143000.270400 | Slab Formwork (Conventional) | 10d | 2025-10-16 | 2025-11-24 | 977SS+4d | 40% | start no earlier than 2025-10-16 | Zenith | 8693704 |
| 979 | 36900.37000.37100.38000.63500.119100.143000.918600 | Slab Reinforcement + Conduting | 7d | 2025-11-25 | 2025-12-16 | 978 |  |  | Zenith | 8693694 |
| 980 | 36900.37000.37100.38000.63500.119100.143000.918700 | Concreting | 8d | 2025-12-17 | 2025-12-24 | 979 |  |  | Zenith | 8693684 |
| 981 | 36900.37000.37100.38000.63500.212000 | **Substructure Finishes** | 110d | 2026-01-24 | 2026-05-13 |  |  | start no earlier than 2026-01-24 | Zenith | 8656064 |
| 982 | 36900.37000.37100.38000.63500.212000.807500 | Masonary Work | 35d | 2026-01-24 | 2026-02-27 | 980FS+30d |  |  | Zenith | 8725964 |
| 983 | 36900.37000.37100.38000.63500.212000.807600 | Plaster Work | 30d | 2026-02-28 | 2026-03-29 | 982 |  |  | Zenith | 8725954 |
| 984 | 36900.37000.37100.38000.63500.212000.807700 | Structural Steel work | 50d | 2026-02-23 | 2026-04-13 | 980FS+60d |  |  | Zenith | 8725944 |
| 985 | 36900.37000.37100.38000.63500.212000.807800 | White Wash & Misc. | 35d | 2026-04-09 | 2026-05-13 | 983FS+10d |  |  | Zenith | 8725934 |
| 986 | 36900.37000.37100.38000.39100 | **Superstructure** | 709d | 2025-12-25 | 2028-03-02 |  |  | start no earlier than 2025-12-25 | Zenith | 8647694 |
| 987 | 36900.37000.37100.38000.39100.44700 | **RCC structure** | 463d | 2025-12-25 | 2027-05-16 |  |  | start no earlier than 2025-12-25 | Zenith | 8647944 |
| 988 | 36900.37000.37100.38000.39100.44700.169800 | **1st Floor Roof slab** | 15d | 2025-12-25 | 2026-01-08 |  |  | start no earlier than 2025-12-25 | Zenith | 8654044 |
| 989 | 36900.37000.37100.38000.39100.44700.169800.918800 | Reinforcement | 10d | 2025-12-25 | 2026-01-03 | 980 |  |  | Zenith | 8693674 |
| 990 | 36900.37000.37100.38000.39100.44700.169800.918900 | Conduiting | 10d | 2025-12-28 | 2026-01-06 | 989SS+3d |  |  | Zenith | 8693664 |
| 991 | 36900.37000.37100.38000.39100.44700.169800.919000 | Formwork | 10d | 2025-12-29 | 2026-01-07 | 989SS+4d |  |  | Zenith | 8693654 |
| 992 | 36900.37000.37100.38000.39100.44700.169800.919100 | Concreting | 1d | 2026-01-08 | 2026-01-08 | 990FS+1d, 991 |  |  | Zenith | 8693644 |

| ID | WBS | Task | Duration | Start | Finish | Predecessors | Constraint | Calendar | Unique_Task_ID |
| --- | --- | --- | --- | --- | --- | --- | --- | --- | --- |
| 993 | 36900.37000.37100.38000.39100.44700.169900 | **2nd Floor Roof slab** | 15d | 2026-01-09 | 2026-01-23 |  | start no earlier than 2026-01-09 | Zenith | 8654034 |
| 994 | 36900.37000.37100.38000.39100.44700.169900.919200 | Reinforcement | 10d | 2026-01-09 | 2026-01-18 | 992 |  | Zenith | 8693634 |
| 995 | 36900.37000.37100.38000.39100.44700.169900.919300 | Conduiting | 10d | 2026-01-12 | 2026-01-21 | 994SS+3d |  | Zenith | 8693624 |
| 996 | 36900.37000.37100.38000.39100.44700.169900.919400 | Formwork | 10d | 2026-01-13 | 2026-01-22 | 994SS+4d |  | Zenith | 8693614 |
| 997 | 36900.37000.37100.38000.39100.44700.169900.919500 | Concreting | 1d | 2026-01-23 | 2026-01-23 | 995FS+1d, 996 |  | Zenith | 8693604 |
| 998 | 36900.37000.37100.38000.39100.44700.170000 | **3rd Floor Roof slab** | 12d | 2026-01-24 | 2026-02-04 |  | start no earlier than 2026-01-24 | Zenith | 8654024 |
| 999 | 36900.37000.37100.38000.39100.44700.170000.919600 | Reinforcement | 7d | 2026-01-24 | 2026-01-30 | 997 |  | Zenith | 8693594 |
| 1000 | 36900.37000.37100.38000.39100.44700.170000.919700 | Conduiting | 7d | 2026-01-27 | 2026-02-02 | 999SS+3d |  | Zenith | 8693584 |
| 1001 | 36900.37000.37100.38000.39100.44700.170000.919800 | Formwork | 7d | 2026-01-28 | 2026-02-03 | 999SS+4d |  | Zenith | 8693574 |
| 1002 | 36900.37000.37100.38000.39100.44700.170000.919900 | Concreting | 1d | 2026-02-04 | 2026-02-04 | 1000FS+1d, 1001 |  | Zenith | 8693564 |
| 1003 | 36900.37000.37100.38000.39100.44700.170100 | **4th floor roof slab** | 8d | 2026-02-05 | 2026-02-12 |  | start no earlier than 2026-02-05 | Zenith | 8654014 |
| 1004 | 36900.37000.37100.38000.39100.44700.170100.920000 | Reinforcement | 5d | 2026-02-05 | 2026-02-09 | 1002 |  | Zenith | 8693554 |
| 1005 | 36900.37000.37100.38000.39100.44700.170100.920100 | Conduiting | 5d | 2026-02-06 | 2026-02-10 | 1004SS+1d |  | Zenith | 8693544 |
| 1006 | 36900.37000.37100.38000.39100.44700.170100.920200 | Formwork | 5d | 2026-02-07 | 2026-02-11 | 1004SS+2d |  | Zenith | 8693534 |
| 1007 | 36900.37000.37100.38000.39100.44700.170100.920300 | Concreting | 1d | 2026-02-12 | 2026-02-12 | 1005FS+1d, 1006 |  | Zenith | 8693524 |
| 1008 | 36900.37000.37100.38000.39100.44700.170200 | **5th floor roof slab** | 8d | 2026-02-13 | 2026-02-20 |  | start no earlier than 2026-02-13 | Zenith | 8654004 |
| 1009 | 36900.37000.37100.38000.39100.44700.170200.920400 | Reinforcement | 5d | 2026-02-13 | 2026-02-17 | 1007 |  | Zenith | 8693514 |
| 1010 | 36900.37000.37100.38000.39100.44700.170200.920500 | Conduiting | 5d | 2026-02-14 | 2026-02-18 | 1009SS+1d |  | Zenith | 8693504 |
| 1011 | 36900.37000.37100.38000.39100.44700.170200.920600 | Formwork | 5d | 2026-02-15 | 2026-02-19 | 1009SS+2d |  | Zenith | 8693494 |
| 1012 | 36900.37000.37100.38000.39100.44700.170200.920700 | Concreting | 1d | 2026-02-20 | 2026-02-20 | 1010FS+1d, 1011 |  | Zenith | 8693484 |
| 1013 | 36900.37000.37100.38000.39100.44700.170300 | **6th floor roof slab** | 8d | 2026-02-21 | 2026-02-28 |  | start no earlier than 2026-02-21 | Zenith | 8653994 |
| 1014 | 36900.37000.37100.38000.39100.44700.170300.920800 | Reinforcement | 5d | 2026-02-21 | 2026-02-25 | 1012 |  | Zenith | 8693474 |
| 1015 | 36900.37000.37100.38000.39100.44700.170300.920900 | Conduiting | 5d | 2026-02-22 | 2026-02-26 | 1014SS+1d |  | Zenith | 8693464 |
| 1016 | 36900.37000.37100.38000.39100.44700.170300.921000 | Formwork | 5d | 2026-02-23 | 2026-02-27 | 1014SS+2d |  | Zenith | 8693454 |
| 1017 | 36900.37000.37100.38000.39100.44700.170300.921100 | Concreting | 1d | 2026-02-28 | 2026-02-28 | 1015FS+1d, 1016 |  | Zenith | 8693444 |

| ID | WBS | Task | Duration | Start | Finish | Predecessors | Constraint | Calendar | Unique_Task_ID |
| --- | --- | --- | --- | --- | --- | --- | --- | --- | --- |
| 1018 | 36900.37000.37100.38000.39100.44700.170400 | **7th floor roof slab** | 8d | 2026-03-01 | 2026-03-08 |  | start no earlier than 2026-03-01 | Zenith | 8653974 |
| 1019 | 36900.37000.37100.38000.39100.44700.170400.921200 | Reinforcement | 5d | 2026-03-01 | 2026-03-05 | 1017 |  | Zenith | 8693434 |
| 1020 | 36900.37000.37100.38000.39100.44700.170400.921300 | Conduiting | 5d | 2026-03-02 | 2026-03-06 | 1019SS+1d |  | Zenith | 8693424 |
| 1021 | 36900.37000.37100.38000.39100.44700.170400.921400 | Formwork | 5d | 2026-03-03 | 2026-03-07 | 1019SS+2d |  | Zenith | 8693414 |
| 1022 | 36900.37000.37100.38000.39100.44700.170400.921500 | Concreting | 1d | 2026-03-08 | 2026-03-08 | 1020FS+1d, 1021 |  | Zenith | 8693404 |
| 1023 | 36900.37000.37100.38000.39100.44700.170500 | **8th floor roof slab** | 8d | 2026-03-09 | 2026-03-16 |  | start no earlier than 2026-03-09 | Zenith | 8653964 |
| 1024 | 36900.37000.37100.38000.39100.44700.170500.921600 | Reinforcement | 5d | 2026-03-09 | 2026-03-13 | 1022 |  | Zenith | 8693394 |
| 1025 | 36900.37000.37100.38000.39100.44700.170500.921700 | Conduiting | 5d | 2026-03-10 | 2026-03-14 | 1024SS+1d |  | Zenith | 8693384 |
| 1026 | 36900.37000.37100.38000.39100.44700.170500.921800 | Formwork | 5d | 2026-03-11 | 2026-03-15 | 1024SS+2d |  | Zenith | 8693374 |
| 1027 | 36900.37000.37100.38000.39100.44700.170500.921900 | Concreting | 1d | 2026-03-16 | 2026-03-16 | 1025FS+1d, 1026 |  | Zenith | 8693364 |
| 1028 | 36900.37000.37100.38000.39100.44700.170600 | **9th floor roof slab** | 8d | 2026-03-17 | 2026-03-24 |  | start no earlier than 2026-03-17 | Zenith | 8653954 |
| 1029 | 36900.37000.37100.38000.39100.44700.170600.922000 | Reinforcement | 5d | 2026-03-17 | 2026-03-21 | 1027 |  | Zenith | 8693354 |
| 1030 | 36900.37000.37100.38000.39100.44700.170600.922100 | Conduiting | 5d | 2026-03-18 | 2026-03-22 | 1029SS+1d |  | Zenith | 8693344 |
| 1031 | 36900.37000.37100.38000.39100.44700.170600.922200 | Formwork | 5d | 2026-03-19 | 2026-03-23 | 1029SS+2d |  | Zenith | 8693334 |
| 1032 | 36900.37000.37100.38000.39100.44700.170600.922300 | Concreting | 1d | 2026-03-24 | 2026-03-24 | 1030FS+1d, 1031 |  | Zenith | 8693324 |
| 1033 | 36900.37000.37100.38000.39100.44700.170700 | **10th floor roof slab** | 11d | 2026-03-25 | 2026-04-04 |  | start no earlier than 2026-03-25 | Zenith | 8653944 |
| 1034 | 36900.37000.37100.38000.39100.44700.170700.922400 | Reinforcement | 8d | 2026-03-25 | 2026-04-01 | 1032 |  | Zenith | 8693314 |
| 1035 | 36900.37000.37100.38000.39100.44700.170700.922500 | Conduiting | 8d | 2026-03-26 | 2026-04-02 | 1034SS+1d |  | Zenith | 8693304 |
| 1036 | 36900.37000.37100.38000.39100.44700.170700.922600 | Formwork | 8d | 2026-03-27 | 2026-04-03 | 1034SS+2d |  | Zenith | 8693294 |
| 1037 | 36900.37000.37100.38000.39100.44700.170700.922700 | Concreting | 1d | 2026-04-04 | 2026-04-04 | 1035FS+1d, 1036 |  | Zenith | 8693284 |
| 1038 | 36900.37000.37100.38000.39100.44700.170800 | **11th floor roof slab** | 11d | 2026-04-05 | 2026-04-15 |  | start no earlier than 2026-04-05 | Zenith | 8653924 |
| 1039 | 36900.37000.37100.38000.39100.44700.170800.922800 | Reinforcement | 8d | 2026-04-05 | 2026-04-12 | 1037 |  | Zenith | 8693274 |
| 1040 | 36900.37000.37100.38000.39100.44700.170800.922900 | Conduiting | 8d | 2026-04-06 | 2026-04-13 | 1039SS+1d |  | Zenith | 8693264 |
| 1041 | 36900.37000.37100.38000.39100.44700.170800.923000 | Formwork | 8d | 2026-04-07 | 2026-04-14 | 1039SS+2d |  | Zenith | 8693254 |
| 1042 | 36900.37000.37100.38000.39100.44700.170800.923100 | Concreting | 1d | 2026-04-15 | 2026-04-15 | 1040FS+1d, 1041 |  | Zenith | 8693244 |

| ID | WBS | Task | Duration | Start | Finish | Predecessors | Constraint | Calendar | Unique_Task_ID |
| --- | --- | --- | --- | --- | --- | --- | --- | --- | --- |
| 1043 | 36900.37000.37100.38000.39100.44700.170900 | **12th floor roof slab** | 11d | 2026-04-16 | 2026-04-26 |  | start no earlier than 2026-04-16 | Zenith | 8653914 |
| 1044 | 36900.37000.37100.38000.39100.44700.170900.923200 | Reinforcement | 8d | 2026-04-16 | 2026-04-23 | 1042 |  | Zenith | 8693234 |
| 1045 | 36900.37000.37100.38000.39100.44700.170900.923300 | Conduiting | 8d | 2026-04-17 | 2026-04-24 | 1044SS+1d |  | Zenith | 8693224 |
| 1046 | 36900.37000.37100.38000.39100.44700.170900.923400 | Formwork | 8d | 2026-04-18 | 2026-04-25 | 1044SS+2d |  | Zenith | 8693214 |
| 1047 | 36900.37000.37100.38000.39100.44700.170900.923500 | Concreting | 1d | 2026-04-26 | 2026-04-26 | 1045FS+1d, 1046 |  | Zenith | 8693204 |
| 1048 | 36900.37000.37100.38000.39100.44700.171000 | **13th floor roof slab** | 11d | 2026-04-27 | 2026-05-07 |  | start no earlier than 2026-04-27 | Zenith | 8653804 |
| 1049 | 36900.37000.37100.38000.39100.44700.171000.923600 | Reinforcement | 8d | 2026-04-27 | 2026-05-04 | 1047 |  | Zenith | 8693194 |
| 1050 | 36900.37000.37100.38000.39100.44700.171000.923700 | Conduiting | 8d | 2026-04-28 | 2026-05-05 | 1049SS+1d |  | Zenith | 8693184 |
| 1051 | 36900.37000.37100.38000.39100.44700.171000.923800 | Formwork | 8d | 2026-04-29 | 2026-05-06 | 1049SS+2d |  | Zenith | 8693174 |
| 1052 | 36900.37000.37100.38000.39100.44700.171000.923900 | Concreting | 1d | 2026-05-07 | 2026-05-07 | 1050FS+1d, 1051 |  | Zenith | 8693164 |
| 1053 | 36900.37000.37100.38000.39100.44700.171100 | **14th floor roof slab** | 11d | 2026-05-08 | 2026-05-18 |  | start no earlier than 2026-05-08 | Zenith | 8653794 |
| 1054 | 36900.37000.37100.38000.39100.44700.171100.924000 | Reinforcement | 8d | 2026-05-08 | 2026-05-15 | 1052 |  | Zenith | 8693154 |
| 1055 | 36900.37000.37100.38000.39100.44700.171100.924100 | Conduiting | 8d | 2026-05-09 | 2026-05-16 | 1054SS+1d |  | Zenith | 8693144 |
| 1056 | 36900.37000.37100.38000.39100.44700.171100.924200 | Formwork | 8d | 2026-05-10 | 2026-05-17 | 1054SS+2d |  | Zenith | 8693134 |
| 1057 | 36900.37000.37100.38000.39100.44700.171100.924300 | Concreting | 1d | 2026-05-18 | 2026-05-18 | 1055FS+1d, 1056 |  | Zenith | 8693124 |
| 1058 | 36900.37000.37100.38000.39100.44700.171200 | **15th floor roof slab** | 15d | 2026-05-19 | 2026-06-02 |  | start no earlier than 2026-05-19 | Zenith | 8653784 |
| 1059 | 36900.37000.37100.38000.39100.44700.171200.924400 | Reinforcement | 12d | 2026-05-19 | 2026-05-30 | 1057 |  | Zenith | 8693114 |
| 1060 | 36900.37000.37100.38000.39100.44700.171200.924500 | Conduiting | 12d | 2026-05-20 | 2026-05-31 | 1059SS+1d |  | Zenith | 8693104 |
| 1061 | 36900.37000.37100.38000.39100.44700.171200.924600 | Formwork | 12d | 2026-05-21 | 2026-06-01 | 1059SS+2d |  | Zenith | 8693094 |
| 1062 | 36900.37000.37100.38000.39100.44700.171200.924700 | Concreting | 1d | 2026-06-02 | 2026-06-02 | 1060FS+1d, 1061 |  | Zenith | 8693084 |
| 1063 | 36900.37000.37100.38000.39100.44700.171300 | **16th floor roof slab** | 11d | 2026-06-03 | 2026-06-13 |  | start no earlier than 2026-06-03 | Zenith | 8653774 |
| 1064 | 36900.37000.37100.38000.39100.44700.171300.924800 | Reinforcement | 8d | 2026-06-03 | 2026-06-10 | 1062 |  | Zenith | 8693074 |
| 1065 | 36900.37000.37100.38000.39100.44700.171300.924900 | Conduiting | 8d | 2026-06-04 | 2026-06-11 | 1064SS+1d |  | Zenith | 8693064 |
| 1066 | 36900.37000.37100.38000.39100.44700.171300.925000 | Formwork | 8d | 2026-06-05 | 2026-06-12 | 1064SS+2d |  | Zenith | 8693054 |
| 1067 | 36900.37000.37100.38000.39100.44700.171300.925100 | Concreting | 1d | 2026-06-13 | 2026-06-13 | 1065, 1066 |  | Zenith | 8693044 |

| ID | WBS | Task | Duration | Start | Finish | Predecessors | Constraint | Calendar | Unique_Task_ID |
| --- | --- | --- | --- | --- | --- | --- | --- | --- | --- |
| 1068 | 36900.37000.37100.38000.39100.44700.171400 | **17th floor roof slab** | 11d | 2026-06-14 | 2026-06-24 |  | start no earlier than 2026-06-14 | Zenith | 8653764 |
| 1069 | 36900.37000.37100.38000.39100.44700.171400.925200 | Reinforcement | 8d | 2026-06-14 | 2026-06-21 | 1067 |  | Zenith | 8693034 |
| 1070 | 36900.37000.37100.38000.39100.44700.171400.925300 | Conduiting | 8d | 2026-06-15 | 2026-06-22 | 1069SS+1d |  | Zenith | 8693024 |
| 1071 | 36900.37000.37100.38000.39100.44700.171400.925400 | Formwork | 8d | 2026-06-16 | 2026-06-23 | 1069SS+2d |  | Zenith | 8693014 |
| 1072 | 36900.37000.37100.38000.39100.44700.171400.925500 | Concreting | 1d | 2026-06-24 | 2026-06-24 | 1070FS+1d, 1071 |  | Zenith | 8693004 |
| 1073 | 36900.37000.37100.38000.39100.44700.171500 | **18th floor roof slab** | 11d | 2026-06-25 | 2026-07-05 |  | start no earlier than 2026-06-25 | Zenith | 8653744 |
| 1074 | 36900.37000.37100.38000.39100.44700.171500.925600 | Reinforcement | 8d | 2026-06-25 | 2026-07-02 | 1072 |  | Zenith | 8692994 |
| 1075 | 36900.37000.37100.38000.39100.44700.171500.925700 | Conduiting | 8d | 2026-06-26 | 2026-07-03 | 1074SS+1d |  | Zenith | 8692984 |
| 1076 | 36900.37000.37100.38000.39100.44700.171500.925800 | Formwork | 8d | 2026-06-27 | 2026-07-04 | 1074SS+2d |  | Zenith | 8692974 |
| 1077 | 36900.37000.37100.38000.39100.44700.171500.925900 | Concreting | 1d | 2026-07-05 | 2026-07-05 | 1075FS+1d, 1076 |  | Zenith | 8692964 |
| 1078 | 36900.37000.37100.38000.39100.44700.171600 | **19th floor roof slab** | 11d | 2026-07-06 | 2026-07-16 |  | start no earlier than 2026-07-06 | Zenith | 8653724 |
| 1079 | 36900.37000.37100.38000.39100.44700.171600.926000 | Reinforcement | 8d | 2026-07-06 | 2026-07-13 | 1077 |  | Zenith | 8692954 |
| 1080 | 36900.37000.37100.38000.39100.44700.171600.926100 | Conduiting | 8d | 2026-07-07 | 2026-07-14 | 1079SS+1d |  | Zenith | 8692944 |
| 1081 | 36900.37000.37100.38000.39100.44700.171600.926200 | Formwork | 8d | 2026-07-08 | 2026-07-15 | 1079SS+2d |  | Zenith | 8692934 |
| 1082 | 36900.37000.37100.38000.39100.44700.171600.926300 | Concreting | 1d | 2026-07-16 | 2026-07-16 | 1080FS+1d, 1081 |  | Zenith | 8692924 |
| 1083 | 36900.37000.37100.38000.39100.44700.171700 | **20th floor roof slab** | 11d | 2026-07-17 | 2026-07-27 |  | start no earlier than 2026-07-17 | Zenith | 8653714 |
| 1084 | 36900.37000.37100.38000.39100.44700.171700.926400 | Reinforcement | 8d | 2026-07-17 | 2026-07-24 | 1082 |  | Zenith | 8692914 |
| 1085 | 36900.37000.37100.38000.39100.44700.171700.926500 | Conduiting | 8d | 2026-07-18 | 2026-07-25 | 1084SS+1d |  | Zenith | 8692904 |
| 1086 | 36900.37000.37100.38000.39100.44700.171700.926600 | Formwork | 8d | 2026-07-19 | 2026-07-26 | 1084SS+2d |  | Zenith | 8692894 |
| 1087 | 36900.37000.37100.38000.39100.44700.171700.926700 | Concreting | 1d | 2026-07-27 | 2026-07-27 | 1085FS+1d, 1086 |  | Zenith | 8692884 |
| 1088 | 36900.37000.37100.38000.39100.44700.171800 | **21st floor roof slab** | 11d | 2026-07-28 | 2026-08-07 |  | start no earlier than 2026-07-28 | Zenith | 8653704 |
| 1089 | 36900.37000.37100.38000.39100.44700.171800.926800 | Reinforcement | 8d | 2026-07-28 | 2026-08-04 | 1087 |  | Zenith | 8692874 |
| 1090 | 36900.37000.37100.38000.39100.44700.171800.926900 | Conduiting | 8d | 2026-07-29 | 2026-08-05 | 1089SS+1d |  | Zenith | 8692864 |
| 1091 | 36900.37000.37100.38000.39100.44700.171800.927000 | Formwork | 8d | 2026-07-30 | 2026-08-06 | 1089SS+2d |  | Zenith | 8692854 |
| 1092 | 36900.37000.37100.38000.39100.44700.171800.927100 | Concreting | 1d | 2026-08-07 | 2026-08-07 | 1090FS+1d, 1091 |  | Zenith | 8692844 |

| ID | WBS | Task | Duration | Start | Finish | Predecessors | Constraint | Calendar | Unique_Task_ID |
| --- | --- | --- | --- | --- | --- | --- | --- | --- | --- |
| 1093 | 36900.37000.37100.38000.39100.44700.171900 | **22nd floor roof slab** | 11d | 2026-08-08 | 2026-08-18 |  | start no earlier than 2026-08-08 | Zenith | 8653694 |
| 1094 | 36900.37000.37100.38000.39100.44700.171900.927200 | Reinforcement | 8d | 2026-08-08 | 2026-08-15 | 1092 |  | Zenith | 8692834 |
| 1095 | 36900.37000.37100.38000.39100.44700.171900.927300 | Conduiting | 8d | 2026-08-09 | 2026-08-16 | 1094SS+1d |  | Zenith | 8692824 |
| 1096 | 36900.37000.37100.38000.39100.44700.171900.927400 | Formwork | 8d | 2026-08-10 | 2026-08-17 | 1094SS+2d |  | Zenith | 8692814 |
| 1097 | 36900.37000.37100.38000.39100.44700.171900.927500 | Concreting | 1d | 2026-08-18 | 2026-08-18 | 1095FS+1d, 1096 |  | Zenith | 8692804 |
| 1098 | 36900.37000.37100.38000.39100.44700.172000 | **23rd floor roof slab** | 11d | 2026-08-19 | 2026-08-29 |  | start no earlier than 2026-08-19 | Zenith | 8653684 |
| 1099 | 36900.37000.37100.38000.39100.44700.172000.927600 | Reinforcement | 8d | 2026-08-19 | 2026-08-26 | 1097 |  | Zenith | 8692794 |
| 1100 | 36900.37000.37100.38000.39100.44700.172000.927700 | Conduiting | 8d | 2026-08-20 | 2026-08-27 | 1099SS+1d |  | Zenith | 8692784 |
| 1101 | 36900.37000.37100.38000.39100.44700.172000.927800 | Formwork | 8d | 2026-08-21 | 2026-08-28 | 1099SS+2d |  | Zenith | 8692774 |
| 1102 | 36900.37000.37100.38000.39100.44700.172000.927900 | Concreting | 1d | 2026-08-29 | 2026-08-29 | 1100FS+1d, 1101 |  | Zenith | 8692764 |
| 1103 | 36900.37000.37100.38000.39100.44700.172100 | **24th floor roof slab** | 11d | 2026-08-30 | 2026-09-09 |  | start no earlier than 2026-08-30 | Zenith | 8653664 |
| 1104 | 36900.37000.37100.38000.39100.44700.172100.928000 | Reinforcement | 8d | 2026-08-30 | 2026-09-06 | 1102 |  | Zenith | 8692754 |
| 1105 | 36900.37000.37100.38000.39100.44700.172100.928100 | Conduiting | 8d | 2026-08-31 | 2026-09-07 | 1104SS+1d |  | Zenith | 8692744 |
| 1106 | 36900.37000.37100.38000.39100.44700.172100.928200 | Formwork | 8d | 2026-09-01 | 2026-09-08 | 1104SS+2d |  | Zenith | 8692734 |
| 1107 | 36900.37000.37100.38000.39100.44700.172100.928300 | Concreting | 1d | 2026-09-09 | 2026-09-09 | 1105FS+1d, 1106 |  | Zenith | 8692724 |
| 1108 | 36900.37000.37100.38000.39100.44700.172200 | **25th floor roof slab** | 11d | 2026-09-10 | 2026-09-20 |  | start no earlier than 2026-09-10 | Zenith | 8653654 |
| 1109 | 36900.37000.37100.38000.39100.44700.172200.928400 | Reinforcement | 8d | 2026-09-10 | 2026-09-17 | 1107 |  | Zenith | 8692714 |
| 1110 | 36900.37000.37100.38000.39100.44700.172200.928500 | Conduiting | 8d | 2026-09-11 | 2026-09-18 | 1109SS+1d |  | Zenith | 8692704 |
| 1111 | 36900.37000.37100.38000.39100.44700.172200.928600 | Formwork | 8d | 2026-09-12 | 2026-09-19 | 1109SS+2d |  | Zenith | 8692694 |
| 1112 | 36900.37000.37100.38000.39100.44700.172200.928700 | Concreting | 1d | 2026-09-20 | 2026-09-20 | 1110FS+1d, 1111 |  | Zenith | 8692684 |
| 1113 | 36900.37000.37100.38000.39100.44700.172300 | **26th floor roof slab** | 11d | 2026-09-21 | 2026-10-01 |  | start no earlier than 2026-09-21 | Zenith | 8653644 |
| 1114 | 36900.37000.37100.38000.39100.44700.172300.928800 | Reinforcement | 8d | 2026-09-21 | 2026-09-28 | 1112 |  | Zenith | 8692674 |
| 1115 | 36900.37000.37100.38000.39100.44700.172300.928900 | Conduiting | 8d | 2026-09-22 | 2026-09-29 | 1114SS+1d |  | Zenith | 8692664 |
| 1116 | 36900.37000.37100.38000.39100.44700.172300.929000 | Formwork | 8d | 2026-09-23 | 2026-09-30 | 1114SS+2d |  | Zenith | 8692654 |
| 1117 | 36900.37000.37100.38000.39100.44700.172300.929100 | Concreting | 1d | 2026-10-01 | 2026-10-01 | 1115FS+1d, 1116 |  | Zenith | 8692644 |

| ID | WBS | Task | Duration | Start | Finish | Predecessors | Constraint | Calendar | Unique_Task_ID |
| --- | --- | --- | --- | --- | --- | --- | --- | --- | --- |
| 1118 | 36900.37000.37100.38000.39100.44700.172400 | **27th floor roof slab** | 11d | 2026-10-02 | 2026-10-12 |  | start no earlier than 2026-10-02 | Zenith | 8653634 |
| 1119 | 36900.37000.37100.38000.39100.44700.172400.929200 | Reinforcement | 8d | 2026-10-02 | 2026-10-09 | 1117 |  | Zenith | 8692634 |
| 1120 | 36900.37000.37100.38000.39100.44700.172400.929300 | Conduiting | 8d | 2026-10-03 | 2026-10-10 | 1119SS+1d |  | Zenith | 8692624 |
| 1121 | 36900.37000.37100.38000.39100.44700.172400.929400 | Formwork | 8d | 2026-10-04 | 2026-10-11 | 1119SS+2d |  | Zenith | 8692614 |
| 1122 | 36900.37000.37100.38000.39100.44700.172400.929500 | Concreting | 1d | 2026-10-12 | 2026-10-12 | 1120FS+1d, 1121 |  | Zenith | 8692604 |
| 1123 | 36900.37000.37100.38000.39100.44700.172500 | **28th floor roof slab** | 11d | 2026-10-13 | 2026-10-23 |  | start no earlier than 2026-10-13 | Zenith | 8653624 |
| 1124 | 36900.37000.37100.38000.39100.44700.172500.929600 | Reinforcement | 8d | 2026-10-13 | 2026-10-20 | 1122 |  | Zenith | 8692594 |
| 1125 | 36900.37000.37100.38000.39100.44700.172500.929700 | Conduiting | 8d | 2026-10-14 | 2026-10-21 | 1124SS+1d |  | Zenith | 8692584 |
| 1126 | 36900.37000.37100.38000.39100.44700.172500.929800 | Formwork | 8d | 2026-10-15 | 2026-10-22 | 1124SS+2d |  | Zenith | 8692574 |
| 1127 | 36900.37000.37100.38000.39100.44700.172500.929900 | Concreting | 1d | 2026-10-23 | 2026-10-23 | 1125FS+1d, 1126 |  | Zenith | 8692564 |
| 1128 | 36900.37000.37100.38000.39100.44700.172600 | **29th floor roof slab** | 11d | 2026-10-24 | 2026-12-18 |  | start no earlier than 2026-10-24 | Zenith | 8653614 |
| 1129 | 36900.37000.37100.38000.39100.44700.172600.930000 | Reinforcement | 8d | 2026-10-24 | 2026-10-31 | 1127 |  | Zenith | 8692554 |
| 1130 | 36900.37000.37100.38000.39100.44700.172600.930100 | Conduiting | 8d | 2026-10-25 | 2026-12-16 | 1129SS+1d |  | Zenith | 8692544 |
| 1131 | 36900.37000.37100.38000.39100.44700.172600.930200 | Formwork | 8d | 2026-10-26 | 2026-12-17 | 1129SS+2d |  | Zenith | 8692534 |
| 1132 | 36900.37000.37100.38000.39100.44700.172600.930300 | Concreting | 1d | 2026-12-18 | 2026-12-18 | 1130FS+1d, 1131 |  | Zenith | 8692524 |
| 1133 | 36900.37000.37100.38000.39100.44700.172700 | **30th floor roof slab** | 15d | 2026-12-19 | 2027-01-02 |  | start no earlier than 2026-12-19 | Zenith | 8653604 |
| 1134 | 36900.37000.37100.38000.39100.44700.172700.930400 | Reinforcement | 12d | 2026-12-19 | 2026-12-30 | 1132 |  | Zenith | 8692514 |
| 1135 | 36900.37000.37100.38000.39100.44700.172700.930500 | Conduiting | 12d | 2026-12-20 | 2026-12-31 | 1134SS+1d |  | Zenith | 8692504 |
| 1136 | 36900.37000.37100.38000.39100.44700.172700.930600 | Formwork | 12d | 2026-12-21 | 2027-01-01 | 1134SS+2d |  | Zenith | 8692494 |
| 1137 | 36900.37000.37100.38000.39100.44700.172700.930700 | Concreting | 1d | 2027-01-02 | 2027-01-02 | 1135FS+1d, 1136 |  | Zenith | 8692484 |
| 1138 | 36900.37000.37100.38000.39100.44700.172800 | **31st floor roof slab** | 11d | 2027-01-03 | 2027-01-13 |  | start no earlier than 2027-01-03 | Zenith | 8653594 |
| 1139 | 36900.37000.37100.38000.39100.44700.172800.930800 | Reinforcement | 8d | 2027-01-03 | 2027-01-10 | 1137 |  | Zenith | 8692474 |
| 1140 | 36900.37000.37100.38000.39100.44700.172800.930900 | Conduiting | 8d | 2027-01-04 | 2027-01-11 | 1139SS+1d |  | Zenith | 8692464 |
| 1141 | 36900.37000.37100.38000.39100.44700.172800.931000 | Formwork | 8d | 2027-01-05 | 2027-01-12 | 1139SS+2d |  | Zenith | 8692454 |
| 1142 | 36900.37000.37100.38000.39100.44700.172800.931100 | Concreting | 1d | 2027-01-13 | 2027-01-13 | 1140FS+1d, 1141 |  | Zenith | 8692444 |

| ID | WBS | Task | Duration | Start | Finish | Predecessors | Constraint | Calendar | Unique_Task_ID |
| --- | --- | --- | --- | --- | --- | --- | --- | --- | --- |
| 1143 | 36900.37000.37100.38000.39100.44700.172900 | **32nd floor roof slab** | 11d | 2027-01-14 | 2027-01-24 |  | start no earlier than 2027-01-14 | Zenith | 8653584 |
| 1144 | 36900.37000.37100.38000.39100.44700.172900.931200 | Reinforcement | 8d | 2027-01-14 | 2027-01-21 | 1142 |  | Zenith | 8692434 |
| 1145 | 36900.37000.37100.38000.39100.44700.172900.931300 | Conduiting | 8d | 2027-01-15 | 2027-01-22 | 1144SS+1d |  | Zenith | 8692424 |
| 1146 | 36900.37000.37100.38000.39100.44700.172900.931400 | Formwork | 8d | 2027-01-16 | 2027-01-23 | 1144SS+2d |  | Zenith | 8692414 |
| 1147 | 36900.37000.37100.38000.39100.44700.172900.931500 | Concreting | 1d | 2027-01-24 | 2027-01-24 | 1145FS+1d, 1146 |  | Zenith | 8692404 |
| 1148 | 36900.37000.37100.38000.39100.44700.173000 | **33rd floor roof slab** | 11d | 2027-01-25 | 2027-02-04 |  | start no earlier than 2027-01-25 | Zenith | 8653564 |
| 1149 | 36900.37000.37100.38000.39100.44700.173000.931600 | Reinforcement | 8d | 2027-01-25 | 2027-02-01 | 1147 |  | Zenith | 8692394 |
| 1150 | 36900.37000.37100.38000.39100.44700.173000.931700 | Conduiting | 8d | 2027-01-26 | 2027-02-02 | 1149SS+1d |  | Zenith | 8692384 |
| 1151 | 36900.37000.37100.38000.39100.44700.173000.931800 | Formwork | 8d | 2027-01-27 | 2027-02-03 | 1149SS+2d |  | Zenith | 8692374 |
| 1152 | 36900.37000.37100.38000.39100.44700.173000.931900 | Concreting | 1d | 2027-02-04 | 2027-02-04 | 1150FS+1d, 1151 |  | Zenith | 8692364 |
| 1153 | 36900.37000.37100.38000.39100.44700.173100 | **34th floor roof slab** | 11d | 2027-02-05 | 2027-02-15 |  | start no earlier than 2027-02-05 | Zenith | 8653554 |
| 1154 | 36900.37000.37100.38000.39100.44700.173100.932000 | Reinforcement | 8d | 2027-02-05 | 2027-02-12 | 1152 |  | Zenith | 8692354 |
| 1155 | 36900.37000.37100.38000.39100.44700.173100.932100 | Conduiting | 8d | 2027-02-06 | 2027-02-13 | 1154SS+1d |  | Zenith | 8692344 |
| 1156 | 36900.37000.37100.38000.39100.44700.173100.932200 | Formwork | 8d | 2027-02-07 | 2027-02-14 | 1154SS+2d |  | Zenith | 8692334 |
| 1157 | 36900.37000.37100.38000.39100.44700.173100.932300 | Concreting | 1d | 2027-02-15 | 2027-02-15 | 1155FS+1d, 1156 |  | Zenith | 8692324 |
| 1158 | 36900.37000.37100.38000.39100.44700.173200 | **Terrace floor slab** | 15d | 2027-02-16 | 2027-03-02 |  | start no earlier than 2027-02-16 | Zenith | 8653544 |
| 1159 | 36900.37000.37100.38000.39100.44700.173200.932400 | Reinforcement | 11d | 2027-02-16 | 2027-02-26 | 1157 |  | Zenith | 8692314 |
| 1160 | 36900.37000.37100.38000.39100.44700.173200.932500 | Conduiting | 11d | 2027-02-17 | 2027-02-27 | 1159SS+1d |  | Zenith | 8692304 |
| 1161 | 36900.37000.37100.38000.39100.44700.173200.932600 | Formwork | 11d | 2027-02-18 | 2027-02-28 | 1159SS+2d |  | Zenith | 8692294 |
| 1162 | 36900.37000.37100.38000.39100.44700.173200.932700 | Concreting | 2d | 2027-03-01 | 2027-03-02 | 1160FS+1d, 1161 |  | Zenith | 8692284 |
| 1163 | 36900.37000.37100.38000.39100.44700.173300 | **OHT, Mumty & Machine Room, Parapet** | 45d | 2027-04-02 | 2027-05-16 |  | start no earlier than 2027-04-02 | Zenith | 8653534 |
| 1164 | 36900.37000.37100.38000.39100.44700.173300.932800 | Reinforcement | 35d | 2027-04-02 | 2027-05-06 | 1162FS+30d |  | Zenith | 8692274 |
| 1165 | 36900.37000.37100.38000.39100.44700.173300.932900 | Flanges fixing & Conduiting | 25d | 2027-04-03 | 2027-04-27 | 1164SS+1d |  | Zenith | 8692264 |
| 1166 | 36900.37000.37100.38000.39100.44700.173300.933000 | Formwork | 35d | 2027-04-08 | 2027-05-12 | 1164SS+6d |  | Zenith | 8692254 |
| 1167 | 36900.37000.37100.38000.39100.44700.173300.933100 | Concreting | 4d | 2027-05-13 | 2027-05-16 | 1165FS+5d, 1166 |  | Zenith | 8692244 |

| ID | WBS | Task | Duration | Start | Finish | Predecessors | Constraint | Calendar | Unique_Task_ID |
| --- | --- | --- | --- | --- | --- | --- | --- | --- | --- |
| 1168 | 36900.37000.37100.38000.39100.47600 | **Post Pour Activities** | 393.25d | 2026-02-13 | 2027-04-27 |  | start no earlier than 2026-02-13 | Zenith | 8648034 |
| 1169 | 36900.37000.37100.38000.39100.47600.807900 | 1st Floor | 10d | 2026-02-13 | 2026-02-22 | 1007 |  | Zenith | 8725924 |
| 1170 | 36900.37000.37100.38000.39100.47600.808000 | 2nd Floor | 10d | 2026-02-23 | 2026-03-05 | 1169FS+0.25d, 1012FS+0.25d |  | Zenith | 8725914 |
| 1171 | 36900.37000.37100.38000.39100.47600.808100 | 3rd Floor | 10d | 2026-03-05 | 2026-03-15 | 1170FS+0.25d, 1017FS+0.25d |  | Zenith | 8725904 |
| 1172 | 36900.37000.37100.38000.39100.47600.808200 | 4th Floor | 10d | 2026-03-15 | 2026-03-25 | 1171FS+0.25d, 1022FS+0.25d |  | Zenith | 8725894 |
| 1173 | 36900.37000.37100.38000.39100.47600.808300 | 5th Floor | 10d | 2026-03-26 | 2026-04-04 | 1172FS+0.25d, 1027FS+0.25d |  | Zenith | 8725884 |
| 1174 | 36900.37000.37100.38000.39100.47600.808400 | 6th Floor | 10d | 2026-04-05 | 2026-04-15 | 1173FS+0.25d, 1032FS+0.25d |  | Zenith | 8725874 |
| 1175 | 36900.37000.37100.38000.39100.47600.808500 | 7th Floor | 10d | 2026-04-15 | 2026-04-25 | 1174FS+0.25d, 1037FS+0.25d |  | Zenith | 8725864 |
| 1176 | 36900.37000.37100.38000.39100.47600.808600 | 8th Floor | 10d | 2026-04-25 | 2026-05-05 | 1175FS+0.25d, 1042FS+0.25d |  | Zenith | 8725854 |
| 1177 | 36900.37000.37100.38000.39100.47600.808700 | 9th Floor | 10d | 2026-05-06 | 2026-05-15 | 1176FS+0.25d, 1047FS+0.25d |  | Zenith | 8725844 |
| 1178 | 36900.37000.37100.38000.39100.47600.808800 | 10th Floor | 10d | 2026-05-16 | 2026-05-26 | 1177FS+0.25d, 1052FS+0.25d |  | Zenith | 8725834 |
| 1179 | 36900.37000.37100.38000.39100.47600.808900 | 11th Floor | 10d | 2026-05-26 | 2026-06-05 | 1178FS+0.25d, 1057FS+0.25d |  | Zenith | 8725824 |
| 1180 | 36900.37000.37100.38000.39100.47600.809000 | 12th Floor | 10d | 2026-06-05 | 2026-06-15 | 1179FS+0.25d, 1062FS+0.25d |  | Zenith | 8725814 |
| 1181 | 36900.37000.37100.38000.39100.47600.809100 | 13th Floor | 10d | 2026-06-16 | 2026-06-25 | 1180FS+0.25d, 1067FS+0.25d |  | Zenith | 8725804 |
| 1182 | 36900.37000.37100.38000.39100.47600.809200 | 14th Floor | 10d | 2026-06-26 | 2026-07-06 | 1181FS+0.25d, 1072FS+0.25d |  | Zenith | 8725794 |
| 1183 | 36900.37000.37100.38000.39100.47600.809300 | 15th Floor | 10d | 2026-07-06 | 2026-07-16 | 1182FS+0.25d, 1077FS+0.25d |  | Zenith | 8725784 |
| 1184 | 36900.37000.37100.38000.39100.47600.809400 | 16th Floor | 10d | 2026-07-17 | 2026-07-27 | 1183FS+0.25d, 1082FS+0.25d |  | Zenith | 8725774 |
| 1185 | 36900.37000.37100.38000.39100.47600.809500 | 17th Floor | 10d | 2026-07-28 | 2026-08-07 | 1184FS+0.25d, 1087FS+0.25d |  | Zenith | 8725764 |
| 1186 | 36900.37000.37100.38000.39100.47600.809600 | 18th Floor | 10d | 2026-08-08 | 2026-08-18 | 1185FS+0.25d, 1092FS+0.25d |  | Zenith | 8725754 |
| 1187 | 36900.37000.37100.38000.39100.47600.809700 | 19th Floor | 10d | 2026-08-19 | 2026-08-29 | 1186FS+0.25d, 1097FS+0.25d |  | Zenith | 8725744 |
| 1188 | 36900.37000.37100.38000.39100.47600.809800 | 20th Floor | 10d | 2026-08-30 | 2026-09-09 | 1187FS+0.25d, 1102FS+0.25d |  | Zenith | 8725734 |
| 1189 | 36900.37000.37100.38000.39100.47600.809900 | 21st Floor | 10d | 2026-09-10 | 2026-09-20 | 1188FS+0.25d, 1107FS+0.25d |  | Zenith | 8725724 |
| 1190 | 36900.37000.37100.38000.39100.47600.810000 | 22nd Floor | 10d | 2026-09-21 | 2026-10-01 | 1189FS+0.25d, 1112FS+0.25d |  | Zenith | 8725714 |
| 1191 | 36900.37000.37100.38000.39100.47600.810100 | 23rd Floor | 10d | 2026-10-02 | 2026-10-12 | 1190FS+0.25d, 1117FS+0.25d |  | Zenith | 8725704 |
| 1192 | 36900.37000.37100.38000.39100.47600.810200 | 24th Floor | 10d | 2026-10-13 | 2026-10-23 | 1191FS+0.25d, 1122FS+0.25d |  | Zenith | 8725694 |
| 1193 | 36900.37000.37100.38000.39100.47600.810300 | 25th Floor | 10d | 2026-10-24 | 2026-12-18 | 1192FS+0.25d, 1127FS+0.25d |  | Zenith | 8725684 |
| 1194 | 36900.37000.37100.38000.39100.47600.810400 | 26th Floor | 10d | 2026-12-19 | 2026-12-29 | 1193FS+0.25d, 1132FS+0.25d |  | Zenith | 8725674 |
| 1195 | 36900.37000.37100.38000.39100.47600.810500 | 27th Floor | 10d | 2027-01-03 | 2027-01-13 | 1194FS+0.25d, 1137FS+0.25d |  | Zenith | 8725664 |
| 1196 | 36900.37000.37100.38000.39100.47600.810600 | 28th Floor | 10d | 2027-01-14 | 2027-01-24 | 1195FS+0.25d, 1142FS+0.25d |  | Zenith | 8725654 |
| 1197 | 36900.37000.37100.38000.39100.47600.810700 | 29th Floor | 10d | 2027-01-25 | 2027-02-04 | 1196FS+0.25d, 1147FS+0.25d |  | Zenith | 8725644 |
| 1198 | 36900.37000.37100.38000.39100.47600.810800 | 30th Floor | 10d | 2027-02-05 | 2027-02-15 | 1197FS+0.25d, 1152FS+0.25d |  | Zenith | 8725634 |
| 1199 | 36900.37000.37100.38000.39100.47600.810900 | 31st Floor | 10d | 2027-02-16 | 2027-02-26 | 1198FS+0.25d, 1157FS+0.25d |  | Zenith | 8725624 |
| 1200 | 36900.37000.37100.38000.39100.47600.811000 | 32nd Flood | 10d | 2027-03-03 | 2027-03-13 | 1199FS+0.25d, 1162FS+0.25d |  | Zenith | 8725614 |
| 1201 | 36900.37000.37100.38000.39100.47600.811100 | 33rd Floor | 10d | 2027-03-13 | 2027-03-23 | 1200 |  | Zenith | 8725604 |
| 1202 | 36900.37000.37100.38000.39100.47600.811200 | 34th Floor | 10d | 2027-03-23 | 2027-04-02 | 1201 |  | Zenith | 8725594 |
| 1203 | 36900.37000.37100.38000.39100.47600.811300 | 35th Floor | 10d | 2027-04-02 | 2027-04-12 | 1202 |  | Zenith | 8725584 |
| 1204 | 36900.37000.37100.38000.39100.47600.811400 | Terrace | 10d | 2027-04-12 | 2027-04-22 | 1203 |  | Zenith | 8725574 |
| 1205 | 36900.37000.37100.38000.39100.47600.811500 | Mumty & Machine Room | 5d | 2027-04-22 | 2027-04-27 | 1204 |  | Zenith | 8725564 |

| ID | WBS | Task | Duration | Start | Finish | Predecessors | Constraint | Calendar | Unique_Task_ID |
| --- | --- | --- | --- | --- | --- | --- | --- | --- | --- |
| 1206 | 36900.37000.37100.38000.39100.40400 | **Finishing work** | 642d | 2026-03-02 | 2028-03-02 |  | start no earlier than 2026-03-02 | Zenith | 8647764 |
| 1207 | 36900.37000.37100.38000.39100.40400.41700 | **Flat finishing** | 583.5d | 2026-03-02 | 2028-01-04 |  | start no earlier than 2026-03-02 | Zenith | 8647854 |
| 1208 | 36900.37000.37100.38000.39100.40400.41700.86000 | **1st Floor roof** | 168.25d | 2026-03-02 | 2026-08-17 |  | start no earlier than 2026-03-02 | Zenith | 8648784 |
| 1209 | 36900.37000.37100.38000.39100.40400.41700.86000.1338300 | Block Work | 10d | 2026-03-02 | 2026-03-11 | 1169FS+7d |  | Zenith | 8662254 |
| 1210 | 36900.37000.37100.38000.39100.40400.41700.86000.1338400 | Fire sprinkler pipe fixing | 5d | 2026-03-12 | 2026-03-16 | 1209 |  | Zenith | 8662264 |
| 1211 | 36900.37000.37100.38000.39100.40400.41700.86000.1338500 | Internal Plumbing Works | 5d | 2026-03-12 | 2026-03-16 | 1209 |  | Zenith | 8662274 |
| 1212 | 36900.37000.37100.38000.39100.40400.41700.86000.1338600 | Waterproofing | 5d | 2026-03-17 | 2026-03-21 | 1211 |  | Zenith | 8662284 |
| 1213 | 36900.37000.37100.38000.39100.40400.41700.86000.1338700 | Internal Plaster | 10d | 2026-03-17 | 2026-03-26 | 1211, 1212FF+5d |  | Zenith | 8662294 |
| 1214 | 36900.37000.37100.38000.39100.40400.41700.86000.1338800 | IPS flooring work | 10d | 2026-04-26 | 2026-05-05 | 1213FS+30d |  | Zenith | 8662304 |
| 1215 | 36900.37000.37100.38000.39100.40400.41700.86000.1338900 | Toilet dado work | 6d | 2026-04-03 | 2026-04-08 | 1212FS+0.25d, 1213FS+7d |  | Zenith | 8662314 |
| 1216 | 36900.37000.37100.38000.39100.40400.41700.86000.1339000 | Toilet flooring work | 7d | 2026-04-09 | 2026-04-15 | 1215 |  | Zenith | 8662324 |
| 1217 | 36900.37000.37100.38000.39100.40400.41700.86000.1339100 | False Cieling panel fixing | 7d | 2026-04-16 | 2026-04-22 | 1216 |  | Zenith | 8662334 |
| 1218 | 36900.37000.37100.38000.39100.40400.41700.86000.1339200 | Living dinning flooring | 7d | 2026-04-16 | 2026-04-22 | 1216 |  | Zenith | 8662344 |
| 1219 | 36900.37000.37100.38000.39100.40400.41700.86000.1339300 | Putty primer coat | 8d | 2026-08-01 | 2026-08-08 | 1220FS+45d |  | Zenith | 8662354 |
| 1220 | 36900.37000.37100.38000.39100.40400.41700.86000.1339400 | Aluminium door-window fixing | 12d | 2026-06-05 | 2026-06-16 | 1214FS+30d, 1218FS+30d |  | Zenith | 8662364 |
| 1221 | 36900.37000.37100.38000.39100.40400.41700.86000.1339500 | Door shutter fixing (Pre Hung) | 8d | 2026-08-09 | 2026-08-17 | 1219FS+0.25d |  | Zenith | 8662374 |
| 1222 | 36900.37000.37100.38000.39100.40400.41700.86000.1339600 | Electrical wiring work | 10d | 2026-06-27 | 2026-07-06 | 1220FS+10d |  | Zenith | 8662384 |
| 1223 | 36900.37000.37100.38000.39100.40400.41700.86000.1339700 | Painting 1st coat | 11d | 2026-07-01 | 2026-07-11 | 1220FS+14d |  | Zenith | 8662394 |
| 1224 | 36900.37000.37100.38000.39100.40400.41700.86100 | **2nd floor roof** | 181.25d | 2026-03-19 | 2026-09-16 |  | start no earlier than 2026-03-19 | Zenith | 8648794 |
| 1225 | 36900.37000.37100.38000.39100.40400.41700.86100.1339800 | Block Work | 10d | 2026-03-19 | 2026-03-28 | 1170FS+0.25d, 1209FS+7d |  | Zenith | 8662404 |
| 1226 | 36900.37000.37100.38000.39100.40400.41700.86100.1339900 | Fire sprinkler pipe fixing | 5d | 2026-03-29 | 2026-04-02 | 1210, 1225 |  | Zenith | 8662414 |
| 1227 | 36900.37000.37100.38000.39100.40400.41700.86100.1340000 | Internal Plumbing Works | 5d | 2026-03-29 | 2026-04-02 | 1211, 1225 |  | Zenith | 8662424 |
| 1228 | 36900.37000.37100.38000.39100.40400.41700.86100.1340100 | Waterproofing | 5d | 2026-04-03 | 2026-04-07 | 1212, 1227 |  | Zenith | 8662434 |
| 1229 | 36900.37000.37100.38000.39100.40400.41700.86100.1340200 | Internal Plaster | 10d | 2026-04-03 | 2026-04-12 | 1213, 1227, 1228FF+5d |  | Zenith | 8662444 |
| 1230 | 36900.37000.37100.38000.39100.40400.41700.86100.1340300 | IPS flooring work | 10d | 2026-05-06 | 2026-05-15 | 1214, 1229 |  | Zenith | 8662454 |
| 1231 | 36900.37000.37100.38000.39100.40400.41700.86100.1340400 | Toilet dado work | 6d | 2026-04-13 | 2026-04-18 | 1215, 1228, 1229 |  | Zenith | 8662464 |
| 1232 | 36900.37000.37100.38000.39100.40400.41700.86100.1340500 | Toilet flooring work | 7d | 2026-04-19 | 2026-04-25 | 1216, 1231 |  | Zenith | 8662474 |
| 1233 | 36900.37000.37100.38000.39100.40400.41700.86100.1340600 | False Cieling panel fixing | 7d | 2026-04-26 | 2026-05-02 | 1217, 1232 |  | Zenith | 8662484 |
| 1234 | 36900.37000.37100.38000.39100.40400.41700.86100.1340700 | Living dinning flooring | 7d | 2026-04-26 | 2026-05-02 | 1218, 1232 |  | Zenith | 8662494 |
| 1235 | 36900.37000.37100.38000.39100.40400.41700.86100.1340800 | Putty primer coat | 8d | 2026-08-09 | 2026-08-16 | 1219, 1234 |  | Zenith | 8662504 |
| 1236 | 36900.37000.37100.38000.39100.40400.41700.86100.1340900 | Aluminium door-window fixing | 12d | 2026-06-17 | 2026-06-28 | 1220, 1230, 1234 |  | Zenith | 8662514 |
| 1237 | 36900.37000.37100.38000.39100.40400.41700.86100.1341000 | Door shutter fixing (Pre Hung) | 8d | 2026-08-17 | 2026-08-25 | 1221, 1235 |  | Zenith | 8662524 |
| 1238 | 36900.37000.37100.38000.39100.40400.41700.86100.1341100 | Electrical wiring work | 10d | 2026-08-25 | 2026-09-04 | 1222, 1237 |  | Zenith | 8662534 |
| 1239 | 36900.37000.37100.38000.39100.40400.41700.86100.1341200 | Painting 1st coat | 12d | 2026-09-04 | 2026-09-16 | 1223, 1238 |  | Zenith | 8662544 |

| ID | WBS | Task | Duration | Start | Finish | Predecessors | Constraint | Calendar | Unique_Task_ID |
| --- | --- | --- | --- | --- | --- | --- | --- | --- | --- |
| 1240 | 36900.37000.37100.38000.39100.40400.41700.86200 | **3rd floor roof** | 176.25d | 2026-04-05 | 2026-09-28 |  | start no earlier than 2026-04-05 | Zenith | 8648804 |
| 1241 | 36900.37000.37100.38000.39100.40400.41700.86200.1341300 | Block Work | 10d | 2026-04-05 | 2026-04-14 | 1171FS+0.25d, 1225FS+7d |  | Zenith | 8662554 |
| 1242 | 36900.37000.37100.38000.39100.40400.41700.86200.1341400 | Fire sprinkler pipe fixing | 5d | 2026-04-15 | 2026-04-19 | 1226, 1241 |  | Zenith | 8662564 |
| 1243 | 36900.37000.37100.38000.39100.40400.41700.86200.1341500 | Internal Plumbing Works | 5d | 2026-04-15 | 2026-04-19 | 1227, 1241 |  | Zenith | 8662574 |
| 1244 | 36900.37000.37100.38000.39100.40400.41700.86200.1341600 | Waterproofing | 5d | 2026-04-20 | 2026-04-24 | 1228, 1243 |  | Zenith | 8662584 |
| 1245 | 36900.37000.37100.38000.39100.40400.41700.86200.1341700 | Internal Plaster | 10d | 2026-04-20 | 2026-04-29 | 1229, 1243, 1244FF+5d |  | Zenith | 8662594 |
| 1246 | 36900.37000.37100.38000.39100.40400.41700.86200.1341800 | IPS flooring work | 10d | 2026-05-16 | 2026-05-26 | 1230FS+0.25d, 1245FS+5d |  | Zenith | 8662604 |
| 1247 | 36900.37000.37100.38000.39100.40400.41700.86200.1341900 | Toilet dado work | 6d | 2026-04-30 | 2026-05-05 | 1231, 1244, 1245 |  | Zenith | 8662614 |
| 1248 | 36900.37000.37100.38000.39100.40400.41700.86200.1342000 | Toilet flooring work | 7d | 2026-05-06 | 2026-05-12 | 1232, 1247 |  | Zenith | 8662624 |
| 1249 | 36900.37000.37100.38000.39100.40400.41700.86200.1342100 | False Cieling panel fixing | 7d | 2026-05-13 | 2026-05-19 | 1233, 1248 |  | Zenith | 8662634 |
| 1250 | 36900.37000.37100.38000.39100.40400.41700.86200.1342200 | Living dinning flooring | 7d | 2026-05-13 | 2026-05-19 | 1234, 1248 |  | Zenith | 8662644 |
| 1251 | 36900.37000.37100.38000.39100.40400.41700.86200.1342300 | Putty primer coat | 8d | 2026-08-17 | 2026-08-24 | 1235, 1250 |  | Zenith | 8662654 |
| 1252 | 36900.37000.37100.38000.39100.40400.41700.86200.1342400 | Aluminium door-window fixing | 12d | 2026-06-29 | 2026-07-10 | 1236, 1246, 1250 |  | Zenith | 8662664 |
| 1253 | 36900.37000.37100.38000.39100.40400.41700.86200.1342500 | Door shutter fixing (Pre Hung) | 8d | 2026-08-25 | 2026-09-02 | 1237, 1251 |  | Zenith | 8662674 |
| 1254 | 36900.37000.37100.38000.39100.40400.41700.86200.1342600 | Electrical wiring work | 10d | 2026-09-04 | 2026-09-14 | 1238, 1253 |  | Zenith | 8662684 |
| 1255 | 36900.37000.37100.38000.39100.40400.41700.86200.1342700 | Painting 1st coat | 12d | 2026-09-16 | 2026-09-28 | 1239, 1254 |  | Zenith | 8662694 |
| 1256 | 36900.37000.37100.38000.39100.40400.41700.86300 | **4th floor roof** | 171.25d | 2026-04-22 | 2026-10-10 |  | start no earlier than 2026-04-22 | Zenith | 8648814 |
| 1257 | 36900.37000.37100.38000.39100.40400.41700.86300.1342800 | Block Work | 10d | 2026-04-22 | 2026-05-01 | 1172FS+0.25d, 1241FS+7d |  | Zenith | 8662704 |
| 1258 | 36900.37000.37100.38000.39100.40400.41700.86300.1342900 | Fire sprinkler pipe fixing | 5d | 2026-05-02 | 2026-05-06 | 1242, 1257 |  | Zenith | 8662714 |
| 1259 | 36900.37000.37100.38000.39100.40400.41700.86300.1343000 | Internal Plumbing Works | 5d | 2026-05-02 | 2026-05-06 | 1243, 1257 |  | Zenith | 8662724 |
| 1260 | 36900.37000.37100.38000.39100.40400.41700.86300.1343100 | Waterproofing | 5d | 2026-05-07 | 2026-05-11 | 1244, 1259 |  | Zenith | 8662734 |
| 1261 | 36900.37000.37100.38000.39100.40400.41700.86300.1343200 | Internal Plaster | 10d | 2026-05-07 | 2026-05-16 | 1245, 1259, 1260FF+5d |  | Zenith | 8662744 |
| 1262 | 36900.37000.37100.38000.39100.40400.41700.86300.1343300 | IPS flooring work | 10d | 2026-05-26 | 2026-06-05 | 1246FS+0.25d, 1261FS+5d |  | Zenith | 8662754 |
| 1263 | 36900.37000.37100.38000.39100.40400.41700.86300.1343400 | Toilet dado work | 6d | 2026-05-17 | 2026-05-22 | 1247, 1260, 1261 |  | Zenith | 8662764 |
| 1264 | 36900.37000.37100.38000.39100.40400.41700.86300.1343500 | Toilet flooring work | 7d | 2026-05-23 | 2026-05-29 | 1248, 1263 |  | Zenith | 8662774 |
| 1265 | 36900.37000.37100.38000.39100.40400.41700.86300.1343600 | False Cieling panel fixing | 7d | 2026-05-30 | 2026-06-05 | 1249, 1264 |  | Zenith | 8662784 |
| 1266 | 36900.37000.37100.38000.39100.40400.41700.86300.1343700 | Living dinning flooring | 7d | 2026-05-30 | 2026-06-05 | 1250, 1264 |  | Zenith | 8662794 |
| 1267 | 36900.37000.37100.38000.39100.40400.41700.86300.1343800 | Putty primer coat | 8d | 2026-08-25 | 2026-09-01 | 1251, 1266 |  | Zenith | 8662804 |
| 1268 | 36900.37000.37100.38000.39100.40400.41700.86300.1343900 | Aluminium door-window fixing | 12d | 2026-07-11 | 2026-07-22 | 1252, 1262, 1266 |  | Zenith | 8662814 |
| 1269 | 36900.37000.37100.38000.39100.40400.41700.86300.1344000 | Door shutter fixing (Pre Hung) | 8d | 2026-09-02 | 2026-09-10 | 1253, 1267 |  | Zenith | 8662824 |
| 1270 | 36900.37000.37100.38000.39100.40400.41700.86300.1344100 | Electrical wiring work | 10d | 2026-09-14 | 2026-09-24 | 1254, 1269 |  | Zenith | 8662834 |
| 1271 | 36900.37000.37100.38000.39100.40400.41700.86300.1344200 | Painting 1st coat | 12d | 2026-09-28 | 2026-10-10 | 1255, 1270 |  | Zenith | 8662844 |

| ID | WBS | Task | Duration | Start | Finish | Predecessors | Constraint | Calendar | Unique_Task_ID |
| --- | --- | --- | --- | --- | --- | --- | --- | --- | --- |
| 1272 | 36900.37000.37100.38000.39100.40400.41700.86400 | **5th floor roof** | 166.25d | 2026-05-09 | 2026-10-22 |  | start no earlier than 2026-05-09 | Zenith | 8648824 |
| 1273 | 36900.37000.37100.38000.39100.40400.41700.86400.1344300 | Block Work | 10d | 2026-05-09 | 2026-05-18 | 1173FS+0.25d, 1257FS+7d |  | Zenith | 8662854 |
| 1274 | 36900.37000.37100.38000.39100.40400.41700.86400.1344400 | Fire sprinkler pipe fixing | 5d | 2026-05-19 | 2026-05-23 | 1258, 1273 |  | Zenith | 8662864 |
| 1275 | 36900.37000.37100.38000.39100.40400.41700.86400.1344500 | Internal Plumbing Works | 5d | 2026-05-19 | 2026-05-23 | 1259, 1273 |  | Zenith | 8662874 |
| 1276 | 36900.37000.37100.38000.39100.40400.41700.86400.1344600 | Waterproofing | 5d | 2026-05-24 | 2026-05-28 | 1260, 1275 |  | Zenith | 8662884 |
| 1277 | 36900.37000.37100.38000.39100.40400.41700.86400.1344700 | Internal Plaster | 10d | 2026-05-24 | 2026-06-02 | 1261, 1275, 1276FF+5d |  | Zenith | 8662894 |
| 1278 | 36900.37000.37100.38000.39100.40400.41700.86400.1344800 | IPS flooring work | 10d | 2026-06-08 | 2026-06-17 | 1262FS+0.25d, 1277FS+5d |  | Zenith | 8662904 |
| 1279 | 36900.37000.37100.38000.39100.40400.41700.86400.1344900 | Toilet dado work | 6d | 2026-06-03 | 2026-06-08 | 1263, 1276, 1277 |  | Zenith | 8662914 |
| 1280 | 36900.37000.37100.38000.39100.40400.41700.86400.1345000 | Toilet flooring work | 7d | 2026-06-09 | 2026-06-15 | 1264, 1279 |  | Zenith | 8662924 |
| 1281 | 36900.37000.37100.38000.39100.40400.41700.86400.1345100 | False Cieling panel fixing | 7d | 2026-06-16 | 2026-06-22 | 1265, 1280 |  | Zenith | 8662934 |
| 1282 | 36900.37000.37100.38000.39100.40400.41700.86400.1345200 | Living dinning flooring | 7d | 2026-06-16 | 2026-06-22 | 1266, 1280 |  | Zenith | 8662944 |
| 1283 | 36900.37000.37100.38000.39100.40400.41700.86400.1345300 | Putty primer coat | 8d | 2026-09-02 | 2026-09-09 | 1267, 1282 |  | Zenith | 8662954 |
| 1284 | 36900.37000.37100.38000.39100.40400.41700.86400.1345400 | Aluminium door-window fixing | 12d | 2026-07-23 | 2026-08-03 | 1268, 1278, 1282 |  | Zenith | 8662964 |
| 1285 | 36900.37000.37100.38000.39100.40400.41700.86400.1345500 | Door shutter fixing (Pre Hung) | 8d | 2026-09-10 | 2026-09-18 | 1269, 1283 |  | Zenith | 8662974 |
| 1286 | 36900.37000.37100.38000.39100.40400.41700.86400.1345600 | Electrical wiring work | 10d | 2026-09-24 | 2026-10-04 | 1270, 1285 |  | Zenith | 8662984 |
| 1287 | 36900.37000.37100.38000.39100.40400.41700.86400.1345700 | Painting 1st coat | 12d | 2026-10-10 | 2026-10-22 | 1271, 1286 |  | Zenith | 8662994 |
| 1288 | 36900.37000.37100.38000.39100.40400.41700.86500 | **6th floor roof** | 161.25d | 2026-05-26 | 2026-12-18 |  | start no earlier than 2026-05-26 | Zenith | 8648834 |
| 1289 | 36900.37000.37100.38000.39100.40400.41700.86500.1345800 | Block Work | 10d | 2026-05-26 | 2026-06-04 | 1174FS+0.25d, 1273FS+7d |  | Zenith | 8663004 |
| 1290 | 36900.37000.37100.38000.39100.40400.41700.86500.1345900 | Fire sprinkler pipe fixing | 5d | 2026-06-05 | 2026-06-09 | 1274, 1289 |  | Zenith | 8663014 |
| 1291 | 36900.37000.37100.38000.39100.40400.41700.86500.1346000 | Internal Plumbing Works | 5d | 2026-06-05 | 2026-06-09 | 1275, 1289 |  | Zenith | 8663024 |
| 1292 | 36900.37000.37100.38000.39100.40400.41700.86500.1346100 | Waterproofing | 5d | 2026-06-10 | 2026-06-14 | 1276, 1291 |  | Zenith | 8663034 |
| 1293 | 36900.37000.37100.38000.39100.40400.41700.86500.1346200 | Internal Plaster | 11d | 2026-06-10 | 2026-06-20 | 1277, 1291, 1292FF+5d |  | Zenith | 8663044 |
| 1294 | 36900.37000.37100.38000.39100.40400.41700.86500.1346300 | IPS flooring work | 10d | 2026-06-21 | 2026-06-30 | 1278, 1293 |  | Zenith | 8663054 |
| 1295 | 36900.37000.37100.38000.39100.40400.41700.86500.1346400 | Toilet dado work | 6d | 2026-06-21 | 2026-06-26 | 1279, 1292, 1293 |  | Zenith | 8663064 |
| 1296 | 36900.37000.37100.38000.39100.40400.41700.86500.1346500 | Toilet flooring work | 7d | 2026-06-27 | 2026-07-03 | 1280, 1295 |  | Zenith | 8663074 |
| 1297 | 36900.37000.37100.38000.39100.40400.41700.86500.1346600 | False Cieling panel fixing | 7d | 2026-07-04 | 2026-07-10 | 1281, 1296 |  | Zenith | 8663084 |
| 1298 | 36900.37000.37100.38000.39100.40400.41700.86500.1346700 | Living dinning flooring | 7d | 2026-07-04 | 2026-07-10 | 1282, 1296 |  | Zenith | 8663094 |
| 1299 | 36900.37000.37100.38000.39100.40400.41700.86500.1346800 | Putty primer coat | 8d | 2026-09-10 | 2026-09-17 | 1283, 1298 |  | Zenith | 8663104 |
| 1300 | 36900.37000.37100.38000.39100.40400.41700.86500.1346900 | Aluminium door-window fixing | 12d | 2026-08-04 | 2026-08-15 | 1284, 1294, 1298 |  | Zenith | 8663114 |
| 1301 | 36900.37000.37100.38000.39100.40400.41700.86500.1347000 | Door shutter fixing (Pre Hung) | 8d | 2026-09-18 | 2026-09-26 | 1285, 1299 |  | Zenith | 8663124 |
| 1302 | 36900.37000.37100.38000.39100.40400.41700.86500.1347100 | Electrical wiring work | 10d | 2026-10-04 | 2026-10-14 | 1286, 1301 |  | Zenith | 8663134 |
| 1303 | 36900.37000.37100.38000.39100.40400.41700.86500.1347200 | Painting 1st coat | 12d | 2026-10-22 | 2026-12-18 | 1287, 1302 |  | Zenith | 8663144 |

| ID | WBS | Task | Duration | Start | Finish | Predecessors | Constraint | Calendar | Unique_Task_ID |
| --- | --- | --- | --- | --- | --- | --- | --- | --- | --- |
| 1304 | 36900.37000.37100.38000.39100.40400.41700.86600 | **7th floor roof** | 156.25d | 2026-06-12 | 2026-12-30 |  | start no earlier than 2026-06-12 | Zenith | 8648844 |
| 1305 | 36900.37000.37100.38000.39100.40400.41700.86600.1347300 | Block Work | 10d | 2026-06-12 | 2026-06-21 | 1175FS+0.25d, 1289FS+7d |  | Zenith | 8663154 |
| 1306 | 36900.37000.37100.38000.39100.40400.41700.86600.1347400 | Fire sprinkler pipe fixing | 5d | 2026-06-22 | 2026-06-26 | 1290, 1305 |  | Zenith | 8663164 |
| 1307 | 36900.37000.37100.38000.39100.40400.41700.86600.1347500 | Internal Plumbing Works | 5d | 2026-06-22 | 2026-06-26 | 1291, 1305 |  | Zenith | 8663174 |
| 1308 | 36900.37000.37100.38000.39100.40400.41700.86600.1347600 | Waterproofing | 5d | 2026-06-27 | 2026-07-01 | 1292, 1307 |  | Zenith | 8663184 |
| 1309 | 36900.37000.37100.38000.39100.40400.41700.86600.1347700 | Internal Plaster | 11d | 2026-06-27 | 2026-07-07 | 1293, 1307, 1308FF+5d |  | Zenith | 8663194 |
| 1310 | 36900.37000.37100.38000.39100.40400.41700.86600.1347800 | IPS flooring work | 10d | 2026-07-08 | 2026-07-17 | 1294, 1309 |  | Zenith | 8663204 |
| 1311 | 36900.37000.37100.38000.39100.40400.41700.86600.1347900 | Toilet dado work | 6d | 2026-07-08 | 2026-07-13 | 1295, 1308, 1309 |  | Zenith | 8663214 |
| 1312 | 36900.37000.37100.38000.39100.40400.41700.86600.1348000 | Toilet flooring work | 7d | 2026-07-14 | 2026-07-20 | 1296, 1311 |  | Zenith | 8663224 |
| 1313 | 36900.37000.37100.38000.39100.40400.41700.86600.1348100 | False Cieling panel fixing | 7d | 2026-07-21 | 2026-07-27 | 1297, 1312 |  | Zenith | 8663234 |
| 1314 | 36900.37000.37100.38000.39100.40400.41700.86600.1348200 | Living dinning flooring | 7d | 2026-07-21 | 2026-07-27 | 1298, 1312 |  | Zenith | 8663244 |
| 1315 | 36900.37000.37100.38000.39100.40400.41700.86600.1348300 | Putty primer coat | 8d | 2026-09-18 | 2026-09-25 | 1299, 1314 |  | Zenith | 8663254 |
| 1316 | 36900.37000.37100.38000.39100.40400.41700.86600.1348400 | Aluminium door-window fixing | 12d | 2026-08-16 | 2026-08-27 | 1300, 1310, 1314 |  | Zenith | 8663264 |
| 1317 | 36900.37000.37100.38000.39100.40400.41700.86600.1348500 | Door shutter fixing (Pre Hung) | 8d | 2026-09-26 | 2026-10-04 | 1301, 1315 |  | Zenith | 8663274 |
| 1318 | 36900.37000.37100.38000.39100.40400.41700.86600.1348600 | Electrical wiring work | 10d | 2026-10-14 | 2026-10-24 | 1302, 1317 |  | Zenith | 8663284 |
| 1319 | 36900.37000.37100.38000.39100.40400.41700.86600.1348700 | Painting 1st coat | 12d | 2026-12-18 | 2026-12-30 | 1303, 1318 |  | Zenith | 8663294 |
| 1320 | 36900.37000.37100.38000.39100.40400.41700.86700 | **8th floor roof** | 156.25d | 2026-06-24 | 2027-01-11 |  | start no earlier than 2026-06-24 | Zenith | 8648854 |
| 1321 | 36900.37000.37100.38000.39100.40400.41700.86700.1348800 | Block Work | 10d | 2026-06-24 | 2026-07-03 | 1176FS+0.25d, 1305FS+2d |  | Zenith | 8663304 |
| 1322 | 36900.37000.37100.38000.39100.40400.41700.86700.1348900 | Fire sprinkler pipe fixing | 5d | 2026-07-04 | 2026-07-08 | 1306, 1321 |  | Zenith | 8663314 |
| 1323 | 36900.37000.37100.38000.39100.40400.41700.86700.1349000 | Internal Plumbing Works | 5d | 2026-07-04 | 2026-07-08 | 1307, 1321 |  | Zenith | 8663324 |
| 1324 | 36900.37000.37100.38000.39100.40400.41700.86700.1349100 | Waterproofing | 5d | 2026-07-09 | 2026-07-13 | 1308, 1323 |  | Zenith | 8663334 |
| 1325 | 36900.37000.37100.38000.39100.40400.41700.86700.1349200 | Internal Plaster | 11d | 2026-07-09 | 2026-07-19 | 1309, 1323, 1324FF+5d |  | Zenith | 8663344 |
| 1326 | 36900.37000.37100.38000.39100.40400.41700.86700.1349300 | IPS flooring work | 10d | 2026-07-20 | 2026-07-29 | 1310, 1325 |  | Zenith | 8663354 |
| 1327 | 36900.37000.37100.38000.39100.40400.41700.86700.1349400 | Toilet dado work | 6d | 2026-07-20 | 2026-07-25 | 1311, 1324, 1325 |  | Zenith | 8663364 |
| 1328 | 36900.37000.37100.38000.39100.40400.41700.86700.1349500 | Toilet flooring work | 7d | 2026-07-26 | 2026-08-01 | 1312, 1327 |  | Zenith | 8663374 |
| 1329 | 36900.37000.37100.38000.39100.40400.41700.86700.1349600 | False Cieling panel fixing | 7d | 2026-08-02 | 2026-08-08 | 1313, 1328 |  | Zenith | 8663384 |
| 1330 | 36900.37000.37100.38000.39100.40400.41700.86700.1349700 | Living dinning flooring | 7d | 2026-08-02 | 2026-08-08 | 1314, 1328 |  | Zenith | 8663394 |
| 1331 | 36900.37000.37100.38000.39100.40400.41700.86700.1349800 | Putty primer coat | 8d | 2026-09-26 | 2026-10-03 | 1315, 1330 |  | Zenith | 8663404 |
| 1332 | 36900.37000.37100.38000.39100.40400.41700.86700.1349900 | Aluminium door-window fixing | 12d | 2026-08-28 | 2026-09-08 | 1316, 1326, 1330 |  | Zenith | 8663414 |
| 1333 | 36900.37000.37100.38000.39100.40400.41700.86700.1350000 | Door shutter fixing (Pre Hung) | 8d | 2026-10-04 | 2026-10-12 | 1317, 1331 |  | Zenith | 8663424 |
| 1334 | 36900.37000.37100.38000.39100.40400.41700.86700.1350100 | Electrical wiring work | 10d | 2026-10-24 | 2026-12-18 | 1318, 1333 |  | Zenith | 8663434 |
| 1335 | 36900.37000.37100.38000.39100.40400.41700.86700.1350200 | Painting 1st coat | 12d | 2026-12-30 | 2027-01-11 | 1319, 1334 |  | Zenith | 8663444 |

| ID | WBS | Task | Duration | Start | Finish | Predecessors | Constraint | Calendar | Unique_Task_ID |
| --- | --- | --- | --- | --- | --- | --- | --- | --- | --- |
| 1336 | 36900.37000.37100.38000.39100.40400.41700.86800 | **9th floor roof** | 157.25d | 2026-07-05 | 2027-01-23 |  | start no earlier than 2026-07-05 | Zenith | 8648864 |
| 1337 | 36900.37000.37100.38000.39100.40400.41700.86800.1350300 | Block Work | 10d | 2026-07-05 | 2026-07-14 | 1177FS+0.25d, 1321FS+1d |  | Zenith | 8663454 |
| 1338 | 36900.37000.37100.38000.39100.40400.41700.86800.1350400 | Fire sprinkler pipe fixing | 5d | 2026-07-15 | 2026-07-19 | 1322, 1337 |  | Zenith | 8663464 |
| 1339 | 36900.37000.37100.38000.39100.40400.41700.86800.1350500 | Internal Plumbing Works | 5d | 2026-07-15 | 2026-07-19 | 1323, 1337 |  | Zenith | 8663474 |
| 1340 | 36900.37000.37100.38000.39100.40400.41700.86800.1350600 | Waterproofing | 5d | 2026-07-20 | 2026-07-24 | 1324, 1339 |  | Zenith | 8663484 |
| 1341 | 36900.37000.37100.38000.39100.40400.41700.86800.1350700 | Internal Plaster | 11d | 2026-07-20 | 2026-07-30 | 1325, 1339, 1340FF+5d |  | Zenith | 8663494 |
| 1342 | 36900.37000.37100.38000.39100.40400.41700.86800.1350800 | IPS flooring work | 10d | 2026-07-31 | 2026-08-09 | 1326, 1341 |  | Zenith | 8663504 |
| 1343 | 36900.37000.37100.38000.39100.40400.41700.86800.1350900 | Toilet dado work | 6d | 2026-07-31 | 2026-08-05 | 1327, 1340, 1341 |  | Zenith | 8663514 |
| 1344 | 36900.37000.37100.38000.39100.40400.41700.86800.1351000 | Toilet flooring work | 7d | 2026-08-06 | 2026-08-12 | 1328, 1343 |  | Zenith | 8663524 |
| 1345 | 36900.37000.37100.38000.39100.40400.41700.86800.1351100 | False Cieling panel fixing | 7d | 2026-08-13 | 2026-08-19 | 1329, 1344 |  | Zenith | 8663534 |
| 1346 | 36900.37000.37100.38000.39100.40400.41700.86800.1351200 | Living dinning flooring | 7d | 2026-08-13 | 2026-08-19 | 1330, 1344 |  | Zenith | 8663544 |
| 1347 | 36900.37000.37100.38000.39100.40400.41700.86800.1351300 | Putty primer coat | 8d | 2026-10-04 | 2026-10-11 | 1331, 1346 |  | Zenith | 8663554 |
| 1348 | 36900.37000.37100.38000.39100.40400.41700.86800.1351400 | Aluminium door-window fixing | 12d | 2026-09-09 | 2026-09-20 | 1332, 1342, 1346 |  | Zenith | 8663564 |
| 1349 | 36900.37000.37100.38000.39100.40400.41700.86800.1351500 | Door shutter fixing (Pre Hung) | 8d | 2026-10-12 | 2026-10-20 | 1333, 1347 |  | Zenith | 8663574 |
| 1350 | 36900.37000.37100.38000.39100.40400.41700.86800.1351600 | Electrical wiring work | 10d | 2026-12-18 | 2026-12-28 | 1334, 1349 |  | Zenith | 8663584 |
| 1351 | 36900.37000.37100.38000.39100.40400.41700.86800.1351700 | Painting 1st coat | 12d | 2027-01-11 | 2027-01-23 | 1335, 1350 |  | Zenith | 8663594 |
| 1352 | 36900.37000.37100.38000.39100.40400.41700.86900 | **10th floor roof** | 158.25d | 2026-07-16 | 2027-02-04 |  | start no earlier than 2026-07-16 | Zenith | 8648874 |
| 1353 | 36900.37000.37100.38000.39100.40400.41700.86900.1351800 | Block Work | 10d | 2026-07-16 | 2026-07-25 | 1178FS+0.25d, 1337FS+1d |  | Zenith | 8663604 |
| 1354 | 36900.37000.37100.38000.39100.40400.41700.86900.1351900 | Fire sprinkler pipe fixing | 5d | 2026-07-26 | 2026-07-30 | 1338, 1353 |  | Zenith | 8663614 |
| 1355 | 36900.37000.37100.38000.39100.40400.41700.86900.1352000 | Internal Plumbing Works | 5d | 2026-07-26 | 2026-07-30 | 1339, 1353 |  | Zenith | 8663624 |
| 1356 | 36900.37000.37100.38000.39100.40400.41700.86900.1352100 | Waterproofing | 5d | 2026-07-31 | 2026-08-04 | 1340, 1355 |  | Zenith | 8663634 |
| 1357 | 36900.37000.37100.38000.39100.40400.41700.86900.1352200 | Internal Plaster | 11d | 2026-07-31 | 2026-08-10 | 1341, 1355, 1356FF+5d |  | Zenith | 8663644 |
| 1358 | 36900.37000.37100.38000.39100.40400.41700.86900.1352300 | IPS flooring work | 10d | 2026-09-10 | 2026-09-19 | 1342FS+0.25d, 1357FS+30d |  | Zenith | 8663654 |
| 1359 | 36900.37000.37100.38000.39100.40400.41700.86900.1352400 | Toilet dado work | 6d | 2026-08-11 | 2026-08-16 | 1343, 1356, 1357 |  | Zenith | 8663664 |
| 1360 | 36900.37000.37100.38000.39100.40400.41700.86900.1352500 | Toilet flooring work | 7d | 2026-08-17 | 2026-08-23 | 1344, 1359 |  | Zenith | 8663674 |
| 1361 | 36900.37000.37100.38000.39100.40400.41700.86900.1352600 | False Cieling panel fixing | 7d | 2026-08-24 | 2026-08-30 | 1345, 1360 |  | Zenith | 8663684 |
| 1362 | 36900.37000.37100.38000.39100.40400.41700.86900.1352700 | Living dinning flooring | 7d | 2026-08-24 | 2026-08-30 | 1346, 1360 |  | Zenith | 8663694 |
| 1363 | 36900.37000.37100.38000.39100.40400.41700.86900.1352800 | Putty primer coat | 8d | 2026-10-12 | 2026-10-19 | 1347, 1362 |  | Zenith | 8663704 |
| 1364 | 36900.37000.37100.38000.39100.40400.41700.86900.1352900 | Aluminium door-window fixing | 12d | 2026-09-21 | 2026-10-02 | 1348, 1358, 1362 |  | Zenith | 8663714 |
| 1365 | 36900.37000.37100.38000.39100.40400.41700.86900.1353000 | Door shutter fixing (Pre Hung) | 8d | 2026-10-20 | 2026-10-28 | 1349, 1363 |  | Zenith | 8663724 |
| 1366 | 36900.37000.37100.38000.39100.40400.41700.86900.1353100 | Electrical wiring work | 10d | 2026-12-28 | 2027-01-07 | 1350, 1365 |  | Zenith | 8663734 |
| 1367 | 36900.37000.37100.38000.39100.40400.41700.86900.1353200 | Painting 1st coat | 12d | 2027-01-23 | 2027-02-04 | 1351, 1366 |  | Zenith | 8663744 |

| ID | WBS | Task | Duration | Start | Finish | Predecessors | Constraint | Calendar | Unique_Task_ID |
| --- | --- | --- | --- | --- | --- | --- | --- | --- | --- |
| 1368 | 36900.37000.37100.38000.39100.40400.41700.87000 | **11th floor roof** | 159.25d | 2026-07-27 | 2027-02-16 |  | start no earlier than 2026-07-27 | Zenith | 8648884 |
| 1369 | 36900.37000.37100.38000.39100.40400.41700.87000.1353300 | Block Work | 10d | 2026-07-27 | 2026-08-05 | 1179FS+0.25d, 1353FS+1d |  | Zenith | 8663754 |
| 1370 | 36900.37000.37100.38000.39100.40400.41700.87000.1353400 | Fire sprinkler pipe fixing | 5d | 2026-08-06 | 2026-08-10 | 1354, 1369 |  | Zenith | 8663764 |
| 1371 | 36900.37000.37100.38000.39100.40400.41700.87000.1353500 | Internal Plumbing Works | 5d | 2026-08-06 | 2026-08-10 | 1355, 1369 |  | Zenith | 8663774 |
| 1372 | 36900.37000.37100.38000.39100.40400.41700.87000.1353600 | Waterproofing | 5d | 2026-08-11 | 2026-08-15 | 1356, 1371 |  | Zenith | 8663784 |
| 1373 | 36900.37000.37100.38000.39100.40400.41700.87000.1353700 | Internal Plaster | 11d | 2026-08-11 | 2026-08-21 | 1357, 1371, 1372FF+5d |  | Zenith | 8663794 |
| 1374 | 36900.37000.37100.38000.39100.40400.41700.87000.1353800 | IPS flooring work | 10d | 2026-09-20 | 2026-09-29 | 1358, 1373 |  | Zenith | 8663804 |
| 1375 | 36900.37000.37100.38000.39100.40400.41700.87000.1353900 | Toilet dado work | 6d | 2026-08-22 | 2026-08-27 | 1359, 1372, 1373 |  | Zenith | 8663814 |
| 1376 | 36900.37000.37100.38000.39100.40400.41700.87000.1354000 | Toilet flooring work | 7d | 2026-08-28 | 2026-09-03 | 1360, 1375 |  | Zenith | 8663824 |
| 1377 | 36900.37000.37100.38000.39100.40400.41700.87000.1354100 | False Cieling panel fixing | 7d | 2026-09-04 | 2026-09-10 | 1361, 1376 |  | Zenith | 8663834 |
| 1378 | 36900.37000.37100.38000.39100.40400.41700.87000.1354200 | Living dinning flooring | 7d | 2026-09-04 | 2026-09-10 | 1362, 1376 |  | Zenith | 8663844 |
| 1379 | 36900.37000.37100.38000.39100.40400.41700.87000.1354300 | Putty primer coat | 8d | 2026-10-20 | 2026-10-27 | 1363, 1378 |  | Zenith | 8663854 |
| 1380 | 36900.37000.37100.38000.39100.40400.41700.87000.1354400 | Aluminium door-window fixing | 12d | 2026-10-03 | 2026-10-14 | 1364, 1374, 1378 |  | Zenith | 8663864 |
| 1381 | 36900.37000.37100.38000.39100.40400.41700.87000.1354500 | Door shutter fixing (Pre Hung) | 8d | 2026-10-28 | 2026-12-20 | 1365, 1379 |  | Zenith | 8663874 |
| 1382 | 36900.37000.37100.38000.39100.40400.41700.87000.1354600 | Electrical wiring work | 10d | 2027-01-07 | 2027-01-17 | 1366, 1381 |  | Zenith | 8663884 |
| 1383 | 36900.37000.37100.38000.39100.40400.41700.87000.1354700 | Painting 1st coat | 12d | 2027-02-04 | 2027-02-16 | 1367, 1382 |  | Zenith | 8663894 |
| 1384 | 36900.37000.37100.38000.39100.40400.41700.87100 | **12th floor roof** | 160.25d | 2026-08-07 | 2027-02-28 |  | start no earlier than 2026-08-07 | Zenith | 8648894 |
| 1385 | 36900.37000.37100.38000.39100.40400.41700.87100.1354800 | Block Work | 10d | 2026-08-07 | 2026-08-16 | 1180FS+0.25d, 1369FS+1d |  | Zenith | 8663904 |
| 1386 | 36900.37000.37100.38000.39100.40400.41700.87100.1354900 | Fire sprinkler pipe fixing | 5d | 2026-08-17 | 2026-08-21 | 1370, 1385 |  | Zenith | 8663914 |
| 1387 | 36900.37000.37100.38000.39100.40400.41700.87100.1355000 | Internal Plumbing Works | 5d | 2026-08-17 | 2026-08-21 | 1371, 1385 |  | Zenith | 8663924 |
| 1388 | 36900.37000.37100.38000.39100.40400.41700.87100.1355100 | Waterproofing | 5d | 2026-08-22 | 2026-08-26 | 1372, 1387 |  | Zenith | 8663934 |
| 1389 | 36900.37000.37100.38000.39100.40400.41700.87100.1355200 | Internal Plaster | 11d | 2026-08-22 | 2026-09-01 | 1373, 1387, 1388FF+5d |  | Zenith | 8663944 |
| 1390 | 36900.37000.37100.38000.39100.40400.41700.87100.1355300 | IPS flooring work | 10d | 2026-09-30 | 2026-10-09 | 1374, 1389 |  | Zenith | 8663954 |
| 1391 | 36900.37000.37100.38000.39100.40400.41700.87100.1355400 | Toilet dado work | 6d | 2026-09-02 | 2026-09-07 | 1375, 1388, 1389 |  | Zenith | 8663964 |
| 1392 | 36900.37000.37100.38000.39100.40400.41700.87100.1355500 | Toilet flooring work | 7d | 2026-09-08 | 2026-09-14 | 1376, 1391 |  | Zenith | 8663974 |
| 1393 | 36900.37000.37100.38000.39100.40400.41700.87100.1355600 | False Cieling panel fixing | 7d | 2026-09-15 | 2026-09-21 | 1377, 1392 |  | Zenith | 8663984 |
| 1394 | 36900.37000.37100.38000.39100.40400.41700.87100.1355700 | Living dinning flooring | 7d | 2026-09-15 | 2026-09-21 | 1378, 1392 |  | Zenith | 8663994 |
| 1395 | 36900.37000.37100.38000.39100.40400.41700.87100.1355800 | Putty primer coat | 8d | 2026-10-28 | 2026-12-19 | 1379, 1394 |  | Zenith | 8664004 |
| 1396 | 36900.37000.37100.38000.39100.40400.41700.87100.1355900 | Aluminium door-window fixing | 12d | 2026-10-15 | 2026-10-26 | 1380, 1390, 1394 |  | Zenith | 8664014 |
| 1397 | 36900.37000.37100.38000.39100.40400.41700.87100.1356000 | Door shutter fixing (Pre Hung) | 8d | 2026-12-20 | 2026-12-28 | 1381, 1395 |  | Zenith | 8664024 |
| 1398 | 36900.37000.37100.38000.39100.40400.41700.87100.1356100 | Electrical wiring work | 10d | 2027-01-17 | 2027-01-27 | 1382, 1397 |  | Zenith | 8664034 |
| 1399 | 36900.37000.37100.38000.39100.40400.41700.87100.1356200 | Painting 1st coat | 12d | 2027-02-16 | 2027-02-28 | 1383, 1398 |  | Zenith | 8664044 |

| ID | WBS | Task | Duration | Start | Finish | Predecessors | Constraint | Calendar | Unique_Task_ID |
| --- | --- | --- | --- | --- | --- | --- | --- | --- | --- |
| 1400 | 36900.37000.37100.38000.39100.40400.41700.87200 | **13th floor roof** | 161.25d | 2026-08-18 | 2027-03-12 |  | start no earlier than 2026-08-18 | Zenith | 8648904 |
| 1401 | 36900.37000.37100.38000.39100.40400.41700.87200.1356300 | Block Work | 10d | 2026-08-18 | 2026-08-27 | 1181FS+0.25d, 1385FS+1d |  | Zenith | 8664054 |
| 1402 | 36900.37000.37100.38000.39100.40400.41700.87200.1356400 | Fire sprinkler pipe fixing | 5d | 2026-08-28 | 2026-09-01 | 1386, 1401 |  | Zenith | 8664064 |
| 1403 | 36900.37000.37100.38000.39100.40400.41700.87200.1356500 | Internal Plumbing Works | 5d | 2026-08-28 | 2026-09-01 | 1387, 1401 |  | Zenith | 8664074 |
| 1404 | 36900.37000.37100.38000.39100.40400.41700.87200.1356600 | Waterproofing | 5d | 2026-09-02 | 2026-09-06 | 1388, 1403 |  | Zenith | 8664084 |
| 1405 | 36900.37000.37100.38000.39100.40400.41700.87200.1356700 | Internal Plaster | 11d | 2026-09-02 | 2026-09-12 | 1389, 1403, 1404FF+5d |  | Zenith | 8664094 |
| 1406 | 36900.37000.37100.38000.39100.40400.41700.87200.1356800 | IPS flooring work | 10d | 2026-10-10 | 2026-10-19 | 1390, 1405 |  | Zenith | 8664104 |
| 1407 | 36900.37000.37100.38000.39100.40400.41700.87200.1356900 | Toilet dado work | 6d | 2026-09-13 | 2026-09-18 | 1391, 1404, 1405 |  | Zenith | 8664114 |
| 1408 | 36900.37000.37100.38000.39100.40400.41700.87200.1357000 | Toilet flooring work | 7d | 2026-09-19 | 2026-09-25 | 1392, 1407 |  | Zenith | 8664124 |
| 1409 | 36900.37000.37100.38000.39100.40400.41700.87200.1357100 | False Cieling panel fixing | 7d | 2026-09-26 | 2026-10-02 | 1393, 1408 |  | Zenith | 8664134 |
| 1410 | 36900.37000.37100.38000.39100.40400.41700.87200.1357200 | Living dinning flooring | 7d | 2026-09-26 | 2026-10-02 | 1394, 1408 |  | Zenith | 8664144 |
| 1411 | 36900.37000.37100.38000.39100.40400.41700.87200.1357300 | Putty primer coat | 8d | 2026-12-20 | 2026-12-27 | 1395, 1410 |  | Zenith | 8664154 |
| 1412 | 36900.37000.37100.38000.39100.40400.41700.87200.1357400 | Aluminium door-window fixing | 12d | 2026-10-27 | 2026-12-22 | 1396, 1406, 1410 |  | Zenith | 8664164 |
| 1413 | 36900.37000.37100.38000.39100.40400.41700.87200.1357500 | Door shutter fixing (Pre Hung) | 8d | 2026-12-28 | 2027-01-05 | 1397, 1411 |  | Zenith | 8664174 |
| 1414 | 36900.37000.37100.38000.39100.40400.41700.87200.1357600 | Electrical wiring work | 10d | 2027-01-27 | 2027-02-06 | 1398, 1413 |  | Zenith | 8664184 |
| 1415 | 36900.37000.37100.38000.39100.40400.41700.87200.1357700 | Painting 1st coat | 12d | 2027-02-28 | 2027-03-12 | 1399, 1414 |  | Zenith | 8664194 |
| 1416 | 36900.37000.37100.38000.39100.40400.41700.87300 | **14th floor roof** | 162.25d | 2026-08-29 | 2027-03-24 |  | start no earlier than 2026-08-29 | Zenith | 8648914 |
| 1417 | 36900.37000.37100.38000.39100.40400.41700.87300.1357800 | Block Work | 10d | 2026-08-29 | 2026-09-07 | 1182FS+0.25d, 1401FS+1d |  | Zenith | 8664204 |
| 1418 | 36900.37000.37100.38000.39100.40400.41700.87300.1357900 | Fire sprinkler pipe fixing | 5d | 2026-09-08 | 2026-09-12 | 1402, 1417 |  | Zenith | 8664214 |
| 1419 | 36900.37000.37100.38000.39100.40400.41700.87300.1358000 | Internal Plumbing Works | 5d | 2026-09-08 | 2026-09-12 | 1403, 1417 |  | Zenith | 8664224 |
| 1420 | 36900.37000.37100.38000.39100.40400.41700.87300.1358100 | Waterproofing | 5d | 2026-09-13 | 2026-09-17 | 1404, 1419 |  | Zenith | 8664234 |
| 1421 | 36900.37000.37100.38000.39100.40400.41700.87300.1358200 | Internal Plaster | 11d | 2026-09-13 | 2026-09-23 | 1405, 1419, 1420FF+5d |  | Zenith | 8664244 |
| 1422 | 36900.37000.37100.38000.39100.40400.41700.87300.1358300 | IPS flooring work | 10d | 2026-10-20 | 2026-10-29 | 1406, 1421 |  | Zenith | 8664254 |
| 1423 | 36900.37000.37100.38000.39100.40400.41700.87300.1358400 | Toilet dado work | 6d | 2026-09-24 | 2026-09-29 | 1407, 1420, 1421 |  | Zenith | 8664264 |
| 1424 | 36900.37000.37100.38000.39100.40400.41700.87300.1358500 | Toilet flooring work | 7d | 2026-09-30 | 2026-10-06 | 1408, 1423 |  | Zenith | 8664274 |
| 1425 | 36900.37000.37100.38000.39100.40400.41700.87300.1358600 | False Cieling panel fixing | 7d | 2026-10-07 | 2026-10-13 | 1409, 1424 |  | Zenith | 8664284 |
| 1426 | 36900.37000.37100.38000.39100.40400.41700.87300.1358700 | Living dinning flooring | 7d | 2026-10-07 | 2026-10-13 | 1410, 1424 |  | Zenith | 8664294 |
| 1427 | 36900.37000.37100.38000.39100.40400.41700.87300.1358800 | Putty primer coat | 8d | 2026-12-28 | 2027-01-04 | 1411, 1426 |  | Zenith | 8664304 |
| 1428 | 36900.37000.37100.38000.39100.40400.41700.87300.1358900 | Aluminium door-window fixing | 12d | 2026-12-23 | 2027-01-03 | 1412, 1422, 1426 |  | Zenith | 8664314 |
| 1429 | 36900.37000.37100.38000.39100.40400.41700.87300.1359000 | Door shutter fixing (Pre Hung) | 8d | 2027-01-05 | 2027-01-13 | 1413, 1427 |  | Zenith | 8664324 |
| 1430 | 36900.37000.37100.38000.39100.40400.41700.87300.1359100 | Electrical wiring work | 10d | 2027-02-06 | 2027-02-16 | 1414, 1429 |  | Zenith | 8664334 |
| 1431 | 36900.37000.37100.38000.39100.40400.41700.87300.1359200 | Painting 1st coat | 12d | 2027-03-12 | 2027-03-24 | 1415, 1430 |  | Zenith | 8664344 |

| ID | WBS | Task | Duration | Start | Finish | Predecessors | Constraint | Calendar | Unique_Task_ID |
| --- | --- | --- | --- | --- | --- | --- | --- | --- | --- |
| 1432 | 36900.37000.37100.38000.39100.40400.41700.87400 | **15th floor roof** | 163.25d | 2026-09-09 | 2027-04-05 |  | start no earlier than 2026-09-09 | Zenith | 8648924 |
| 1433 | 36900.37000.37100.38000.39100.40400.41700.87400.1359300 | Block Work | 10d | 2026-09-09 | 2026-09-18 | 1183FS+0.25d, 1417FS+1d |  | Zenith | 8664354 |
| 1434 | 36900.37000.37100.38000.39100.40400.41700.87400.1359400 | Fire sprinkler pipe fixing | 5d | 2026-09-19 | 2026-09-23 | 1418, 1433 |  | Zenith | 8664364 |
| 1435 | 36900.37000.37100.38000.39100.40400.41700.87400.1359500 | Internal Plumbing Works | 5d | 2026-09-19 | 2026-09-23 | 1419, 1433 |  | Zenith | 8664374 |
| 1436 | 36900.37000.37100.38000.39100.40400.41700.87400.1359600 | Waterproofing | 5d | 2026-09-24 | 2026-09-28 | 1420, 1435 |  | Zenith | 8664384 |
| 1437 | 36900.37000.37100.38000.39100.40400.41700.87400.1359700 | Internal Plaster | 11d | 2026-09-24 | 2026-10-04 | 1421, 1435, 1436FF+5d |  | Zenith | 8664394 |
| 1438 | 36900.37000.37100.38000.39100.40400.41700.87400.1359800 | IPS flooring work | 10d | 2026-10-30 | 2026-12-23 | 1422, 1437 |  | Zenith | 8664404 |
| 1439 | 36900.37000.37100.38000.39100.40400.41700.87400.1359900 | Toilet dado work | 6d | 2026-10-05 | 2026-10-10 | 1423, 1436, 1437 |  | Zenith | 8664414 |
| 1440 | 36900.37000.37100.38000.39100.40400.41700.87400.1360000 | Toilet flooring work | 7d | 2026-10-11 | 2026-10-17 | 1424, 1439 |  | Zenith | 8664424 |
| 1441 | 36900.37000.37100.38000.39100.40400.41700.87400.1360100 | False Cieling panel fixing | 7d | 2026-10-18 | 2026-10-24 | 1425, 1440 |  | Zenith | 8664434 |
| 1442 | 36900.37000.37100.38000.39100.40400.41700.87400.1360200 | Living dinning flooring | 7d | 2026-10-18 | 2026-10-24 | 1426, 1440 |  | Zenith | 8664444 |
| 1443 | 36900.37000.37100.38000.39100.40400.41700.87400.1360300 | Aluminium door-window fixing | 8d | 2027-01-04 | 2027-01-11 | 1428, 1438, 1442 |  | Zenith | 8664454 |
| 1444 | 36900.37000.37100.38000.39100.40400.41700.87400.1360400 | Putty primer coat | 12d | 2027-01-05 | 2027-01-16 | 1427, 1442 |  | Zenith | 8664464 |
| 1445 | 36900.37000.37100.38000.39100.40400.41700.87400.1360500 | Door shutter fixing (Pre Hung) | 8d | 2027-01-17 | 2027-01-24 | 1429, 1444 |  | Zenith | 8664474 |
| 1446 | 36900.37000.37100.38000.39100.40400.41700.87400.1360600 | Electrical wiring work | 10d | 2027-02-16 | 2027-02-26 | 1430, 1445 |  | Zenith | 8664484 |
| 1447 | 36900.37000.37100.38000.39100.40400.41700.87400.1360700 | Painting 1st coat | 12d | 2027-03-24 | 2027-04-05 | 1431, 1446 |  | Zenith | 8664494 |
| 1448 | 36900.37000.37100.38000.39100.40400.41700.87500 | **16th floor roof** | 165.25d | 2026-09-19 | 2027-04-17 |  | start no earlier than 2026-09-19 | Zenith | 8648934 |
| 1449 | 36900.37000.37100.38000.39100.40400.41700.87500.1360800 | Block Work | 10d | 2026-09-19 | 2026-09-28 | 1184, 1433 |  | Zenith | 8664504 |
| 1450 | 36900.37000.37100.38000.39100.40400.41700.87500.1360900 | Fire sprinkler pipe fixing | 5d | 2026-09-29 | 2026-10-03 | 1434, 1449 |  | Zenith | 8664514 |
| 1451 | 36900.37000.37100.38000.39100.40400.41700.87500.1361000 | Internal Plumbing Works | 5d | 2026-09-29 | 2026-10-03 | 1435, 1449 |  | Zenith | 8664524 |
| 1452 | 36900.37000.37100.38000.39100.40400.41700.87500.1361100 | Waterproofing | 5d | 2026-10-04 | 2026-10-08 | 1436, 1451 |  | Zenith | 8664534 |
| 1453 | 36900.37000.37100.38000.39100.40400.41700.87500.1361200 | Internal Plaster | 11d | 2026-10-05 | 2026-10-15 | 1437, 1451, 1452FF+5d |  | Zenith | 8664544 |
| 1454 | 36900.37000.37100.38000.39100.40400.41700.87500.1361300 | IPS flooring work | 10d | 2026-12-24 | 2027-01-02 | 1438, 1453 |  | Zenith | 8664554 |
| 1455 | 36900.37000.37100.38000.39100.40400.41700.87500.1361400 | Toilet dado work | 6d | 2026-10-16 | 2026-10-21 | 1439, 1452, 1453 |  | Zenith | 8664564 |
| 1456 | 36900.37000.37100.38000.39100.40400.41700.87500.1361500 | Toilet flooring work | 7d | 2026-10-22 | 2026-10-28 | 1440, 1455 |  | Zenith | 8664574 |
| 1457 | 36900.37000.37100.38000.39100.40400.41700.87500.1361600 | False Cieling panel fixing | 7d | 2026-10-29 | 2026-12-19 | 1441, 1456 |  | Zenith | 8664584 |
| 1458 | 36900.37000.37100.38000.39100.40400.41700.87500.1361700 | Living dinning flooring | 7d | 2026-10-29 | 2026-12-19 | 1442, 1456 |  | Zenith | 8664594 |
| 1459 | 36900.37000.37100.38000.39100.40400.41700.87500.1361800 | Putty primer coat | 8d | 2027-01-17 | 2027-01-24 | 1444, 1458 |  | Zenith | 8664604 |
| 1460 | 36900.37000.37100.38000.39100.40400.41700.87500.1361900 | Aluminium door-window fixing | 12d | 2027-01-12 | 2027-01-23 | 1443, 1454, 1458 |  | Zenith | 8664614 |
| 1461 | 36900.37000.37100.38000.39100.40400.41700.87500.1362000 | Door shutter fixing (Pre Hung) | 8d | 2027-01-25 | 2027-02-01 | 1445, 1459 |  | Zenith | 8664624 |
| 1462 | 36900.37000.37100.38000.39100.40400.41700.87500.1362100 | Electrical wiring work | 10d | 2027-02-26 | 2027-03-08 | 1446, 1461 |  | Zenith | 8664634 |
| 1463 | 36900.37000.37100.38000.39100.40400.41700.87500.1362200 | Painting 1st coat | 12d | 2027-04-05 | 2027-04-17 | 1447, 1462 |  | Zenith | 8664644 |

| ID | WBS | Task | Duration | Start | Finish | Predecessors | Constraint | Calendar | Unique_Task_ID |
| --- | --- | --- | --- | --- | --- | --- | --- | --- | --- |
| 1464 | 36900.37000.37100.38000.39100.40400.41700.87600 | **17th floor roof** | 167.25d | 2026-09-29 | 2027-04-29 |  | start no earlier than 2026-09-29 | Zenith | 8648944 |
| 1465 | 36900.37000.37100.38000.39100.40400.41700.87600.1362300 | Block Work | 10d | 2026-09-29 | 2026-10-08 | 1185, 1449 |  | Zenith | 8664654 |
| 1466 | 36900.37000.37100.38000.39100.40400.41700.87600.1362400 | Fire sprinkler pipe fixing | 5d | 2026-10-09 | 2026-10-13 | 1450, 1465 |  | Zenith | 8664664 |
| 1467 | 36900.37000.37100.38000.39100.40400.41700.87600.1362500 | Internal Plumbing Works | 5d | 2026-10-09 | 2026-10-13 | 1451, 1465 |  | Zenith | 8664674 |
| 1468 | 36900.37000.37100.38000.39100.40400.41700.87600.1362600 | Waterproofing | 5d | 2026-10-14 | 2026-10-18 | 1452, 1467 |  | Zenith | 8664684 |
| 1469 | 36900.37000.37100.38000.39100.40400.41700.87600.1362700 | Internal Plaster | 11d | 2026-10-16 | 2026-10-26 | 1453, 1467, 1468FF+5d |  | Zenith | 8664694 |
| 1470 | 36900.37000.37100.38000.39100.40400.41700.87600.1362800 | IPS flooring work | 10d | 2027-01-03 | 2027-01-12 | 1454, 1469 |  | Zenith | 8664704 |
| 1471 | 36900.37000.37100.38000.39100.40400.41700.87600.1362900 | Toilet dado work | 6d | 2026-10-27 | 2026-12-16 | 1455, 1468, 1469 |  | Zenith | 8664714 |
| 1472 | 36900.37000.37100.38000.39100.40400.41700.87600.1363000 | Toilet flooring work | 7d | 2026-12-17 | 2026-12-23 | 1456, 1471 |  | Zenith | 8664724 |
| 1473 | 36900.37000.37100.38000.39100.40400.41700.87600.1363100 | False Cieling panel fixing | 7d | 2026-12-24 | 2026-12-30 | 1457, 1472 |  | Zenith | 8664734 |
| 1474 | 36900.37000.37100.38000.39100.40400.41700.87600.1363200 | Living dinning flooring | 7d | 2026-12-24 | 2026-12-30 | 1458, 1472 |  | Zenith | 8664744 |
| 1475 | 36900.37000.37100.38000.39100.40400.41700.87600.1363300 | Putty primer coat | 8d | 2027-01-25 | 2027-02-01 | 1459, 1474 |  | Zenith | 8664754 |
| 1476 | 36900.37000.37100.38000.39100.40400.41700.87600.1363400 | Aluminium door-window fixing | 12d | 2027-01-24 | 2027-02-04 | 1460, 1470, 1474 |  | Zenith | 8664764 |
| 1477 | 36900.37000.37100.38000.39100.40400.41700.87600.1363500 | Door shutter fixing (Pre Hung) | 8d | 2027-02-02 | 2027-02-09 | 1461, 1475 |  | Zenith | 8664774 |
| 1478 | 36900.37000.37100.38000.39100.40400.41700.87600.1363600 | Electrical wiring work | 10d | 2027-03-08 | 2027-03-18 | 1462, 1477 |  | Zenith | 8664784 |
| 1479 | 36900.37000.37100.38000.39100.40400.41700.87600.1363700 | Painting 1st coat | 12d | 2027-04-17 | 2027-04-29 | 1463, 1478 |  | Zenith | 8664794 |
| 1480 | 36900.37000.37100.38000.39100.40400.41700.87700 | **18th floor roof** | 169.25d | 2026-10-09 | 2027-05-11 |  | start no earlier than 2026-10-09 | Zenith | 8648954 |
| 1481 | 36900.37000.37100.38000.39100.40400.41700.87700.1363800 | Block Work | 10d | 2026-10-09 | 2026-10-18 | 1186, 1465 |  | Zenith | 8664804 |
| 1482 | 36900.37000.37100.38000.39100.40400.41700.87700.1363900 | Fire sprinkler pipe fixing | 5d | 2026-10-19 | 2026-10-23 | 1466, 1481 |  | Zenith | 8664814 |
| 1483 | 36900.37000.37100.38000.39100.40400.41700.87700.1364000 | Internal Plumbing Works | 5d | 2026-10-19 | 2026-10-23 | 1467, 1481 |  | Zenith | 8664824 |
| 1484 | 36900.37000.37100.38000.39100.40400.41700.87700.1364100 | Waterproofing | 5d | 2026-10-24 | 2026-10-28 | 1468, 1483 |  | Zenith | 8664834 |
| 1485 | 36900.37000.37100.38000.39100.40400.41700.87700.1364200 | Internal Plaster | 11d | 2026-10-27 | 2026-12-21 | 1469, 1483, 1484FF+5d |  | Zenith | 8664844 |
| 1486 | 36900.37000.37100.38000.39100.40400.41700.87700.1364300 | IPS flooring work | 10d | 2027-01-13 | 2027-01-22 | 1470, 1485 |  | Zenith | 8664854 |
| 1487 | 36900.37000.37100.38000.39100.40400.41700.87700.1364400 | Toilet dado work | 6d | 2026-12-22 | 2026-12-27 | 1471, 1484, 1485 |  | Zenith | 8664864 |
| 1488 | 36900.37000.37100.38000.39100.40400.41700.87700.1364500 | Toilet flooring work | 7d | 2026-12-28 | 2027-01-03 | 1472, 1487 |  | Zenith | 8664874 |
| 1489 | 36900.37000.37100.38000.39100.40400.41700.87700.1364600 | False Cieling panel fixing | 7d | 2027-01-04 | 2027-01-10 | 1473, 1488 |  | Zenith | 8664884 |
| 1490 | 36900.37000.37100.38000.39100.40400.41700.87700.1364700 | Living dinning flooring | 7d | 2027-01-04 | 2027-01-10 | 1474, 1488 |  | Zenith | 8664894 |
| 1491 | 36900.37000.37100.38000.39100.40400.41700.87700.1364800 | Putty primer coat | 8d | 2027-02-02 | 2027-02-09 | 1475, 1490 |  | Zenith | 8664904 |
| 1492 | 36900.37000.37100.38000.39100.40400.41700.87700.1364900 | Aluminium door-window fixing | 12d | 2027-02-05 | 2027-02-16 | 1476, 1486, 1490 |  | Zenith | 8664914 |
| 1493 | 36900.37000.37100.38000.39100.40400.41700.87700.1365000 | Door shutter fixing (Pre Hung) | 8d | 2027-02-10 | 2027-02-17 | 1477, 1491 |  | Zenith | 8664924 |
| 1494 | 36900.37000.37100.38000.39100.40400.41700.87700.1365100 | Electrical wiring work | 10d | 2027-03-18 | 2027-03-28 | 1478, 1493 |  | Zenith | 8664934 |
| 1495 | 36900.37000.37100.38000.39100.40400.41700.87700.1365200 | Painting 1st coat | 12d | 2027-04-29 | 2027-05-11 | 1479, 1494 |  | Zenith | 8664944 |

| ID | WBS | Task | Duration | Start | Finish | Predecessors | Constraint | Calendar | Unique_Task_ID |
| --- | --- | --- | --- | --- | --- | --- | --- | --- | --- |
| 1496 | 36900.37000.37100.38000.39100.40400.41700.87800 | **19th floor roof** | 171.25d | 2026-10-19 | 2027-05-23 |  | start no earlier than 2026-10-19 | Zenith | 8648964 |
| 1497 | 36900.37000.37100.38000.39100.40400.41700.87800.1365300 | Block Work | 10d | 2026-10-19 | 2026-10-28 | 1187, 1481 |  | Zenith | 8664954 |
| 1498 | 36900.37000.37100.38000.39100.40400.41700.87800.1365400 | Fire sprinkler pipe fixing | 4d | 2026-10-29 | 2026-12-16 | 1482, 1497 |  | Zenith | 8664964 |
| 1499 | 36900.37000.37100.38000.39100.40400.41700.87800.1365500 | Internal Plumbing Works | 4d | 2026-10-29 | 2026-12-16 | 1483, 1497 |  | Zenith | 8664974 |
| 1500 | 36900.37000.37100.38000.39100.40400.41700.87800.1365600 | Waterproofing | 4d | 2026-12-17 | 2026-12-20 | 1484, 1499 |  | Zenith | 8664984 |
| 1501 | 36900.37000.37100.38000.39100.40400.41700.87800.1365700 | Internal Plaster | 11d | 2026-12-22 | 2027-01-01 | 1485, 1499, 1500FF+5d |  | Zenith | 8664994 |
| 1502 | 36900.37000.37100.38000.39100.40400.41700.87800.1365800 | IPS flooring work | 10d | 2027-02-01 | 2027-02-10 | 1486FS+0.25d, 1501FS+30d |  | Zenith | 8665004 |
| 1503 | 36900.37000.37100.38000.39100.40400.41700.87800.1365900 | Toilet dado work | 6d | 2027-01-02 | 2027-01-07 | 1487, 1500, 1501 |  | Zenith | 8665014 |
| 1504 | 36900.37000.37100.38000.39100.40400.41700.87800.1366000 | Toilet flooring work | 7d | 2027-01-08 | 2027-01-14 | 1488, 1503 |  | Zenith | 8665024 |
| 1505 | 36900.37000.37100.38000.39100.40400.41700.87800.1366100 | False Cieling panel fixing | 7d | 2027-01-15 | 2027-01-21 | 1489, 1504 |  | Zenith | 8665034 |
| 1506 | 36900.37000.37100.38000.39100.40400.41700.87800.1366200 | Living dinning flooring | 7d | 2027-01-15 | 2027-01-21 | 1490, 1504 |  | Zenith | 8665044 |
| 1507 | 36900.37000.37100.38000.39100.40400.41700.87800.1366300 | Putty primer coat | 8d | 2027-02-10 | 2027-02-17 | 1491, 1506 |  | Zenith | 8665054 |
| 1508 | 36900.37000.37100.38000.39100.40400.41700.87800.1366400 | Aluminium door-window fixing | 12d | 2027-02-17 | 2027-02-28 | 1492, 1502, 1506 |  | Zenith | 8665064 |
| 1509 | 36900.37000.37100.38000.39100.40400.41700.87800.1366500 | Door shutter fixing (Pre Hung) | 8d | 2027-02-18 | 2027-02-25 | 1493, 1507 |  | Zenith | 8665074 |
| 1510 | 36900.37000.37100.38000.39100.40400.41700.87800.1366600 | Electrical wiring work | 10d | 2027-03-28 | 2027-04-07 | 1494, 1509 |  | Zenith | 8665084 |
| 1511 | 36900.37000.37100.38000.39100.40400.41700.87800.1366700 | Painting 1st coat | 12d | 2027-05-11 | 2027-05-23 | 1495, 1510 |  | Zenith | 8665094 |
| 1512 | 36900.37000.37100.38000.39100.40400.41700.87900 | **20th floor roof** | 173.25d | 2026-10-29 | 2027-06-04 |  | start no earlier than 2026-10-29 | Zenith | 8648974 |
| 1513 | 36900.37000.37100.38000.39100.40400.41700.87900.1366800 | Block Work | 10d | 2026-10-29 | 2026-12-22 | 1188, 1497 |  | Zenith | 8665104 |
| 1514 | 36900.37000.37100.38000.39100.40400.41700.87900.1366900 | Fire sprinkler pipe fixing | 4d | 2026-12-23 | 2026-12-26 | 1498, 1513 |  | Zenith | 8665114 |
| 1515 | 36900.37000.37100.38000.39100.40400.41700.87900.1367000 | Internal Plumbing Works | 4d | 2026-12-23 | 2026-12-26 | 1499, 1513 |  | Zenith | 8665124 |
| 1516 | 36900.37000.37100.38000.39100.40400.41700.87900.1367100 | Waterproofing | 4d | 2026-12-27 | 2026-12-30 | 1500, 1515 |  | Zenith | 8665134 |
| 1517 | 36900.37000.37100.38000.39100.40400.41700.87900.1367200 | Internal Plaster | 11d | 2027-01-02 | 2027-01-12 | 1501, 1515, 1516FF+5d |  | Zenith | 8665144 |
| 1518 | 36900.37000.37100.38000.39100.40400.41700.87900.1367300 | IPS flooring work | 10d | 2027-02-12 | 2027-02-21 | 1502FS+0.25d, 1517FS+30d |  | Zenith | 8665154 |
| 1519 | 36900.37000.37100.38000.39100.40400.41700.87900.1367400 | Toilet dado work | 6d | 2027-01-13 | 2027-01-18 | 1503, 1516, 1517 |  | Zenith | 8665164 |
| 1520 | 36900.37000.37100.38000.39100.40400.41700.87900.1367500 | Toilet flooring work | 7d | 2027-01-19 | 2027-01-25 | 1504, 1519 |  | Zenith | 8665174 |
| 1521 | 36900.37000.37100.38000.39100.40400.41700.87900.1367600 | False Cieling panel fixing | 7d | 2027-01-26 | 2027-02-01 | 1505, 1520 |  | Zenith | 8665184 |
| 1522 | 36900.37000.37100.38000.39100.40400.41700.87900.1367700 | Living dinning flooring | 7d | 2027-01-26 | 2027-02-01 | 1506, 1520 |  | Zenith | 8665194 |
| 1523 | 36900.37000.37100.38000.39100.40400.41700.87900.1367800 | Putty primer coat | 8d | 2027-02-18 | 2027-02-25 | 1507, 1522 |  | Zenith | 8665204 |
| 1524 | 36900.37000.37100.38000.39100.40400.41700.87900.1367900 | Aluminium door-window fixing | 12d | 2027-03-01 | 2027-03-12 | 1508, 1518, 1522 |  | Zenith | 8665214 |
| 1525 | 36900.37000.37100.38000.39100.40400.41700.87900.1368000 | Door shutter fixing (Pre Hung) | 8d | 2027-02-26 | 2027-03-05 | 1509, 1523 |  | Zenith | 8665224 |
| 1526 | 36900.37000.37100.38000.39100.40400.41700.87900.1368100 | Electrical wiring work | 10d | 2027-04-07 | 2027-04-17 | 1510, 1525 |  | Zenith | 8665234 |
| 1527 | 36900.37000.37100.38000.39100.40400.41700.87900.1368200 | Painting 1st coat | 12d | 2027-05-23 | 2027-06-04 | 1511, 1526 |  | Zenith | 8665244 |

| ID | WBS | Task | Duration | Start | Finish | Predecessors | Constraint | Calendar | Unique_Task_ID |
| --- | --- | --- | --- | --- | --- | --- | --- | --- | --- |
| 1528 | 36900.37000.37100.38000.39100.40400.41700.88000 | **21st floor roof** | 174.25d | 2026-12-23 | 2027-06-15 |  | start no earlier than 2026-12-23 | Zenith | 8648984 |
| 1529 | 36900.37000.37100.38000.39100.40400.41700.88000.1368300 | Block Work | 10d | 2026-12-23 | 2027-01-01 | 1189, 1513 |  | Zenith | 8665254 |
| 1530 | 36900.37000.37100.38000.39100.40400.41700.88000.1368400 | Fire sprinkler pipe fixing | 4d | 2027-01-02 | 2027-01-05 | 1514, 1529 |  | Zenith | 8665264 |
| 1531 | 36900.37000.37100.38000.39100.40400.41700.88000.1368500 | Internal Plumbing Works | 4d | 2027-01-02 | 2027-01-05 | 1515, 1529 |  | Zenith | 8665274 |
| 1532 | 36900.37000.37100.38000.39100.40400.41700.88000.1368600 | Waterproofing | 4d | 2027-01-06 | 2027-01-09 | 1516, 1531 |  | Zenith | 8665284 |
| 1533 | 36900.37000.37100.38000.39100.40400.41700.88000.1368700 | Internal Plaster | 11d | 2027-01-13 | 2027-01-23 | 1517, 1531, 1532FF+5d |  | Zenith | 8665294 |
| 1534 | 36900.37000.37100.38000.39100.40400.41700.88000.1368800 | IPS flooring work | 10d | 2027-02-22 | 2027-03-03 | 1518, 1533 |  | Zenith | 8665304 |
| 1535 | 36900.37000.37100.38000.39100.40400.41700.88000.1368900 | Toilet dado work | 6d | 2027-01-24 | 2027-01-29 | 1519, 1532, 1533 |  | Zenith | 8665314 |
| 1536 | 36900.37000.37100.38000.39100.40400.41700.88000.1369000 | Toilet flooring work | 7d | 2027-01-30 | 2027-02-05 | 1520, 1535 |  | Zenith | 8665324 |
| 1537 | 36900.37000.37100.38000.39100.40400.41700.88000.1369100 | False Cieling panel fixing | 7d | 2027-02-06 | 2027-02-12 | 1521, 1536 |  | Zenith | 8665334 |
| 1538 | 36900.37000.37100.38000.39100.40400.41700.88000.1369200 | Living dinning flooring | 7d | 2027-02-06 | 2027-02-12 | 1522, 1536 |  | Zenith | 8665344 |
| 1539 | 36900.37000.37100.38000.39100.40400.41700.88000.1369300 | Putty primer coat | 8d | 2027-02-26 | 2027-03-05 | 1523, 1538 |  | Zenith | 8665354 |
| 1540 | 36900.37000.37100.38000.39100.40400.41700.88000.1369400 | Aluminium door-window fixing | 12d | 2027-03-13 | 2027-03-24 | 1524, 1534, 1538 |  | Zenith | 8665364 |
| 1541 | 36900.37000.37100.38000.39100.40400.41700.88000.1369500 | Door shutter fixing (Pre Hung) | 8d | 2027-03-06 | 2027-03-13 | 1525, 1539 |  | Zenith | 8665374 |
| 1542 | 36900.37000.37100.38000.39100.40400.41700.88000.1369600 | Electrical wiring work | 10d | 2027-04-17 | 2027-04-27 | 1526, 1541 |  | Zenith | 8665384 |
| 1543 | 36900.37000.37100.38000.39100.40400.41700.88000.1369700 | Painting 1st coat | 11d | 2027-06-04 | 2027-06-15 | 1527, 1542 |  | Zenith | 8665394 |
| 1544 | 36900.37000.37100.38000.39100.40400.41700.88100 | **22nd floor roof** | 175.25d | 2027-01-02 | 2027-06-26 |  | start no earlier than 2027-01-02 | Zenith | 8648994 |
| 1545 | 36900.37000.37100.38000.39100.40400.41700.88100.1369800 | Block Work | 10d | 2027-01-02 | 2027-01-11 | 1190, 1529 |  | Zenith | 8665404 |
| 1546 | 36900.37000.37100.38000.39100.40400.41700.88100.1369900 | Fire sprinkler pipe fixing | 4d | 2027-01-12 | 2027-01-15 | 1530, 1545 |  | Zenith | 8665414 |
| 1547 | 36900.37000.37100.38000.39100.40400.41700.88100.1370000 | Internal Plumbing Works | 4d | 2027-01-12 | 2027-01-15 | 1531, 1545 |  | Zenith | 8665424 |
| 1548 | 36900.37000.37100.38000.39100.40400.41700.88100.1370100 | Waterproofing | 4d | 2027-01-16 | 2027-01-19 | 1532, 1547 |  | Zenith | 8665434 |
| 1549 | 36900.37000.37100.38000.39100.40400.41700.88100.1370200 | Internal Plaster | 10d | 2027-01-24 | 2027-02-02 | 1533, 1547, 1548FF+5d |  | Zenith | 8665444 |
| 1550 | 36900.37000.37100.38000.39100.40400.41700.88100.1370300 | IPS flooring work | 10d | 2027-03-04 | 2027-03-13 | 1534, 1549 |  | Zenith | 8665454 |
| 1551 | 36900.37000.37100.38000.39100.40400.41700.88100.1370400 | Toilet dado work | 6d | 2027-02-03 | 2027-02-08 | 1535, 1548, 1549 |  | Zenith | 8665464 |
| 1552 | 36900.37000.37100.38000.39100.40400.41700.88100.1370500 | Toilet flooring work | 7d | 2027-02-09 | 2027-02-15 | 1536, 1551 |  | Zenith | 8665474 |
| 1553 | 36900.37000.37100.38000.39100.40400.41700.88100.1370600 | False Cieling panel fixing | 7d | 2027-02-16 | 2027-02-22 | 1537, 1552 |  | Zenith | 8665484 |
| 1554 | 36900.37000.37100.38000.39100.40400.41700.88100.1370700 | Living dinning flooring | 7d | 2027-02-16 | 2027-02-22 | 1538, 1552 |  | Zenith | 8665494 |
| 1555 | 36900.37000.37100.38000.39100.40400.41700.88100.1370800 | Putty primer coat | 8d | 2027-03-06 | 2027-03-13 | 1539, 1554 |  | Zenith | 8665504 |
| 1556 | 36900.37000.37100.38000.39100.40400.41700.88100.1370900 | Aluminium door-window fixing | 12d | 2027-03-25 | 2027-04-05 | 1540, 1550, 1554 |  | Zenith | 8665514 |
| 1557 | 36900.37000.37100.38000.39100.40400.41700.88100.1371000 | Door shutter fixing (Pre Hung) | 8d | 2027-03-14 | 2027-03-21 | 1541, 1555 |  | Zenith | 8665524 |
| 1558 | 36900.37000.37100.38000.39100.40400.41700.88100.1371100 | Electrical wiring work | 10d | 2027-04-27 | 2027-05-07 | 1542, 1557 |  | Zenith | 8665534 |
| 1559 | 36900.37000.37100.38000.39100.40400.41700.88100.1371200 | Painting 1st coat | 11d | 2027-06-15 | 2027-06-26 | 1543, 1558 |  | Zenith | 8665544 |

| ID | WBS | Task | Duration | Start | Finish | Predecessors | Constraint | Calendar | Unique_Task_ID |
| --- | --- | --- | --- | --- | --- | --- | --- | --- | --- |
| 1560 | 36900.37000.37100.38000.39100.40400.41700.88200 | **23rd floor roof** | 176.25d | 2027-01-12 | 2027-07-07 |  | start no earlier than 2027-01-12 | Zenith | 8649004 |
| 1561 | 36900.37000.37100.38000.39100.40400.41700.88200.1371300 | Block Work | 10d | 2027-01-12 | 2027-01-21 | 1191, 1545 |  | Zenith | 8665554 |
| 1562 | 36900.37000.37100.38000.39100.40400.41700.88200.1371400 | Fire sprinkler pipe fixing | 5d | 2027-01-22 | 2027-01-26 | 1546, 1561 |  | Zenith | 8665564 |
| 1563 | 36900.37000.37100.38000.39100.40400.41700.88200.1371500 | Internal Plumbing Works | 5d | 2027-01-22 | 2027-01-26 | 1547, 1561 |  | Zenith | 8665574 |
| 1564 | 36900.37000.37100.38000.39100.40400.41700.88200.1371600 | Waterproofing | 5d | 2027-01-27 | 2027-01-31 | 1548, 1563 |  | Zenith | 8665584 |
| 1565 | 36900.37000.37100.38000.39100.40400.41700.88200.1371700 | Internal Plaster | 10d | 2027-02-03 | 2027-02-12 | 1549, 1563, 1564FF+5d |  | Zenith | 8665594 |
| 1566 | 36900.37000.37100.38000.39100.40400.41700.88200.1371800 | IPS flooring work | 10d | 2027-03-14 | 2027-03-23 | 1550, 1565 |  | Zenith | 8665604 |
| 1567 | 36900.37000.37100.38000.39100.40400.41700.88200.1371900 | Toilet dado work | 6d | 2027-02-13 | 2027-02-18 | 1551, 1564, 1565 |  | Zenith | 8665614 |
| 1568 | 36900.37000.37100.38000.39100.40400.41700.88200.1372000 | Toilet flooring work | 7d | 2027-02-19 | 2027-02-25 | 1552, 1567 |  | Zenith | 8665624 |
| 1569 | 36900.37000.37100.38000.39100.40400.41700.88200.1372100 | False Cieling panel fixing | 7d | 2027-02-26 | 2027-03-04 | 1553, 1568 |  | Zenith | 8665634 |
| 1570 | 36900.37000.37100.38000.39100.40400.41700.88200.1372200 | Living dinning flooring | 7d | 2027-02-26 | 2027-03-04 | 1554, 1568 |  | Zenith | 8665644 |
| 1571 | 36900.37000.37100.38000.39100.40400.41700.88200.1372300 | Putty primer coat | 8d | 2027-03-14 | 2027-03-21 | 1555, 1570 |  | Zenith | 8665654 |
| 1572 | 36900.37000.37100.38000.39100.40400.41700.88200.1372400 | Aluminium door-window fixing | 12d | 2027-04-06 | 2027-04-17 | 1556, 1566, 1570 |  | Zenith | 8665664 |
| 1573 | 36900.37000.37100.38000.39100.40400.41700.88200.1372500 | Door shutter fixing (Pre Hung) | 8d | 2027-03-22 | 2027-03-29 | 1557, 1571 |  | Zenith | 8665674 |
| 1574 | 36900.37000.37100.38000.39100.40400.41700.88200.1372600 | Electrical wiring work | 10d | 2027-05-07 | 2027-05-17 | 1558, 1573 |  | Zenith | 8665684 |
| 1575 | 36900.37000.37100.38000.39100.40400.41700.88200.1372700 | Painting 1st coat | 11d | 2027-06-26 | 2027-07-07 | 1559, 1574 |  | Zenith | 8665694 |
| 1576 | 36900.37000.37100.38000.39100.40400.41700.88300 | **24th floor roof** | 177.25d | 2027-01-22 | 2027-07-18 |  | start no earlier than 2027-01-22 | Zenith | 8649014 |
| 1577 | 36900.37000.37100.38000.39100.40400.41700.88300.1372800 | Block Work | 10d | 2027-01-22 | 2027-01-31 | 1192, 1561 |  | Zenith | 8665704 |
| 1578 | 36900.37000.37100.38000.39100.40400.41700.88300.1372900 | Fire sprinkler pipe fixing | 5d | 2027-02-01 | 2027-02-05 | 1562, 1577 |  | Zenith | 8665714 |
| 1579 | 36900.37000.37100.38000.39100.40400.41700.88300.1373000 | Internal Plumbing Works | 5d | 2027-02-01 | 2027-02-05 | 1563, 1577 |  | Zenith | 8665724 |
| 1580 | 36900.37000.37100.38000.39100.40400.41700.88300.1373100 | Waterproofing | 5d | 2027-02-06 | 2027-02-10 | 1564, 1579 |  | Zenith | 8665734 |
| 1581 | 36900.37000.37100.38000.39100.40400.41700.88300.1373200 | Internal Plaster | 10d | 2027-02-13 | 2027-02-22 | 1565, 1579, 1580FF+5d |  | Zenith | 8665744 |
| 1582 | 36900.37000.37100.38000.39100.40400.41700.88300.1373300 | IPS flooring work | 10d | 2027-03-24 | 2027-04-02 | 1566, 1581 |  | Zenith | 8665754 |
| 1583 | 36900.37000.37100.38000.39100.40400.41700.88300.1373400 | Toilet dado work | 6d | 2027-02-23 | 2027-02-28 | 1567, 1580, 1581 |  | Zenith | 8665764 |
| 1584 | 36900.37000.37100.38000.39100.40400.41700.88300.1373500 | Toilet flooring work | 7d | 2027-03-01 | 2027-03-07 | 1568, 1583 |  | Zenith | 8665774 |
| 1585 | 36900.37000.37100.38000.39100.40400.41700.88300.1373600 | False Cieling panel fixing | 7d | 2027-03-08 | 2027-03-14 | 1569, 1584 |  | Zenith | 8665784 |
| 1586 | 36900.37000.37100.38000.39100.40400.41700.88300.1373700 | Living dinning flooring | 7d | 2027-03-08 | 2027-03-14 | 1570, 1584 |  | Zenith | 8665794 |
| 1587 | 36900.37000.37100.38000.39100.40400.41700.88300.1373800 | Putty primer coat | 8d | 2027-03-22 | 2027-03-29 | 1571, 1586 |  | Zenith | 8665804 |
| 1588 | 36900.37000.37100.38000.39100.40400.41700.88300.1373900 | Aluminium door-window fixing | 12d | 2027-04-18 | 2027-04-29 | 1572, 1582, 1586 |  | Zenith | 8665814 |
| 1589 | 36900.37000.37100.38000.39100.40400.41700.88300.1374000 | Door shutter fixing (Pre Hung) | 8d | 2027-03-30 | 2027-04-06 | 1573, 1587 |  | Zenith | 8665824 |
| 1590 | 36900.37000.37100.38000.39100.40400.41700.88300.1374100 | Electrical wiring work | 10d | 2027-05-17 | 2027-05-27 | 1574, 1589 |  | Zenith | 8665834 |
| 1591 | 36900.37000.37100.38000.39100.40400.41700.88300.1374200 | Painting 1st coat | 11d | 2027-07-07 | 2027-07-18 | 1575, 1590 |  | Zenith | 8665844 |

| ID | WBS | Task | Duration | Start | Finish | Predecessors | Constraint | Calendar | Unique_Task_ID |
| --- | --- | --- | --- | --- | --- | --- | --- | --- | --- |
| 1592 | 36900.37000.37100.38000.39100.40400.41700.88400 | **25th floor roof** | 178.25d | 2027-02-01 | 2027-07-29 |  | start no earlier than 2027-02-01 | Zenith | 8649024 |
| 1593 | 36900.37000.37100.38000.39100.40400.41700.88400.1374300 | Block Work | 10d | 2027-02-01 | 2027-02-10 | 1193, 1577 |  | Zenith | 8665854 |
| 1594 | 36900.37000.37100.38000.39100.40400.41700.88400.1374400 | Fire sprinkler pipe fixing | 5d | 2027-02-11 | 2027-02-15 | 1578, 1593 |  | Zenith | 8665864 |
| 1595 | 36900.37000.37100.38000.39100.40400.41700.88400.1374500 | Internal Plumbing Works | 5d | 2027-02-11 | 2027-02-15 | 1579, 1593 |  | Zenith | 8665874 |
| 1596 | 36900.37000.37100.38000.39100.40400.41700.88400.1374600 | Waterproofing | 5d | 2027-02-16 | 2027-02-20 | 1580, 1595 |  | Zenith | 8665884 |
| 1597 | 36900.37000.37100.38000.39100.40400.41700.88400.1374700 | Internal Plaster | 10d | 2027-02-23 | 2027-03-04 | 1581, 1595, 1596FF+5d |  | Zenith | 8665894 |
| 1598 | 36900.37000.37100.38000.39100.40400.41700.88400.1374800 | IPS flooring work | 10d | 2027-04-03 | 2027-04-12 | 1582, 1597 |  | Zenith | 8665904 |
| 1599 | 36900.37000.37100.38000.39100.40400.41700.88400.1374900 | Toilet dado work | 6d | 2027-03-05 | 2027-03-10 | 1583, 1596, 1597 |  | Zenith | 8665914 |
| 1600 | 36900.37000.37100.38000.39100.40400.41700.88400.1375000 | Toilet flooring work | 7d | 2027-03-11 | 2027-03-17 | 1584, 1599 |  | Zenith | 8665924 |
| 1601 | 36900.37000.37100.38000.39100.40400.41700.88400.1375100 | False Cieling panel fixing | 7d | 2027-03-18 | 2027-03-24 | 1585, 1600 |  | Zenith | 8665934 |
| 1602 | 36900.37000.37100.38000.39100.40400.41700.88400.1375200 | Living dinning flooring | 7d | 2027-03-18 | 2027-03-24 | 1586, 1600 |  | Zenith | 8665944 |
| 1603 | 36900.37000.37100.38000.39100.40400.41700.88400.1375300 | Putty primer coat | 8d | 2027-03-30 | 2027-04-06 | 1587, 1602 |  | Zenith | 8665954 |
| 1604 | 36900.37000.37100.38000.39100.40400.41700.88400.1375400 | Aluminium door-window fixing | 12d | 2027-04-30 | 2027-05-11 | 1588, 1598, 1602 |  | Zenith | 8665964 |
| 1605 | 36900.37000.37100.38000.39100.40400.41700.88400.1375500 | Door shutter fixing (Pre Hung) | 8d | 2027-04-07 | 2027-04-14 | 1589, 1603 |  | Zenith | 8665974 |
| 1606 | 36900.37000.37100.38000.39100.40400.41700.88400.1375600 | Electrical wiring work | 10d | 2027-05-27 | 2027-06-06 | 1590, 1605 |  | Zenith | 8665984 |
| 1607 | 36900.37000.37100.38000.39100.40400.41700.88400.1375700 | Painting 1st coat | 11d | 2027-07-18 | 2027-07-29 | 1591, 1606 |  | Zenith | 8665994 |
| 1608 | 36900.37000.37100.38000.39100.40400.41700.88500 | **26th floor roof** | 179.25d | 2027-02-11 | 2027-08-09 |  | start no earlier than 2027-02-11 | Zenith | 8649034 |
| 1609 | 36900.37000.37100.38000.39100.40400.41700.88500.1375800 | Block Work | 10d | 2027-02-11 | 2027-02-20 | 1194, 1593 |  | Zenith | 8666004 |
| 1610 | 36900.37000.37100.38000.39100.40400.41700.88500.1375900 | Fire sprinkler pipe fixing | 7d | 2027-02-21 | 2027-02-27 | 1594, 1609 |  | Zenith | 8666014 |
| 1611 | 36900.37000.37100.38000.39100.40400.41700.88500.1376000 | Internal Plumbing Works | 7d | 2027-02-21 | 2027-02-27 | 1595, 1609 |  | Zenith | 8666024 |
| 1612 | 36900.37000.37100.38000.39100.40400.41700.88500.1376100 | Waterproofing | 7d | 2027-02-28 | 2027-03-06 | 1596, 1611 |  | Zenith | 8666034 |
| 1613 | 36900.37000.37100.38000.39100.40400.41700.88500.1376200 | Internal Plaster | 10d | 2027-03-05 | 2027-03-14 | 1597, 1611, 1612FF+5d |  | Zenith | 8666044 |
| 1614 | 36900.37000.37100.38000.39100.40400.41700.88500.1376300 | IPS flooring work | 10d | 2027-04-13 | 2027-04-22 | 1598, 1613 |  | Zenith | 8666054 |
| 1615 | 36900.37000.37100.38000.39100.40400.41700.88500.1376400 | Toilet dado work | 6d | 2027-03-15 | 2027-03-20 | 1599, 1612, 1613 |  | Zenith | 8666064 |
| 1616 | 36900.37000.37100.38000.39100.40400.41700.88500.1376500 | Toilet flooring work | 7d | 2027-03-21 | 2027-03-27 | 1600, 1615 |  | Zenith | 8666074 |
| 1617 | 36900.37000.37100.38000.39100.40400.41700.88500.1376600 | False Cieling panel fixing | 7d | 2027-03-28 | 2027-04-03 | 1601, 1616 |  | Zenith | 8666084 |
| 1618 | 36900.37000.37100.38000.39100.40400.41700.88500.1376700 | Living dinning flooring | 7d | 2027-03-28 | 2027-04-03 | 1602, 1616 |  | Zenith | 8666094 |
| 1619 | 36900.37000.37100.38000.39100.40400.41700.88500.1376800 | Putty primer coat | 8d | 2027-04-07 | 2027-04-14 | 1603, 1618 |  | Zenith | 8666104 |
| 1620 | 36900.37000.37100.38000.39100.40400.41700.88500.1376900 | Aluminium door-window fixing | 12d | 2027-05-12 | 2027-05-23 | 1604, 1614, 1618 |  | Zenith | 8666114 |
| 1621 | 36900.37000.37100.38000.39100.40400.41700.88500.1377000 | Door shutter fixing (Pre Hung) | 8d | 2027-04-15 | 2027-04-22 | 1605, 1619 |  | Zenith | 8666124 |
| 1622 | 36900.37000.37100.38000.39100.40400.41700.88500.1377100 | Electrical wiring work | 10d | 2027-06-06 | 2027-06-16 | 1606, 1621 |  | Zenith | 8666134 |
| 1623 | 36900.37000.37100.38000.39100.40400.41700.88500.1377200 | Painting 1st coat | 11d | 2027-07-29 | 2027-08-09 | 1607, 1622 |  | Zenith | 8666144 |

| ID | WBS | Task | Duration | Start | Finish | Predecessors | Constraint | Calendar | Unique_Task_ID |
| --- | --- | --- | --- | --- | --- | --- | --- | --- | --- |
| 1624 | 36900.37000.37100.38000.39100.40400.41700.88600 | **27th floor roof** | 180.25d | 2027-02-21 | 2027-08-20 |  | start no earlier than 2027-02-21 | Zenith | 8649044 |
| 1625 | 36900.37000.37100.38000.39100.40400.41700.88600.1377300 | Block Work | 10d | 2027-02-21 | 2027-03-02 | 1195, 1609 |  | Zenith | 8666154 |
| 1626 | 36900.37000.37100.38000.39100.40400.41700.88600.1377400 | Fire sprinkler pipe fixing | 7d | 2027-03-03 | 2027-03-09 | 1610, 1625 |  | Zenith | 8666164 |
| 1627 | 36900.37000.37100.38000.39100.40400.41700.88600.1377500 | Internal Plumbing Works | 7d | 2027-03-03 | 2027-03-09 | 1611, 1625 |  | Zenith | 8666174 |
| 1628 | 36900.37000.37100.38000.39100.40400.41700.88600.1377600 | Waterproofing | 7d | 2027-03-10 | 2027-03-16 | 1612, 1627 |  | Zenith | 8666184 |
| 1629 | 36900.37000.37100.38000.39100.40400.41700.88600.1377700 | Internal Plaster | 10d | 2027-03-15 | 2027-03-24 | 1613, 1627, 1628FF+5d |  | Zenith | 8666194 |
| 1630 | 36900.37000.37100.38000.39100.40400.41700.88600.1377800 | IPS flooring work | 10d | 2027-04-23 | 2027-05-03 | 1614FS+0.25d, 1629FS+18d |  | Zenith | 8666204 |
| 1631 | 36900.37000.37100.38000.39100.40400.41700.88600.1377900 | Toilet dado work | 6d | 2027-03-25 | 2027-03-30 | 1615, 1628, 1629 |  | Zenith | 8666214 |
| 1632 | 36900.37000.37100.38000.39100.40400.41700.88600.1378000 | Toilet flooring work | 7d | 2027-03-31 | 2027-04-06 | 1616, 1631 |  | Zenith | 8666224 |
| 1633 | 36900.37000.37100.38000.39100.40400.41700.88600.1378100 | False Cieling panel fixing | 7d | 2027-04-07 | 2027-04-13 | 1617, 1632 |  | Zenith | 8666234 |
| 1634 | 36900.37000.37100.38000.39100.40400.41700.88600.1378200 | Living dinning flooring | 7d | 2027-04-07 | 2027-04-13 | 1618, 1632 |  | Zenith | 8666244 |
| 1635 | 36900.37000.37100.38000.39100.40400.41700.88600.1378300 | Putty primer coat | 8d | 2027-04-15 | 2027-04-22 | 1619, 1634 |  | Zenith | 8666254 |
| 1636 | 36900.37000.37100.38000.39100.40400.41700.88600.1378400 | Aluminium door-window fixing | 12d | 2027-05-24 | 2027-06-04 | 1620, 1630, 1634 |  | Zenith | 8666264 |
| 1637 | 36900.37000.37100.38000.39100.40400.41700.88600.1378500 | Door shutter fixing (Pre Hung) | 8d | 2027-04-23 | 2027-04-30 | 1621, 1635 |  | Zenith | 8666274 |
| 1638 | 36900.37000.37100.38000.39100.40400.41700.88600.1378600 | Electrical wiring work | 10d | 2027-06-16 | 2027-06-26 | 1622, 1637 |  | Zenith | 8666284 |
| 1639 | 36900.37000.37100.38000.39100.40400.41700.88600.1378700 | Painting 1st coat | 11d | 2027-08-09 | 2027-08-20 | 1623, 1638 |  | Zenith | 8666294 |
| 1640 | 36900.37000.37100.38000.39100.40400.41700.88700 | **28th floor roof** | 181.25d | 2027-03-03 | 2027-08-31 |  | start no earlier than 2027-03-03 | Zenith | 8649054 |
| 1641 | 36900.37000.37100.38000.39100.40400.41700.88700.1378800 | Block Work | 10d | 2027-03-03 | 2027-03-12 | 1196, 1625 |  | Zenith | 8666304 |
| 1642 | 36900.37000.37100.38000.39100.40400.41700.88700.1378900 | Fire sprinkler pipe fixing | 7d | 2027-03-13 | 2027-03-19 | 1626, 1641 |  | Zenith | 8666314 |
| 1643 | 36900.37000.37100.38000.39100.40400.41700.88700.1379000 | Internal Plumbing Works | 7d | 2027-03-13 | 2027-03-19 | 1627, 1641 |  | Zenith | 8666324 |
| 1644 | 36900.37000.37100.38000.39100.40400.41700.88700.1379100 | Waterproofing | 7d | 2027-03-20 | 2027-03-26 | 1628, 1643 |  | Zenith | 8666334 |
| 1645 | 36900.37000.37100.38000.39100.40400.41700.88700.1379200 | Internal Plaster | 8d | 2027-03-25 | 2027-04-01 | 1629, 1643, 1644FF+5d |  | Zenith | 8666344 |
| 1646 | 36900.37000.37100.38000.39100.40400.41700.88700.1379300 | IPS flooring work | 10d | 2027-05-13 | 2027-05-23 | 1630FS+10d, 1645FS+0.25d |  | Zenith | 8666354 |
| 1647 | 36900.37000.37100.38000.39100.40400.41700.88700.1379400 | Toilet dado work | 6d | 2027-04-02 | 2027-04-07 | 1631, 1644, 1645 |  | Zenith | 8666364 |
| 1648 | 36900.37000.37100.38000.39100.40400.41700.88700.1379500 | Toilet flooring work | 7d | 2027-04-08 | 2027-04-14 | 1632, 1647 |  | Zenith | 8666374 |
| 1649 | 36900.37000.37100.38000.39100.40400.41700.88700.1379600 | False Cieling panel fixing | 7d | 2027-04-15 | 2027-04-21 | 1633, 1648 |  | Zenith | 8666384 |
| 1650 | 36900.37000.37100.38000.39100.40400.41700.88700.1379700 | Living dinning flooring | 7d | 2027-04-15 | 2027-04-21 | 1634, 1648 |  | Zenith | 8666394 |
| 1651 | 36900.37000.37100.38000.39100.40400.41700.88700.1379800 | Putty primer coat | 8d | 2027-04-23 | 2027-04-30 | 1635, 1650 |  | Zenith | 8666404 |
| 1652 | 36900.37000.37100.38000.39100.40400.41700.88700.1379900 | Aluminium door-window fixing | 12d | 2027-06-05 | 2027-06-16 | 1636, 1646, 1650 |  | Zenith | 8666414 |
| 1653 | 36900.37000.37100.38000.39100.40400.41700.88700.1380000 | Door shutter fixing (Pre Hung) | 8d | 2027-05-01 | 2027-05-08 | 1637, 1651 |  | Zenith | 8666424 |
| 1654 | 36900.37000.37100.38000.39100.40400.41700.88700.1380100 | Electrical wiring work | 10d | 2027-06-26 | 2027-07-06 | 1638, 1653 |  | Zenith | 8666434 |
| 1655 | 36900.37000.37100.38000.39100.40400.41700.88700.1380200 | Painting 1st coat | 11d | 2027-08-20 | 2027-08-31 | 1639, 1654 |  | Zenith | 8666444 |

| ID | WBS | Task | Duration | Start | Finish | Predecessors | Constraint | Calendar | Unique_Task_ID |
| --- | --- | --- | --- | --- | --- | --- | --- | --- | --- |
| 1656 | 36900.37000.37100.38000.39100.40400.41700.88800 | **29th floor roof** | 182.25d | 2027-03-13 | 2027-09-11 |  | start no earlier than 2027-03-13 | Zenith | 8649064 |
| 1657 | 36900.37000.37100.38000.39100.40400.41700.88800.1380300 | Block Work | 10d | 2027-03-13 | 2027-03-22 | 1197, 1641 |  | Zenith | 8666454 |
| 1658 | 36900.37000.37100.38000.39100.40400.41700.88800.1380400 | Fire sprinkler pipe fixing | 7d | 2027-03-23 | 2027-03-29 | 1642, 1657 |  | Zenith | 8666464 |
| 1659 | 36900.37000.37100.38000.39100.40400.41700.88800.1380500 | Internal Plumbing Works | 7d | 2027-03-23 | 2027-03-29 | 1643, 1657 |  | Zenith | 8666474 |
| 1660 | 36900.37000.37100.38000.39100.40400.41700.88800.1380600 | Waterproofing | 7d | 2027-03-30 | 2027-04-05 | 1644, 1659 |  | Zenith | 8666484 |
| 1661 | 36900.37000.37100.38000.39100.40400.41700.88800.1380700 | Internal Plaster | 8d | 2027-04-03 | 2027-04-10 | 1645FS-2d, 1659FS+0.25d, 1660FF+5d |  | Zenith | 8666494 |
| 1662 | 36900.37000.37100.38000.39100.40400.41700.88800.1380800 | IPS flooring work | 10d | 2027-06-02 | 2027-06-12 | 1646FS+10d, 1661FS+0.25d |  | Zenith | 8666504 |
| 1663 | 36900.37000.37100.38000.39100.40400.41700.88800.1380900 | Toilet dado work | 6d | 2027-04-11 | 2027-04-16 | 1647, 1660, 1661 |  | Zenith | 8666514 |
| 1664 | 36900.37000.37100.38000.39100.40400.41700.88800.1381000 | Toilet flooring work | 7d | 2027-04-17 | 2027-04-23 | 1648, 1663 |  | Zenith | 8666524 |
| 1665 | 36900.37000.37100.38000.39100.40400.41700.88800.1381100 | False Cieling panel fixing | 7d | 2027-04-24 | 2027-04-30 | 1649, 1664 |  | Zenith | 8666534 |
| 1666 | 36900.37000.37100.38000.39100.40400.41700.88800.1381200 | Living dinning flooring | 7d | 2027-04-24 | 2027-04-30 | 1650, 1664 |  | Zenith | 8666544 |
| 1667 | 36900.37000.37100.38000.39100.40400.41700.88800.1381300 | Putty primer coat | 8d | 2027-05-01 | 2027-05-08 | 1651, 1666 |  | Zenith | 8666554 |
| 1668 | 36900.37000.37100.38000.39100.40400.41700.88800.1381400 | Aluminium door-window fixing | 12d | 2027-06-17 | 2027-06-28 | 1652, 1662, 1666 |  | Zenith | 8666564 |
| 1669 | 36900.37000.37100.38000.39100.40400.41700.88800.1381500 | Door shutter fixing (Pre Hung) | 8d | 2027-05-09 | 2027-05-16 | 1653, 1667 |  | Zenith | 8666574 |
| 1670 | 36900.37000.37100.38000.39100.40400.41700.88800.1381600 | Electrical wiring work | 10d | 2027-07-06 | 2027-07-16 | 1654, 1669 |  | Zenith | 8666584 |
| 1671 | 36900.37000.37100.38000.39100.40400.41700.88800.1381700 | Painting 1st coat | 11d | 2027-08-31 | 2027-09-11 | 1655, 1670 |  | Zenith | 8666594 |
| 1672 | 36900.37000.37100.38000.39100.40400.41700.88900 | **30th floor roof** | 183.25d | 2027-03-23 | 2027-09-22 |  | start no earlier than 2027-03-23 | Zenith | 8649074 |
| 1673 | 36900.37000.37100.38000.39100.40400.41700.88900.1381800 | Block Work | 10d | 2027-03-23 | 2027-04-01 | 1198, 1657 |  | Zenith | 8666604 |
| 1674 | 36900.37000.37100.38000.39100.40400.41700.88900.1381900 | Fire sprinkler pipe fixing | 6d | 2027-04-02 | 2027-04-07 | 1658, 1673 |  | Zenith | 8666614 |
| 1675 | 36900.37000.37100.38000.39100.40400.41700.88900.1382000 | Internal Plumbing Works | 10d | 2027-04-02 | 2027-04-11 | 1659, 1673 |  | Zenith | 8666624 |
| 1676 | 36900.37000.37100.38000.39100.40400.41700.88900.1382100 | Waterproofing | 14d | 2027-04-12 | 2027-04-25 | 1660, 1675 |  | Zenith | 8666634 |
| 1677 | 36900.37000.37100.38000.39100.40400.41700.88900.1382200 | Internal Plaster | 10d | 2027-04-17 | 2027-04-26 | 1661FS-2d, 1675FS+0.25d, 1676FF+1d |  | Zenith | 8666644 |
| 1678 | 36900.37000.37100.38000.39100.40400.41700.88900.1382300 | IPS flooring work | 10d | 2027-06-17 | 2027-06-27 | 1662FS+5d, 1677FS+0.25d |  | Zenith | 8666654 |
| 1679 | 36900.37000.37100.38000.39100.40400.41700.88900.1382400 | Toilet dado work | 10d | 2027-04-27 | 2027-05-06 | 1663, 1676, 1677 |  | Zenith | 8666664 |
| 1680 | 36900.37000.37100.38000.39100.40400.41700.88900.1382500 | Toilet flooring work | 7d | 2027-05-07 | 2027-05-13 | 1664, 1679 |  | Zenith | 8666674 |
| 1681 | 36900.37000.37100.38000.39100.40400.41700.88900.1382600 | False Cieling panel fixing | 10d | 2027-05-14 | 2027-05-23 | 1665, 1680 |  | Zenith | 8666684 |
| 1682 | 36900.37000.37100.38000.39100.40400.41700.88900.1382700 | Living dinning flooring | 13d | 2027-05-14 | 2027-05-26 | 1666, 1680 |  | Zenith | 8666694 |
| 1683 | 36900.37000.37100.38000.39100.40400.41700.88900.1382800 | Putty primer coat | 12d | 2027-05-27 | 2027-06-07 | 1667, 1682 |  | Zenith | 8666704 |
| 1684 | 36900.37000.37100.38000.39100.40400.41700.88900.1382900 | Aluminium door-window fixing | 15d | 2027-06-29 | 2027-07-13 | 1668, 1678, 1682 |  | Zenith | 8666714 |
| 1685 | 36900.37000.37100.38000.39100.40400.41700.88900.1383000 | Door shutter fixing (Pre Hung) | 8d | 2027-06-08 | 2027-06-15 | 1669, 1683 |  | Zenith | 8666724 |
| 1686 | 36900.37000.37100.38000.39100.40400.41700.88900.1383100 | Electrical wiring work | 12d | 2027-07-16 | 2027-07-28 | 1670, 1685 |  | Zenith | 8666734 |
| 1687 | 36900.37000.37100.38000.39100.40400.41700.88900.1383200 | Painting 1st coat | 11d | 2027-09-11 | 2027-09-22 | 1671, 1686 |  | Zenith | 8666744 |

| ID | WBS | Task | Duration | Start | Finish | Predecessors | Constraint | Calendar | Unique_Task_ID |
| --- | --- | --- | --- | --- | --- | --- | --- | --- | --- |
| 1688 | 36900.37000.37100.38000.39100.40400.41700.89000 | **31st floor roof** | 184.25d | 2027-04-02 | 2027-10-03 |  | start no earlier than 2027-04-02 | Zenith | 8649084 |
| 1689 | 36900.37000.37100.38000.39100.40400.41700.89000.1383300 | Block Work | 10d | 2027-04-02 | 2027-04-11 | 1199, 1673 |  | Zenith | 8666754 |
| 1690 | 36900.37000.37100.38000.39100.40400.41700.89000.1383400 | Fire sprinkler pipe fixing | 6d | 2027-04-12 | 2027-04-17 | 1674, 1689 |  | Zenith | 8666764 |
| 1691 | 36900.37000.37100.38000.39100.40400.41700.89000.1383500 | Internal Plumbing Works | 10d | 2027-04-12 | 2027-04-21 | 1675, 1689 |  | Zenith | 8666774 |
| 1692 | 36900.37000.37100.38000.39100.40400.41700.89000.1383600 | Waterproofing | 14d | 2027-04-26 | 2027-05-09 | 1676, 1691 |  | Zenith | 8666784 |
| 1693 | 36900.37000.37100.38000.39100.40400.41700.89000.1383700 | Internal Plaster | 10d | 2027-05-03 | 2027-05-12 | 1677FS+0.25d, 1691FS+0.25d, 1692FF+3d |  | Zenith | 8666794 |
| 1694 | 36900.37000.37100.38000.39100.40400.41700.89000.1383800 | IPS flooring work | 10d | 2027-06-30 | 2027-07-10 | 1678FS+3d, 1693FS+0.25d |  | Zenith | 8666804 |
| 1695 | 36900.37000.37100.38000.39100.40400.41700.89000.1383900 | Toilet dado work | 10d | 2027-05-13 | 2027-05-22 | 1679, 1692, 1693 |  | Zenith | 8666814 |
| 1696 | 36900.37000.37100.38000.39100.40400.41700.89000.1384000 | Toilet flooring work | 7d | 2027-05-23 | 2027-05-29 | 1680, 1695 |  | Zenith | 8666824 |
| 1697 | 36900.37000.37100.38000.39100.40400.41700.89000.1384100 | False Cieling panel fixing | 10d | 2027-05-30 | 2027-06-08 | 1681, 1696 |  | Zenith | 8666834 |
| 1698 | 36900.37000.37100.38000.39100.40400.41700.89000.1384200 | Living dinning flooring | 13d | 2027-05-30 | 2027-06-11 | 1682, 1696 |  | Zenith | 8666844 |
| 1699 | 36900.37000.37100.38000.39100.40400.41700.89000.1384300 | Putty primer coat | 12d | 2027-06-12 | 2027-06-23 | 1683, 1698 |  | Zenith | 8666854 |
| 1700 | 36900.37000.37100.38000.39100.40400.41700.89000.1384400 | Aluminium door-window fixing | 15d | 2027-07-14 | 2027-07-28 | 1684, 1694, 1698 |  | Zenith | 8666864 |
| 1701 | 36900.37000.37100.38000.39100.40400.41700.89000.1384500 | Door shutter fixing (Pre Hung) | 8d | 2027-06-24 | 2027-07-01 | 1685, 1699 |  | Zenith | 8666874 |
| 1702 | 36900.37000.37100.38000.39100.40400.41700.89000.1384600 | Electrical wiring work | 12d | 2027-07-28 | 2027-08-09 | 1686, 1701 |  | Zenith | 8666884 |
| 1703 | 36900.37000.37100.38000.39100.40400.41700.89000.1384700 | Painting 1st coat | 11d | 2027-09-22 | 2027-10-03 | 1687, 1702 |  | Zenith | 8666894 |
| 1704 | 36900.37000.37100.38000.39100.40400.41700.89100 | **32nd floor roof** | 185.25d | 2027-04-12 | 2027-10-14 |  | start no earlier than 2027-04-12 | Zenith | 8649094 |
| 1705 | 36900.37000.37100.38000.39100.40400.41700.89100.1384800 | Block Work | 10d | 2027-04-12 | 2027-04-21 | 1200, 1689 |  | Zenith | 8666904 |
| 1706 | 36900.37000.37100.38000.39100.40400.41700.89100.1384900 | Fire sprinkler pipe fixing | 6d | 2027-04-22 | 2027-04-27 | 1690, 1705 |  | Zenith | 8666914 |
| 1707 | 36900.37000.37100.38000.39100.40400.41700.89100.1385000 | Internal Plumbing Works | 10d | 2027-04-22 | 2027-05-01 | 1691, 1705 |  | Zenith | 8666924 |
| 1708 | 36900.37000.37100.38000.39100.40400.41700.89100.1385100 | Waterproofing | 14d | 2027-05-10 | 2027-05-23 | 1692, 1707 |  | Zenith | 8666934 |
| 1709 | 36900.37000.37100.38000.39100.40400.41700.89100.1385200 | Internal Plaster | 10d | 2027-05-19 | 2027-05-28 | 1693, 1707, 1708FF+5d |  | Zenith | 8666944 |
| 1710 | 36900.37000.37100.38000.39100.40400.41700.89100.1385300 | IPS flooring work | 10d | 2027-07-10 | 2027-07-20 | 1694, 1709 |  | Zenith | 8666954 |
| 1711 | 36900.37000.37100.38000.39100.40400.41700.89100.1385400 | Toilet dado work | 10d | 2027-05-29 | 2027-06-07 | 1695, 1708, 1709 |  | Zenith | 8666964 |
| 1712 | 36900.37000.37100.38000.39100.40400.41700.89100.1385500 | Toilet flooring work | 7d | 2027-06-08 | 2027-06-14 | 1696, 1711 |  | Zenith | 8666974 |
| 1713 | 36900.37000.37100.38000.39100.40400.41700.89100.1385600 | False Cieling panel fixing | 10d | 2027-06-15 | 2027-06-24 | 1697, 1712 |  | Zenith | 8666984 |
| 1714 | 36900.37000.37100.38000.39100.40400.41700.89100.1385700 | Living dinning flooring | 13d | 2027-06-15 | 2027-06-27 | 1698, 1712 |  | Zenith | 8666994 |
| 1715 | 36900.37000.37100.38000.39100.40400.41700.89100.1385800 | Putty primer coat | 12d | 2027-06-28 | 2027-07-09 | 1699, 1714 |  | Zenith | 8667004 |
| 1716 | 36900.37000.37100.38000.39100.40400.41700.89100.1385900 | Aluminium door-window fixing | 15d | 2027-07-29 | 2027-08-12 | 1700, 1710, 1714 |  | Zenith | 8667014 |
| 1717 | 36900.37000.37100.38000.39100.40400.41700.89100.1386000 | Door shutter fixing (Pre Hung) | 8d | 2027-07-10 | 2027-07-17 | 1701, 1715 |  | Zenith | 8667024 |
| 1718 | 36900.37000.37100.38000.39100.40400.41700.89100.1386100 | Electrical wiring work | 12d | 2027-08-09 | 2027-08-21 | 1702, 1717 |  | Zenith | 8667034 |
| 1719 | 36900.37000.37100.38000.39100.40400.41700.89100.1386200 | Painting 1st coat | 11d | 2027-10-03 | 2027-10-14 | 1703, 1718 |  | Zenith | 8667044 |

| ID | WBS | Task | Duration | Start | Finish | Predecessors | Constraint | Calendar | Unique_Task_ID |
| --- | --- | --- | --- | --- | --- | --- | --- | --- | --- |
| 1720 | 36900.37000.37100.38000.39100.40400.41700.89200 | **33rd floor roof** | 186.25d | 2027-04-22 | 2027-10-25 |  | start no earlier than 2027-04-22 | Zenith | 8649104 |
| 1721 | 36900.37000.37100.38000.39100.40400.41700.89200.1386300 | Block Work | 10d | 2027-04-22 | 2027-05-01 | 1201, 1705 |  | Zenith | 8667054 |
| 1722 | 36900.37000.37100.38000.39100.40400.41700.89200.1386400 | Fire sprinkler pipe fixing | 6d | 2027-05-02 | 2027-05-07 | 1706, 1721 |  | Zenith | 8667064 |
| 1723 | 36900.37000.37100.38000.39100.40400.41700.89200.1386500 | Internal Plumbing Works | 10d | 2027-05-02 | 2027-05-11 | 1707, 1721 |  | Zenith | 8667074 |
| 1724 | 36900.37000.37100.38000.39100.40400.41700.89200.1386600 | Waterproofing | 14d | 2027-05-24 | 2027-06-06 | 1708, 1723 |  | Zenith | 8667084 |
| 1725 | 36900.37000.37100.38000.39100.40400.41700.89200.1386700 | Internal Plaster | 10d | 2027-06-02 | 2027-06-11 | 1709, 1723, 1724FF+5d |  | Zenith | 8667094 |
| 1726 | 36900.37000.37100.38000.39100.40400.41700.89200.1386800 | IPS flooring work | 10d | 2027-07-20 | 2027-07-30 | 1710, 1725 |  | Zenith | 8667104 |
| 1727 | 36900.37000.37100.38000.39100.40400.41700.89200.1386900 | Toilet dado work | 10d | 2027-06-12 | 2027-06-21 | 1711, 1724, 1725 |  | Zenith | 8667114 |
| 1728 | 36900.37000.37100.38000.39100.40400.41700.89200.1387000 | Toilet flooring work | 7d | 2027-06-22 | 2027-06-28 | 1712, 1727 |  | Zenith | 8667124 |
| 1729 | 36900.37000.37100.38000.39100.40400.41700.89200.1387100 | False Cieling panel fixing | 10d | 2027-06-29 | 2027-07-08 | 1713, 1728 |  | Zenith | 8667134 |
| 1730 | 36900.37000.37100.38000.39100.40400.41700.89200.1387200 | Living dinning flooring | 13d | 2027-06-29 | 2027-07-11 | 1714, 1728 |  | Zenith | 8667144 |
| 1731 | 36900.37000.37100.38000.39100.40400.41700.89200.1387300 | Putty primer coat | 12d | 2027-07-12 | 2027-07-23 | 1715, 1730 |  | Zenith | 8667154 |
| 1732 | 36900.37000.37100.38000.39100.40400.41700.89200.1387400 | Aluminium door-window fixing | 15d | 2027-08-13 | 2027-08-27 | 1716, 1726, 1730 |  | Zenith | 8667164 |
| 1733 | 36900.37000.37100.38000.39100.40400.41700.89200.1387500 | Door shutter fixing (Pre Hung) | 8d | 2027-07-24 | 2027-07-31 | 1717, 1731 |  | Zenith | 8667174 |
| 1734 | 36900.37000.37100.38000.39100.40400.41700.89200.1387600 | Electrical wiring work | 12d | 2027-08-21 | 2027-09-02 | 1718, 1733 |  | Zenith | 8667184 |
| 1735 | 36900.37000.37100.38000.39100.40400.41700.89200.1387700 | Painting 1st coat | 11d | 2027-10-14 | 2027-10-25 | 1719, 1734 |  | Zenith | 8667194 |
| 1736 | 36900.37000.37100.38000.39100.40400.41700.89300 | **34th floor roof** | 187.25d | 2027-05-02 | 2027-12-20 |  | start no earlier than 2027-05-02 | Zenith | 8649114 |
| 1737 | 36900.37000.37100.38000.39100.40400.41700.89300.1387800 | Block Work | 10d | 2027-05-02 | 2027-05-11 | 1202, 1721 |  | Zenith | 8667204 |
| 1738 | 36900.37000.37100.38000.39100.40400.41700.89300.1387900 | Fire sprinkler pipe fixing | 6d | 2027-05-12 | 2027-05-17 | 1722, 1737 |  | Zenith | 8667214 |
| 1739 | 36900.37000.37100.38000.39100.40400.41700.89300.1388000 | Internal Plumbing Works | 10d | 2027-05-12 | 2027-05-21 | 1723, 1737 |  | Zenith | 8667224 |
| 1740 | 36900.37000.37100.38000.39100.40400.41700.89300.1388100 | Waterproofing | 14d | 2027-06-07 | 2027-06-20 | 1724, 1739 |  | Zenith | 8667234 |
| 1741 | 36900.37000.37100.38000.39100.40400.41700.89300.1388200 | Internal Plaster | 10d | 2027-06-12 | 2027-06-21 | 1725FS-2d, 1739FS+0.25d, 1740FF+1d |  | Zenith | 8667244 |
| 1742 | 36900.37000.37100.38000.39100.40400.41700.89300.1388300 | IPS flooring work | 10d | 2027-07-30 | 2027-08-09 | 1726, 1741 |  | Zenith | 8667254 |
| 1743 | 36900.37000.37100.38000.39100.40400.41700.89300.1388400 | Toilet dado work | 10d | 2027-06-30 | 2027-07-09 | 1727FS+0.25d, 1740FS+0.25d, 1741FS+8d |  | Zenith | 8667264 |
| 1744 | 36900.37000.37100.38000.39100.40400.41700.89300.1388500 | Toilet flooring work | 10d | 2027-07-10 | 2027-07-19 | 1728, 1743 |  | Zenith | 8667274 |
| 1745 | 36900.37000.37100.38000.39100.40400.41700.89300.1388600 | False Cieling panel fixing | 10d | 2027-07-20 | 2027-07-29 | 1729, 1744 |  | Zenith | 8667284 |
| 1746 | 36900.37000.37100.38000.39100.40400.41700.89300.1388700 | Living dinning flooring | 13d | 2027-07-20 | 2027-08-01 | 1730, 1744 |  | Zenith | 8667294 |
| 1747 | 36900.37000.37100.38000.39100.40400.41700.89300.1388800 | Putty primer coat | 12d | 2027-08-02 | 2027-08-13 | 1731, 1746 |  | Zenith | 8667304 |
| 1748 | 36900.37000.37100.38000.39100.40400.41700.89300.1388900 | Aluminium door-window fixing | 15d | 2027-08-28 | 2027-09-11 | 1732, 1742, 1746 |  | Zenith | 8667314 |
| 1749 | 36900.37000.37100.38000.39100.40400.41700.89300.1389000 | Door shutter fixing (Pre Hung) | 8d | 2027-08-14 | 2027-08-21 | 1733, 1747 |  | Zenith | 8667324 |
| 1750 | 36900.37000.37100.38000.39100.40400.41700.89300.1389100 | Electrical wiring work | 12d | 2027-09-02 | 2027-09-14 | 1734, 1749 |  | Zenith | 8667334 |
| 1751 | 36900.37000.37100.38000.39100.40400.41700.89300.1389200 | Painting 1st coat | 11d | 2027-10-25 | 2027-12-20 | 1735, 1750 |  | Zenith | 8667344 |

| ID | WBS | Task | Duration | Start | Finish | Predecessors | Constraint | Calendar | Unique_Task_ID |
| --- | --- | --- | --- | --- | --- | --- | --- | --- | --- |
| 1752 | 36900.37000.37100.38000.39100.40400.41700.57400 | **35th Floor** | 192.5d | 2027-05-12 | 2028-01-04 |  | start no earlier than 2027-05-12 | Zenith | 8648274 |
| 1753 | 36900.37000.37100.38000.39100.40400.41700.57400.1389300 | Block Work | 10d | 2027-05-12 | 2027-05-21 | 1203, 1737 |  | Zenith | 8667354 |
| 1754 | 36900.37000.37100.38000.39100.40400.41700.57400.1389400 | Fire sprinkler pipe fixing | 6d | 2027-05-22 | 2027-05-27 | 1738, 1753 |  | Zenith | 8667364 |
| 1755 | 36900.37000.37100.38000.39100.40400.41700.57400.1389500 | Internal Plumbing Works | 10d | 2027-05-22 | 2027-05-31 | 1739, 1753 |  | Zenith | 8667374 |
| 1756 | 36900.37000.37100.38000.39100.40400.41700.57400.1389600 | Waterproofing | 9d | 2027-06-21 | 2027-06-29 | 1740, 1755 |  | Zenith | 8667384 |
| 1757 | 36900.37000.37100.38000.39100.40400.41700.57400.1389700 | Internal Plaster | 10d | 2027-06-21 | 2027-06-30 | 1741FS-3d, 1755FS+0.25d, 1756FF+1d |  | Zenith | 8667394 |
| 1758 | 36900.37000.37100.38000.39100.40400.41700.57400.1389800 | IPS flooring work | 10d | 2027-08-09 | 2027-08-19 | 1742, 1756, 1757 |  | Zenith | 8667404 |
| 1759 | 36900.37000.37100.38000.39100.40400.41700.57400.1389900 | Toilet dado work | 10d | 2027-07-17 | 2027-07-26 | 1743FS+7d |  | Zenith | 8667414 |
| 1760 | 36900.37000.37100.38000.39100.40400.41700.57400.1390000 | Toilet flooring work | 10d | 2027-07-27 | 2027-08-05 | 1744, 1759 |  | Zenith | 8667424 |
| 1761 | 36900.37000.37100.38000.39100.40400.41700.57400.1390100 | False ceiling | 10d | 2027-08-06 | 2027-08-15 | 1745, 1760 |  | Zenith | 8667434 |
| 1762 | 36900.37000.37100.38000.39100.40400.41700.57400.1390200 | Living dinning flooring | 13d | 2027-08-06 | 2027-08-18 | 1746, 1760 |  | Zenith | 8667444 |
| 1763 | 36900.37000.37100.38000.39100.40400.41700.57400.1390300 | Putty Primer coat | 12d | 2027-08-19 | 2027-08-30 | 1747, 1754, 1761, 1762 |  | Zenith | 8667454 |
| 1764 | 36900.37000.37100.38000.39100.40400.41700.57400.1390400 | Aluminium door-window fixing | 15d | 2027-09-12 | 2027-09-26 | 1748, 1758, 1762 |  | Zenith | 8667464 |
| 1765 | 36900.37000.37100.38000.39100.40400.41700.57400.1390500 | Door shutter fixing (Pre Hung) | 8d | 2027-08-31 | 2027-09-07 | 1749, 1763 |  | Zenith | 8667474 |
| 1766 | 36900.37000.37100.38000.39100.40400.41700.57400.1390600 | Electrical wiring work | 12d | 2027-09-14 | 2027-09-26 | 1750, 1765 |  | Zenith | 8667484 |
| 1767 | 36900.37000.37100.38000.39100.40400.41700.57400.1390700 | Painting 1st coat | 11d | 2027-12-20 | 2027-12-31 | 1751, 1766 |  | Zenith | 8667494 |
| 1768 | 36900.37000.37100.38000.39100.40400.41700.57400.1390800 | Misc. Works | 15d | 2027-12-20 | 2028-01-04 | 1767SS+0.25d |  | Zenith | 8667504 |
| 1769 | 36900.37000.37100.38000.39100.40400.224800 | **Terrace Finishing** | 116d | 2027-06-26 | 2027-10-19 |  | start no earlier than 2027-06-26 | Zenith | 8656714 |
| 1770 | 36900.37000.37100.38000.39100.40400.224800.933200 | Terrace waterproofing | 40d | 2027-06-26 | 2027-08-04 | 1167FS+40d |  | Zenith | 8692234 |
| 1771 | 36900.37000.37100.38000.39100.40400.224800.933300 | Terrace finishing | 75d | 2027-08-06 | 2027-10-19 | 1770FS+1d |  | Zenith | 8692224 |
| 1772 | 36900.37000.37100.38000.39100.40400.48600 | **Balcony Railing** | 282d | 2027-01-30 | 2027-12-22 |  | start no earlier than 2027-01-30 | Zenith | 8648154 |
| 1773 | 36900.37000.37100.38000.39100.40400.48600.933400 | 1st Floor | 8d | 2027-01-30 | 2027-02-06 | 1234FF+235d |  | Zenith | 8692214 |
| 1774 | 36900.37000.37100.38000.39100.40400.48600.933500 | 2nd Floor | 8d | 2027-02-07 | 2027-02-14 | 1773, 1250 |  | Zenith | 8692204 |
| 1775 | 36900.37000.37100.38000.39100.40400.48600.933600 | 3rd Floor | 8d | 2027-02-15 | 2027-02-22 | 1774, 1266 |  | Zenith | 8692194 |
| 1776 | 36900.37000.37100.38000.39100.40400.48600.933700 | 4th Floor | 8d | 2027-02-23 | 2027-03-02 | 1775, 1282 |  | Zenith | 8692184 |
| 1777 | 36900.37000.37100.38000.39100.40400.48600.933800 | 5th Floor | 8d | 2027-03-03 | 2027-03-10 | 1776, 1298 |  | Zenith | 8692174 |
| 1778 | 36900.37000.37100.38000.39100.40400.48600.933900 | 6th Floor | 8d | 2027-03-11 | 2027-03-18 | 1777, 1314 |  | Zenith | 8692164 |
| 1779 | 36900.37000.37100.38000.39100.40400.48600.934000 | 7th Floor | 8d | 2027-03-19 | 2027-03-26 | 1778, 1330 |  | Zenith | 8692154 |
| 1780 | 36900.37000.37100.38000.39100.40400.48600.934100 | 8th Floor | 8d | 2027-03-27 | 2027-04-03 | 1779, 1346 |  | Zenith | 8692144 |
| 1781 | 36900.37000.37100.38000.39100.40400.48600.934200 | 9th Floor | 8d | 2027-04-04 | 2027-04-11 | 1780, 1362 |  | Zenith | 8692134 |
| 1782 | 36900.37000.37100.38000.39100.40400.48600.934300 | 10th Floor | 8d | 2027-04-12 | 2027-04-19 | 1781, 1378 |  | Zenith | 8692124 |
| 1783 | 36900.37000.37100.38000.39100.40400.48600.934400 | 11th Floor | 8d | 2027-04-20 | 2027-04-27 | 1782, 1394 |  | Zenith | 8692114 |
| 1784 | 36900.37000.37100.38000.39100.40400.48600.934500 | 12th Floor | 8d | 2027-04-28 | 2027-05-05 | 1783, 1410 |  | Zenith | 8692104 |
| 1785 | 36900.37000.37100.38000.39100.40400.48600.934600 | 13th Floor | 8d | 2027-05-06 | 2027-05-13 | 1784, 1426 |  | Zenith | 8692094 |
| 1786 | 36900.37000.37100.38000.39100.40400.48600.934700 | 14th Floor | 8d | 2027-05-14 | 2027-05-21 | 1785, 1442 |  | Zenith | 8692084 |
| 1787 | 36900.37000.37100.38000.39100.40400.48600.934800 | 15th Floor | 8d | 2027-05-22 | 2027-05-29 | 1786, 1458 |  | Zenith | 8692074 |
| 1788 | 36900.37000.37100.38000.39100.40400.48600.934900 | 16th Floor | 8d | 2027-05-30 | 2027-06-06 | 1787, 1474 |  | Zenith | 8692064 |
| 1789 | 36900.37000.37100.38000.39100.40400.48600.935000 | 17th Floor | 8d | 2027-06-07 | 2027-06-14 | 1788, 1490 |  | Zenith | 8692054 |
| 1790 | 36900.37000.37100.38000.39100.40400.48600.935100 | 18th Floor | 8d | 2027-06-15 | 2027-06-22 | 1789, 1506 |  | Zenith | 8692044 |
| 1791 | 36900.37000.37100.38000.39100.40400.48600.935200 | 19th Floor | 8d | 2027-06-23 | 2027-06-30 | 1790, 1522 |  | Zenith | 8692034 |
| 1792 | 36900.37000.37100.38000.39100.40400.48600.935300 | 20th Floor | 8d | 2027-07-01 | 2027-07-08 | 1791, 1538 |  | Zenith | 8692024 |
| 1793 | 36900.37000.37100.38000.39100.40400.48600.935400 | 21st Floor | 8d | 2027-07-09 | 2027-07-16 | 1792, 1554 |  | Zenith | 8692014 |
| 1794 | 36900.37000.37100.38000.39100.40400.48600.935500 | 22nd Floor | 8d | 2027-07-17 | 2027-07-24 | 1793, 1570 |  | Zenith | 8692004 |
| 1795 | 36900.37000.37100.38000.39100.40400.48600.935600 | 23rd Floor | 8d | 2027-07-25 | 2027-08-01 | 1794, 1586 |  | Zenith | 8691994 |
| 1796 | 36900.37000.37100.38000.39100.40400.48600.935700 | 24th Floor | 8d | 2027-08-02 | 2027-08-09 | 1795, 1602 |  | Zenith | 8691984 |
| 1797 | 36900.37000.37100.38000.39100.40400.48600.935800 | 25th Floor | 8d | 2027-08-10 | 2027-08-17 | 1796, 1618 |  | Zenith | 8691974 |
| 1798 | 36900.37000.37100.38000.39100.40400.48600.935900 | 26th Floor | 8d | 2027-08-18 | 2027-08-25 | 1797, 1634 |  | Zenith | 8691964 |
| 1799 | 36900.37000.37100.38000.39100.40400.48600.936000 | 27th Floor | 8d | 2027-08-26 | 2027-09-02 | 1798, 1650 |  | Zenith | 8691954 |
| 1800 | 36900.37000.37100.38000.39100.40400.48600.936100 | 28th Floor | 8d | 2027-09-03 | 2027-09-10 | 1799, 1666 |  | Zenith | 8691944 |
| 1801 | 36900.37000.37100.38000.39100.40400.48600.936200 | 29th Floor | 8d | 2027-09-11 | 2027-09-18 | 1800, 1682 |  | Zenith | 8691934 |
| 1802 | 36900.37000.37100.38000.39100.40400.48600.936300 | 30th Floor | 8d | 2027-09-19 | 2027-09-26 | 1801, 1698 |  | Zenith | 8691924 |
| 1803 | 36900.37000.37100.38000.39100.40400.48600.936400 | 31st Floor | 8d | 2027-09-27 | 2027-10-04 | 1802, 1714 |  | Zenith | 8691914 |
| 1804 | 36900.37000.37100.38000.39100.40400.48600.936500 | 32nd Floor | 8d | 2027-10-05 | 2027-10-12 | 1803, 1730 |  | Zenith | 8691904 |
| 1805 | 36900.37000.37100.38000.39100.40400.48600.936600 | 33rd Floor | 8d | 2027-10-13 | 2027-10-20 | 1804, 1746 |  | Zenith | 8691894 |
| 1806 | 36900.37000.37100.38000.39100.40400.48600.936700 | 34th Floor | 8d | 2027-10-21 | 2027-10-28 | 1805, 1762 |  | Zenith | 8691884 |
| 1807 | 36900.37000.37100.38000.39100.40400.48600.936800 | 35th Floor | 10d | 2027-10-29 | 2027-12-22 | 1806 |  | Zenith | 8691874 |

| ID | WBS | Task | Duration | Start | Finish | Predecessors | Constraint | Calendar | Unique_Task_ID |
| --- | --- | --- | --- | --- | --- | --- | --- | --- | --- |
| 1808 | 36900.37000.37100.38000.39100.40400.119700 | **Common Area Finishing** | 290d | 2027-04-03 | 2028-03-02 |  | start no earlier than 2027-04-03 | Zenith | 8651734 |
| 1809 | 36900.37000.37100.38000.39100.40400.119700.936900 | Masonary Work | 40d | 2027-04-03 | 2027-05-12 | 1442FS+115d |  | Zenith | 8691864 |
| 1810 | 36900.37000.37100.38000.39100.40400.119700.937000 | Fire sprinkler pipe fixing | 40d | 2027-05-13 | 2027-06-21 | 1809 |  | Zenith | 8691854 |
| 1811 | 36900.37000.37100.38000.39100.40400.119700.937100 | Corridoor, staircase, shaft Plaster & whitewash | 120d | 2027-05-13 | 2027-09-09 | 1809 |  | Zenith | 8691844 |
| 1812 | 36900.37000.37100.38000.39100.40400.119700.937200 | Staircase railing fixing | 100d | 2027-05-13 | 2027-08-20 | 1809 |  | Zenith | 8691834 |
| 1813 | 36900.37000.37100.38000.39100.40400.119700.937300 | Fire staircase flooring | 90d | 2027-06-22 | 2027-09-19 | 1812FF+30d |  | Zenith | 8691824 |
| 1814 | 36900.37000.37100.38000.39100.40400.119700.937400 | Main staircase flooring | 90d | 2027-06-22 | 2027-09-19 | 1812FF+30d |  | Zenith | 8691814 |
| 1815 | 36900.37000.37100.38000.39100.40400.119700.937500 | Fire door work | 45d | 2027-09-20 | 2027-12-18 | 1813 |  | Zenith | 8691804 |
| 1816 | 36900.37000.37100.38000.39100.40400.119700.937600 | Lobby flooring & Corridor | 90d | 2027-07-21 | 2027-10-18 | 1814FF+29d |  | Zenith | 8691794 |
| 1817 | 36900.37000.37100.38000.39100.40400.119700.937700 | Ceiling & wall putty | 120d | 2027-07-22 | 2028-01-02 | 1815FF+15d, 1816FF+30d, 1763FF+30d |  | Zenith | 8691784 |
| 1818 | 36900.37000.37100.38000.39100.40400.119700.937800 | Electrical wiring work | 120d | 2027-08-06 | 2028-01-17 | 1817FF+15d |  | Zenith | 8691774 |
| 1819 | 36900.37000.37100.38000.39100.40400.119700.937900 | Ceiling & wall painting | 120d | 2027-08-26 | 2028-02-06 | 1810FS+20d, 1817SS+20d, 1818FF+20d |  | Zenith | 8691764 |
| 1820 | 36900.37000.37100.38000.39100.40400.119700.938000 | Light fixture supply & installation | 45d | 2028-01-18 | 2028-03-02 | 1817, 1819FF+25d |  | Zenith | 8691754 |
| 1821 | 36900.37000.37100.38000.121500 | **MEP work** | 287.75d | 2027-05-02 | 2028-03-29 |  | start no earlier than 2027-05-02 | Zenith | 8651834 |
| 1822 | 36900.37000.37100.38000.121500.125600 | **Electrical work** | 228d | 2027-07-01 | 2028-03-29 |  | start no earlier than 2027-07-01 | Zenith | 8652144 |
| 1823 | 36900.37000.37100.38000.121500.125600.811600 | Cable Tray | 90d | 2027-07-01 | 2027-09-28 | 1167FS+45d |  | Zenith | 8725554 |
| 1824 | 36900.37000.37100.38000.121500.125600.811700 | Cable, main & sub main | 60d | 2027-08-15 | 2027-10-13 | 1823SS+45d |  | Zenith | 8725544 |
| 1825 | 36900.37000.37100.38000.121500.125600.811800 | LT panel & DB | 90d | 2027-09-29 | 2028-02-10 | 1823 |  | Zenith | 8725534 |
| 1826 | 36900.37000.37100.38000.121500.125600.811900 | Rising main | 90d | 2027-10-14 | 2028-02-25 | 1823FS+15d |  | Zenith | 8725524 |
| 1827 | 36900.37000.37100.38000.121500.125600.812000 | Earthing Works | 60d | 2027-10-19 | 2028-01-31 | 1823FS+20d |  | Zenith | 8725514 |
| 1828 | 36900.37000.37100.38000.121500.125600.812100 | Energy meter | 60d | 2028-01-30 | 2028-03-29 | 1824FS-2d, 1827FS-2d |  | Zenith | 8725504 |
| 1829 | 36900.37000.37100.38000.121500.125600.812200 | HVAC & Exhast fan | 120d | 2027-09-24 | 2028-03-06 | 1823FS-5d |  | Zenith | 8725494 |
| 1830 | 36900.37000.37100.38000.121500.125600.812300 | FTTH | 60d | 2028-01-27 | 2028-03-26 | 1825FS-15d |  | Zenith | 8725484 |
| 1831 | 36900.37000.37100.38000.121500.125600.812400 | Security System - FA & PA | 60d | 2028-01-30 | 2028-03-29 | 1825FS-12d, 1826FF, 1829FF+2d, 1830FF+0.25d |  | Zenith | 8725474 |

| ID | WBS | Task | Duration | Start | Finish | Predecessors | Constraint | Calendar | Unique_Task_ID |
| --- | --- | --- | --- | --- | --- | --- | --- | --- | --- |
| 1832 | 36900.37000.37100.38000.121500.164100 | **Plumbing work** | 133d | 2027-08-05 | 2028-01-29 |  | start no earlier than 2027-08-05 | Zenith | 8652774 |
| 1833 | 36900.37000.37100.38000.121500.164100.812500 | Terrace looping | 45d | 2027-08-05 | 2027-09-18 | 1770 |  | Zenith | 8725464 |
| 1834 | 36900.37000.37100.38000.121500.164100.812600 | Shaft Plumbing | 70d | 2027-08-20 | 2027-10-28 | 1833FS-30d, 1811FS-30d |  | Zenith | 8725454 |
| 1835 | 36900.37000.37100.38000.121500.164100.812700 | CP sanitary fixture supply | 45d | 2027-10-29 | 2028-01-26 | 1834 |  | Zenith | 8725444 |
| 1836 | 36900.37000.37100.38000.121500.164100.812800 | Cold & flushing water supply | 45d | 2027-10-29 | 2028-01-26 | 1834 |  | Zenith | 8725434 |
| 1837 | 36900.37000.37100.38000.121500.164100.812900 | Misc work | 30d | 2027-12-31 | 2028-01-29 | 1835FS-27d, 1836FS-27d |  | Zenith | 8725424 |
| 1838 | 36900.37000.37100.38000.121500.211900 | **Fire fighting work** | 142d | 2027-06-27 | 2027-12-30 |  | start no earlier than 2027-06-27 | Zenith | 8656034 |
| 1839 | 36900.37000.37100.38000.121500.211900.813000 | Fire hydrant work | 75d | 2027-06-27 | 2027-09-09 | 1811SS+45d |  | Zenith | 8725414 |
| 1840 | 36900.37000.37100.38000.121500.211900.813100 | Pipe connection & sprinkler installation | 45d | 2027-10-02 | 2027-12-30 | 1839FS-2d, 1842FF+13d |  | Zenith | 8725404 |
| 1841 | 36900.37000.37100.38000.121500.211900.813200 | Shaft Downtake works | 60d | 2027-08-05 | 2027-10-03 | 1770, 1811FS-60d |  | Zenith | 8725394 |
| 1842 | 36900.37000.37100.38000.121500.211900.813300 | Connection to pump room | 30d | 2027-10-04 | 2027-12-17 | 1841 |  | Zenith | 8725384 |
| 1843 | 36900.37000.37100.38000.121500.219600 | **Lift work** | 119.25d | 2027-05-02 | 2027-08-29 |  | start no earlier than 2027-05-02 | Zenith | 8656654 |
| 1844 | 36900.37000.37100.38000.121500.219600.813400 | Lift Shaft/Pit Handover | 40d | 2027-05-02 | 2027-06-11 | 1205FS+5d |  | Zenith | 8725374 |
| 1845 | 36900.37000.37100.38000.121500.219600.813500 | Lift installation work | 45d | 2027-06-11 | 2027-07-26 | 1844 |  | Zenith | 8725364 |
| 1846 | 36900.37000.37100.38000.121500.219600.813600 | Lift testing and commissioning | 34d | 2027-07-26 | 2027-08-29 | 1845FS+0.25d |  | Zenith | 8725354 |
| 1847 | 36900.37000.37100.38000.225800 | **Basement lobby** | 90d | 2027-06-26 | 2027-09-24 |  | start no earlier than 2027-06-26 | Zenith | 8656974 |
| 1848 | 36900.37000.37100.38000.225800.402100 | Basement lobby | 90d | 2027-06-26 | 2027-09-24 | 1844FS+15d, 984FS+15d, 985FS+15d |  | Zenith | 8731804 |
| 1849 | 36900.37000.37100.38000.222500 | **External Paint Works** | 90d | 2027-09-27 | 2028-02-08 |  | start no earlier than 2027-09-27 | Zenith | 8656834 |
| 1850 | 36900.37000.37100.38000.222500.402200 | Surface prepration with Primer | 60d | 2027-10-09 | 2028-01-21 | 1205FS+2d, 1807FS-30d |  | Zenith | 8731794 |
| 1851 | 36900.37000.37100.38000.222500.402300 | External Painting (Texture & first coat) | 90d | 2027-09-27 | 2028-02-08 | 1850FF+10d, 1764 |  | Zenith | 8731784 |
| 1852 | 36900.37000.37100.38000.302300 | OC Application/Readiness | 2d | 2028-01-30 | 2028-01-31 | 1162FF+290d, 1851FS-30d, 1840FS+30d, 1837, 1848FS+30d, 1846, 1831FS-60d, 1828FS-60d, 1771FS+30d, 1768FS-60d, 1817FS+0.25d, 1807, 1764FS+0.25d |  | Zenith | 8735444 |
| 1853 | 36900.37000.37100.38000.302400 | OC Receipt | 60d | 2028-02-01 | 2028-03-31 | 1852 |  | Zenith | 8735434 |
| 1854 | 36900.37000.37100.38000.126100 | **Post OC activities** | 325d | 2028-03-17 | 2029-03-21 |  | start no earlier than 2028-03-17 | Zenith | 8652054 |
| 1855 | 36900.37000.37100.38000.126100.402400 | CP & Sanitaryware | 150d | 2028-04-01 | 2028-08-28 | 1853 |  | Zenith | 8731774 |
| 1856 | 36900.37000.37100.38000.126100.402500 | Electrical Fixtures And Fittings | 150d | 2028-04-01 | 2028-08-28 | 1853 |  | Zenith | 8731764 |
| 1857 | 36900.37000.37100.38000.126100.402600 | Final coat paint external | 100d | 2028-04-01 | 2028-07-09 | 1853 |  | Zenith | 8731754 |
| 1858 | 36900.37000.37100.38000.126100.402700 | Final Coat Paint Internal | 150d | 2028-04-01 | 2028-08-28 | 1853, 1767 |  | Zenith | 8731744 |
| 1859 | 36900.37000.37100.38000.126100.402800 | Balcony Railing Glass Fixing | 120d | 2028-08-29 | 2029-02-09 | 1858, 1807FS+30d |  | Zenith | 8731734 |
| 1860 | 36900.37000.37100.38000.126100.402900 | MEP | 150d | 2028-03-18 | 2028-08-14 | 1820FS+15d |  | Zenith | 8731724 |
| 1861 | 36900.37000.37100.38000.126100.403000 | Wooden Flooring | 180d | 2028-03-17 | 2028-09-12 | 1858FF+15d |  | Zenith | 8731714 |
| 1862 | 36900.37000.37100.38000.126100.403100 | Split AC Units installation | 100d | 2028-09-28 | 2029-02-19 | 1861FS+15d |  | Zenith | 8731704 |
| 1863 | 36900.37000.37100.38000.126100.403200 | Misc. works (Modular Kitchen & others) | 180d | 2028-08-09 | 2029-03-21 | 1862FF+30d |  | Zenith | 8731694 |
| 1864 | 36900.37000.37100.38000.302500 | Offer To Possession | 182d | 2028-08-31 | 2029-04-14 | 1853FS+152d, 1855FF+20d, 1856FF+20d, 1857FF+20d, 1862FF+10d, 1860FF+30d, 1859FF+15d, 1863FF+15d |  | Zenith | 8735424 |

| ID | WBS | Task | Duration | Start | Finish | Predecessors | Complete | Constraint | Calendar | Unique_Task_ID |
| --- | --- | --- | --- | --- | --- | --- | --- | --- | --- | --- |
| 1865 | 36900.37000.37100.38100 | **Tower 01** | 1900d | 2024-04-15 | 2030-02-22 |  | 5% | start no earlier than 2024-04-15 | Zenith | 8647584 |
| 1866 | 36900.37000.37100.38100.52900 | **Sub-Structure Works** | 648d | 2024-04-15 | 2026-03-23 |  | 79% | start no earlier than 2024-04-15 | Zenith | 8648374 |
| 1867 | 36900.37000.37100.38100.52900.140700 | **Soil Bed Preparation** | 196d | 2024-04-15 | 2024-10-27 |  | 100% | start no earlier than 2024-04-15 | Zenith | 8652644 |
| 1868 | 36900.37000.37100.38100.52900.140700.228800 | Excavation (2m) | 61d | 2024-04-21 | 2024-06-20 | 941SS+10d | 100% | start no earlier than 2024-04-21 | Zenith | 8725344 |
| 1869 | 36900.37000.37100.38100.52900.140700.228900 | Soldier Piling shop drawing approval | 19d | 2024-04-15 | 2024-07-09 | 1868 | 100% | start no earlier than 2024-04-15 | Zenith | 8725334 |
| 1870 | 36900.37000.37100.38100.52900.140700.229000 | Mobilization & Soldier Piling with Excavation (4m) | 65d | 2024-05-06 | 2024-10-08 | 1869FS-104d | 100% | start no earlier than 2024-05-06 | Zenith | 8725324 |
| 1871 | 36900.37000.37100.38100.52900.140700.229100 | Balance B3 bulk Excavation | 61d | 2024-05-12 | 2024-10-11 | 1870FS-150d | 100% | start no earlier than 2024-05-12 | Zenith | 8725314 |
| 1872 | 36900.37000.37100.38100.52900.140700.229200 | Soil dressing & ATT | 16d | 2024-10-12 | 2024-10-27 | 1871FS+8d | 100% | start no earlier than 2024-10-12 | Zenith | 8725304 |
| 1873 | 36900.37000.37100.38100.52900.116800 | **Structure Works** | 317d | 2024-10-23 | 2025-10-19 |  | 100% | start no earlier than 2024-10-23 | Zenith | 8651814 |
| 1874 | 36900.37000.37100.38100.52900.116800.140900 | **Raft Foundation** | 68d | 2024-10-23 | 2025-02-12 |  | 100% | start no earlier than 2024-10-23 | Zenith | 8652844 |
| 1875 | 36900.37000.37100.38100.52900.116800.140900.270300 | PCC | 9d | 2024-10-23 | 2024-11-04 | 1872, 948SS+10d | 100% | start no earlier than 2024-10-23 | Zenith | 8691744 |
| 1876 | 36900.37000.37100.38100.52900.116800.140900.270200 | Column/SW layout marking | 15d | 2024-12-23 | 2025-01-07 | 1875FS+3d | 100% | start no earlier than 2024-12-23 | Zenith | 8691734 |
| 1877 | 36900.37000.37100.38100.52900.116800.140900.270100 | Reinforcement | 46d | 2024-12-16 | 2025-02-08 | 1876FS-10d | 100% | start no earlier than 2024-12-16 | Zenith | 8691724 |
| 1878 | 36900.37000.37100.38100.52900.116800.140900.270000 | Formwork (Conventional) | 15d | 2025-01-25 | 2025-02-08 | 1877FF+3d | 100% | start no earlier than 2025-01-25 | Zenith | 8691714 |
| 1879 | 36900.37000.37100.38100.52900.116800.140900.269900 | Concreting | 3d | 2025-02-09 | 2025-02-12 | 1878FF+3d | 100% | start no earlier than 2025-02-09 | Zenith | 8691704 |
| 1880 | 36900.37000.37100.38100.52900.116800.135300 | **Basement 03 Roof Slab (Dummy/Stitch Slab)** | 4d | 2025-03-24 | 2025-03-27 |  | 100% | start no earlier than 2025-03-24 | Zenith | 8652454 |
| 1881 | 36900.37000.37100.38100.52900.116800.135300.269800 | Column/SW Reinforcement | 1d | 2025-03-24 | 2025-03-24 | 1879 | 100% | start no earlier than 2025-03-24 | Zenith | 8691694 |
| 1882 | 36900.37000.37100.38100.52900.116800.135300.269700 | SW Formwork (Conventional) | 1d | 2025-03-25 | 2025-03-25 | 1881SS+1d | 100% | start no earlier than 2025-03-25 | Zenith | 8691684 |
| 1883 | 36900.37000.37100.38100.52900.116800.135300.269600 | Column/SW Concreting | 1d | 2025-03-26 | 2025-03-26 | 1882SS+1d | 100% | start no earlier than 2025-03-26 | Zenith | 8691674 |
| 1884 | 36900.37000.37100.38100.52900.116800.135300.269500 | Slab Formwork (Conventional) | 1d | 2025-03-27 | 2025-03-27 | 1883SS+1d | 100% | start no earlier than 2025-03-27 | Zenith | 8691664 |
| 1885 | 36900.37000.37100.38100.52900.116800.135300.269400 | Slab Reinforcement + Conduting | 1d | 2025-03-27 | 2025-03-27 | 1884 | 100% | start no earlier than 2025-03-27 | Zenith | 8691654 |
| 1886 | 36900.37000.37100.38100.52900.116800.135300.269300 | Concreting | 1d | 2025-03-27 | 2025-03-27 | 1885 | 100% | start no earlier than 2025-03-27 | Zenith | 8691644 |
| 1887 | 36900.37000.37100.38100.52900.116800.135400 | **Basement 02 Roof Slab** | 75d | 2025-02-26 | 2025-05-11 |  | 100% | start no earlier than 2025-02-26 | Zenith | 8652444 |
| 1888 | 36900.37000.37100.38100.52900.116800.135400.269200 | Column/SW Reinforcement | 7d | 2025-02-26 | 2025-03-27 | 1886FS-28d | 100% | start no earlier than 2025-02-26 | Zenith | 8691634 |
| 1889 | 36900.37000.37100.38100.52900.116800.135400.269100 | SW Formwork (Conventional) | 27d | 2025-03-18 | 2025-05-01 | 1888SS+22d | 100% | start no earlier than 2025-03-18 | Zenith | 8691624 |
| 1890 | 36900.37000.37100.38100.52900.116800.135400.269000 | Column/SW Concreting | 25d | 2025-03-20 | 2025-05-01 | 1889SS+4d | 100% | start no earlier than 2025-03-20 | Zenith | 8691614 |
| 1891 | 36900.37000.37100.38100.52900.116800.135400.268900 | Slab Formwork (Conventional) | 12d | 2025-04-06 | 2025-05-10 | 1890SS-30d | 100% | start no earlier than 2025-04-06 | Zenith | 8691604 |
| 1892 | 36900.37000.37100.38100.52900.116800.135400.268800 | Slab Reinforcement + Conduting | 7d | 2025-04-17 | 2025-05-10 | 1891FS-23d | 100% | start no earlier than 2025-04-17 | Zenith | 8691594 |
| 1893 | 36900.37000.37100.38100.52900.116800.135400.268700 | Concreting | 7d | 2025-04-22 | 2025-05-11 | 1892FS-19d | 100% | start no earlier than 2025-04-22 | Zenith | 8691584 |

| ID | WBS | Task | Duration | Start | Finish | Predecessors | Complete | Constraint | Calendar | Unique_Task_ID |
| --- | --- | --- | --- | --- | --- | --- | --- | --- | --- | --- |
| 1894 | 36900.37000.37100.38100.52900.116800.135500 | **Basement 01 Roof Slab** | 86d | 2025-04-24 | 2025-07-18 |  | 100% | start no earlier than 2025-04-24 | Zenith | 8652434 |
| 1895 | 36900.37000.37100.38100.52900.116800.135500.268600 | Column/SW Reinforcement | 46d | 2025-04-24 | 2025-06-27 | 1893FS-16d | 100% | start no earlier than 2025-04-24 | Zenith | 8691574 |
| 1896 | 36900.37000.37100.38100.52900.116800.135500.268500 | SW Formwork (Conventional) | 14d | 2025-04-26 | 2025-07-05 | 1895SS+3d | 100% | start no earlier than 2025-04-26 | Zenith | 8691564 |
| 1897 | 36900.37000.37100.38100.52900.116800.135500.268400 | Column/SW Concreting | 12d | 2025-04-29 | 2025-07-06 | 1896SS+4d | 100% | start no earlier than 2025-04-29 | Zenith | 8691554 |
| 1898 | 36900.37000.37100.38100.52900.116800.135500.268300 | Slab Formwork (Conventional) | 10d | 2025-05-23 | 2025-07-17 | 1897SS+26d | 100% | start no earlier than 2025-05-23 | Zenith | 8691544 |
| 1899 | 36900.37000.37100.38100.52900.116800.135500.268200 | Slab Reinforcement + Conduting | 6d | 2025-06-08 | 2025-07-17 | 1898FS-39d | 100% | start no earlier than 2025-06-08 | Zenith | 8691534 |
| 1900 | 36900.37000.37100.38100.52900.116800.135500.268100 | Concreting | 8d | 2025-06-25 | 2025-07-18 | 1899FS-21d | 100% | start no earlier than 2025-06-25 | Zenith | 8691524 |
| 1901 | 36900.37000.37100.38100.52900.116800.135600 | **Podium Slab/Ground Roof Floor Slab** | 108d | 2025-07-04 | 2025-10-19 |  | 100% | start no earlier than 2025-07-04 | Zenith | 8652424 |
| 1902 | 36900.37000.37100.38100.52900.116800.135600.268000 | Column/SW Reinforcement | 11d | 2025-07-04 | 2025-08-20 | 1900FS-16d | 100% | start no earlier than 2025-07-04 | Zenith | 8691514 |
| 1903 | 36900.37000.37100.38100.52900.116800.135600.267900 | SW Formwork (Conventional) | 15d | 2025-07-25 | 2025-10-08 | 1902SS+24d | 100% | start no earlier than 2025-07-25 | Zenith | 8691504 |
| 1904 | 36900.37000.37100.38100.52900.116800.135600.267800 | Column/SW Concreting | 14d | 2025-07-26 | 2025-10-12 | 1903SS+2d | 100% | start no earlier than 2025-07-26 | Zenith | 8691494 |
| 1905 | 36900.37000.37100.38100.52900.116800.135600.267700 | Slab Formwork (Conventional) | 16d | 2025-08-12 | 2025-10-18 | 1904SS+16d | 100% | start no earlier than 2025-08-12 | Zenith | 8691484 |
| 1906 | 36900.37000.37100.38100.52900.116800.135600.267600 | Slab Reinforcement + Conduting | 12d | 2025-08-22 | 2025-10-18 | 1905FS-56d | 100% | start no earlier than 2025-08-22 | Zenith | 8691474 |
| 1907 | 36900.37000.37100.38100.52900.116800.135600.267500 | Concreting | 10d | 2025-09-09 | 2025-10-19 | 1906FS-38d | 100% | start no earlier than 2025-09-09 | Zenith | 8691464 |
| 1908 | 36900.37000.37100.38100.52900.211800 | **Substructure Finishes** | 110d | 2025-11-19 | 2026-03-23 |  |  | start no earlier than 2025-11-19 | Zenith | 8655974 |
| 1909 | 36900.37000.37100.38100.52900.211800.813700 | Masonary Work | 35d | 2025-11-19 | 2026-01-07 | 1907FS+30d |  |  | Zenith | 8725294 |
| 1910 | 36900.37000.37100.38100.52900.211800.813800 | Plaster Work | 30d | 2026-01-08 | 2026-02-06 | 1909 |  |  | Zenith | 8725284 |
| 1911 | 36900.37000.37100.38100.52900.211800.813900 | Structural Steel work | 50d | 2026-01-03 | 2026-02-21 | 1907FS+60d |  |  | Zenith | 8725274 |
| 1912 | 36900.37000.37100.38100.52900.211800.814000 | White Wash & Misc. | 35d | 2026-02-17 | 2026-03-23 | 1910FS+10d |  |  | Zenith | 8725264 |
| 1913 | 36900.37000.37100.38100.38900 | **Superstructure** | 1009d | 2025-10-13 | 2028-10-30 |  |  | start no earlier than 2025-10-13 | Zenith | 8647674 |
| 1914 | 36900.37000.37100.38100.38900.44800 | **RCC structure** | 515d | 2025-10-13 | 2027-05-10 |  | 2% | start no earlier than 2025-10-13 | Zenith | 8647934 |
| 1915 | 36900.37000.37100.38100.38900.44800.147200 | **1st Floor Roof slab** | 67d | 2025-10-13 | 2026-01-02 |  | 37% | start no earlier than 2025-10-13 | Zenith | 8654104 |
| 1916 | 36900.37000.37100.38100.38900.44800.147200.267400 | Reinforcement | 27d | 2025-10-13 | 2026-01-02 | 1907 | 44% | start no earlier than 2025-10-13 | Zenith | 8691454 |
| 1917 | 36900.37000.37100.38100.38900.44800.147200.267300 | Conduiting, box & sleeves & studs | 19d | 2025-10-15 | 2025-12-16 | 1916SS+3d | 31% | start no earlier than 2025-10-15 | Zenith | 8691444 |
| 1918 | 36900.37000.37100.38100.38900.44800.147200.267200 | Formwork | 19d | 2025-10-14 | 2025-11-28 | 1916SS+4d | 47% | start no earlier than 2025-10-14 | Zenith | 8691434 |
| 1919 | 36900.37000.37100.38100.38900.44800.147200.267100 | Concreting | 13.06d | 2025-10-16 | 2025-12-28 | 1917FS-47d, 1918FS-48d | 15% |  | Zenith | 8691424 |

| ID | WBS | Task | Duration | Start | Finish | Predecessors | Constraint | Calendar | Unique_Task_ID |
| --- | --- | --- | --- | --- | --- | --- | --- | --- | --- |
| 1920 | 36900.37000.37100.38100.38900.44800.173400 | **2nd Floor Roof slab** | 20d | 2025-12-29 | 2026-01-17 |  | start no earlier than 2025-12-29 | Zenith | 8654484 |
| 1921 | 36900.37000.37100.38100.38900.44800.173400.938100 | Reinforcement | 15d | 2025-12-29 | 2026-01-12 | 1919 |  | Zenith | 8691414 |
| 1922 | 36900.37000.37100.38100.38900.44800.173400.938200 | Conduiting, box & sleevs | 15d | 2026-01-01 | 2026-01-15 | 1921SS+3d |  | Zenith | 8691404 |
| 1923 | 36900.37000.37100.38100.38900.44800.173400.938300 | Formwork | 15d | 2026-01-02 | 2026-01-16 | 1921SS+4d |  | Zenith | 8691394 |
| 1924 | 36900.37000.37100.38100.38900.44800.173400.938400 | Concreting | 1d | 2026-01-17 | 2026-01-17 | 1922FS+1d, 1923 |  | Zenith | 8691384 |
| 1925 | 36900.37000.37100.38100.38900.44800.173500 | **3rd Floor Roof slab** | 12d | 2026-01-18 | 2026-01-29 |  | start no earlier than 2026-01-18 | Zenith | 8654504 |
| 1926 | 36900.37000.37100.38100.38900.44800.173500.938500 | Reinforcement | 7d | 2026-01-18 | 2026-01-24 | 1924 |  | Zenith | 8691374 |
| 1927 | 36900.37000.37100.38100.38900.44800.173500.938600 | Conduiting | 7d | 2026-01-21 | 2026-01-27 | 1926SS+3d |  | Zenith | 8691364 |
| 1928 | 36900.37000.37100.38100.38900.44800.173500.938700 | Formwork | 7d | 2026-01-22 | 2026-01-28 | 1926SS+4d |  | Zenith | 8691354 |
| 1929 | 36900.37000.37100.38100.38900.44800.173500.938800 | Concreting | 1d | 2026-01-29 | 2026-01-29 | 1927FS+1d, 1928 |  | Zenith | 8691344 |
| 1930 | 36900.37000.37100.38100.38900.44800.173600 | **4th floor roof slab** | 8d | 2026-01-30 | 2026-02-06 |  | start no earlier than 2026-01-30 | Zenith | 8654514 |
| 1931 | 36900.37000.37100.38100.38900.44800.173600.938900 | Reinforcement | 5d | 2026-01-30 | 2026-02-03 | 1929 |  | Zenith | 8691334 |
| 1932 | 36900.37000.37100.38100.38900.44800.173600.939000 | Conduiting | 5d | 2026-01-31 | 2026-02-04 | 1931SS+1d |  | Zenith | 8691324 |
| 1933 | 36900.37000.37100.38100.38900.44800.173600.939100 | Formwork | 5d | 2026-02-01 | 2026-02-05 | 1931SS+2d |  | Zenith | 8691314 |
| 1934 | 36900.37000.37100.38100.38900.44800.173600.939200 | Concreting | 1d | 2026-02-06 | 2026-02-06 | 1932FS+1d, 1933 |  | Zenith | 8691304 |
| 1935 | 36900.37000.37100.38100.38900.44800.173700 | **5th floor roof slab** | 8d | 2026-02-07 | 2026-02-14 |  | start no earlier than 2026-02-07 | Zenith | 8654534 |
| 1936 | 36900.37000.37100.38100.38900.44800.173700.939300 | Reinforcement | 5d | 2026-02-07 | 2026-02-11 | 1934 |  | Zenith | 8691294 |
| 1937 | 36900.37000.37100.38100.38900.44800.173700.939400 | Conduiting | 5d | 2026-02-08 | 2026-02-12 | 1936SS+1d |  | Zenith | 8691284 |
| 1938 | 36900.37000.37100.38100.38900.44800.173700.939500 | Formwork | 5d | 2026-02-09 | 2026-02-13 | 1936SS+2d |  | Zenith | 8691274 |
| 1939 | 36900.37000.37100.38100.38900.44800.173700.939600 | Concreting | 1d | 2026-02-14 | 2026-02-14 | 1937FS+1d, 1938 |  | Zenith | 8691264 |
| 1940 | 36900.37000.37100.38100.38900.44800.173800 | **6th floor roof slab** | 8d | 2026-02-15 | 2026-02-22 |  | start no earlier than 2026-02-15 | Zenith | 8654554 |
| 1941 | 36900.37000.37100.38100.38900.44800.173800.939700 | Reinforcement | 5d | 2026-02-15 | 2026-02-19 | 1939 |  | Zenith | 8691254 |
| 1942 | 36900.37000.37100.38100.38900.44800.173800.939800 | Conduiting | 5d | 2026-02-16 | 2026-02-20 | 1941SS+1d |  | Zenith | 8691244 |
| 1943 | 36900.37000.37100.38100.38900.44800.173800.939900 | Formwork | 5d | 2026-02-17 | 2026-02-21 | 1941SS+2d |  | Zenith | 8691234 |
| 1944 | 36900.37000.37100.38100.38900.44800.173800.940000 | Concreting | 1d | 2026-02-22 | 2026-02-22 | 1942FS+1d, 1943 |  | Zenith | 8691224 |

| ID | WBS | Task | Duration | Start | Finish | Predecessors | Constraint | Calendar | Unique_Task_ID |
| --- | --- | --- | --- | --- | --- | --- | --- | --- | --- |
| 1945 | 36900.37000.37100.38100.38900.44800.173900 | **7th floor roof slab** | 8d | 2026-02-23 | 2026-03-02 |  | start no earlier than 2026-02-23 | Zenith | 8654564 |
| 1946 | 36900.37000.37100.38100.38900.44800.173900.940100 | Reinforcement | 5d | 2026-02-23 | 2026-02-27 | 1944 |  | Zenith | 8691214 |
| 1947 | 36900.37000.37100.38100.38900.44800.173900.940200 | Conduiting | 5d | 2026-02-24 | 2026-02-28 | 1946SS+1d |  | Zenith | 8691204 |
| 1948 | 36900.37000.37100.38100.38900.44800.173900.940300 | Formwork | 5d | 2026-02-25 | 2026-03-01 | 1946SS+2d |  | Zenith | 8691194 |
| 1949 | 36900.37000.37100.38100.38900.44800.173900.940400 | Concreting | 1d | 2026-03-02 | 2026-03-02 | 1947FS+1d, 1948 |  | Zenith | 8691184 |
| 1950 | 36900.37000.37100.38100.38900.44800.174000 | **8th floor roof slab** | 8d | 2026-03-03 | 2026-03-10 |  | start no earlier than 2026-03-03 | Zenith | 8654574 |
| 1951 | 36900.37000.37100.38100.38900.44800.174000.940500 | Reinforcement | 5d | 2026-03-03 | 2026-03-07 | 1949 |  | Zenith | 8691174 |
| 1952 | 36900.37000.37100.38100.38900.44800.174000.940600 | Conduiting | 5d | 2026-03-04 | 2026-03-08 | 1951SS+1d |  | Zenith | 8691164 |
| 1953 | 36900.37000.37100.38100.38900.44800.174000.940700 | Formwork | 5d | 2026-03-05 | 2026-03-09 | 1951SS+2d |  | Zenith | 8691154 |
| 1954 | 36900.37000.37100.38100.38900.44800.174000.940800 | Concreting | 1d | 2026-03-10 | 2026-03-10 | 1952FS+1d, 1953 |  | Zenith | 8691144 |
| 1955 | 36900.37000.37100.38100.38900.44800.174100 | **9th floor roof slab** | 8d | 2026-03-11 | 2026-03-18 |  | start no earlier than 2026-03-11 | Zenith | 8654584 |
| 1956 | 36900.37000.37100.38100.38900.44800.174100.940900 | Reinforcement | 5d | 2026-03-11 | 2026-03-15 | 1954 |  | Zenith | 8691134 |
| 1957 | 36900.37000.37100.38100.38900.44800.174100.941000 | Conduiting | 5d | 2026-03-12 | 2026-03-16 | 1956SS+1d |  | Zenith | 8691124 |
| 1958 | 36900.37000.37100.38100.38900.44800.174100.941100 | Formwork | 5d | 2026-03-13 | 2026-03-17 | 1956SS+2d |  | Zenith | 8691114 |
| 1959 | 36900.37000.37100.38100.38900.44800.174100.941200 | Concreting | 1d | 2026-03-18 | 2026-03-18 | 1957FS+1d, 1958 |  | Zenith | 8691104 |
| 1960 | 36900.37000.37100.38100.38900.44800.174200 | **10th floor roof slab** | 11d | 2026-03-19 | 2026-03-29 |  | start no earlier than 2026-03-19 | Zenith | 8654604 |
| 1961 | 36900.37000.37100.38100.38900.44800.174200.941300 | Reinforcement | 8d | 2026-03-19 | 2026-03-26 | 1959 |  | Zenith | 8691094 |
| 1962 | 36900.37000.37100.38100.38900.44800.174200.941400 | Conduiting | 8d | 2026-03-20 | 2026-03-27 | 1961SS+1d |  | Zenith | 8691084 |
| 1963 | 36900.37000.37100.38100.38900.44800.174200.941500 | Formwork | 8d | 2026-03-21 | 2026-03-28 | 1961SS+2d |  | Zenith | 8691074 |
| 1964 | 36900.37000.37100.38100.38900.44800.174200.941600 | Concreting | 1d | 2026-03-29 | 2026-03-29 | 1962FS+1d, 1963 |  | Zenith | 8691064 |
| 1965 | 36900.37000.37100.38100.38900.44800.174300 | **11th floor roof slab** | 11d | 2026-03-30 | 2026-04-09 |  | start no earlier than 2026-03-30 | Zenith | 8654634 |
| 1966 | 36900.37000.37100.38100.38900.44800.174300.941700 | Reinforcement | 8d | 2026-03-30 | 2026-04-06 | 1964 |  | Zenith | 8691054 |
| 1967 | 36900.37000.37100.38100.38900.44800.174300.941800 | Conduiting | 8d | 2026-03-31 | 2026-04-07 | 1966SS+1d |  | Zenith | 8691044 |
| 1968 | 36900.37000.37100.38100.38900.44800.174300.941900 | Formwork | 8d | 2026-04-01 | 2026-04-08 | 1966SS+2d |  | Zenith | 8691034 |
| 1969 | 36900.37000.37100.38100.38900.44800.174300.942000 | Concreting | 1d | 2026-04-09 | 2026-04-09 | 1967FS+1d, 1968 |  | Zenith | 8691024 |

| ID | WBS | Task | Duration | Start | Finish | Predecessors | Constraint | Calendar | Unique_Task_ID |
| --- | --- | --- | --- | --- | --- | --- | --- | --- | --- |
| 1970 | 36900.37000.37100.38100.38900.44800.174400 | **12th floor roof slab** | 11d | 2026-04-10 | 2026-04-20 |  | start no earlier than 2026-04-10 | Zenith | 8654654 |
| 1971 | 36900.37000.37100.38100.38900.44800.174400.942100 | Reinforcement | 8d | 2026-04-10 | 2026-04-17 | 1969 |  | Zenith | 8691014 |
| 1972 | 36900.37000.37100.38100.38900.44800.174400.942200 | Conduiting | 8d | 2026-04-11 | 2026-04-18 | 1971SS+1d |  | Zenith | 8691004 |
| 1973 | 36900.37000.37100.38100.38900.44800.174400.942300 | Formwork | 8d | 2026-04-12 | 2026-04-19 | 1971SS+2d |  | Zenith | 8690994 |
| 1974 | 36900.37000.37100.38100.38900.44800.174400.942400 | Concreting | 1d | 2026-04-20 | 2026-04-20 | 1972FS+1d, 1973 |  | Zenith | 8690984 |
| 1975 | 36900.37000.37100.38100.38900.44800.174500 | **13th floor roof slab** | 11d | 2026-04-21 | 2026-05-01 |  | start no earlier than 2026-04-21 | Zenith | 8654674 |
| 1976 | 36900.37000.37100.38100.38900.44800.174500.942500 | Reinforcement | 8d | 2026-04-21 | 2026-04-28 | 1974 |  | Zenith | 8690974 |
| 1977 | 36900.37000.37100.38100.38900.44800.174500.942600 | Conduiting | 8d | 2026-04-22 | 2026-04-29 | 1976SS+1d |  | Zenith | 8690964 |
| 1978 | 36900.37000.37100.38100.38900.44800.174500.942700 | Formwork | 8d | 2026-04-23 | 2026-04-30 | 1976SS+2d |  | Zenith | 8690954 |
| 1979 | 36900.37000.37100.38100.38900.44800.174500.942800 | Concreting | 1d | 2026-05-01 | 2026-05-01 | 1977FS+1d, 1978 |  | Zenith | 8690944 |
| 1980 | 36900.37000.37100.38100.38900.44800.174600 | **14th floor roof slab** | 11d | 2026-05-02 | 2026-05-12 |  | start no earlier than 2026-05-02 | Zenith | 8654684 |
| 1981 | 36900.37000.37100.38100.38900.44800.174600.942900 | Reinforcement | 8d | 2026-05-02 | 2026-05-09 | 1979 |  | Zenith | 8690934 |
| 1982 | 36900.37000.37100.38100.38900.44800.174600.943000 | Conduiting | 8d | 2026-05-03 | 2026-05-10 | 1981SS+1d |  | Zenith | 8690924 |
| 1983 | 36900.37000.37100.38100.38900.44800.174600.943100 | Formwork | 8d | 2026-05-04 | 2026-05-11 | 1981SS+2d |  | Zenith | 8690914 |
| 1984 | 36900.37000.37100.38100.38900.44800.174600.943200 | Concreting | 1d | 2026-05-12 | 2026-05-12 | 1982FS+1d, 1983 |  | Zenith | 8690904 |
| 1985 | 36900.37000.37100.38100.38900.44800.174700 | **15th floor roof slab** | 15d | 2026-05-13 | 2026-05-27 |  | start no earlier than 2026-05-13 | Zenith | 8654724 |
| 1986 | 36900.37000.37100.38100.38900.44800.174700.943300 | Reinforcement | 12d | 2026-05-13 | 2026-05-24 | 1984 |  | Zenith | 8690894 |
| 1987 | 36900.37000.37100.38100.38900.44800.174700.943400 | Conduiting | 12d | 2026-05-14 | 2026-05-25 | 1986SS+1d |  | Zenith | 8690884 |
| 1988 | 36900.37000.37100.38100.38900.44800.174700.943500 | Formwork | 12d | 2026-05-15 | 2026-05-26 | 1986SS+2d |  | Zenith | 8690874 |
| 1989 | 36900.37000.37100.38100.38900.44800.174700.943600 | Concreting | 1d | 2026-05-27 | 2026-05-27 | 1987FS+1d, 1988 |  | Zenith | 8690864 |
| 1990 | 36900.37000.37100.38100.38900.44800.174800 | **16th floor roof slab** | 11d | 2026-05-28 | 2026-06-07 |  | start no earlier than 2026-05-28 | Zenith | 8654744 |
| 1991 | 36900.37000.37100.38100.38900.44800.174800.943700 | Reinforcement | 8d | 2026-05-28 | 2026-06-04 | 1989 |  | Zenith | 8690854 |
| 1992 | 36900.37000.37100.38100.38900.44800.174800.943800 | Conduiting | 8d | 2026-05-29 | 2026-06-05 | 1991SS+1d |  | Zenith | 8690844 |
| 1993 | 36900.37000.37100.38100.38900.44800.174800.943900 | Formwork | 8d | 2026-05-30 | 2026-06-06 | 1991SS+2d |  | Zenith | 8690834 |
| 1994 | 36900.37000.37100.38100.38900.44800.174800.944000 | Concreting | 1d | 2026-06-07 | 2026-06-07 | 1992, 1993 |  | Zenith | 8690824 |

| ID | WBS | Task | Duration | Start | Finish | Predecessors | Constraint | Calendar | Unique_Task_ID |
| --- | --- | --- | --- | --- | --- | --- | --- | --- | --- |
| 1995 | 36900.37000.37100.38100.38900.44800.174900 | **17th floor roof slab** | 11d | 2026-06-08 | 2026-06-18 |  | start no earlier than 2026-06-08 | Zenith | 8654774 |
| 1996 | 36900.37000.37100.38100.38900.44800.174900.944100 | Reinforcement | 8d | 2026-06-08 | 2026-06-15 | 1994 |  | Zenith | 8690814 |
| 1997 | 36900.37000.37100.38100.38900.44800.174900.944200 | Conduiting | 8d | 2026-06-09 | 2026-06-16 | 1996SS+1d |  | Zenith | 8690804 |
| 1998 | 36900.37000.37100.38100.38900.44800.174900.944300 | Formwork | 8d | 2026-06-10 | 2026-06-17 | 1996SS+2d |  | Zenith | 8690794 |
| 1999 | 36900.37000.37100.38100.38900.44800.174900.944400 | Concreting | 1d | 2026-06-18 | 2026-06-18 | 1997FS+1d, 1998 |  | Zenith | 8690784 |
| 2000 | 36900.37000.37100.38100.38900.44800.175000 | **18th floor roof slab** | 11d | 2026-06-19 | 2026-06-29 |  | start no earlier than 2026-06-19 | Zenith | 8654784 |
| 2001 | 36900.37000.37100.38100.38900.44800.175000.944500 | Reinforcement | 8d | 2026-06-19 | 2026-06-26 | 1999 |  | Zenith | 8690774 |
| 2002 | 36900.37000.37100.38100.38900.44800.175000.944600 | Conduiting | 8d | 2026-06-20 | 2026-06-27 | 2001SS+1d |  | Zenith | 8690764 |
| 2003 | 36900.37000.37100.38100.38900.44800.175000.944700 | Formwork | 8d | 2026-06-21 | 2026-06-28 | 2001SS+2d |  | Zenith | 8690754 |
| 2004 | 36900.37000.37100.38100.38900.44800.175000.944800 | Concreting | 1d | 2026-06-29 | 2026-06-29 | 2002FS+1d, 2003 |  | Zenith | 8690744 |
| 2005 | 36900.37000.37100.38100.38900.44800.175100 | **19th floor roof slab** | 11d | 2026-06-30 | 2026-07-10 |  | start no earlier than 2026-06-30 | Zenith | 8654814 |
| 2006 | 36900.37000.37100.38100.38900.44800.175100.944900 | Reinforcement | 8d | 2026-06-30 | 2026-07-07 | 2004 |  | Zenith | 8690734 |
| 2007 | 36900.37000.37100.38100.38900.44800.175100.945000 | Conduiting | 8d | 2026-07-01 | 2026-07-08 | 2006SS+1d |  | Zenith | 8690724 |
| 2008 | 36900.37000.37100.38100.38900.44800.175100.945100 | Formwork | 8d | 2026-07-02 | 2026-07-09 | 2006SS+2d |  | Zenith | 8690714 |
| 2009 | 36900.37000.37100.38100.38900.44800.175100.945200 | Concreting | 1d | 2026-07-10 | 2026-07-10 | 2007FS+1d, 2008 |  | Zenith | 8690704 |
| 2010 | 36900.37000.37100.38100.38900.44800.175200 | **20th floor roof slab** | 11d | 2026-07-11 | 2026-07-21 |  | start no earlier than 2026-07-11 | Zenith | 8655024 |
| 2011 | 36900.37000.37100.38100.38900.44800.175200.945300 | Reinforcement | 8d | 2026-07-11 | 2026-07-18 | 2009 |  | Zenith | 8690694 |
| 2012 | 36900.37000.37100.38100.38900.44800.175200.945400 | Conduiting | 8d | 2026-07-12 | 2026-07-19 | 2011SS+1d |  | Zenith | 8690684 |
| 2013 | 36900.37000.37100.38100.38900.44800.175200.945500 | Formwork | 8d | 2026-07-13 | 2026-07-20 | 2011SS+2d |  | Zenith | 8690674 |
| 2014 | 36900.37000.37100.38100.38900.44800.175200.945600 | Concreting | 1d | 2026-07-21 | 2026-07-21 | 2012FS+1d, 2013 |  | Zenith | 8690664 |
| 2015 | 36900.37000.37100.38100.38900.44800.175300 | **21st floor roof slab** | 11d | 2026-07-22 | 2026-08-01 |  | start no earlier than 2026-07-22 | Zenith | 8655044 |
| 2016 | 36900.37000.37100.38100.38900.44800.175300.945700 | Reinforcement | 8d | 2026-07-22 | 2026-07-29 | 2014 |  | Zenith | 8690654 |
| 2017 | 36900.37000.37100.38100.38900.44800.175300.945800 | Conduiting | 8d | 2026-07-23 | 2026-07-30 | 2016SS+1d |  | Zenith | 8690644 |
| 2018 | 36900.37000.37100.38100.38900.44800.175300.945900 | Formwork | 8d | 2026-07-24 | 2026-07-31 | 2016SS+2d |  | Zenith | 8690634 |
| 2019 | 36900.37000.37100.38100.38900.44800.175300.946000 | Concreting | 1d | 2026-08-01 | 2026-08-01 | 2017FS+1d, 2018 |  | Zenith | 8690624 |

| ID | WBS | Task | Duration | Start | Finish | Predecessors | Constraint | Calendar | Unique_Task_ID |
| --- | --- | --- | --- | --- | --- | --- | --- | --- | --- |
| 2020 | 36900.37000.37100.38100.38900.44800.175400 | **22nd floor roof slab** | 11d | 2026-08-02 | 2026-08-12 |  | start no earlier than 2026-08-02 | Zenith | 8655064 |
| 2021 | 36900.37000.37100.38100.38900.44800.175400.946100 | Reinforcement | 8d | 2026-08-02 | 2026-08-09 | 2019 |  | Zenith | 8690614 |
| 2022 | 36900.37000.37100.38100.38900.44800.175400.946200 | Conduiting | 8d | 2026-08-03 | 2026-08-10 | 2021SS+1d |  | Zenith | 8690604 |
| 2023 | 36900.37000.37100.38100.38900.44800.175400.946300 | Formwork | 8d | 2026-08-04 | 2026-08-11 | 2021SS+2d |  | Zenith | 8690594 |
| 2024 | 36900.37000.37100.38100.38900.44800.175400.946400 | Concreting | 1d | 2026-08-12 | 2026-08-12 | 2022FS+1d, 2023 |  | Zenith | 8690584 |
| 2025 | 36900.37000.37100.38100.38900.44800.175500 | **23rd floor roof slab** | 11d | 2026-08-13 | 2026-08-23 |  | start no earlier than 2026-08-13 | Zenith | 8655234 |
| 2026 | 36900.37000.37100.38100.38900.44800.175500.946500 | Reinforcement | 8d | 2026-08-13 | 2026-08-20 | 2024 |  | Zenith | 8690574 |
| 2027 | 36900.37000.37100.38100.38900.44800.175500.946600 | Conduiting | 8d | 2026-08-14 | 2026-08-21 | 2026SS+1d |  | Zenith | 8690564 |
| 2028 | 36900.37000.37100.38100.38900.44800.175500.946700 | Formwork | 8d | 2026-08-15 | 2026-08-22 | 2026SS+2d |  | Zenith | 8690554 |
| 2029 | 36900.37000.37100.38100.38900.44800.175500.946800 | Concreting | 1d | 2026-08-23 | 2026-08-23 | 2027FS+1d, 2028 |  | Zenith | 8690544 |
| 2030 | 36900.37000.37100.38100.38900.44800.175600 | **24th floor roof slab** | 11d | 2026-08-24 | 2026-09-03 |  | start no earlier than 2026-08-24 | Zenith | 8655244 |
| 2031 | 36900.37000.37100.38100.38900.44800.175600.946900 | Reinforcement | 8d | 2026-08-24 | 2026-08-31 | 2029 |  | Zenith | 8690534 |
| 2032 | 36900.37000.37100.38100.38900.44800.175600.947000 | Conduiting | 8d | 2026-08-25 | 2026-09-01 | 2031SS+1d |  | Zenith | 8690524 |
| 2033 | 36900.37000.37100.38100.38900.44800.175600.947100 | Formwork | 8d | 2026-08-26 | 2026-09-02 | 2031SS+2d |  | Zenith | 8690514 |
| 2034 | 36900.37000.37100.38100.38900.44800.175600.947200 | Concreting | 1d | 2026-09-03 | 2026-09-03 | 2032FS+1d, 2033 |  | Zenith | 8690504 |
| 2035 | 36900.37000.37100.38100.38900.44800.175700 | **25th floor roof slab** | 11d | 2026-09-04 | 2026-09-14 |  | start no earlier than 2026-09-04 | Zenith | 8655254 |
| 2036 | 36900.37000.37100.38100.38900.44800.175700.947300 | Reinforcement | 8d | 2026-09-04 | 2026-09-11 | 2034 |  | Zenith | 8690494 |
| 2037 | 36900.37000.37100.38100.38900.44800.175700.947400 | Conduiting | 8d | 2026-09-05 | 2026-09-12 | 2036SS+1d |  | Zenith | 8690484 |
| 2038 | 36900.37000.37100.38100.38900.44800.175700.947500 | Formwork | 8d | 2026-09-06 | 2026-09-13 | 2036SS+2d |  | Zenith | 8690474 |
| 2039 | 36900.37000.37100.38100.38900.44800.175700.947600 | Concreting | 1d | 2026-09-14 | 2026-09-14 | 2037FS+1d, 2038 |  | Zenith | 8690464 |
| 2040 | 36900.37000.37100.38100.38900.44800.175800 | **26th floor roof slab** | 11d | 2026-09-15 | 2026-09-25 |  | start no earlier than 2026-09-15 | Zenith | 8655264 |
| 2041 | 36900.37000.37100.38100.38900.44800.175800.947700 | Reinforcement | 8d | 2026-09-15 | 2026-09-22 | 2039 |  | Zenith | 8690454 |
| 2042 | 36900.37000.37100.38100.38900.44800.175800.947800 | Conduiting | 8d | 2026-09-16 | 2026-09-23 | 2041SS+1d |  | Zenith | 8690444 |
| 2043 | 36900.37000.37100.38100.38900.44800.175800.947900 | Formwork | 8d | 2026-09-17 | 2026-09-24 | 2041SS+2d |  | Zenith | 8690434 |
| 2044 | 36900.37000.37100.38100.38900.44800.175800.948000 | Concreting | 1d | 2026-09-25 | 2026-09-25 | 2042FS+1d, 2043 |  | Zenith | 8690424 |

| ID | WBS | Task | Duration | Start | Finish | Predecessors | Constraint | Calendar | Unique_Task_ID |
| --- | --- | --- | --- | --- | --- | --- | --- | --- | --- |
| 2045 | 36900.37000.37100.38100.38900.44800.175900 | **27th floor roof slab** | 11d | 2026-09-26 | 2026-10-06 |  | start no earlier than 2026-09-26 | Zenith | 8655434 |
| 2046 | 36900.37000.37100.38100.38900.44800.175900.948100 | Reinforcement | 8d | 2026-09-26 | 2026-10-03 | 2044 |  | Zenith | 8690414 |
| 2047 | 36900.37000.37100.38100.38900.44800.175900.948200 | Conduiting | 8d | 2026-09-27 | 2026-10-04 | 2046SS+1d |  | Zenith | 8690404 |
| 2048 | 36900.37000.37100.38100.38900.44800.175900.948300 | Formwork | 8d | 2026-09-28 | 2026-10-05 | 2046SS+2d |  | Zenith | 8690394 |
| 2049 | 36900.37000.37100.38100.38900.44800.175900.948400 | Concreting | 1d | 2026-10-06 | 2026-10-06 | 2047FS+1d, 2048 |  | Zenith | 8690384 |
| 2050 | 36900.37000.37100.38100.38900.44800.176000 | **28th floor roof slab** | 11d | 2026-10-07 | 2026-10-17 |  | start no earlier than 2026-10-07 | Zenith | 8655734 |
| 2051 | 36900.37000.37100.38100.38900.44800.176000.948500 | Reinforcement | 8d | 2026-10-07 | 2026-10-14 | 2049 |  | Zenith | 8690374 |
| 2052 | 36900.37000.37100.38100.38900.44800.176000.948600 | Conduiting | 8d | 2026-10-08 | 2026-10-15 | 2051SS+1d |  | Zenith | 8690364 |
| 2053 | 36900.37000.37100.38100.38900.44800.176000.948700 | Formwork | 8d | 2026-10-09 | 2026-10-16 | 2051SS+2d |  | Zenith | 8690354 |
| 2054 | 36900.37000.37100.38100.38900.44800.176000.948800 | Concreting | 1d | 2026-10-17 | 2026-10-17 | 2052FS+1d, 2053 |  | Zenith | 8690344 |
| 2055 | 36900.37000.37100.38100.38900.44800.176100 | **29th floor roof slab** | 11d | 2026-10-18 | 2026-10-28 |  | start no earlier than 2026-10-18 | Zenith | 8655964 |
| 2056 | 36900.37000.37100.38100.38900.44800.176100.949400 | Reinforcement | 8d | 2026-10-18 | 2026-10-25 | 2054 |  | Zenith | 8690334 |
| 2057 | 36900.37000.37100.38100.38900.44800.176100.949500 | Conduiting | 8d | 2026-10-19 | 2026-10-26 | 2056SS+1d |  | Zenith | 8690324 |
| 2058 | 36900.37000.37100.38100.38900.44800.176100.949600 | Formwork | 8d | 2026-10-20 | 2026-10-27 | 2056SS+2d |  | Zenith | 8690314 |
| 2059 | 36900.37000.37100.38100.38900.44800.176100.949700 | Concreting | 1d | 2026-10-28 | 2026-10-28 | 2057FS+1d, 2058 |  | Zenith | 8690304 |
| 2060 | 36900.37000.37100.38100.38900.44800.176200 | **30th floor roof slab** | 15d | 2026-10-29 | 2026-12-27 |  | start no earlier than 2026-10-29 | Zenith | 8655984 |
| 2061 | 36900.37000.37100.38100.38900.44800.176200.949800 | Reinforcement | 12d | 2026-10-29 | 2026-12-24 | 2059 |  | Zenith | 8690294 |
| 2062 | 36900.37000.37100.38100.38900.44800.176200.949900 | Conduiting | 12d | 2026-10-30 | 2026-12-25 | 2061SS+1d |  | Zenith | 8690284 |
| 2063 | 36900.37000.37100.38100.38900.44800.176200.950000 | Formwork | 12d | 2026-10-31 | 2026-12-26 | 2061SS+2d |  | Zenith | 8690274 |
| 2064 | 36900.37000.37100.38100.38900.44800.176200.950100 | Concreting | 1d | 2026-12-27 | 2026-12-27 | 2062FS+1d, 2063 |  | Zenith | 8690264 |
| 2065 | 36900.37000.37100.38100.38900.44800.176300 | **31st floor roof slab** | 11d | 2026-12-28 | 2027-01-07 |  | start no earlier than 2026-12-28 | Zenith | 8655994 |
| 2066 | 36900.37000.37100.38100.38900.44800.176300.950200 | Reinforcement | 8d | 2026-12-28 | 2027-01-04 | 2064 |  | Zenith | 8690254 |
| 2067 | 36900.37000.37100.38100.38900.44800.176300.950300 | Conduiting | 8d | 2026-12-29 | 2027-01-05 | 2066SS+1d |  | Zenith | 8690244 |
| 2068 | 36900.37000.37100.38100.38900.44800.176300.950400 | Formwork | 8d | 2026-12-30 | 2027-01-06 | 2066SS+2d |  | Zenith | 8690234 |
| 2069 | 36900.37000.37100.38100.38900.44800.176300.950500 | Concreting | 1d | 2027-01-07 | 2027-01-07 | 2067FS+1d, 2068 |  | Zenith | 8690224 |

| ID | WBS | Task | Duration | Start | Finish | Predecessors | Constraint | Calendar | Unique_Task_ID |
| --- | --- | --- | --- | --- | --- | --- | --- | --- | --- |
| 2070 | 36900.37000.37100.38100.38900.44800.176400 | **32nd floor roof slab** | 11d | 2027-01-08 | 2027-01-18 |  | start no earlier than 2027-01-08 | Zenith | 8656004 |
| 2071 | 36900.37000.37100.38100.38900.44800.176400.950600 | Reinforcement | 8d | 2027-01-08 | 2027-01-15 | 2069 |  | Zenith | 8690214 |
| 2072 | 36900.37000.37100.38100.38900.44800.176400.950700 | Conduiting | 8d | 2027-01-09 | 2027-01-16 | 2071SS+1d |  | Zenith | 8690204 |
| 2073 | 36900.37000.37100.38100.38900.44800.176400.950800 | Formwork | 8d | 2027-01-10 | 2027-01-17 | 2071SS+2d |  | Zenith | 8690194 |
| 2074 | 36900.37000.37100.38100.38900.44800.176400.950900 | Concreting | 1d | 2027-01-18 | 2027-01-18 | 2072FS+1d, 2073 |  | Zenith | 8690184 |
| 2075 | 36900.37000.37100.38100.38900.44800.176500 | **33rd floor roof slab** | 11d | 2027-01-19 | 2027-01-29 |  | start no earlier than 2027-01-19 | Zenith | 8656014 |
| 2076 | 36900.37000.37100.38100.38900.44800.176500.951000 | Reinforcement | 8d | 2027-01-19 | 2027-01-26 | 2074 |  | Zenith | 8690174 |
| 2077 | 36900.37000.37100.38100.38900.44800.176500.951100 | Conduiting | 8d | 2027-01-20 | 2027-01-27 | 2076SS+1d |  | Zenith | 8690164 |
| 2078 | 36900.37000.37100.38100.38900.44800.176500.951200 | Formwork | 8d | 2027-01-21 | 2027-01-28 | 2076SS+2d |  | Zenith | 8690154 |
| 2079 | 36900.37000.37100.38100.38900.44800.176500.951300 | Concreting | 1d | 2027-01-29 | 2027-01-29 | 2077FS+1d, 2078 |  | Zenith | 8690144 |
| 2080 | 36900.37000.37100.38100.38900.44800.176600 | **34th floor roof slab** | 11d | 2027-01-30 | 2027-02-09 |  | start no earlier than 2027-01-30 | Zenith | 8656024 |
| 2081 | 36900.37000.37100.38100.38900.44800.176600.951400 | Reinforcement | 8d | 2027-01-30 | 2027-02-06 | 2079 |  | Zenith | 8690134 |
| 2082 | 36900.37000.37100.38100.38900.44800.176600.951500 | Conduiting | 8d | 2027-01-31 | 2027-02-07 | 2081SS+1d |  | Zenith | 8690124 |
| 2083 | 36900.37000.37100.38100.38900.44800.176600.951600 | Formwork | 8d | 2027-02-01 | 2027-02-08 | 2081SS+2d |  | Zenith | 8690114 |
| 2084 | 36900.37000.37100.38100.38900.44800.176600.951700 | Concreting | 1d | 2027-02-09 | 2027-02-09 | 2082FS+1d, 2083 |  | Zenith | 8690104 |
| 2085 | 36900.37000.37100.38100.38900.44800.176700 | **Terrace floor slab** | 15d | 2027-02-10 | 2027-02-24 |  | start no earlier than 2027-02-10 | Zenith | 8656054 |
| 2086 | 36900.37000.37100.38100.38900.44800.176700.951800 | Reinforcement | 12d | 2027-02-10 | 2027-02-21 | 2084 |  | Zenith | 8690094 |
| 2087 | 36900.37000.37100.38100.38900.44800.176700.951900 | Conduiting | 12d | 2027-02-11 | 2027-02-22 | 2086SS+1d |  | Zenith | 8690084 |
| 2088 | 36900.37000.37100.38100.38900.44800.176700.952000 | Formwork | 12d | 2027-02-12 | 2027-02-23 | 2086SS+2d |  | Zenith | 8690074 |
| 2089 | 36900.37000.37100.38100.38900.44800.176700.952100 | Concreting | 1d | 2027-02-24 | 2027-02-24 | 2087FS+1d, 2088 |  | Zenith | 8690064 |
| 2090 | 36900.37000.37100.38100.38900.44800.176800 | **OHT, Mumty & Machine Room, Parapet** | 40d | 2027-04-01 | 2027-05-10 |  | start no earlier than 2027-04-01 | Zenith | 8656354 |
| 2091 | 36900.37000.37100.38100.38900.44800.176800.952200 | Reinforcement | 25d | 2027-04-01 | 2027-04-25 | 2089FS+35d |  | Zenith | 8690054 |
| 2092 | 36900.37000.37100.38100.38900.44800.176800.952300 | Flanges fixing & Conduiting | 15d | 2027-04-02 | 2027-04-16 | 2091SS+1d |  | Zenith | 8690044 |
| 2093 | 36900.37000.37100.38100.38900.44800.176800.952400 | Formwork | 30d | 2027-04-07 | 2027-05-06 | 2091SS+6d |  | Zenith | 8690034 |
| 2094 | 36900.37000.37100.38100.38900.44800.176800.952500 | Concreting | 4d | 2027-05-07 | 2027-05-10 | 2092FS+5d, 2093 |  | Zenith | 8690024 |

| ID | WBS | Task | Duration | Start | Finish | Predecessors | Constraint | Calendar | Unique_Task_ID |
| --- | --- | --- | --- | --- | --- | --- | --- | --- | --- |
| 2095 | 36900.37000.37100.38100.38900.47300 | **Post Pour Activities** | 380.25d | 2026-02-07 | 2027-04-08 |  | start no earlier than 2026-02-07 | Zenith | 8648044 |
| 2096 | 36900.37000.37100.38100.38900.47300.814100 | 1st Floor | 7d | 2026-02-07 | 2026-02-13 | 1934 |  | Zenith | 8725254 |
| 2097 | 36900.37000.37100.38100.38900.47300.814200 | 2nd Floor | 7d | 2026-02-15 | 2026-02-22 | 2096FS+0.25d, 1939FS+0.25d |  | Zenith | 8725244 |
| 2098 | 36900.37000.37100.38100.38900.47300.814300 | 3rd Floor | 7d | 2026-02-23 | 2026-03-02 | 2097FS+0.25d, 1944FS+0.25d |  | Zenith | 8725234 |
| 2099 | 36900.37000.37100.38100.38900.47300.814400 | 4th Floor | 7d | 2026-03-03 | 2026-03-10 | 2098FS+0.25d, 1949FS+0.25d |  | Zenith | 8725224 |
| 2100 | 36900.37000.37100.38100.38900.47300.814500 | 5th Floor | 7d | 2026-03-11 | 2026-03-18 | 2099FS+0.25d, 1954FS+0.25d |  | Zenith | 8725214 |
| 2101 | 36900.37000.37100.38100.38900.47300.814600 | 6th Floor | 7d | 2026-03-19 | 2026-03-26 | 2100FS+0.25d, 1959FS+0.25d |  | Zenith | 8725204 |
| 2102 | 36900.37000.37100.38100.38900.47300.814700 | 7th Floor | 7d | 2026-03-30 | 2026-04-06 | 2101FS+0.25d, 1964FS+0.25d |  | Zenith | 8725194 |
| 2103 | 36900.37000.37100.38100.38900.47300.814800 | 8th Floor | 7d | 2026-04-10 | 2026-04-17 | 2102FS+0.25d, 1969FS+0.25d |  | Zenith | 8725184 |
| 2104 | 36900.37000.37100.38100.38900.47300.814900 | 9th Floor | 7d | 2026-04-21 | 2026-04-28 | 2103FS+0.25d, 1974FS+0.25d |  | Zenith | 8725174 |
| 2105 | 36900.37000.37100.38100.38900.47300.815000 | 10th Floor | 7d | 2026-05-02 | 2026-05-09 | 2104FS+0.25d, 1979FS+0.25d |  | Zenith | 8725164 |
| 2106 | 36900.37000.37100.38100.38900.47300.815100 | 11th Floor | 7d | 2026-05-13 | 2026-05-20 | 2105FS+0.25d, 1984FS+0.25d |  | Zenith | 8725154 |
| 2107 | 36900.37000.37100.38100.38900.47300.815200 | 12th Floor | 7d | 2026-05-28 | 2026-06-04 | 2106FS+0.25d, 1989FS+0.25d |  | Zenith | 8725144 |
| 2108 | 36900.37000.37100.38100.38900.47300.815300 | 13th Floor | 7d | 2026-06-08 | 2026-06-15 | 2107FS+0.25d, 1994FS+0.25d |  | Zenith | 8725134 |
| 2109 | 36900.37000.37100.38100.38900.47300.815400 | 14th Floor | 7d | 2026-06-19 | 2026-06-26 | 2108FS+0.25d, 1999FS+0.25d |  | Zenith | 8725124 |
| 2110 | 36900.37000.37100.38100.38900.47300.815500 | 15th Floor | 7d | 2026-06-30 | 2026-07-07 | 2109FS+0.25d, 2004FS+0.25d |  | Zenith | 8725114 |
| 2111 | 36900.37000.37100.38100.38900.47300.815600 | 16th Floor | 7d | 2026-07-11 | 2026-07-18 | 2110FS+0.25d, 2009FS+0.25d |  | Zenith | 8725104 |
| 2112 | 36900.37000.37100.38100.38900.47300.815700 | 17th Floor | 7d | 2026-07-22 | 2026-07-29 | 2111FS+0.25d, 2014FS+0.25d |  | Zenith | 8725094 |
| 2113 | 36900.37000.37100.38100.38900.47300.815800 | 18th Floor | 7d | 2026-08-02 | 2026-08-09 | 2112FS+0.25d, 2019FS+0.25d |  | Zenith | 8725084 |
| 2114 | 36900.37000.37100.38100.38900.47300.815900 | 19th Floor | 7d | 2026-08-13 | 2026-08-20 | 2113FS+0.25d, 2024FS+0.25d |  | Zenith | 8725074 |
| 2115 | 36900.37000.37100.38100.38900.47300.816000 | 20th Floor | 7d | 2026-08-24 | 2026-08-31 | 2114FS+0.25d, 2029FS+0.25d |  | Zenith | 8725064 |
| 2116 | 36900.37000.37100.38100.38900.47300.816100 | 21st Floor | 7d | 2026-09-04 | 2026-09-11 | 2115FS+0.25d, 2034FS+0.25d |  | Zenith | 8725054 |
| 2117 | 36900.37000.37100.38100.38900.47300.816200 | 22nd Floor | 7d | 2026-09-15 | 2026-09-22 | 2116FS+0.25d, 2039FS+0.25d |  | Zenith | 8725044 |
| 2118 | 36900.37000.37100.38100.38900.47300.816300 | 23rd Floor | 7d | 2026-09-26 | 2026-10-03 | 2117FS+0.25d, 2044FS+0.25d |  | Zenith | 8725034 |
| 2119 | 36900.37000.37100.38100.38900.47300.816400 | 24th Floor | 7d | 2026-10-07 | 2026-10-14 | 2118FS+0.25d, 2049FS+0.25d |  | Zenith | 8725024 |
| 2120 | 36900.37000.37100.38100.38900.47300.816500 | 25th Floor | 7d | 2026-10-18 | 2026-10-25 | 2119FS+0.25d, 2054FS+0.25d |  | Zenith | 8725014 |
| 2121 | 36900.37000.37100.38100.38900.47300.816600 | 26th Floor | 7d | 2026-10-29 | 2026-12-20 | 2120FS+0.25d, 2059FS+0.25d |  | Zenith | 8725004 |
| 2122 | 36900.37000.37100.38100.38900.47300.816700 | 27th Floor | 7d | 2026-12-28 | 2027-01-04 | 2121FS+0.25d, 2064FS+0.25d |  | Zenith | 8724994 |
| 2123 | 36900.37000.37100.38100.38900.47300.816800 | 28th Floor | 7d | 2027-01-08 | 2027-01-15 | 2122FS+0.25d, 2069FS+0.25d |  | Zenith | 8724984 |
| 2124 | 36900.37000.37100.38100.38900.47300.816900 | 29th Floor | 7d | 2027-01-19 | 2027-01-26 | 2123FS+0.25d, 2074FS+0.25d |  | Zenith | 8724974 |
| 2125 | 36900.37000.37100.38100.38900.47300.817000 | 30th Floor | 7d | 2027-01-30 | 2027-02-06 | 2124FS+0.25d, 2079FS+0.25d |  | Zenith | 8724964 |
| 2126 | 36900.37000.37100.38100.38900.47300.817100 | 31st Floor | 7d | 2027-02-10 | 2027-02-17 | 2125FS+0.25d, 2084FS+0.25d |  | Zenith | 8724954 |
| 2127 | 36900.37000.37100.38100.38900.47300.817200 | 32nd Flood | 7d | 2027-02-25 | 2027-03-04 | 2126FS+0.25d, 2089FS+0.25d |  | Zenith | 8724944 |
| 2128 | 36900.37000.37100.38100.38900.47300.817300 | 33rd Floor | 7d | 2027-03-04 | 2027-03-11 | 2127 |  | Zenith | 8724934 |
| 2129 | 36900.37000.37100.38100.38900.47300.817400 | 34th Floor | 7d | 2027-03-11 | 2027-03-18 | 2128 |  | Zenith | 8724924 |
| 2130 | 36900.37000.37100.38100.38900.47300.817500 | 35th Floor | 7d | 2027-03-18 | 2027-03-25 | 2129 |  | Zenith | 8724914 |
| 2131 | 36900.37000.37100.38100.38900.47300.817600 | Terrace | 7d | 2027-03-25 | 2027-04-01 | 2130 |  | Zenith | 8724904 |
| 2132 | 36900.37000.37100.38100.38900.47300.817700 | Mumty & Machine Room | 7d | 2027-04-01 | 2027-04-08 | 2131 |  | Zenith | 8724894 |

| ID | WBS | Task | Duration | Start | Finish | Predecessors | Constraint | Calendar | Unique_Task_ID |
| --- | --- | --- | --- | --- | --- | --- | --- | --- | --- |
| 2133 | 36900.37000.37100.38100.38900.40300 | **Finishing work** | 900d | 2026-02-14 | 2028-10-30 |  | start no earlier than 2026-02-14 | Zenith | 8647774 |
| 2134 | 36900.37000.37100.38100.38900.40300.41900 | **Flat finishing** | 900d | 2026-02-14 | 2028-10-30 |  | start no earlier than 2026-02-14 | Zenith | 8647844 |
| 2135 | 36900.37000.37100.38100.38900.40300.41900.89400 | **1st Floor roof** | 429d | 2026-02-14 | 2027-06-02 |  | start no earlier than 2026-02-14 | Zenith | 8649124 |
| 2136 | 36900.37000.37100.38100.38900.40300.41900.89400.1390900 | Block Work | 6d | 2026-02-14 | 2026-02-19 | 2096 |  | Zenith | 8667514 |
| 2137 | 36900.37000.37100.38100.38900.40300.41900.89400.1391000 | Fire sprinkler pipe fixing | 5d | 2026-02-20 | 2026-02-24 | 2136 |  | Zenith | 8667524 |
| 2138 | 36900.37000.37100.38100.38900.40300.41900.89400.1391100 | Internal Plumbing Works | 5d | 2026-02-20 | 2026-02-24 | 2136 |  | Zenith | 8667534 |
| 2139 | 36900.37000.37100.38100.38900.40300.41900.89400.1391200 | Waterproofing | 5d | 2026-02-25 | 2026-03-01 | 2138 |  | Zenith | 8667544 |
| 2140 | 36900.37000.37100.38100.38900.40300.41900.89400.1391300 | Internal Plaster | 13d | 2026-02-25 | 2026-03-09 | 2138, 2139FF+5d |  | Zenith | 8667554 |
| 2141 | 36900.37000.37100.38100.38900.40300.41900.89400.1391400 | IPS flooring work | 7d | 2026-03-10 | 2026-03-16 | 2140 |  | Zenith | 8667564 |
| 2142 | 36900.37000.37100.38100.38900.40300.41900.89400.1391500 | Toilet dado work | 6d | 2026-03-10 | 2026-03-15 | 2139, 2140 |  | Zenith | 8667574 |
| 2143 | 36900.37000.37100.38100.38900.40300.41900.89400.1391600 | Toilet flooring work | 7d | 2026-03-16 | 2026-03-22 | 2142 |  | Zenith | 8667584 |
| 2144 | 36900.37000.37100.38100.38900.40300.41900.89400.1391700 | False Cieling panel fixing | 7d | 2026-03-23 | 2026-03-29 | 2143 |  | Zenith | 8667594 |
| 2145 | 36900.37000.37100.38100.38900.40300.41900.89400.1391800 | Living dinning flooring | 14d | 2026-03-23 | 2026-04-05 | 2143 |  | Zenith | 8667604 |
| 2146 | 36900.37000.37100.38100.38900.40300.41900.89400.1391900 | Putty primer coat | 8d | 2026-10-27 | 2026-12-19 | 2305FS+45.25d |  | Zenith | 8667614 |
| 2147 | 36900.37000.37100.38100.38900.40300.41900.89400.1392000 | Aluminium door-window fixing | 12d | 2026-07-07 | 2026-07-18 | 2141FS+15d, 2145FS+15d, 2273FS-20d |  | Zenith | 8667624 |
| 2148 | 36900.37000.37100.38100.38900.40300.41900.89400.1392100 | Door shutter fixing (Pre Hung) | 8d | 2026-12-19 | 2026-12-27 | 2146FS+0.25d |  | Zenith | 8667634 |
| 2149 | 36900.37000.37100.38100.38900.40300.41900.89400.1392200 | Electrical wiring work | 10d | 2026-07-26 | 2026-08-04 | 2147FS+7d |  | Zenith | 8667644 |
| 2150 | 36900.37000.37100.38100.38900.40300.41900.89400.1392300 | Painting 1st coat | 12d | 2027-05-22 | 2027-06-02 | 2149FS+245d |  | Zenith | 8667654 |
| 2151 | 36900.37000.37100.38100.38900.40300.41900.89500 | **2nd floor roof** | 432.75d | 2026-02-22 | 2027-06-14 |  | start no earlier than 2026-02-22 | Zenith | 8649134 |
| 2152 | 36900.37000.37100.38100.38900.40300.41900.89500.1392400 | Block Work | 6d | 2026-02-22 | 2026-02-28 | 2097, 2136 |  | Zenith | 8667664 |
| 2153 | 36900.37000.37100.38100.38900.40300.41900.89500.1392500 | Fire sprinkler pipe fixing | 5d | 2026-02-28 | 2026-03-05 | 2137, 2152 |  | Zenith | 8667674 |
| 2154 | 36900.37000.37100.38100.38900.40300.41900.89500.1392600 | Internal Plumbing Works | 5d | 2026-02-28 | 2026-03-05 | 2138, 2152 |  | Zenith | 8667684 |
| 2155 | 36900.37000.37100.38100.38900.40300.41900.89500.1392700 | Waterproofing | 5d | 2026-03-05 | 2026-03-10 | 2139, 2154 |  | Zenith | 8667694 |
| 2156 | 36900.37000.37100.38100.38900.40300.41900.89500.1392800 | Internal Plaster | 13d | 2026-03-10 | 2026-03-22 | 2140, 2154, 2155FF+5d |  | Zenith | 8667704 |
| 2157 | 36900.37000.37100.38100.38900.40300.41900.89500.1392900 | IPS flooring work | 7d | 2026-03-23 | 2026-03-29 | 2141, 2156 |  | Zenith | 8667714 |
| 2158 | 36900.37000.37100.38100.38900.40300.41900.89500.1393000 | Toilet dado work | 6d | 2026-03-23 | 2026-03-28 | 2142, 2155, 2156 |  | Zenith | 8667724 |
| 2159 | 36900.37000.37100.38100.38900.40300.41900.89500.1393100 | Toilet flooring work | 7d | 2026-03-29 | 2026-04-04 | 2143, 2158 |  | Zenith | 8667734 |
| 2160 | 36900.37000.37100.38100.38900.40300.41900.89500.1393200 | False Cieling panel fixing | 7d | 2026-04-05 | 2026-04-11 | 2144, 2159 |  | Zenith | 8667744 |
| 2161 | 36900.37000.37100.38100.38900.40300.41900.89500.1393300 | Living dinning flooring | 14d | 2026-04-06 | 2026-04-19 | 2145, 2159 |  | Zenith | 8667754 |
| 2162 | 36900.37000.37100.38100.38900.40300.41900.89500.1393400 | Putty primer coat | 8d | 2026-12-19 | 2026-12-27 | 2146, 2161 |  | Zenith | 8667764 |
| 2163 | 36900.37000.37100.38100.38900.40300.41900.89500.1393500 | Aluminium door-window fixing | 12d | 2026-07-19 | 2026-07-30 | 2147, 2157, 2161 |  | Zenith | 8667774 |
| 2164 | 36900.37000.37100.38100.38900.40300.41900.89500.1393600 | Door shutter fixing (Pre Hung) | 8d | 2026-12-27 | 2027-01-04 | 2148, 2162 |  | Zenith | 8667784 |
| 2165 | 36900.37000.37100.38100.38900.40300.41900.89500.1393700 | Electrical wiring work | 10d | 2027-01-04 | 2027-01-14 | 2149, 2164 |  | Zenith | 8667794 |
| 2166 | 36900.37000.37100.38100.38900.40300.41900.89500.1393800 | Painting 1st coat | 12d | 2027-06-03 | 2027-06-14 | 2150, 2165 |  | Zenith | 8667804 |

| ID | WBS | Task | Duration | Start | Finish | Predecessors | Constraint | Calendar | Unique_Task_ID |
| --- | --- | --- | --- | --- | --- | --- | --- | --- | --- |
| 2167 | 36900.37000.37100.38100.38900.40300.41900.89600 | **3rd floor roof** | 436.75d | 2026-03-02 | 2027-06-26 |  | start no earlier than 2026-03-02 | Zenith | 8649144 |
| 2168 | 36900.37000.37100.38100.38900.40300.41900.89600.1393900 | Block Work | 6d | 2026-03-02 | 2026-03-08 | 2098, 2152 |  | Zenith | 8667814 |
| 2169 | 36900.37000.37100.38100.38900.40300.41900.89600.1394000 | Fire sprinkler pipe fixing | 5d | 2026-03-08 | 2026-03-13 | 2153, 2168 |  | Zenith | 8667824 |
| 2170 | 36900.37000.37100.38100.38900.40300.41900.89600.1394100 | Internal Plumbing Works | 5d | 2026-03-08 | 2026-03-13 | 2154, 2168 |  | Zenith | 8667834 |
| 2171 | 36900.37000.37100.38100.38900.40300.41900.89600.1394200 | Waterproofing | 5d | 2026-03-13 | 2026-03-18 | 2155, 2170 |  | Zenith | 8667844 |
| 2172 | 36900.37000.37100.38100.38900.40300.41900.89600.1394300 | Internal Plaster | 13d | 2026-03-23 | 2026-04-04 | 2156, 2170, 2171FF+5d |  | Zenith | 8667854 |
| 2173 | 36900.37000.37100.38100.38900.40300.41900.89600.1394400 | IPS flooring work | 7d | 2026-04-05 | 2026-04-11 | 2157, 2172 |  | Zenith | 8667864 |
| 2174 | 36900.37000.37100.38100.38900.40300.41900.89600.1394500 | Toilet dado work | 6d | 2026-04-05 | 2026-04-10 | 2158, 2171, 2172 |  | Zenith | 8667874 |
| 2175 | 36900.37000.37100.38100.38900.40300.41900.89600.1394600 | Toilet flooring work | 7d | 2026-04-11 | 2026-04-17 | 2159, 2174 |  | Zenith | 8667884 |
| 2176 | 36900.37000.37100.38100.38900.40300.41900.89600.1394700 | False Cieling panel fixing | 7d | 2026-04-18 | 2026-04-24 | 2160, 2175 |  | Zenith | 8667894 |
| 2177 | 36900.37000.37100.38100.38900.40300.41900.89600.1394800 | Living dinning flooring | 14d | 2026-04-20 | 2026-05-03 | 2161, 2175 |  | Zenith | 8667904 |
| 2178 | 36900.37000.37100.38100.38900.40300.41900.89600.1394900 | Putty primer coat | 8d | 2026-12-27 | 2027-01-04 | 2162, 2177 |  | Zenith | 8667914 |
| 2179 | 36900.37000.37100.38100.38900.40300.41900.89600.1395000 | Aluminium door-window fixing | 12d | 2026-07-31 | 2026-08-11 | 2163, 2173, 2177 |  | Zenith | 8667924 |
| 2180 | 36900.37000.37100.38100.38900.40300.41900.89600.1395100 | Door shutter fixing (Pre Hung) | 8d | 2027-01-04 | 2027-01-12 | 2164, 2178 |  | Zenith | 8667934 |
| 2181 | 36900.37000.37100.38100.38900.40300.41900.89600.1395200 | Electrical wiring work | 10d | 2027-01-14 | 2027-01-24 | 2165, 2180 |  | Zenith | 8667944 |
| 2182 | 36900.37000.37100.38100.38900.40300.41900.89600.1395300 | Painting 1st coat | 12d | 2027-06-15 | 2027-06-26 | 2166, 2181 |  | Zenith | 8667954 |
| 2183 | 36900.37000.37100.38100.38900.40300.41900.89700 | **4th floor roof** | 440.75d | 2026-03-10 | 2027-07-08 |  | start no earlier than 2026-03-10 | Zenith | 8649154 |
| 2184 | 36900.37000.37100.38100.38900.40300.41900.89700.1395400 | Block Work | 6d | 2026-03-10 | 2026-03-16 | 2099, 2168 |  | Zenith | 8667964 |
| 2185 | 36900.37000.37100.38100.38900.40300.41900.89700.1395500 | Fire sprinkler pipe fixing | 5d | 2026-03-16 | 2026-03-21 | 2169, 2184 |  | Zenith | 8667974 |
| 2186 | 36900.37000.37100.38100.38900.40300.41900.89700.1395600 | Internal Plumbing Works | 5d | 2026-03-16 | 2026-03-21 | 2170, 2184 |  | Zenith | 8667984 |
| 2187 | 36900.37000.37100.38100.38900.40300.41900.89700.1395700 | Waterproofing | 5d | 2026-03-21 | 2026-03-26 | 2171, 2186 |  | Zenith | 8667994 |
| 2188 | 36900.37000.37100.38100.38900.40300.41900.89700.1395800 | Internal Plaster | 13d | 2026-04-05 | 2026-04-17 | 2172, 2186, 2187FF+5d |  | Zenith | 8668004 |
| 2189 | 36900.37000.37100.38100.38900.40300.41900.89700.1395900 | IPS flooring work | 7d | 2026-04-18 | 2026-04-24 | 2173, 2188 |  | Zenith | 8668014 |
| 2190 | 36900.37000.37100.38100.38900.40300.41900.89700.1396000 | Toilet dado work | 6d | 2026-04-18 | 2026-04-23 | 2174, 2187, 2188 |  | Zenith | 8668024 |
| 2191 | 36900.37000.37100.38100.38900.40300.41900.89700.1396100 | Toilet flooring work | 7d | 2026-04-24 | 2026-04-30 | 2175, 2190 |  | Zenith | 8668034 |
| 2192 | 36900.37000.37100.38100.38900.40300.41900.89700.1396200 | False Cieling panel fixing | 7d | 2026-05-01 | 2026-05-07 | 2176, 2191 |  | Zenith | 8668044 |
| 2193 | 36900.37000.37100.38100.38900.40300.41900.89700.1396300 | Living dinning flooring | 14d | 2026-05-04 | 2026-05-17 | 2177, 2191 |  | Zenith | 8668054 |
| 2194 | 36900.37000.37100.38100.38900.40300.41900.89700.1396400 | Putty primer coat | 8d | 2027-01-04 | 2027-01-12 | 2178, 2193 |  | Zenith | 8668064 |
| 2195 | 36900.37000.37100.38100.38900.40300.41900.89700.1396500 | Aluminium door-window fixing | 12d | 2026-08-12 | 2026-08-23 | 2179, 2189, 2193 |  | Zenith | 8668074 |
| 2196 | 36900.37000.37100.38100.38900.40300.41900.89700.1396600 | Door shutter fixing (Pre Hung) | 8d | 2027-01-12 | 2027-01-20 | 2180, 2194 |  | Zenith | 8668084 |
| 2197 | 36900.37000.37100.38100.38900.40300.41900.89700.1396700 | Electrical wiring work | 10d | 2027-01-24 | 2027-02-03 | 2181, 2196 |  | Zenith | 8668094 |
| 2198 | 36900.37000.37100.38100.38900.40300.41900.89700.1396800 | Painting 1st coat | 12d | 2027-06-27 | 2027-07-08 | 2182, 2197 |  | Zenith | 8668104 |

| ID | WBS | Task | Duration | Start | Finish | Predecessors | Constraint | Calendar | Unique_Task_ID |
| --- | --- | --- | --- | --- | --- | --- | --- | --- | --- |
| 2199 | 36900.37000.37100.38100.38900.40300.41900.89800 | **5th floor roof** | 444.75d | 2026-03-18 | 2027-07-20 |  | start no earlier than 2026-03-18 | Zenith | 8649164 |
| 2200 | 36900.37000.37100.38100.38900.40300.41900.89800.1396900 | Block Work | 6d | 2026-03-18 | 2026-03-24 | 2100, 2184 |  | Zenith | 8668114 |
| 2201 | 36900.37000.37100.38100.38900.40300.41900.89800.1397000 | Fire sprinkler pipe fixing | 5d | 2026-03-24 | 2026-03-29 | 2185, 2200 |  | Zenith | 8668124 |
| 2202 | 36900.37000.37100.38100.38900.40300.41900.89800.1397100 | Internal Plumbing Works | 5d | 2026-03-24 | 2026-03-29 | 2186, 2200 |  | Zenith | 8668134 |
| 2203 | 36900.37000.37100.38100.38900.40300.41900.89800.1397200 | Waterproofing | 5d | 2026-03-29 | 2026-04-03 | 2187, 2202 |  | Zenith | 8668144 |
| 2204 | 36900.37000.37100.38100.38900.40300.41900.89800.1397300 | Internal Plaster | 13d | 2026-04-18 | 2026-04-30 | 2188, 2202, 2203FF+5d |  | Zenith | 8668154 |
| 2205 | 36900.37000.37100.38100.38900.40300.41900.89800.1397400 | IPS flooring work | 7d | 2026-05-01 | 2026-05-07 | 2189, 2204 |  | Zenith | 8668164 |
| 2206 | 36900.37000.37100.38100.38900.40300.41900.89800.1397500 | Toilet dado work | 6d | 2026-05-01 | 2026-05-06 | 2190, 2203, 2204 |  | Zenith | 8668174 |
| 2207 | 36900.37000.37100.38100.38900.40300.41900.89800.1397600 | Toilet flooring work | 7d | 2026-05-07 | 2026-05-13 | 2191, 2206 |  | Zenith | 8668184 |
| 2208 | 36900.37000.37100.38100.38900.40300.41900.89800.1397700 | False Cieling panel fixing | 7d | 2026-05-14 | 2026-05-20 | 2192, 2207 |  | Zenith | 8668194 |
| 2209 | 36900.37000.37100.38100.38900.40300.41900.89800.1397800 | Living dinning flooring | 14d | 2026-05-18 | 2026-05-31 | 2193, 2207 |  | Zenith | 8668204 |
| 2210 | 36900.37000.37100.38100.38900.40300.41900.89800.1397900 | Putty primer coat | 8d | 2027-01-12 | 2027-01-20 | 2194, 2209 |  | Zenith | 8668214 |
| 2211 | 36900.37000.37100.38100.38900.40300.41900.89800.1398000 | Aluminium door-window fixing | 12d | 2026-08-24 | 2026-09-04 | 2195, 2205, 2209 |  | Zenith | 8668224 |
| 2212 | 36900.37000.37100.38100.38900.40300.41900.89800.1398100 | Door shutter fixing (Pre Hung) | 8d | 2027-01-20 | 2027-01-28 | 2196, 2210 |  | Zenith | 8668234 |
| 2213 | 36900.37000.37100.38100.38900.40300.41900.89800.1398200 | Electrical wiring work | 10d | 2027-02-03 | 2027-02-13 | 2197, 2212 |  | Zenith | 8668244 |
| 2214 | 36900.37000.37100.38100.38900.40300.41900.89800.1398300 | Painting 1st coat | 12d | 2027-07-09 | 2027-07-20 | 2198, 2213 |  | Zenith | 8668254 |
| 2215 | 36900.37000.37100.38100.38900.40300.41900.89900 | **6th floor roof** | 448.75d | 2026-03-26 | 2027-08-01 |  | start no earlier than 2026-03-26 | Zenith | 8649174 |
| 2216 | 36900.37000.37100.38100.38900.40300.41900.89900.1398400 | Block Work | 6d | 2026-03-26 | 2026-04-01 | 2101, 2200 |  | Zenith | 8668264 |
| 2217 | 36900.37000.37100.38100.38900.40300.41900.89900.1398500 | Fire sprinkler pipe fixing | 5d | 2026-04-01 | 2026-04-06 | 2201, 2216 |  | Zenith | 8668274 |
| 2218 | 36900.37000.37100.38100.38900.40300.41900.89900.1398600 | Internal Plumbing Works | 5d | 2026-04-01 | 2026-04-06 | 2202, 2216 |  | Zenith | 8668284 |
| 2219 | 36900.37000.37100.38100.38900.40300.41900.89900.1398700 | Waterproofing | 5d | 2026-04-06 | 2026-04-11 | 2203, 2218 |  | Zenith | 8668294 |
| 2220 | 36900.37000.37100.38100.38900.40300.41900.89900.1398800 | Internal Plaster | 13d | 2026-05-01 | 2026-05-13 | 2204, 2218, 2219FF+5d |  | Zenith | 8668304 |
| 2221 | 36900.37000.37100.38100.38900.40300.41900.89900.1398900 | IPS flooring work | 7d | 2026-05-14 | 2026-05-20 | 2205, 2220 |  | Zenith | 8668314 |
| 2222 | 36900.37000.37100.38100.38900.40300.41900.89900.1399000 | Toilet dado work | 6d | 2026-05-14 | 2026-05-19 | 2206, 2219, 2220 |  | Zenith | 8668324 |
| 2223 | 36900.37000.37100.38100.38900.40300.41900.89900.1399100 | Toilet flooring work | 7d | 2026-05-20 | 2026-05-26 | 2207, 2222 |  | Zenith | 8668334 |
| 2224 | 36900.37000.37100.38100.38900.40300.41900.89900.1399200 | False Cieling panel fixing | 7d | 2026-05-27 | 2026-06-02 | 2208, 2223 |  | Zenith | 8668344 |
| 2225 | 36900.37000.37100.38100.38900.40300.41900.89900.1399300 | Living dinning flooring | 14d | 2026-06-01 | 2026-06-14 | 2209, 2223 |  | Zenith | 8668354 |
| 2226 | 36900.37000.37100.38100.38900.40300.41900.89900.1399400 | Putty primer coat | 8d | 2027-01-20 | 2027-01-28 | 2210, 2225 |  | Zenith | 8668364 |
| 2227 | 36900.37000.37100.38100.38900.40300.41900.89900.1399500 | Aluminium door-window fixing | 12d | 2026-09-05 | 2026-09-16 | 2211, 2221, 2225 |  | Zenith | 8668374 |
| 2228 | 36900.37000.37100.38100.38900.40300.41900.89900.1399600 | Door shutter fixing (Pre Hung) | 8d | 2027-01-28 | 2027-02-05 | 2212, 2226 |  | Zenith | 8668384 |
| 2229 | 36900.37000.37100.38100.38900.40300.41900.89900.1399700 | Electrical wiring work | 10d | 2027-02-13 | 2027-02-23 | 2213, 2228 |  | Zenith | 8668394 |
| 2230 | 36900.37000.37100.38100.38900.40300.41900.89900.1399800 | Painting 1st coat | 12d | 2027-07-21 | 2027-08-01 | 2214, 2229 |  | Zenith | 8668404 |

| ID | WBS | Task | Duration | Start | Finish | Predecessors | Constraint | Calendar | Unique_Task_ID |
| --- | --- | --- | --- | --- | --- | --- | --- | --- | --- |
| 2231 | 36900.37000.37100.38100.38900.40300.41900.90000 | **7th floor roof** | 449.75d | 2026-04-06 | 2027-08-13 |  | start no earlier than 2026-04-06 | Zenith | 8649184 |
| 2232 | 36900.37000.37100.38100.38900.40300.41900.90000.1399900 | Block Work | 6d | 2026-04-06 | 2026-04-12 | 2102, 2216 |  | Zenith | 8668414 |
| 2233 | 36900.37000.37100.38100.38900.40300.41900.90000.1400000 | Fire sprinkler pipe fixing | 5d | 2026-04-12 | 2026-04-17 | 2217, 2232 |  | Zenith | 8668424 |
| 2234 | 36900.37000.37100.38100.38900.40300.41900.90000.1400100 | Internal Plumbing Works | 5d | 2026-04-12 | 2026-04-17 | 2218, 2232 |  | Zenith | 8668434 |
| 2235 | 36900.37000.37100.38100.38900.40300.41900.90000.1400200 | Waterproofing | 5d | 2026-04-17 | 2026-04-22 | 2219, 2234 |  | Zenith | 8668444 |
| 2236 | 36900.37000.37100.38100.38900.40300.41900.90000.1400300 | Internal Plaster | 13d | 2026-05-14 | 2026-05-26 | 2220, 2234, 2235FF+5d |  | Zenith | 8668454 |
| 2237 | 36900.37000.37100.38100.38900.40300.41900.90000.1400400 | IPS flooring work | 7d | 2026-05-27 | 2026-06-02 | 2221, 2236 |  | Zenith | 8668464 |
| 2238 | 36900.37000.37100.38100.38900.40300.41900.90000.1400500 | Toilet dado work | 6d | 2026-05-27 | 2026-06-01 | 2222, 2235, 2236 |  | Zenith | 8668474 |
| 2239 | 36900.37000.37100.38100.38900.40300.41900.90000.1400600 | Toilet flooring work | 7d | 2026-06-02 | 2026-06-08 | 2223, 2238 |  | Zenith | 8668484 |
| 2240 | 36900.37000.37100.38100.38900.40300.41900.90000.1400700 | False Cieling panel fixing | 7d | 2026-06-09 | 2026-06-15 | 2224, 2239 |  | Zenith | 8668494 |
| 2241 | 36900.37000.37100.38100.38900.40300.41900.90000.1400800 | Living dinning flooring | 14d | 2026-06-15 | 2026-06-28 | 2225, 2239 |  | Zenith | 8668504 |
| 2242 | 36900.37000.37100.38100.38900.40300.41900.90000.1400900 | Putty primer coat | 8d | 2027-01-28 | 2027-02-05 | 2226, 2241 |  | Zenith | 8668514 |
| 2243 | 36900.37000.37100.38100.38900.40300.41900.90000.1401000 | Aluminium door-window fixing | 12d | 2026-09-17 | 2026-09-28 | 2227, 2237, 2241 |  | Zenith | 8668524 |
| 2244 | 36900.37000.37100.38100.38900.40300.41900.90000.1401100 | Door shutter fixing (Pre Hung) | 8d | 2027-02-05 | 2027-02-13 | 2228, 2242 |  | Zenith | 8668534 |
| 2245 | 36900.37000.37100.38100.38900.40300.41900.90000.1401200 | Electrical wiring work | 10d | 2027-02-23 | 2027-03-05 | 2229, 2244 |  | Zenith | 8668544 |
| 2246 | 36900.37000.37100.38100.38900.40300.41900.90000.1401300 | Painting 1st coat | 12d | 2027-08-02 | 2027-08-13 | 2230, 2245 |  | Zenith | 8668554 |
| 2247 | 36900.37000.37100.38100.38900.40300.41900.90100 | **8th floor roof** | 450.75d | 2026-04-17 | 2027-08-25 |  | start no earlier than 2026-04-17 | Zenith | 8649194 |
| 2248 | 36900.37000.37100.38100.38900.40300.41900.90100.1401400 | Block Work | 6d | 2026-04-17 | 2026-04-23 | 2103, 2232 |  | Zenith | 8668564 |
| 2249 | 36900.37000.37100.38100.38900.40300.41900.90100.1401500 | Fire sprinkler pipe fixing | 5d | 2026-04-23 | 2026-04-28 | 2233, 2248 |  | Zenith | 8668574 |
| 2250 | 36900.37000.37100.38100.38900.40300.41900.90100.1401600 | Internal Plumbing Works | 5d | 2026-04-23 | 2026-04-28 | 2234, 2248 |  | Zenith | 8668584 |
| 2251 | 36900.37000.37100.38100.38900.40300.41900.90100.1401700 | Waterproofing | 5d | 2026-04-28 | 2026-05-03 | 2235, 2250 |  | Zenith | 8668594 |
| 2252 | 36900.37000.37100.38100.38900.40300.41900.90100.1401800 | Internal Plaster | 13d | 2026-05-27 | 2026-06-08 | 2236, 2250, 2251FF+5d |  | Zenith | 8668604 |
| 2253 | 36900.37000.37100.38100.38900.40300.41900.90100.1401900 | IPS flooring work | 7d | 2026-06-09 | 2026-06-15 | 2237, 2252 |  | Zenith | 8668614 |
| 2254 | 36900.37000.37100.38100.38900.40300.41900.90100.1402000 | Toilet dado work | 6d | 2026-06-09 | 2026-06-14 | 2238, 2251, 2252 |  | Zenith | 8668624 |
| 2255 | 36900.37000.37100.38100.38900.40300.41900.90100.1402100 | Toilet flooring work | 7d | 2026-06-15 | 2026-06-21 | 2239, 2254 |  | Zenith | 8668634 |
| 2256 | 36900.37000.37100.38100.38900.40300.41900.90100.1402200 | False Cieling panel fixing | 7d | 2026-06-22 | 2026-06-28 | 2240, 2255 |  | Zenith | 8668644 |
| 2257 | 36900.37000.37100.38100.38900.40300.41900.90100.1402300 | Living dinning flooring | 14d | 2026-06-29 | 2026-07-12 | 2241, 2255 |  | Zenith | 8668654 |
| 2258 | 36900.37000.37100.38100.38900.40300.41900.90100.1402400 | Putty primer coat | 8d | 2027-02-05 | 2027-02-13 | 2242, 2257 |  | Zenith | 8668664 |
| 2259 | 36900.37000.37100.38100.38900.40300.41900.90100.1402500 | Aluminium door-window fixing | 12d | 2026-09-29 | 2026-10-10 | 2243, 2253, 2257 |  | Zenith | 8668674 |
| 2260 | 36900.37000.37100.38100.38900.40300.41900.90100.1402600 | Door shutter fixing (Pre Hung) | 8d | 2027-02-13 | 2027-02-21 | 2244, 2258 |  | Zenith | 8668684 |
| 2261 | 36900.37000.37100.38100.38900.40300.41900.90100.1402700 | Electrical wiring work | 10d | 2027-03-05 | 2027-03-15 | 2245, 2260 |  | Zenith | 8668694 |
| 2262 | 36900.37000.37100.38100.38900.40300.41900.90100.1402800 | Painting 1st coat | 12d | 2027-08-14 | 2027-08-25 | 2246, 2261 |  | Zenith | 8668704 |

| ID | WBS | Task | Duration | Start | Finish | Predecessors | Constraint | Calendar | Unique_Task_ID |
| --- | --- | --- | --- | --- | --- | --- | --- | --- | --- |
| 2263 | 36900.37000.37100.38100.38900.40300.41900.90200 | **9th floor roof** | 451.75d | 2026-04-28 | 2027-09-06 |  | start no earlier than 2026-04-28 | Zenith | 8649204 |
| 2264 | 36900.37000.37100.38100.38900.40300.41900.90200.1402900 | Block Work | 6d | 2026-04-28 | 2026-05-04 | 2104, 2248 |  | Zenith | 8668714 |
| 2265 | 36900.37000.37100.38100.38900.40300.41900.90200.1403000 | Fire sprinkler pipe fixing | 5d | 2026-05-04 | 2026-05-09 | 2249, 2264 |  | Zenith | 8668724 |
| 2266 | 36900.37000.37100.38100.38900.40300.41900.90200.1403100 | Internal Plumbing Works | 5d | 2026-05-04 | 2026-05-09 | 2250, 2264 |  | Zenith | 8668734 |
| 2267 | 36900.37000.37100.38100.38900.40300.41900.90200.1403200 | Waterproofing | 5d | 2026-05-09 | 2026-05-14 | 2251, 2266 |  | Zenith | 8668744 |
| 2268 | 36900.37000.37100.38100.38900.40300.41900.90200.1403300 | Internal Plaster | 13d | 2026-06-09 | 2026-06-21 | 2252, 2266, 2267FF+5d |  | Zenith | 8668754 |
| 2269 | 36900.37000.37100.38100.38900.40300.41900.90200.1403400 | IPS flooring work | 7d | 2026-06-22 | 2026-06-28 | 2253, 2268 |  | Zenith | 8668764 |
| 2270 | 36900.37000.37100.38100.38900.40300.41900.90200.1403500 | Toilet dado work | 6d | 2026-06-22 | 2026-06-27 | 2254, 2267, 2268 |  | Zenith | 8668774 |
| 2271 | 36900.37000.37100.38100.38900.40300.41900.90200.1403600 | Toilet flooring work | 7d | 2026-06-28 | 2026-07-04 | 2255, 2270 |  | Zenith | 8668784 |
| 2272 | 36900.37000.37100.38100.38900.40300.41900.90200.1403700 | False Cieling panel fixing | 7d | 2026-07-05 | 2026-07-11 | 2256, 2271 |  | Zenith | 8668794 |
| 2273 | 36900.37000.37100.38100.38900.40300.41900.90200.1403800 | Living dinning flooring | 14d | 2026-07-13 | 2026-07-26 | 2257, 2271 |  | Zenith | 8668804 |
| 2274 | 36900.37000.37100.38100.38900.40300.41900.90200.1403900 | Putty primer coat | 8d | 2027-02-13 | 2027-02-21 | 2258, 2273 |  | Zenith | 8668814 |
| 2275 | 36900.37000.37100.38100.38900.40300.41900.90200.1404000 | Aluminium door-window fixing | 12d | 2026-10-11 | 2026-10-22 | 2259, 2269, 2273 |  | Zenith | 8668824 |
| 2276 | 36900.37000.37100.38100.38900.40300.41900.90200.1404100 | Door shutter fixing (Pre Hung) | 8d | 2027-02-21 | 2027-03-01 | 2260, 2274 |  | Zenith | 8668834 |
| 2277 | 36900.37000.37100.38100.38900.40300.41900.90200.1404200 | Electrical wiring work | 10d | 2027-03-15 | 2027-03-25 | 2261, 2276 |  | Zenith | 8668844 |
| 2278 | 36900.37000.37100.38100.38900.40300.41900.90200.1404300 | Painting 1st coat | 12d | 2027-08-26 | 2027-09-06 | 2262, 2277 |  | Zenith | 8668854 |
| 2279 | 36900.37000.37100.38100.38900.40300.41900.90300 | **10th floor roof** | 452.75d | 2026-05-09 | 2027-09-18 |  | start no earlier than 2026-05-09 | Zenith | 8649214 |
| 2280 | 36900.37000.37100.38100.38900.40300.41900.90300.1404400 | Block Work | 6d | 2026-05-09 | 2026-05-15 | 2105, 2264 |  | Zenith | 8668864 |
| 2281 | 36900.37000.37100.38100.38900.40300.41900.90300.1404500 | Fire sprinkler pipe fixing | 5d | 2026-05-15 | 2026-05-20 | 2265, 2280 |  | Zenith | 8668874 |
| 2282 | 36900.37000.37100.38100.38900.40300.41900.90300.1404600 | Internal Plumbing Works | 5d | 2026-05-15 | 2026-05-20 | 2266, 2280 |  | Zenith | 8668884 |
| 2283 | 36900.37000.37100.38100.38900.40300.41900.90300.1404700 | Waterproofing | 5d | 2026-05-20 | 2026-05-25 | 2267, 2282 |  | Zenith | 8668894 |
| 2284 | 36900.37000.37100.38100.38900.40300.41900.90300.1404800 | Internal Plaster | 13d | 2026-06-22 | 2026-07-04 | 2268, 2282, 2283FF+5d |  | Zenith | 8668904 |
| 2285 | 36900.37000.37100.38100.38900.40300.41900.90300.1404900 | IPS flooring work | 7d | 2026-07-05 | 2026-07-11 | 2269, 2284 |  | Zenith | 8668914 |
| 2286 | 36900.37000.37100.38100.38900.40300.41900.90300.1405000 | Toilet dado work | 6d | 2026-07-05 | 2026-07-10 | 2270, 2283, 2284 |  | Zenith | 8668924 |
| 2287 | 36900.37000.37100.38100.38900.40300.41900.90300.1405100 | Toilet flooring work | 7d | 2026-07-11 | 2026-07-17 | 2271, 2286 |  | Zenith | 8668934 |
| 2288 | 36900.37000.37100.38100.38900.40300.41900.90300.1405200 | False Cieling panel fixing | 7d | 2026-07-18 | 2026-07-24 | 2272, 2287 |  | Zenith | 8668944 |
| 2289 | 36900.37000.37100.38100.38900.40300.41900.90300.1405300 | Living dinning flooring | 14d | 2026-08-15 | 2026-08-28 | 2273FS+19d, 2287FS+19d |  | Zenith | 8668954 |
| 2290 | 36900.37000.37100.38100.38900.40300.41900.90300.1405400 | Putty primer coat | 8d | 2027-02-21 | 2027-03-01 | 2274, 2289 |  | Zenith | 8668964 |
| 2291 | 36900.37000.37100.38100.38900.40300.41900.90300.1405500 | Aluminium door-window fixing | 12d | 2026-10-23 | 2026-12-18 | 2275, 2285, 2289 |  | Zenith | 8668974 |
| 2292 | 36900.37000.37100.38100.38900.40300.41900.90300.1405600 | Door shutter fixing (Pre Hung) | 8d | 2027-03-01 | 2027-03-09 | 2276, 2290 |  | Zenith | 8668984 |
| 2293 | 36900.37000.37100.38100.38900.40300.41900.90300.1405700 | Electrical wiring work | 10d | 2027-03-25 | 2027-04-04 | 2277, 2292 |  | Zenith | 8668994 |
| 2294 | 36900.37000.37100.38100.38900.40300.41900.90300.1405800 | Painting 1st coat | 12d | 2027-09-07 | 2027-09-18 | 2278, 2293 |  | Zenith | 8669004 |

| ID | WBS | Task | Duration | Start | Finish | Predecessors | Constraint | Calendar | Unique_Task_ID |
| --- | --- | --- | --- | --- | --- | --- | --- | --- | --- |
| 2295 | 36900.37000.37100.38100.38900.40300.41900.90400 | **11th floor roof** | 453.75d | 2026-05-20 | 2027-09-30 |  | start no earlier than 2026-05-20 | Zenith | 8649224 |
| 2296 | 36900.37000.37100.38100.38900.40300.41900.90400.1405900 | Block Work | 6d | 2026-05-20 | 2026-05-26 | 2106, 2280 |  | Zenith | 8669014 |
| 2297 | 36900.37000.37100.38100.38900.40300.41900.90400.1406000 | Fire sprinkler pipe fixing | 5d | 2026-05-26 | 2026-05-31 | 2281, 2296 |  | Zenith | 8669024 |
| 2298 | 36900.37000.37100.38100.38900.40300.41900.90400.1406100 | Internal Plumbing Works | 5d | 2026-05-26 | 2026-05-31 | 2282, 2296 |  | Zenith | 8669034 |
| 2299 | 36900.37000.37100.38100.38900.40300.41900.90400.1406200 | Waterproofing | 5d | 2026-05-31 | 2026-06-05 | 2283, 2298 |  | Zenith | 8669044 |
| 2300 | 36900.37000.37100.38100.38900.40300.41900.90400.1406300 | Internal Plaster | 13d | 2026-07-05 | 2026-07-17 | 2284, 2298, 2299FF+5d |  | Zenith | 8669054 |
| 2301 | 36900.37000.37100.38100.38900.40300.41900.90400.1406400 | IPS flooring work | 7d | 2026-07-18 | 2026-07-24 | 2285, 2300 |  | Zenith | 8669064 |
| 2302 | 36900.37000.37100.38100.38900.40300.41900.90400.1406500 | Toilet dado work | 6d | 2026-07-18 | 2026-07-23 | 2286, 2299, 2300 |  | Zenith | 8669074 |
| 2303 | 36900.37000.37100.38100.38900.40300.41900.90400.1406600 | Toilet flooring work | 7d | 2026-07-24 | 2026-07-30 | 2287, 2302 |  | Zenith | 8669084 |
| 2304 | 36900.37000.37100.38100.38900.40300.41900.90400.1406700 | False Cieling panel fixing | 7d | 2026-07-31 | 2026-08-06 | 2288, 2303 |  | Zenith | 8669094 |
| 2305 | 36900.37000.37100.38100.38900.40300.41900.90400.1406800 | Living dinning flooring | 14d | 2026-08-29 | 2026-09-11 | 2289, 2303 |  | Zenith | 8669104 |
| 2306 | 36900.37000.37100.38100.38900.40300.41900.90400.1406900 | Putty primer coat | 8d | 2027-03-01 | 2027-03-09 | 2290, 2305 |  | Zenith | 8669114 |
| 2307 | 36900.37000.37100.38100.38900.40300.41900.90400.1407000 | Aluminium door-window fixing | 12d | 2026-12-19 | 2026-12-30 | 2291, 2301, 2305 |  | Zenith | 8669124 |
| 2308 | 36900.37000.37100.38100.38900.40300.41900.90400.1407100 | Door shutter fixing (Pre Hung) | 8d | 2027-03-09 | 2027-03-17 | 2292, 2306 |  | Zenith | 8669134 |
| 2309 | 36900.37000.37100.38100.38900.40300.41900.90400.1407200 | Electrical wiring work | 10d | 2027-04-04 | 2027-04-14 | 2293, 2308 |  | Zenith | 8669144 |
| 2310 | 36900.37000.37100.38100.38900.40300.41900.90400.1407300 | Painting 1st coat | 12d | 2027-09-19 | 2027-09-30 | 2294, 2309 |  | Zenith | 8669154 |
| 2311 | 36900.37000.37100.38100.38900.40300.41900.90500 | **12th floor roof** | 450.75d | 2026-06-04 | 2027-10-12 |  | start no earlier than 2026-06-04 | Zenith | 8649234 |
| 2312 | 36900.37000.37100.38100.38900.40300.41900.90500.1407400 | Block Work | 6d | 2026-06-04 | 2026-06-10 | 2107, 2296 |  | Zenith | 8669164 |
| 2313 | 36900.37000.37100.38100.38900.40300.41900.90500.1407500 | Fire sprinkler pipe fixing | 5d | 2026-06-10 | 2026-06-15 | 2297, 2312 |  | Zenith | 8669174 |
| 2314 | 36900.37000.37100.38100.38900.40300.41900.90500.1407600 | Internal Plumbing Works | 5d | 2026-06-10 | 2026-06-15 | 2298, 2312 |  | Zenith | 8669184 |
| 2315 | 36900.37000.37100.38100.38900.40300.41900.90500.1407700 | Waterproofing | 5d | 2026-06-15 | 2026-06-20 | 2299, 2314 |  | Zenith | 8669194 |
| 2316 | 36900.37000.37100.38100.38900.40300.41900.90500.1407800 | Internal Plaster | 13d | 2026-07-18 | 2026-07-30 | 2300, 2314, 2315FF+5d |  | Zenith | 8669204 |
| 2317 | 36900.37000.37100.38100.38900.40300.41900.90500.1407900 | IPS flooring work | 7d | 2026-07-31 | 2026-08-06 | 2301, 2316 |  | Zenith | 8669214 |
| 2318 | 36900.37000.37100.38100.38900.40300.41900.90500.1408000 | Toilet dado work | 6d | 2026-07-31 | 2026-08-05 | 2302, 2315, 2316 |  | Zenith | 8669224 |
| 2319 | 36900.37000.37100.38100.38900.40300.41900.90500.1408100 | Toilet flooring work | 7d | 2026-08-06 | 2026-08-12 | 2303, 2318 |  | Zenith | 8669234 |
| 2320 | 36900.37000.37100.38100.38900.40300.41900.90500.1408200 | False Cieling panel fixing | 7d | 2026-08-13 | 2026-08-19 | 2304, 2319 |  | Zenith | 8669244 |
| 2321 | 36900.37000.37100.38100.38900.40300.41900.90500.1408300 | Living dinning flooring | 14d | 2026-09-12 | 2026-09-25 | 2305, 2319 |  | Zenith | 8669254 |
| 2322 | 36900.37000.37100.38100.38900.40300.41900.90500.1408400 | Putty primer coat | 8d | 2027-03-09 | 2027-03-17 | 2306, 2321 |  | Zenith | 8669264 |
| 2323 | 36900.37000.37100.38100.38900.40300.41900.90500.1408500 | Aluminium door-window fixing | 12d | 2026-12-31 | 2027-01-11 | 2307, 2317, 2321 |  | Zenith | 8669274 |
| 2324 | 36900.37000.37100.38100.38900.40300.41900.90500.1408600 | Door shutter fixing (Pre Hung) | 8d | 2027-03-17 | 2027-03-25 | 2308, 2322 |  | Zenith | 8669284 |
| 2325 | 36900.37000.37100.38100.38900.40300.41900.90500.1408700 | Electrical wiring work | 10d | 2027-04-14 | 2027-04-24 | 2309, 2324 |  | Zenith | 8669294 |
| 2326 | 36900.37000.37100.38100.38900.40300.41900.90500.1408800 | Painting 1st coat | 12d | 2027-10-01 | 2027-10-12 | 2310, 2325 |  | Zenith | 8669304 |

| ID | WBS | Task | Duration | Start | Finish | Predecessors | Constraint | Calendar | Unique_Task_ID |
| --- | --- | --- | --- | --- | --- | --- | --- | --- | --- |
| 2327 | 36900.37000.37100.38100.38900.40300.41900.90600 | **13th floor roof** | 451.75d | 2026-06-15 | 2027-10-24 |  | start no earlier than 2026-06-15 | Zenith | 8649244 |
| 2328 | 36900.37000.37100.38100.38900.40300.41900.90600.1408900 | Block Work | 6d | 2026-06-15 | 2026-06-21 | 2108, 2312 |  | Zenith | 8669314 |
| 2329 | 36900.37000.37100.38100.38900.40300.41900.90600.1409000 | Fire sprinkler pipe fixing | 5d | 2026-06-21 | 2026-06-26 | 2313, 2328 |  | Zenith | 8669324 |
| 2330 | 36900.37000.37100.38100.38900.40300.41900.90600.1409100 | Internal Plumbing Works | 5d | 2026-06-21 | 2026-06-26 | 2314, 2328 |  | Zenith | 8669334 |
| 2331 | 36900.37000.37100.38100.38900.40300.41900.90600.1409200 | Waterproofing | 5d | 2026-06-26 | 2026-07-01 | 2315, 2330 |  | Zenith | 8669344 |
| 2332 | 36900.37000.37100.38100.38900.40300.41900.90600.1409300 | Internal Plaster | 13d | 2026-07-31 | 2026-08-12 | 2316, 2330, 2331FF+5d |  | Zenith | 8669354 |
| 2333 | 36900.37000.37100.38100.38900.40300.41900.90600.1409400 | IPS flooring work | 7d | 2026-08-13 | 2026-08-19 | 2317, 2332 |  | Zenith | 8669364 |
| 2334 | 36900.37000.37100.38100.38900.40300.41900.90600.1409500 | Toilet dado work | 6d | 2026-08-13 | 2026-08-18 | 2318, 2331, 2332 |  | Zenith | 8669374 |
| 2335 | 36900.37000.37100.38100.38900.40300.41900.90600.1409600 | Toilet flooring work | 7d | 2026-08-19 | 2026-08-25 | 2319, 2334 |  | Zenith | 8669384 |
| 2336 | 36900.37000.37100.38100.38900.40300.41900.90600.1409700 | False Cieling panel fixing | 7d | 2026-08-26 | 2026-09-01 | 2320, 2335 |  | Zenith | 8669394 |
| 2337 | 36900.37000.37100.38100.38900.40300.41900.90600.1409800 | Living dinning flooring | 14d | 2026-09-26 | 2026-10-09 | 2321, 2335 |  | Zenith | 8669404 |
| 2338 | 36900.37000.37100.38100.38900.40300.41900.90600.1409900 | Putty primer coat | 8d | 2027-03-17 | 2027-03-25 | 2322, 2337 |  | Zenith | 8669414 |
| 2339 | 36900.37000.37100.38100.38900.40300.41900.90600.1410000 | Aluminium door-window fixing | 12d | 2027-01-12 | 2027-01-23 | 2323, 2333, 2337 |  | Zenith | 8669424 |
| 2340 | 36900.37000.37100.38100.38900.40300.41900.90600.1410100 | Door shutter fixing (Pre Hung) | 8d | 2027-03-25 | 2027-04-02 | 2324, 2338 |  | Zenith | 8669434 |
| 2341 | 36900.37000.37100.38100.38900.40300.41900.90600.1410200 | Electrical wiring work | 10d | 2027-04-24 | 2027-05-04 | 2325, 2340 |  | Zenith | 8669444 |
| 2342 | 36900.37000.37100.38100.38900.40300.41900.90600.1410300 | Painting 1st coat | 12d | 2027-10-13 | 2027-10-24 | 2326, 2341 |  | Zenith | 8669454 |
| 2343 | 36900.37000.37100.38100.38900.40300.41900.90700 | **14th floor roof** | 452.75d | 2026-06-26 | 2027-12-20 |  | start no earlier than 2026-06-26 | Zenith | 8649254 |
| 2344 | 36900.37000.37100.38100.38900.40300.41900.90700.1410400 | Block Work | 6d | 2026-06-26 | 2026-07-02 | 2109, 2328 |  | Zenith | 8669464 |
| 2345 | 36900.37000.37100.38100.38900.40300.41900.90700.1410500 | Fire sprinkler pipe fixing | 5d | 2026-07-02 | 2026-07-07 | 2329, 2344 |  | Zenith | 8669474 |
| 2346 | 36900.37000.37100.38100.38900.40300.41900.90700.1410600 | Internal Plumbing Works | 5d | 2026-07-02 | 2026-07-07 | 2330, 2344 |  | Zenith | 8669484 |
| 2347 | 36900.37000.37100.38100.38900.40300.41900.90700.1410700 | Waterproofing | 5d | 2026-07-07 | 2026-07-12 | 2331, 2346 |  | Zenith | 8669494 |
| 2348 | 36900.37000.37100.38100.38900.40300.41900.90700.1410800 | Internal Plaster | 13d | 2026-08-13 | 2026-08-25 | 2332, 2346, 2347FF+5d |  | Zenith | 8669504 |
| 2349 | 36900.37000.37100.38100.38900.40300.41900.90700.1410900 | IPS flooring work | 7d | 2026-08-26 | 2026-09-01 | 2333, 2348 |  | Zenith | 8669514 |
| 2350 | 36900.37000.37100.38100.38900.40300.41900.90700.1411000 | Toilet dado work | 6d | 2026-08-26 | 2026-08-31 | 2334, 2347, 2348 |  | Zenith | 8669524 |
| 2351 | 36900.37000.37100.38100.38900.40300.41900.90700.1411100 | Toilet flooring work | 7d | 2026-09-01 | 2026-09-07 | 2335, 2350 |  | Zenith | 8669534 |
| 2352 | 36900.37000.37100.38100.38900.40300.41900.90700.1411200 | False Cieling panel fixing | 7d | 2026-09-08 | 2026-09-14 | 2336, 2351 |  | Zenith | 8669544 |
| 2353 | 36900.37000.37100.38100.38900.40300.41900.90700.1411300 | Living dinning flooring | 14d | 2026-10-10 | 2026-10-23 | 2337, 2351 |  | Zenith | 8669554 |
| 2354 | 36900.37000.37100.38100.38900.40300.41900.90700.1411400 | Putty primer coat | 8d | 2027-03-25 | 2027-04-02 | 2338, 2353 |  | Zenith | 8669564 |
| 2355 | 36900.37000.37100.38100.38900.40300.41900.90700.1411500 | Aluminium door-window fixing | 12d | 2027-01-24 | 2027-02-04 | 2339, 2349, 2353 |  | Zenith | 8669574 |
| 2356 | 36900.37000.37100.38100.38900.40300.41900.90700.1411600 | Door shutter fixing (Pre Hung) | 8d | 2027-04-02 | 2027-04-10 | 2340, 2354 |  | Zenith | 8669584 |
| 2357 | 36900.37000.37100.38100.38900.40300.41900.90700.1411700 | Electrical wiring work | 10d | 2027-05-04 | 2027-05-14 | 2341, 2356 |  | Zenith | 8669594 |
| 2358 | 36900.37000.37100.38100.38900.40300.41900.90700.1411800 | Painting 1st coat | 12d | 2027-10-25 | 2027-12-20 | 2342, 2357 |  | Zenith | 8669604 |

| ID | WBS | Task | Duration | Start | Finish | Predecessors | Constraint | Calendar | Unique_Task_ID |
| --- | --- | --- | --- | --- | --- | --- | --- | --- | --- |
| 2359 | 36900.37000.37100.38100.38900.40300.41900.90800 | **15th floor roof** | 453.75d | 2026-07-07 | 2028-01-01 |  | start no earlier than 2026-07-07 | Zenith | 8649264 |
| 2360 | 36900.37000.37100.38100.38900.40300.41900.90800.1411900 | Block Work | 6d | 2026-07-07 | 2026-07-13 | 2110, 2344 |  | Zenith | 8669614 |
| 2361 | 36900.37000.37100.38100.38900.40300.41900.90800.1412000 | Fire sprinkler pipe fixing | 5d | 2026-07-13 | 2026-07-18 | 2345, 2360 |  | Zenith | 8669624 |
| 2362 | 36900.37000.37100.38100.38900.40300.41900.90800.1412100 | Internal Plumbing Works | 5d | 2026-07-13 | 2026-07-18 | 2346, 2360 |  | Zenith | 8669634 |
| 2363 | 36900.37000.37100.38100.38900.40300.41900.90800.1412200 | Waterproofing | 5d | 2026-07-18 | 2026-07-23 | 2347, 2362 |  | Zenith | 8669644 |
| 2364 | 36900.37000.37100.38100.38900.40300.41900.90800.1412300 | Internal Plaster | 13d | 2026-08-26 | 2026-09-07 | 2348, 2362, 2363FF+5d |  | Zenith | 8669654 |
| 2365 | 36900.37000.37100.38100.38900.40300.41900.90800.1412400 | IPS flooring work | 7d | 2026-09-08 | 2026-09-14 | 2349, 2364 |  | Zenith | 8669664 |
| 2366 | 36900.37000.37100.38100.38900.40300.41900.90800.1412500 | Toilet dado work | 6d | 2026-09-08 | 2026-09-13 | 2350, 2363, 2364 |  | Zenith | 8669674 |
| 2367 | 36900.37000.37100.38100.38900.40300.41900.90800.1412600 | Toilet flooring work | 7d | 2026-09-14 | 2026-09-20 | 2351, 2366 |  | Zenith | 8669684 |
| 2368 | 36900.37000.37100.38100.38900.40300.41900.90800.1412700 | False Cieling panel fixing | 7d | 2026-09-21 | 2026-09-27 | 2352, 2367 |  | Zenith | 8669694 |
| 2369 | 36900.37000.37100.38100.38900.40300.41900.90800.1412800 | Living dinning flooring | 14d | 2026-10-24 | 2026-12-21 | 2353, 2367 |  | Zenith | 8669704 |
| 2370 | 36900.37000.37100.38100.38900.40300.41900.90800.1412900 | Aluminium door-window fixing | 8d | 2027-02-05 | 2027-02-12 | 2355, 2365, 2369 |  | Zenith | 8669714 |
| 2371 | 36900.37000.37100.38100.38900.40300.41900.90800.1413000 | Putty primer coat | 12d | 2027-04-02 | 2027-04-14 | 2354, 2369 |  | Zenith | 8669724 |
| 2372 | 36900.37000.37100.38100.38900.40300.41900.90800.1413100 | Door shutter fixing (Pre Hung) | 8d | 2027-04-14 | 2027-04-22 | 2356, 2371 |  | Zenith | 8669734 |
| 2373 | 36900.37000.37100.38100.38900.40300.41900.90800.1413200 | Electrical wiring work | 10d | 2027-05-14 | 2027-05-24 | 2357, 2372 |  | Zenith | 8669744 |
| 2374 | 36900.37000.37100.38100.38900.40300.41900.90800.1413300 | Painting 1st coat | 12d | 2027-12-21 | 2028-01-01 | 2358, 2373 |  | Zenith | 8669754 |
| 2375 | 36900.37000.37100.38100.38900.40300.41900.90900 | **16th floor roof** | 454.75d | 2026-07-18 | 2028-01-13 |  | start no earlier than 2026-07-18 | Zenith | 8649274 |
| 2376 | 36900.37000.37100.38100.38900.40300.41900.90900.1413400 | Block Work | 6d | 2026-07-18 | 2026-07-24 | 2111, 2360 |  | Zenith | 8669764 |
| 2377 | 36900.37000.37100.38100.38900.40300.41900.90900.1413500 | Fire sprinkler pipe fixing | 5d | 2026-07-24 | 2026-07-29 | 2361, 2376 |  | Zenith | 8669774 |
| 2378 | 36900.37000.37100.38100.38900.40300.41900.90900.1413600 | Internal Plumbing Works | 5d | 2026-07-24 | 2026-07-29 | 2362, 2376 |  | Zenith | 8669784 |
| 2379 | 36900.37000.37100.38100.38900.40300.41900.90900.1413700 | Waterproofing | 5d | 2026-07-29 | 2026-08-03 | 2363, 2378 |  | Zenith | 8669794 |
| 2380 | 36900.37000.37100.38100.38900.40300.41900.90900.1413800 | Internal Plaster | 13d | 2026-09-08 | 2026-09-20 | 2364, 2378, 2379FF+5d |  | Zenith | 8669804 |
| 2381 | 36900.37000.37100.38100.38900.40300.41900.90900.1413900 | IPS flooring work | 7d | 2026-09-21 | 2026-09-27 | 2365, 2380 |  | Zenith | 8669814 |
| 2382 | 36900.37000.37100.38100.38900.40300.41900.90900.1414000 | Toilet dado work | 6d | 2026-09-21 | 2026-09-26 | 2366, 2379, 2380 |  | Zenith | 8669824 |
| 2383 | 36900.37000.37100.38100.38900.40300.41900.90900.1414100 | Toilet flooring work | 7d | 2026-09-27 | 2026-10-03 | 2367, 2382 |  | Zenith | 8669834 |
| 2384 | 36900.37000.37100.38100.38900.40300.41900.90900.1414200 | False Cieling panel fixing | 7d | 2026-10-04 | 2026-10-10 | 2368, 2383 |  | Zenith | 8669844 |
| 2385 | 36900.37000.37100.38100.38900.40300.41900.90900.1414300 | Living dinning flooring | 14d | 2026-12-22 | 2027-01-04 | 2369, 2383 |  | Zenith | 8669854 |
| 2386 | 36900.37000.37100.38100.38900.40300.41900.90900.1414400 | Putty primer coat | 8d | 2027-04-14 | 2027-04-22 | 2371, 2385 |  | Zenith | 8669864 |
| 2387 | 36900.37000.37100.38100.38900.40300.41900.90900.1414500 | Aluminium door-window fixing | 12d | 2027-02-13 | 2027-02-24 | 2370, 2381, 2385 |  | Zenith | 8669874 |
| 2388 | 36900.37000.37100.38100.38900.40300.41900.90900.1414600 | Door shutter fixing (Pre Hung) | 8d | 2027-04-22 | 2027-04-30 | 2372, 2386 |  | Zenith | 8669884 |
| 2389 | 36900.37000.37100.38100.38900.40300.41900.90900.1414700 | Electrical wiring work | 10d | 2027-05-24 | 2027-06-03 | 2373, 2388 |  | Zenith | 8669894 |
| 2390 | 36900.37000.37100.38100.38900.40300.41900.90900.1414800 | Painting 1st coat | 12d | 2028-01-02 | 2028-01-13 | 2374, 2389 |  | Zenith | 8669904 |

| ID | WBS | Task | Duration | Start | Finish | Predecessors | Constraint | Calendar | Unique_Task_ID |
| --- | --- | --- | --- | --- | --- | --- | --- | --- | --- |
| 2391 | 36900.37000.37100.38100.38900.40300.41900.91000 | **17th floor roof** | 455.75d | 2026-07-29 | 2028-01-25 |  | start no earlier than 2026-07-29 | Zenith | 8649284 |
| 2392 | 36900.37000.37100.38100.38900.40300.41900.91000.1414900 | Block Work | 6d | 2026-07-29 | 2026-08-04 | 2112, 2376 |  | Zenith | 8669914 |
| 2393 | 36900.37000.37100.38100.38900.40300.41900.91000.1415000 | Fire sprinkler pipe fixing | 5d | 2026-08-04 | 2026-08-09 | 2377, 2392 |  | Zenith | 8669924 |
| 2394 | 36900.37000.37100.38100.38900.40300.41900.91000.1415100 | Internal Plumbing Works | 5d | 2026-08-04 | 2026-08-09 | 2378, 2392 |  | Zenith | 8669934 |
| 2395 | 36900.37000.37100.38100.38900.40300.41900.91000.1415200 | Waterproofing | 5d | 2026-08-09 | 2026-08-14 | 2379, 2394 |  | Zenith | 8669944 |
| 2396 | 36900.37000.37100.38100.38900.40300.41900.91000.1415300 | Internal Plaster | 13d | 2026-09-21 | 2026-10-03 | 2380, 2394, 2395FF+5d |  | Zenith | 8669954 |
| 2397 | 36900.37000.37100.38100.38900.40300.41900.91000.1415400 | IPS flooring work | 7d | 2026-10-04 | 2026-10-10 | 2381, 2396 |  | Zenith | 8669964 |
| 2398 | 36900.37000.37100.38100.38900.40300.41900.91000.1415500 | Toilet dado work | 6d | 2026-10-04 | 2026-10-09 | 2382, 2395, 2396 |  | Zenith | 8669974 |
| 2399 | 36900.37000.37100.38100.38900.40300.41900.91000.1415600 | Toilet flooring work | 7d | 2026-10-10 | 2026-10-16 | 2383, 2398 |  | Zenith | 8669984 |
| 2400 | 36900.37000.37100.38100.38900.40300.41900.91000.1415700 | False Cieling panel fixing | 7d | 2026-10-17 | 2026-10-23 | 2384, 2399 |  | Zenith | 8669994 |
| 2401 | 36900.37000.37100.38100.38900.40300.41900.91000.1415800 | Living dinning flooring | 14d | 2027-01-05 | 2027-01-18 | 2385, 2399 |  | Zenith | 8670004 |
| 2402 | 36900.37000.37100.38100.38900.40300.41900.91000.1415900 | Putty primer coat | 8d | 2027-04-22 | 2027-04-30 | 2386, 2401 |  | Zenith | 8670014 |
| 2403 | 36900.37000.37100.38100.38900.40300.41900.91000.1416000 | Aluminium door-window fixing | 12d | 2027-02-25 | 2027-03-08 | 2387, 2397, 2401 |  | Zenith | 8670024 |
| 2404 | 36900.37000.37100.38100.38900.40300.41900.91000.1416100 | Door shutter fixing (Pre Hung) | 8d | 2027-04-30 | 2027-05-08 | 2388, 2402 |  | Zenith | 8670034 |
| 2405 | 36900.37000.37100.38100.38900.40300.41900.91000.1416200 | Electrical wiring work | 10d | 2027-06-03 | 2027-06-13 | 2389, 2404 |  | Zenith | 8670044 |
| 2406 | 36900.37000.37100.38100.38900.40300.41900.91000.1416300 | Painting 1st coat | 12d | 2028-01-14 | 2028-01-25 | 2390, 2405 |  | Zenith | 8670054 |
| 2407 | 36900.37000.37100.38100.38900.40300.41900.91100 | **18th floor roof** | 456.75d | 2026-08-09 | 2028-02-06 |  | start no earlier than 2026-08-09 | Zenith | 8649294 |
| 2408 | 36900.37000.37100.38100.38900.40300.41900.91100.1416400 | Block Work | 6d | 2026-08-09 | 2026-08-15 | 2113, 2392 |  | Zenith | 8670064 |
| 2409 | 36900.37000.37100.38100.38900.40300.41900.91100.1416500 | Fire sprinkler pipe fixing | 5d | 2026-08-15 | 2026-08-20 | 2393, 2408 |  | Zenith | 8670074 |
| 2410 | 36900.37000.37100.38100.38900.40300.41900.91100.1416600 | Internal Plumbing Works | 5d | 2026-08-15 | 2026-08-20 | 2394, 2408 |  | Zenith | 8670084 |
| 2411 | 36900.37000.37100.38100.38900.40300.41900.91100.1416700 | Waterproofing | 5d | 2026-08-20 | 2026-08-25 | 2395, 2410 |  | Zenith | 8670094 |
| 2412 | 36900.37000.37100.38100.38900.40300.41900.91100.1416800 | Internal Plaster | 13d | 2026-10-04 | 2026-10-16 | 2396, 2410, 2411FF+5d |  | Zenith | 8670104 |
| 2413 | 36900.37000.37100.38100.38900.40300.41900.91100.1416900 | IPS flooring work | 7d | 2026-10-17 | 2026-10-23 | 2397, 2412 |  | Zenith | 8670114 |
| 2414 | 36900.37000.37100.38100.38900.40300.41900.91100.1417000 | Toilet dado work | 6d | 2026-10-17 | 2026-10-22 | 2398, 2411, 2412 |  | Zenith | 8670124 |
| 2415 | 36900.37000.37100.38100.38900.40300.41900.91100.1417100 | Toilet flooring work | 7d | 2026-10-23 | 2026-10-29 | 2399, 2414 |  | Zenith | 8670134 |
| 2416 | 36900.37000.37100.38100.38900.40300.41900.91100.1417200 | False Cieling panel fixing | 7d | 2026-10-30 | 2026-12-20 | 2400, 2415 |  | Zenith | 8670144 |
| 2417 | 36900.37000.37100.38100.38900.40300.41900.91100.1417300 | Living dinning flooring | 14d | 2027-01-19 | 2027-02-01 | 2401, 2415 |  | Zenith | 8670154 |
| 2418 | 36900.37000.37100.38100.38900.40300.41900.91100.1417400 | Putty primer coat | 8d | 2027-04-30 | 2027-05-08 | 2402, 2417 |  | Zenith | 8670164 |
| 2419 | 36900.37000.37100.38100.38900.40300.41900.91100.1417500 | Aluminium door-window fixing | 12d | 2027-03-09 | 2027-03-20 | 2403, 2413, 2417 |  | Zenith | 8670174 |
| 2420 | 36900.37000.37100.38100.38900.40300.41900.91100.1417600 | Door shutter fixing (Pre Hung) | 8d | 2027-05-08 | 2027-05-16 | 2404, 2418 |  | Zenith | 8670184 |
| 2421 | 36900.37000.37100.38100.38900.40300.41900.91100.1417700 | Electrical wiring work | 10d | 2027-06-13 | 2027-06-23 | 2405, 2420 |  | Zenith | 8670194 |
| 2422 | 36900.37000.37100.38100.38900.40300.41900.91100.1417800 | Painting 1st coat | 12d | 2028-01-26 | 2028-02-06 | 2406, 2421 |  | Zenith | 8670204 |

| ID | WBS | Task | Duration | Start | Finish | Predecessors | Constraint | Calendar | Unique_Task_ID |
| --- | --- | --- | --- | --- | --- | --- | --- | --- | --- |
| 2423 | 36900.37000.37100.38100.38900.40300.41900.91200 | **19th floor roof** | 457.75d | 2026-08-20 | 2028-02-18 |  | start no earlier than 2026-08-20 | Zenith | 8649304 |
| 2424 | 36900.37000.37100.38100.38900.40300.41900.91200.1417900 | Block Work | 6d | 2026-08-20 | 2026-08-26 | 2114, 2408 |  | Zenith | 8670214 |
| 2425 | 36900.37000.37100.38100.38900.40300.41900.91200.1418000 | Fire sprinkler pipe fixing | 4d | 2026-08-26 | 2026-08-30 | 2409, 2424 |  | Zenith | 8670224 |
| 2426 | 36900.37000.37100.38100.38900.40300.41900.91200.1418100 | Internal Plumbing Works | 4d | 2026-08-26 | 2026-08-30 | 2410, 2424 |  | Zenith | 8670234 |
| 2427 | 36900.37000.37100.38100.38900.40300.41900.91200.1418200 | Waterproofing | 4d | 2026-08-30 | 2026-09-03 | 2411, 2426 |  | Zenith | 8670244 |
| 2428 | 36900.37000.37100.38100.38900.40300.41900.91200.1418300 | Internal Plaster | 13d | 2026-10-17 | 2026-10-29 | 2412, 2426, 2427FF+5d |  | Zenith | 8670254 |
| 2429 | 36900.37000.37100.38100.38900.40300.41900.91200.1418400 | IPS flooring work | 7d | 2026-10-30 | 2026-12-20 | 2413, 2428 |  | Zenith | 8670264 |
| 2430 | 36900.37000.37100.38100.38900.40300.41900.91200.1418500 | Toilet dado work | 6d | 2026-10-30 | 2026-12-19 | 2414, 2427, 2428 |  | Zenith | 8670274 |
| 2431 | 36900.37000.37100.38100.38900.40300.41900.91200.1418600 | Toilet flooring work | 7d | 2026-12-20 | 2026-12-26 | 2415, 2430 |  | Zenith | 8670284 |
| 2432 | 36900.37000.37100.38100.38900.40300.41900.91200.1418700 | False Cieling panel fixing | 7d | 2026-12-27 | 2027-01-02 | 2416, 2431 |  | Zenith | 8670294 |
| 2433 | 36900.37000.37100.38100.38900.40300.41900.91200.1418800 | Living dinning flooring | 14d | 2027-02-02 | 2027-02-15 | 2417, 2431 |  | Zenith | 8670304 |
| 2434 | 36900.37000.37100.38100.38900.40300.41900.91200.1418900 | Putty primer coat | 8d | 2027-05-08 | 2027-05-16 | 2418, 2433 |  | Zenith | 8670314 |
| 2435 | 36900.37000.37100.38100.38900.40300.41900.91200.1419000 | Aluminium door-window fixing | 12d | 2027-03-21 | 2027-04-01 | 2419, 2429, 2433 |  | Zenith | 8670324 |
| 2436 | 36900.37000.37100.38100.38900.40300.41900.91200.1419100 | Door shutter fixing (Pre Hung) | 8d | 2027-05-16 | 2027-05-24 | 2420, 2434 |  | Zenith | 8670334 |
| 2437 | 36900.37000.37100.38100.38900.40300.41900.91200.1419200 | Electrical wiring work | 10d | 2027-06-23 | 2027-07-03 | 2421, 2436 |  | Zenith | 8670344 |
| 2438 | 36900.37000.37100.38100.38900.40300.41900.91200.1419300 | Painting 1st coat | 12d | 2028-02-07 | 2028-02-18 | 2422, 2437 |  | Zenith | 8670354 |
| 2439 | 36900.37000.37100.38100.38900.40300.41900.91300 | **20th floor roof** | 458.75d | 2026-08-31 | 2028-03-01 |  | start no earlier than 2026-08-31 | Zenith | 8649314 |
| 2440 | 36900.37000.37100.38100.38900.40300.41900.91300.1419400 | Block Work | 6d | 2026-08-31 | 2026-09-06 | 2115, 2424 |  | Zenith | 8670364 |
| 2441 | 36900.37000.37100.38100.38900.40300.41900.91300.1419500 | Fire sprinkler pipe fixing | 4d | 2026-09-06 | 2026-09-10 | 2425, 2440 |  | Zenith | 8670374 |
| 2442 | 36900.37000.37100.38100.38900.40300.41900.91300.1419600 | Internal Plumbing Works | 4d | 2026-09-06 | 2026-09-10 | 2426, 2440 |  | Zenith | 8670384 |
| 2443 | 36900.37000.37100.38100.38900.40300.41900.91300.1419700 | Waterproofing | 4d | 2026-09-10 | 2026-09-14 | 2427, 2442 |  | Zenith | 8670394 |
| 2444 | 36900.37000.37100.38100.38900.40300.41900.91300.1419800 | Internal Plaster | 13d | 2026-10-30 | 2026-12-26 | 2428, 2442, 2443FF+5d |  | Zenith | 8670404 |
| 2445 | 36900.37000.37100.38100.38900.40300.41900.91300.1419900 | IPS flooring work | 7d | 2026-12-27 | 2027-01-02 | 2429, 2444 |  | Zenith | 8670414 |
| 2446 | 36900.37000.37100.38100.38900.40300.41900.91300.1420000 | Toilet dado work | 6d | 2026-12-27 | 2027-01-01 | 2430, 2443, 2444 |  | Zenith | 8670424 |
| 2447 | 36900.37000.37100.38100.38900.40300.41900.91300.1420100 | Toilet flooring work | 7d | 2027-01-02 | 2027-01-08 | 2431, 2446 |  | Zenith | 8670434 |
| 2448 | 36900.37000.37100.38100.38900.40300.41900.91300.1420200 | False Cieling panel fixing | 7d | 2027-01-09 | 2027-01-15 | 2432, 2447 |  | Zenith | 8670444 |
| 2449 | 36900.37000.37100.38100.38900.40300.41900.91300.1420300 | Living dinning flooring | 14d | 2027-02-16 | 2027-03-01 | 2433, 2447 |  | Zenith | 8670454 |
| 2450 | 36900.37000.37100.38100.38900.40300.41900.91300.1420400 | Putty primer coat | 8d | 2027-05-16 | 2027-05-24 | 2434, 2449 |  | Zenith | 8670464 |
| 2451 | 36900.37000.37100.38100.38900.40300.41900.91300.1420500 | Aluminium door-window fixing | 12d | 2027-04-02 | 2027-04-13 | 2435, 2445, 2449 |  | Zenith | 8670474 |
| 2452 | 36900.37000.37100.38100.38900.40300.41900.91300.1420600 | Door shutter fixing (Pre Hung) | 8d | 2027-05-24 | 2027-06-01 | 2436, 2450 |  | Zenith | 8670484 |
| 2453 | 36900.37000.37100.38100.38900.40300.41900.91300.1420700 | Electrical wiring work | 10d | 2027-07-03 | 2027-07-13 | 2437, 2452 |  | Zenith | 8670494 |
| 2454 | 36900.37000.37100.38100.38900.40300.41900.91300.1420800 | Painting 1st coat | 12d | 2028-02-19 | 2028-03-01 | 2438, 2453 |  | Zenith | 8670504 |

| ID | WBS | Task | Duration | Start | Finish | Predecessors | Constraint | Calendar | Unique_Task_ID |
| --- | --- | --- | --- | --- | --- | --- | --- | --- | --- |
| 2455 | 36900.37000.37100.38100.38900.40300.41900.91400 | **21st floor roof** | 459.75d | 2026-09-11 | 2028-03-13 |  | start no earlier than 2026-09-11 | Zenith | 8649324 |
| 2456 | 36900.37000.37100.38100.38900.40300.41900.91400.1420900 | Block Work | 6d | 2026-09-11 | 2026-09-17 | 2116, 2440 |  | Zenith | 8670514 |
| 2457 | 36900.37000.37100.38100.38900.40300.41900.91400.1421000 | Fire sprinkler pipe fixing | 4d | 2026-09-17 | 2026-09-21 | 2441, 2456 |  | Zenith | 8670524 |
| 2458 | 36900.37000.37100.38100.38900.40300.41900.91400.1421100 | Internal Plumbing Works | 4d | 2026-09-17 | 2026-09-21 | 2442, 2456 |  | Zenith | 8670534 |
| 2459 | 36900.37000.37100.38100.38900.40300.41900.91400.1421200 | Waterproofing | 4d | 2026-09-21 | 2026-09-25 | 2443, 2458 |  | Zenith | 8670544 |
| 2460 | 36900.37000.37100.38100.38900.40300.41900.91400.1421300 | Internal Plaster | 13d | 2026-12-27 | 2027-01-08 | 2444, 2458, 2459FF+5d |  | Zenith | 8670554 |
| 2461 | 36900.37000.37100.38100.38900.40300.41900.91400.1421400 | IPS flooring work | 7d | 2027-01-09 | 2027-01-15 | 2445, 2460 |  | Zenith | 8670564 |
| 2462 | 36900.37000.37100.38100.38900.40300.41900.91400.1421500 | Toilet dado work | 6d | 2027-01-09 | 2027-01-14 | 2446, 2459, 2460 |  | Zenith | 8670574 |
| 2463 | 36900.37000.37100.38100.38900.40300.41900.91400.1421600 | Toilet flooring work | 7d | 2027-01-15 | 2027-01-21 | 2447, 2462 |  | Zenith | 8670584 |
| 2464 | 36900.37000.37100.38100.38900.40300.41900.91400.1421700 | False Cieling panel fixing | 7d | 2027-01-22 | 2027-01-28 | 2448, 2463 |  | Zenith | 8670594 |
| 2465 | 36900.37000.37100.38100.38900.40300.41900.91400.1421800 | Living dinning flooring | 14d | 2027-03-02 | 2027-03-15 | 2449, 2463 |  | Zenith | 8670604 |
| 2466 | 36900.37000.37100.38100.38900.40300.41900.91400.1421900 | Putty primer coat | 8d | 2027-05-24 | 2027-06-01 | 2450, 2465 |  | Zenith | 8670614 |
| 2467 | 36900.37000.37100.38100.38900.40300.41900.91400.1422000 | Aluminium door-window fixing | 12d | 2027-04-14 | 2027-04-25 | 2451, 2461, 2465 |  | Zenith | 8670624 |
| 2468 | 36900.37000.37100.38100.38900.40300.41900.91400.1422100 | Door shutter fixing (Pre Hung) | 8d | 2027-06-01 | 2027-06-09 | 2452, 2466 |  | Zenith | 8670634 |
| 2469 | 36900.37000.37100.38100.38900.40300.41900.91400.1422200 | Electrical wiring work | 10d | 2027-07-13 | 2027-07-23 | 2453, 2468 |  | Zenith | 8670644 |
| 2470 | 36900.37000.37100.38100.38900.40300.41900.91400.1422300 | Painting 1st coat | 12d | 2028-03-02 | 2028-03-13 | 2454, 2469 |  | Zenith | 8670654 |
| 2471 | 36900.37000.37100.38100.38900.40300.41900.91500 | **22nd floor roof** | 460.75d | 2026-09-22 | 2028-03-25 |  | start no earlier than 2026-09-22 | Zenith | 8649334 |
| 2472 | 36900.37000.37100.38100.38900.40300.41900.91500.1422400 | Block Work | 6d | 2026-09-22 | 2026-09-28 | 2117, 2456 |  | Zenith | 8670664 |
| 2473 | 36900.37000.37100.38100.38900.40300.41900.91500.1422500 | Fire sprinkler pipe fixing | 4d | 2026-09-28 | 2026-10-02 | 2457, 2472 |  | Zenith | 8670674 |
| 2474 | 36900.37000.37100.38100.38900.40300.41900.91500.1422600 | Internal Plumbing Works | 4d | 2026-09-28 | 2026-10-02 | 2458, 2472 |  | Zenith | 8670684 |
| 2475 | 36900.37000.37100.38100.38900.40300.41900.91500.1422700 | Waterproofing | 4d | 2026-10-02 | 2026-10-06 | 2459, 2474 |  | Zenith | 8670694 |
| 2476 | 36900.37000.37100.38100.38900.40300.41900.91500.1422800 | Internal Plaster | 13d | 2027-01-09 | 2027-01-21 | 2460, 2474, 2475FF+5d |  | Zenith | 8670704 |
| 2477 | 36900.37000.37100.38100.38900.40300.41900.91500.1422900 | IPS flooring work | 7d | 2027-01-22 | 2027-01-28 | 2461, 2476 |  | Zenith | 8670714 |
| 2478 | 36900.37000.37100.38100.38900.40300.41900.91500.1423000 | Toilet dado work | 6d | 2027-01-22 | 2027-01-27 | 2462, 2475, 2476 |  | Zenith | 8670724 |
| 2479 | 36900.37000.37100.38100.38900.40300.41900.91500.1423100 | Toilet flooring work | 7d | 2027-01-28 | 2027-02-03 | 2463, 2478 |  | Zenith | 8670734 |
| 2480 | 36900.37000.37100.38100.38900.40300.41900.91500.1423200 | False Cieling panel fixing | 7d | 2027-02-04 | 2027-02-10 | 2464, 2479 |  | Zenith | 8670744 |
| 2481 | 36900.37000.37100.38100.38900.40300.41900.91500.1423300 | Living dinning flooring | 14d | 2027-03-16 | 2027-03-29 | 2465, 2479 |  | Zenith | 8670754 |
| 2482 | 36900.37000.37100.38100.38900.40300.41900.91500.1423400 | Putty primer coat | 8d | 2027-06-01 | 2027-06-09 | 2466, 2481 |  | Zenith | 8670764 |
| 2483 | 36900.37000.37100.38100.38900.40300.41900.91500.1423500 | Aluminium door-window fixing | 12d | 2027-04-26 | 2027-05-07 | 2467, 2477, 2481 |  | Zenith | 8670774 |
| 2484 | 36900.37000.37100.38100.38900.40300.41900.91500.1423600 | Door shutter fixing (Pre Hung) | 8d | 2027-06-09 | 2027-06-17 | 2468, 2482 |  | Zenith | 8670784 |
| 2485 | 36900.37000.37100.38100.38900.40300.41900.91500.1423700 | Electrical wiring work | 10d | 2027-07-23 | 2027-08-02 | 2469, 2484 |  | Zenith | 8670794 |
| 2486 | 36900.37000.37100.38100.38900.40300.41900.91500.1423800 | Painting 1st coat | 12d | 2028-03-14 | 2028-03-25 | 2470, 2485 |  | Zenith | 8670804 |

| ID | WBS | Task | Duration | Start | Finish | Predecessors | Constraint | Calendar | Unique_Task_ID |
| --- | --- | --- | --- | --- | --- | --- | --- | --- | --- |
| 2487 | 36900.37000.37100.38100.38900.40300.41900.91600 | **23rd floor roof** | 461.75d | 2026-10-03 | 2028-04-06 |  | start no earlier than 2026-10-03 | Zenith | 8649344 |
| 2488 | 36900.37000.37100.38100.38900.40300.41900.91600.1423900 | Block Work | 6d | 2026-10-03 | 2026-10-09 | 2118, 2472 |  | Zenith | 8670814 |
| 2489 | 36900.37000.37100.38100.38900.40300.41900.91600.1424000 | Fire sprinkler pipe fixing | 5d | 2026-10-09 | 2026-10-14 | 2473, 2488 |  | Zenith | 8670824 |
| 2490 | 36900.37000.37100.38100.38900.40300.41900.91600.1424100 | Internal Plumbing Works | 5d | 2026-10-09 | 2026-10-14 | 2474, 2488 |  | Zenith | 8670834 |
| 2491 | 36900.37000.37100.38100.38900.40300.41900.91600.1424200 | Waterproofing | 5d | 2026-10-14 | 2026-10-19 | 2475, 2490 |  | Zenith | 8670844 |
| 2492 | 36900.37000.37100.38100.38900.40300.41900.91600.1424300 | Internal Plaster | 13d | 2027-01-22 | 2027-02-03 | 2476, 2490, 2491FF+5d |  | Zenith | 8670854 |
| 2493 | 36900.37000.37100.38100.38900.40300.41900.91600.1424400 | IPS flooring work | 7d | 2027-02-04 | 2027-02-10 | 2477, 2492 |  | Zenith | 8670864 |
| 2494 | 36900.37000.37100.38100.38900.40300.41900.91600.1424500 | Toilet dado work | 6d | 2027-02-04 | 2027-02-09 | 2478, 2491, 2492 |  | Zenith | 8670874 |
| 2495 | 36900.37000.37100.38100.38900.40300.41900.91600.1424600 | Toilet flooring work | 7d | 2027-02-10 | 2027-02-16 | 2479, 2494 |  | Zenith | 8670884 |
| 2496 | 36900.37000.37100.38100.38900.40300.41900.91600.1424700 | False Cieling panel fixing | 7d | 2027-02-17 | 2027-02-23 | 2480, 2495 |  | Zenith | 8670894 |
| 2497 | 36900.37000.37100.38100.38900.40300.41900.91600.1424800 | Living dinning flooring | 14d | 2027-03-30 | 2027-04-12 | 2481, 2495 |  | Zenith | 8670904 |
| 2498 | 36900.37000.37100.38100.38900.40300.41900.91600.1424900 | Putty primer coat | 8d | 2027-06-09 | 2027-06-17 | 2482, 2497 |  | Zenith | 8670914 |
| 2499 | 36900.37000.37100.38100.38900.40300.41900.91600.1425000 | Aluminium door-window fixing | 12d | 2027-05-08 | 2027-05-19 | 2483, 2493, 2497 |  | Zenith | 8670924 |
| 2500 | 36900.37000.37100.38100.38900.40300.41900.91600.1425100 | Door shutter fixing (Pre Hung) | 8d | 2027-06-17 | 2027-06-25 | 2484, 2498 |  | Zenith | 8670934 |
| 2501 | 36900.37000.37100.38100.38900.40300.41900.91600.1425200 | Electrical wiring work | 10d | 2027-08-02 | 2027-08-12 | 2485, 2500 |  | Zenith | 8670944 |
| 2502 | 36900.37000.37100.38100.38900.40300.41900.91600.1425300 | Painting 1st coat | 12d | 2028-03-26 | 2028-04-06 | 2486, 2501 |  | Zenith | 8670954 |
| 2503 | 36900.37000.37100.38100.38900.40300.41900.91700 | **24th floor roof** | 462.75d | 2026-10-14 | 2028-04-18 |  | start no earlier than 2026-10-14 | Zenith | 8649354 |
| 2504 | 36900.37000.37100.38100.38900.40300.41900.91700.1425400 | Block Work | 6d | 2026-10-14 | 2026-10-20 | 2119, 2488 |  | Zenith | 8670964 |
| 2505 | 36900.37000.37100.38100.38900.40300.41900.91700.1425500 | Fire sprinkler pipe fixing | 5d | 2026-10-20 | 2026-10-25 | 2489, 2504 |  | Zenith | 8670974 |
| 2506 | 36900.37000.37100.38100.38900.40300.41900.91700.1425600 | Internal Plumbing Works | 5d | 2026-10-20 | 2026-10-25 | 2490, 2504 |  | Zenith | 8670984 |
| 2507 | 36900.37000.37100.38100.38900.40300.41900.91700.1425700 | Waterproofing | 5d | 2026-10-25 | 2026-10-30 | 2491, 2506 |  | Zenith | 8670994 |
| 2508 | 36900.37000.37100.38100.38900.40300.41900.91700.1425800 | Internal Plaster | 13d | 2027-02-04 | 2027-02-16 | 2492, 2506, 2507FF+5d |  | Zenith | 8671004 |
| 2509 | 36900.37000.37100.38100.38900.40300.41900.91700.1425900 | IPS flooring work | 7d | 2027-02-17 | 2027-02-23 | 2493, 2508 |  | Zenith | 8671014 |
| 2510 | 36900.37000.37100.38100.38900.40300.41900.91700.1426000 | Toilet dado work | 6d | 2027-02-17 | 2027-02-22 | 2494, 2507, 2508 |  | Zenith | 8671024 |
| 2511 | 36900.37000.37100.38100.38900.40300.41900.91700.1426100 | Toilet flooring work | 7d | 2027-02-23 | 2027-03-01 | 2495, 2510 |  | Zenith | 8671034 |
| 2512 | 36900.37000.37100.38100.38900.40300.41900.91700.1426200 | False Cieling panel fixing | 7d | 2027-03-02 | 2027-03-08 | 2496, 2511 |  | Zenith | 8671044 |
| 2513 | 36900.37000.37100.38100.38900.40300.41900.91700.1426300 | Living dinning flooring | 14d | 2027-04-13 | 2027-04-26 | 2497, 2511 |  | Zenith | 8671054 |
| 2514 | 36900.37000.37100.38100.38900.40300.41900.91700.1426400 | Putty primer coat | 8d | 2027-06-17 | 2027-06-25 | 2498, 2513 |  | Zenith | 8671064 |
| 2515 | 36900.37000.37100.38100.38900.40300.41900.91700.1426500 | Aluminium door-window fixing | 12d | 2027-05-20 | 2027-05-31 | 2499, 2509, 2513 |  | Zenith | 8671074 |
| 2516 | 36900.37000.37100.38100.38900.40300.41900.91700.1426600 | Door shutter fixing (Pre Hung) | 8d | 2027-06-25 | 2027-07-03 | 2500, 2514 |  | Zenith | 8671084 |
| 2517 | 36900.37000.37100.38100.38900.40300.41900.91700.1426700 | Electrical wiring work | 10d | 2027-08-12 | 2027-08-22 | 2501, 2516 |  | Zenith | 8671094 |
| 2518 | 36900.37000.37100.38100.38900.40300.41900.91700.1426800 | Painting 1st coat | 12d | 2028-04-07 | 2028-04-18 | 2502, 2517 |  | Zenith | 8671104 |

| ID | WBS | Task | Duration | Start | Finish | Predecessors | Constraint | Calendar | Unique_Task_ID |
| --- | --- | --- | --- | --- | --- | --- | --- | --- | --- |
| 2519 | 36900.37000.37100.38100.38900.40300.41900.91800 | **25th floor roof** | 463.75d | 2026-10-25 | 2028-04-30 |  | start no earlier than 2026-10-25 | Zenith | 8649364 |
| 2520 | 36900.37000.37100.38100.38900.40300.41900.91800.1426900 | Block Work | 6d | 2026-10-25 | 2026-10-31 | 2120, 2504 |  | Zenith | 8671114 |
| 2521 | 36900.37000.37100.38100.38900.40300.41900.91800.1427000 | Fire sprinkler pipe fixing | 5d | 2026-10-31 | 2026-12-20 | 2505, 2520 |  | Zenith | 8671124 |
| 2522 | 36900.37000.37100.38100.38900.40300.41900.91800.1427100 | Internal Plumbing Works | 5d | 2026-10-31 | 2026-12-20 | 2506, 2520 |  | Zenith | 8671134 |
| 2523 | 36900.37000.37100.38100.38900.40300.41900.91800.1427200 | Waterproofing | 5d | 2026-12-20 | 2026-12-25 | 2507, 2522 |  | Zenith | 8671144 |
| 2524 | 36900.37000.37100.38100.38900.40300.41900.91800.1427300 | Internal Plaster | 13d | 2027-02-17 | 2027-03-01 | 2508, 2522, 2523FF+5d |  | Zenith | 8671154 |
| 2525 | 36900.37000.37100.38100.38900.40300.41900.91800.1427400 | IPS flooring work | 7d | 2027-03-02 | 2027-03-08 | 2509, 2524 |  | Zenith | 8671164 |
| 2526 | 36900.37000.37100.38100.38900.40300.41900.91800.1427500 | Toilet dado work | 6d | 2027-03-02 | 2027-03-07 | 2510, 2523, 2524 |  | Zenith | 8671174 |
| 2527 | 36900.37000.37100.38100.38900.40300.41900.91800.1427600 | Toilet flooring work | 7d | 2027-03-08 | 2027-03-14 | 2511, 2526 |  | Zenith | 8671184 |
| 2528 | 36900.37000.37100.38100.38900.40300.41900.91800.1427700 | False Cieling panel fixing | 7d | 2027-03-15 | 2027-03-21 | 2512, 2527 |  | Zenith | 8671194 |
| 2529 | 36900.37000.37100.38100.38900.40300.41900.91800.1427800 | Living dinning flooring | 14d | 2027-04-27 | 2027-05-10 | 2513, 2527 |  | Zenith | 8671204 |
| 2530 | 36900.37000.37100.38100.38900.40300.41900.91800.1427900 | Putty primer coat | 8d | 2027-06-25 | 2027-07-03 | 2514, 2529 |  | Zenith | 8671214 |
| 2531 | 36900.37000.37100.38100.38900.40300.41900.91800.1428000 | Aluminium door-window fixing | 12d | 2027-06-01 | 2027-06-12 | 2515, 2525, 2529 |  | Zenith | 8671224 |
| 2532 | 36900.37000.37100.38100.38900.40300.41900.91800.1428100 | Door shutter fixing (Pre Hung) | 8d | 2027-07-03 | 2027-07-11 | 2516, 2530 |  | Zenith | 8671234 |
| 2533 | 36900.37000.37100.38100.38900.40300.41900.91800.1428200 | Electrical wiring work | 10d | 2027-08-22 | 2027-09-01 | 2517, 2532 |  | Zenith | 8671244 |
| 2534 | 36900.37000.37100.38100.38900.40300.41900.91800.1428300 | Painting 1st coat | 12d | 2028-04-19 | 2028-04-30 | 2518, 2533 |  | Zenith | 8671254 |
| 2535 | 36900.37000.37100.38100.38900.40300.41900.91900 | **26th floor roof** | 464.75d | 2026-12-20 | 2028-05-12 |  | start no earlier than 2026-12-20 | Zenith | 8649374 |
| 2536 | 36900.37000.37100.38100.38900.40300.41900.91900.1428400 | Block Work | 7d | 2026-12-20 | 2026-12-27 | 2121, 2520 |  | Zenith | 8671264 |
| 2537 | 36900.37000.37100.38100.38900.40300.41900.91900.1428500 | Fire sprinkler pipe fixing | 7d | 2026-12-27 | 2027-01-03 | 2521, 2536 |  | Zenith | 8671274 |
| 2538 | 36900.37000.37100.38100.38900.40300.41900.91900.1428600 | Internal Plumbing Works | 7d | 2026-12-27 | 2027-01-03 | 2522, 2536 |  | Zenith | 8671284 |
| 2539 | 36900.37000.37100.38100.38900.40300.41900.91900.1428700 | Waterproofing | 7d | 2027-01-03 | 2027-01-10 | 2523, 2538 |  | Zenith | 8671294 |
| 2540 | 36900.37000.37100.38100.38900.40300.41900.91900.1428800 | Internal Plaster | 13d | 2027-03-02 | 2027-03-14 | 2524, 2538, 2539FF+5d |  | Zenith | 8671304 |
| 2541 | 36900.37000.37100.38100.38900.40300.41900.91900.1428900 | IPS flooring work | 7d | 2027-03-15 | 2027-03-21 | 2525, 2540 |  | Zenith | 8671314 |
| 2542 | 36900.37000.37100.38100.38900.40300.41900.91900.1429000 | Toilet dado work | 6d | 2027-03-15 | 2027-03-20 | 2526, 2539, 2540 |  | Zenith | 8671324 |
| 2543 | 36900.37000.37100.38100.38900.40300.41900.91900.1429100 | Toilet flooring work | 7d | 2027-03-21 | 2027-03-27 | 2527, 2542 |  | Zenith | 8671334 |
| 2544 | 36900.37000.37100.38100.38900.40300.41900.91900.1429200 | False Cieling panel fixing | 7d | 2027-03-28 | 2027-04-03 | 2528, 2543 |  | Zenith | 8671344 |
| 2545 | 36900.37000.37100.38100.38900.40300.41900.91900.1429300 | Living dinning flooring | 14d | 2027-05-11 | 2027-05-24 | 2529, 2543 |  | Zenith | 8671354 |
| 2546 | 36900.37000.37100.38100.38900.40300.41900.91900.1429400 | Putty primer coat | 8d | 2027-07-03 | 2027-07-11 | 2530, 2545 |  | Zenith | 8671364 |
| 2547 | 36900.37000.37100.38100.38900.40300.41900.91900.1429500 | Aluminium door-window fixing | 12d | 2027-06-13 | 2027-06-24 | 2531, 2541, 2545 |  | Zenith | 8671374 |
| 2548 | 36900.37000.37100.38100.38900.40300.41900.91900.1429600 | Door shutter fixing (Pre Hung) | 8d | 2027-07-11 | 2027-07-19 | 2532, 2546 |  | Zenith | 8671384 |
| 2549 | 36900.37000.37100.38100.38900.40300.41900.91900.1429700 | Electrical wiring work | 10d | 2027-09-01 | 2027-09-11 | 2533, 2548 |  | Zenith | 8671394 |
| 2550 | 36900.37000.37100.38100.38900.40300.41900.91900.1429800 | Painting 1st coat | 12d | 2028-05-01 | 2028-05-12 | 2534, 2549 |  | Zenith | 8671404 |

| ID | WBS | Task | Duration | Start | Finish | Predecessors | Constraint | Calendar | Unique_Task_ID |
| --- | --- | --- | --- | --- | --- | --- | --- | --- | --- |
| 2551 | 36900.37000.37100.38100.38900.40300.41900.92000 | **27th floor roof** | 461.75d | 2027-01-04 | 2028-05-24 |  | start no earlier than 2027-01-04 | Zenith | 8649384 |
| 2552 | 36900.37000.37100.38100.38900.40300.41900.92000.1429900 | Block Work | 7d | 2027-01-04 | 2027-01-11 | 2122, 2536 |  | Zenith | 8671414 |
| 2553 | 36900.37000.37100.38100.38900.40300.41900.92000.1430000 | Fire sprinkler pipe fixing | 7d | 2027-01-11 | 2027-01-18 | 2537, 2552 |  | Zenith | 8671424 |
| 2554 | 36900.37000.37100.38100.38900.40300.41900.92000.1430100 | Internal Plumbing Works | 7d | 2027-01-11 | 2027-01-18 | 2538, 2552 |  | Zenith | 8671434 |
| 2555 | 36900.37000.37100.38100.38900.40300.41900.92000.1430200 | Waterproofing | 7d | 2027-01-18 | 2027-01-25 | 2539, 2554 |  | Zenith | 8671444 |
| 2556 | 36900.37000.37100.38100.38900.40300.41900.92000.1430300 | Internal Plaster | 13d | 2027-03-15 | 2027-03-27 | 2540, 2554, 2555FF+5d |  | Zenith | 8671454 |
| 2557 | 36900.37000.37100.38100.38900.40300.41900.92000.1430400 | IPS flooring work | 7d | 2027-03-28 | 2027-04-03 | 2541, 2556 |  | Zenith | 8671464 |
| 2558 | 36900.37000.37100.38100.38900.40300.41900.92000.1430500 | Toilet dado work | 6d | 2027-03-28 | 2027-04-02 | 2542, 2555, 2556 |  | Zenith | 8671474 |
| 2559 | 36900.37000.37100.38100.38900.40300.41900.92000.1430600 | Toilet flooring work | 7d | 2027-04-03 | 2027-04-09 | 2543, 2558 |  | Zenith | 8671484 |
| 2560 | 36900.37000.37100.38100.38900.40300.41900.92000.1430700 | False Cieling panel fixing | 7d | 2027-04-10 | 2027-04-16 | 2544, 2559 |  | Zenith | 8671494 |
| 2561 | 36900.37000.37100.38100.38900.40300.41900.92000.1430800 | Living dinning flooring | 13d | 2027-05-25 | 2027-06-06 | 2545, 2559 |  | Zenith | 8671504 |
| 2562 | 36900.37000.37100.38100.38900.40300.41900.92000.1430900 | Putty primer coat | 8d | 2027-07-11 | 2027-07-19 | 2546, 2561 |  | Zenith | 8671514 |
| 2563 | 36900.37000.37100.38100.38900.40300.41900.92000.1431000 | Aluminium door-window fixing | 12d | 2027-06-25 | 2027-07-06 | 2547, 2557, 2561 |  | Zenith | 8671524 |
| 2564 | 36900.37000.37100.38100.38900.40300.41900.92000.1431100 | Door shutter fixing (Pre Hung) | 8d | 2027-07-19 | 2027-07-27 | 2548, 2562 |  | Zenith | 8671534 |
| 2565 | 36900.37000.37100.38100.38900.40300.41900.92000.1431200 | Electrical wiring work | 10d | 2027-09-11 | 2027-09-21 | 2549, 2564 |  | Zenith | 8671544 |
| 2566 | 36900.37000.37100.38100.38900.40300.41900.92000.1431300 | Painting 1st coat | 12d | 2028-05-13 | 2028-05-24 | 2550, 2565 |  | Zenith | 8671554 |
| 2567 | 36900.37000.37100.38100.38900.40300.41900.92100 | **28th floor roof** | 462.75d | 2027-01-15 | 2028-06-05 |  | start no earlier than 2027-01-15 | Zenith | 8649394 |
| 2568 | 36900.37000.37100.38100.38900.40300.41900.92100.1431400 | Block Work | 7d | 2027-01-15 | 2027-01-22 | 2123, 2552 |  | Zenith | 8671564 |
| 2569 | 36900.37000.37100.38100.38900.40300.41900.92100.1431500 | Fire sprinkler pipe fixing | 7d | 2027-01-22 | 2027-01-29 | 2553, 2568 |  | Zenith | 8671574 |
| 2570 | 36900.37000.37100.38100.38900.40300.41900.92100.1431600 | Internal Plumbing Works | 7d | 2027-01-22 | 2027-01-29 | 2554, 2568 |  | Zenith | 8671584 |
| 2571 | 36900.37000.37100.38100.38900.40300.41900.92100.1431700 | Waterproofing | 7d | 2027-01-29 | 2027-02-05 | 2555, 2570 |  | Zenith | 8671594 |
| 2572 | 36900.37000.37100.38100.38900.40300.41900.92100.1431800 | Internal Plaster | 13d | 2027-03-28 | 2027-04-09 | 2556, 2570, 2571FF+5d |  | Zenith | 8671604 |
| 2573 | 36900.37000.37100.38100.38900.40300.41900.92100.1431900 | IPS flooring work | 7d | 2027-04-10 | 2027-04-16 | 2557, 2572 |  | Zenith | 8671614 |
| 2574 | 36900.37000.37100.38100.38900.40300.41900.92100.1432000 | Toilet dado work | 6d | 2027-04-10 | 2027-04-15 | 2558, 2571, 2572 |  | Zenith | 8671624 |
| 2575 | 36900.37000.37100.38100.38900.40300.41900.92100.1432100 | Toilet flooring work | 7d | 2027-04-16 | 2027-04-22 | 2559, 2574 |  | Zenith | 8671634 |
| 2576 | 36900.37000.37100.38100.38900.40300.41900.92100.1432200 | False Cieling panel fixing | 7d | 2027-04-23 | 2027-04-29 | 2560, 2575 |  | Zenith | 8671644 |
| 2577 | 36900.37000.37100.38100.38900.40300.41900.92100.1432300 | Living dinning flooring | 13d | 2027-06-07 | 2027-06-19 | 2561, 2575 |  | Zenith | 8671654 |
| 2578 | 36900.37000.37100.38100.38900.40300.41900.92100.1432400 | Putty primer coat | 8d | 2027-07-19 | 2027-07-27 | 2562, 2577 |  | Zenith | 8671664 |
| 2579 | 36900.37000.37100.38100.38900.40300.41900.92100.1432500 | Aluminium door-window fixing | 12d | 2027-07-07 | 2027-07-18 | 2563, 2573, 2577 |  | Zenith | 8671674 |
| 2580 | 36900.37000.37100.38100.38900.40300.41900.92100.1432600 | Door shutter fixing (Pre Hung) | 8d | 2027-07-27 | 2027-08-04 | 2564, 2578 |  | Zenith | 8671684 |
| 2581 | 36900.37000.37100.38100.38900.40300.41900.92100.1432700 | Electrical wiring work | 10d | 2027-09-21 | 2027-10-01 | 2565, 2580 |  | Zenith | 8671694 |
| 2582 | 36900.37000.37100.38100.38900.40300.41900.92100.1432800 | Painting 1st coat | 12d | 2028-05-25 | 2028-06-05 | 2566, 2581 |  | Zenith | 8671704 |

| ID | WBS | Task | Duration | Start | Finish | Predecessors | Constraint | Calendar | Unique_Task_ID |
| --- | --- | --- | --- | --- | --- | --- | --- | --- | --- |
| 2583 | 36900.37000.37100.38100.38900.40300.41900.92200 | **29th floor roof** | 463.75d | 2027-01-26 | 2028-06-17 |  | start no earlier than 2027-01-26 | Zenith | 8649404 |
| 2584 | 36900.37000.37100.38100.38900.40300.41900.92200.1432900 | Block Work | 7d | 2027-01-26 | 2027-02-02 | 2124, 2568 |  | Zenith | 8671714 |
| 2585 | 36900.37000.37100.38100.38900.40300.41900.92200.1433000 | Fire sprinkler pipe fixing | 7d | 2027-02-02 | 2027-02-09 | 2569, 2584 |  | Zenith | 8671724 |
| 2586 | 36900.37000.37100.38100.38900.40300.41900.92200.1433100 | Internal Plumbing Works | 7d | 2027-02-02 | 2027-02-09 | 2570, 2584 |  | Zenith | 8671734 |
| 2587 | 36900.37000.37100.38100.38900.40300.41900.92200.1433200 | Waterproofing | 7d | 2027-02-09 | 2027-02-16 | 2571, 2586 |  | Zenith | 8671744 |
| 2588 | 36900.37000.37100.38100.38900.40300.41900.92200.1433300 | Internal Plaster | 13d | 2027-04-10 | 2027-04-22 | 2572, 2586, 2587FF+5d |  | Zenith | 8671754 |
| 2589 | 36900.37000.37100.38100.38900.40300.41900.92200.1433400 | IPS flooring work | 7d | 2027-04-23 | 2027-04-29 | 2573, 2588 |  | Zenith | 8671764 |
| 2590 | 36900.37000.37100.38100.38900.40300.41900.92200.1433500 | Toilet dado work | 6d | 2027-04-23 | 2027-04-28 | 2574, 2587, 2588 |  | Zenith | 8671774 |
| 2591 | 36900.37000.37100.38100.38900.40300.41900.92200.1433600 | Toilet flooring work | 7d | 2027-04-29 | 2027-05-05 | 2575, 2590 |  | Zenith | 8671784 |
| 2592 | 36900.37000.37100.38100.38900.40300.41900.92200.1433700 | False Cieling panel fixing | 7d | 2027-05-06 | 2027-05-12 | 2576, 2591 |  | Zenith | 8671794 |
| 2593 | 36900.37000.37100.38100.38900.40300.41900.92200.1433800 | Living dinning flooring | 13d | 2027-06-20 | 2027-07-02 | 2577, 2591 |  | Zenith | 8671804 |
| 2594 | 36900.37000.37100.38100.38900.40300.41900.92200.1433900 | Putty primer coat | 8d | 2027-07-27 | 2027-08-04 | 2578, 2593 |  | Zenith | 8671814 |
| 2595 | 36900.37000.37100.38100.38900.40300.41900.92200.1434000 | Aluminium door-window fixing | 12d | 2027-07-19 | 2027-07-30 | 2579, 2589, 2593 |  | Zenith | 8671824 |
| 2596 | 36900.37000.37100.38100.38900.40300.41900.92200.1434100 | Door shutter fixing (Pre Hung) | 8d | 2027-08-04 | 2027-08-12 | 2580, 2594 |  | Zenith | 8671834 |
| 2597 | 36900.37000.37100.38100.38900.40300.41900.92200.1434200 | Electrical wiring work | 10d | 2027-10-01 | 2027-10-11 | 2581, 2596 |  | Zenith | 8671844 |
| 2598 | 36900.37000.37100.38100.38900.40300.41900.92200.1434300 | Painting 1st coat | 12d | 2028-06-06 | 2028-06-17 | 2582, 2597 |  | Zenith | 8671854 |
| 2599 | 36900.37000.37100.38100.38900.40300.41900.92300 | **30th floor roof** | 467.75d | 2027-02-06 | 2028-07-02 |  | start no earlier than 2027-02-06 | Zenith | 8649414 |
| 2600 | 36900.37000.37100.38100.38900.40300.41900.92300.1434400 | Block Work | 10d | 2027-02-06 | 2027-02-16 | 2125, 2584 |  | Zenith | 8671864 |
| 2601 | 36900.37000.37100.38100.38900.40300.41900.92300.1434500 | Fire sprinkler pipe fixing | 6d | 2027-02-16 | 2027-02-22 | 2585, 2600 |  | Zenith | 8671874 |
| 2602 | 36900.37000.37100.38100.38900.40300.41900.92300.1434600 | Internal Plumbing Works | 10d | 2027-02-16 | 2027-02-26 | 2586, 2600 |  | Zenith | 8671884 |
| 2603 | 36900.37000.37100.38100.38900.40300.41900.92300.1434700 | Waterproofing | 14d | 2027-02-26 | 2027-03-12 | 2587, 2602 |  | Zenith | 8671894 |
| 2604 | 36900.37000.37100.38100.38900.40300.41900.92300.1434800 | Internal Plaster | 13d | 2027-04-23 | 2027-05-05 | 2588, 2602, 2603FF+5d |  | Zenith | 8671904 |
| 2605 | 36900.37000.37100.38100.38900.40300.41900.92300.1434900 | IPS flooring work | 10d | 2027-05-06 | 2027-05-15 | 2589, 2604 |  | Zenith | 8671914 |
| 2606 | 36900.37000.37100.38100.38900.40300.41900.92300.1435000 | Toilet dado work | 10d | 2027-05-06 | 2027-05-15 | 2590, 2603, 2604 |  | Zenith | 8671924 |
| 2607 | 36900.37000.37100.38100.38900.40300.41900.92300.1435100 | Toilet flooring work | 7d | 2027-05-16 | 2027-05-22 | 2591, 2606 |  | Zenith | 8671934 |
| 2608 | 36900.37000.37100.38100.38900.40300.41900.92300.1435200 | False Cieling panel fixing | 10d | 2027-05-23 | 2027-06-01 | 2592, 2607 |  | Zenith | 8671944 |
| 2609 | 36900.37000.37100.38100.38900.40300.41900.92300.1435300 | Living dinning flooring | 13d | 2027-07-03 | 2027-07-15 | 2593, 2607 |  | Zenith | 8671954 |
| 2610 | 36900.37000.37100.38100.38900.40300.41900.92300.1435400 | Putty primer coat | 12d | 2027-08-04 | 2027-08-16 | 2594, 2609 |  | Zenith | 8671964 |
| 2611 | 36900.37000.37100.38100.38900.40300.41900.92300.1435500 | Aluminium door-window fixing | 15d | 2027-07-31 | 2027-08-14 | 2595, 2605, 2609 |  | Zenith | 8671974 |
| 2612 | 36900.37000.37100.38100.38900.40300.41900.92300.1435600 | Door shutter fixing (Pre Hung) | 8d | 2027-08-16 | 2027-08-24 | 2596, 2610 |  | Zenith | 8671984 |
| 2613 | 36900.37000.37100.38100.38900.40300.41900.92300.1435700 | Electrical wiring work | 12d | 2027-10-11 | 2027-10-23 | 2597, 2612 |  | Zenith | 8671994 |
| 2614 | 36900.37000.37100.38100.38900.40300.41900.92300.1435800 | Painting 1st coat | 15d | 2028-06-18 | 2028-07-02 | 2598, 2613 |  | Zenith | 8672004 |

| ID | WBS | Task | Duration | Start | Finish | Predecessors | Constraint | Calendar | Unique_Task_ID |
| --- | --- | --- | --- | --- | --- | --- | --- | --- | --- |
| 2615 | 36900.37000.37100.38100.38900.40300.41900.92400 | **31st floor roof** | 471.75d | 2027-02-17 | 2028-07-17 |  | start no earlier than 2027-02-17 | Zenith | 8649424 |
| 2616 | 36900.37000.37100.38100.38900.40300.41900.92400.1435900 | Block Work | 10d | 2027-02-17 | 2027-02-27 | 2126, 2600 |  | Zenith | 8672014 |
| 2617 | 36900.37000.37100.38100.38900.40300.41900.92400.1436000 | Fire sprinkler pipe fixing | 6d | 2027-02-27 | 2027-03-05 | 2601, 2616 |  | Zenith | 8672024 |
| 2618 | 36900.37000.37100.38100.38900.40300.41900.92400.1436100 | Internal Plumbing Works | 10d | 2027-02-27 | 2027-03-09 | 2602, 2616 |  | Zenith | 8672034 |
| 2619 | 36900.37000.37100.38100.38900.40300.41900.92400.1436200 | Waterproofing | 14d | 2027-03-12 | 2027-03-26 | 2603, 2618 |  | Zenith | 8672044 |
| 2620 | 36900.37000.37100.38100.38900.40300.41900.92400.1436300 | Internal Plaster | 13d | 2027-05-06 | 2027-05-18 | 2604, 2618, 2619FF+5d |  | Zenith | 8672054 |
| 2621 | 36900.37000.37100.38100.38900.40300.41900.92400.1436400 | IPS flooring work | 10d | 2027-05-19 | 2027-05-28 | 2605, 2620 |  | Zenith | 8672064 |
| 2622 | 36900.37000.37100.38100.38900.40300.41900.92400.1436500 | Toilet dado work | 10d | 2027-05-19 | 2027-05-28 | 2606, 2619, 2620 |  | Zenith | 8672074 |
| 2623 | 36900.37000.37100.38100.38900.40300.41900.92400.1436600 | Toilet flooring work | 7d | 2027-05-29 | 2027-06-04 | 2607, 2622 |  | Zenith | 8672084 |
| 2624 | 36900.37000.37100.38100.38900.40300.41900.92400.1436700 | False Cieling panel fixing | 10d | 2027-06-05 | 2027-06-14 | 2608, 2623 |  | Zenith | 8672094 |
| 2625 | 36900.37000.37100.38100.38900.40300.41900.92400.1436800 | Living dinning flooring | 13d | 2027-07-16 | 2027-07-28 | 2609, 2623 |  | Zenith | 8672104 |
| 2626 | 36900.37000.37100.38100.38900.40300.41900.92400.1436900 | Putty primer coat | 12d | 2027-08-16 | 2027-08-28 | 2610, 2625 |  | Zenith | 8672114 |
| 2627 | 36900.37000.37100.38100.38900.40300.41900.92400.1437000 | Aluminium door-window fixing | 15d | 2027-08-15 | 2027-08-29 | 2611, 2621, 2625 |  | Zenith | 8672124 |
| 2628 | 36900.37000.37100.38100.38900.40300.41900.92400.1437100 | Door shutter fixing (Pre Hung) | 8d | 2027-08-28 | 2027-09-05 | 2612, 2626 |  | Zenith | 8672134 |
| 2629 | 36900.37000.37100.38100.38900.40300.41900.92400.1437200 | Electrical wiring work | 12d | 2027-10-23 | 2027-12-19 | 2613, 2628 |  | Zenith | 8672144 |
| 2630 | 36900.37000.37100.38100.38900.40300.41900.92400.1437300 | Painting 1st coat | 15d | 2028-07-03 | 2028-07-17 | 2614, 2629 |  | Zenith | 8672154 |
| 2631 | 36900.37000.37100.38100.38900.40300.41900.92500 | **32nd floor roof** | 471.75d | 2027-03-04 | 2028-08-01 |  | start no earlier than 2027-03-04 | Zenith | 8649434 |
| 2632 | 36900.37000.37100.38100.38900.40300.41900.92500.1437400 | Block Work | 10d | 2027-03-04 | 2027-03-14 | 2127, 2616 |  | Zenith | 8672164 |
| 2633 | 36900.37000.37100.38100.38900.40300.41900.92500.1437500 | Fire sprinkler pipe fixing | 6d | 2027-03-14 | 2027-03-20 | 2617, 2632 |  | Zenith | 8672174 |
| 2634 | 36900.37000.37100.38100.38900.40300.41900.92500.1437600 | Internal Plumbing Works | 10d | 2027-03-14 | 2027-03-24 | 2618, 2632 |  | Zenith | 8672184 |
| 2635 | 36900.37000.37100.38100.38900.40300.41900.92500.1437700 | Waterproofing | 14d | 2027-03-26 | 2027-04-09 | 2619, 2634 |  | Zenith | 8672194 |
| 2636 | 36900.37000.37100.38100.38900.40300.41900.92500.1437800 | Internal Plaster | 14d | 2027-05-19 | 2027-06-01 | 2620, 2634, 2635FF+5d |  | Zenith | 8672204 |
| 2637 | 36900.37000.37100.38100.38900.40300.41900.92500.1437900 | IPS flooring work | 10d | 2027-06-02 | 2027-06-11 | 2621, 2636 |  | Zenith | 8672214 |
| 2638 | 36900.37000.37100.38100.38900.40300.41900.92500.1438000 | Toilet dado work | 10d | 2027-06-02 | 2027-06-11 | 2622, 2635, 2636 |  | Zenith | 8672224 |
| 2639 | 36900.37000.37100.38100.38900.40300.41900.92500.1438100 | Toilet flooring work | 7d | 2027-06-12 | 2027-06-18 | 2623, 2638 |  | Zenith | 8672234 |
| 2640 | 36900.37000.37100.38100.38900.40300.41900.92500.1438200 | False Cieling panel fixing | 10d | 2027-06-19 | 2027-06-28 | 2624, 2639 |  | Zenith | 8672244 |
| 2641 | 36900.37000.37100.38100.38900.40300.41900.92500.1438300 | Living dinning flooring | 13d | 2027-07-29 | 2027-08-10 | 2625, 2639 |  | Zenith | 8672254 |
| 2642 | 36900.37000.37100.38100.38900.40300.41900.92500.1438400 | Putty primer coat | 12d | 2027-08-28 | 2027-09-09 | 2626, 2641 |  | Zenith | 8672264 |
| 2643 | 36900.37000.37100.38100.38900.40300.41900.92500.1438500 | Aluminium door-window fixing | 15d | 2027-08-30 | 2027-09-13 | 2627, 2637, 2641 |  | Zenith | 8672274 |
| 2644 | 36900.37000.37100.38100.38900.40300.41900.92500.1438600 | Door shutter fixing (Pre Hung) | 8d | 2027-09-09 | 2027-09-17 | 2628, 2642 |  | Zenith | 8672284 |
| 2645 | 36900.37000.37100.38100.38900.40300.41900.92500.1438700 | Electrical wiring work | 12d | 2027-12-19 | 2027-12-31 | 2629, 2644 |  | Zenith | 8672294 |
| 2646 | 36900.37000.37100.38100.38900.40300.41900.92500.1438800 | Painting 1st coat | 15d | 2028-07-18 | 2028-08-01 | 2630, 2645 |  | Zenith | 8672304 |

| ID | WBS | Task | Duration | Start | Finish | Predecessors | Constraint | Calendar | Unique_Task_ID |
| --- | --- | --- | --- | --- | --- | --- | --- | --- | --- |
| 2647 | 36900.37000.37100.38100.38900.40300.41900.92600 | **33rd floor roof** | 476.75d | 2027-03-14 | 2028-08-16 |  | start no earlier than 2027-03-14 | Zenith | 8649444 |
| 2648 | 36900.37000.37100.38100.38900.40300.41900.92600.1438900 | Block Work | 10d | 2027-03-14 | 2027-03-24 | 2128, 2632 |  | Zenith | 8672314 |
| 2649 | 36900.37000.37100.38100.38900.40300.41900.92600.1439000 | Fire sprinkler pipe fixing | 6d | 2027-03-24 | 2027-03-30 | 2633, 2648 |  | Zenith | 8672324 |
| 2650 | 36900.37000.37100.38100.38900.40300.41900.92600.1439100 | Internal Plumbing Works | 10d | 2027-03-24 | 2027-04-03 | 2634, 2648 |  | Zenith | 8672334 |
| 2651 | 36900.37000.37100.38100.38900.40300.41900.92600.1439200 | Waterproofing | 14d | 2027-04-09 | 2027-04-23 | 2635, 2650 |  | Zenith | 8672344 |
| 2652 | 36900.37000.37100.38100.38900.40300.41900.92600.1439300 | Internal Plaster | 14d | 2027-06-02 | 2027-06-15 | 2636, 2650, 2651FF+5d |  | Zenith | 8672354 |
| 2653 | 36900.37000.37100.38100.38900.40300.41900.92600.1439400 | IPS flooring work | 10d | 2027-06-16 | 2027-06-25 | 2637, 2652 |  | Zenith | 8672364 |
| 2654 | 36900.37000.37100.38100.38900.40300.41900.92600.1439500 | Toilet dado work | 10d | 2027-06-16 | 2027-06-25 | 2638, 2651, 2652 |  | Zenith | 8672374 |
| 2655 | 36900.37000.37100.38100.38900.40300.41900.92600.1439600 | Toilet flooring work | 7d | 2027-06-26 | 2027-07-02 | 2639, 2654 |  | Zenith | 8672384 |
| 2656 | 36900.37000.37100.38100.38900.40300.41900.92600.1439700 | False Cieling panel fixing | 10d | 2027-07-03 | 2027-07-12 | 2640, 2655 |  | Zenith | 8672394 |
| 2657 | 36900.37000.37100.38100.38900.40300.41900.92600.1439800 | Living dinning flooring | 13d | 2027-08-11 | 2027-08-23 | 2641, 2655 |  | Zenith | 8672404 |
| 2658 | 36900.37000.37100.38100.38900.40300.41900.92600.1439900 | Putty primer coat | 12d | 2027-09-09 | 2027-09-21 | 2642, 2657 |  | Zenith | 8672414 |
| 2659 | 36900.37000.37100.38100.38900.40300.41900.92600.1440000 | Aluminium door-window fixing | 15d | 2027-09-14 | 2027-09-28 | 2643, 2653, 2657 |  | Zenith | 8672424 |
| 2660 | 36900.37000.37100.38100.38900.40300.41900.92600.1440100 | Door shutter fixing (Pre Hung) | 8d | 2027-09-21 | 2027-09-29 | 2644, 2658 |  | Zenith | 8672434 |
| 2661 | 36900.37000.37100.38100.38900.40300.41900.92600.1440200 | Electrical wiring work | 12d | 2027-12-31 | 2028-01-12 | 2645, 2660 |  | Zenith | 8672444 |
| 2662 | 36900.37000.37100.38100.38900.40300.41900.92600.1440300 | Painting 1st coat | 15d | 2028-08-02 | 2028-08-16 | 2646, 2661 |  | Zenith | 8672454 |
| 2663 | 36900.37000.37100.38100.38900.40300.41900.92700 | **34th floor roof** | 481.75d | 2027-03-24 | 2028-08-31 |  | start no earlier than 2027-03-24 | Zenith | 8649454 |
| 2664 | 36900.37000.37100.38100.38900.40300.41900.92700.1440400 | Block Work | 10d | 2027-03-24 | 2027-04-03 | 2129, 2648 |  | Zenith | 8672464 |
| 2665 | 36900.37000.37100.38100.38900.40300.41900.92700.1440500 | Fire sprinkler pipe fixing | 6d | 2027-04-03 | 2027-04-09 | 2649, 2664 |  | Zenith | 8672474 |
| 2666 | 36900.37000.37100.38100.38900.40300.41900.92700.1440600 | Internal Plumbing Works | 10d | 2027-04-03 | 2027-04-13 | 2650, 2664 |  | Zenith | 8672484 |
| 2667 | 36900.37000.37100.38100.38900.40300.41900.92700.1440700 | Waterproofing | 14d | 2027-04-23 | 2027-05-07 | 2651, 2666 |  | Zenith | 8672494 |
| 2668 | 36900.37000.37100.38100.38900.40300.41900.92700.1440800 | Internal Plaster | 14d | 2027-06-16 | 2027-06-29 | 2652, 2666, 2667FF+5d |  | Zenith | 8672504 |
| 2669 | 36900.37000.37100.38100.38900.40300.41900.92700.1440900 | IPS flooring work | 10d | 2027-06-30 | 2027-07-09 | 2653, 2668 |  | Zenith | 8672514 |
| 2670 | 36900.37000.37100.38100.38900.40300.41900.92700.1441000 | Toilet dado work | 10d | 2027-06-30 | 2027-07-09 | 2654, 2667, 2668 |  | Zenith | 8672524 |
| 2671 | 36900.37000.37100.38100.38900.40300.41900.92700.1441100 | Toilet flooring work | 7d | 2027-07-10 | 2027-07-16 | 2655, 2670 |  | Zenith | 8672534 |
| 2672 | 36900.37000.37100.38100.38900.40300.41900.92700.1441200 | False Cieling panel fixing | 10d | 2027-07-17 | 2027-07-26 | 2656, 2671 |  | Zenith | 8672544 |
| 2673 | 36900.37000.37100.38100.38900.40300.41900.92700.1441300 | Living dinning flooring | 13d | 2027-08-24 | 2027-09-05 | 2657, 2671 |  | Zenith | 8672554 |
| 2674 | 36900.37000.37100.38100.38900.40300.41900.92700.1441400 | Putty primer coat | 12d | 2027-09-21 | 2027-10-03 | 2658, 2673 |  | Zenith | 8672564 |
| 2675 | 36900.37000.37100.38100.38900.40300.41900.92700.1441500 | Aluminium door-window fixing | 15d | 2027-09-29 | 2027-10-13 | 2659, 2669, 2673 |  | Zenith | 8672574 |
| 2676 | 36900.37000.37100.38100.38900.40300.41900.92700.1441600 | Door shutter fixing (Pre Hung) | 8d | 2027-10-03 | 2027-10-11 | 2660, 2674 |  | Zenith | 8672584 |
| 2677 | 36900.37000.37100.38100.38900.40300.41900.92700.1441700 | Electrical wiring work | 12d | 2028-01-12 | 2028-01-24 | 2661, 2676 |  | Zenith | 8672594 |
| 2678 | 36900.37000.37100.38100.38900.40300.41900.92700.1441800 | Painting 1st coat | 15d | 2028-08-17 | 2028-08-31 | 2662, 2677 |  | Zenith | 8672604 |

| ID | WBS | Task | Duration | Start | Finish | Predecessors | Constraint | Calendar | Unique_Task_ID |
| --- | --- | --- | --- | --- | --- | --- | --- | --- | --- |
| 2679 | 36900.37000.37100.38100.38900.40300.41900.60100 | **35th Floor** | 539.75d | 2027-03-26 | 2028-10-30 |  | start no earlier than 2027-03-26 | Zenith | 8648284 |
| 2680 | 36900.37000.37100.38100.38900.40300.41900.60100.1441900 | Block Work | 10d | 2027-03-26 | 2027-04-05 | 2130FS-8d, 2664FS-8d |  | Zenith | 8672614 |
| 2681 | 36900.37000.37100.38100.38900.40300.41900.60100.1442000 | Fire sprinkler pipe fixing | 6d | 2027-04-09 | 2027-04-15 | 2665, 2680 |  | Zenith | 8672624 |
| 2682 | 36900.37000.37100.38100.38900.40300.41900.60100.1442100 | Internal Plumbing Works | 10d | 2027-04-13 | 2027-04-23 | 2666, 2680 |  | Zenith | 8672634 |
| 2683 | 36900.37000.37100.38100.38900.40300.41900.60100.1442200 | Waterproofing | 14d | 2027-05-07 | 2027-05-21 | 2667, 2682 |  | Zenith | 8672644 |
| 2684 | 36900.37000.37100.38100.38900.40300.41900.60100.1442300 | Internal Plaster | 14d | 2027-07-30 | 2027-08-12 | 2668FS+30d, 2682FS+30d, 2683FF+30d |  | Zenith | 8672654 |
| 2685 | 36900.37000.37100.38100.38900.40300.41900.60100.1442400 | IPS flooring work | 10d | 2027-08-13 | 2027-08-22 | 2669, 2683, 2684 |  | Zenith | 8672664 |
| 2686 | 36900.37000.37100.38100.38900.40300.41900.60100.1442500 | Toilet dado work | 10d | 2027-08-23 | 2027-09-01 | 2670, 2685 |  | Zenith | 8672674 |
| 2687 | 36900.37000.37100.38100.38900.40300.41900.60100.1442600 | Toilet flooring work | 7d | 2027-09-02 | 2027-09-08 | 2671, 2686 |  | Zenith | 8672684 |
| 2688 | 36900.37000.37100.38100.38900.40300.41900.60100.1442700 | False ceiling | 10d | 2027-09-09 | 2027-09-18 | 2672, 2687 |  | Zenith | 8672694 |
| 2689 | 36900.37000.37100.38100.38900.40300.41900.60100.1442800 | Living dinning flooring | 13d | 2027-09-09 | 2027-09-21 | 2673, 2687 |  | Zenith | 8672704 |
| 2690 | 36900.37000.37100.38100.38900.40300.41900.60100.1442900 | Putty Primer coat | 12d | 2027-10-03 | 2027-10-15 | 2674, 2681, 2688, 2689 |  | Zenith | 8672714 |
| 2691 | 36900.37000.37100.38100.38900.40300.41900.60100.1443000 | Aluminium door-window fixing | 15d | 2027-10-14 | 2027-10-28 | 2675, 2685, 2689 |  | Zenith | 8672724 |
| 2692 | 36900.37000.37100.38100.38900.40300.41900.60100.1443100 | Door shutter fixing (Pre Hung) | 8d | 2027-10-15 | 2027-10-23 | 2676, 2690 |  | Zenith | 8672734 |
| 2693 | 36900.37000.37100.38100.38900.40300.41900.60100.1443200 | Electrical wiring work | 12d | 2028-01-24 | 2028-02-05 | 2677, 2692 |  | Zenith | 8672744 |
| 2694 | 36900.37000.37100.38100.38900.40300.41900.60100.1443300 | Painting 1st coat | 15d | 2028-09-01 | 2028-09-15 | 2678, 2693 |  | Zenith | 8672754 |
| 2695 | 36900.37000.37100.38100.38900.40300.41900.60100.1443400 | Misc. Works | 45d | 2028-09-16 | 2028-10-30 | 2694 |  | Zenith | 8672764 |
| 2696 | 36900.37000.37100.38100.38900.40300.224700 | **Terrace Finishing** | 116d | 2027-05-13 | 2027-09-05 |  | start no earlier than 2027-05-13 | Zenith | 8656734 |
| 2697 | 36900.37000.37100.38100.38900.40300.224700.952600 | Terrace waterproofing | 40d | 2027-05-13 | 2027-06-21 | 2094FS+2d |  | Zenith | 8690014 |
| 2698 | 36900.37000.37100.38100.38900.40300.224700.952700 | Terrace finishing | 75d | 2027-06-23 | 2027-09-05 | 2697FS+1d |  | Zenith | 8690004 |
| 2699 | 36900.37000.37100.38100.38900.40300.48300 | **Balcony Railing** | 280d | 2027-04-17 | 2028-03-06 |  | start no earlier than 2027-04-17 | Zenith | 8648164 |
| 2700 | 36900.37000.37100.38100.38900.40300.48300.952800 | 1st Floor | 8d | 2027-04-17 | 2027-04-24 | 2161FF+325d |  | Zenith | 8689994 |
| 2701 | 36900.37000.37100.38100.38900.40300.48300.952900 | 2nd Floor | 8d | 2027-04-25 | 2027-05-02 | 2700, 2177 |  | Zenith | 8689984 |
| 2702 | 36900.37000.37100.38100.38900.40300.48300.953000 | 3rd Floor | 8d | 2027-05-03 | 2027-05-10 | 2701, 2193 |  | Zenith | 8689974 |
| 2703 | 36900.37000.37100.38100.38900.40300.48300.953100 | 4th Floor | 8d | 2027-05-11 | 2027-05-18 | 2702, 2209 |  | Zenith | 8689964 |
| 2704 | 36900.37000.37100.38100.38900.40300.48300.953200 | 5th Floor | 8d | 2027-05-19 | 2027-05-26 | 2703, 2225 |  | Zenith | 8689954 |
| 2705 | 36900.37000.37100.38100.38900.40300.48300.953300 | 6th Floor | 8d | 2027-05-27 | 2027-06-03 | 2704, 2241 |  | Zenith | 8689944 |
| 2706 | 36900.37000.37100.38100.38900.40300.48300.953400 | 7th Floor | 8d | 2027-06-04 | 2027-06-11 | 2705, 2257 |  | Zenith | 8689934 |
| 2707 | 36900.37000.37100.38100.38900.40300.48300.953500 | 8th Floor | 8d | 2027-06-12 | 2027-06-19 | 2706, 2273 |  | Zenith | 8689924 |
| 2708 | 36900.37000.37100.38100.38900.40300.48300.953600 | 9th Floor | 8d | 2027-06-20 | 2027-06-27 | 2707, 2289 |  | Zenith | 8689914 |
| 2709 | 36900.37000.37100.38100.38900.40300.48300.953700 | 10th Floor | 8d | 2027-06-28 | 2027-07-05 | 2708, 2305 |  | Zenith | 8689904 |
| 2710 | 36900.37000.37100.38100.38900.40300.48300.953800 | 11th Floor | 8d | 2027-07-06 | 2027-07-13 | 2709, 2321 |  | Zenith | 8689894 |
| 2711 | 36900.37000.37100.38100.38900.40300.48300.953900 | 12th Floor | 8d | 2027-07-14 | 2027-07-21 | 2710, 2337 |  | Zenith | 8689884 |
| 2712 | 36900.37000.37100.38100.38900.40300.48300.954000 | 13th Floor | 8d | 2027-07-22 | 2027-07-29 | 2711, 2353 |  | Zenith | 8689874 |
| 2713 | 36900.37000.37100.38100.38900.40300.48300.954100 | 14th Floor | 8d | 2027-07-30 | 2027-08-06 | 2712, 2369 |  | Zenith | 8689864 |
| 2714 | 36900.37000.37100.38100.38900.40300.48300.954200 | 15th Floor | 8d | 2027-08-07 | 2027-08-14 | 2713, 2385 |  | Zenith | 8689854 |
| 2715 | 36900.37000.37100.38100.38900.40300.48300.954300 | 16th Floor | 8d | 2027-08-15 | 2027-08-22 | 2714, 2401 |  | Zenith | 8689844 |
| 2716 | 36900.37000.37100.38100.38900.40300.48300.954400 | 17th Floor | 8d | 2027-08-23 | 2027-08-30 | 2715, 2417 |  | Zenith | 8689834 |
| 2717 | 36900.37000.37100.38100.38900.40300.48300.954500 | 18th Floor | 8d | 2027-08-31 | 2027-09-07 | 2716, 2433 |  | Zenith | 8689824 |
| 2718 | 36900.37000.37100.38100.38900.40300.48300.954600 | 19th Floor | 8d | 2027-09-08 | 2027-09-15 | 2717, 2449 |  | Zenith | 8689814 |
| 2719 | 36900.37000.37100.38100.38900.40300.48300.954700 | 20th Floor | 8d | 2027-09-16 | 2027-09-23 | 2718, 2465 |  | Zenith | 8689804 |
| 2720 | 36900.37000.37100.38100.38900.40300.48300.954800 | 21st Floor | 8d | 2027-09-24 | 2027-10-01 | 2719, 2481 |  | Zenith | 8689794 |
| 2721 | 36900.37000.37100.38100.38900.40300.48300.954900 | 22nd Floor | 8d | 2027-10-02 | 2027-10-09 | 2720, 2497 |  | Zenith | 8689784 |
| 2722 | 36900.37000.37100.38100.38900.40300.48300.955000 | 23rd Floor | 8d | 2027-10-10 | 2027-10-17 | 2721, 2513 |  | Zenith | 8689774 |
| 2723 | 36900.37000.37100.38100.38900.40300.48300.955100 | 24th Floor | 8d | 2027-10-18 | 2027-10-25 | 2722, 2529 |  | Zenith | 8689764 |
| 2724 | 36900.37000.37100.38100.38900.40300.48300.955200 | 25th Floor | 8d | 2027-10-26 | 2027-12-17 | 2723, 2545 |  | Zenith | 8689754 |
| 2725 | 36900.37000.37100.38100.38900.40300.48300.955300 | 26th Floor | 8d | 2027-12-18 | 2027-12-25 | 2724, 2561 |  | Zenith | 8689744 |
| 2726 | 36900.37000.37100.38100.38900.40300.48300.955400 | 27th Floor | 8d | 2027-12-26 | 2028-01-02 | 2725, 2577 |  | Zenith | 8689734 |
| 2727 | 36900.37000.37100.38100.38900.40300.48300.955500 | 28th Floor | 8d | 2028-01-03 | 2028-01-10 | 2726, 2593 |  | Zenith | 8689724 |
| 2728 | 36900.37000.37100.38100.38900.40300.48300.955600 | 29th Floor | 8d | 2028-01-11 | 2028-01-18 | 2727, 2609 |  | Zenith | 8689714 |
| 2729 | 36900.37000.37100.38100.38900.40300.48300.955700 | 30th Floor | 8d | 2028-01-19 | 2028-01-26 | 2728, 2625 |  | Zenith | 8689704 |
| 2730 | 36900.37000.37100.38100.38900.40300.48300.955800 | 31st Floor | 8d | 2028-01-27 | 2028-02-03 | 2729, 2641 |  | Zenith | 8689694 |
| 2731 | 36900.37000.37100.38100.38900.40300.48300.955900 | 32nd Floor | 8d | 2028-02-04 | 2028-02-11 | 2730, 2657 |  | Zenith | 8689684 |
| 2732 | 36900.37000.37100.38100.38900.40300.48300.956000 | 33rd Floor | 8d | 2028-02-12 | 2028-02-19 | 2731, 2673 |  | Zenith | 8689674 |
| 2733 | 36900.37000.37100.38100.38900.40300.48300.956100 | 34th Floor | 8d | 2028-02-20 | 2028-02-27 | 2732, 2689 |  | Zenith | 8689664 |
| 2734 | 36900.37000.37100.38100.38900.40300.48300.956200 | 35th Floor | 8d | 2028-02-28 | 2028-03-06 | 2733 |  | Zenith | 8689654 |

| ID | WBS | Task | Duration | Start | Finish | Predecessors | Constraint | Calendar | Unique_Task_ID |
| --- | --- | --- | --- | --- | --- | --- | --- | --- | --- |
| 2735 | 36900.37000.37100.38100.38900.40300.119800 | **Common Area Finishing** | 310d | 2027-03-22 | 2028-03-10 |  | start no earlier than 2027-03-22 | Zenith | 8651684 |
| 2736 | 36900.37000.37100.38100.38900.40300.119800.956300 | Masonary Work | 60d | 2027-03-22 | 2027-05-20 | 2369FS+90d |  | Zenith | 8689644 |
| 2737 | 36900.37000.37100.38100.38900.40300.119800.956400 | Fire sprinkler pipe fixing | 40d | 2027-06-20 | 2027-07-29 | 2736FS+30d |  | Zenith | 8689634 |
| 2738 | 36900.37000.37100.38100.38900.40300.119800.956500 | Corridoor, staircase, shaft Plaster & whitewash | 120d | 2027-05-21 | 2027-09-17 | 2736 |  | Zenith | 8689624 |
| 2739 | 36900.37000.37100.38100.38900.40300.119800.956600 | Staircase railing fixing | 100d | 2027-05-21 | 2027-08-28 | 2736 |  | Zenith | 8689614 |
| 2740 | 36900.37000.37100.38100.38900.40300.119800.956700 | Fire staircase flooring | 120d | 2027-05-31 | 2027-09-27 | 2739FF+30d |  | Zenith | 8689604 |
| 2741 | 36900.37000.37100.38100.38900.40300.119800.956800 | Main staircase flooring | 120d | 2027-05-31 | 2027-09-27 | 2739FF+30d |  | Zenith | 8689594 |
| 2742 | 36900.37000.37100.38100.38900.40300.119800.956900 | Fire door work | 45d | 2027-09-28 | 2027-12-26 | 2740 |  | Zenith | 8689584 |
| 2743 | 36900.37000.37100.38100.38900.40300.119800.957000 | Lobby flooring & Corridor | 120d | 2027-06-25 | 2027-10-22 | 2741FF+25d |  | Zenith | 8689574 |
| 2744 | 36900.37000.37100.38100.38900.40300.119800.957100 | Ceiling & wall putty | 120d | 2027-07-30 | 2028-01-10 | 2742FF+15d, 2743FF+30d, 2690FF+30d |  | Zenith | 8689564 |
| 2745 | 36900.37000.37100.38100.38900.40300.119800.957200 | Electrical wiring work | 120d | 2027-08-14 | 2028-01-25 | 2744FF+15d |  | Zenith | 8689554 |
| 2746 | 36900.37000.37100.38100.38900.40300.119800.957300 | Ceiling & wall painting | 120d | 2027-09-03 | 2028-02-14 | 2737FS+20d, 2744SS+20d, 2745FF+20d |  | Zenith | 8689544 |
| 2747 | 36900.37000.37100.38100.38900.40300.119800.957400 | Light fixture supply & installation | 45d | 2028-01-26 | 2028-03-10 | 2744, 2746FF+25d |  | Zenith | 8689534 |
| 2748 | 36900.37000.37100.38100.121400 | **MEP work** | 278.75d | 2027-04-13 | 2028-03-01 |  | start no earlier than 2027-04-13 | Zenith | 8651844 |
| 2749 | 36900.37000.37100.38100.121400.125500 | **Electrical work** | 240d | 2027-05-11 | 2028-02-19 |  | start no earlier than 2027-05-11 | Zenith | 8652134 |
| 2750 | 36900.37000.37100.38100.121400.125500.817800 | Cable Tray | 90d | 2027-05-11 | 2027-08-08 | 2094 |  | Zenith | 8724884 |
| 2751 | 36900.37000.37100.38100.121400.125500.817900 | Cable, main & sub main | 60d | 2027-06-25 | 2027-08-23 | 2750SS+45d |  | Zenith | 8724874 |
| 2752 | 36900.37000.37100.38100.121400.125500.818000 | LT panel & DB | 90d | 2027-08-09 | 2027-12-21 | 2750 |  | Zenith | 8724864 |
| 2753 | 36900.37000.37100.38100.121400.125500.818100 | Rising main | 90d | 2027-08-24 | 2028-01-05 | 2750FS+15d |  | Zenith | 8724854 |
| 2754 | 36900.37000.37100.38100.121400.125500.818200 | Earthing Works | 60d | 2027-08-29 | 2027-10-27 | 2750FS+20d |  | Zenith | 8724844 |
| 2755 | 36900.37000.37100.38100.121400.125500.818300 | Energy meter | 60d | 2027-12-22 | 2028-02-19 | 2751, 2754FS+10d |  | Zenith | 8724834 |
| 2756 | 36900.37000.37100.38100.121400.125500.818400 | HVAC & Exhast fan | 120d | 2027-08-04 | 2028-01-15 | 2750FS-5d |  | Zenith | 8724824 |
| 2757 | 36900.37000.37100.38100.121400.125500.818500 | FTTH | 60d | 2027-10-23 | 2028-02-04 | 2752FS-15d |  | Zenith | 8724814 |
| 2758 | 36900.37000.37100.38100.121400.125500.818600 | Security System - FA & PA | 60d | 2027-12-22 | 2028-02-19 | 2752, 2753FF+10d, 2756FF+2d, 2757FF |  | Zenith | 8724804 |

| ID | WBS | Task | Duration | Start | Finish | Predecessors | Constraint | Calendar | Unique_Task_ID |
| --- | --- | --- | --- | --- | --- | --- | --- | --- | --- |
| 2759 | 36900.37000.37100.38100.121400.164200 | **Plumbing work** | 188d | 2027-06-22 | 2028-02-09 |  | start no earlier than 2027-06-22 | Zenith | 8652634 |
| 2760 | 36900.37000.37100.38100.121400.164200.818700 | Terrace looping | 45d | 2027-06-22 | 2027-08-05 | 2697 |  | Zenith | 8724794 |
| 2761 | 36900.37000.37100.38100.121400.164200.818800 | Shaft Plumbing | 70d | 2027-08-19 | 2027-10-27 | 2760, 2738FS-30d |  | Zenith | 8724784 |
| 2762 | 36900.37000.37100.38100.121400.164200.818900 | CP sanitary fixture supply | 45d | 2027-10-28 | 2028-01-25 | 2761 |  | Zenith | 8724774 |
| 2763 | 36900.37000.37100.38100.121400.164200.819000 | Cold & flushing water supply | 45d | 2027-10-28 | 2028-01-25 | 2761 |  | Zenith | 8724764 |
| 2764 | 36900.37000.37100.38100.121400.164200.819100 | Misc work | 30d | 2028-01-11 | 2028-02-09 | 2762FS-15d, 2763FS-15d |  | Zenith | 8724754 |
| 2765 | 36900.37000.37100.38100.121400.211700 | **Fire fighting work** | 151d | 2027-08-19 | 2028-03-01 |  | start no earlier than 2027-08-19 | Zenith | 8655954 |
| 2766 | 36900.37000.37100.38100.121400.211700.819200 | Fire hydrant work | 75d | 2027-09-18 | 2028-01-15 | 2738SS+120d |  | Zenith | 8724744 |
| 2767 | 36900.37000.37100.38100.121400.211700.819300 | Pipe connection & sprinkler installation | 45d | 2028-01-17 | 2028-03-01 | 2766FS+1d, 2769FF+15d |  | Zenith | 8724734 |
| 2768 | 36900.37000.37100.38100.121400.211700.819400 | Shaft Downtake works | 60d | 2027-08-19 | 2027-10-17 | 2697FS+0.25d, 2738FS-30d |  | Zenith | 8724724 |
| 2769 | 36900.37000.37100.38100.121400.211700.819500 | Connection to pump room | 30d | 2027-10-18 | 2027-12-31 | 2768 |  | Zenith | 8724714 |
| 2770 | 36900.37000.37100.38100.121400.219500 | **Lift work** | 232.75d | 2027-04-13 | 2028-01-15 |  | start no earlier than 2027-04-13 | Zenith | 8656644 |
| 2771 | 36900.37000.37100.38100.121400.219500.819600 | Lift Shaft/Pit Handover | 40d | 2027-04-13 | 2027-05-23 | 2132FS+5d |  | Zenith | 8724704 |
| 2772 | 36900.37000.37100.38100.121400.219500.819700 | Lift installation work | 60d | 2027-05-08 | 2027-07-07 | 2771FS-15d |  | Zenith | 8724694 |
| 2773 | 36900.37000.37100.38100.121400.219500.819800 | Lift testing and commissioning | 60d | 2027-10-03 | 2028-01-15 | 2772FS-20d, 2743FS-20d |  | Zenith | 8724684 |
| 2774 | 36900.37000.37100.38100.225900 | **Basement lobby** | 90d | 2027-06-07 | 2027-09-05 |  | start no earlier than 2027-06-07 | Zenith | 8656964 |
| 2775 | 36900.37000.37100.38100.225900.403300 | Basement lobby | 90d | 2027-06-07 | 2027-09-05 | 2771FS+15d, 1911FS+15d, 1912FS+15d |  | Zenith | 8731684 |
| 2776 | 36900.37000.37100.38100.222400 | **External Paint Works** | 90d | 2028-02-16 | 2028-05-15 |  | start no earlier than 2028-02-16 | Zenith | 8656824 |
| 2777 | 36900.37000.37100.38100.222400.403400 | Surface prepration with Primer | 60d | 2028-03-07 | 2028-05-05 | 2132FS+2d, 2734 |  | Zenith | 8731674 |
| 2778 | 36900.37000.37100.38100.222400.403500 | External Painting (Texture & first coat) | 90d | 2028-02-16 | 2028-05-15 | 2777FF+10d, 2691 |  | Zenith | 8731664 |
| 2779 | 36900.37000.37100.38100.302600 | OC Application/Readiness | 1d | 2028-10-30 | 2028-10-30 | 2089FF+299d, 2778FF, 2767FF+30d, 2764FF, 2775FF+15d, 2773FF, 2758FF-60d, 2755FF-60d, 2698FF, 2695FF, 2744FF+0.25d, 2734FF, 2691FF+0.25d |  | Zenith | 8735414 |
| 2780 | 36900.37000.37100.38100.302700 | OC Receipt | 60d | 2028-10-31 | 2029-02-12 | 2779 |  | Zenith | 8735404 |
| 2781 | 36900.37000.37100.38100.126200 | **Post OC activities** | 589d | 2028-03-26 | 2030-02-02 |  | start no earlier than 2028-03-26 | Zenith | 8652104 |
| 2782 | 36900.37000.37100.38100.126200.403600 | CP & Sanitaryware | 150d | 2029-02-13 | 2029-07-12 | 2780 |  | Zenith | 8731654 |
| 2783 | 36900.37000.37100.38100.126200.403700 | Electrical Fixtures And Fittings | 150d | 2029-02-13 | 2029-07-12 | 2780 |  | Zenith | 8731644 |
| 2784 | 36900.37000.37100.38100.126200.403800 | Final coat paint external | 100d | 2029-02-13 | 2029-05-23 | 2780 |  | Zenith | 8731634 |
| 2785 | 36900.37000.37100.38100.126200.403900 | Final Coat Paint Internal | 150d | 2029-02-13 | 2029-07-12 | 2780, 2694 |  | Zenith | 8731624 |
| 2786 | 36900.37000.37100.38100.126200.404000 | Balcony Railing Glass Fixing | 120d | 2029-07-13 | 2029-12-24 | 2785, 2734FS+30d |  | Zenith | 8731614 |
| 2787 | 36900.37000.37100.38100.126200.404100 | MEP | 150d | 2028-03-26 | 2028-08-22 | 2747FS+15d |  | Zenith | 8731604 |
| 2788 | 36900.37000.37100.38100.126200.404200 | Wooden Flooring | 180d | 2029-01-29 | 2029-07-27 | 2785FF+15d |  | Zenith | 8731594 |
| 2789 | 36900.37000.37100.38100.126200.404300 | Split AC Units installation | 100d | 2029-08-12 | 2030-01-03 | 2788FS+15d |  | Zenith | 8731584 |
| 2790 | 36900.37000.37100.38100.126200.404400 | Misc. works (Modular Kitchen & Others) | 180d | 2029-06-23 | 2030-02-02 | 2789FF+30d |  | Zenith | 8731574 |
| 2791 | 36900.37000.37100.38100.302800 | Offer To Possession | 180d | 2029-07-13 | 2030-02-22 | 2780FS+150d, 2782FF+20d, 2783FF+20d, 2784FF+20d, 2789FF+10d, 2787FF+30d, 2786FF+15d, 2790FF+15d |  | Zenith | 8735394 |

| ID | WBS | Task | Duration | Start | Finish | Predecessors | Complete | Constraint | Calendar | Unique_Task_ID |
| --- | --- | --- | --- | --- | --- | --- | --- | --- | --- | --- |
| 2792 | 36900.37000.37100.38500 | **Tower 03** | 1682d | 2024-03-23 | 2029-05-12 |  | 6% | start no earlier than 2024-03-23 | Zenith | 8647614 |
| 2793 | 36900.37000.37100.38500.53200 | **Sub-Structure Works** | 671d | 2024-03-23 | 2026-03-23 |  | 79% | start no earlier than 2024-03-23 | Zenith | 8648384 |
| 2794 | 36900.37000.37100.38500.53200.140800 | **Soil Bed Preparation** | 205d | 2024-03-23 | 2024-10-13 |  | 100% | start no earlier than 2024-03-23 | Zenith | 8652754 |
| 2795 | 36900.37000.37100.38500.53200.140800.229300 | Excavation (2m) | 55d | 2024-05-02 | 2024-06-25 | 1868SS+10d | 100% | start no earlier than 2024-05-02 | Zenith | 8724674 |
| 2796 | 36900.37000.37100.38500.53200.140800.229400 | Soldier Piling shop drawing approval | 54d | 2024-04-15 | 2024-07-09 | 2795 | 100% | start no earlier than 2024-04-15 | Zenith | 8724664 |
| 2797 | 36900.37000.37100.38500.53200.140800.229500 | Mobilization & Soldier Piling with Excavation (4m) | 100d | 2024-03-23 | 2024-06-30 | 2796FS+26d | 100% | start no earlier than 2024-03-23 | Zenith | 8724654 |
| 2798 | 36900.37000.37100.38500.53200.140800.229600 | Balance B3 bulk Excavation | 15d | 2024-06-16 | 2024-06-30 | 2797 | 100% | start no earlier than 2024-06-16 | Zenith | 8724644 |
| 2799 | 36900.37000.37100.38500.53200.140800.229700 | Soil dressing & ATT | 8d | 2024-10-06 | 2024-10-13 | 2798FS+8d | 100% | start no earlier than 2024-10-06 | Zenith | 8724634 |
| 2800 | 36900.37000.37100.38500.53200.116900 | **Structure Works** | 296d | 2024-10-11 | 2025-09-16 |  | 100% | start no earlier than 2024-10-11 | Zenith | 8651804 |
| 2801 | 36900.37000.37100.38500.53200.116900.137800 | **Raft Foundation** | 59d | 2024-10-11 | 2025-01-22 |  | 100% | start no earlier than 2024-10-11 | Zenith | 8652664 |
| 2802 | 36900.37000.37100.38500.53200.116900.137800.267000 | PCC | 10d | 2024-10-11 | 2024-10-26 | 2799 | 100% | start no earlier than 2024-10-11 | Zenith | 8689524 |
| 2803 | 36900.37000.37100.38500.53200.116900.137800.266900 | Column/SW layout marking | 3d | 2024-10-25 | 2024-10-29 | 2802 | 100% | start no earlier than 2024-10-25 | Zenith | 8689514 |
| 2804 | 36900.37000.37100.38500.53200.116900.137800.266800 | Reinforcement | 44d | 2024-10-14 | 2025-01-20 | 2803SS+3d | 100% | start no earlier than 2024-10-14 | Zenith | 8689504 |
| 2805 | 36900.37000.37100.38500.53200.116900.137800.266700 | Formwork (Conventional) | 11d | 2025-01-10 | 2025-01-20 | 2804FF+3d | 100% | start no earlier than 2025-01-10 | Zenith | 8689494 |
| 2806 | 36900.37000.37100.38500.53200.116900.137800.266600 | Concreting | 2d | 2025-01-21 | 2025-01-22 | 2805FF+3d | 100% | start no earlier than 2025-01-21 | Zenith | 8689484 |
| 2807 | 36900.37000.37100.38500.53200.116900.135700 | **Basement 03 Roof Slab (Dummy/Stitch Slab)** | 61d | 2025-02-05 | 2025-04-06 |  | 100% | start no earlier than 2025-02-05 | Zenith | 8652414 |
| 2808 | 36900.37000.37100.38500.53200.116900.135700.266500 | Column/SW Reinforcement | 12d | 2025-02-05 | 2025-03-02 | 2806 | 100% | start no earlier than 2025-02-05 | Zenith | 8689474 |
| 2809 | 36900.37000.37100.38500.53200.116900.135700.266400 | SW Formwork (Conventional) | 7d | 2025-02-16 | 2025-03-09 | 2808SS+10d | 100% | start no earlier than 2025-02-16 | Zenith | 8689464 |
| 2810 | 36900.37000.37100.38500.53200.116900.135700.266300 | Column/SW Concreting | 10d | 2025-02-20 | 2025-03-09 | 2809SS+5d | 100% | start no earlier than 2025-02-20 | Zenith | 8689454 |
| 2811 | 36900.37000.37100.38500.53200.116900.135700.266200 | Slab Formwork (Conventional) | 12d | 2025-03-04 | 2025-03-30 | 2810SS+17d | 100% | start no earlier than 2025-03-04 | Zenith | 8689444 |
| 2812 | 36900.37000.37100.38500.53200.116900.135700.266100 | Slab Reinforcement + Conduting | 15d | 2025-03-18 | 2025-04-05 | 2811 | 100% | start no earlier than 2025-03-18 | Zenith | 8689434 |
| 2813 | 36900.37000.37100.38500.53200.116900.135700.266000 | Concreting | 5d | 2025-03-30 | 2025-04-06 | 2812FS-4d | 100% | start no earlier than 2025-03-30 | Zenith | 8689424 |
| 2814 | 36900.37000.37100.38500.53200.116900.135800 | **Basement 02 Roof Slab** | 56d | 2025-04-05 | 2025-05-30 |  | 100% | start no earlier than 2025-04-05 | Zenith | 8652404 |
| 2815 | 36900.37000.37100.38500.53200.116900.135800.265900 | Column/SW Reinforcement | 10d | 2025-04-05 | 2025-04-29 | 2813 | 100% | start no earlier than 2025-04-05 | Zenith | 8689414 |
| 2816 | 36900.37000.37100.38500.53200.116900.135800.265800 | SW Formwork (Conventional) | 14d | 2025-04-06 | 2025-05-15 | 2815SS-15d | 100% | start no earlier than 2025-04-06 | Zenith | 8689404 |
| 2817 | 36900.37000.37100.38500.53200.116900.135800.265700 | Column/SW Concreting | 19d | 2025-04-08 | 2025-05-15 | 2816SS+3d | 100% | start no earlier than 2025-04-08 | Zenith | 8689394 |
| 2818 | 36900.37000.37100.38500.53200.116900.135800.265600 | Slab Formwork (Conventional) | 16d | 2025-04-17 | 2025-05-29 | 2817SS+12d | 100% | start no earlier than 2025-04-17 | Zenith | 8689384 |
| 2819 | 36900.37000.37100.38500.53200.116900.135800.265500 | Slab Reinforcement + Conduting | 22d | 2025-04-10 | 2025-05-30 | 2818FS-48d | 100% | start no earlier than 2025-04-10 | Zenith | 8689374 |
| 2820 | 36900.37000.37100.38500.53200.116900.135800.265400 | Concreting | 15.6d | 2025-05-03 | 2025-05-30 | 2819FS-20.6d | 100% | start no earlier than 2025-05-03 | Zenith | 8689364 |

| ID | WBS | Task | Duration | Start | Finish | Predecessors | Complete | Constraint | Calendar | Unique_Task_ID |
| --- | --- | --- | --- | --- | --- | --- | --- | --- | --- | --- |
| 2821 | 36900.37000.37100.38500.53200.116900.135900 | **Basement 01 Roof Slab** | 58d | 2025-05-20 | 2025-07-16 |  | 100% | start no earlier than 2025-05-20 | Zenith | 8652394 |
| 2822 | 36900.37000.37100.38500.53200.116900.135900.265300 | Column/SW Reinforcement | 15d | 2025-05-20 | 2025-06-19 | 2820FS-10d | 100% | start no earlier than 2025-05-20 | Zenith | 8689354 |
| 2823 | 36900.37000.37100.38500.53200.116900.135900.265200 | SW Formwork (Conventional) | 12d | 2025-05-22 | 2025-07-06 | 2822SS+2d | 100% | start no earlier than 2025-05-22 | Zenith | 8689344 |
| 2824 | 36900.37000.37100.38500.53200.116900.135900.265100 | Column/SW Concreting | 13d | 2025-05-24 | 2025-07-08 | 2823SS+3d | 100% | start no earlier than 2025-05-24 | Zenith | 8689334 |
| 2825 | 36900.37000.37100.38500.53200.116900.135900.265000 | Slab Formwork (Conventional) | 11d | 2025-06-05 | 2025-07-15 | 2824SS+13d | 100% | start no earlier than 2025-06-05 | Zenith | 8689324 |
| 2826 | 36900.37000.37100.38500.53200.116900.135900.264900 | Slab Reinforcement + Conduting | 15d | 2025-06-18 | 2025-07-15 | 2825FS-27d | 100% | start no earlier than 2025-06-18 | Zenith | 8689314 |
| 2827 | 36900.37000.37100.38500.53200.116900.135900.264800 | Concreting | 3d | 2025-07-05 | 2025-07-16 | 2826FS-11d | 100% | start no earlier than 2025-07-05 | Zenith | 8689304 |
| 2828 | 36900.37000.37100.38500.53200.116900.136000 | **Podium Slab/Ground Roof Floor Slab** | 69d | 2025-07-10 | 2025-09-16 |  | 100% | start no earlier than 2025-07-10 | Zenith | 8652384 |
| 2829 | 36900.37000.37100.38500.53200.116900.136000.264700 | Column/SW Reinforcement | 9d | 2025-07-10 | 2025-08-03 | 2827FS-10d | 100% | start no earlier than 2025-07-10 | Zenith | 8689294 |
| 2830 | 36900.37000.37100.38500.53200.116900.136000.264600 | SW Formwork (Conventional) | 13d | 2025-07-17 | 2025-09-05 | 2829SS+4d | 100% | start no earlier than 2025-07-17 | Zenith | 8689284 |
| 2831 | 36900.37000.37100.38500.53200.116900.136000.264500 | Column/SW Concreting | 11d | 2025-07-20 | 2025-09-05 | 2830SS+4d | 100% | start no earlier than 2025-07-20 | Zenith | 8689274 |
| 2832 | 36900.37000.37100.38500.53200.116900.136000.264400 | Slab Formwork (Conventional) | 11d | 2025-07-25 | 2025-09-15 | 2831SS+8d | 100% | start no earlier than 2025-07-25 | Zenith | 8689264 |
| 2833 | 36900.37000.37100.38500.53200.116900.136000.264300 | Slab Reinforcement + Conduting | 8d | 2025-08-03 | 2025-09-15 | 2832FS-43d | 100% | start no earlier than 2025-08-03 | Zenith | 8689254 |
| 2834 | 36900.37000.37100.38500.53200.116900.136000.264200 | Concreting | 5d | 2025-08-23 | 2025-09-16 | 2833FS-22d | 100% | start no earlier than 2025-08-23 | Zenith | 8689244 |
| 2835 | 36900.37000.37100.38500.53200.211600 | **Substructure Finishes** | 110d | 2025-11-19 | 2026-03-23 |  |  | start no earlier than 2025-11-19 | Zenith | 8654524 |
| 2836 | 36900.37000.37100.38500.53200.211600.819900 | Masonary Work | 35d | 2025-11-19 | 2026-01-07 | 2834FS+30d |  |  | Zenith | 8724624 |
| 2837 | 36900.37000.37100.38500.53200.211600.820000 | Plaster Work | 30d | 2026-01-08 | 2026-02-06 | 2836 |  |  | Zenith | 8724614 |
| 2838 | 36900.37000.37100.38500.53200.211600.820100 | Structural Steel work | 50d | 2025-11-19 | 2026-01-22 | 2834FS+60d |  |  | Zenith | 8724604 |
| 2839 | 36900.37000.37100.38500.53200.211600.820200 | White Wash | 35d | 2026-02-17 | 2026-03-23 | 2837FS+10d |  |  | Zenith | 8724594 |
| 2840 | 36900.37000.37100.38500.39300 | **Superstructure** | 705.25d | 2025-08-23 | 2027-09-27 |  | 1% | start no earlier than 2025-08-23 | Zenith | 8647724 |
| 2841 | 36900.37000.37100.38500.39300.45800 | **RCC structure** | 520d | 2025-08-23 | 2027-03-25 |  | 8% | start no earlier than 2025-08-23 | Zenith | 8647974 |
| 2842 | 36900.37000.37100.38500.39300.45800.153400 | **1st Floor Roof slab** | 104d | 2025-08-23 | 2025-12-19 |  | 86% | start no earlier than 2025-08-23 | Zenith | 8653514 |
| 2843 | 36900.37000.37100.38500.39300.45800.153400.264100 | Reinforcement | 34d | 2025-08-23 | 2025-12-19 | 2834FS-34d | 91% | start no earlier than 2025-08-23 | Zenith | 8689234 |
| 2844 | 36900.37000.37100.38500.39300.45800.153400.264000 | Conduiting | 22d | 2025-09-09 | 2025-11-21 | 2843SS+3d | 86% | start no earlier than 2025-09-09 | Zenith | 8689224 |
| 2845 | 36900.37000.37100.38500.39300.45800.153400.263900 | Formwork | 21d | 2025-09-10 | 2025-11-21 | 2843SS+4d | 85% | start no earlier than 2025-09-10 | Zenith | 8689214 |
| 2846 | 36900.37000.37100.38500.39300.45800.153400.263800 | Concreting | 14d | 2025-09-12 | 2025-11-25 | 2844FS-71d, 2845FS-72d | 78% |  | Zenith | 8689204 |

| ID | WBS | Task | Duration | Start | Finish | Predecessors | Complete | Constraint | Calendar | Unique_Task_ID |
| --- | --- | --- | --- | --- | --- | --- | --- | --- | --- | --- |
| 2847 | 36900.37000.37100.38500.39300.45800.176900 | **2nd Floor Roof slab** | 53d | 2025-10-27 | 2026-01-02 |  | 14% | start no earlier than 2025-10-27 | Zenith | 8653484 |
| 2848 | 36900.37000.37100.38500.39300.45800.176900.263700 | Reinforcement | 28d | 2025-10-27 | 2026-01-02 | 2846FS-30d | 17% |  | Zenith | 8689194 |
| 2849 | 36900.37000.37100.38500.39300.45800.176900.957500 | Conduiting | 28d | 2025-11-19 | 2025-12-31 | 2848SS+3d |  |  | Zenith | 8689184 |
| 2850 | 36900.37000.37100.38500.39300.45800.176900.263600 | Formwork | 35d | 2025-11-09 | 2025-12-30 | 2848SS+4d | 22% | start no earlier than 2025-11-09 | Zenith | 8689174 |
| 2851 | 36900.37000.37100.38500.39300.45800.176900.957600 | Concreting | 1d | 2026-01-02 | 2026-01-02 | 2849FS+1d, 2850 |  |  | Zenith | 8689164 |
| 2852 | 36900.37000.37100.38500.39300.45800.177000 | **3rd Floor Roof slab** | 15d | 2026-01-03 | 2026-01-17 |  |  | start no earlier than 2026-01-03 | Zenith | 8653454 |
| 2853 | 36900.37000.37100.38500.39300.45800.177000.957700 | Reinforcement | 10d | 2026-01-03 | 2026-01-12 | 2851 |  |  | Zenith | 8689154 |
| 2854 | 36900.37000.37100.38500.39300.45800.177000.957800 | Conduiting | 10d | 2026-01-06 | 2026-01-15 | 2853SS+3d |  |  | Zenith | 8689144 |
| 2855 | 36900.37000.37100.38500.39300.45800.177000.957900 | Formwork | 10d | 2026-01-07 | 2026-01-16 | 2853SS+4d |  |  | Zenith | 8689134 |
| 2856 | 36900.37000.37100.38500.39300.45800.177000.958000 | Concreting | 1d | 2026-01-17 | 2026-01-17 | 2854FS+1d, 2855 |  |  | Zenith | 8689124 |
| 2857 | 36900.37000.37100.38500.39300.45800.177100 | **4th floor roof slab** | 9d | 2026-01-18 | 2026-01-26 |  |  | start no earlier than 2026-01-18 | Zenith | 8653334 |
| 2858 | 36900.37000.37100.38500.39300.45800.177100.958100 | Reinforcement | 6d | 2026-01-18 | 2026-01-23 | 2856 |  |  | Zenith | 8689114 |
| 2859 | 36900.37000.37100.38500.39300.45800.177100.958200 | Conduiting | 6d | 2026-01-19 | 2026-01-24 | 2858SS+1d |  |  | Zenith | 8689104 |
| 2860 | 36900.37000.37100.38500.39300.45800.177100.958300 | Formwork | 6d | 2026-01-20 | 2026-01-25 | 2858SS+2d |  |  | Zenith | 8689094 |
| 2861 | 36900.37000.37100.38500.39300.45800.177100.958400 | Concreting | 1d | 2026-01-26 | 2026-01-26 | 2859FS+1d, 2860 |  |  | Zenith | 8689084 |
| 2862 | 36900.37000.37100.38500.39300.45800.177200 | **5th floor roof slab** | 9d | 2026-01-27 | 2026-02-04 |  |  | start no earlier than 2026-01-27 | Zenith | 8653094 |
| 2863 | 36900.37000.37100.38500.39300.45800.177200.958500 | Reinforcement | 6d | 2026-01-27 | 2026-02-01 | 2861 |  |  | Zenith | 8689074 |
| 2864 | 36900.37000.37100.38500.39300.45800.177200.958600 | Conduiting | 6d | 2026-01-28 | 2026-02-02 | 2863SS+1d |  |  | Zenith | 8689064 |
| 2865 | 36900.37000.37100.38500.39300.45800.177200.958700 | Formwork | 6d | 2026-01-29 | 2026-02-03 | 2863SS+2d |  |  | Zenith | 8689054 |
| 2866 | 36900.37000.37100.38500.39300.45800.177200.958800 | Concreting | 1d | 2026-02-04 | 2026-02-04 | 2864FS+1d, 2865 |  |  | Zenith | 8689044 |
| 2867 | 36900.37000.37100.38500.39300.45800.177300 | **6th floor roof slab** | 9d | 2026-02-05 | 2026-02-13 |  |  | start no earlier than 2026-02-05 | Zenith | 8652984 |
| 2868 | 36900.37000.37100.38500.39300.45800.177300.958900 | Reinforcement | 6d | 2026-02-05 | 2026-02-10 | 2866 |  |  | Zenith | 8689034 |
| 2869 | 36900.37000.37100.38500.39300.45800.177300.959000 | Conduiting | 6d | 2026-02-06 | 2026-02-11 | 2868SS+1d |  |  | Zenith | 8689024 |
| 2870 | 36900.37000.37100.38500.39300.45800.177300.959100 | Formwork | 6d | 2026-02-07 | 2026-02-12 | 2868SS+2d |  |  | Zenith | 8689014 |
| 2871 | 36900.37000.37100.38500.39300.45800.177300.959200 | Concreting | 1d | 2026-02-13 | 2026-02-13 | 2869FS+1d, 2870 |  |  | Zenith | 8689004 |

| ID | WBS | Task | Duration | Start | Finish | Predecessors | Constraint | Calendar | Unique_Task_ID |
| --- | --- | --- | --- | --- | --- | --- | --- | --- | --- |
| 2872 | 36900.37000.37100.38500.39300.45800.177400 | **7th floor roof slab** | 9d | 2026-02-14 | 2026-02-22 |  | start no earlier than 2026-02-14 | Zenith | 8652904 |
| 2873 | 36900.37000.37100.38500.39300.45800.177400.959300 | Reinforcement | 6d | 2026-02-14 | 2026-02-19 | 2871 |  | Zenith | 8688994 |
| 2874 | 36900.37000.37100.38500.39300.45800.177400.959400 | Conduiting | 6d | 2026-02-15 | 2026-02-20 | 2873SS+1d |  | Zenith | 8688984 |
| 2875 | 36900.37000.37100.38500.39300.45800.177400.959500 | Formwork | 6d | 2026-02-16 | 2026-02-21 | 2873SS+2d |  | Zenith | 8688974 |
| 2876 | 36900.37000.37100.38500.39300.45800.177400.959600 | Concreting | 1d | 2026-02-22 | 2026-02-22 | 2874FS+1d, 2875 |  | Zenith | 8688964 |
| 2877 | 36900.37000.37100.38500.39300.45800.177500 | **8th floor roof slab** | 9d | 2026-02-23 | 2026-03-03 |  | start no earlier than 2026-02-23 | Zenith | 8652914 |
| 2878 | 36900.37000.37100.38500.39300.45800.177500.959700 | Reinforcement | 6d | 2026-02-23 | 2026-02-28 | 2876 |  | Zenith | 8688954 |
| 2879 | 36900.37000.37100.38500.39300.45800.177500.959800 | Conduiting | 6d | 2026-02-24 | 2026-03-01 | 2878SS+1d |  | Zenith | 8688944 |
| 2880 | 36900.37000.37100.38500.39300.45800.177500.959900 | Formwork | 6d | 2026-02-25 | 2026-03-02 | 2878SS+2d |  | Zenith | 8688934 |
| 2881 | 36900.37000.37100.38500.39300.45800.177500.960000 | Concreting | 1d | 2026-03-03 | 2026-03-03 | 2879FS+1d, 2880 |  | Zenith | 8688924 |
| 2882 | 36900.37000.37100.38500.39300.45800.177600 | **9th floor roof slab** | 9d | 2026-03-04 | 2026-03-12 |  | start no earlier than 2026-03-04 | Zenith | 8652974 |
| 2883 | 36900.37000.37100.38500.39300.45800.177600.960100 | Reinforcement | 6d | 2026-03-04 | 2026-03-09 | 2881 |  | Zenith | 8688914 |
| 2884 | 36900.37000.37100.38500.39300.45800.177600.960200 | Conduiting | 6d | 2026-03-05 | 2026-03-10 | 2883SS+1d |  | Zenith | 8688904 |
| 2885 | 36900.37000.37100.38500.39300.45800.177600.960300 | Formwork | 6d | 2026-03-06 | 2026-03-11 | 2883SS+2d |  | Zenith | 8688894 |
| 2886 | 36900.37000.37100.38500.39300.45800.177600.960400 | Concreting | 1d | 2026-03-12 | 2026-03-12 | 2884FS+1d, 2885 |  | Zenith | 8688884 |
| 2887 | 36900.37000.37100.38500.39300.45800.177700 | **10th floor roof slab** | 11d | 2026-03-13 | 2026-03-23 |  | start no earlier than 2026-03-13 | Zenith | 8653004 |
| 2888 | 36900.37000.37100.38500.39300.45800.177700.960500 | Reinforcement | 8d | 2026-03-13 | 2026-03-20 | 2886 |  | Zenith | 8688874 |
| 2889 | 36900.37000.37100.38500.39300.45800.177700.960600 | Conduiting | 8d | 2026-03-14 | 2026-03-21 | 2888SS+1d |  | Zenith | 8688864 |
| 2890 | 36900.37000.37100.38500.39300.45800.177700.960700 | Formwork | 8d | 2026-03-15 | 2026-03-22 | 2888SS+2d |  | Zenith | 8688854 |
| 2891 | 36900.37000.37100.38500.39300.45800.177700.960800 | Concreting | 1d | 2026-03-23 | 2026-03-23 | 2889FS+1d, 2890 |  | Zenith | 8688844 |
| 2892 | 36900.37000.37100.38500.39300.45800.177800 | **11th floor roof slab** | 11d | 2026-03-24 | 2026-04-03 |  | start no earlier than 2026-03-24 | Zenith | 8653084 |
| 2893 | 36900.37000.37100.38500.39300.45800.177800.960900 | Reinforcement | 8d | 2026-03-24 | 2026-03-31 | 2891 |  | Zenith | 8688834 |
| 2894 | 36900.37000.37100.38500.39300.45800.177800.961000 | Conduiting | 8d | 2026-03-25 | 2026-04-01 | 2893SS+1d |  | Zenith | 8688824 |
| 2895 | 36900.37000.37100.38500.39300.45800.177800.961100 | Formwork | 8d | 2026-03-26 | 2026-04-02 | 2893SS+2d |  | Zenith | 8688814 |
| 2896 | 36900.37000.37100.38500.39300.45800.177800.961200 | Concreting | 1d | 2026-04-03 | 2026-04-03 | 2894FS+1d, 2895 |  | Zenith | 8688804 |

| ID | WBS | Task | Duration | Start | Finish | Predecessors | Constraint | Calendar | Unique_Task_ID |
| --- | --- | --- | --- | --- | --- | --- | --- | --- | --- |
| 2897 | 36900.37000.37100.38500.39300.45800.177900 | **12th floor roof slab** | 11d | 2026-04-04 | 2026-04-14 |  | start no earlier than 2026-04-04 | Zenith | 8653144 |
| 2898 | 36900.37000.37100.38500.39300.45800.177900.961300 | Reinforcement | 8d | 2026-04-04 | 2026-04-11 | 2896 |  | Zenith | 8688794 |
| 2899 | 36900.37000.37100.38500.39300.45800.177900.961400 | Conduiting | 8d | 2026-04-05 | 2026-04-12 | 2898SS+1d |  | Zenith | 8688784 |
| 2900 | 36900.37000.37100.38500.39300.45800.177900.961500 | Formwork | 8d | 2026-04-06 | 2026-04-13 | 2898SS+2d |  | Zenith | 8688774 |
| 2901 | 36900.37000.37100.38500.39300.45800.177900.961600 | Concreting | 1d | 2026-04-14 | 2026-04-14 | 2899FS+1d, 2900 |  | Zenith | 8688764 |
| 2902 | 36900.37000.37100.38500.39300.45800.178000 | **13th floor roof slab** | 11d | 2026-04-15 | 2026-04-25 |  | start no earlier than 2026-04-15 | Zenith | 8653194 |
| 2903 | 36900.37000.37100.38500.39300.45800.178000.961700 | Reinforcement | 8d | 2026-04-15 | 2026-04-22 | 2901 |  | Zenith | 8688754 |
| 2904 | 36900.37000.37100.38500.39300.45800.178000.961800 | Conduiting | 8d | 2026-04-16 | 2026-04-23 | 2903SS+1d |  | Zenith | 8688744 |
| 2905 | 36900.37000.37100.38500.39300.45800.178000.961900 | Formwork | 8d | 2026-04-17 | 2026-04-24 | 2903SS+2d |  | Zenith | 8688734 |
| 2906 | 36900.37000.37100.38500.39300.45800.178000.962000 | Concreting | 1d | 2026-04-25 | 2026-04-25 | 2904FS+1d, 2905 |  | Zenith | 8688724 |
| 2907 | 36900.37000.37100.38500.39300.45800.178100 | **14th floor roof slab** | 15d | 2026-04-26 | 2026-05-10 |  | start no earlier than 2026-04-26 | Zenith | 8653264 |
| 2908 | 36900.37000.37100.38500.39300.45800.178100.962100 | Reinforcement | 12d | 2026-04-26 | 2026-05-07 | 2906 |  | Zenith | 8688714 |
| 2909 | 36900.37000.37100.38500.39300.45800.178100.962200 | Conduiting | 12d | 2026-04-27 | 2026-05-08 | 2908SS+1d |  | Zenith | 8688704 |
| 2910 | 36900.37000.37100.38500.39300.45800.178100.962300 | Formwork | 12d | 2026-04-28 | 2026-05-09 | 2908SS+2d |  | Zenith | 8688694 |
| 2911 | 36900.37000.37100.38500.39300.45800.178100.962400 | Concreting | 1d | 2026-05-10 | 2026-05-10 | 2909FS+1d, 2910 |  | Zenith | 8688684 |
| 2912 | 36900.37000.37100.38500.39300.45800.178200 | **15th floor roof slab** | 11d | 2026-05-11 | 2026-05-21 |  | start no earlier than 2026-05-11 | Zenith | 8653314 |
| 2913 | 36900.37000.37100.38500.39300.45800.178200.962500 | Reinforcement | 8d | 2026-05-11 | 2026-05-18 | 2911 |  | Zenith | 8688674 |
| 2914 | 36900.37000.37100.38500.39300.45800.178200.962600 | Conduiting | 8d | 2026-05-12 | 2026-05-19 | 2913SS+1d |  | Zenith | 8688664 |
| 2915 | 36900.37000.37100.38500.39300.45800.178200.962700 | Formwork | 8d | 2026-05-13 | 2026-05-20 | 2913SS+2d |  | Zenith | 8688654 |
| 2916 | 36900.37000.37100.38500.39300.45800.178200.962800 | Concreting | 1d | 2026-05-21 | 2026-05-21 | 2914FS+1d, 2915 |  | Zenith | 8688644 |
| 2917 | 36900.37000.37100.38500.39300.45800.178300 | **16th floor roof slab** | 11d | 2026-05-22 | 2026-06-01 |  | start no earlier than 2026-05-22 | Zenith | 8653384 |
| 2918 | 36900.37000.37100.38500.39300.45800.178300.962900 | Reinforcement | 8d | 2026-05-22 | 2026-05-29 | 2916 |  | Zenith | 8688634 |
| 2919 | 36900.37000.37100.38500.39300.45800.178300.963000 | Conduiting | 8d | 2026-05-23 | 2026-05-30 | 2918SS+1d |  | Zenith | 8688624 |
| 2920 | 36900.37000.37100.38500.39300.45800.178300.963100 | Formwork | 8d | 2026-05-24 | 2026-05-31 | 2918SS+2d |  | Zenith | 8688614 |
| 2921 | 36900.37000.37100.38500.39300.45800.178300.963200 | Concreting | 1d | 2026-06-01 | 2026-06-01 | 2919, 2920 |  | Zenith | 8688604 |

| ID | WBS | Task | Duration | Start | Finish | Predecessors | Constraint | Calendar | Unique_Task_ID |
| --- | --- | --- | --- | --- | --- | --- | --- | --- | --- |
| 2922 | 36900.37000.37100.38500.39300.45800.178400 | **17th floor roof slab** | 11d | 2026-06-02 | 2026-06-12 |  | start no earlier than 2026-06-02 | Zenith | 8653424 |
| 2923 | 36900.37000.37100.38500.39300.45800.178400.963300 | Reinforcement | 8d | 2026-06-02 | 2026-06-09 | 2921 |  | Zenith | 8688594 |
| 2924 | 36900.37000.37100.38500.39300.45800.178400.963400 | Conduiting | 8d | 2026-06-03 | 2026-06-10 | 2923SS+1d |  | Zenith | 8688584 |
| 2925 | 36900.37000.37100.38500.39300.45800.178400.963500 | Formwork | 8d | 2026-06-04 | 2026-06-11 | 2923SS+2d |  | Zenith | 8688574 |
| 2926 | 36900.37000.37100.38500.39300.45800.178400.963600 | Concreting | 1d | 2026-06-12 | 2026-06-12 | 2924FS+1d, 2925 |  | Zenith | 8688564 |
| 2927 | 36900.37000.37100.38500.39300.45800.178500 | **18th floor roof slab** | 11d | 2026-06-13 | 2026-06-23 |  | start no earlier than 2026-06-13 | Zenith | 8653464 |
| 2928 | 36900.37000.37100.38500.39300.45800.178500.963700 | Reinforcement | 8d | 2026-06-13 | 2026-06-20 | 2926 |  | Zenith | 8688554 |
| 2929 | 36900.37000.37100.38500.39300.45800.178500.963800 | Conduiting | 8d | 2026-06-14 | 2026-06-21 | 2928SS+1d |  | Zenith | 8688544 |
| 2930 | 36900.37000.37100.38500.39300.45800.178500.963900 | Formwork | 8d | 2026-06-15 | 2026-06-22 | 2928SS+2d |  | Zenith | 8688534 |
| 2931 | 36900.37000.37100.38500.39300.45800.178500.964000 | Concreting | 1d | 2026-06-23 | 2026-06-23 | 2929FS+1d, 2930 |  | Zenith | 8688524 |
| 2932 | 36900.37000.37100.38500.39300.45800.178600 | **19th floor roof slab** | 11d | 2026-06-24 | 2026-07-04 |  | start no earlier than 2026-06-24 | Zenith | 8653474 |
| 2933 | 36900.37000.37100.38500.39300.45800.178600.964100 | Reinforcement | 8d | 2026-06-24 | 2026-07-01 | 2931 |  | Zenith | 8688514 |
| 2934 | 36900.37000.37100.38500.39300.45800.178600.964200 | Conduiting | 8d | 2026-06-25 | 2026-07-02 | 2933SS+1d |  | Zenith | 8688504 |
| 2935 | 36900.37000.37100.38500.39300.45800.178600.964300 | Formwork | 8d | 2026-06-26 | 2026-07-03 | 2933SS+2d |  | Zenith | 8688494 |
| 2936 | 36900.37000.37100.38500.39300.45800.178600.964400 | Concreting | 1d | 2026-07-04 | 2026-07-04 | 2934FS+1d, 2935 |  | Zenith | 8688484 |
| 2937 | 36900.37000.37100.38500.39300.45800.178700 | **20th floor roof slab** | 11d | 2026-07-05 | 2026-07-15 |  | start no earlier than 2026-07-05 | Zenith | 8653494 |
| 2938 | 36900.37000.37100.38500.39300.45800.178700.964500 | Reinforcement | 8d | 2026-07-05 | 2026-07-12 | 2936 |  | Zenith | 8688474 |
| 2939 | 36900.37000.37100.38500.39300.45800.178700.964600 | Conduiting | 8d | 2026-07-06 | 2026-07-13 | 2938SS+1d |  | Zenith | 8688464 |
| 2940 | 36900.37000.37100.38500.39300.45800.178700.964700 | Formwork | 8d | 2026-07-07 | 2026-07-14 | 2938SS+2d |  | Zenith | 8688454 |
| 2941 | 36900.37000.37100.38500.39300.45800.178700.964800 | Concreting | 1d | 2026-07-15 | 2026-07-15 | 2939FS+1d, 2940 |  | Zenith | 8688444 |
| 2942 | 36900.37000.37100.38500.39300.45800.178800 | **21st floor roof slab** | 11d | 2026-07-16 | 2026-07-26 |  | start no earlier than 2026-07-16 | Zenith | 8653504 |
| 2943 | 36900.37000.37100.38500.39300.45800.178800.964900 | Reinforcement | 8d | 2026-07-16 | 2026-07-23 | 2941 |  | Zenith | 8688434 |
| 2944 | 36900.37000.37100.38500.39300.45800.178800.965000 | Conduiting | 8d | 2026-07-17 | 2026-07-24 | 2943SS+1d |  | Zenith | 8688424 |
| 2945 | 36900.37000.37100.38500.39300.45800.178800.965100 | Formwork | 8d | 2026-07-18 | 2026-07-25 | 2943SS+2d |  | Zenith | 8688414 |
| 2946 | 36900.37000.37100.38500.39300.45800.178800.965200 | Concreting | 1d | 2026-07-26 | 2026-07-26 | 2944FS+1d, 2945 |  | Zenith | 8688404 |

| ID | WBS | Task | Duration | Start | Finish | Predecessors | Constraint | Calendar | Unique_Task_ID |
| --- | --- | --- | --- | --- | --- | --- | --- | --- | --- |
| 2947 | 36900.37000.37100.38500.39300.45800.178900 | **22nd floor roof slab** | 11d | 2026-07-27 | 2026-08-06 |  | start no earlier than 2026-07-27 | Zenith | 8653524 |
| 2948 | 36900.37000.37100.38500.39300.45800.178900.965300 | Reinforcement | 8d | 2026-07-27 | 2026-08-03 | 2946 |  | Zenith | 8688394 |
| 2949 | 36900.37000.37100.38500.39300.45800.178900.965400 | Conduiting | 8d | 2026-07-28 | 2026-08-04 | 2948SS+1d |  | Zenith | 8688384 |
| 2950 | 36900.37000.37100.38500.39300.45800.178900.965500 | Formwork | 8d | 2026-07-29 | 2026-08-05 | 2948SS+2d |  | Zenith | 8688374 |
| 2951 | 36900.37000.37100.38500.39300.45800.178900.965600 | Concreting | 1d | 2026-08-06 | 2026-08-06 | 2949FS+1d, 2950 |  | Zenith | 8688364 |
| 2952 | 36900.37000.37100.38500.39300.45800.179000 | **23rd floor roof slab** | 11d | 2026-08-07 | 2026-08-17 |  | start no earlier than 2026-08-07 | Zenith | 8653574 |
| 2953 | 36900.37000.37100.38500.39300.45800.179000.965700 | Reinforcement | 8d | 2026-08-07 | 2026-08-14 | 2951 |  | Zenith | 8688354 |
| 2954 | 36900.37000.37100.38500.39300.45800.179000.965800 | Conduiting | 8d | 2026-08-08 | 2026-08-15 | 2953SS+1d |  | Zenith | 8688344 |
| 2955 | 36900.37000.37100.38500.39300.45800.179000.965900 | Formwork | 8d | 2026-08-09 | 2026-08-16 | 2953SS+2d |  | Zenith | 8688334 |
| 2956 | 36900.37000.37100.38500.39300.45800.179000.966000 | Concreting | 1d | 2026-08-17 | 2026-08-17 | 2954FS+1d, 2955 |  | Zenith | 8688324 |
| 2957 | 36900.37000.37100.38500.39300.45800.179100 | **24th floor roof slab** | 11d | 2026-08-18 | 2026-08-28 |  | start no earlier than 2026-08-18 | Zenith | 8653674 |
| 2958 | 36900.37000.37100.38500.39300.45800.179100.966100 | Reinforcement | 8d | 2026-08-18 | 2026-08-25 | 2956 |  | Zenith | 8688314 |
| 2959 | 36900.37000.37100.38500.39300.45800.179100.966200 | Conduiting | 8d | 2026-08-19 | 2026-08-26 | 2958SS+1d |  | Zenith | 8688304 |
| 2960 | 36900.37000.37100.38500.39300.45800.179100.966300 | Formwork | 8d | 2026-08-20 | 2026-08-27 | 2958SS+2d |  | Zenith | 8688294 |
| 2961 | 36900.37000.37100.38500.39300.45800.179100.966400 | Concreting | 1d | 2026-08-28 | 2026-08-28 | 2959FS+1d, 2960 |  | Zenith | 8688284 |
| 2962 | 36900.37000.37100.38500.39300.45800.179200 | **25th floor roof slab** | 11d | 2026-08-29 | 2026-09-08 |  | start no earlier than 2026-08-29 | Zenith | 8653754 |
| 2963 | 36900.37000.37100.38500.39300.45800.179200.966500 | Reinforcement | 8d | 2026-08-29 | 2026-09-05 | 2961 |  | Zenith | 8688274 |
| 2964 | 36900.37000.37100.38500.39300.45800.179200.966600 | Conduiting | 8d | 2026-08-30 | 2026-09-06 | 2963SS+1d |  | Zenith | 8688264 |
| 2965 | 36900.37000.37100.38500.39300.45800.179200.966700 | Formwork | 8d | 2026-08-31 | 2026-09-07 | 2963SS+2d |  | Zenith | 8688254 |
| 2966 | 36900.37000.37100.38500.39300.45800.179200.966800 | Concreting | 1d | 2026-09-08 | 2026-09-08 | 2964FS+1d, 2965 |  | Zenith | 8688244 |
| 2967 | 36900.37000.37100.38500.39300.45800.179300 | **26th floor roof slab** | 11d | 2026-09-09 | 2026-09-19 |  | start no earlier than 2026-09-09 | Zenith | 8653814 |
| 2968 | 36900.37000.37100.38500.39300.45800.179300.966900 | Reinforcement | 8d | 2026-09-09 | 2026-09-16 | 2966 |  | Zenith | 8688234 |
| 2969 | 36900.37000.37100.38500.39300.45800.179300.967000 | Conduiting | 8d | 2026-09-10 | 2026-09-17 | 2968SS+1d |  | Zenith | 8688224 |
| 2970 | 36900.37000.37100.38500.39300.45800.179300.967100 | Formwork | 8d | 2026-09-11 | 2026-09-18 | 2968SS+2d |  | Zenith | 8688214 |
| 2971 | 36900.37000.37100.38500.39300.45800.179300.967200 | Concreting | 1d | 2026-09-19 | 2026-09-19 | 2969FS+1d, 2970 |  | Zenith | 8688204 |

| ID | WBS | Task | Duration | Start | Finish | Predecessors | Constraint | Calendar | Unique_Task_ID |
| --- | --- | --- | --- | --- | --- | --- | --- | --- | --- |
| 2972 | 36900.37000.37100.38500.39300.45800.179400 | **27th floor roof slab** | 12d | 2026-09-20 | 2026-10-01 |  | start no earlier than 2026-09-20 | Zenith | 8653824 |
| 2973 | 36900.37000.37100.38500.39300.45800.179400.967300 | Reinforcement | 9d | 2026-09-20 | 2026-09-28 | 2971 |  | Zenith | 8688194 |
| 2974 | 36900.37000.37100.38500.39300.45800.179400.967400 | Conduiting | 9d | 2026-09-21 | 2026-09-29 | 2973SS+1d |  | Zenith | 8688184 |
| 2975 | 36900.37000.37100.38500.39300.45800.179400.967500 | Formwork | 9d | 2026-09-22 | 2026-09-30 | 2973SS+2d |  | Zenith | 8688174 |
| 2976 | 36900.37000.37100.38500.39300.45800.179400.967600 | Concreting | 1d | 2026-10-01 | 2026-10-01 | 2974FS+1d, 2975 |  | Zenith | 8688164 |
| 2977 | 36900.37000.37100.38500.39300.45800.179500 | **28th floor roof slab** | 11d | 2026-10-02 | 2026-10-12 |  | start no earlier than 2026-10-02 | Zenith | 8653834 |
| 2978 | 36900.37000.37100.38500.39300.45800.179500.967700 | Reinforcement | 8d | 2026-10-02 | 2026-10-09 | 2976 |  | Zenith | 8688154 |
| 2979 | 36900.37000.37100.38500.39300.45800.179500.967800 | Conduiting | 8d | 2026-10-03 | 2026-10-10 | 2978SS+1d |  | Zenith | 8688144 |
| 2980 | 36900.37000.37100.38500.39300.45800.179500.967900 | Formwork | 8d | 2026-10-04 | 2026-10-11 | 2978SS+2d |  | Zenith | 8688134 |
| 2981 | 36900.37000.37100.38500.39300.45800.179500.968000 | Concreting | 1d | 2026-10-12 | 2026-10-12 | 2979FS+1d, 2980 |  | Zenith | 8688124 |
| 2982 | 36900.37000.37100.38500.39300.45800.179600 | **29th floor roof slab** | 15d | 2026-10-13 | 2026-10-27 |  | start no earlier than 2026-10-13 | Zenith | 8653844 |
| 2983 | 36900.37000.37100.38500.39300.45800.179600.968100 | Reinforcement | 12d | 2026-10-13 | 2026-10-24 | 2981 |  | Zenith | 8688114 |
| 2984 | 36900.37000.37100.38500.39300.45800.179600.968200 | Conduiting | 12d | 2026-10-14 | 2026-10-25 | 2983SS+1d |  | Zenith | 8688104 |
| 2985 | 36900.37000.37100.38500.39300.45800.179600.968300 | Formwork | 12d | 2026-10-15 | 2026-10-26 | 2983SS+2d |  | Zenith | 8688094 |
| 2986 | 36900.37000.37100.38500.39300.45800.179600.968400 | Concreting | 1d | 2026-10-27 | 2026-10-27 | 2984FS+1d, 2985 |  | Zenith | 8688084 |
| 2987 | 36900.37000.37100.38500.39300.45800.179700 | **30th floor roof slab** | 11d | 2026-10-28 | 2026-12-22 |  | start no earlier than 2026-10-28 | Zenith | 8653854 |
| 2988 | 36900.37000.37100.38500.39300.45800.179700.968500 | Reinforcement | 8d | 2026-10-28 | 2026-12-19 | 2986 |  | Zenith | 8688074 |
| 2989 | 36900.37000.37100.38500.39300.45800.179700.968600 | Conduiting | 8d | 2026-10-29 | 2026-12-20 | 2988SS+1d |  | Zenith | 8688064 |
| 2990 | 36900.37000.37100.38500.39300.45800.179700.968700 | Formwork | 8d | 2026-10-30 | 2026-12-21 | 2988SS+2d |  | Zenith | 8688054 |
| 2991 | 36900.37000.37100.38500.39300.45800.179700.968800 | Concreting | 1d | 2026-12-22 | 2026-12-22 | 2989FS+1d, 2990 |  | Zenith | 8688044 |
| 2992 | 36900.37000.37100.38500.39300.45800.179800 | **31st floor roof slab** | 11d | 2026-12-23 | 2027-01-02 |  | start no earlier than 2026-12-23 | Zenith | 8653864 |
| 2993 | 36900.37000.37100.38500.39300.45800.179800.968900 | Reinforcement | 8d | 2026-12-23 | 2026-12-30 | 2991 |  | Zenith | 8688034 |
| 2994 | 36900.37000.37100.38500.39300.45800.179800.969000 | Conduiting | 8d | 2026-12-24 | 2026-12-31 | 2993SS+1d |  | Zenith | 8688024 |
| 2995 | 36900.37000.37100.38500.39300.45800.179800.969100 | Formwork | 8d | 2026-12-25 | 2027-01-01 | 2993SS+2d |  | Zenith | 8688014 |
| 2996 | 36900.37000.37100.38500.39300.45800.179800.969200 | Concreting | 1d | 2027-01-02 | 2027-01-02 | 2994FS+1d, 2995 |  | Zenith | 8688004 |

| ID | WBS | Task | Duration | Start | Finish | Predecessors | Constraint | Calendar | Unique_Task_ID |
| --- | --- | --- | --- | --- | --- | --- | --- | --- | --- |
| 2997 | 36900.37000.37100.38500.39300.45800.179900 | **32nd floor roof slab** | 11d | 2027-01-03 | 2027-01-13 |  | start no earlier than 2027-01-03 | Zenith | 8653874 |
| 2998 | 36900.37000.37100.38500.39300.45800.179900.969300 | Reinforcement | 8d | 2027-01-03 | 2027-01-10 | 2996 |  | Zenith | 8687994 |
| 2999 | 36900.37000.37100.38500.39300.45800.179900.969400 | Conduiting | 8d | 2027-01-04 | 2027-01-11 | 2998SS+1d |  | Zenith | 8687984 |
| 3000 | 36900.37000.37100.38500.39300.45800.179900.969500 | Formwork | 8d | 2027-01-05 | 2027-01-12 | 2998SS+2d |  | Zenith | 8687974 |
| 3001 | 36900.37000.37100.38500.39300.45800.179900.969600 | Concreting | 1d | 2027-01-13 | 2027-01-13 | 2999FS+1d, 3000 |  | Zenith | 8687964 |
| 3002 | 36900.37000.37100.38500.39300.45800.180000 | **33rd floor roof slab** | 11d | 2027-01-14 | 2027-01-24 |  | start no earlier than 2027-01-14 | Zenith | 8653884 |
| 3003 | 36900.37000.37100.38500.39300.45800.180000.969700 | Reinforcement | 8d | 2027-01-14 | 2027-01-21 | 3001 |  | Zenith | 8687954 |
| 3004 | 36900.37000.37100.38500.39300.45800.180000.969800 | Conduiting | 8d | 2027-01-15 | 2027-01-22 | 3003SS+1d |  | Zenith | 8687944 |
| 3005 | 36900.37000.37100.38500.39300.45800.180000.969900 | Formwork | 8d | 2027-01-16 | 2027-01-23 | 3003SS+2d |  | Zenith | 8687934 |
| 3006 | 36900.37000.37100.38500.39300.45800.180000.970000 | Concreting | 1d | 2027-01-24 | 2027-01-24 | 3004FS+1d, 3005 |  | Zenith | 8687924 |
| 3007 | 36900.37000.37100.38500.39300.45800.180100 | **Terrace floor slab** | 15d | 2027-01-25 | 2027-02-08 |  | start no earlier than 2027-01-25 | Zenith | 8653894 |
| 3008 | 36900.37000.37100.38500.39300.45800.180100.970100 | Reinforcement | 11d | 2027-01-25 | 2027-02-04 | 3006 |  | Zenith | 8687914 |
| 3009 | 36900.37000.37100.38500.39300.45800.180100.970200 | Conduiting | 11d | 2027-01-26 | 2027-02-05 | 3008SS+1d |  | Zenith | 8687904 |
| 3010 | 36900.37000.37100.38500.39300.45800.180100.970300 | Formwork | 11d | 2027-01-27 | 2027-02-06 | 3008SS+2d |  | Zenith | 8687894 |
| 3011 | 36900.37000.37100.38500.39300.45800.180100.970400 | Concreting | 2d | 2027-02-07 | 2027-02-08 | 3009FS+1d, 3010 |  | Zenith | 8687884 |
| 3012 | 36900.37000.37100.38500.39300.45800.180200 | **OHT, Mumty & Machine Room, Parapet** | 45d | 2027-02-09 | 2027-03-25 |  | start no earlier than 2027-02-09 | Zenith | 8653904 |
| 3013 | 36900.37000.37100.38500.39300.45800.180200.970500 | Reinforcement | 29d | 2027-02-09 | 2027-03-09 | 3011 |  | Zenith | 8687874 |
| 3014 | 36900.37000.37100.38500.39300.45800.180200.970600 | Flanges fixing & Conduiting | 19d | 2027-02-10 | 2027-02-28 | 3013SS+1d |  | Zenith | 8687864 |
| 3015 | 36900.37000.37100.38500.39300.45800.180200.970700 | Formwork | 35d | 2027-02-15 | 2027-03-21 | 3013SS+6d |  | Zenith | 8687854 |
| 3016 | 36900.37000.37100.38500.39300.45800.180200.970800 | Concreting | 4d | 2027-03-22 | 2027-03-25 | 3014FS+5d, 3015 |  | Zenith | 8687844 |
| 3017 | 36900.37000.37100.38500.39300.48200 | **Post Pour Activities** | 375.25d | 2026-01-27 | 2027-03-23 |  | start no earlier than 2026-01-27 | Zenith | 8648084 |
| 3018 | 36900.37000.37100.38500.39300.48200.820300 | 1st Floor | 7d | 2026-01-27 | 2026-02-02 | 2861 |  | Zenith | 8724584 |
| 3019 | 36900.37000.37100.38500.39300.48200.820400 | 2nd Floor | 7d | 2026-02-05 | 2026-02-12 | 3018FS+0.25d, 2866FS+0.25d |  | Zenith | 8724574 |
| 3020 | 36900.37000.37100.38500.39300.48200.820500 | 3rd Floor | 7d | 2026-02-14 | 2026-02-21 | 3019FS+0.25d, 2871FS+0.25d |  | Zenith | 8724564 |
| 3021 | 36900.37000.37100.38500.39300.48200.820600 | 4th Floor | 7d | 2026-02-23 | 2026-03-02 | 3020FS+0.25d, 2876FS+0.25d |  | Zenith | 8724554 |
| 3022 | 36900.37000.37100.38500.39300.48200.820700 | 5th Floor | 7d | 2026-03-04 | 2026-03-11 | 3021FS+0.25d, 2881FS+0.25d |  | Zenith | 8724544 |
| 3023 | 36900.37000.37100.38500.39300.48200.820800 | 6th Floor | 7d | 2026-03-13 | 2026-03-20 | 3022FS+0.25d, 2886FS+0.25d |  | Zenith | 8724534 |
| 3024 | 36900.37000.37100.38500.39300.48200.820900 | 7th Floor | 7d | 2026-03-24 | 2026-03-31 | 3023FS+0.25d, 2891FS+0.25d |  | Zenith | 8724524 |
| 3025 | 36900.37000.37100.38500.39300.48200.821000 | 8th Floor | 7d | 2026-04-04 | 2026-04-11 | 3024FS+0.25d, 2896FS+0.25d |  | Zenith | 8724514 |
| 3026 | 36900.37000.37100.38500.39300.48200.821100 | 9th Floor | 7d | 2026-04-15 | 2026-04-22 | 3025FS+0.25d, 2901FS+0.25d |  | Zenith | 8724504 |
| 3027 | 36900.37000.37100.38500.39300.48200.821200 | 10th Floor | 7d | 2026-04-26 | 2026-05-03 | 3026FS+0.25d, 2906FS+0.25d |  | Zenith | 8724494 |
| 3028 | 36900.37000.37100.38500.39300.48200.821300 | 11th Floor | 7d | 2026-05-11 | 2026-05-18 | 3027FS+0.25d, 2911FS+0.25d |  | Zenith | 8724484 |
| 3029 | 36900.37000.37100.38500.39300.48200.821400 | 12th Floor | 7d | 2026-05-22 | 2026-05-29 | 3028FS+0.25d, 2916FS+0.25d |  | Zenith | 8724474 |
| 3030 | 36900.37000.37100.38500.39300.48200.821500 | 13th Floor | 7d | 2026-06-02 | 2026-06-09 | 3029FS+0.25d, 2921FS+0.25d |  | Zenith | 8724464 |
| 3031 | 36900.37000.37100.38500.39300.48200.821600 | 14th Floor | 7d | 2026-06-13 | 2026-06-20 | 3030FS+0.25d, 2926FS+0.25d |  | Zenith | 8724454 |
| 3032 | 36900.37000.37100.38500.39300.48200.821700 | 15th Floor | 7d | 2026-06-24 | 2026-07-01 | 3031FS+0.25d, 2931FS+0.25d |  | Zenith | 8724444 |
| 3033 | 36900.37000.37100.38500.39300.48200.821800 | 16th Floor | 7d | 2026-07-05 | 2026-07-12 | 3032FS+0.25d, 2936FS+0.25d |  | Zenith | 8724434 |
| 3034 | 36900.37000.37100.38500.39300.48200.821900 | 17th Floor | 7d | 2026-07-16 | 2026-07-23 | 3033FS+0.25d, 2941FS+0.25d |  | Zenith | 8724424 |
| 3035 | 36900.37000.37100.38500.39300.48200.822000 | 18th Floor | 7d | 2026-07-27 | 2026-08-03 | 3034FS+0.25d, 2946FS+0.25d |  | Zenith | 8724414 |
| 3036 | 36900.37000.37100.38500.39300.48200.822100 | 19th Floor | 7d | 2026-08-07 | 2026-08-14 | 3035FS+0.25d, 2951FS+0.25d |  | Zenith | 8724404 |
| 3037 | 36900.37000.37100.38500.39300.48200.822200 | 20th Floor | 7d | 2026-08-18 | 2026-08-25 | 3036FS+0.25d, 2956FS+0.25d |  | Zenith | 8724394 |
| 3038 | 36900.37000.37100.38500.39300.48200.822300 | 21st Floor | 7d | 2026-08-29 | 2026-09-05 | 3037FS+0.25d, 2961FS+0.25d |  | Zenith | 8724384 |
| 3039 | 36900.37000.37100.38500.39300.48200.822400 | 22nd Floor | 7d | 2026-09-09 | 2026-09-16 | 3038FS+0.25d, 2966FS+0.25d |  | Zenith | 8724374 |
| 3040 | 36900.37000.37100.38500.39300.48200.822500 | 23rd Floor | 7d | 2026-09-20 | 2026-09-27 | 3039FS+0.25d, 2971FS+0.25d |  | Zenith | 8724364 |
| 3041 | 36900.37000.37100.38500.39300.48200.822600 | 24th Floor | 7d | 2026-10-02 | 2026-10-09 | 3040FS+0.25d, 2976FS+0.25d |  | Zenith | 8724354 |
| 3042 | 36900.37000.37100.38500.39300.48200.822700 | 25th Floor | 7d | 2026-10-13 | 2026-10-20 | 3041FS+0.25d, 2981FS+0.25d |  | Zenith | 8724344 |
| 3043 | 36900.37000.37100.38500.39300.48200.822800 | 26th Floor | 7d | 2026-10-28 | 2026-12-19 | 3042FS+0.25d, 2986FS+0.25d |  | Zenith | 8724334 |
| 3044 | 36900.37000.37100.38500.39300.48200.822900 | 27th Floor | 7d | 2026-12-23 | 2026-12-30 | 3043FS+0.25d, 2991FS+0.25d |  | Zenith | 8724324 |
| 3045 | 36900.37000.37100.38500.39300.48200.823000 | 28th Floor | 7d | 2027-01-03 | 2027-01-10 | 3044FS+0.25d, 2996FS+0.25d |  | Zenith | 8724314 |
| 3046 | 36900.37000.37100.38500.39300.48200.823100 | 29th Floor | 7d | 2027-01-14 | 2027-01-21 | 3045FS+0.25d, 3001FS+0.25d |  | Zenith | 8724304 |
| 3047 | 36900.37000.37100.38500.39300.48200.823200 | 30th Floor | 7d | 2027-01-25 | 2027-02-01 | 3046FS+0.25d, 3006FS+0.25d |  | Zenith | 8724294 |
| 3048 | 36900.37000.37100.38500.39300.48200.823300 | 31st Flood | 7d | 2027-02-09 | 2027-02-16 | 3047FS+0.25d, 3011FS+0.25d |  | Zenith | 8724284 |
| 3049 | 36900.37000.37100.38500.39300.48200.823400 | 32nd Floor | 7d | 2027-02-16 | 2027-02-23 | 3048 |  | Zenith | 8724274 |
| 3050 | 36900.37000.37100.38500.39300.48200.823500 | 33rd Floor | 7d | 2027-02-23 | 2027-03-02 | 3049 |  | Zenith | 8724264 |
| 3051 | 36900.37000.37100.38500.39300.48200.823600 | 34th Floor | 7d | 2027-03-02 | 2027-03-09 | 3050 |  | Zenith | 8724254 |
| 3052 | 36900.37000.37100.38500.39300.48200.823700 | Terrace | 7d | 2027-03-09 | 2027-03-16 | 3051 |  | Zenith | 8724244 |
| 3053 | 36900.37000.37100.38500.39300.48200.823800 | Mumty & Machine Room | 7d | 2027-03-16 | 2027-03-23 | 3052 |  | Zenith | 8724234 |

| ID | WBS | Task | Duration | Start | Finish | Predecessors | Constraint | Calendar | Unique_Task_ID |
| --- | --- | --- | --- | --- | --- | --- | --- | --- | --- |
| 3054 | 36900.37000.37100.38500.39300.41500 | **Finishing work** | 556.25d | 2026-02-03 | 2027-09-27 |  | start no earlier than 2026-02-03 | Zenith | 8647804 |
| 3055 | 36900.37000.37100.38500.39300.41500.42300 | **Flat finishing** | 546.25d | 2026-02-03 | 2027-09-17 |  | start no earlier than 2026-02-03 | Zenith | 8647884 |
| 3056 | 36900.37000.37100.38500.39300.41500.42300.92800 | **1st Floor roof** | 79d | 2026-02-03 | 2026-04-22 |  | start no earlier than 2026-02-03 | Zenith | 8649464 |
| 3057 | 36900.37000.37100.38500.39300.41500.42300.92800.1443500 | Block Work | 6d | 2026-02-03 | 2026-02-08 | 3018 |  | Zenith | 8672774 |
| 3058 | 36900.37000.37100.38500.39300.41500.42300.92800.1443600 | Fire sprinkler pipe fixing | 5d | 2026-02-09 | 2026-02-13 | 3057 |  | Zenith | 8672784 |
| 3059 | 36900.37000.37100.38500.39300.41500.42300.92800.1443700 | Internal Plumbing Works | 5d | 2026-02-09 | 2026-02-13 | 3057 |  | Zenith | 8672794 |
| 3060 | 36900.37000.37100.38500.39300.41500.42300.92800.1443800 | Waterproofing | 5d | 2026-02-14 | 2026-02-18 | 3059 |  | Zenith | 8672804 |
| 3061 | 36900.37000.37100.38500.39300.41500.42300.92800.1443900 | Internal Plaster | 9d | 2026-02-15 | 2026-02-23 | 3059, 3060FF+5d |  | Zenith | 8672814 |
| 3062 | 36900.37000.37100.38500.39300.41500.42300.92800.1444000 | IPS flooring work | 7d | 2026-02-24 | 2026-03-02 | 3061 |  | Zenith | 8672824 |
| 3063 | 36900.37000.37100.38500.39300.41500.42300.92800.1444100 | Toilet dado work | 6d | 2026-02-24 | 2026-03-01 | 3060, 3061 |  | Zenith | 8672834 |
| 3064 | 36900.37000.37100.38500.39300.41500.42300.92800.1444200 | Toilet flooring work | 7d | 2026-03-02 | 2026-03-08 | 3063 |  | Zenith | 8672844 |
| 3065 | 36900.37000.37100.38500.39300.41500.42300.92800.1444300 | False Cieling panel fixing | 7d | 2026-03-09 | 2026-03-15 | 3064 |  | Zenith | 8672854 |
| 3066 | 36900.37000.37100.38500.39300.41500.42300.92800.1444400 | Living dinning flooring | 7d | 2026-03-09 | 2026-03-15 | 3064 |  | Zenith | 8672864 |
| 3067 | 36900.37000.37100.38500.39300.41500.42300.92800.1444500 | Putty primer coat | 8d | 2026-03-16 | 2026-03-23 | 3066 |  | Zenith | 8672874 |
| 3068 | 36900.37000.37100.38500.39300.41500.42300.92800.1444600 | Aluminium door-window fixing | 12d | 2026-03-16 | 2026-03-27 | 3062, 3066 |  | Zenith | 8672884 |
| 3069 | 36900.37000.37100.38500.39300.41500.42300.92800.1444700 | Door shutter fixing (Pre Hung) | 8d | 2026-03-24 | 2026-03-31 | 3067 |  | Zenith | 8672894 |
| 3070 | 36900.37000.37100.38500.39300.41500.42300.92800.1444800 | Electrical wiring work | 10d | 2026-04-01 | 2026-04-10 | 3069 |  | Zenith | 8672904 |
| 3071 | 36900.37000.37100.38500.39300.41500.42300.92800.1444900 | Painting 1st coat | 12d | 2026-04-11 | 2026-04-22 | 3070 |  | Zenith | 8672914 |
| 3072 | 36900.37000.37100.38500.39300.41500.42300.92900 | **2nd floor roof** | 81.75d | 2026-02-12 | 2026-05-04 |  | start no earlier than 2026-02-12 | Zenith | 8649474 |
| 3073 | 36900.37000.37100.38500.39300.41500.42300.92900.1445000 | Block Work | 6d | 2026-02-12 | 2026-02-18 | 3019, 3057 |  | Zenith | 8672924 |
| 3074 | 36900.37000.37100.38500.39300.41500.42300.92900.1445100 | Fire sprinkler pipe fixing | 5d | 2026-02-18 | 2026-02-23 | 3058, 3073 |  | Zenith | 8672934 |
| 3075 | 36900.37000.37100.38500.39300.41500.42300.92900.1445200 | Internal Plumbing Works | 5d | 2026-02-18 | 2026-02-23 | 3059, 3073 |  | Zenith | 8672944 |
| 3076 | 36900.37000.37100.38500.39300.41500.42300.92900.1445300 | Waterproofing | 5d | 2026-02-23 | 2026-02-28 | 3060, 3075 |  | Zenith | 8672954 |
| 3077 | 36900.37000.37100.38500.39300.41500.42300.92900.1445400 | Internal Plaster | 9d | 2026-02-24 | 2026-03-05 | 3061, 3075, 3076FF+5d |  | Zenith | 8672964 |
| 3078 | 36900.37000.37100.38500.39300.41500.42300.92900.1445500 | IPS flooring work | 7d | 2026-03-05 | 2026-03-12 | 3062, 3077 |  | Zenith | 8672974 |
| 3079 | 36900.37000.37100.38500.39300.41500.42300.92900.1445600 | Toilet dado work | 6d | 2026-03-05 | 2026-03-11 | 3063, 3076, 3077 |  | Zenith | 8672984 |
| 3080 | 36900.37000.37100.38500.39300.41500.42300.92900.1445700 | Toilet flooring work | 7d | 2026-03-11 | 2026-03-18 | 3064, 3079 |  | Zenith | 8672994 |
| 3081 | 36900.37000.37100.38500.39300.41500.42300.92900.1445800 | False Cieling panel fixing | 7d | 2026-03-18 | 2026-03-25 | 3065, 3080 |  | Zenith | 8673004 |
| 3082 | 36900.37000.37100.38500.39300.41500.42300.92900.1445900 | Living dinning flooring | 7d | 2026-03-18 | 2026-03-25 | 3066, 3080 |  | Zenith | 8673014 |
| 3083 | 36900.37000.37100.38500.39300.41500.42300.92900.1446000 | Putty primer coat | 8d | 2026-03-25 | 2026-04-02 | 3067, 3082 |  | Zenith | 8673024 |
| 3084 | 36900.37000.37100.38500.39300.41500.42300.92900.1446100 | Aluminium door-window fixing | 12d | 2026-03-28 | 2026-04-08 | 3068, 3078, 3082 |  | Zenith | 8673034 |
| 3085 | 36900.37000.37100.38500.39300.41500.42300.92900.1446200 | Door shutter fixing (Pre Hung) | 8d | 2026-04-02 | 2026-04-10 | 3069, 3083 |  | Zenith | 8673044 |
| 3086 | 36900.37000.37100.38500.39300.41500.42300.92900.1446300 | Electrical wiring work | 10d | 2026-04-11 | 2026-04-20 | 3070, 3085 |  | Zenith | 8673054 |
| 3087 | 36900.37000.37100.38500.39300.41500.42300.92900.1446400 | Painting 1st coat | 12d | 2026-04-23 | 2026-05-04 | 3071, 3086 |  | Zenith | 8673064 |

| ID | WBS | Task | Duration | Start | Finish | Predecessors | Constraint | Calendar | Unique_Task_ID |
| --- | --- | --- | --- | --- | --- | --- | --- | --- | --- |
| 3088 | 36900.37000.37100.38500.39300.41500.42300.93000 | **3rd floor roof** | 84.75d | 2026-02-21 | 2026-05-16 |  | start no earlier than 2026-02-21 | Zenith | 8649484 |
| 3089 | 36900.37000.37100.38500.39300.41500.42300.93000.1446500 | Block Work | 6d | 2026-02-21 | 2026-02-27 | 3020, 3073 |  | Zenith | 8673074 |
| 3090 | 36900.37000.37100.38500.39300.41500.42300.93000.1446600 | Fire sprinkler pipe fixing | 5d | 2026-02-27 | 2026-03-04 | 3074, 3089 |  | Zenith | 8673084 |
| 3091 | 36900.37000.37100.38500.39300.41500.42300.93000.1446700 | Internal Plumbing Works | 5d | 2026-02-27 | 2026-03-04 | 3075, 3089 |  | Zenith | 8673094 |
| 3092 | 36900.37000.37100.38500.39300.41500.42300.93000.1446800 | Waterproofing | 5d | 2026-03-04 | 2026-03-09 | 3076, 3091 |  | Zenith | 8673104 |
| 3093 | 36900.37000.37100.38500.39300.41500.42300.93000.1446900 | Internal Plaster | 9d | 2026-03-05 | 2026-03-14 | 3077, 3091, 3092FF+5d |  | Zenith | 8673114 |
| 3094 | 36900.37000.37100.38500.39300.41500.42300.93000.1447000 | IPS flooring work | 7d | 2026-03-14 | 2026-03-21 | 3078, 3093 |  | Zenith | 8673124 |
| 3095 | 36900.37000.37100.38500.39300.41500.42300.93000.1447100 | Toilet dado work | 6d | 2026-03-14 | 2026-03-20 | 3079, 3092, 3093 |  | Zenith | 8673134 |
| 3096 | 36900.37000.37100.38500.39300.41500.42300.93000.1447200 | Toilet flooring work | 7d | 2026-03-20 | 2026-03-27 | 3080, 3095 |  | Zenith | 8673144 |
| 3097 | 36900.37000.37100.38500.39300.41500.42300.93000.1447300 | False Cieling panel fixing | 7d | 2026-03-27 | 2026-04-03 | 3081, 3096 |  | Zenith | 8673154 |
| 3098 | 36900.37000.37100.38500.39300.41500.42300.93000.1447400 | Living dinning flooring | 7d | 2026-03-27 | 2026-04-03 | 3082, 3096 |  | Zenith | 8673164 |
| 3099 | 36900.37000.37100.38500.39300.41500.42300.93000.1447500 | Putty primer coat | 8d | 2026-04-03 | 2026-04-11 | 3083, 3098 |  | Zenith | 8673174 |
| 3100 | 36900.37000.37100.38500.39300.41500.42300.93000.1447600 | Aluminium door-window fixing | 12d | 2026-04-09 | 2026-04-20 | 3084, 3094, 3098 |  | Zenith | 8673184 |
| 3101 | 36900.37000.37100.38500.39300.41500.42300.93000.1447700 | Door shutter fixing (Pre Hung) | 8d | 2026-04-11 | 2026-04-19 | 3085, 3099 |  | Zenith | 8673194 |
| 3102 | 36900.37000.37100.38500.39300.41500.42300.93000.1447800 | Electrical wiring work | 10d | 2026-04-21 | 2026-04-30 | 3086, 3101 |  | Zenith | 8673204 |
| 3103 | 36900.37000.37100.38500.39300.41500.42300.93000.1447900 | Painting 1st coat | 12d | 2026-05-05 | 2026-05-16 | 3087, 3102 |  | Zenith | 8673214 |
| 3104 | 36900.37000.37100.38500.39300.41500.42300.93100 | **4th floor roof** | 87.75d | 2026-03-02 | 2026-05-28 |  | start no earlier than 2026-03-02 | Zenith | 8649494 |
| 3105 | 36900.37000.37100.38500.39300.41500.42300.93100.1448000 | Block Work | 6d | 2026-03-02 | 2026-03-08 | 3021, 3089 |  | Zenith | 8673224 |
| 3106 | 36900.37000.37100.38500.39300.41500.42300.93100.1448100 | Fire sprinkler pipe fixing | 5d | 2026-03-08 | 2026-03-13 | 3090, 3105 |  | Zenith | 8673234 |
| 3107 | 36900.37000.37100.38500.39300.41500.42300.93100.1448200 | Internal Plumbing Works | 5d | 2026-03-08 | 2026-03-13 | 3091, 3105 |  | Zenith | 8673244 |
| 3108 | 36900.37000.37100.38500.39300.41500.42300.93100.1448300 | Waterproofing | 5d | 2026-03-13 | 2026-03-18 | 3092, 3107 |  | Zenith | 8673254 |
| 3109 | 36900.37000.37100.38500.39300.41500.42300.93100.1448400 | Internal Plaster | 9d | 2026-03-14 | 2026-03-23 | 3093, 3107, 3108FF+5d |  | Zenith | 8673264 |
| 3110 | 36900.37000.37100.38500.39300.41500.42300.93100.1448500 | IPS flooring work | 7d | 2026-03-23 | 2026-03-30 | 3094, 3109 |  | Zenith | 8673274 |
| 3111 | 36900.37000.37100.38500.39300.41500.42300.93100.1448600 | Toilet dado work | 6d | 2026-03-23 | 2026-03-29 | 3095, 3108, 3109 |  | Zenith | 8673284 |
| 3112 | 36900.37000.37100.38500.39300.41500.42300.93100.1448700 | Toilet flooring work | 7d | 2026-03-29 | 2026-04-05 | 3096, 3111 |  | Zenith | 8673294 |
| 3113 | 36900.37000.37100.38500.39300.41500.42300.93100.1448800 | False Cieling panel fixing | 7d | 2026-04-05 | 2026-04-12 | 3097, 3112 |  | Zenith | 8673304 |
| 3114 | 36900.37000.37100.38500.39300.41500.42300.93100.1448900 | Living dinning flooring | 7d | 2026-04-05 | 2026-04-12 | 3098, 3112 |  | Zenith | 8673314 |
| 3115 | 36900.37000.37100.38500.39300.41500.42300.93100.1449000 | Putty primer coat | 8d | 2026-04-12 | 2026-04-20 | 3099, 3114 |  | Zenith | 8673324 |
| 3116 | 36900.37000.37100.38500.39300.41500.42300.93100.1449100 | Aluminium door-window fixing | 12d | 2026-04-21 | 2026-05-02 | 3100, 3110, 3114 |  | Zenith | 8673334 |
| 3117 | 36900.37000.37100.38500.39300.41500.42300.93100.1449200 | Door shutter fixing (Pre Hung) | 8d | 2026-04-20 | 2026-04-28 | 3101, 3115 |  | Zenith | 8673344 |
| 3118 | 36900.37000.37100.38500.39300.41500.42300.93100.1449300 | Electrical wiring work | 10d | 2026-05-01 | 2026-05-10 | 3102, 3117 |  | Zenith | 8673354 |
| 3119 | 36900.37000.37100.38500.39300.41500.42300.93100.1449400 | Painting 1st coat | 12d | 2026-05-17 | 2026-05-28 | 3103, 3118 |  | Zenith | 8673364 |

| ID | WBS | Task | Duration | Start | Finish | Predecessors | Constraint | Calendar | Unique_Task_ID |
| --- | --- | --- | --- | --- | --- | --- | --- | --- | --- |
| 3120 | 36900.37000.37100.38500.39300.41500.42300.93200 | **5th floor roof** | 90.75d | 2026-03-11 | 2026-06-09 |  | start no earlier than 2026-03-11 | Zenith | 8649504 |
| 3121 | 36900.37000.37100.38500.39300.41500.42300.93200.1449500 | Block Work | 6d | 2026-03-11 | 2026-03-17 | 3022, 3105 |  | Zenith | 8673374 |
| 3122 | 36900.37000.37100.38500.39300.41500.42300.93200.1449600 | Fire sprinkler pipe fixing | 5d | 2026-03-17 | 2026-03-22 | 3106, 3121 |  | Zenith | 8673384 |
| 3123 | 36900.37000.37100.38500.39300.41500.42300.93200.1449700 | Internal Plumbing Works | 5d | 2026-03-17 | 2026-03-22 | 3107, 3121 |  | Zenith | 8673394 |
| 3124 | 36900.37000.37100.38500.39300.41500.42300.93200.1449800 | Waterproofing | 5d | 2026-03-22 | 2026-03-27 | 3108, 3123 |  | Zenith | 8673404 |
| 3125 | 36900.37000.37100.38500.39300.41500.42300.93200.1449900 | Internal Plaster | 9d | 2026-03-23 | 2026-04-01 | 3109, 3123, 3124FF+5d |  | Zenith | 8673414 |
| 3126 | 36900.37000.37100.38500.39300.41500.42300.93200.1450000 | IPS flooring work | 7d | 2026-04-01 | 2026-04-08 | 3110, 3125 |  | Zenith | 8673424 |
| 3127 | 36900.37000.37100.38500.39300.41500.42300.93200.1450100 | Toilet dado work | 6d | 2026-04-01 | 2026-04-07 | 3111, 3124, 3125 |  | Zenith | 8673434 |
| 3128 | 36900.37000.37100.38500.39300.41500.42300.93200.1450200 | Toilet flooring work | 7d | 2026-04-07 | 2026-04-14 | 3112, 3127 |  | Zenith | 8673444 |
| 3129 | 36900.37000.37100.38500.39300.41500.42300.93200.1450300 | False Cieling panel fixing | 7d | 2026-04-14 | 2026-04-21 | 3113, 3128 |  | Zenith | 8673454 |
| 3130 | 36900.37000.37100.38500.39300.41500.42300.93200.1450400 | Living dinning flooring | 7d | 2026-04-14 | 2026-04-21 | 3114, 3128 |  | Zenith | 8673464 |
| 3131 | 36900.37000.37100.38500.39300.41500.42300.93200.1450500 | Putty primer coat | 8d | 2026-04-21 | 2026-04-29 | 3115, 3130 |  | Zenith | 8673474 |
| 3132 | 36900.37000.37100.38500.39300.41500.42300.93200.1450600 | Aluminium door-window fixing | 12d | 2026-05-03 | 2026-05-14 | 3116, 3126, 3130 |  | Zenith | 8673484 |
| 3133 | 36900.37000.37100.38500.39300.41500.42300.93200.1450700 | Door shutter fixing (Pre Hung) | 8d | 2026-04-29 | 2026-05-07 | 3117, 3131 |  | Zenith | 8673494 |
| 3134 | 36900.37000.37100.38500.39300.41500.42300.93200.1450800 | Electrical wiring work | 10d | 2026-05-11 | 2026-05-20 | 3118, 3133 |  | Zenith | 8673504 |
| 3135 | 36900.37000.37100.38500.39300.41500.42300.93200.1450900 | Painting 1st coat | 12d | 2026-05-29 | 2026-06-09 | 3119, 3134 |  | Zenith | 8673514 |
| 3136 | 36900.37000.37100.38500.39300.41500.42300.93300 | **6th floor roof** | 93.75d | 2026-03-20 | 2026-06-21 |  | start no earlier than 2026-03-20 | Zenith | 8649514 |
| 3137 | 36900.37000.37100.38500.39300.41500.42300.93300.1451000 | Block Work | 6d | 2026-03-20 | 2026-03-26 | 3023, 3121 |  | Zenith | 8673524 |
| 3138 | 36900.37000.37100.38500.39300.41500.42300.93300.1451100 | Fire sprinkler pipe fixing | 5d | 2026-03-26 | 2026-03-31 | 3122, 3137 |  | Zenith | 8673534 |
| 3139 | 36900.37000.37100.38500.39300.41500.42300.93300.1451200 | Internal Plumbing Works | 5d | 2026-03-26 | 2026-03-31 | 3123, 3137 |  | Zenith | 8673544 |
| 3140 | 36900.37000.37100.38500.39300.41500.42300.93300.1451300 | Waterproofing | 5d | 2026-03-31 | 2026-04-05 | 3124, 3139 |  | Zenith | 8673554 |
| 3141 | 36900.37000.37100.38500.39300.41500.42300.93300.1451400 | Internal Plaster | 9d | 2026-04-01 | 2026-04-10 | 3125, 3139, 3140FF+5d |  | Zenith | 8673564 |
| 3142 | 36900.37000.37100.38500.39300.41500.42300.93300.1451500 | IPS flooring work | 7d | 2026-04-10 | 2026-04-17 | 3126, 3141 |  | Zenith | 8673574 |
| 3143 | 36900.37000.37100.38500.39300.41500.42300.93300.1451600 | Toilet dado work | 6d | 2026-04-10 | 2026-04-16 | 3127, 3140, 3141 |  | Zenith | 8673584 |
| 3144 | 36900.37000.37100.38500.39300.41500.42300.93300.1451700 | Toilet flooring work | 7d | 2026-04-16 | 2026-04-23 | 3128, 3143 |  | Zenith | 8673594 |
| 3145 | 36900.37000.37100.38500.39300.41500.42300.93300.1451800 | False Cieling panel fixing | 7d | 2026-04-23 | 2026-04-30 | 3129, 3144 |  | Zenith | 8673604 |
| 3146 | 36900.37000.37100.38500.39300.41500.42300.93300.1451900 | Living dinning flooring | 7d | 2026-04-23 | 2026-04-30 | 3130, 3144 |  | Zenith | 8673614 |
| 3147 | 36900.37000.37100.38500.39300.41500.42300.93300.1452000 | Putty primer coat | 8d | 2026-04-30 | 2026-05-08 | 3131, 3146 |  | Zenith | 8673624 |
| 3148 | 36900.37000.37100.38500.39300.41500.42300.93300.1452100 | Aluminium door-window fixing | 12d | 2026-05-15 | 2026-05-26 | 3132, 3142, 3146 |  | Zenith | 8673634 |
| 3149 | 36900.37000.37100.38500.39300.41500.42300.93300.1452200 | Door shutter fixing (Pre Hung) | 8d | 2026-05-08 | 2026-05-16 | 3133, 3147 |  | Zenith | 8673644 |
| 3150 | 36900.37000.37100.38500.39300.41500.42300.93300.1452300 | Electrical wiring work | 10d | 2026-05-21 | 2026-05-30 | 3134, 3149 |  | Zenith | 8673654 |
| 3151 | 36900.37000.37100.38500.39300.41500.42300.93300.1452400 | Painting 1st coat | 12d | 2026-06-10 | 2026-06-21 | 3135, 3150 |  | Zenith | 8673664 |

| ID | WBS | Task | Duration | Start | Finish | Predecessors | Constraint | Calendar | Unique_Task_ID |
| --- | --- | --- | --- | --- | --- | --- | --- | --- | --- |
| 3152 | 36900.37000.37100.38500.39300.41500.42300.93400 | **7th floor roof** | 94.75d | 2026-03-31 | 2026-07-03 |  | start no earlier than 2026-03-31 | Zenith | 8649524 |
| 3153 | 36900.37000.37100.38500.39300.41500.42300.93400.1452500 | Block Work | 6d | 2026-03-31 | 2026-04-06 | 3024, 3137 |  | Zenith | 8673674 |
| 3154 | 36900.37000.37100.38500.39300.41500.42300.93400.1452600 | Fire sprinkler pipe fixing | 5d | 2026-04-06 | 2026-04-11 | 3138, 3153 |  | Zenith | 8673684 |
| 3155 | 36900.37000.37100.38500.39300.41500.42300.93400.1452700 | Internal Plumbing Works | 5d | 2026-04-06 | 2026-04-11 | 3139, 3153 |  | Zenith | 8673694 |
| 3156 | 36900.37000.37100.38500.39300.41500.42300.93400.1452800 | Waterproofing | 5d | 2026-04-11 | 2026-04-16 | 3140, 3155 |  | Zenith | 8673704 |
| 3157 | 36900.37000.37100.38500.39300.41500.42300.93400.1452900 | Internal Plaster | 9d | 2026-04-12 | 2026-04-21 | 3141, 3155, 3156FF+5d |  | Zenith | 8673714 |
| 3158 | 36900.37000.37100.38500.39300.41500.42300.93400.1453000 | IPS flooring work | 7d | 2026-04-21 | 2026-04-28 | 3142, 3157 |  | Zenith | 8673724 |
| 3159 | 36900.37000.37100.38500.39300.41500.42300.93400.1453100 | Toilet dado work | 6d | 2026-04-21 | 2026-04-27 | 3143, 3156, 3157 |  | Zenith | 8673734 |
| 3160 | 36900.37000.37100.38500.39300.41500.42300.93400.1453200 | Toilet flooring work | 7d | 2026-04-27 | 2026-05-04 | 3144, 3159 |  | Zenith | 8673744 |
| 3161 | 36900.37000.37100.38500.39300.41500.42300.93400.1453300 | False Cieling panel fixing | 7d | 2026-05-04 | 2026-05-11 | 3145, 3160 |  | Zenith | 8673754 |
| 3162 | 36900.37000.37100.38500.39300.41500.42300.93400.1453400 | Living dinning flooring | 7d | 2026-05-04 | 2026-05-11 | 3146, 3160 |  | Zenith | 8673764 |
| 3163 | 36900.37000.37100.38500.39300.41500.42300.93400.1453500 | Putty primer coat | 8d | 2026-05-11 | 2026-05-19 | 3147, 3162 |  | Zenith | 8673774 |
| 3164 | 36900.37000.37100.38500.39300.41500.42300.93400.1453600 | Aluminium door-window fixing | 12d | 2026-05-27 | 2026-06-07 | 3148, 3158, 3162 |  | Zenith | 8673784 |
| 3165 | 36900.37000.37100.38500.39300.41500.42300.93400.1453700 | Door shutter fixing (Pre Hung) | 8d | 2026-05-19 | 2026-05-27 | 3149, 3163 |  | Zenith | 8673794 |
| 3166 | 36900.37000.37100.38500.39300.41500.42300.93400.1453800 | Electrical wiring work | 10d | 2026-05-31 | 2026-06-09 | 3150, 3165 |  | Zenith | 8673804 |
| 3167 | 36900.37000.37100.38500.39300.41500.42300.93400.1453900 | Painting 1st coat | 12d | 2026-06-22 | 2026-07-03 | 3151, 3166 |  | Zenith | 8673814 |
| 3168 | 36900.37000.37100.38500.39300.41500.42300.93500 | **8th floor roof** | 95.75d | 2026-04-11 | 2026-07-15 |  | start no earlier than 2026-04-11 | Zenith | 8649534 |
| 3169 | 36900.37000.37100.38500.39300.41500.42300.93500.1454000 | Block Work | 6d | 2026-04-11 | 2026-04-17 | 3025, 3153 |  | Zenith | 8673824 |
| 3170 | 36900.37000.37100.38500.39300.41500.42300.93500.1454100 | Fire sprinkler pipe fixing | 5d | 2026-04-17 | 2026-04-22 | 3154, 3169 |  | Zenith | 8673834 |
| 3171 | 36900.37000.37100.38500.39300.41500.42300.93500.1454200 | Internal Plumbing Works | 5d | 2026-04-17 | 2026-04-22 | 3155, 3169 |  | Zenith | 8673844 |
| 3172 | 36900.37000.37100.38500.39300.41500.42300.93500.1454300 | Waterproofing | 5d | 2026-04-22 | 2026-04-27 | 3156, 3171 |  | Zenith | 8673854 |
| 3173 | 36900.37000.37100.38500.39300.41500.42300.93500.1454400 | Internal Plaster | 9d | 2026-04-23 | 2026-05-02 | 3157, 3171, 3172FF+5d |  | Zenith | 8673864 |
| 3174 | 36900.37000.37100.38500.39300.41500.42300.93500.1454500 | IPS flooring work | 7d | 2026-05-02 | 2026-05-09 | 3158, 3173 |  | Zenith | 8673874 |
| 3175 | 36900.37000.37100.38500.39300.41500.42300.93500.1454600 | Toilet dado work | 6d | 2026-05-02 | 2026-05-08 | 3159, 3172, 3173 |  | Zenith | 8673884 |
| 3176 | 36900.37000.37100.38500.39300.41500.42300.93500.1454700 | Toilet flooring work | 7d | 2026-05-08 | 2026-05-15 | 3160, 3175 |  | Zenith | 8673894 |
| 3177 | 36900.37000.37100.38500.39300.41500.42300.93500.1454800 | False Cieling panel fixing | 7d | 2026-05-15 | 2026-05-22 | 3161, 3176 |  | Zenith | 8673904 |
| 3178 | 36900.37000.37100.38500.39300.41500.42300.93500.1454900 | Living dinning flooring | 7d | 2026-05-15 | 2026-05-22 | 3162, 3176 |  | Zenith | 8673914 |
| 3179 | 36900.37000.37100.38500.39300.41500.42300.93500.1455000 | Putty primer coat | 8d | 2026-05-22 | 2026-05-30 | 3163, 3178 |  | Zenith | 8673924 |
| 3180 | 36900.37000.37100.38500.39300.41500.42300.93500.1455100 | Aluminium door-window fixing | 12d | 2026-06-08 | 2026-06-19 | 3164, 3174, 3178 |  | Zenith | 8673934 |
| 3181 | 36900.37000.37100.38500.39300.41500.42300.93500.1455200 | Door shutter fixing (Pre Hung) | 8d | 2026-05-30 | 2026-06-07 | 3165, 3179 |  | Zenith | 8673944 |
| 3182 | 36900.37000.37100.38500.39300.41500.42300.93500.1455300 | Electrical wiring work | 10d | 2026-06-10 | 2026-06-19 | 3166, 3181 |  | Zenith | 8673954 |
| 3183 | 36900.37000.37100.38500.39300.41500.42300.93500.1455400 | Painting 1st coat | 12d | 2026-07-04 | 2026-07-15 | 3167, 3182 |  | Zenith | 8673964 |

| ID | WBS | Task | Duration | Start | Finish | Predecessors | Constraint | Calendar | Unique_Task_ID |
| --- | --- | --- | --- | --- | --- | --- | --- | --- | --- |
| 3184 | 36900.37000.37100.38500.39300.41500.42300.93600 | **9th floor roof** | 96.75d | 2026-04-22 | 2026-07-27 |  | start no earlier than 2026-04-22 | Zenith | 8649544 |
| 3185 | 36900.37000.37100.38500.39300.41500.42300.93600.1455500 | Block Work | 6d | 2026-04-22 | 2026-04-28 | 3026, 3169 |  | Zenith | 8673974 |
| 3186 | 36900.37000.37100.38500.39300.41500.42300.93600.1455600 | Fire sprinkler pipe fixing | 5d | 2026-04-28 | 2026-05-03 | 3170, 3185 |  | Zenith | 8673984 |
| 3187 | 36900.37000.37100.38500.39300.41500.42300.93600.1455700 | Internal Plumbing Works | 5d | 2026-04-28 | 2026-05-03 | 3171, 3185 |  | Zenith | 8673994 |
| 3188 | 36900.37000.37100.38500.39300.41500.42300.93600.1455800 | Waterproofing | 5d | 2026-05-03 | 2026-05-08 | 3172, 3187 |  | Zenith | 8674004 |
| 3189 | 36900.37000.37100.38500.39300.41500.42300.93600.1455900 | Internal Plaster | 9d | 2026-05-04 | 2026-05-13 | 3173, 3187, 3188FF+5d |  | Zenith | 8674014 |
| 3190 | 36900.37000.37100.38500.39300.41500.42300.93600.1456000 | IPS flooring work | 7d | 2026-05-13 | 2026-05-20 | 3174, 3189 |  | Zenith | 8674024 |
| 3191 | 36900.37000.37100.38500.39300.41500.42300.93600.1456100 | Toilet dado work | 6d | 2026-05-13 | 2026-05-19 | 3175, 3188, 3189 |  | Zenith | 8674034 |
| 3192 | 36900.37000.37100.38500.39300.41500.42300.93600.1456200 | Toilet flooring work | 7d | 2026-05-19 | 2026-05-26 | 3176, 3191 |  | Zenith | 8674044 |
| 3193 | 36900.37000.37100.38500.39300.41500.42300.93600.1456300 | False Cieling panel fixing | 7d | 2026-05-26 | 2026-06-02 | 3177, 3192 |  | Zenith | 8674054 |
| 3194 | 36900.37000.37100.38500.39300.41500.42300.93600.1456400 | Living dinning flooring | 7d | 2026-05-26 | 2026-06-02 | 3178, 3192 |  | Zenith | 8674064 |
| 3195 | 36900.37000.37100.38500.39300.41500.42300.93600.1456500 | Putty primer coat | 8d | 2026-06-02 | 2026-06-10 | 3179, 3194 |  | Zenith | 8674074 |
| 3196 | 36900.37000.37100.38500.39300.41500.42300.93600.1456600 | Aluminium door-window fixing | 12d | 2026-06-20 | 2026-07-01 | 3180, 3190, 3194 |  | Zenith | 8674084 |
| 3197 | 36900.37000.37100.38500.39300.41500.42300.93600.1456700 | Door shutter fixing (Pre Hung) | 8d | 2026-06-10 | 2026-06-18 | 3181, 3195 |  | Zenith | 8674094 |
| 3198 | 36900.37000.37100.38500.39300.41500.42300.93600.1456800 | Electrical wiring work | 10d | 2026-06-20 | 2026-06-29 | 3182, 3197 |  | Zenith | 8674104 |
| 3199 | 36900.37000.37100.38500.39300.41500.42300.93600.1456900 | Painting 1st coat | 12d | 2026-07-16 | 2026-07-27 | 3183, 3198 |  | Zenith | 8674114 |
| 3200 | 36900.37000.37100.38500.39300.41500.42300.93700 | **10th floor roof** | 97.75d | 2026-05-03 | 2026-08-08 |  | start no earlier than 2026-05-03 | Zenith | 8649554 |
| 3201 | 36900.37000.37100.38500.39300.41500.42300.93700.1457000 | Block Work | 6d | 2026-05-03 | 2026-05-09 | 3027, 3185 |  | Zenith | 8674124 |
| 3202 | 36900.37000.37100.38500.39300.41500.42300.93700.1457100 | Fire sprinkler pipe fixing | 5d | 2026-05-09 | 2026-05-14 | 3186, 3201 |  | Zenith | 8674134 |
| 3203 | 36900.37000.37100.38500.39300.41500.42300.93700.1457200 | Internal Plumbing Works | 5d | 2026-05-09 | 2026-05-14 | 3187, 3201 |  | Zenith | 8674144 |
| 3204 | 36900.37000.37100.38500.39300.41500.42300.93700.1457300 | Waterproofing | 5d | 2026-05-14 | 2026-05-19 | 3188, 3203 |  | Zenith | 8674154 |
| 3205 | 36900.37000.37100.38500.39300.41500.42300.93700.1457400 | Internal Plaster | 9d | 2026-05-15 | 2026-05-24 | 3189, 3203, 3204FF+5d |  | Zenith | 8674164 |
| 3206 | 36900.37000.37100.38500.39300.41500.42300.93700.1457500 | IPS flooring work | 7d | 2026-05-24 | 2026-05-31 | 3190, 3205 |  | Zenith | 8674174 |
| 3207 | 36900.37000.37100.38500.39300.41500.42300.93700.1457600 | Toilet dado work | 6d | 2026-05-24 | 2026-05-30 | 3191, 3204, 3205 |  | Zenith | 8674184 |
| 3208 | 36900.37000.37100.38500.39300.41500.42300.93700.1457700 | Toilet flooring work | 7d | 2026-05-30 | 2026-06-06 | 3192, 3207 |  | Zenith | 8674194 |
| 3209 | 36900.37000.37100.38500.39300.41500.42300.93700.1457800 | False Cieling panel fixing | 7d | 2026-06-06 | 2026-06-13 | 3193, 3208 |  | Zenith | 8674204 |
| 3210 | 36900.37000.37100.38500.39300.41500.42300.93700.1457900 | Living dinning flooring | 7d | 2026-06-06 | 2026-06-13 | 3194, 3208 |  | Zenith | 8674214 |
| 3211 | 36900.37000.37100.38500.39300.41500.42300.93700.1458000 | Putty primer coat | 8d | 2026-06-13 | 2026-06-21 | 3195, 3210 |  | Zenith | 8674224 |
| 3212 | 36900.37000.37100.38500.39300.41500.42300.93700.1458100 | Aluminium door-window fixing | 12d | 2026-07-02 | 2026-07-13 | 3196, 3206, 3210 |  | Zenith | 8674234 |
| 3213 | 36900.37000.37100.38500.39300.41500.42300.93700.1458200 | Door shutter fixing (Pre Hung) | 8d | 2026-06-21 | 2026-06-29 | 3197, 3211 |  | Zenith | 8674244 |
| 3214 | 36900.37000.37100.38500.39300.41500.42300.93700.1458300 | Electrical wiring work | 10d | 2026-06-30 | 2026-07-09 | 3198, 3213 |  | Zenith | 8674254 |
| 3215 | 36900.37000.37100.38500.39300.41500.42300.93700.1458400 | Painting 1st coat | 12d | 2026-07-28 | 2026-08-08 | 3199, 3214 |  | Zenith | 8674264 |

| ID | WBS | Task | Duration | Start | Finish | Predecessors | Constraint | Calendar | Unique_Task_ID |
| --- | --- | --- | --- | --- | --- | --- | --- | --- | --- |
| 3216 | 36900.37000.37100.38500.39300.41500.42300.93800 | **11th floor roof** | 94.75d | 2026-05-18 | 2026-08-20 |  | start no earlier than 2026-05-18 | Zenith | 8649564 |
| 3217 | 36900.37000.37100.38500.39300.41500.42300.93800.1458500 | Block Work | 6d | 2026-05-18 | 2026-05-24 | 3028, 3201 |  | Zenith | 8674274 |
| 3218 | 36900.37000.37100.38500.39300.41500.42300.93800.1458600 | Fire sprinkler pipe fixing | 5d | 2026-05-24 | 2026-05-29 | 3202, 3217 |  | Zenith | 8674284 |
| 3219 | 36900.37000.37100.38500.39300.41500.42300.93800.1458700 | Internal Plumbing Works | 5d | 2026-05-24 | 2026-05-29 | 3203, 3217 |  | Zenith | 8674294 |
| 3220 | 36900.37000.37100.38500.39300.41500.42300.93800.1458800 | Waterproofing | 5d | 2026-05-29 | 2026-06-03 | 3204, 3219 |  | Zenith | 8674304 |
| 3221 | 36900.37000.37100.38500.39300.41500.42300.93800.1458900 | Internal Plaster | 9d | 2026-05-30 | 2026-06-08 | 3205, 3219, 3220FF+5d |  | Zenith | 8674314 |
| 3222 | 36900.37000.37100.38500.39300.41500.42300.93800.1459000 | IPS flooring work | 7d | 2026-06-08 | 2026-06-15 | 3206, 3221 |  | Zenith | 8674324 |
| 3223 | 36900.37000.37100.38500.39300.41500.42300.93800.1459100 | Toilet dado work | 6d | 2026-06-08 | 2026-06-14 | 3207, 3220, 3221 |  | Zenith | 8674334 |
| 3224 | 36900.37000.37100.38500.39300.41500.42300.93800.1459200 | Toilet flooring work | 7d | 2026-06-14 | 2026-06-21 | 3208, 3223 |  | Zenith | 8674344 |
| 3225 | 36900.37000.37100.38500.39300.41500.42300.93800.1459300 | False Cieling panel fixing | 7d | 2026-06-21 | 2026-06-28 | 3209, 3224 |  | Zenith | 8674354 |
| 3226 | 36900.37000.37100.38500.39300.41500.42300.93800.1459400 | Living dinning flooring | 7d | 2026-06-21 | 2026-06-28 | 3210, 3224 |  | Zenith | 8674364 |
| 3227 | 36900.37000.37100.38500.39300.41500.42300.93800.1459500 | Putty primer coat | 8d | 2026-06-28 | 2026-07-06 | 3211, 3226 |  | Zenith | 8674374 |
| 3228 | 36900.37000.37100.38500.39300.41500.42300.93800.1459600 | Aluminium door-window fixing | 12d | 2026-07-14 | 2026-07-25 | 3212, 3222, 3226 |  | Zenith | 8674384 |
| 3229 | 36900.37000.37100.38500.39300.41500.42300.93800.1459700 | Door shutter fixing (Pre Hung) | 8d | 2026-07-06 | 2026-07-14 | 3213, 3227 |  | Zenith | 8674394 |
| 3230 | 36900.37000.37100.38500.39300.41500.42300.93800.1459800 | Electrical wiring work | 10d | 2026-07-14 | 2026-07-24 | 3214, 3229 |  | Zenith | 8674404 |
| 3231 | 36900.37000.37100.38500.39300.41500.42300.93800.1459900 | Painting 1st coat | 12d | 2026-08-09 | 2026-08-20 | 3215, 3230 |  | Zenith | 8674414 |
| 3232 | 36900.37000.37100.38500.39300.41500.42300.93900 | **12th floor roof** | 95.75d | 2026-05-29 | 2026-09-01 |  | start no earlier than 2026-05-29 | Zenith | 8649574 |
| 3233 | 36900.37000.37100.38500.39300.41500.42300.93900.1460000 | Block Work | 6d | 2026-05-29 | 2026-06-04 | 3029, 3217 |  | Zenith | 8674424 |
| 3234 | 36900.37000.37100.38500.39300.41500.42300.93900.1460100 | Fire sprinkler pipe fixing | 5d | 2026-06-04 | 2026-06-09 | 3218, 3233 |  | Zenith | 8674434 |
| 3235 | 36900.37000.37100.38500.39300.41500.42300.93900.1460200 | Internal Plumbing Works | 5d | 2026-06-04 | 2026-06-09 | 3219, 3233 |  | Zenith | 8674444 |
| 3236 | 36900.37000.37100.38500.39300.41500.42300.93900.1460300 | Waterproofing | 5d | 2026-06-09 | 2026-06-14 | 3220, 3235 |  | Zenith | 8674454 |
| 3237 | 36900.37000.37100.38500.39300.41500.42300.93900.1460400 | Internal Plaster | 9d | 2026-06-10 | 2026-06-19 | 3221, 3235, 3236FF+5d |  | Zenith | 8674464 |
| 3238 | 36900.37000.37100.38500.39300.41500.42300.93900.1460500 | IPS flooring work | 7d | 2026-06-19 | 2026-06-26 | 3222, 3237 |  | Zenith | 8674474 |
| 3239 | 36900.37000.37100.38500.39300.41500.42300.93900.1460600 | Toilet dado work | 6d | 2026-06-19 | 2026-06-25 | 3223, 3236, 3237 |  | Zenith | 8674484 |
| 3240 | 36900.37000.37100.38500.39300.41500.42300.93900.1460700 | Toilet flooring work | 7d | 2026-06-25 | 2026-07-02 | 3224, 3239 |  | Zenith | 8674494 |
| 3241 | 36900.37000.37100.38500.39300.41500.42300.93900.1460800 | False Cieling panel fixing | 7d | 2026-07-02 | 2026-07-09 | 3225, 3240 |  | Zenith | 8674504 |
| 3242 | 36900.37000.37100.38500.39300.41500.42300.93900.1460900 | Living dinning flooring | 7d | 2026-07-02 | 2026-07-09 | 3226, 3240 |  | Zenith | 8674514 |
| 3243 | 36900.37000.37100.38500.39300.41500.42300.93900.1461000 | Putty primer coat | 8d | 2026-07-09 | 2026-07-17 | 3227, 3242 |  | Zenith | 8674524 |
| 3244 | 36900.37000.37100.38500.39300.41500.42300.93900.1461100 | Aluminium door-window fixing | 12d | 2026-07-26 | 2026-08-06 | 3228, 3238, 3242 |  | Zenith | 8674534 |
| 3245 | 36900.37000.37100.38500.39300.41500.42300.93900.1461200 | Door shutter fixing (Pre Hung) | 8d | 2026-07-17 | 2026-07-25 | 3229, 3243 |  | Zenith | 8674544 |
| 3246 | 36900.37000.37100.38500.39300.41500.42300.93900.1461300 | Electrical wiring work | 10d | 2026-07-25 | 2026-08-04 | 3230, 3245 |  | Zenith | 8674554 |
| 3247 | 36900.37000.37100.38500.39300.41500.42300.93900.1461400 | Painting 1st coat | 12d | 2026-08-21 | 2026-09-01 | 3231, 3246 |  | Zenith | 8674564 |

| ID | WBS | Task | Duration | Start | Finish | Predecessors | Constraint | Calendar | Unique_Task_ID |
| --- | --- | --- | --- | --- | --- | --- | --- | --- | --- |
| 3248 | 36900.37000.37100.38500.39300.41500.42300.94000 | **13th floor roof** | 96.75d | 2026-06-09 | 2026-09-13 |  | start no earlier than 2026-06-09 | Zenith | 8649584 |
| 3249 | 36900.37000.37100.38500.39300.41500.42300.94000.1461500 | Block Work | 6d | 2026-06-09 | 2026-06-15 | 3030, 3233 |  | Zenith | 8674574 |
| 3250 | 36900.37000.37100.38500.39300.41500.42300.94000.1461600 | Fire sprinkler pipe fixing | 5d | 2026-06-15 | 2026-06-20 | 3234, 3249 |  | Zenith | 8674584 |
| 3251 | 36900.37000.37100.38500.39300.41500.42300.94000.1461700 | Internal Plumbing Works | 5d | 2026-06-15 | 2026-06-20 | 3235, 3249 |  | Zenith | 8674594 |
| 3252 | 36900.37000.37100.38500.39300.41500.42300.94000.1461800 | Waterproofing | 5d | 2026-06-20 | 2026-06-25 | 3236, 3251 |  | Zenith | 8674604 |
| 3253 | 36900.37000.37100.38500.39300.41500.42300.94000.1461900 | Internal Plaster | 9d | 2026-06-21 | 2026-06-30 | 3237, 3251, 3252FF+5d |  | Zenith | 8674614 |
| 3254 | 36900.37000.37100.38500.39300.41500.42300.94000.1462000 | IPS flooring work | 7d | 2026-06-30 | 2026-07-07 | 3238, 3253 |  | Zenith | 8674624 |
| 3255 | 36900.37000.37100.38500.39300.41500.42300.94000.1462100 | Toilet dado work | 6d | 2026-06-30 | 2026-07-06 | 3239, 3252, 3253 |  | Zenith | 8674634 |
| 3256 | 36900.37000.37100.38500.39300.41500.42300.94000.1462200 | Toilet flooring work | 7d | 2026-07-06 | 2026-07-13 | 3240, 3255 |  | Zenith | 8674644 |
| 3257 | 36900.37000.37100.38500.39300.41500.42300.94000.1462300 | False Cieling panel fixing | 7d | 2026-07-13 | 2026-07-20 | 3241, 3256 |  | Zenith | 8674654 |
| 3258 | 36900.37000.37100.38500.39300.41500.42300.94000.1462400 | Living dinning flooring | 7d | 2026-07-13 | 2026-07-20 | 3242, 3256 |  | Zenith | 8674664 |
| 3259 | 36900.37000.37100.38500.39300.41500.42300.94000.1462500 | Putty primer coat | 8d | 2026-07-20 | 2026-07-28 | 3243, 3258 |  | Zenith | 8674674 |
| 3260 | 36900.37000.37100.38500.39300.41500.42300.94000.1462600 | Aluminium door-window fixing | 12d | 2026-08-07 | 2026-08-18 | 3244, 3254, 3258 |  | Zenith | 8674684 |
| 3261 | 36900.37000.37100.38500.39300.41500.42300.94000.1462700 | Door shutter fixing (Pre Hung) | 8d | 2026-07-28 | 2026-08-05 | 3245, 3259 |  | Zenith | 8674694 |
| 3262 | 36900.37000.37100.38500.39300.41500.42300.94000.1462800 | Electrical wiring work | 10d | 2026-08-05 | 2026-08-15 | 3246, 3261 |  | Zenith | 8674704 |
| 3263 | 36900.37000.37100.38500.39300.41500.42300.94000.1462900 | Painting 1st coat | 12d | 2026-09-02 | 2026-09-13 | 3247, 3262 |  | Zenith | 8674714 |
| 3264 | 36900.37000.37100.38500.39300.41500.42300.94100 | **14th floor roof** | 97.75d | 2026-06-20 | 2026-09-25 |  | start no earlier than 2026-06-20 | Zenith | 8649594 |
| 3265 | 36900.37000.37100.38500.39300.41500.42300.94100.1463000 | Block Work | 6d | 2026-06-20 | 2026-06-26 | 3031, 3249 |  | Zenith | 8674724 |
| 3266 | 36900.37000.37100.38500.39300.41500.42300.94100.1463100 | Fire sprinkler pipe fixing | 5d | 2026-06-26 | 2026-07-01 | 3250, 3265 |  | Zenith | 8674734 |
| 3267 | 36900.37000.37100.38500.39300.41500.42300.94100.1463200 | Internal Plumbing Works | 5d | 2026-06-26 | 2026-07-01 | 3251, 3265 |  | Zenith | 8674744 |
| 3268 | 36900.37000.37100.38500.39300.41500.42300.94100.1463300 | Waterproofing | 5d | 2026-07-01 | 2026-07-06 | 3252, 3267 |  | Zenith | 8674754 |
| 3269 | 36900.37000.37100.38500.39300.41500.42300.94100.1463400 | Internal Plaster | 9d | 2026-07-02 | 2026-07-11 | 3253, 3267, 3268FF+5d |  | Zenith | 8674764 |
| 3270 | 36900.37000.37100.38500.39300.41500.42300.94100.1463500 | IPS flooring work | 7d | 2026-07-11 | 2026-07-18 | 3254, 3269 |  | Zenith | 8674774 |
| 3271 | 36900.37000.37100.38500.39300.41500.42300.94100.1463600 | Toilet dado work | 6d | 2026-07-11 | 2026-07-17 | 3255, 3268, 3269 |  | Zenith | 8674784 |
| 3272 | 36900.37000.37100.38500.39300.41500.42300.94100.1463700 | Toilet flooring work | 7d | 2026-07-17 | 2026-07-24 | 3256, 3271 |  | Zenith | 8674794 |
| 3273 | 36900.37000.37100.38500.39300.41500.42300.94100.1463800 | False Cieling panel fixing | 7d | 2026-07-24 | 2026-07-31 | 3257, 3272 |  | Zenith | 8674804 |
| 3274 | 36900.37000.37100.38500.39300.41500.42300.94100.1463900 | Living dinning flooring | 7d | 2026-07-24 | 2026-07-31 | 3258, 3272 |  | Zenith | 8674814 |
| 3275 | 36900.37000.37100.38500.39300.41500.42300.94100.1464000 | Putty primer coat | 8d | 2026-07-31 | 2026-08-08 | 3259, 3274 |  | Zenith | 8674824 |
| 3276 | 36900.37000.37100.38500.39300.41500.42300.94100.1464100 | Aluminium door-window fixing | 12d | 2026-08-19 | 2026-08-30 | 3260, 3270, 3274 |  | Zenith | 8674834 |
| 3277 | 36900.37000.37100.38500.39300.41500.42300.94100.1464200 | Door shutter fixing (Pre Hung) | 8d | 2026-08-08 | 2026-08-16 | 3261, 3275 |  | Zenith | 8674844 |
| 3278 | 36900.37000.37100.38500.39300.41500.42300.94100.1464300 | Electrical wiring work | 10d | 2026-08-16 | 2026-08-26 | 3262, 3277 |  | Zenith | 8674854 |
| 3279 | 36900.37000.37100.38500.39300.41500.42300.94100.1464400 | Painting 1st coat | 12d | 2026-09-14 | 2026-09-25 | 3263, 3278 |  | Zenith | 8674864 |

| ID | WBS | Task | Duration | Start | Finish | Predecessors | Constraint | Calendar | Unique_Task_ID |
| --- | --- | --- | --- | --- | --- | --- | --- | --- | --- |
| 3280 | 36900.37000.37100.38500.39300.41500.42300.94200 | **15th floor roof** | 98.75d | 2026-07-01 | 2026-10-07 |  | start no earlier than 2026-07-01 | Zenith | 8649604 |
| 3281 | 36900.37000.37100.38500.39300.41500.42300.94200.1464500 | Block Work | 6d | 2026-07-01 | 2026-07-07 | 3032, 3265 |  | Zenith | 8674874 |
| 3282 | 36900.37000.37100.38500.39300.41500.42300.94200.1464600 | Fire sprinkler pipe fixing | 5d | 2026-07-07 | 2026-07-12 | 3266, 3281 |  | Zenith | 8674884 |
| 3283 | 36900.37000.37100.38500.39300.41500.42300.94200.1464700 | Internal Plumbing Works | 5d | 2026-07-07 | 2026-07-12 | 3267, 3281 |  | Zenith | 8674894 |
| 3284 | 36900.37000.37100.38500.39300.41500.42300.94200.1464800 | Waterproofing | 5d | 2026-07-12 | 2026-07-17 | 3268, 3283 |  | Zenith | 8674904 |
| 3285 | 36900.37000.37100.38500.39300.41500.42300.94200.1464900 | Internal Plaster | 9d | 2026-07-13 | 2026-07-22 | 3269, 3283, 3284FF+5d |  | Zenith | 8674914 |
| 3286 | 36900.37000.37100.38500.39300.41500.42300.94200.1465000 | IPS flooring work | 7d | 2026-07-22 | 2026-07-29 | 3270, 3285 |  | Zenith | 8674924 |
| 3287 | 36900.37000.37100.38500.39300.41500.42300.94200.1465100 | Toilet dado work | 6d | 2026-07-22 | 2026-07-28 | 3271, 3284, 3285 |  | Zenith | 8674934 |
| 3288 | 36900.37000.37100.38500.39300.41500.42300.94200.1465200 | Toilet flooring work | 7d | 2026-07-28 | 2026-08-04 | 3272, 3287 |  | Zenith | 8674944 |
| 3289 | 36900.37000.37100.38500.39300.41500.42300.94200.1465300 | False Cieling panel fixing | 7d | 2026-08-04 | 2026-08-11 | 3273, 3288 |  | Zenith | 8674954 |
| 3290 | 36900.37000.37100.38500.39300.41500.42300.94200.1465400 | Living dinning flooring | 7d | 2026-08-04 | 2026-08-11 | 3274, 3288 |  | Zenith | 8674964 |
| 3291 | 36900.37000.37100.38500.39300.41500.42300.94200.1465500 | Aluminium door-window fixing | 8d | 2026-08-31 | 2026-09-07 | 3276, 3286, 3290 |  | Zenith | 8674974 |
| 3292 | 36900.37000.37100.38500.39300.41500.42300.94200.1465600 | Putty primer coat | 12d | 2026-08-11 | 2026-08-23 | 3275, 3290 |  | Zenith | 8674984 |
| 3293 | 36900.37000.37100.38500.39300.41500.42300.94200.1465700 | Door shutter fixing (Pre Hung) | 8d | 2026-08-23 | 2026-08-31 | 3277, 3292 |  | Zenith | 8674994 |
| 3294 | 36900.37000.37100.38500.39300.41500.42300.94200.1465800 | Electrical wiring work | 10d | 2026-08-31 | 2026-09-10 | 3278, 3293 |  | Zenith | 8675004 |
| 3295 | 36900.37000.37100.38500.39300.41500.42300.94200.1465900 | Painting 1st coat | 12d | 2026-09-26 | 2026-10-07 | 3279, 3294 |  | Zenith | 8675014 |
| 3296 | 36900.37000.37100.38500.39300.41500.42300.94300 | **16th floor roof** | 99.75d | 2026-07-12 | 2026-10-19 |  | start no earlier than 2026-07-12 | Zenith | 8649614 |
| 3297 | 36900.37000.37100.38500.39300.41500.42300.94300.1466000 | Block Work | 6d | 2026-07-12 | 2026-07-18 | 3033, 3281 |  | Zenith | 8675024 |
| 3298 | 36900.37000.37100.38500.39300.41500.42300.94300.1466100 | Fire sprinkler pipe fixing | 5d | 2026-07-18 | 2026-07-23 | 3282, 3297 |  | Zenith | 8675034 |
| 3299 | 36900.37000.37100.38500.39300.41500.42300.94300.1466200 | Internal Plumbing Works | 5d | 2026-07-18 | 2026-07-23 | 3283, 3297 |  | Zenith | 8675044 |
| 3300 | 36900.37000.37100.38500.39300.41500.42300.94300.1466300 | Waterproofing | 5d | 2026-07-23 | 2026-07-28 | 3284, 3299 |  | Zenith | 8675054 |
| 3301 | 36900.37000.37100.38500.39300.41500.42300.94300.1466400 | Internal Plaster | 9d | 2026-07-24 | 2026-08-02 | 3285, 3299, 3300FF+5d |  | Zenith | 8675064 |
| 3302 | 36900.37000.37100.38500.39300.41500.42300.94300.1466500 | IPS flooring work | 7d | 2026-08-02 | 2026-08-09 | 3286, 3301 |  | Zenith | 8675074 |
| 3303 | 36900.37000.37100.38500.39300.41500.42300.94300.1466600 | Toilet dado work | 6d | 2026-08-02 | 2026-08-08 | 3287, 3300, 3301 |  | Zenith | 8675084 |
| 3304 | 36900.37000.37100.38500.39300.41500.42300.94300.1466700 | Toilet flooring work | 7d | 2026-08-08 | 2026-08-15 | 3288, 3303 |  | Zenith | 8675094 |
| 3305 | 36900.37000.37100.38500.39300.41500.42300.94300.1466800 | False Cieling panel fixing | 7d | 2026-08-15 | 2026-08-22 | 3289, 3304 |  | Zenith | 8675104 |
| 3306 | 36900.37000.37100.38500.39300.41500.42300.94300.1466900 | Living dinning flooring | 7d | 2026-08-15 | 2026-08-22 | 3290, 3304 |  | Zenith | 8675114 |
| 3307 | 36900.37000.37100.38500.39300.41500.42300.94300.1467000 | Putty primer coat | 8d | 2026-08-23 | 2026-08-31 | 3292, 3306 |  | Zenith | 8675124 |
| 3308 | 36900.37000.37100.38500.39300.41500.42300.94300.1467100 | Aluminium door-window fixing | 12d | 2026-09-08 | 2026-09-19 | 3291, 3302, 3306 |  | Zenith | 8675134 |
| 3309 | 36900.37000.37100.38500.39300.41500.42300.94300.1467200 | Door shutter fixing (Pre Hung) | 8d | 2026-08-31 | 2026-09-08 | 3293, 3307 |  | Zenith | 8675144 |
| 3310 | 36900.37000.37100.38500.39300.41500.42300.94300.1467300 | Electrical wiring work | 10d | 2026-09-10 | 2026-09-20 | 3294, 3309 |  | Zenith | 8675154 |
| 3311 | 36900.37000.37100.38500.39300.41500.42300.94300.1467400 | Painting 1st coat | 12d | 2026-10-08 | 2026-10-19 | 3295, 3310 |  | Zenith | 8675164 |

| ID | WBS | Task | Duration | Start | Finish | Predecessors | Constraint | Calendar | Unique_Task_ID |
| --- | --- | --- | --- | --- | --- | --- | --- | --- | --- |
| 3312 | 36900.37000.37100.38500.39300.41500.42300.94400 | **17th floor roof** | 100.75d | 2026-07-23 | 2026-10-31 |  | start no earlier than 2026-07-23 | Zenith | 8649624 |
| 3313 | 36900.37000.37100.38500.39300.41500.42300.94400.1467500 | Block Work | 6d | 2026-07-23 | 2026-07-29 | 3034, 3297 |  | Zenith | 8675174 |
| 3314 | 36900.37000.37100.38500.39300.41500.42300.94400.1467600 | Fire sprinkler pipe fixing | 5d | 2026-07-29 | 2026-08-03 | 3298, 3313 |  | Zenith | 8696194 |
| 3315 | 36900.37000.37100.38500.39300.41500.42300.94400.1467700 | Internal Plumbing Works | 5d | 2026-07-29 | 2026-08-03 | 3299, 3313 |  | Zenith | 8696204 |
| 3316 | 36900.37000.37100.38500.39300.41500.42300.94400.1467800 | Waterproofing | 5d | 2026-08-03 | 2026-08-08 | 3300, 3315 |  | Zenith | 8696214 |
| 3317 | 36900.37000.37100.38500.39300.41500.42300.94400.1467900 | Internal Plaster | 9d | 2026-08-04 | 2026-08-13 | 3301, 3315, 3316FF+5d |  | Zenith | 8696224 |
| 3318 | 36900.37000.37100.38500.39300.41500.42300.94400.1468000 | IPS flooring work | 7d | 2026-08-13 | 2026-08-20 | 3302, 3317 |  | Zenith | 8696234 |
| 3319 | 36900.37000.37100.38500.39300.41500.42300.94400.1468100 | Toilet dado work | 6d | 2026-08-13 | 2026-08-19 | 3303, 3316, 3317 |  | Zenith | 8696244 |
| 3320 | 36900.37000.37100.38500.39300.41500.42300.94400.1468200 | Toilet flooring work | 7d | 2026-08-19 | 2026-08-26 | 3304, 3319 |  | Zenith | 8696254 |
| 3321 | 36900.37000.37100.38500.39300.41500.42300.94400.1468300 | False Cieling panel fixing | 7d | 2026-08-26 | 2026-09-02 | 3305, 3320 |  | Zenith | 8696264 |
| 3322 | 36900.37000.37100.38500.39300.41500.42300.94400.1468400 | Living dinning flooring | 7d | 2026-08-26 | 2026-09-02 | 3306, 3320 |  | Zenith | 8696274 |
| 3323 | 36900.37000.37100.38500.39300.41500.42300.94400.1468500 | Putty primer coat | 8d | 2026-09-02 | 2026-09-10 | 3307, 3322 |  | Zenith | 8696284 |
| 3324 | 36900.37000.37100.38500.39300.41500.42300.94400.1468600 | Aluminium door-window fixing | 12d | 2026-09-20 | 2026-10-01 | 3308, 3318, 3322 |  | Zenith | 8696294 |
| 3325 | 36900.37000.37100.38500.39300.41500.42300.94400.1468700 | Door shutter fixing (Pre Hung) | 8d | 2026-09-10 | 2026-09-18 | 3309, 3323 |  | Zenith | 8696304 |
| 3326 | 36900.37000.37100.38500.39300.41500.42300.94400.1468800 | Electrical wiring work | 10d | 2026-09-20 | 2026-09-30 | 3310, 3325 |  | Zenith | 8696314 |
| 3327 | 36900.37000.37100.38500.39300.41500.42300.94400.1468900 | Painting 1st coat | 12d | 2026-10-20 | 2026-10-31 | 3311, 3326 |  | Zenith | 8696324 |
| 3328 | 36900.37000.37100.38500.39300.41500.42300.94500 | **18th floor roof** | 101.75d | 2026-08-03 | 2026-12-27 |  | start no earlier than 2026-08-03 | Zenith | 8649634 |
| 3329 | 36900.37000.37100.38500.39300.41500.42300.94500.1469000 | Block Work | 6d | 2026-08-03 | 2026-08-09 | 3035, 3313 |  | Zenith | 8696334 |
| 3330 | 36900.37000.37100.38500.39300.41500.42300.94500.1469100 | Fire sprinkler pipe fixing | 5d | 2026-08-09 | 2026-08-14 | 3314, 3329 |  | Zenith | 8696344 |
| 3331 | 36900.37000.37100.38500.39300.41500.42300.94500.1469200 | Internal Plumbing Works | 5d | 2026-08-09 | 2026-08-14 | 3315, 3329 |  | Zenith | 8696354 |
| 3332 | 36900.37000.37100.38500.39300.41500.42300.94500.1469300 | Waterproofing | 5d | 2026-08-14 | 2026-08-19 | 3316, 3331 |  | Zenith | 8696364 |
| 3333 | 36900.37000.37100.38500.39300.41500.42300.94500.1469400 | Internal Plaster | 9d | 2026-08-15 | 2026-08-24 | 3317, 3331, 3332FF+5d |  | Zenith | 8696374 |
| 3334 | 36900.37000.37100.38500.39300.41500.42300.94500.1469500 | IPS flooring work | 7d | 2026-08-24 | 2026-08-31 | 3318, 3333 |  | Zenith | 8696384 |
| 3335 | 36900.37000.37100.38500.39300.41500.42300.94500.1469600 | Toilet dado work | 6d | 2026-08-24 | 2026-08-30 | 3319, 3332, 3333 |  | Zenith | 8696394 |
| 3336 | 36900.37000.37100.38500.39300.41500.42300.94500.1469700 | Toilet flooring work | 7d | 2026-08-30 | 2026-09-06 | 3320, 3335 |  | Zenith | 8696404 |
| 3337 | 36900.37000.37100.38500.39300.41500.42300.94500.1469800 | False Cieling panel fixing | 7d | 2026-09-06 | 2026-09-13 | 3321, 3336 |  | Zenith | 8696414 |
| 3338 | 36900.37000.37100.38500.39300.41500.42300.94500.1469900 | Living dinning flooring | 7d | 2026-09-06 | 2026-09-13 | 3322, 3336 |  | Zenith | 8696424 |
| 3339 | 36900.37000.37100.38500.39300.41500.42300.94500.1470000 | Putty primer coat | 8d | 2026-09-13 | 2026-09-21 | 3323, 3338 |  | Zenith | 8696434 |
| 3340 | 36900.37000.37100.38500.39300.41500.42300.94500.1470100 | Aluminium door-window fixing | 12d | 2026-10-02 | 2026-10-13 | 3324, 3334, 3338 |  | Zenith | 8696444 |
| 3341 | 36900.37000.37100.38500.39300.41500.42300.94500.1470200 | Door shutter fixing (Pre Hung) | 8d | 2026-09-21 | 2026-09-29 | 3325, 3339 |  | Zenith | 8696454 |
| 3342 | 36900.37000.37100.38500.39300.41500.42300.94500.1470300 | Electrical wiring work | 10d | 2026-09-30 | 2026-10-10 | 3326, 3341 |  | Zenith | 8696464 |
| 3343 | 36900.37000.37100.38500.39300.41500.42300.94500.1470400 | Painting 1st coat | 12d | 2026-12-16 | 2026-12-27 | 3327, 3342 |  | Zenith | 8696474 |

| ID | WBS | Task | Duration | Start | Finish | Predecessors | Constraint | Calendar | Unique_Task_ID |
| --- | --- | --- | --- | --- | --- | --- | --- | --- | --- |
| 3344 | 36900.37000.37100.38500.39300.41500.42300.94600 | **19th floor roof** | 102.75d | 2026-08-14 | 2027-01-08 |  | start no earlier than 2026-08-14 | Zenith | 8649644 |
| 3345 | 36900.37000.37100.38500.39300.41500.42300.94600.1470500 | Block Work | 6d | 2026-08-14 | 2026-08-20 | 3036, 3329 |  | Zenith | 8696484 |
| 3346 | 36900.37000.37100.38500.39300.41500.42300.94600.1470600 | Fire sprinkler pipe fixing | 4d | 2026-08-20 | 2026-08-24 | 3330, 3345 |  | Zenith | 8696494 |
| 3347 | 36900.37000.37100.38500.39300.41500.42300.94600.1470700 | Internal Plumbing Works | 4d | 2026-08-20 | 2026-08-24 | 3331, 3345 |  | Zenith | 8696504 |
| 3348 | 36900.37000.37100.38500.39300.41500.42300.94600.1470800 | Waterproofing | 4d | 2026-08-24 | 2026-08-28 | 3332, 3347 |  | Zenith | 8696514 |
| 3349 | 36900.37000.37100.38500.39300.41500.42300.94600.1470900 | Internal Plaster | 9d | 2026-08-24 | 2026-09-02 | 3333, 3347, 3348FF+5d |  | Zenith | 8696524 |
| 3350 | 36900.37000.37100.38500.39300.41500.42300.94600.1471000 | IPS flooring work | 7d | 2026-09-02 | 2026-09-09 | 3334, 3349 |  | Zenith | 8696534 |
| 3351 | 36900.37000.37100.38500.39300.41500.42300.94600.1471100 | Toilet dado work | 6d | 2026-09-02 | 2026-09-08 | 3335, 3348, 3349 |  | Zenith | 8696544 |
| 3352 | 36900.37000.37100.38500.39300.41500.42300.94600.1471200 | Toilet flooring work | 7d | 2026-09-08 | 2026-09-15 | 3336, 3351 |  | Zenith | 8696554 |
| 3353 | 36900.37000.37100.38500.39300.41500.42300.94600.1471300 | False Cieling panel fixing | 7d | 2026-09-15 | 2026-09-22 | 3337, 3352 |  | Zenith | 8696564 |
| 3354 | 36900.37000.37100.38500.39300.41500.42300.94600.1471400 | Living dinning flooring | 7d | 2026-09-15 | 2026-09-22 | 3338, 3352 |  | Zenith | 8696574 |
| 3355 | 36900.37000.37100.38500.39300.41500.42300.94600.1471500 | Putty primer coat | 8d | 2026-09-22 | 2026-09-30 | 3339, 3354 |  | Zenith | 8696584 |
| 3356 | 36900.37000.37100.38500.39300.41500.42300.94600.1471600 | Aluminium door-window fixing | 12d | 2026-10-14 | 2026-10-25 | 3340, 3350, 3354 |  | Zenith | 8696594 |
| 3357 | 36900.37000.37100.38500.39300.41500.42300.94600.1471700 | Door shutter fixing (Pre Hung) | 8d | 2026-09-30 | 2026-10-08 | 3341, 3355 |  | Zenith | 8696604 |
| 3358 | 36900.37000.37100.38500.39300.41500.42300.94600.1471800 | Electrical wiring work | 10d | 2026-10-10 | 2026-10-20 | 3342, 3357 |  | Zenith | 8696614 |
| 3359 | 36900.37000.37100.38500.39300.41500.42300.94600.1471900 | Painting 1st coat | 12d | 2026-12-28 | 2027-01-08 | 3343, 3358 |  | Zenith | 8696624 |
| 3360 | 36900.37000.37100.38500.39300.41500.42300.94700 | **20th floor roof** | 103.75d | 2026-08-25 | 2027-01-20 |  | start no earlier than 2026-08-25 | Zenith | 8649654 |
| 3361 | 36900.37000.37100.38500.39300.41500.42300.94700.1472000 | Block Work | 6d | 2026-08-25 | 2026-08-31 | 3037, 3345 |  | Zenith | 8696634 |
| 3362 | 36900.37000.37100.38500.39300.41500.42300.94700.1472100 | Fire sprinkler pipe fixing | 4d | 2026-08-31 | 2026-09-04 | 3346, 3361 |  | Zenith | 8696644 |
| 3363 | 36900.37000.37100.38500.39300.41500.42300.94700.1472200 | Internal Plumbing Works | 4d | 2026-08-31 | 2026-09-04 | 3347, 3361 |  | Zenith | 8696654 |
| 3364 | 36900.37000.37100.38500.39300.41500.42300.94700.1472300 | Waterproofing | 4d | 2026-09-04 | 2026-09-08 | 3348, 3363 |  | Zenith | 8696664 |
| 3365 | 36900.37000.37100.38500.39300.41500.42300.94700.1472400 | Internal Plaster | 9d | 2026-09-04 | 2026-09-13 | 3349, 3363, 3364FF+5d |  | Zenith | 8696674 |
| 3366 | 36900.37000.37100.38500.39300.41500.42300.94700.1472500 | IPS flooring work | 7d | 2026-09-13 | 2026-09-20 | 3350, 3365 |  | Zenith | 8696684 |
| 3367 | 36900.37000.37100.38500.39300.41500.42300.94700.1472600 | Toilet dado work | 6d | 2026-09-13 | 2026-09-19 | 3351, 3364, 3365 |  | Zenith | 8696694 |
| 3368 | 36900.37000.37100.38500.39300.41500.42300.94700.1472700 | Toilet flooring work | 7d | 2026-09-19 | 2026-09-26 | 3352, 3367 |  | Zenith | 8696704 |
| 3369 | 36900.37000.37100.38500.39300.41500.42300.94700.1472800 | False Cieling panel fixing | 7d | 2026-09-26 | 2026-10-03 | 3353, 3368 |  | Zenith | 8696714 |
| 3370 | 36900.37000.37100.38500.39300.41500.42300.94700.1472900 | Living dinning flooring | 7d | 2026-09-26 | 2026-10-03 | 3354, 3368 |  | Zenith | 8696724 |
| 3371 | 36900.37000.37100.38500.39300.41500.42300.94700.1473000 | Putty primer coat | 8d | 2026-10-03 | 2026-10-11 | 3355, 3370 |  | Zenith | 8696734 |
| 3372 | 36900.37000.37100.38500.39300.41500.42300.94700.1473100 | Aluminium door-window fixing | 12d | 2026-10-26 | 2026-12-21 | 3356, 3366, 3370 |  | Zenith | 8696744 |
| 3373 | 36900.37000.37100.38500.39300.41500.42300.94700.1473200 | Door shutter fixing (Pre Hung) | 8d | 2026-10-11 | 2026-10-19 | 3357, 3371 |  | Zenith | 8696754 |
| 3374 | 36900.37000.37100.38500.39300.41500.42300.94700.1473300 | Electrical wiring work | 10d | 2026-10-20 | 2026-10-30 | 3358, 3373 |  | Zenith | 8696764 |
| 3375 | 36900.37000.37100.38500.39300.41500.42300.94700.1473400 | Painting 1st coat | 12d | 2027-01-09 | 2027-01-20 | 3359, 3374 |  | Zenith | 8696774 |

| ID | WBS | Task | Duration | Start | Finish | Predecessors | Constraint | Calendar | Unique_Task_ID |
| --- | --- | --- | --- | --- | --- | --- | --- | --- | --- |
| 3376 | 36900.37000.37100.38500.39300.41500.42300.94800 | **21st floor roof** | 104.75d | 2026-09-05 | 2027-02-01 |  | start no earlier than 2026-09-05 | Zenith | 8649664 |
| 3377 | 36900.37000.37100.38500.39300.41500.42300.94800.1473500 | Block Work | 6d | 2026-09-05 | 2026-09-11 | 3038, 3361 |  | Zenith | 8696784 |
| 3378 | 36900.37000.37100.38500.39300.41500.42300.94800.1473600 | Fire sprinkler pipe fixing | 4d | 2026-09-11 | 2026-09-15 | 3362, 3377 |  | Zenith | 8696794 |
| 3379 | 36900.37000.37100.38500.39300.41500.42300.94800.1473700 | Internal Plumbing Works | 4d | 2026-09-11 | 2026-09-15 | 3363, 3377 |  | Zenith | 8696804 |
| 3380 | 36900.37000.37100.38500.39300.41500.42300.94800.1473800 | Waterproofing | 4d | 2026-09-15 | 2026-09-19 | 3364, 3379 |  | Zenith | 8696814 |
| 3381 | 36900.37000.37100.38500.39300.41500.42300.94800.1473900 | Internal Plaster | 10d | 2026-09-15 | 2026-09-25 | 3365, 3379, 3380FF+5d |  | Zenith | 8696824 |
| 3382 | 36900.37000.37100.38500.39300.41500.42300.94800.1474000 | IPS flooring work | 7d | 2026-09-25 | 2026-10-02 | 3366, 3381 |  | Zenith | 8696834 |
| 3383 | 36900.37000.37100.38500.39300.41500.42300.94800.1474100 | Toilet dado work | 6d | 2026-09-25 | 2026-10-01 | 3367, 3380, 3381 |  | Zenith | 8696844 |
| 3384 | 36900.37000.37100.38500.39300.41500.42300.94800.1474200 | Toilet flooring work | 7d | 2026-10-01 | 2026-10-08 | 3368, 3383 |  | Zenith | 8696854 |
| 3385 | 36900.37000.37100.38500.39300.41500.42300.94800.1474300 | False Cieling panel fixing | 7d | 2026-10-08 | 2026-10-15 | 3369, 3384 |  | Zenith | 8696864 |
| 3386 | 36900.37000.37100.38500.39300.41500.42300.94800.1474400 | Living dinning flooring | 7d | 2026-10-08 | 2026-10-15 | 3370, 3384 |  | Zenith | 8696874 |
| 3387 | 36900.37000.37100.38500.39300.41500.42300.94800.1474500 | Putty primer coat | 8d | 2026-10-15 | 2026-10-23 | 3371, 3386 |  | Zenith | 8696884 |
| 3388 | 36900.37000.37100.38500.39300.41500.42300.94800.1474600 | Aluminium door-window fixing | 12d | 2026-12-22 | 2027-01-02 | 3372, 3382, 3386 |  | Zenith | 8696894 |
| 3389 | 36900.37000.37100.38500.39300.41500.42300.94800.1474700 | Door shutter fixing (Pre Hung) | 8d | 2026-10-23 | 2026-10-31 | 3373, 3387 |  | Zenith | 8696904 |
| 3390 | 36900.37000.37100.38500.39300.41500.42300.94800.1474800 | Electrical wiring work | 10d | 2026-10-31 | 2026-12-25 | 3374, 3389 |  | Zenith | 8696914 |
| 3391 | 36900.37000.37100.38500.39300.41500.42300.94800.1474900 | Painting 1st coat | 12d | 2027-01-21 | 2027-02-01 | 3375, 3390 |  | Zenith | 8696924 |
| 3392 | 36900.37000.37100.38500.39300.41500.42300.94900 | **22nd floor roof** | 105.75d | 2026-09-16 | 2027-02-13 |  | start no earlier than 2026-09-16 | Zenith | 8649674 |
| 3393 | 36900.37000.37100.38500.39300.41500.42300.94900.1475000 | Block Work | 6d | 2026-09-16 | 2026-09-22 | 3039, 3377 |  | Zenith | 8696934 |
| 3394 | 36900.37000.37100.38500.39300.41500.42300.94900.1475100 | Fire sprinkler pipe fixing | 4d | 2026-09-22 | 2026-09-26 | 3378, 3393 |  | Zenith | 8696944 |
| 3395 | 36900.37000.37100.38500.39300.41500.42300.94900.1475200 | Internal Plumbing Works | 4d | 2026-09-22 | 2026-09-26 | 3379, 3393 |  | Zenith | 8696954 |
| 3396 | 36900.37000.37100.38500.39300.41500.42300.94900.1475300 | Waterproofing | 4d | 2026-09-26 | 2026-09-30 | 3380, 3395 |  | Zenith | 8696964 |
| 3397 | 36900.37000.37100.38500.39300.41500.42300.94900.1475400 | Internal Plaster | 10d | 2026-09-26 | 2026-10-06 | 3381, 3395, 3396FF+5d |  | Zenith | 8696974 |
| 3398 | 36900.37000.37100.38500.39300.41500.42300.94900.1475500 | IPS flooring work | 7d | 2026-10-06 | 2026-10-13 | 3382, 3397 |  | Zenith | 8696984 |
| 3399 | 36900.37000.37100.38500.39300.41500.42300.94900.1475600 | Toilet dado work | 6d | 2026-10-06 | 2026-10-12 | 3383, 3396, 3397 |  | Zenith | 8696994 |
| 3400 | 36900.37000.37100.38500.39300.41500.42300.94900.1475700 | Toilet flooring work | 7d | 2026-10-12 | 2026-10-19 | 3384, 3399 |  | Zenith | 8697004 |
| 3401 | 36900.37000.37100.38500.39300.41500.42300.94900.1475800 | False Cieling panel fixing | 7d | 2026-10-19 | 2026-10-26 | 3385, 3400 |  | Zenith | 8697014 |
| 3402 | 36900.37000.37100.38500.39300.41500.42300.94900.1475900 | Living dinning flooring | 7d | 2026-10-19 | 2026-10-26 | 3386, 3400 |  | Zenith | 8697024 |
| 3403 | 36900.37000.37100.38500.39300.41500.42300.94900.1476000 | Putty primer coat | 8d | 2026-10-26 | 2026-12-18 | 3387, 3402 |  | Zenith | 8697034 |
| 3404 | 36900.37000.37100.38500.39300.41500.42300.94900.1476100 | Aluminium door-window fixing | 12d | 2027-01-03 | 2027-01-14 | 3388, 3398, 3402 |  | Zenith | 8697044 |
| 3405 | 36900.37000.37100.38500.39300.41500.42300.94900.1476200 | Door shutter fixing (Pre Hung) | 8d | 2026-12-18 | 2026-12-26 | 3389, 3403 |  | Zenith | 8697054 |
| 3406 | 36900.37000.37100.38500.39300.41500.42300.94900.1476300 | Electrical wiring work | 10d | 2026-12-26 | 2027-01-05 | 3390, 3405 |  | Zenith | 8697064 |
| 3407 | 36900.37000.37100.38500.39300.41500.42300.94900.1476400 | Painting 1st coat | 12d | 2027-02-02 | 2027-02-13 | 3391, 3406 |  | Zenith | 8697074 |

| ID | WBS | Task | Duration | Start | Finish | Predecessors | Constraint | Calendar | Unique_Task_ID |
| --- | --- | --- | --- | --- | --- | --- | --- | --- | --- |
| 3408 | 36900.37000.37100.38500.39300.41500.42300.95000 | **23rd floor roof** | 106.75d | 2026-09-27 | 2027-02-25 |  | start no earlier than 2026-09-27 | Zenith | 8649684 |
| 3409 | 36900.37000.37100.38500.39300.41500.42300.95000.1476500 | Block Work | 6d | 2026-09-27 | 2026-10-03 | 3040, 3393 |  | Zenith | 8697084 |
| 3410 | 36900.37000.37100.38500.39300.41500.42300.95000.1476600 | Fire sprinkler pipe fixing | 5d | 2026-10-03 | 2026-10-08 | 3394, 3409 |  | Zenith | 8697094 |
| 3411 | 36900.37000.37100.38500.39300.41500.42300.95000.1476700 | Internal Plumbing Works | 5d | 2026-10-03 | 2026-10-08 | 3395, 3409 |  | Zenith | 8697104 |
| 3412 | 36900.37000.37100.38500.39300.41500.42300.95000.1476800 | Waterproofing | 5d | 2026-10-08 | 2026-10-13 | 3396, 3411 |  | Zenith | 8697114 |
| 3413 | 36900.37000.37100.38500.39300.41500.42300.95000.1476900 | Internal Plaster | 9d | 2026-10-09 | 2026-10-18 | 3397, 3411, 3412FF+5d |  | Zenith | 8697124 |
| 3414 | 36900.37000.37100.38500.39300.41500.42300.95000.1477000 | IPS flooring work | 7d | 2026-10-18 | 2026-10-25 | 3398, 3413 |  | Zenith | 8697134 |
| 3415 | 36900.37000.37100.38500.39300.41500.42300.95000.1477100 | Toilet dado work | 6d | 2026-10-18 | 2026-10-24 | 3399, 3412, 3413 |  | Zenith | 8697144 |
| 3416 | 36900.37000.37100.38500.39300.41500.42300.95000.1477200 | Toilet flooring work | 7d | 2026-10-24 | 2026-10-31 | 3400, 3415 |  | Zenith | 8697154 |
| 3417 | 36900.37000.37100.38500.39300.41500.42300.95000.1477300 | False Cieling panel fixing | 7d | 2026-10-31 | 2026-12-22 | 3401, 3416 |  | Zenith | 8697164 |
| 3418 | 36900.37000.37100.38500.39300.41500.42300.95000.1477400 | Living dinning flooring | 7d | 2026-10-31 | 2026-12-22 | 3402, 3416 |  | Zenith | 8697174 |
| 3419 | 36900.37000.37100.38500.39300.41500.42300.95000.1477500 | Putty primer coat | 8d | 2026-12-22 | 2026-12-30 | 3403, 3418 |  | Zenith | 8697184 |
| 3420 | 36900.37000.37100.38500.39300.41500.42300.95000.1477600 | Aluminium door-window fixing | 12d | 2027-01-15 | 2027-01-26 | 3404, 3414, 3418 |  | Zenith | 8697194 |
| 3421 | 36900.37000.37100.38500.39300.41500.42300.95000.1477700 | Door shutter fixing (Pre Hung) | 8d | 2026-12-30 | 2027-01-07 | 3405, 3419 |  | Zenith | 8697204 |
| 3422 | 36900.37000.37100.38500.39300.41500.42300.95000.1477800 | Electrical wiring work | 10d | 2027-01-07 | 2027-01-17 | 3406, 3421 |  | Zenith | 8697214 |
| 3423 | 36900.37000.37100.38500.39300.41500.42300.95000.1477900 | Painting 1st coat | 12d | 2027-02-14 | 2027-02-25 | 3407, 3422 |  | Zenith | 8697224 |
| 3424 | 36900.37000.37100.38500.39300.41500.42300.95100 | **24th floor roof** | 106.75d | 2026-10-09 | 2027-03-09 |  | start no earlier than 2026-10-09 | Zenith | 8649694 |
| 3425 | 36900.37000.37100.38500.39300.41500.42300.95100.1478000 | Block Work | 6d | 2026-10-09 | 2026-10-15 | 3041, 3409 |  | Zenith | 8697234 |
| 3426 | 36900.37000.37100.38500.39300.41500.42300.95100.1478100 | Fire sprinkler pipe fixing | 5d | 2026-10-15 | 2026-10-20 | 3410, 3425 |  | Zenith | 8697244 |
| 3427 | 36900.37000.37100.38500.39300.41500.42300.95100.1478200 | Internal Plumbing Works | 5d | 2026-10-15 | 2026-10-20 | 3411, 3425 |  | Zenith | 8697254 |
| 3428 | 36900.37000.37100.38500.39300.41500.42300.95100.1478300 | Waterproofing | 5d | 2026-10-20 | 2026-10-25 | 3412, 3427 |  | Zenith | 8697264 |
| 3429 | 36900.37000.37100.38500.39300.41500.42300.95100.1478400 | Internal Plaster | 9d | 2026-10-21 | 2026-10-30 | 3413, 3427, 3428FF+5d |  | Zenith | 8697274 |
| 3430 | 36900.37000.37100.38500.39300.41500.42300.95100.1478500 | IPS flooring work | 7d | 2026-10-30 | 2026-12-21 | 3414, 3429 |  | Zenith | 8697284 |
| 3431 | 36900.37000.37100.38500.39300.41500.42300.95100.1478600 | Toilet dado work | 6d | 2026-10-30 | 2026-12-20 | 3415, 3428, 3429 |  | Zenith | 8697294 |
| 3432 | 36900.37000.37100.38500.39300.41500.42300.95100.1478700 | Toilet flooring work | 7d | 2026-12-20 | 2026-12-27 | 3416, 3431 |  | Zenith | 8697304 |
| 3433 | 36900.37000.37100.38500.39300.41500.42300.95100.1478800 | False Cieling panel fixing | 7d | 2026-12-27 | 2027-01-03 | 3417, 3432 |  | Zenith | 8697314 |
| 3434 | 36900.37000.37100.38500.39300.41500.42300.95100.1478900 | Living dinning flooring | 7d | 2026-12-27 | 2027-01-03 | 3418, 3432 |  | Zenith | 8697324 |
| 3435 | 36900.37000.37100.38500.39300.41500.42300.95100.1479000 | Putty primer coat | 8d | 2027-01-03 | 2027-01-11 | 3419, 3434 |  | Zenith | 8697334 |
| 3436 | 36900.37000.37100.38500.39300.41500.42300.95100.1479100 | Aluminium door-window fixing | 12d | 2027-01-27 | 2027-02-07 | 3420, 3430, 3434 |  | Zenith | 8697344 |
| 3437 | 36900.37000.37100.38500.39300.41500.42300.95100.1479200 | Door shutter fixing (Pre Hung) | 8d | 2027-01-11 | 2027-01-19 | 3421, 3435 |  | Zenith | 8697354 |
| 3438 | 36900.37000.37100.38500.39300.41500.42300.95100.1479300 | Electrical wiring work | 10d | 2027-01-19 | 2027-01-29 | 3422, 3437 |  | Zenith | 8697364 |
| 3439 | 36900.37000.37100.38500.39300.41500.42300.95100.1479400 | Painting 1st coat | 12d | 2027-02-26 | 2027-03-09 | 3423, 3438 |  | Zenith | 8697374 |

| ID | WBS | Task | Duration | Start | Finish | Predecessors | Constraint | Calendar | Unique_Task_ID |
| --- | --- | --- | --- | --- | --- | --- | --- | --- | --- |
| 3440 | 36900.37000.37100.38500.39300.41500.42300.95200 | **25th floor roof** | 107.75d | 2026-10-20 | 2027-03-21 |  | start no earlier than 2026-10-20 | Zenith | 8649704 |
| 3441 | 36900.37000.37100.38500.39300.41500.42300.95200.1479500 | Block Work | 6d | 2026-10-20 | 2026-10-26 | 3042, 3425 |  | Zenith | 8697384 |
| 3442 | 36900.37000.37100.38500.39300.41500.42300.95200.1479600 | Fire sprinkler pipe fixing | 5d | 2026-10-26 | 2026-10-31 | 3426, 3441 |  | Zenith | 8697394 |
| 3443 | 36900.37000.37100.38500.39300.41500.42300.95200.1479700 | Internal Plumbing Works | 5d | 2026-10-26 | 2026-10-31 | 3427, 3441 |  | Zenith | 8697404 |
| 3444 | 36900.37000.37100.38500.39300.41500.42300.95200.1479800 | Waterproofing | 5d | 2026-10-31 | 2026-12-20 | 3428, 3443 |  | Zenith | 8697414 |
| 3445 | 36900.37000.37100.38500.39300.41500.42300.95200.1479900 | Internal Plaster | 9d | 2026-12-16 | 2026-12-25 | 3429, 3443, 3444FF+5d |  | Zenith | 8697424 |
| 3446 | 36900.37000.37100.38500.39300.41500.42300.95200.1480000 | IPS flooring work | 7d | 2026-12-25 | 2027-01-01 | 3430, 3445 |  | Zenith | 8697434 |
| 3447 | 36900.37000.37100.38500.39300.41500.42300.95200.1480100 | Toilet dado work | 6d | 2026-12-25 | 2026-12-31 | 3431, 3444, 3445 |  | Zenith | 8697444 |
| 3448 | 36900.37000.37100.38500.39300.41500.42300.95200.1480200 | Toilet flooring work | 7d | 2026-12-31 | 2027-01-07 | 3432, 3447 |  | Zenith | 8697454 |
| 3449 | 36900.37000.37100.38500.39300.41500.42300.95200.1480300 | False Cieling panel fixing | 7d | 2027-01-07 | 2027-01-14 | 3433, 3448 |  | Zenith | 8697464 |
| 3450 | 36900.37000.37100.38500.39300.41500.42300.95200.1480400 | Living dinning flooring | 7d | 2027-01-07 | 2027-01-14 | 3434, 3448 |  | Zenith | 8697474 |
| 3451 | 36900.37000.37100.38500.39300.41500.42300.95200.1480500 | Putty primer coat | 8d | 2027-01-14 | 2027-01-22 | 3435, 3450 |  | Zenith | 8697484 |
| 3452 | 36900.37000.37100.38500.39300.41500.42300.95200.1480600 | Aluminium door-window fixing | 12d | 2027-02-08 | 2027-02-19 | 3436, 3446, 3450 |  | Zenith | 8697494 |
| 3453 | 36900.37000.37100.38500.39300.41500.42300.95200.1480700 | Door shutter fixing (Pre Hung) | 8d | 2027-01-22 | 2027-01-30 | 3437, 3451 |  | Zenith | 8697504 |
| 3454 | 36900.37000.37100.38500.39300.41500.42300.95200.1480800 | Electrical wiring work | 10d | 2027-01-30 | 2027-02-09 | 3438, 3453 |  | Zenith | 8697514 |
| 3455 | 36900.37000.37100.38500.39300.41500.42300.95200.1480900 | Painting 1st coat | 12d | 2027-03-10 | 2027-03-21 | 3439, 3454 |  | Zenith | 8697524 |
| 3456 | 36900.37000.37100.38500.39300.41500.42300.95300 | **26th floor roof** | 104.75d | 2026-12-19 | 2027-04-02 |  | start no earlier than 2026-12-19 | Zenith | 8649714 |
| 3457 | 36900.37000.37100.38500.39300.41500.42300.95300.1481000 | Block Work | 7d | 2026-12-19 | 2026-12-26 | 3043, 3441 |  | Zenith | 8697534 |
| 3458 | 36900.37000.37100.38500.39300.41500.42300.95300.1481100 | Fire sprinkler pipe fixing | 7d | 2026-12-26 | 2027-01-02 | 3442, 3457 |  | Zenith | 8697544 |
| 3459 | 36900.37000.37100.38500.39300.41500.42300.95300.1481200 | Internal Plumbing Works | 7d | 2026-12-26 | 2027-01-02 | 3443, 3457 |  | Zenith | 8697554 |
| 3460 | 36900.37000.37100.38500.39300.41500.42300.95300.1481300 | Waterproofing | 7d | 2027-01-02 | 2027-01-09 | 3444, 3459 |  | Zenith | 8697564 |
| 3461 | 36900.37000.37100.38500.39300.41500.42300.95300.1481400 | Internal Plaster | 7d | 2027-01-07 | 2027-01-14 | 3445, 3459, 3460FF+5d |  | Zenith | 8697574 |
| 3462 | 36900.37000.37100.38500.39300.41500.42300.95300.1481500 | IPS flooring work | 7d | 2027-01-14 | 2027-01-21 | 3446, 3461 |  | Zenith | 8697584 |
| 3463 | 36900.37000.37100.38500.39300.41500.42300.95300.1481600 | Toilet dado work | 6d | 2027-01-14 | 2027-01-20 | 3447, 3460, 3461 |  | Zenith | 8697594 |
| 3464 | 36900.37000.37100.38500.39300.41500.42300.95300.1481700 | Toilet flooring work | 7d | 2027-01-20 | 2027-01-27 | 3448, 3463 |  | Zenith | 8697604 |
| 3465 | 36900.37000.37100.38500.39300.41500.42300.95300.1481800 | False Cieling panel fixing | 7d | 2027-01-27 | 2027-02-03 | 3449, 3464 |  | Zenith | 8697614 |
| 3466 | 36900.37000.37100.38500.39300.41500.42300.95300.1481900 | Living dinning flooring | 7d | 2027-01-27 | 2027-02-03 | 3450, 3464 |  | Zenith | 8697624 |
| 3467 | 36900.37000.37100.38500.39300.41500.42300.95300.1482000 | Putty primer coat | 8d | 2027-02-03 | 2027-02-11 | 3451, 3466 |  | Zenith | 8697634 |
| 3468 | 36900.37000.37100.38500.39300.41500.42300.95300.1482100 | Aluminium door-window fixing | 12d | 2027-02-20 | 2027-03-03 | 3452, 3462, 3466 |  | Zenith | 8697644 |
| 3469 | 36900.37000.37100.38500.39300.41500.42300.95300.1482200 | Door shutter fixing (Pre Hung) | 8d | 2027-02-11 | 2027-02-19 | 3453, 3467 |  | Zenith | 8697654 |
| 3470 | 36900.37000.37100.38500.39300.41500.42300.95300.1482300 | Electrical wiring work | 10d | 2027-02-19 | 2027-03-01 | 3454, 3469 |  | Zenith | 8697664 |
| 3471 | 36900.37000.37100.38500.39300.41500.42300.95300.1482400 | Painting 1st coat | 12d | 2027-03-22 | 2027-04-02 | 3455, 3470 |  | Zenith | 8697674 |

| ID | WBS | Task | Duration | Start | Finish | Predecessors | Constraint | Calendar | Unique_Task_ID |
| --- | --- | --- | --- | --- | --- | --- | --- | --- | --- |
| 3472 | 36900.37000.37100.38500.39300.41500.42300.95400 | **27th floor roof** | 105.75d | 2026-12-30 | 2027-04-14 |  | start no earlier than 2026-12-30 | Zenith | 8649724 |
| 3473 | 36900.37000.37100.38500.39300.41500.42300.95400.1482500 | Block Work | 7d | 2026-12-30 | 2027-01-06 | 3044, 3457 |  | Zenith | 8697684 |
| 3474 | 36900.37000.37100.38500.39300.41500.42300.95400.1482600 | Fire sprinkler pipe fixing | 7d | 2027-01-06 | 2027-01-13 | 3458, 3473 |  | Zenith | 8697694 |
| 3475 | 36900.37000.37100.38500.39300.41500.42300.95400.1482700 | Internal Plumbing Works | 7d | 2027-01-06 | 2027-01-13 | 3459, 3473 |  | Zenith | 8697704 |
| 3476 | 36900.37000.37100.38500.39300.41500.42300.95400.1482800 | Waterproofing | 7d | 2027-01-13 | 2027-01-20 | 3460, 3475 |  | Zenith | 8697714 |
| 3477 | 36900.37000.37100.38500.39300.41500.42300.95400.1482900 | Internal Plaster | 7d | 2027-01-18 | 2027-01-25 | 3461, 3475, 3476FF+5d |  | Zenith | 8697724 |
| 3478 | 36900.37000.37100.38500.39300.41500.42300.95400.1483000 | IPS flooring work | 7d | 2027-01-25 | 2027-02-01 | 3462, 3477 |  | Zenith | 8697734 |
| 3479 | 36900.37000.37100.38500.39300.41500.42300.95400.1483100 | Toilet dado work | 6d | 2027-01-25 | 2027-01-31 | 3463, 3476, 3477 |  | Zenith | 8697744 |
| 3480 | 36900.37000.37100.38500.39300.41500.42300.95400.1483200 | Toilet flooring work | 7d | 2027-01-31 | 2027-02-07 | 3464, 3479 |  | Zenith | 8697754 |
| 3481 | 36900.37000.37100.38500.39300.41500.42300.95400.1483300 | False Cieling panel fixing | 7d | 2027-02-07 | 2027-02-14 | 3465, 3480 |  | Zenith | 8697764 |
| 3482 | 36900.37000.37100.38500.39300.41500.42300.95400.1483400 | Living dinning flooring | 7d | 2027-02-07 | 2027-02-14 | 3466, 3480 |  | Zenith | 8697774 |
| 3483 | 36900.37000.37100.38500.39300.41500.42300.95400.1483500 | Putty primer coat | 8d | 2027-02-14 | 2027-02-22 | 3467, 3482 |  | Zenith | 8697784 |
| 3484 | 36900.37000.37100.38500.39300.41500.42300.95400.1483600 | Aluminium door-window fixing | 12d | 2027-03-04 | 2027-03-15 | 3468, 3478, 3482 |  | Zenith | 8697794 |
| 3485 | 36900.37000.37100.38500.39300.41500.42300.95400.1483700 | Door shutter fixing (Pre Hung) | 8d | 2027-02-22 | 2027-03-02 | 3469, 3483 |  | Zenith | 8697804 |
| 3486 | 36900.37000.37100.38500.39300.41500.42300.95400.1483800 | Electrical wiring work | 10d | 2027-03-02 | 2027-03-12 | 3470, 3485 |  | Zenith | 8697814 |
| 3487 | 36900.37000.37100.38500.39300.41500.42300.95400.1483900 | Painting 1st coat | 12d | 2027-04-03 | 2027-04-14 | 3471, 3486 |  | Zenith | 8697824 |
| 3488 | 36900.37000.37100.38500.39300.41500.42300.95500 | **28th floor roof** | 106.75d | 2027-01-10 | 2027-04-26 |  | start no earlier than 2027-01-10 | Zenith | 8649734 |
| 3489 | 36900.37000.37100.38500.39300.41500.42300.95500.1484000 | Block Work | 7d | 2027-01-10 | 2027-01-17 | 3045, 3473 |  | Zenith | 8697834 |
| 3490 | 36900.37000.37100.38500.39300.41500.42300.95500.1484100 | Fire sprinkler pipe fixing | 7d | 2027-01-17 | 2027-01-24 | 3474, 3489 |  | Zenith | 8697844 |
| 3491 | 36900.37000.37100.38500.39300.41500.42300.95500.1484200 | Internal Plumbing Works | 7d | 2027-01-17 | 2027-01-24 | 3475, 3489 |  | Zenith | 8697854 |
| 3492 | 36900.37000.37100.38500.39300.41500.42300.95500.1484300 | Waterproofing | 7d | 2027-01-24 | 2027-01-31 | 3476, 3491 |  | Zenith | 8697864 |
| 3493 | 36900.37000.37100.38500.39300.41500.42300.95500.1484400 | Internal Plaster | 7d | 2027-01-29 | 2027-02-05 | 3477, 3491, 3492FF+5d |  | Zenith | 8697874 |
| 3494 | 36900.37000.37100.38500.39300.41500.42300.95500.1484500 | IPS flooring work | 7d | 2027-02-05 | 2027-02-12 | 3478, 3493 |  | Zenith | 8697884 |
| 3495 | 36900.37000.37100.38500.39300.41500.42300.95500.1484600 | Toilet dado work | 6d | 2027-02-05 | 2027-02-11 | 3479, 3492, 3493 |  | Zenith | 8697894 |
| 3496 | 36900.37000.37100.38500.39300.41500.42300.95500.1484700 | Toilet flooring work | 7d | 2027-02-11 | 2027-02-18 | 3480, 3495 |  | Zenith | 8697904 |
| 3497 | 36900.37000.37100.38500.39300.41500.42300.95500.1484800 | False Cieling panel fixing | 7d | 2027-02-18 | 2027-02-25 | 3481, 3496 |  | Zenith | 8697914 |
| 3498 | 36900.37000.37100.38500.39300.41500.42300.95500.1484900 | Living dinning flooring | 7d | 2027-02-18 | 2027-02-25 | 3482, 3496 |  | Zenith | 8697924 |
| 3499 | 36900.37000.37100.38500.39300.41500.42300.95500.1485000 | Putty primer coat | 8d | 2027-02-25 | 2027-03-05 | 3483, 3498 |  | Zenith | 8697934 |
| 3500 | 36900.37000.37100.38500.39300.41500.42300.95500.1485100 | Aluminium door-window fixing | 12d | 2027-03-16 | 2027-03-27 | 3484, 3494, 3498 |  | Zenith | 8697944 |
| 3501 | 36900.37000.37100.38500.39300.41500.42300.95500.1485200 | Door shutter fixing (Pre Hung) | 8d | 2027-03-05 | 2027-03-13 | 3485, 3499 |  | Zenith | 8697954 |
| 3502 | 36900.37000.37100.38500.39300.41500.42300.95500.1485300 | Electrical wiring work | 10d | 2027-03-13 | 2027-03-23 | 3486, 3501 |  | Zenith | 8697964 |
| 3503 | 36900.37000.37100.38500.39300.41500.42300.95500.1485400 | Painting 1st coat | 12d | 2027-04-15 | 2027-04-26 | 3487, 3502 |  | Zenith | 8697974 |

| ID | WBS | Task | Duration | Start | Finish | Predecessors | Constraint | Calendar | Unique_Task_ID |
| --- | --- | --- | --- | --- | --- | --- | --- | --- | --- |
| 3504 | 36900.37000.37100.38500.39300.41500.42300.95600 | **29th floor roof** | 107.75d | 2027-01-21 | 2027-05-08 |  | start no earlier than 2027-01-21 | Zenith | 8649744 |
| 3505 | 36900.37000.37100.38500.39300.41500.42300.95600.1485500 | Block Work | 7d | 2027-01-21 | 2027-01-28 | 3046, 3489 |  | Zenith | 8697984 |
| 3506 | 36900.37000.37100.38500.39300.41500.42300.95600.1485600 | Fire sprinkler pipe fixing | 7d | 2027-01-28 | 2027-02-04 | 3490, 3505 |  | Zenith | 8697994 |
| 3507 | 36900.37000.37100.38500.39300.41500.42300.95600.1485700 | Internal Plumbing Works | 7d | 2027-01-28 | 2027-02-04 | 3491, 3505 |  | Zenith | 8698004 |
| 3508 | 36900.37000.37100.38500.39300.41500.42300.95600.1485800 | Waterproofing | 7d | 2027-02-04 | 2027-02-11 | 3492, 3507 |  | Zenith | 8698014 |
| 3509 | 36900.37000.37100.38500.39300.41500.42300.95600.1485900 | Internal Plaster | 7d | 2027-02-09 | 2027-02-16 | 3493, 3507, 3508FF+5d |  | Zenith | 8698024 |
| 3510 | 36900.37000.37100.38500.39300.41500.42300.95600.1486000 | IPS flooring work | 7d | 2027-02-16 | 2027-02-23 | 3494, 3509 |  | Zenith | 8698034 |
| 3511 | 36900.37000.37100.38500.39300.41500.42300.95600.1486100 | Toilet dado work | 6d | 2027-02-16 | 2027-02-22 | 3495, 3508, 3509 |  | Zenith | 8698044 |
| 3512 | 36900.37000.37100.38500.39300.41500.42300.95600.1486200 | Toilet flooring work | 7d | 2027-02-22 | 2027-03-01 | 3496, 3511 |  | Zenith | 8698054 |
| 3513 | 36900.37000.37100.38500.39300.41500.42300.95600.1486300 | False Cieling panel fixing | 7d | 2027-03-01 | 2027-03-08 | 3497, 3512 |  | Zenith | 8698064 |
| 3514 | 36900.37000.37100.38500.39300.41500.42300.95600.1486400 | Living dinning flooring | 7d | 2027-03-01 | 2027-03-08 | 3498, 3512 |  | Zenith | 8698074 |
| 3515 | 36900.37000.37100.38500.39300.41500.42300.95600.1486500 | Putty primer coat | 8d | 2027-03-08 | 2027-03-16 | 3499, 3514 |  | Zenith | 8698084 |
| 3516 | 36900.37000.37100.38500.39300.41500.42300.95600.1486600 | Aluminium door-window fixing | 12d | 2027-03-28 | 2027-04-08 | 3500, 3510, 3514 |  | Zenith | 8698094 |
| 3517 | 36900.37000.37100.38500.39300.41500.42300.95600.1486700 | Door shutter fixing (Pre Hung) | 8d | 2027-03-16 | 2027-03-24 | 3501, 3515 |  | Zenith | 8698104 |
| 3518 | 36900.37000.37100.38500.39300.41500.42300.95600.1486800 | Electrical wiring work | 10d | 2027-03-24 | 2027-04-03 | 3502, 3517 |  | Zenith | 8698114 |
| 3519 | 36900.37000.37100.38500.39300.41500.42300.95600.1486900 | Painting 1st coat | 12d | 2027-04-27 | 2027-05-08 | 3503, 3518 |  | Zenith | 8698124 |
| 3520 | 36900.37000.37100.38500.39300.41500.42300.95700 | **30th floor roof** | 116d | 2027-02-01 | 2027-05-28 |  | start no earlier than 2027-02-01 | Zenith | 8649754 |
| 3521 | 36900.37000.37100.38500.39300.41500.42300.95700.1487000 | Block Work | 10d | 2027-02-01 | 2027-02-11 | 3047, 3505 |  | Zenith | 8698134 |
| 3522 | 36900.37000.37100.38500.39300.41500.42300.95700.1487100 | Fire sprinkler pipe fixing | 6d | 2027-02-11 | 2027-02-17 | 3506, 3521 |  | Zenith | 8698144 |
| 3523 | 36900.37000.37100.38500.39300.41500.42300.95700.1487200 | Internal Plumbing Works | 10d | 2027-02-11 | 2027-02-21 | 3507, 3521 |  | Zenith | 8698154 |
| 3524 | 36900.37000.37100.38500.39300.41500.42300.95700.1487300 | Waterproofing | 14d | 2027-02-21 | 2027-03-07 | 3508, 3523 |  | Zenith | 8698164 |
| 3525 | 36900.37000.37100.38500.39300.41500.42300.95700.1487400 | Internal Plaster | 14d | 2027-02-26 | 2027-03-12 | 3509, 3523, 3524FF+5d |  | Zenith | 8698174 |
| 3526 | 36900.37000.37100.38500.39300.41500.42300.95700.1487500 | IPS flooring work | 10d | 2027-03-12 | 2027-03-22 | 3510, 3525 |  | Zenith | 8698184 |
| 3527 | 36900.37000.37100.38500.39300.41500.42300.95700.1487600 | Toilet dado work | 10d | 2027-03-12 | 2027-03-22 | 3511, 3524, 3525 |  | Zenith | 8698194 |
| 3528 | 36900.37000.37100.38500.39300.41500.42300.95700.1487700 | Toilet flooring work | 7d | 2027-03-22 | 2027-03-29 | 3512, 3527 |  | Zenith | 8698204 |
| 3529 | 36900.37000.37100.38500.39300.41500.42300.95700.1487800 | False Cieling panel fixing | 10d | 2027-03-29 | 2027-04-08 | 3513, 3528 |  | Zenith | 8698214 |
| 3530 | 36900.37000.37100.38500.39300.41500.42300.95700.1487900 | Living dinning flooring | 13d | 2027-03-29 | 2027-04-11 | 3514, 3528 |  | Zenith | 8698224 |
| 3531 | 36900.37000.37100.38500.39300.41500.42300.95700.1488000 | Putty primer coat | 12d | 2027-04-11 | 2027-04-23 | 3515, 3530 |  | Zenith | 8698234 |
| 3532 | 36900.37000.37100.38500.39300.41500.42300.95700.1488100 | Aluminium door-window fixing | 15d | 2027-04-11 | 2027-04-26 | 3516, 3526, 3530 |  | Zenith | 8698244 |
| 3533 | 36900.37000.37100.38500.39300.41500.42300.95700.1488200 | Door shutter fixing (Pre Hung) | 8d | 2027-04-23 | 2027-05-01 | 3517, 3531 |  | Zenith | 8698254 |
| 3534 | 36900.37000.37100.38500.39300.41500.42300.95700.1488300 | Electrical wiring work | 12d | 2027-05-01 | 2027-05-13 | 3518, 3533 |  | Zenith | 8698264 |
| 3535 | 36900.37000.37100.38500.39300.41500.42300.95700.1488400 | Painting 1st coat | 15d | 2027-05-13 | 2027-05-28 | 3519, 3534 |  | Zenith | 8698274 |

| ID | WBS | Task | Duration | Start | Finish | Predecessors | Constraint | Calendar | Unique_Task_ID |
| --- | --- | --- | --- | --- | --- | --- | --- | --- | --- |
| 3536 | 36900.37000.37100.38500.39300.41500.42300.95800 | **31st floor roof** | 116d | 2027-02-16 | 2027-06-12 |  | start no earlier than 2027-02-16 | Zenith | 8649764 |
| 3537 | 36900.37000.37100.38500.39300.41500.42300.95800.1488500 | Block Work | 10d | 2027-02-16 | 2027-02-26 | 3048, 3521 |  | Zenith | 8698284 |
| 3538 | 36900.37000.37100.38500.39300.41500.42300.95800.1488600 | Fire sprinkler pipe fixing | 6d | 2027-02-26 | 2027-03-04 | 3522, 3537 |  | Zenith | 8698294 |
| 3539 | 36900.37000.37100.38500.39300.41500.42300.95800.1488700 | Internal Plumbing Works | 10d | 2027-02-26 | 2027-03-08 | 3523, 3537 |  | Zenith | 8698304 |
| 3540 | 36900.37000.37100.38500.39300.41500.42300.95800.1488800 | Waterproofing | 14d | 2027-03-08 | 2027-03-22 | 3524, 3539 |  | Zenith | 8698314 |
| 3541 | 36900.37000.37100.38500.39300.41500.42300.95800.1488900 | Internal Plaster | 14d | 2027-03-13 | 2027-03-27 | 3525, 3539, 3540FF+5d |  | Zenith | 8698324 |
| 3542 | 36900.37000.37100.38500.39300.41500.42300.95800.1489000 | IPS flooring work | 10d | 2027-03-27 | 2027-04-06 | 3526, 3541 |  | Zenith | 8698334 |
| 3543 | 36900.37000.37100.38500.39300.41500.42300.95800.1489100 | Toilet dado work | 10d | 2027-03-27 | 2027-04-06 | 3527, 3540, 3541 |  | Zenith | 8698344 |
| 3544 | 36900.37000.37100.38500.39300.41500.42300.95800.1489200 | Toilet flooring work | 7d | 2027-04-06 | 2027-04-13 | 3528, 3543 |  | Zenith | 8698354 |
| 3545 | 36900.37000.37100.38500.39300.41500.42300.95800.1489300 | False Cieling panel fixing | 10d | 2027-04-13 | 2027-04-23 | 3529, 3544 |  | Zenith | 8698364 |
| 3546 | 36900.37000.37100.38500.39300.41500.42300.95800.1489400 | Living dinning flooring | 13d | 2027-04-13 | 2027-04-26 | 3530, 3544 |  | Zenith | 8698374 |
| 3547 | 36900.37000.37100.38500.39300.41500.42300.95800.1489500 | Putty primer coat | 12d | 2027-04-26 | 2027-05-08 | 3531, 3546 |  | Zenith | 8698384 |
| 3548 | 36900.37000.37100.38500.39300.41500.42300.95800.1489600 | Aluminium door-window fixing | 15d | 2027-04-26 | 2027-05-11 | 3532, 3542, 3546 |  | Zenith | 8698394 |
| 3549 | 36900.37000.37100.38500.39300.41500.42300.95800.1489700 | Door shutter fixing (Pre Hung) | 8d | 2027-05-08 | 2027-05-16 | 3533, 3547 |  | Zenith | 8698404 |
| 3550 | 36900.37000.37100.38500.39300.41500.42300.95800.1489800 | Electrical wiring work | 12d | 2027-05-16 | 2027-05-28 | 3534, 3549 |  | Zenith | 8698414 |
| 3551 | 36900.37000.37100.38500.39300.41500.42300.95800.1489900 | Painting 1st coat | 15d | 2027-05-28 | 2027-06-12 | 3535, 3550 |  | Zenith | 8698424 |
| 3552 | 36900.37000.37100.38500.39300.41500.42300.95900 | **32nd floor roof** | 121d | 2027-02-26 | 2027-06-27 |  | start no earlier than 2027-02-26 | Zenith | 8649774 |
| 3553 | 36900.37000.37100.38500.39300.41500.42300.95900.1490000 | Block Work | 10d | 2027-02-26 | 2027-03-08 | 3049, 3537 |  | Zenith | 8698434 |
| 3554 | 36900.37000.37100.38500.39300.41500.42300.95900.1490100 | Fire sprinkler pipe fixing | 6d | 2027-03-08 | 2027-03-14 | 3538, 3553 |  | Zenith | 8698444 |
| 3555 | 36900.37000.37100.38500.39300.41500.42300.95900.1490200 | Internal Plumbing Works | 10d | 2027-03-08 | 2027-03-18 | 3539, 3553 |  | Zenith | 8698454 |
| 3556 | 36900.37000.37100.38500.39300.41500.42300.95900.1490300 | Waterproofing | 14d | 2027-03-22 | 2027-04-05 | 3540, 3555 |  | Zenith | 8698464 |
| 3557 | 36900.37000.37100.38500.39300.41500.42300.95900.1490400 | Internal Plaster | 14d | 2027-03-27 | 2027-04-10 | 3541, 3555, 3556FF+5d |  | Zenith | 8698474 |
| 3558 | 36900.37000.37100.38500.39300.41500.42300.95900.1490500 | IPS flooring work | 10d | 2027-04-10 | 2027-04-20 | 3542, 3557 |  | Zenith | 8698484 |
| 3559 | 36900.37000.37100.38500.39300.41500.42300.95900.1490600 | Toilet dado work | 10d | 2027-04-10 | 2027-04-20 | 3543, 3556, 3557 |  | Zenith | 8698494 |
| 3560 | 36900.37000.37100.38500.39300.41500.42300.95900.1490700 | Toilet flooring work | 7d | 2027-04-20 | 2027-04-27 | 3544, 3559 |  | Zenith | 8698504 |
| 3561 | 36900.37000.37100.38500.39300.41500.42300.95900.1490800 | False Cieling panel fixing | 10d | 2027-04-27 | 2027-05-07 | 3545, 3560 |  | Zenith | 8698514 |
| 3562 | 36900.37000.37100.38500.39300.41500.42300.95900.1490900 | Living dinning flooring | 13d | 2027-04-27 | 2027-05-10 | 3546, 3560 |  | Zenith | 8698524 |
| 3563 | 36900.37000.37100.38500.39300.41500.42300.95900.1491000 | Putty primer coat | 12d | 2027-05-10 | 2027-05-22 | 3547, 3562 |  | Zenith | 8698534 |
| 3564 | 36900.37000.37100.38500.39300.41500.42300.95900.1491100 | Aluminium door-window fixing | 15d | 2027-05-11 | 2027-05-26 | 3548, 3558, 3562 |  | Zenith | 8698544 |
| 3565 | 36900.37000.37100.38500.39300.41500.42300.95900.1491200 | Door shutter fixing (Pre Hung) | 8d | 2027-05-22 | 2027-05-30 | 3549, 3563 |  | Zenith | 8698554 |
| 3566 | 36900.37000.37100.38500.39300.41500.42300.95900.1491300 | Electrical wiring work | 12d | 2027-05-30 | 2027-06-11 | 3550, 3565 |  | Zenith | 8698564 |
| 3567 | 36900.37000.37100.38500.39300.41500.42300.95900.1491400 | Painting 1st coat | 15d | 2027-06-12 | 2027-06-27 | 3551, 3566 |  | Zenith | 8698574 |

| ID | WBS | Task | Duration | Start | Finish | Predecessors | Constraint | Calendar | Unique_Task_ID |
| --- | --- | --- | --- | --- | --- | --- | --- | --- | --- |
| 3568 | 36900.37000.37100.38500.39300.41500.42300.96000 | **33rd floor roof** | 126d | 2027-03-08 | 2027-07-12 |  | start no earlier than 2027-03-08 | Zenith | 8649784 |
| 3569 | 36900.37000.37100.38500.39300.41500.42300.96000.1491500 | Block Work | 10d | 2027-03-08 | 2027-03-18 | 3050, 3553 |  | Zenith | 8698584 |
| 3570 | 36900.37000.37100.38500.39300.41500.42300.96000.1491600 | Fire sprinkler pipe fixing | 6d | 2027-03-18 | 2027-03-24 | 3554, 3569 |  | Zenith | 8698594 |
| 3571 | 36900.37000.37100.38500.39300.41500.42300.96000.1491700 | Internal Plumbing Works | 10d | 2027-03-18 | 2027-03-28 | 3555, 3569 |  | Zenith | 8698604 |
| 3572 | 36900.37000.37100.38500.39300.41500.42300.96000.1491800 | Waterproofing | 14d | 2027-04-05 | 2027-04-19 | 3556, 3571 |  | Zenith | 8698614 |
| 3573 | 36900.37000.37100.38500.39300.41500.42300.96000.1491900 | Internal Plaster | 14d | 2027-04-10 | 2027-04-24 | 3557, 3571, 3572FF+5d |  | Zenith | 8698624 |
| 3574 | 36900.37000.37100.38500.39300.41500.42300.96000.1492000 | IPS flooring work | 10d | 2027-04-24 | 2027-05-04 | 3558, 3573 |  | Zenith | 8698634 |
| 3575 | 36900.37000.37100.38500.39300.41500.42300.96000.1492100 | Toilet dado work | 10d | 2027-04-24 | 2027-05-04 | 3559, 3572, 3573 |  | Zenith | 8698644 |
| 3576 | 36900.37000.37100.38500.39300.41500.42300.96000.1492200 | Toilet flooring work | 7d | 2027-05-04 | 2027-05-11 | 3560, 3575 |  | Zenith | 8698654 |
| 3577 | 36900.37000.37100.38500.39300.41500.42300.96000.1492300 | False Cieling panel fixing | 10d | 2027-05-11 | 2027-05-21 | 3561, 3576 |  | Zenith | 8698664 |
| 3578 | 36900.37000.37100.38500.39300.41500.42300.96000.1492400 | Living dinning flooring | 13d | 2027-05-11 | 2027-05-24 | 3562, 3576 |  | Zenith | 8698674 |
| 3579 | 36900.37000.37100.38500.39300.41500.42300.96000.1492500 | Putty primer coat | 12d | 2027-05-24 | 2027-06-05 | 3563, 3578 |  | Zenith | 8698684 |
| 3580 | 36900.37000.37100.38500.39300.41500.42300.96000.1492600 | Aluminium door-window fixing | 15d | 2027-05-26 | 2027-06-10 | 3564, 3574, 3578 |  | Zenith | 8698694 |
| 3581 | 36900.37000.37100.38500.39300.41500.42300.96000.1492700 | Door shutter fixing (Pre Hung) | 8d | 2027-06-05 | 2027-06-13 | 3565, 3579 |  | Zenith | 8698704 |
| 3582 | 36900.37000.37100.38500.39300.41500.42300.96000.1492800 | Electrical wiring work | 12d | 2027-06-13 | 2027-06-25 | 3566, 3581 |  | Zenith | 8698714 |
| 3583 | 36900.37000.37100.38500.39300.41500.42300.96000.1492900 | Painting 1st coat | 15d | 2027-06-27 | 2027-07-12 | 3567, 3582 |  | Zenith | 8698724 |
| 3584 | 36900.37000.37100.38500.39300.41500.42300.62500 | **34th Floor** | 183d | 2027-03-18 | 2027-09-17 |  | start no earlier than 2027-03-18 | Zenith | 8648294 |
| 3585 | 36900.37000.37100.38500.39300.41500.42300.62500.1493000 | Block Work | 10d | 2027-03-18 | 2027-03-28 | 3051, 3569 |  | Zenith | 8698734 |
| 3586 | 36900.37000.37100.38500.39300.41500.42300.62500.1493100 | Fire sprinkler pipe fixing | 6d | 2027-03-28 | 2027-04-03 | 3570, 3585 |  | Zenith | 8698744 |
| 3587 | 36900.37000.37100.38500.39300.41500.42300.62500.1493200 | Internal Plumbing Works | 10d | 2027-03-28 | 2027-04-07 | 3571, 3585 |  | Zenith | 8698754 |
| 3588 | 36900.37000.37100.38500.39300.41500.42300.62500.1493300 | Waterproofing | 14d | 2027-04-19 | 2027-05-03 | 3572, 3587 |  | Zenith | 8698764 |
| 3589 | 36900.37000.37100.38500.39300.41500.42300.62500.1493400 | Internal Plaster | 14d | 2027-04-24 | 2027-05-08 | 3573, 3587, 3588FF+5d |  | Zenith | 8698774 |
| 3590 | 36900.37000.37100.38500.39300.41500.42300.62500.1493500 | IPS flooring work | 10d | 2027-05-08 | 2027-05-18 | 3574, 3588, 3589 |  | Zenith | 8698784 |
| 3591 | 36900.37000.37100.38500.39300.41500.42300.62500.1493600 | Toilet dado work | 10d | 2027-05-18 | 2027-05-28 | 3575, 3590 |  | Zenith | 8698794 |
| 3592 | 36900.37000.37100.38500.39300.41500.42300.62500.1493700 | Toilet flooring work | 7d | 2027-05-28 | 2027-06-04 | 3576, 3591 |  | Zenith | 8698804 |
| 3593 | 36900.37000.37100.38500.39300.41500.42300.62500.1493800 | False ceiling | 10d | 2027-06-04 | 2027-06-14 | 3577, 3592 |  | Zenith | 8698814 |
| 3594 | 36900.37000.37100.38500.39300.41500.42300.62500.1493900 | Living dinning flooring | 13d | 2027-06-04 | 2027-06-17 | 3578, 3592 |  | Zenith | 8698824 |
| 3595 | 36900.37000.37100.38500.39300.41500.42300.62500.1494000 | Putty Primer coat | 12d | 2027-06-17 | 2027-06-29 | 3579, 3586, 3593, 3594 |  | Zenith | 8698834 |
| 3596 | 36900.37000.37100.38500.39300.41500.42300.62500.1494100 | Aluminium door-window fixing | 15d | 2027-06-17 | 2027-07-02 | 3580, 3590, 3594 |  | Zenith | 8698844 |
| 3597 | 36900.37000.37100.38500.39300.41500.42300.62500.1494200 | Door shutter fixing (Pre Hung) | 8d | 2027-06-29 | 2027-07-07 | 3581, 3595 |  | Zenith | 8698854 |
| 3598 | 36900.37000.37100.38500.39300.41500.42300.62500.1494300 | Electrical wiring work | 12d | 2027-07-07 | 2027-07-19 | 3582, 3597 |  | Zenith | 8698864 |
| 3599 | 36900.37000.37100.38500.39300.41500.42300.62500.1494400 | Painting 1st coat | 15d | 2027-07-19 | 2027-08-03 | 3583, 3598 |  | Zenith | 8698874 |
| 3600 | 36900.37000.37100.38500.39300.41500.42300.62500.1494500 | Misc. Works | 45d | 2027-08-03 | 2027-09-17 | 3599 |  | Zenith | 8698884 |

| ID | WBS | Task | Duration | Start | Finish | Predecessors | Constraint | Calendar | Unique_Task_ID |
| --- | --- | --- | --- | --- | --- | --- | --- | --- | --- |
| 3601 | 36900.37000.37100.38500.39300.41500.224600 | **Terrace Finishing** | 116d | 2027-03-28 | 2027-07-21 |  | start no earlier than 2027-03-28 | Zenith | 8656764 |
| 3602 | 36900.37000.37100.38500.39300.41500.224600.970900 | Terrace waterproofing | 40d | 2027-03-28 | 2027-05-06 | 3016FS+2d |  | Zenith | 8687834 |
| 3603 | 36900.37000.37100.38500.39300.41500.224600.971000 | Terrace finishing | 75d | 2027-05-08 | 2027-07-21 | 3602FS+1d |  | Zenith | 8687824 |
| 3604 | 36900.37000.37100.38500.39300.41500.48700 | **Balcony Railing** | 428d | 2026-03-17 | 2027-07-03 |  | start no earlier than 2026-03-17 | Zenith | 8648184 |
| 3605 | 36900.37000.37100.38500.39300.41500.48700.971100 | 1st Floor | 8d | 2026-03-17 | 2026-03-25 | 3082FF |  | Zenith | 8687814 |
| 3606 | 36900.37000.37100.38500.39300.41500.48700.971200 | 2nd Floor | 8d | 2026-04-03 | 2026-04-11 | 3605, 3098 |  | Zenith | 8687804 |
| 3607 | 36900.37000.37100.38500.39300.41500.48700.971300 | 3rd Floor | 8d | 2026-04-12 | 2026-04-20 | 3606, 3114 |  | Zenith | 8687794 |
| 3608 | 36900.37000.37100.38500.39300.41500.48700.971400 | 4th Floor | 8d | 2026-04-21 | 2026-04-29 | 3607, 3130 |  | Zenith | 8687784 |
| 3609 | 36900.37000.37100.38500.39300.41500.48700.971500 | 5th Floor | 8d | 2026-04-30 | 2026-05-08 | 3608, 3146 |  | Zenith | 8687774 |
| 3610 | 36900.37000.37100.38500.39300.41500.48700.971600 | 6th Floor | 8d | 2026-05-11 | 2026-05-19 | 3609, 3162 |  | Zenith | 8687764 |
| 3611 | 36900.37000.37100.38500.39300.41500.48700.971700 | 7th Floor | 8d | 2026-05-22 | 2026-05-30 | 3610, 3178 |  | Zenith | 8687754 |
| 3612 | 36900.37000.37100.38500.39300.41500.48700.971800 | 8th Floor | 8d | 2026-06-02 | 2026-06-10 | 3611, 3194 |  | Zenith | 8687744 |
| 3613 | 36900.37000.37100.38500.39300.41500.48700.971900 | 9th Floor | 8d | 2026-06-13 | 2026-06-21 | 3612, 3210 |  | Zenith | 8687734 |
| 3614 | 36900.37000.37100.38500.39300.41500.48700.972000 | 10th Floor | 8d | 2026-06-28 | 2026-07-06 | 3613, 3226 |  | Zenith | 8687724 |
| 3615 | 36900.37000.37100.38500.39300.41500.48700.972100 | 11th Floor | 8d | 2026-07-09 | 2026-07-17 | 3614, 3242 |  | Zenith | 8687714 |
| 3616 | 36900.37000.37100.38500.39300.41500.48700.972200 | 12th Floor | 8d | 2026-07-20 | 2026-07-28 | 3615, 3258 |  | Zenith | 8687704 |
| 3617 | 36900.37000.37100.38500.39300.41500.48700.972300 | 13th Floor | 8d | 2026-07-31 | 2026-08-08 | 3616, 3274 |  | Zenith | 8687694 |
| 3618 | 36900.37000.37100.38500.39300.41500.48700.972400 | 14th Floor | 8d | 2026-08-11 | 2026-08-19 | 3617, 3290 |  | Zenith | 8687684 |
| 3619 | 36900.37000.37100.38500.39300.41500.48700.972500 | 15th Floor | 8d | 2026-08-22 | 2026-08-30 | 3618, 3306 |  | Zenith | 8687674 |
| 3620 | 36900.37000.37100.38500.39300.41500.48700.972600 | 16th Floor | 8d | 2026-09-02 | 2026-09-10 | 3619, 3322 |  | Zenith | 8687664 |
| 3621 | 36900.37000.37100.38500.39300.41500.48700.972700 | 17th Floor | 8d | 2026-09-13 | 2026-09-21 | 3620, 3338 |  | Zenith | 8687654 |
| 3622 | 36900.37000.37100.38500.39300.41500.48700.972800 | 18th Floor | 8d | 2026-09-22 | 2026-09-30 | 3621, 3354 |  | Zenith | 8687644 |
| 3623 | 36900.37000.37100.38500.39300.41500.48700.972900 | 19th Floor | 8d | 2026-10-03 | 2026-10-11 | 3622, 3370 |  | Zenith | 8687634 |
| 3624 | 36900.37000.37100.38500.39300.41500.48700.973000 | 20th Floor | 8d | 2026-10-15 | 2026-10-23 | 3623, 3386 |  | Zenith | 8687624 |
| 3625 | 36900.37000.37100.38500.39300.41500.48700.973100 | 21st Floor | 8d | 2026-10-26 | 2026-12-18 | 3624, 3402 |  | Zenith | 8687614 |
| 3626 | 36900.37000.37100.38500.39300.41500.48700.973200 | 22nd Floor | 8d | 2026-12-22 | 2026-12-30 | 3625, 3418 |  | Zenith | 8687604 |
| 3627 | 36900.37000.37100.38500.39300.41500.48700.973300 | 23rd Floor | 8d | 2027-01-03 | 2027-01-11 | 3626, 3434 |  | Zenith | 8687594 |
| 3628 | 36900.37000.37100.38500.39300.41500.48700.973400 | 24th Floor | 8d | 2027-01-14 | 2027-01-22 | 3627, 3450 |  | Zenith | 8687584 |
| 3629 | 36900.37000.37100.38500.39300.41500.48700.973500 | 25th Floor | 8d | 2027-02-03 | 2027-02-11 | 3628, 3466 |  | Zenith | 8687574 |
| 3630 | 36900.37000.37100.38500.39300.41500.48700.973600 | 26th Floor | 8d | 2027-02-14 | 2027-02-22 | 3629, 3482 |  | Zenith | 8687564 |
| 3631 | 36900.37000.37100.38500.39300.41500.48700.973700 | 27th Floor | 8d | 2027-02-25 | 2027-03-05 | 3630, 3498 |  | Zenith | 8687554 |
| 3632 | 36900.37000.37100.38500.39300.41500.48700.973800 | 28th Floor | 8d | 2027-03-08 | 2027-03-16 | 3631, 3514 |  | Zenith | 8687544 |
| 3633 | 36900.37000.37100.38500.39300.41500.48700.973900 | 29th Floor | 8d | 2027-04-11 | 2027-04-19 | 3632, 3530 |  | Zenith | 8687534 |
| 3634 | 36900.37000.37100.38500.39300.41500.48700.974000 | 30th Floor | 8d | 2027-04-26 | 2027-05-04 | 3633, 3546 |  | Zenith | 8687524 |
| 3635 | 36900.37000.37100.38500.39300.41500.48700.974100 | 31st Floor | 8d | 2027-05-10 | 2027-05-18 | 3634, 3562 |  | Zenith | 8687514 |
| 3636 | 36900.37000.37100.38500.39300.41500.48700.974200 | 32nd Floor | 8d | 2027-05-24 | 2027-06-01 | 3635, 3578 |  | Zenith | 8687504 |
| 3637 | 36900.37000.37100.38500.39300.41500.48700.974300 | 33rd Floor | 8d | 2027-06-17 | 2027-06-25 | 3636, 3594 |  | Zenith | 8687494 |
| 3638 | 36900.37000.37100.38500.39300.41500.48700.974400 | 34th Floor | 8d | 2027-06-25 | 2027-07-03 | 3637 |  | Zenith | 8687484 |

| ID | WBS | Task | Duration | Start | Finish | Predecessors | Constraint | Calendar | Unique_Task_ID |
| --- | --- | --- | --- | --- | --- | --- | --- | --- | --- |
| 3639 | 36900.37000.37100.38500.39300.41500.119900 | **Common Area Finishing** | 367d | 2026-08-11 | 2027-09-27 |  | start no earlier than 2026-08-11 | Zenith | 8651644 |
| 3640 | 36900.37000.37100.38500.39300.41500.119900.974500 | Masonary Work | 40d | 2026-08-11 | 2026-09-20 | 3290 |  | Zenith | 8687474 |
| 3641 | 36900.37000.37100.38500.39300.41500.119900.974600 | Fire sprinkler pipe fixing | 40d | 2026-09-20 | 2026-10-30 | 3640 |  | Zenith | 8687464 |
| 3642 | 36900.37000.37100.38500.39300.41500.119900.974700 | Corridoor, staircase, shaft Plaster & whitewash | 120d | 2026-09-20 | 2027-03-04 | 3640 |  | Zenith | 8687454 |
| 3643 | 36900.37000.37100.38500.39300.41500.119900.974800 | Staircase railing fixing | 100d | 2026-09-20 | 2027-02-12 | 3640 |  | Zenith | 8687444 |
| 3644 | 36900.37000.37100.38500.39300.41500.119900.974900 | Fire staircase flooring | 120d | 2026-09-30 | 2027-03-14 | 3643FF+30d |  | Zenith | 8687434 |
| 3645 | 36900.37000.37100.38500.39300.41500.119900.975000 | Main staircase flooring | 120d | 2026-09-30 | 2027-03-14 | 3643FF+30d |  | Zenith | 8687424 |
| 3646 | 36900.37000.37100.38500.39300.41500.119900.975100 | Fire door work | 45d | 2027-03-14 | 2027-04-28 | 3644 |  | Zenith | 8687414 |
| 3647 | 36900.37000.37100.38500.39300.41500.119900.975200 | Lobby flooring & Corridor | 120d | 2026-10-30 | 2027-04-13 | 3645FF+30d |  | Zenith | 8687404 |
| 3648 | 36900.37000.37100.38500.39300.41500.119900.975300 | Ceiling & wall putty | 120d | 2027-03-31 | 2027-07-29 | 3646FF+15d, 3647FF+30d, 3595FF+30d |  | Zenith | 8687394 |
| 3649 | 36900.37000.37100.38500.39300.41500.119900.975400 | Electrical wiring work | 120d | 2027-04-15 | 2027-08-13 | 3648FF+15d |  | Zenith | 8687384 |
| 3650 | 36900.37000.37100.38500.39300.41500.119900.975500 | Ceiling & wall painting | 120d | 2027-05-05 | 2027-09-02 | 3641FS+20d, 3648SS+20d, 3649FF+20d |  | Zenith | 8687374 |
| 3651 | 36900.37000.37100.38500.39300.41500.119900.975600 | Light fixture supply & installation | 45d | 2027-08-13 | 2027-09-27 | 3648, 3650FF+25d |  | Zenith | 8687364 |
| 3652 | 36900.37000.37100.38500.121300 | **MEP work** | 336.75d | 2026-12-19 | 2028-01-04 |  | start no earlier than 2026-12-19 | Zenith | 8651864 |
| 3653 | 36900.37000.37100.38500.121300.125400 | **Electrical work** | 240d | 2027-03-26 | 2028-01-04 |  | start no earlier than 2027-03-26 | Zenith | 8652124 |
| 3654 | 36900.37000.37100.38500.121300.125400.823900 | Cable Tray | 90d | 2027-03-26 | 2027-06-23 | 3016 |  | Zenith | 8724224 |
| 3655 | 36900.37000.37100.38500.121300.125400.824000 | Cable, main & sub main | 60d | 2027-05-10 | 2027-07-08 | 3654SS+45d |  | Zenith | 8724214 |
| 3656 | 36900.37000.37100.38500.121300.125400.824100 | LT panel & DB | 90d | 2027-06-24 | 2027-09-21 | 3654 |  | Zenith | 8724204 |
| 3657 | 36900.37000.37100.38500.121300.125400.824200 | Rising main | 90d | 2027-07-09 | 2027-10-06 | 3654FS+15d |  | Zenith | 8724194 |
| 3658 | 36900.37000.37100.38500.121300.125400.824300 | Earthing Works | 60d | 2027-07-14 | 2027-09-11 | 3654FS+20d |  | Zenith | 8724184 |
| 3659 | 36900.37000.37100.38500.121300.125400.824400 | Energy meter | 60d | 2027-09-22 | 2028-01-04 | 3655, 3658FS+10d |  | Zenith | 8724174 |
| 3660 | 36900.37000.37100.38500.121300.125400.824500 | HVAC & Exhast fan | 120d | 2027-06-19 | 2027-10-16 | 3654FS-5d |  | Zenith | 8724164 |
| 3661 | 36900.37000.37100.38500.121300.125400.824600 | FTTH | 60d | 2027-09-07 | 2027-12-20 | 3656FS-15d |  | Zenith | 8724154 |
| 3662 | 36900.37000.37100.38500.121300.125400.824700 | Security System - FA & PA | 60d | 2027-09-22 | 2028-01-04 | 3656, 3657FF+10d, 3660FF+2d, 3661FF |  | Zenith | 8724144 |

| ID | WBS | Task | Duration | Start | Finish | Predecessors | Constraint | Calendar | Unique_Task_ID |
| --- | --- | --- | --- | --- | --- | --- | --- | --- | --- |
| 3663 | 36900.37000.37100.38500.121300.164300 | **Plumbing work** | 175d | 2027-05-07 | 2027-10-28 |  | start no earlier than 2027-05-07 | Zenith | 8652764 |
| 3664 | 36900.37000.37100.38500.121300.164300.824800 | Terrace looping | 45d | 2027-05-07 | 2027-06-20 | 3602 |  | Zenith | 8724134 |
| 3665 | 36900.37000.37100.38500.121300.164300.824900 | Shaft Plumbing | 70d | 2027-06-21 | 2027-08-29 | 3664, 3642FS-30d |  | Zenith | 8724124 |
| 3666 | 36900.37000.37100.38500.121300.164300.825000 | CP sanitary fixture supply | 45d | 2027-08-30 | 2027-10-13 | 3665 |  | Zenith | 8724114 |
| 3667 | 36900.37000.37100.38500.121300.164300.825100 | Cold & flushing water supply | 45d | 2027-08-30 | 2027-10-13 | 3665 |  | Zenith | 8724104 |
| 3668 | 36900.37000.37100.38500.121300.164300.825200 | Misc work | 30d | 2027-09-29 | 2027-10-28 | 3666FS-15d, 3667FS-15d |  | Zenith | 8724094 |
| 3669 | 36900.37000.37100.38500.121300.211500 | **Fire fighting work** | 243.75d | 2026-12-19 | 2027-08-19 |  | start no earlier than 2026-12-19 | Zenith | 8654494 |
| 3670 | 36900.37000.37100.38500.121300.211500.825300 | Fire hydrant work | 75d | 2026-12-19 | 2027-03-04 | 3642SS+45d |  | Zenith | 8724084 |
| 3671 | 36900.37000.37100.38500.121300.211500.825400 | Pipe connection & sprinkler installation | 45d | 2027-07-06 | 2027-08-19 | 3670FS+1d, 3673FF+15d |  | Zenith | 8724074 |
| 3672 | 36900.37000.37100.38500.121300.211500.825500 | Shaft Downtake works | 60d | 2027-05-07 | 2027-07-05 | 3602, 3642FS-60d |  | Zenith | 8724064 |
| 3673 | 36900.37000.37100.38500.121300.211500.825600 | Connection to pump room | 30d | 2027-07-06 | 2027-08-04 | 3672 |  | Zenith | 8724054 |
| 3674 | 36900.37000.37100.38500.121300.219400 | **Lift work** | 160d | 2027-03-28 | 2027-09-04 |  | start no earlier than 2027-03-28 | Zenith | 8656624 |
| 3675 | 36900.37000.37100.38500.121300.219400.825700 | Lift Shaft/Pit Handover | 40d | 2027-03-28 | 2027-05-07 | 3053FS+5d |  | Zenith | 8724044 |
| 3676 | 36900.37000.37100.38500.121300.219400.825800 | Lift installation work | 60d | 2027-05-07 | 2027-07-06 | 3675 |  | Zenith | 8724034 |
| 3677 | 36900.37000.37100.38500.121300.219400.825900 | Lift testing and commissioning | 60d | 2027-07-06 | 2027-09-04 | 3676, 3647 |  | Zenith | 8724024 |
| 3678 | 36900.37000.37100.38500.226000 | **Basement lobby** | 90d | 2027-05-22 | 2027-08-20 |  | start no earlier than 2027-05-22 | Zenith | 8656874 |
| 3679 | 36900.37000.37100.38500.226000.404500 | Basement lobby | 90d | 2027-05-22 | 2027-08-20 | 3675FS+15d, 2838FS+15d, 2839FS+15d |  | Zenith | 8731564 |
| 3680 | 36900.37000.37100.38500.222300 | **External Paint Works** | 90d | 2027-07-02 | 2027-09-30 |  | start no earlier than 2027-07-02 | Zenith | 8656694 |
| 3681 | 36900.37000.37100.38500.222300.404600 | Surface prepration with Primer | 60d | 2027-07-03 | 2027-09-01 | 3053FS+2d, 3638 |  | Zenith | 8731554 |
| 3682 | 36900.37000.37100.38500.222300.404700 | External Painting (Texture & first coat) | 90d | 2027-07-02 | 2027-09-30 | 3681FF+10d, 3596 |  | Zenith | 8731544 |
| 3683 | 36900.37000.37100.38500.302900 | OC Application/Readiness | 2d | 2028-03-07 | 2028-03-08 | 3011FF+349d, 3682FF, 3671FF+30d, 3668FF, 3679FF+30d, 3677FF, 3662FF, 3659FF, 3603FF+30d, 3600FF+15d, 3648FF+0.25d, 3638FF, 3596FF+0.25d |  | Zenith | 8735384 |
| 3684 | 36900.37000.37100.38500.303000 | OC Receipt | 60d | 2028-03-09 | 2028-05-07 | 3683 |  | Zenith | 8735374 |
| 3685 | 36900.37000.37100.38500.126300 | **Post OC activities** | 473.75d | 2027-10-12 | 2029-04-27 |  | start no earlier than 2027-10-12 | Zenith | 8652084 |
| 3686 | 36900.37000.37100.38500.126300.404800 | CP & Sanitaryware | 150d | 2028-05-08 | 2028-10-04 | 3684 |  | Zenith | 8731534 |
| 3687 | 36900.37000.37100.38500.126300.404900 | Electrical Fixtures And Fittings | 150d | 2028-05-08 | 2028-10-04 | 3684 |  | Zenith | 8731524 |
| 3688 | 36900.37000.37100.38500.126300.405000 | Final coat paint external | 100d | 2028-05-08 | 2028-08-15 | 3684 |  | Zenith | 8731514 |
| 3689 | 36900.37000.37100.38500.126300.405100 | Final Coat Paint Internal | 150d | 2028-05-08 | 2028-10-04 | 3684, 3599 |  | Zenith | 8731504 |
| 3690 | 36900.37000.37100.38500.126300.405200 | Balcony Railing Glass Fixing | 120d | 2028-10-05 | 2029-03-18 | 3689, 3638FS+30d |  | Zenith | 8731494 |
| 3691 | 36900.37000.37100.38500.126300.405300 | MEP | 150d | 2027-10-12 | 2028-04-24 | 3651FS+15d |  | Zenith | 8731484 |
| 3692 | 36900.37000.37100.38500.126300.405400 | Wooden Flooring | 180d | 2028-04-23 | 2028-10-19 | 3689FF+15d |  | Zenith | 8731474 |
| 3693 | 36900.37000.37100.38500.126300.405500 | Split AC Units installation | 100d | 2028-12-19 | 2029-03-28 | 3692FS+15d |  | Zenith | 8731464 |
| 3694 | 36900.37000.37100.38500.126300.405600 | Misc. works | 180d | 2028-09-15 | 2029-04-27 | 3693FF+30d |  | Zenith | 8731454 |
| 3695 | 36900.37000.37100.38500.303100 | Offer To Possession | 182d | 2028-09-28 | 2029-05-12 | 3684FF+152d, 3686FF+20d, 3687FF+20d, 3688FF+20d, 3693FF+10d, 3691FF+30d, 3690FF+15d, 3694FF+15d |  | Zenith | 8735364 |

| ID | WBS | Task | Duration | Start | Finish | Predecessors | Complete | Constraint | Calendar | Unique_Task_ID |
| --- | --- | --- | --- | --- | --- | --- | --- | --- | --- | --- |
| 3696 | 36900.37000.37100.38200 | **Tower 05** | 1674d | 2024-04-15 | 2029-05-27 |  | 5% | start no earlier than 2024-04-15 | Zenith | 8647604 |
| 3697 | 36900.37000.37100.38200.54500 | **Sub-Structure Works** | 662d | 2024-04-15 | 2026-04-06 |  | 80% | start no earlier than 2024-04-15 | Zenith | 8648394 |
| 3698 | 36900.37000.37100.38200.54500.141000 | **Soil Bed Preparation** | 196d | 2024-04-15 | 2024-10-27 |  | 100% | start no earlier than 2024-04-15 | Zenith | 8652794 |
| 3699 | 36900.37000.37100.38200.54500.141000.229800 | Excavation (2m) | 48d | 2024-05-11 | 2024-06-27 | 2795SS+10d | 100% | start no earlier than 2024-05-11 | Zenith | 8724014 |
| 3700 | 36900.37000.37100.38200.54500.141000.229900 | Soldier Piling shop drawing approval | 60d | 2024-04-15 | 2024-07-09 | 3699 | 100% | start no earlier than 2024-04-15 | Zenith | 8724004 |
| 3701 | 36900.37000.37100.38200.54500.141000.230000 | Mobilization & Soldier Piling with Excavation (4m) | 100d | 2024-05-14 | 2024-10-27 | 3700FS-95d | 100% | start no earlier than 2024-05-14 | Zenith | 8723994 |
| 3702 | 36900.37000.37100.38200.54500.141000.230100 | Balance B3 bulk Excavation | 57d | 2024-05-20 | 2024-10-20 | 3701FS-149d | 100% | start no earlier than 2024-05-20 | Zenith | 8723984 |
| 3703 | 36900.37000.37100.38200.54500.141000.230200 | Soil dressing & ATT | 23d | 2024-10-05 | 2024-10-27 | 3702FS+8d | 100% | start no earlier than 2024-10-05 | Zenith | 8723974 |
| 3704 | 36900.37000.37100.38200.54500.117000 | **Structure Works** | 333.2d | 2024-10-20 | 2025-11-02 |  | 100% | start no earlier than 2024-10-20 | Zenith | 8651794 |
| 3705 | 36900.37000.37100.38200.54500.117000.138500 | **Raft Foundation** | 73.2d | 2024-10-20 | 2025-02-15 |  | 100% | start no earlier than 2024-10-20 | Zenith | 8652884 |
| 3706 | 36900.37000.37100.38200.54500.117000.138500.263500 | PCC | 8d | 2024-10-22 | 2024-10-29 | 3703, 2802FS+6d | 100% | start no earlier than 2024-10-22 | Zenith | 8687354 |
| 3707 | 36900.37000.37100.38200.54500.117000.138500.263400 | Column/SW layout marking | 1d | 2024-10-31 | 2024-11-11 | 3706 | 100% | start no earlier than 2024-10-31 | Zenith | 8687344 |
| 3708 | 36900.37000.37100.38200.54500.117000.138500.263300 | Reinforcement | 44.2d | 2024-10-20 | 2025-02-11 | 3707FS-4d | 100% | start no earlier than 2024-10-20 | Zenith | 8687334 |
| 3709 | 36900.37000.37100.38200.54500.117000.138500.263200 | Formwork (Conventional) | 8d | 2025-01-24 | 2025-02-11 | 3708FF+3d | 100% | start no earlier than 2025-01-24 | Zenith | 8687324 |
| 3710 | 36900.37000.37100.38200.54500.117000.138500.263100 | Concreting | 4d | 2025-02-12 | 2025-02-15 | 3709FF+3d | 100% | start no earlier than 2025-02-12 | Zenith | 8687314 |
| 3711 | 36900.37000.37100.38200.54500.117000.136100 | **Basement 03 Roof Slab (Dummy/Stitch Slab)** | 4d | 2025-03-24 | 2025-03-27 |  | 100% | start no earlier than 2025-03-24 | Zenith | 8652374 |
| 3712 | 36900.37000.37100.38200.54500.117000.136100.263000 | Column/SW Reinforcement | 1d | 2025-03-24 | 2025-03-24 | 3710 | 100% | start no earlier than 2025-03-24 | Zenith | 8687304 |
| 3713 | 36900.37000.37100.38200.54500.117000.136100.262900 | SW Formwork (Conventional) | 1d | 2025-03-25 | 2025-03-25 | 3712SS | 100% | start no earlier than 2025-03-25 | Zenith | 8687294 |
| 3714 | 36900.37000.37100.38200.54500.117000.136100.262800 | Column/SW Concreting | 1d | 2025-03-26 | 2025-03-26 | 3713SS | 100% | start no earlier than 2025-03-26 | Zenith | 8687284 |
| 3715 | 36900.37000.37100.38200.54500.117000.136100.262700 | Slab Formwork (Conventional) | 1d | 2025-03-27 | 2025-03-27 | 3714SS | 100% | start no earlier than 2025-03-27 | Zenith | 8687274 |
| 3716 | 36900.37000.37100.38200.54500.117000.136100.262600 | Slab Reinforcement + Conduting | 1d | 2025-03-27 | 2025-03-27 | 3715 | 100% | start no earlier than 2025-03-27 | Zenith | 8687264 |
| 3717 | 36900.37000.37100.38200.54500.117000.136100.262500 | Concreting | 1d | 2025-03-27 | 2025-03-27 | 3716 | 100% | start no earlier than 2025-03-27 | Zenith | 8687254 |
| 3718 | 36900.37000.37100.38200.54500.117000.136200 | **Basement 02 Roof Slab** | 64d | 2025-03-02 | 2025-05-04 |  | 100% | start no earlier than 2025-03-02 | Zenith | 8652364 |
| 3719 | 36900.37000.37100.38200.54500.117000.136200.262400 | Column/SW Reinforcement | 8d | 2025-03-02 | 2025-03-30 | 3717FS-25d | 100% | start no earlier than 2025-03-02 | Zenith | 8687244 |
| 3720 | 36900.37000.37100.38200.54500.117000.136200.262300 | SW Formwork (Conventional) | 20d | 2025-03-15 | 2025-04-20 | 3719SS+15d | 100% | start no earlier than 2025-03-15 | Zenith | 8687234 |
| 3721 | 36900.37000.37100.38200.54500.117000.136200.262200 | Column/SW Concreting | 20d | 2025-03-16 | 2025-04-20 | 3720SS+4d | 100% | start no earlier than 2025-03-16 | Zenith | 8687224 |
| 3722 | 36900.37000.37100.38200.54500.117000.136200.262100 | Slab Formwork (Conventional) | 25d | 2025-03-25 | 2025-04-29 | 3721SS+8d | 100% | start no earlier than 2025-03-25 | Zenith | 8687214 |
| 3723 | 36900.37000.37100.38200.54500.117000.136200.262000 | Slab Reinforcement + Conduting | 5d | 2025-04-06 | 2025-04-29 | 3722FS-23d | 100% | start no earlier than 2025-04-06 | Zenith | 8687204 |
| 3724 | 36900.37000.37100.38200.54500.117000.136200.261900 | Concreting | 4d | 2025-04-17 | 2025-05-04 | 3723FS-16.8d | 100% | start no earlier than 2025-04-17 | Zenith | 8687194 |

| ID | WBS | Task | Duration | Start | Finish | Predecessors | Complete | Constraint | Calendar | Unique_Task_ID |
| --- | --- | --- | --- | --- | --- | --- | --- | --- | --- | --- |
| 3725 | 36900.37000.37100.38200.54500.117000.136300 | **Basement 01 Roof Slab** | 60d | 2025-04-30 | 2025-06-28 |  | 100% | start no earlier than 2025-04-30 | Zenith | 8652354 |
| 3726 | 36900.37000.37100.38200.54500.117000.136300.261800 | Column/SW Reinforcement | 15d | 2025-04-30 | 2025-06-09 | 3724 | 100% | start no earlier than 2025-04-30 | Zenith | 8687184 |
| 3727 | 36900.37000.37100.38200.54500.117000.136300.261700 | SW Formwork (Conventional) | 12d | 2025-05-02 | 2025-06-12 | 3726SS+2d | 100% | start no earlier than 2025-05-02 | Zenith | 8687174 |
| 3728 | 36900.37000.37100.38200.54500.117000.136300.261600 | Column/SW Concreting | 11d | 2025-05-03 | 2025-06-13 | 3727SS+1d | 100% | start no earlier than 2025-05-03 | Zenith | 8687164 |
| 3729 | 36900.37000.37100.38200.54500.117000.136300.261500 | Slab Formwork (Conventional) | 11d | 2025-05-17 | 2025-06-27 | 3728SS+15d | 100% | start no earlier than 2025-05-17 | Zenith | 8687154 |
| 3730 | 36900.37000.37100.38200.54500.117000.136300.261400 | Slab Reinforcement + Conduting | 8d | 2025-06-04 | 2025-06-28 | 3729FS-24d | 100% | start no earlier than 2025-06-04 | Zenith | 8687144 |
| 3731 | 36900.37000.37100.38200.54500.117000.136300.261300 | Concreting | 4d | 2025-06-07 | 2025-06-28 | 3730FS-20d | 100% | start no earlier than 2025-06-07 | Zenith | 8687134 |
| 3732 | 36900.37000.37100.38200.54500.117000.136400 | **Podium Slab/Ground Roof Floor Slab** | 108d | 2025-07-18 | 2025-11-02 |  | 100% | start no earlier than 2025-07-18 | Zenith | 8652344 |
| 3733 | 36900.37000.37100.38200.54500.117000.136400.261200 | Column/SW Reinforcement | 12d | 2025-07-18 | 2025-09-05 | 3731 | 100% | start no earlier than 2025-07-18 | Zenith | 8687124 |
| 3734 | 36900.37000.37100.38200.54500.117000.136400.261100 | SW Formwork (Conventional) | 16d | 2025-07-19 | 2025-10-17 | 3733SS+2d | 100% | start no earlier than 2025-07-19 | Zenith | 8687114 |
| 3735 | 36900.37000.37100.38200.54500.117000.136400.261000 | Column/SW Concreting | 16d | 2025-07-20 | 2025-10-29 | 3734SS-9d | 100% | start no earlier than 2025-07-20 | Zenith | 8687104 |
| 3736 | 36900.37000.37100.38200.54500.117000.136400.260900 | Slab Formwork (Conventional) | 19d | 2025-09-01 | 2025-11-01 | 3735SS+29d | 100% | start no earlier than 2025-09-01 | Zenith | 8687094 |
| 3737 | 36900.37000.37100.38200.54500.117000.136400.260800 | Slab Reinforcement + Conduting | 17d | 2025-09-15 | 2025-11-01 | 3736FS-45d | 100% | start no earlier than 2025-09-15 | Zenith | 8687084 |
| 3738 | 36900.37000.37100.38200.54500.117000.136400.260700 | Concreting | 18d | 2025-10-02 | 2025-11-02 | 3737FS-26d | 100% | start no earlier than 2025-10-02 | Zenith | 8687074 |
| 3739 | 36900.37000.37100.38200.54500.211400 | **Substructure Finishes** | 110d | 2025-12-18 | 2026-04-06 |  |  | start no earlier than 2025-12-18 | Zenith | 8654124 |
| 3740 | 36900.37000.37100.38200.54500.211400.826000 | Masonary Work | 35d | 2025-12-18 | 2026-01-21 | 3738FS+30d |  |  | Zenith | 8723964 |
| 3741 | 36900.37000.37100.38200.54500.211400.826100 | Plaster Work | 30d | 2026-01-22 | 2026-02-20 | 3740 |  |  | Zenith | 8723954 |
| 3742 | 36900.37000.37100.38200.54500.211400.826200 | Structural Steel work | 50d | 2026-01-17 | 2026-03-07 | 3738FS+60d |  |  | Zenith | 8723944 |
| 3743 | 36900.37000.37100.38200.54500.211400.826300 | White Wash | 35d | 2026-03-03 | 2026-04-06 | 3741FS+10d |  |  | Zenith | 8723934 |
| 3744 | 36900.37000.37100.38200.39200 | **Superstructure** | 672.25d | 2025-10-13 | 2027-10-15 |  |  | start no earlier than 2025-10-13 | Zenith | 8647664 |
| 3745 | 36900.37000.37100.38200.39200.44900 | **RCC structure** | 480d | 2025-10-13 | 2027-04-05 |  | 1% | start no earlier than 2025-10-13 | Zenith | 8647964 |
| 3746 | 36900.37000.37100.38200.39200.44900.180300 | **1st Floor Roof slab** | 58d | 2025-10-13 | 2025-12-24 |  | 31% | start no earlier than 2025-10-13 | Zenith | 8654114 |
| 3747 | 36900.37000.37100.38200.39200.44900.180300.260600 | Reinforcement | 19d | 2025-10-13 | 2025-11-26 | 3738FS-27d | 57% | start no earlier than 2025-10-13 | Zenith | 8687064 |
| 3748 | 36900.37000.37100.38200.39200.44900.180300.975700 | Conduiting | 19d | 2025-11-19 | 2025-12-22 | 3747SS+3d |  |  | Zenith | 8687054 |
| 3749 | 36900.37000.37100.38200.39200.44900.180300.260500 | Formwork | 19d | 2025-10-26 | 2025-11-30 | 3747SS+4d | 36% | start no earlier than 2025-10-26 | Zenith | 8687044 |
| 3750 | 36900.37000.37100.38200.39200.44900.180300.975800 | Concreting | 1d | 2025-12-24 | 2025-12-24 | 3748FS+1d, 3749 |  |  | Zenith | 8687034 |

| ID | WBS | Task | Duration | Start | Finish | Predecessors | Constraint | Calendar | Unique_Task_ID |
| --- | --- | --- | --- | --- | --- | --- | --- | --- | --- |
| 3751 | 36900.37000.37100.38200.39200.44900.180400 | **2nd Floor Roof slab** | 18d | 2025-12-25 | 2026-01-11 |  | start no earlier than 2025-12-25 | Zenith | 8654134 |
| 3752 | 36900.37000.37100.38200.39200.44900.180400.975900 | Reinforcement | 13d | 2025-12-25 | 2026-01-06 | 3750 |  | Zenith | 8687024 |
| 3753 | 36900.37000.37100.38200.39200.44900.180400.976000 | Conduiting | 13d | 2025-12-28 | 2026-01-09 | 3752SS+3d |  | Zenith | 8687014 |
| 3754 | 36900.37000.37100.38200.39200.44900.180400.976100 | Formwork | 13d | 2025-12-29 | 2026-01-10 | 3752SS+4d |  | Zenith | 8687004 |
| 3755 | 36900.37000.37100.38200.39200.44900.180400.976200 | Concreting | 1d | 2026-01-11 | 2026-01-11 | 3753FS+1d, 3754 |  | Zenith | 8686994 |
| 3756 | 36900.37000.37100.38200.39200.44900.180500 | **3rd Floor Roof slab** | 12d | 2026-01-12 | 2026-01-23 |  | start no earlier than 2026-01-12 | Zenith | 8654144 |
| 3757 | 36900.37000.37100.38200.39200.44900.180500.976300 | Reinforcement | 7d | 2026-01-12 | 2026-01-18 | 3755 |  | Zenith | 8686984 |
| 3758 | 36900.37000.37100.38200.39200.44900.180500.976400 | Conduiting | 7d | 2026-01-15 | 2026-01-21 | 3757SS+3d |  | Zenith | 8686974 |
| 3759 | 36900.37000.37100.38200.39200.44900.180500.976500 | Formwork | 7d | 2026-01-16 | 2026-01-22 | 3757SS+4d |  | Zenith | 8686964 |
| 3760 | 36900.37000.37100.38200.39200.44900.180500.976600 | Concreting | 1d | 2026-01-23 | 2026-01-23 | 3758FS+1d, 3759 |  | Zenith | 8686954 |
| 3761 | 36900.37000.37100.38200.39200.44900.180600 | **4th floor roof slab** | 9d | 2026-01-24 | 2026-02-01 |  | start no earlier than 2026-01-24 | Zenith | 8654154 |
| 3762 | 36900.37000.37100.38200.39200.44900.180600.976700 | Reinforcement | 6d | 2026-01-24 | 2026-01-29 | 3760 |  | Zenith | 8686944 |
| 3763 | 36900.37000.37100.38200.39200.44900.180600.976800 | Conduiting | 6d | 2026-01-25 | 2026-01-30 | 3762SS+1d |  | Zenith | 8686934 |
| 3764 | 36900.37000.37100.38200.39200.44900.180600.976900 | Formwork | 6d | 2026-01-26 | 2026-01-31 | 3762SS+2d |  | Zenith | 8686924 |
| 3765 | 36900.37000.37100.38200.39200.44900.180600.977000 | Concreting | 1d | 2026-02-01 | 2026-02-01 | 3763FS+1d, 3764 |  | Zenith | 8686914 |
| 3766 | 36900.37000.37100.38200.39200.44900.180700 | **5th floor roof slab** | 9d | 2026-02-02 | 2026-02-10 |  | start no earlier than 2026-02-02 | Zenith | 8654164 |
| 3767 | 36900.37000.37100.38200.39200.44900.180700.977100 | Reinforcement | 6d | 2026-02-02 | 2026-02-07 | 3765 |  | Zenith | 8686904 |
| 3768 | 36900.37000.37100.38200.39200.44900.180700.977200 | Conduiting | 6d | 2026-02-03 | 2026-02-08 | 3767SS+1d |  | Zenith | 8686894 |
| 3769 | 36900.37000.37100.38200.39200.44900.180700.977300 | Formwork | 6d | 2026-02-04 | 2026-02-09 | 3767SS+2d |  | Zenith | 8686884 |
| 3770 | 36900.37000.37100.38200.39200.44900.180700.977400 | Concreting | 1d | 2026-02-10 | 2026-02-10 | 3768FS+1d, 3769 |  | Zenith | 8686874 |
| 3771 | 36900.37000.37100.38200.39200.44900.180800 | **6th floor roof slab** | 9d | 2026-02-11 | 2026-02-19 |  | start no earlier than 2026-02-11 | Zenith | 8654174 |
| 3772 | 36900.37000.37100.38200.39200.44900.180800.977500 | Reinforcement | 6d | 2026-02-11 | 2026-02-16 | 3770 |  | Zenith | 8686864 |
| 3773 | 36900.37000.37100.38200.39200.44900.180800.977600 | Conduiting | 6d | 2026-02-12 | 2026-02-17 | 3772SS+1d |  | Zenith | 8686854 |
| 3774 | 36900.37000.37100.38200.39200.44900.180800.977700 | Formwork | 6d | 2026-02-13 | 2026-02-18 | 3772SS+2d |  | Zenith | 8686844 |
| 3775 | 36900.37000.37100.38200.39200.44900.180800.977800 | Concreting | 1d | 2026-02-19 | 2026-02-19 | 3773FS+1d, 3774 |  | Zenith | 8686834 |

| ID | WBS | Task | Duration | Start | Finish | Predecessors | Constraint | Calendar | Unique_Task_ID |
| --- | --- | --- | --- | --- | --- | --- | --- | --- | --- |
| 3776 | 36900.37000.37100.38200.39200.44900.180900 | **7th floor roof slab** | 9d | 2026-02-20 | 2026-02-28 |  | start no earlier than 2026-02-20 | Zenith | 8654184 |
| 3777 | 36900.37000.37100.38200.39200.44900.180900.977900 | Reinforcement | 6d | 2026-02-20 | 2026-02-25 | 3775 |  | Zenith | 8686824 |
| 3778 | 36900.37000.37100.38200.39200.44900.180900.978000 | Conduiting | 6d | 2026-02-21 | 2026-02-26 | 3777SS+1d |  | Zenith | 8686814 |
| 3779 | 36900.37000.37100.38200.39200.44900.180900.978100 | Formwork | 6d | 2026-02-22 | 2026-02-27 | 3777SS+2d |  | Zenith | 8686804 |
| 3780 | 36900.37000.37100.38200.39200.44900.180900.978200 | Concreting | 1d | 2026-02-28 | 2026-02-28 | 3778FS+1d, 3779 |  | Zenith | 8686794 |
| 3781 | 36900.37000.37100.38200.39200.44900.181000 | **8th floor roof slab** | 9d | 2026-03-01 | 2026-03-09 |  | start no earlier than 2026-03-01 | Zenith | 8654194 |
| 3782 | 36900.37000.37100.38200.39200.44900.181000.978300 | Reinforcement | 6d | 2026-03-01 | 2026-03-06 | 3780 |  | Zenith | 8686784 |
| 3783 | 36900.37000.37100.38200.39200.44900.181000.978400 | Conduiting | 6d | 2026-03-02 | 2026-03-07 | 3782SS+1d |  | Zenith | 8686774 |
| 3784 | 36900.37000.37100.38200.39200.44900.181000.978500 | Formwork | 6d | 2026-03-03 | 2026-03-08 | 3782SS+2d |  | Zenith | 8686764 |
| 3785 | 36900.37000.37100.38200.39200.44900.181000.978600 | Concreting | 1d | 2026-03-09 | 2026-03-09 | 3783FS+1d, 3784 |  | Zenith | 8686754 |
| 3786 | 36900.37000.37100.38200.39200.44900.181100 | **9th floor roof slab** | 9d | 2026-03-10 | 2026-03-18 |  | start no earlier than 2026-03-10 | Zenith | 8654204 |
| 3787 | 36900.37000.37100.38200.39200.44900.181100.978700 | Reinforcement | 6d | 2026-03-10 | 2026-03-15 | 3785 |  | Zenith | 8686744 |
| 3788 | 36900.37000.37100.38200.39200.44900.181100.978800 | Conduiting | 6d | 2026-03-11 | 2026-03-16 | 3787SS+1d |  | Zenith | 8686734 |
| 3789 | 36900.37000.37100.38200.39200.44900.181100.978900 | Formwork | 6d | 2026-03-12 | 2026-03-17 | 3787SS+2d |  | Zenith | 8686724 |
| 3790 | 36900.37000.37100.38200.39200.44900.181100.979000 | Concreting | 1d | 2026-03-18 | 2026-03-18 | 3788FS+1d, 3789 |  | Zenith | 8686714 |
| 3791 | 36900.37000.37100.38200.39200.44900.181200 | **10th floor roof slab** | 11d | 2026-03-19 | 2026-03-29 |  | start no earlier than 2026-03-19 | Zenith | 8654214 |
| 3792 | 36900.37000.37100.38200.39200.44900.181200.979100 | Reinforcement | 8d | 2026-03-19 | 2026-03-26 | 3790 |  | Zenith | 8686704 |
| 3793 | 36900.37000.37100.38200.39200.44900.181200.979200 | Conduiting | 8d | 2026-03-20 | 2026-03-27 | 3792SS+1d |  | Zenith | 8686694 |
| 3794 | 36900.37000.37100.38200.39200.44900.181200.979300 | Formwork | 8d | 2026-03-21 | 2026-03-28 | 3792SS+2d |  | Zenith | 8686684 |
| 3795 | 36900.37000.37100.38200.39200.44900.181200.979400 | Concreting | 1d | 2026-03-29 | 2026-03-29 | 3793FS+1d, 3794 |  | Zenith | 8686674 |
| 3796 | 36900.37000.37100.38200.39200.44900.181300 | **11th floor roof slab** | 11d | 2026-03-30 | 2026-04-09 |  | start no earlier than 2026-03-30 | Zenith | 8654224 |
| 3797 | 36900.37000.37100.38200.39200.44900.181300.979500 | Reinforcement | 8d | 2026-03-30 | 2026-04-06 | 3795 |  | Zenith | 8686664 |
| 3798 | 36900.37000.37100.38200.39200.44900.181300.979600 | Conduiting | 8d | 2026-03-31 | 2026-04-07 | 3797SS+1d |  | Zenith | 8686654 |
| 3799 | 36900.37000.37100.38200.39200.44900.181300.979700 | Formwork | 8d | 2026-04-01 | 2026-04-08 | 3797SS+2d |  | Zenith | 8686644 |
| 3800 | 36900.37000.37100.38200.39200.44900.181300.979800 | Concreting | 1d | 2026-04-09 | 2026-04-09 | 3798FS+1d, 3799 |  | Zenith | 8686634 |

| ID | WBS | Task | Duration | Start | Finish | Predecessors | Constraint | Calendar | Unique_Task_ID |
| --- | --- | --- | --- | --- | --- | --- | --- | --- | --- |
| 3801 | 36900.37000.37100.38200.39200.44900.181400 | **12th floor roof slab** | 11d | 2026-04-10 | 2026-04-20 |  | start no earlier than 2026-04-10 | Zenith | 8654234 |
| 3802 | 36900.37000.37100.38200.39200.44900.181400.979900 | Reinforcement | 8d | 2026-04-10 | 2026-04-17 | 3800 |  | Zenith | 8686624 |
| 3803 | 36900.37000.37100.38200.39200.44900.181400.980000 | Conduiting | 8d | 2026-04-11 | 2026-04-18 | 3802SS+1d |  | Zenith | 8686614 |
| 3804 | 36900.37000.37100.38200.39200.44900.181400.980100 | Formwork | 8d | 2026-04-12 | 2026-04-19 | 3802SS+2d |  | Zenith | 8686604 |
| 3805 | 36900.37000.37100.38200.39200.44900.181400.980200 | Concreting | 1d | 2026-04-20 | 2026-04-20 | 3803FS+1d, 3804 |  | Zenith | 8686594 |
| 3806 | 36900.37000.37100.38200.39200.44900.181500 | **13th floor roof slab** | 11d | 2026-04-21 | 2026-05-01 |  | start no earlier than 2026-04-21 | Zenith | 8654244 |
| 3807 | 36900.37000.37100.38200.39200.44900.181500.980300 | Reinforcement | 8d | 2026-04-21 | 2026-04-28 | 3805 |  | Zenith | 8686584 |
| 3808 | 36900.37000.37100.38200.39200.44900.181500.980400 | Conduiting | 8d | 2026-04-22 | 2026-04-29 | 3807SS+1d |  | Zenith | 8686574 |
| 3809 | 36900.37000.37100.38200.39200.44900.181500.980500 | Formwork | 8d | 2026-04-23 | 2026-04-30 | 3807SS+2d |  | Zenith | 8686564 |
| 3810 | 36900.37000.37100.38200.39200.44900.181500.980600 | Concreting | 1d | 2026-05-01 | 2026-05-01 | 3808FS+1d, 3809 |  | Zenith | 8686554 |
| 3811 | 36900.37000.37100.38200.39200.44900.181600 | **14th floor roof slab** | 15d | 2026-05-02 | 2026-05-16 |  | start no earlier than 2026-05-02 | Zenith | 8654254 |
| 3812 | 36900.37000.37100.38200.39200.44900.181600.980700 | Reinforcement | 12d | 2026-05-02 | 2026-05-13 | 3810 |  | Zenith | 8686544 |
| 3813 | 36900.37000.37100.38200.39200.44900.181600.980800 | Conduiting | 12d | 2026-05-03 | 2026-05-14 | 3812SS+1d |  | Zenith | 8686534 |
| 3814 | 36900.37000.37100.38200.39200.44900.181600.980900 | Formwork | 12d | 2026-05-04 | 2026-05-15 | 3812SS+2d |  | Zenith | 8686524 |
| 3815 | 36900.37000.37100.38200.39200.44900.181600.981000 | Concreting | 1d | 2026-05-16 | 2026-05-16 | 3813FS+1d, 3814 |  | Zenith | 8686514 |
| 3816 | 36900.37000.37100.38200.39200.44900.181700 | **15th floor roof slab** | 11d | 2026-05-17 | 2026-05-27 |  | start no earlier than 2026-05-17 | Zenith | 8654264 |
| 3817 | 36900.37000.37100.38200.39200.44900.181700.981100 | Reinforcement | 8d | 2026-05-17 | 2026-05-24 | 3815 |  | Zenith | 8686504 |
| 3818 | 36900.37000.37100.38200.39200.44900.181700.981200 | Conduiting | 8d | 2026-05-18 | 2026-05-25 | 3817SS+1d |  | Zenith | 8686494 |
| 3819 | 36900.37000.37100.38200.39200.44900.181700.981300 | Formwork | 8d | 2026-05-19 | 2026-05-26 | 3817SS+2d |  | Zenith | 8686484 |
| 3820 | 36900.37000.37100.38200.39200.44900.181700.981400 | Concreting | 1d | 2026-05-27 | 2026-05-27 | 3818FS+1d, 3819 |  | Zenith | 8686474 |
| 3821 | 36900.37000.37100.38200.39200.44900.181800 | **16th floor roof slab** | 11d | 2026-05-28 | 2026-06-07 |  | start no earlier than 2026-05-28 | Zenith | 8654274 |
| 3822 | 36900.37000.37100.38200.39200.44900.181800.981500 | Reinforcement | 8d | 2026-05-28 | 2026-06-04 | 3820 |  | Zenith | 8686464 |
| 3823 | 36900.37000.37100.38200.39200.44900.181800.981600 | Conduiting | 8d | 2026-05-29 | 2026-06-05 | 3822SS+1d |  | Zenith | 8686454 |
| 3824 | 36900.37000.37100.38200.39200.44900.181800.981700 | Formwork | 8d | 2026-05-30 | 2026-06-06 | 3822SS+2d |  | Zenith | 8686444 |
| 3825 | 36900.37000.37100.38200.39200.44900.181800.981800 | Concreting | 1d | 2026-06-07 | 2026-06-07 | 3823, 3824 |  | Zenith | 8686434 |

| ID | WBS | Task | Duration | Start | Finish | Predecessors | Constraint | Calendar | Unique_Task_ID |
| --- | --- | --- | --- | --- | --- | --- | --- | --- | --- |
| 3826 | 36900.37000.37100.38200.39200.44900.181900 | **17th floor roof slab** | 11d | 2026-06-08 | 2026-06-18 |  | start no earlier than 2026-06-08 | Zenith | 8654284 |
| 3827 | 36900.37000.37100.38200.39200.44900.181900.981900 | Reinforcement | 8d | 2026-06-08 | 2026-06-15 | 3825 |  | Zenith | 8686424 |
| 3828 | 36900.37000.37100.38200.39200.44900.181900.982000 | Conduiting | 8d | 2026-06-09 | 2026-06-16 | 3827SS+1d |  | Zenith | 8686414 |
| 3829 | 36900.37000.37100.38200.39200.44900.181900.982100 | Formwork | 8d | 2026-06-10 | 2026-06-17 | 3827SS+2d |  | Zenith | 8686404 |
| 3830 | 36900.37000.37100.38200.39200.44900.181900.982200 | Concreting | 1d | 2026-06-18 | 2026-06-18 | 3828FS+1d, 3829 |  | Zenith | 8686394 |
| 3831 | 36900.37000.37100.38200.39200.44900.182000 | **18th floor roof slab** | 11d | 2026-06-19 | 2026-06-29 |  | start no earlier than 2026-06-19 | Zenith | 8654294 |
| 3832 | 36900.37000.37100.38200.39200.44900.182000.982300 | Reinforcement | 8d | 2026-06-19 | 2026-06-26 | 3830 |  | Zenith | 8686384 |
| 3833 | 36900.37000.37100.38200.39200.44900.182000.982400 | Conduiting | 8d | 2026-06-20 | 2026-06-27 | 3832SS+1d |  | Zenith | 8686374 |
| 3834 | 36900.37000.37100.38200.39200.44900.182000.982500 | Formwork | 8d | 2026-06-21 | 2026-06-28 | 3832SS+2d |  | Zenith | 8686364 |
| 3835 | 36900.37000.37100.38200.39200.44900.182000.982600 | Concreting | 1d | 2026-06-29 | 2026-06-29 | 3833FS+1d, 3834 |  | Zenith | 8686354 |
| 3836 | 36900.37000.37100.38200.39200.44900.182100 | **19th floor roof slab** | 11d | 2026-06-30 | 2026-07-10 |  | start no earlier than 2026-06-30 | Zenith | 8654304 |
| 3837 | 36900.37000.37100.38200.39200.44900.182100.982700 | Reinforcement | 8d | 2026-06-30 | 2026-07-07 | 3835 |  | Zenith | 8686344 |
| 3838 | 36900.37000.37100.38200.39200.44900.182100.982800 | Conduiting | 8d | 2026-07-01 | 2026-07-08 | 3837SS+1d |  | Zenith | 8686334 |
| 3839 | 36900.37000.37100.38200.39200.44900.182100.982900 | Formwork | 8d | 2026-07-02 | 2026-07-09 | 3837SS+2d |  | Zenith | 8686324 |
| 3840 | 36900.37000.37100.38200.39200.44900.182100.983000 | Concreting | 1d | 2026-07-10 | 2026-07-10 | 3838FS+1d, 3839 |  | Zenith | 8686314 |
| 3841 | 36900.37000.37100.38200.39200.44900.182200 | **20th floor roof slab** | 11d | 2026-07-11 | 2026-07-21 |  | start no earlier than 2026-07-11 | Zenith | 8654314 |
| 3842 | 36900.37000.37100.38200.39200.44900.182200.983100 | Reinforcement | 8d | 2026-07-11 | 2026-07-18 | 3840 |  | Zenith | 8686304 |
| 3843 | 36900.37000.37100.38200.39200.44900.182200.983200 | Conduiting | 8d | 2026-07-12 | 2026-07-19 | 3842SS+1d |  | Zenith | 8686294 |
| 3844 | 36900.37000.37100.38200.39200.44900.182200.983300 | Formwork | 8d | 2026-07-13 | 2026-07-20 | 3842SS+2d |  | Zenith | 8686284 |
| 3845 | 36900.37000.37100.38200.39200.44900.182200.983400 | Concreting | 1d | 2026-07-21 | 2026-07-21 | 3843FS+1d, 3844 |  | Zenith | 8686274 |
| 3846 | 36900.37000.37100.38200.39200.44900.182300 | **21st floor roof slab** | 11d | 2026-07-22 | 2026-08-01 |  | start no earlier than 2026-07-22 | Zenith | 8654324 |
| 3847 | 36900.37000.37100.38200.39200.44900.182300.983500 | Reinforcement | 8d | 2026-07-22 | 2026-07-29 | 3845 |  | Zenith | 8686264 |
| 3848 | 36900.37000.37100.38200.39200.44900.182300.983600 | Conduiting | 8d | 2026-07-23 | 2026-07-30 | 3847SS+1d |  | Zenith | 8686254 |
| 3849 | 36900.37000.37100.38200.39200.44900.182300.983700 | Formwork | 8d | 2026-07-24 | 2026-07-31 | 3847SS+2d |  | Zenith | 8686244 |
| 3850 | 36900.37000.37100.38200.39200.44900.182300.983800 | Concreting | 1d | 2026-08-01 | 2026-08-01 | 3848FS+1d, 3849 |  | Zenith | 8686234 |

| ID | WBS | Task | Duration | Start | Finish | Predecessors | Constraint | Calendar | Unique_Task_ID |
| --- | --- | --- | --- | --- | --- | --- | --- | --- | --- |
| 3851 | 36900.37000.37100.38200.39200.44900.182400 | **22nd floor roof slab** | 11d | 2026-08-02 | 2026-08-12 |  | start no earlier than 2026-08-02 | Zenith | 8654334 |
| 3852 | 36900.37000.37100.38200.39200.44900.182400.983900 | Reinforcement | 8d | 2026-08-02 | 2026-08-09 | 3850 |  | Zenith | 8686224 |
| 3853 | 36900.37000.37100.38200.39200.44900.182400.984000 | Conduiting | 8d | 2026-08-03 | 2026-08-10 | 3852SS+1d |  | Zenith | 8686214 |
| 3854 | 36900.37000.37100.38200.39200.44900.182400.984100 | Formwork | 8d | 2026-08-04 | 2026-08-11 | 3852SS+2d |  | Zenith | 8686204 |
| 3855 | 36900.37000.37100.38200.39200.44900.182400.984200 | Concreting | 1d | 2026-08-12 | 2026-08-12 | 3853FS+1d, 3854 |  | Zenith | 8686194 |
| 3856 | 36900.37000.37100.38200.39200.44900.182500 | **23rd floor roof slab** | 11d | 2026-08-13 | 2026-08-23 |  | start no earlier than 2026-08-13 | Zenith | 8654344 |
| 3857 | 36900.37000.37100.38200.39200.44900.182500.984300 | Reinforcement | 8d | 2026-08-13 | 2026-08-20 | 3855 |  | Zenith | 8686184 |
| 3858 | 36900.37000.37100.38200.39200.44900.182500.984400 | Conduiting | 8d | 2026-08-14 | 2026-08-21 | 3857SS+1d |  | Zenith | 8686174 |
| 3859 | 36900.37000.37100.38200.39200.44900.182500.984500 | Formwork | 8d | 2026-08-15 | 2026-08-22 | 3857SS+2d |  | Zenith | 8686164 |
| 3860 | 36900.37000.37100.38200.39200.44900.182500.984600 | Concreting | 1d | 2026-08-23 | 2026-08-23 | 3858FS+1d, 3859 |  | Zenith | 8686154 |
| 3861 | 36900.37000.37100.38200.39200.44900.182600 | **24th floor roof slab** | 11d | 2026-08-24 | 2026-09-03 |  | start no earlier than 2026-08-24 | Zenith | 8654354 |
| 3862 | 36900.37000.37100.38200.39200.44900.182600.984700 | Reinforcement | 8d | 2026-08-24 | 2026-08-31 | 3860 |  | Zenith | 8686144 |
| 3863 | 36900.37000.37100.38200.39200.44900.182600.984800 | Conduiting | 8d | 2026-08-25 | 2026-09-01 | 3862SS+1d |  | Zenith | 8686134 |
| 3864 | 36900.37000.37100.38200.39200.44900.182600.984900 | Formwork | 8d | 2026-08-26 | 2026-09-02 | 3862SS+2d |  | Zenith | 8686124 |
| 3865 | 36900.37000.37100.38200.39200.44900.182600.985000 | Concreting | 1d | 2026-09-03 | 2026-09-03 | 3863FS+1d, 3864 |  | Zenith | 8686114 |
| 3866 | 36900.37000.37100.38200.39200.44900.182700 | **25th floor roof slab** | 11d | 2026-09-04 | 2026-09-14 |  | start no earlier than 2026-09-04 | Zenith | 8654364 |
| 3867 | 36900.37000.37100.38200.39200.44900.182700.985100 | Reinforcement | 8d | 2026-09-04 | 2026-09-11 | 3865 |  | Zenith | 8686104 |
| 3868 | 36900.37000.37100.38200.39200.44900.182700.985200 | Conduiting | 8d | 2026-09-05 | 2026-09-12 | 3867SS+1d |  | Zenith | 8686094 |
| 3869 | 36900.37000.37100.38200.39200.44900.182700.985300 | Formwork | 8d | 2026-09-06 | 2026-09-13 | 3867SS+2d |  | Zenith | 8686084 |
| 3870 | 36900.37000.37100.38200.39200.44900.182700.985400 | Concreting | 1d | 2026-09-14 | 2026-09-14 | 3868FS+1d, 3869 |  | Zenith | 8686074 |
| 3871 | 36900.37000.37100.38200.39200.44900.182800 | **26th floor roof slab** | 11d | 2026-09-15 | 2026-09-25 |  | start no earlier than 2026-09-15 | Zenith | 8654374 |
| 3872 | 36900.37000.37100.38200.39200.44900.182800.985500 | Reinforcement | 8d | 2026-09-15 | 2026-09-22 | 3870 |  | Zenith | 8686064 |
| 3873 | 36900.37000.37100.38200.39200.44900.182800.985600 | Conduiting | 8d | 2026-09-16 | 2026-09-23 | 3872SS+1d |  | Zenith | 8686054 |
| 3874 | 36900.37000.37100.38200.39200.44900.182800.985700 | Formwork | 8d | 2026-09-17 | 2026-09-24 | 3872SS+2d |  | Zenith | 8686044 |
| 3875 | 36900.37000.37100.38200.39200.44900.182800.985800 | Concreting | 1d | 2026-09-25 | 2026-09-25 | 3873FS+1d, 3874 |  | Zenith | 8686034 |

| ID | WBS | Task | Duration | Start | Finish | Predecessors | Constraint | Calendar | Unique_Task_ID |
| --- | --- | --- | --- | --- | --- | --- | --- | --- | --- |
| 3876 | 36900.37000.37100.38200.39200.44900.182900 | **27th floor roof slab** | 11d | 2026-09-26 | 2026-10-06 |  | start no earlier than 2026-09-26 | Zenith | 8654384 |
| 3877 | 36900.37000.37100.38200.39200.44900.182900.985900 | Reinforcement | 8d | 2026-09-26 | 2026-10-03 | 3875 |  | Zenith | 8686024 |
| 3878 | 36900.37000.37100.38200.39200.44900.182900.986000 | Conduiting | 8d | 2026-09-27 | 2026-10-04 | 3877SS+1d |  | Zenith | 8686014 |
| 3879 | 36900.37000.37100.38200.39200.44900.182900.986100 | Formwork | 8d | 2026-09-28 | 2026-10-05 | 3877SS+2d |  | Zenith | 8686004 |
| 3880 | 36900.37000.37100.38200.39200.44900.182900.986200 | Concreting | 1d | 2026-10-06 | 2026-10-06 | 3878FS+1d, 3879 |  | Zenith | 8685994 |
| 3881 | 36900.37000.37100.38200.39200.44900.183000 | **28th floor roof slab** | 11d | 2026-10-07 | 2026-10-17 |  | start no earlier than 2026-10-07 | Zenith | 8654394 |
| 3882 | 36900.37000.37100.38200.39200.44900.183000.986300 | Reinforcement | 8d | 2026-10-07 | 2026-10-14 | 3880 |  | Zenith | 8685984 |
| 3883 | 36900.37000.37100.38200.39200.44900.183000.986400 | Conduiting | 8d | 2026-10-08 | 2026-10-15 | 3882SS+1d |  | Zenith | 8685974 |
| 3884 | 36900.37000.37100.38200.39200.44900.183000.986500 | Formwork | 8d | 2026-10-09 | 2026-10-16 | 3882SS+2d |  | Zenith | 8685964 |
| 3885 | 36900.37000.37100.38200.39200.44900.183000.986600 | Concreting | 1d | 2026-10-17 | 2026-10-17 | 3883FS+1d, 3884 |  | Zenith | 8685954 |
| 3886 | 36900.37000.37100.38200.39200.44900.183100 | **29th floor roof slab** | 15d | 2026-10-18 | 2026-12-16 |  | start no earlier than 2026-10-18 | Zenith | 8654404 |
| 3887 | 36900.37000.37100.38200.39200.44900.183100.986700 | Reinforcement | 12d | 2026-10-18 | 2026-10-29 | 3885 |  | Zenith | 8685944 |
| 3888 | 36900.37000.37100.38200.39200.44900.183100.986800 | Conduiting | 12d | 2026-10-19 | 2026-10-30 | 3887SS+1d |  | Zenith | 8685934 |
| 3889 | 36900.37000.37100.38200.39200.44900.183100.986900 | Formwork | 12d | 2026-10-20 | 2026-10-31 | 3887SS+2d |  | Zenith | 8685924 |
| 3890 | 36900.37000.37100.38200.39200.44900.183100.987000 | Concreting | 1d | 2026-12-16 | 2026-12-16 | 3888FS+1d, 3889 |  | Zenith | 8685914 |
| 3891 | 36900.37000.37100.38200.39200.44900.183200 | **30th floor roof slab** | 11d | 2026-12-17 | 2026-12-27 |  | start no earlier than 2026-12-17 | Zenith | 8654414 |
| 3892 | 36900.37000.37100.38200.39200.44900.183200.987100 | Reinforcement | 8d | 2026-12-17 | 2026-12-24 | 3890 |  | Zenith | 8685904 |
| 3893 | 36900.37000.37100.38200.39200.44900.183200.987200 | Conduiting | 8d | 2026-12-18 | 2026-12-25 | 3892SS+1d |  | Zenith | 8685894 |
| 3894 | 36900.37000.37100.38200.39200.44900.183200.987300 | Formwork | 8d | 2026-12-19 | 2026-12-26 | 3892SS+2d |  | Zenith | 8685884 |
| 3895 | 36900.37000.37100.38200.39200.44900.183200.987400 | Concreting | 1d | 2026-12-27 | 2026-12-27 | 3893FS+1d, 3894 |  | Zenith | 8685874 |
| 3896 | 36900.37000.37100.38200.39200.44900.183300 | **31st floor roof slab** | 11d | 2026-12-28 | 2027-01-07 |  | start no earlier than 2026-12-28 | Zenith | 8654424 |
| 3897 | 36900.37000.37100.38200.39200.44900.183300.987500 | Reinforcement | 8d | 2026-12-28 | 2027-01-04 | 3895 |  | Zenith | 8685864 |
| 3898 | 36900.37000.37100.38200.39200.44900.183300.987600 | Conduiting | 8d | 2026-12-29 | 2027-01-05 | 3897SS+1d |  | Zenith | 8685854 |
| 3899 | 36900.37000.37100.38200.39200.44900.183300.987700 | Formwork | 8d | 2026-12-30 | 2027-01-06 | 3897SS+2d |  | Zenith | 8685844 |
| 3900 | 36900.37000.37100.38200.39200.44900.183300.987800 | Concreting | 1d | 2027-01-07 | 2027-01-07 | 3898FS+1d, 3899 |  | Zenith | 8685834 |

| ID | WBS | Task | Duration | Start | Finish | Predecessors | Constraint | Calendar | Unique_Task_ID |
| --- | --- | --- | --- | --- | --- | --- | --- | --- | --- |
| 3901 | 36900.37000.37100.38200.39200.44900.183400 | **32nd floor roof slab** | 11d | 2027-01-08 | 2027-01-18 |  | start no earlier than 2027-01-08 | Zenith | 8654434 |
| 3902 | 36900.37000.37100.38200.39200.44900.183400.987900 | Reinforcement | 8d | 2027-01-08 | 2027-01-15 | 3900 |  | Zenith | 8685824 |
| 3903 | 36900.37000.37100.38200.39200.44900.183400.988000 | Conduiting | 8d | 2027-01-09 | 2027-01-16 | 3902SS+1d |  | Zenith | 8685814 |
| 3904 | 36900.37000.37100.38200.39200.44900.183400.988100 | Formwork | 8d | 2027-01-10 | 2027-01-17 | 3902SS+2d |  | Zenith | 8685804 |
| 3905 | 36900.37000.37100.38200.39200.44900.183400.988200 | Concreting | 1d | 2027-01-18 | 2027-01-18 | 3903FS+1d, 3904 |  | Zenith | 8685794 |
| 3906 | 36900.37000.37100.38200.39200.44900.183500 | **33rd floor roof slab** | 11d | 2027-01-19 | 2027-01-29 |  | start no earlier than 2027-01-19 | Zenith | 8654444 |
| 3907 | 36900.37000.37100.38200.39200.44900.183500.988300 | Reinforcement | 8d | 2027-01-19 | 2027-01-26 | 3905 |  | Zenith | 8685784 |
| 3908 | 36900.37000.37100.38200.39200.44900.183500.988400 | Conduiting | 8d | 2027-01-20 | 2027-01-27 | 3907SS+1d |  | Zenith | 8685774 |
| 3909 | 36900.37000.37100.38200.39200.44900.183500.988500 | Formwork | 8d | 2027-01-21 | 2027-01-28 | 3907SS+2d |  | Zenith | 8685764 |
| 3910 | 36900.37000.37100.38200.39200.44900.183500.988600 | Concreting | 1d | 2027-01-29 | 2027-01-29 | 3908FS+1d, 3909 |  | Zenith | 8685754 |
| 3911 | 36900.37000.37100.38200.39200.44900.183600 | **34th floor roof slab** | 11d | 2027-01-30 | 2027-02-09 |  | start no earlier than 2027-01-30 | Zenith | 8654454 |
| 3912 | 36900.37000.37100.38200.39200.44900.183600.988700 | Reinforcement | 8d | 2027-01-30 | 2027-02-06 | 3910 |  | Zenith | 8685744 |
| 3913 | 36900.37000.37100.38200.39200.44900.183600.988800 | Conduiting | 8d | 2027-01-31 | 2027-02-07 | 3912SS+1d |  | Zenith | 8685734 |
| 3914 | 36900.37000.37100.38200.39200.44900.183600.988900 | Formwork | 8d | 2027-02-01 | 2027-02-08 | 3912SS+2d |  | Zenith | 8685724 |
| 3915 | 36900.37000.37100.38200.39200.44900.183600.989000 | Concreting | 1d | 2027-02-09 | 2027-02-09 | 3913FS+1d, 3914 |  | Zenith | 8685714 |
| 3916 | 36900.37000.37100.38200.39200.44900.183700 | **Terrace floor slab** | 15d | 2027-02-10 | 2027-02-24 |  | start no earlier than 2027-02-10 | Zenith | 8654464 |
| 3917 | 36900.37000.37100.38200.39200.44900.183700.989100 | Reinforcement | 11d | 2027-02-10 | 2027-02-20 | 3915 |  | Zenith | 8685704 |
| 3918 | 36900.37000.37100.38200.39200.44900.183700.989200 | Conduiting | 11d | 2027-02-11 | 2027-02-21 | 3917SS+1d |  | Zenith | 8685694 |
| 3919 | 36900.37000.37100.38200.39200.44900.183700.989300 | Formwork | 11d | 2027-02-12 | 2027-02-22 | 3917SS+2d |  | Zenith | 8685684 |
| 3920 | 36900.37000.37100.38200.39200.44900.183700.989400 | Concreting | 2d | 2027-02-23 | 2027-02-24 | 3918FS+1d, 3919 |  | Zenith | 8685674 |
| 3921 | 36900.37000.37100.38200.39200.44900.183800 | **OHT, Mumty & Machine Room, Parapet** | 40d | 2027-02-25 | 2027-04-05 |  | start no earlier than 2027-02-25 | Zenith | 8654474 |
| 3922 | 36900.37000.37100.38200.39200.44900.183800.989500 | Reinforcement | 25d | 2027-02-25 | 2027-03-21 | 3920 |  | Zenith | 8685664 |
| 3923 | 36900.37000.37100.38200.39200.44900.183800.989600 | Flanges fixing & Conduiting | 15d | 2027-02-26 | 2027-03-12 | 3922SS+1d |  | Zenith | 8685654 |
| 3924 | 36900.37000.37100.38200.39200.44900.183800.989700 | Formwork | 30d | 2027-03-03 | 2027-04-01 | 3922SS+6d |  | Zenith | 8685644 |
| 3925 | 36900.37000.37100.38200.39200.44900.183800.989800 | Concreting | 4d | 2027-04-02 | 2027-04-05 | 3923FS+5d, 3924 |  | Zenith | 8685634 |

| ID | WBS | Task | Duration | Start | Finish | Predecessors | Constraint | Calendar | Unique_Task_ID |
| --- | --- | --- | --- | --- | --- | --- | --- | --- | --- |
| 3926 | 36900.37000.37100.38200.39200.47400 | **Post Pour Activities** | 385.25d | 2026-02-02 | 2027-04-08 |  | start no earlier than 2026-02-02 | Zenith | 8648054 |
| 3927 | 36900.37000.37100.38200.39200.47400.826400 | 1st Floor | 7d | 2026-02-02 | 2026-02-08 | 3765 |  | Zenith | 8723924 |
| 3928 | 36900.37000.37100.38200.39200.47400.826500 | 2nd Floor | 7d | 2026-02-11 | 2026-02-18 | 3927FS+0.25d, 3770FS+0.25d |  | Zenith | 8723914 |
| 3929 | 36900.37000.37100.38200.39200.47400.826600 | 3rd Floor | 7d | 2026-02-20 | 2026-02-27 | 3928FS+0.25d, 3775FS+0.25d |  | Zenith | 8723904 |
| 3930 | 36900.37000.37100.38200.39200.47400.826700 | 4th Floor | 7d | 2026-03-01 | 2026-03-08 | 3929FS+0.25d, 3780FS+0.25d |  | Zenith | 8723894 |
| 3931 | 36900.37000.37100.38200.39200.47400.826800 | 5th Floor | 7d | 2026-03-10 | 2026-03-17 | 3930FS+0.25d, 3785FS+0.25d |  | Zenith | 8723884 |
| 3932 | 36900.37000.37100.38200.39200.47400.826900 | 6th Floor | 7d | 2026-03-19 | 2026-03-26 | 3931FS+0.25d, 3790FS+0.25d |  | Zenith | 8723874 |
| 3933 | 36900.37000.37100.38200.39200.47400.827000 | 7th Floor | 7d | 2026-03-30 | 2026-04-06 | 3932FS+0.25d, 3795FS+0.25d |  | Zenith | 8723864 |
| 3934 | 36900.37000.37100.38200.39200.47400.827100 | 8th Floor | 7d | 2026-04-10 | 2026-04-17 | 3933FS+0.25d, 3800FS+0.25d |  | Zenith | 8723854 |
| 3935 | 36900.37000.37100.38200.39200.47400.827200 | 9th Floor | 7d | 2026-04-21 | 2026-04-28 | 3934FS+0.25d, 3805FS+0.25d |  | Zenith | 8723844 |
| 3936 | 36900.37000.37100.38200.39200.47400.827300 | 10th Floor | 7d | 2026-05-02 | 2026-05-09 | 3935FS+0.25d, 3810FS+0.25d |  | Zenith | 8723834 |
| 3937 | 36900.37000.37100.38200.39200.47400.827400 | 11th Floor | 7d | 2026-05-17 | 2026-05-24 | 3936FS+0.25d, 3815FS+0.25d |  | Zenith | 8723824 |
| 3938 | 36900.37000.37100.38200.39200.47400.827500 | 12th Floor | 7d | 2026-05-28 | 2026-06-04 | 3937FS+0.25d, 3820FS+0.25d |  | Zenith | 8723814 |
| 3939 | 36900.37000.37100.38200.39200.47400.827600 | 13th Floor | 7d | 2026-06-08 | 2026-06-15 | 3938FS+0.25d, 3825FS+0.25d |  | Zenith | 8723804 |
| 3940 | 36900.37000.37100.38200.39200.47400.827700 | 14th Floor | 7d | 2026-06-19 | 2026-06-26 | 3939FS+0.25d, 3830FS+0.25d |  | Zenith | 8723794 |
| 3941 | 36900.37000.37100.38200.39200.47400.827800 | 15th Floor | 7d | 2026-06-30 | 2026-07-07 | 3940FS+0.25d, 3835FS+0.25d |  | Zenith | 8723784 |
| 3942 | 36900.37000.37100.38200.39200.47400.827900 | 16th Floor | 7d | 2026-07-11 | 2026-07-18 | 3941FS+0.25d, 3840FS+0.25d |  | Zenith | 8723774 |
| 3943 | 36900.37000.37100.38200.39200.47400.828000 | 17th Floor | 7d | 2026-07-22 | 2026-07-29 | 3942FS+0.25d, 3845FS+0.25d |  | Zenith | 8723764 |
| 3944 | 36900.37000.37100.38200.39200.47400.828100 | 18th Floor | 7d | 2026-08-02 | 2026-08-09 | 3943FS+0.25d, 3850FS+0.25d |  | Zenith | 8723754 |
| 3945 | 36900.37000.37100.38200.39200.47400.828200 | 19th Floor | 7d | 2026-08-13 | 2026-08-20 | 3944FS+0.25d, 3855FS+0.25d |  | Zenith | 8723744 |
| 3946 | 36900.37000.37100.38200.39200.47400.828300 | 20th Floor | 7d | 2026-08-24 | 2026-08-31 | 3945FS+0.25d, 3860FS+0.25d |  | Zenith | 8723734 |
| 3947 | 36900.37000.37100.38200.39200.47400.828400 | 21st Floor | 7d | 2026-09-04 | 2026-09-11 | 3946FS+0.25d, 3865FS+0.25d |  | Zenith | 8723724 |
| 3948 | 36900.37000.37100.38200.39200.47400.828500 | 22nd Floor | 7d | 2026-09-15 | 2026-09-22 | 3947FS+0.25d, 3870FS+0.25d |  | Zenith | 8723714 |
| 3949 | 36900.37000.37100.38200.39200.47400.828600 | 23rd Floor | 7d | 2026-09-26 | 2026-10-03 | 3948FS+0.25d, 3875FS+0.25d |  | Zenith | 8723704 |
| 3950 | 36900.37000.37100.38200.39200.47400.828700 | 24th Floor | 7d | 2026-10-07 | 2026-10-14 | 3949FS+0.25d, 3880FS+0.25d |  | Zenith | 8723694 |
| 3951 | 36900.37000.37100.38200.39200.47400.828800 | 25th Floor | 7d | 2026-10-18 | 2026-10-25 | 3950FS+0.25d, 3885FS+0.25d |  | Zenith | 8723684 |
| 3952 | 36900.37000.37100.38200.39200.47400.828900 | 26th Floor | 7d | 2026-12-17 | 2026-12-24 | 3951FS+0.25d, 3890FS+0.25d |  | Zenith | 8723674 |
| 3953 | 36900.37000.37100.38200.39200.47400.829000 | 27th Floor | 7d | 2026-12-28 | 2027-01-04 | 3952FS+0.25d, 3895FS+0.25d |  | Zenith | 8723664 |
| 3954 | 36900.37000.37100.38200.39200.47400.829100 | 28th Floor | 7d | 2027-01-08 | 2027-01-15 | 3953FS+0.25d, 3900FS+0.25d |  | Zenith | 8723654 |
| 3955 | 36900.37000.37100.38200.39200.47400.829200 | 29th Floor | 7d | 2027-01-19 | 2027-01-26 | 3954FS+0.25d, 3905FS+0.25d |  | Zenith | 8723644 |
| 3956 | 36900.37000.37100.38200.39200.47400.829300 | 30th Floor | 7d | 2027-01-30 | 2027-02-06 | 3955FS+0.25d, 3910FS+0.25d |  | Zenith | 8723634 |
| 3957 | 36900.37000.37100.38200.39200.47400.829400 | 31st Floor | 7d | 2027-02-10 | 2027-02-17 | 3956FS+0.25d, 3915FS+0.25d |  | Zenith | 8723624 |
| 3958 | 36900.37000.37100.38200.39200.47400.829500 | 32nd Flood | 7d | 2027-02-25 | 2027-03-04 | 3957FS+0.25d, 3920FS+0.25d |  | Zenith | 8723614 |
| 3959 | 36900.37000.37100.38200.39200.47400.829600 | 33rd Floor | 7d | 2027-03-04 | 2027-03-11 | 3958 |  | Zenith | 8723604 |
| 3960 | 36900.37000.37100.38200.39200.47400.829700 | 34th Floor | 7d | 2027-03-11 | 2027-03-18 | 3959 |  | Zenith | 8723594 |
| 3961 | 36900.37000.37100.38200.39200.47400.829800 | 35th Floor | 7d | 2027-03-18 | 2027-03-25 | 3960 |  | Zenith | 8723584 |
| 3962 | 36900.37000.37100.38200.39200.47400.829900 | Terrace | 7d | 2027-03-25 | 2027-04-01 | 3961 |  | Zenith | 8723574 |
| 3963 | 36900.37000.37100.38200.39200.47400.830000 | Mumty & Machine Room | 7d | 2027-04-01 | 2027-04-08 | 3962 |  | Zenith | 8723564 |

| ID | WBS | Task | Duration | Start | Finish | Predecessors | Constraint | Calendar | Unique_Task_ID |
| --- | --- | --- | --- | --- | --- | --- | --- | --- | --- |
| 3964 | 36900.37000.37100.38200.39200.40600 | **Finishing work** | 568.25d | 2026-02-09 | 2027-10-15 |  | start no earlier than 2026-02-09 | Zenith | 8647784 |
| 3965 | 36900.37000.37100.38200.39200.40600.41800 | **Flat finishing** | 558.25d | 2026-02-09 | 2027-10-05 |  | start no earlier than 2026-02-09 | Zenith | 8647864 |
| 3966 | 36900.37000.37100.38200.39200.40600.41800.96100 | **1st Floor roof** | 79d | 2026-02-09 | 2026-04-28 |  | start no earlier than 2026-02-09 | Zenith | 8649794 |
| 3967 | 36900.37000.37100.38200.39200.40600.41800.96100.1494600 | Block Work | 6d | 2026-02-09 | 2026-02-14 | 3927 |  | Zenith | 8698894 |
| 3968 | 36900.37000.37100.38200.39200.40600.41800.96100.1494700 | Fire sprinkler pipe fixing | 5d | 2026-02-15 | 2026-02-19 | 3967 |  | Zenith | 8698904 |
| 3969 | 36900.37000.37100.38200.39200.40600.41800.96100.1494800 | Internal Plumbing Works | 5d | 2026-02-15 | 2026-02-19 | 3967 |  | Zenith | 8698914 |
| 3970 | 36900.37000.37100.38200.39200.40600.41800.96100.1494900 | Waterproofing | 5d | 2026-02-20 | 2026-02-24 | 3969 |  | Zenith | 8698924 |
| 3971 | 36900.37000.37100.38200.39200.40600.41800.96100.1495000 | Internal Plaster | 9d | 2026-02-21 | 2026-03-01 | 3969, 3970FF+5d |  | Zenith | 8698934 |
| 3972 | 36900.37000.37100.38200.39200.40600.41800.96100.1495100 | IPS flooring work | 7d | 2026-03-02 | 2026-03-08 | 3971 |  | Zenith | 8698944 |
| 3973 | 36900.37000.37100.38200.39200.40600.41800.96100.1495200 | Toilet dado work | 6d | 2026-03-02 | 2026-03-07 | 3970, 3971 |  | Zenith | 8698954 |
| 3974 | 36900.37000.37100.38200.39200.40600.41800.96100.1495300 | Toilet flooring work | 7d | 2026-03-08 | 2026-03-14 | 3973 |  | Zenith | 8698964 |
| 3975 | 36900.37000.37100.38200.39200.40600.41800.96100.1495400 | False Cieling panel fixing | 7d | 2026-03-15 | 2026-03-21 | 3974 |  | Zenith | 8698974 |
| 3976 | 36900.37000.37100.38200.39200.40600.41800.96100.1495500 | Living dinning flooring | 7d | 2026-03-15 | 2026-03-21 | 3974 |  | Zenith | 8698984 |
| 3977 | 36900.37000.37100.38200.39200.40600.41800.96100.1495600 | Putty primer coat | 8d | 2026-03-22 | 2026-03-29 | 3976 |  | Zenith | 8698994 |
| 3978 | 36900.37000.37100.38200.39200.40600.41800.96100.1495700 | Aluminium door-window fixing | 12d | 2026-03-22 | 2026-04-02 | 3972, 3976 |  | Zenith | 8699004 |
| 3979 | 36900.37000.37100.38200.39200.40600.41800.96100.1495800 | Door shutter fixing (Pre Hung) | 8d | 2026-03-30 | 2026-04-06 | 3977 |  | Zenith | 8699014 |
| 3980 | 36900.37000.37100.38200.39200.40600.41800.96100.1495900 | Electrical wiring work | 10d | 2026-04-07 | 2026-04-16 | 3979 |  | Zenith | 8699024 |
| 3981 | 36900.37000.37100.38200.39200.40600.41800.96100.1496000 | Painting 1st coat | 12d | 2026-04-17 | 2026-04-28 | 3980 |  | Zenith | 8699034 |
| 3982 | 36900.37000.37100.38200.39200.40600.41800.96200 | **2nd floor roof** | 81.75d | 2026-02-18 | 2026-05-10 |  | start no earlier than 2026-02-18 | Zenith | 8649804 |
| 3983 | 36900.37000.37100.38200.39200.40600.41800.96200.1496100 | Block Work | 6d | 2026-02-18 | 2026-02-24 | 3928, 3967 |  | Zenith | 8699044 |
| 3984 | 36900.37000.37100.38200.39200.40600.41800.96200.1496200 | Fire sprinkler pipe fixing | 5d | 2026-02-24 | 2026-03-01 | 3968, 3983 |  | Zenith | 8699054 |
| 3985 | 36900.37000.37100.38200.39200.40600.41800.96200.1496300 | Internal Plumbing Works | 5d | 2026-02-24 | 2026-03-01 | 3969, 3983 |  | Zenith | 8699064 |
| 3986 | 36900.37000.37100.38200.39200.40600.41800.96200.1496400 | Waterproofing | 5d | 2026-03-01 | 2026-03-06 | 3970, 3985 |  | Zenith | 8699074 |
| 3987 | 36900.37000.37100.38200.39200.40600.41800.96200.1496500 | Internal Plaster | 9d | 2026-03-02 | 2026-03-11 | 3971, 3985, 3986FF+5d |  | Zenith | 8699084 |
| 3988 | 36900.37000.37100.38200.39200.40600.41800.96200.1496600 | IPS flooring work | 7d | 2026-03-11 | 2026-03-18 | 3972, 3987 |  | Zenith | 8699094 |
| 3989 | 36900.37000.37100.38200.39200.40600.41800.96200.1496700 | Toilet dado work | 6d | 2026-03-11 | 2026-03-17 | 3973, 3986, 3987 |  | Zenith | 8699104 |
| 3990 | 36900.37000.37100.38200.39200.40600.41800.96200.1496800 | Toilet flooring work | 7d | 2026-03-17 | 2026-03-24 | 3974, 3989 |  | Zenith | 8699114 |
| 3991 | 36900.37000.37100.38200.39200.40600.41800.96200.1496900 | False Cieling panel fixing | 7d | 2026-03-24 | 2026-03-31 | 3975, 3990 |  | Zenith | 8699124 |
| 3992 | 36900.37000.37100.38200.39200.40600.41800.96200.1497000 | Living dinning flooring | 7d | 2026-03-24 | 2026-03-31 | 3976, 3990 |  | Zenith | 8699134 |
| 3993 | 36900.37000.37100.38200.39200.40600.41800.96200.1497100 | Putty primer coat | 8d | 2026-03-31 | 2026-04-08 | 3977, 3992 |  | Zenith | 8699144 |
| 3994 | 36900.37000.37100.38200.39200.40600.41800.96200.1497200 | Aluminium door-window fixing | 12d | 2026-04-03 | 2026-04-14 | 3978, 3988, 3992 |  | Zenith | 8699154 |
| 3995 | 36900.37000.37100.38200.39200.40600.41800.96200.1497300 | Door shutter fixing (Pre Hung) | 8d | 2026-04-08 | 2026-04-16 | 3979, 3993 |  | Zenith | 8699164 |
| 3996 | 36900.37000.37100.38200.39200.40600.41800.96200.1497400 | Electrical wiring work | 10d | 2026-04-17 | 2026-04-26 | 3980, 3995 |  | Zenith | 8699174 |
| 3997 | 36900.37000.37100.38200.39200.40600.41800.96200.1497500 | Painting 1st coat | 12d | 2026-04-29 | 2026-05-10 | 3981, 3996 |  | Zenith | 8699184 |

| ID | WBS | Task | Duration | Start | Finish | Predecessors | Constraint | Calendar | Unique_Task_ID |
| --- | --- | --- | --- | --- | --- | --- | --- | --- | --- |
| 3998 | 36900.37000.37100.38200.39200.40600.41800.96300 | **3rd floor roof** | 84.75d | 2026-02-27 | 2026-05-22 |  | start no earlier than 2026-02-27 | Zenith | 8649814 |
| 3999 | 36900.37000.37100.38200.39200.40600.41800.96300.1497600 | Block Work | 6d | 2026-02-27 | 2026-03-05 | 3929, 3983 |  | Zenith | 8699194 |
| 4000 | 36900.37000.37100.38200.39200.40600.41800.96300.1497700 | Fire sprinkler pipe fixing | 5d | 2026-03-05 | 2026-03-10 | 3984, 3999 |  | Zenith | 8699204 |
| 4001 | 36900.37000.37100.38200.39200.40600.41800.96300.1497800 | Internal Plumbing Works | 5d | 2026-03-05 | 2026-03-10 | 3985, 3999 |  | Zenith | 8699214 |
| 4002 | 36900.37000.37100.38200.39200.40600.41800.96300.1497900 | Waterproofing | 5d | 2026-03-10 | 2026-03-15 | 3986, 4001 |  | Zenith | 8699224 |
| 4003 | 36900.37000.37100.38200.39200.40600.41800.96300.1498000 | Internal Plaster | 9d | 2026-03-11 | 2026-03-20 | 3987, 4001, 4002FF+5d |  | Zenith | 8699234 |
| 4004 | 36900.37000.37100.38200.39200.40600.41800.96300.1498100 | IPS flooring work | 7d | 2026-03-20 | 2026-03-27 | 3988, 4003 |  | Zenith | 8699244 |
| 4005 | 36900.37000.37100.38200.39200.40600.41800.96300.1498200 | Toilet dado work | 6d | 2026-03-20 | 2026-03-26 | 3989, 4002, 4003 |  | Zenith | 8699254 |
| 4006 | 36900.37000.37100.38200.39200.40600.41800.96300.1498300 | Toilet flooring work | 7d | 2026-03-26 | 2026-04-02 | 3990, 4005 |  | Zenith | 8699264 |
| 4007 | 36900.37000.37100.38200.39200.40600.41800.96300.1498400 | False Cieling panel fixing | 7d | 2026-04-02 | 2026-04-09 | 3991, 4006 |  | Zenith | 8699274 |
| 4008 | 36900.37000.37100.38200.39200.40600.41800.96300.1498500 | Living dinning flooring | 7d | 2026-04-02 | 2026-04-09 | 3992, 4006 |  | Zenith | 8699284 |
| 4009 | 36900.37000.37100.38200.39200.40600.41800.96300.1498600 | Putty primer coat | 8d | 2026-04-09 | 2026-04-17 | 3993, 4008 |  | Zenith | 8699294 |
| 4010 | 36900.37000.37100.38200.39200.40600.41800.96300.1498700 | Aluminium door-window fixing | 12d | 2026-04-15 | 2026-04-26 | 3994, 4004, 4008 |  | Zenith | 8699304 |
| 4011 | 36900.37000.37100.38200.39200.40600.41800.96300.1498800 | Door shutter fixing (Pre Hung) | 8d | 2026-04-17 | 2026-04-25 | 3995, 4009 |  | Zenith | 8699314 |
| 4012 | 36900.37000.37100.38200.39200.40600.41800.96300.1498900 | Electrical wiring work | 10d | 2026-04-27 | 2026-05-06 | 3996, 4011 |  | Zenith | 8699324 |
| 4013 | 36900.37000.37100.38200.39200.40600.41800.96300.1499000 | Painting 1st coat | 12d | 2026-05-11 | 2026-05-22 | 3997, 4012 |  | Zenith | 8699334 |
| 4014 | 36900.37000.37100.38200.39200.40600.41800.96400 | **4th floor roof** | 87.75d | 2026-03-08 | 2026-06-03 |  | start no earlier than 2026-03-08 | Zenith | 8649824 |
| 4015 | 36900.37000.37100.38200.39200.40600.41800.96400.1499100 | Block Work | 6d | 2026-03-08 | 2026-03-14 | 3930, 3999 |  | Zenith | 8699344 |
| 4016 | 36900.37000.37100.38200.39200.40600.41800.96400.1499200 | Fire sprinkler pipe fixing | 5d | 2026-03-14 | 2026-03-19 | 4000, 4015 |  | Zenith | 8699354 |
| 4017 | 36900.37000.37100.38200.39200.40600.41800.96400.1499300 | Internal Plumbing Works | 5d | 2026-03-14 | 2026-03-19 | 4001, 4015 |  | Zenith | 8699364 |
| 4018 | 36900.37000.37100.38200.39200.40600.41800.96400.1499400 | Waterproofing | 5d | 2026-03-19 | 2026-03-24 | 4002, 4017 |  | Zenith | 8699374 |
| 4019 | 36900.37000.37100.38200.39200.40600.41800.96400.1499500 | Internal Plaster | 9d | 2026-03-20 | 2026-03-29 | 4003, 4017, 4018FF+5d |  | Zenith | 8699384 |
| 4020 | 36900.37000.37100.38200.39200.40600.41800.96400.1499600 | IPS flooring work | 7d | 2026-03-29 | 2026-04-05 | 4004, 4019 |  | Zenith | 8699394 |
| 4021 | 36900.37000.37100.38200.39200.40600.41800.96400.1499700 | Toilet dado work | 6d | 2026-03-29 | 2026-04-04 | 4005, 4018, 4019 |  | Zenith | 8699404 |
| 4022 | 36900.37000.37100.38200.39200.40600.41800.96400.1499800 | Toilet flooring work | 7d | 2026-04-04 | 2026-04-11 | 4006, 4021 |  | Zenith | 8699414 |
| 4023 | 36900.37000.37100.38200.39200.40600.41800.96400.1499900 | False Cieling panel fixing | 7d | 2026-04-11 | 2026-04-18 | 4007, 4022 |  | Zenith | 8699424 |
| 4024 | 36900.37000.37100.38200.39200.40600.41800.96400.1500000 | Living dinning flooring | 7d | 2026-04-11 | 2026-04-18 | 4008, 4022 |  | Zenith | 8699434 |
| 4025 | 36900.37000.37100.38200.39200.40600.41800.96400.1500100 | Putty primer coat | 8d | 2026-04-18 | 2026-04-26 | 4009, 4024 |  | Zenith | 8699444 |
| 4026 | 36900.37000.37100.38200.39200.40600.41800.96400.1500200 | Aluminium door-window fixing | 12d | 2026-04-27 | 2026-05-08 | 4010, 4020, 4024 |  | Zenith | 8699454 |
| 4027 | 36900.37000.37100.38200.39200.40600.41800.96400.1500300 | Door shutter fixing (Pre Hung) | 8d | 2026-04-26 | 2026-05-04 | 4011, 4025 |  | Zenith | 8699464 |
| 4028 | 36900.37000.37100.38200.39200.40600.41800.96400.1500400 | Electrical wiring work | 10d | 2026-05-07 | 2026-05-16 | 4012, 4027 |  | Zenith | 8699474 |
| 4029 | 36900.37000.37100.38200.39200.40600.41800.96400.1500500 | Painting 1st coat | 12d | 2026-05-23 | 2026-06-03 | 4013, 4028 |  | Zenith | 8699484 |

| ID | WBS | Task | Duration | Start | Finish | Predecessors | Constraint | Calendar | Unique_Task_ID |
| --- | --- | --- | --- | --- | --- | --- | --- | --- | --- |
| 4030 | 36900.37000.37100.38200.39200.40600.41800.96500 | **5th floor roof** | 90.75d | 2026-03-17 | 2026-06-15 |  | start no earlier than 2026-03-17 | Zenith | 8649834 |
| 4031 | 36900.37000.37100.38200.39200.40600.41800.96500.1500600 | Block Work | 6d | 2026-03-17 | 2026-03-23 | 3931, 4015 |  | Zenith | 8699494 |
| 4032 | 36900.37000.37100.38200.39200.40600.41800.96500.1500700 | Fire sprinkler pipe fixing | 5d | 2026-03-23 | 2026-03-28 | 4016, 4031 |  | Zenith | 8699504 |
| 4033 | 36900.37000.37100.38200.39200.40600.41800.96500.1500800 | Internal Plumbing Works | 5d | 2026-03-23 | 2026-03-28 | 4017, 4031 |  | Zenith | 8699514 |
| 4034 | 36900.37000.37100.38200.39200.40600.41800.96500.1500900 | Waterproofing | 5d | 2026-03-28 | 2026-04-02 | 4018, 4033 |  | Zenith | 8699524 |
| 4035 | 36900.37000.37100.38200.39200.40600.41800.96500.1501000 | Internal Plaster | 9d | 2026-03-29 | 2026-04-07 | 4019, 4033, 4034FF+5d |  | Zenith | 8699534 |
| 4036 | 36900.37000.37100.38200.39200.40600.41800.96500.1501100 | IPS flooring work | 7d | 2026-04-07 | 2026-04-14 | 4020, 4035 |  | Zenith | 8699544 |
| 4037 | 36900.37000.37100.38200.39200.40600.41800.96500.1501200 | Toilet dado work | 6d | 2026-04-07 | 2026-04-13 | 4021, 4034, 4035 |  | Zenith | 8699554 |
| 4038 | 36900.37000.37100.38200.39200.40600.41800.96500.1501300 | Toilet flooring work | 7d | 2026-04-13 | 2026-04-20 | 4022, 4037 |  | Zenith | 8699564 |
| 4039 | 36900.37000.37100.38200.39200.40600.41800.96500.1501400 | False Cieling panel fixing | 7d | 2026-04-20 | 2026-04-27 | 4023, 4038 |  | Zenith | 8699574 |
| 4040 | 36900.37000.37100.38200.39200.40600.41800.96500.1501500 | Living dinning flooring | 7d | 2026-04-20 | 2026-04-27 | 4024, 4038 |  | Zenith | 8699584 |
| 4041 | 36900.37000.37100.38200.39200.40600.41800.96500.1501600 | Putty primer coat | 8d | 2026-04-27 | 2026-05-05 | 4025, 4040 |  | Zenith | 8699594 |
| 4042 | 36900.37000.37100.38200.39200.40600.41800.96500.1501700 | Aluminium door-window fixing | 12d | 2026-05-09 | 2026-05-20 | 4026, 4036, 4040 |  | Zenith | 8699604 |
| 4043 | 36900.37000.37100.38200.39200.40600.41800.96500.1501800 | Door shutter fixing (Pre Hung) | 8d | 2026-05-05 | 2026-05-13 | 4027, 4041 |  | Zenith | 8699614 |
| 4044 | 36900.37000.37100.38200.39200.40600.41800.96500.1501900 | Electrical wiring work | 10d | 2026-05-17 | 2026-05-26 | 4028, 4043 |  | Zenith | 8699624 |
| 4045 | 36900.37000.37100.38200.39200.40600.41800.96500.1502000 | Painting 1st coat | 12d | 2026-06-04 | 2026-06-15 | 4029, 4044 |  | Zenith | 8699634 |
| 4046 | 36900.37000.37100.38200.39200.40600.41800.96600 | **6th floor roof** | 93.75d | 2026-03-26 | 2026-06-27 |  | start no earlier than 2026-03-26 | Zenith | 8649844 |
| 4047 | 36900.37000.37100.38200.39200.40600.41800.96600.1502100 | Block Work | 6d | 2026-03-26 | 2026-04-01 | 3932, 4031 |  | Zenith | 8699644 |
| 4048 | 36900.37000.37100.38200.39200.40600.41800.96600.1502200 | Fire sprinkler pipe fixing | 5d | 2026-04-01 | 2026-04-06 | 4032, 4047 |  | Zenith | 8699654 |
| 4049 | 36900.37000.37100.38200.39200.40600.41800.96600.1502300 | Internal Plumbing Works | 5d | 2026-04-01 | 2026-04-06 | 4033, 4047 |  | Zenith | 8699664 |
| 4050 | 36900.37000.37100.38200.39200.40600.41800.96600.1502400 | Waterproofing | 5d | 2026-04-06 | 2026-04-11 | 4034, 4049 |  | Zenith | 8699674 |
| 4051 | 36900.37000.37100.38200.39200.40600.41800.96600.1502500 | Internal Plaster | 9d | 2026-04-07 | 2026-04-16 | 4035, 4049, 4050FF+5d |  | Zenith | 8699684 |
| 4052 | 36900.37000.37100.38200.39200.40600.41800.96600.1502600 | IPS flooring work | 7d | 2026-04-16 | 2026-04-23 | 4036, 4051 |  | Zenith | 8699694 |
| 4053 | 36900.37000.37100.38200.39200.40600.41800.96600.1502700 | Toilet dado work | 6d | 2026-04-16 | 2026-04-22 | 4037, 4050, 4051 |  | Zenith | 8699704 |
| 4054 | 36900.37000.37100.38200.39200.40600.41800.96600.1502800 | Toilet flooring work | 7d | 2026-04-22 | 2026-04-29 | 4038, 4053 |  | Zenith | 8699714 |
| 4055 | 36900.37000.37100.38200.39200.40600.41800.96600.1502900 | False Cieling panel fixing | 7d | 2026-04-29 | 2026-05-06 | 4039, 4054 |  | Zenith | 8699724 |
| 4056 | 36900.37000.37100.38200.39200.40600.41800.96600.1503000 | Living dinning flooring | 7d | 2026-04-29 | 2026-05-06 | 4040, 4054 |  | Zenith | 8699734 |
| 4057 | 36900.37000.37100.38200.39200.40600.41800.96600.1503100 | Putty primer coat | 8d | 2026-05-06 | 2026-05-14 | 4041, 4056 |  | Zenith | 8699744 |
| 4058 | 36900.37000.37100.38200.39200.40600.41800.96600.1503200 | Aluminium door-window fixing | 12d | 2026-05-21 | 2026-06-01 | 4042, 4052, 4056 |  | Zenith | 8699754 |
| 4059 | 36900.37000.37100.38200.39200.40600.41800.96600.1503300 | Door shutter fixing (Pre Hung) | 8d | 2026-05-14 | 2026-05-22 | 4043, 4057 |  | Zenith | 8699764 |
| 4060 | 36900.37000.37100.38200.39200.40600.41800.96600.1503400 | Electrical wiring work | 10d | 2026-05-27 | 2026-06-05 | 4044, 4059 |  | Zenith | 8699774 |
| 4061 | 36900.37000.37100.38200.39200.40600.41800.96600.1503500 | Painting 1st coat | 12d | 2026-06-16 | 2026-06-27 | 4045, 4060 |  | Zenith | 8699784 |

| ID | WBS | Task | Duration | Start | Finish | Predecessors | Constraint | Calendar | Unique_Task_ID |
| --- | --- | --- | --- | --- | --- | --- | --- | --- | --- |
| 4062 | 36900.37000.37100.38200.39200.40600.41800.96700 | **7th floor roof** | 94.75d | 2026-04-06 | 2026-07-09 |  | start no earlier than 2026-04-06 | Zenith | 8649854 |
| 4063 | 36900.37000.37100.38200.39200.40600.41800.96700.1503600 | Block Work | 6d | 2026-04-06 | 2026-04-12 | 3933, 4047 |  | Zenith | 8699794 |
| 4064 | 36900.37000.37100.38200.39200.40600.41800.96700.1503700 | Fire sprinkler pipe fixing | 5d | 2026-04-12 | 2026-04-17 | 4048, 4063 |  | Zenith | 8699804 |
| 4065 | 36900.37000.37100.38200.39200.40600.41800.96700.1503800 | Internal Plumbing Works | 5d | 2026-04-12 | 2026-04-17 | 4049, 4063 |  | Zenith | 8699814 |
| 4066 | 36900.37000.37100.38200.39200.40600.41800.96700.1503900 | Waterproofing | 5d | 2026-04-17 | 2026-04-22 | 4050, 4065 |  | Zenith | 8699824 |
| 4067 | 36900.37000.37100.38200.39200.40600.41800.96700.1504000 | Internal Plaster | 9d | 2026-04-18 | 2026-04-27 | 4051, 4065, 4066FF+5d |  | Zenith | 8699834 |
| 4068 | 36900.37000.37100.38200.39200.40600.41800.96700.1504100 | IPS flooring work | 7d | 2026-04-27 | 2026-05-04 | 4052, 4067 |  | Zenith | 8699844 |
| 4069 | 36900.37000.37100.38200.39200.40600.41800.96700.1504200 | Toilet dado work | 6d | 2026-04-27 | 2026-05-03 | 4053, 4066, 4067 |  | Zenith | 8699854 |
| 4070 | 36900.37000.37100.38200.39200.40600.41800.96700.1504300 | Toilet flooring work | 7d | 2026-05-03 | 2026-05-10 | 4054, 4069 |  | Zenith | 8699864 |
| 4071 | 36900.37000.37100.38200.39200.40600.41800.96700.1504400 | False Cieling panel fixing | 7d | 2026-05-10 | 2026-05-17 | 4055, 4070 |  | Zenith | 8699874 |
| 4072 | 36900.37000.37100.38200.39200.40600.41800.96700.1504500 | Living dinning flooring | 7d | 2026-05-10 | 2026-05-17 | 4056, 4070 |  | Zenith | 8699884 |
| 4073 | 36900.37000.37100.38200.39200.40600.41800.96700.1504600 | Putty primer coat | 8d | 2026-05-17 | 2026-05-25 | 4057, 4072 |  | Zenith | 8699894 |
| 4074 | 36900.37000.37100.38200.39200.40600.41800.96700.1504700 | Aluminium door-window fixing | 12d | 2026-06-02 | 2026-06-13 | 4058, 4068, 4072 |  | Zenith | 8699904 |
| 4075 | 36900.37000.37100.38200.39200.40600.41800.96700.1504800 | Door shutter fixing (Pre Hung) | 8d | 2026-05-25 | 2026-06-02 | 4059, 4073 |  | Zenith | 8699914 |
| 4076 | 36900.37000.37100.38200.39200.40600.41800.96700.1504900 | Electrical wiring work | 10d | 2026-06-06 | 2026-06-15 | 4060, 4075 |  | Zenith | 8699924 |
| 4077 | 36900.37000.37100.38200.39200.40600.41800.96700.1505000 | Painting 1st coat | 12d | 2026-06-28 | 2026-07-09 | 4061, 4076 |  | Zenith | 8699934 |
| 4078 | 36900.37000.37100.38200.39200.40600.41800.96800 | **8th floor roof** | 95.75d | 2026-04-17 | 2026-07-21 |  | start no earlier than 2026-04-17 | Zenith | 8649864 |
| 4079 | 36900.37000.37100.38200.39200.40600.41800.96800.1505100 | Block Work | 6d | 2026-04-17 | 2026-04-23 | 3934, 4063 |  | Zenith | 8699944 |
| 4080 | 36900.37000.37100.38200.39200.40600.41800.96800.1505200 | Fire sprinkler pipe fixing | 5d | 2026-04-23 | 2026-04-28 | 4064, 4079 |  | Zenith | 8699954 |
| 4081 | 36900.37000.37100.38200.39200.40600.41800.96800.1505300 | Internal Plumbing Works | 5d | 2026-04-23 | 2026-04-28 | 4065, 4079 |  | Zenith | 8699964 |
| 4082 | 36900.37000.37100.38200.39200.40600.41800.96800.1505400 | Waterproofing | 5d | 2026-04-28 | 2026-05-03 | 4066, 4081 |  | Zenith | 8699974 |
| 4083 | 36900.37000.37100.38200.39200.40600.41800.96800.1505500 | Internal Plaster | 9d | 2026-04-29 | 2026-05-08 | 4067, 4081, 4082FF+5d |  | Zenith | 8699984 |
| 4084 | 36900.37000.37100.38200.39200.40600.41800.96800.1505600 | IPS flooring work | 7d | 2026-05-08 | 2026-05-15 | 4068, 4083 |  | Zenith | 8699994 |
| 4085 | 36900.37000.37100.38200.39200.40600.41800.96800.1505700 | Toilet dado work | 6d | 2026-05-08 | 2026-05-14 | 4069, 4082, 4083 |  | Zenith | 8700004 |
| 4086 | 36900.37000.37100.38200.39200.40600.41800.96800.1505800 | Toilet flooring work | 7d | 2026-05-14 | 2026-05-21 | 4070, 4085 |  | Zenith | 8700014 |
| 4087 | 36900.37000.37100.38200.39200.40600.41800.96800.1505900 | False Cieling panel fixing | 7d | 2026-05-21 | 2026-05-28 | 4071, 4086 |  | Zenith | 8700024 |
| 4088 | 36900.37000.37100.38200.39200.40600.41800.96800.1506000 | Living dinning flooring | 7d | 2026-05-21 | 2026-05-28 | 4072, 4086 |  | Zenith | 8700034 |
| 4089 | 36900.37000.37100.38200.39200.40600.41800.96800.1506100 | Putty primer coat | 8d | 2026-05-28 | 2026-06-05 | 4073, 4088 |  | Zenith | 8700044 |
| 4090 | 36900.37000.37100.38200.39200.40600.41800.96800.1506200 | Aluminium door-window fixing | 12d | 2026-06-14 | 2026-06-25 | 4074, 4084, 4088 |  | Zenith | 8700054 |
| 4091 | 36900.37000.37100.38200.39200.40600.41800.96800.1506300 | Door shutter fixing (Pre Hung) | 8d | 2026-06-05 | 2026-06-13 | 4075, 4089 |  | Zenith | 8700064 |
| 4092 | 36900.37000.37100.38200.39200.40600.41800.96800.1506400 | Electrical wiring work | 10d | 2026-06-16 | 2026-06-25 | 4076, 4091 |  | Zenith | 8700074 |
| 4093 | 36900.37000.37100.38200.39200.40600.41800.96800.1506500 | Painting 1st coat | 12d | 2026-07-10 | 2026-07-21 | 4077, 4092 |  | Zenith | 8700084 |

| ID | WBS | Task | Duration | Start | Finish | Predecessors | Constraint | Calendar | Unique_Task_ID |
| --- | --- | --- | --- | --- | --- | --- | --- | --- | --- |
| 4094 | 36900.37000.37100.38200.39200.40600.41800.96900 | **9th floor roof** | 96.75d | 2026-04-28 | 2026-08-02 |  | start no earlier than 2026-04-28 | Zenith | 8649874 |
| 4095 | 36900.37000.37100.38200.39200.40600.41800.96900.1506600 | Block Work | 6d | 2026-04-28 | 2026-05-04 | 3935, 4079 |  | Zenith | 8700094 |
| 4096 | 36900.37000.37100.38200.39200.40600.41800.96900.1506700 | Fire sprinkler pipe fixing | 5d | 2026-05-04 | 2026-05-09 | 4080, 4095 |  | Zenith | 8700104 |
| 4097 | 36900.37000.37100.38200.39200.40600.41800.96900.1506800 | Internal Plumbing Works | 5d | 2026-05-04 | 2026-05-09 | 4081, 4095 |  | Zenith | 8700114 |
| 4098 | 36900.37000.37100.38200.39200.40600.41800.96900.1506900 | Waterproofing | 5d | 2026-05-09 | 2026-05-14 | 4082, 4097 |  | Zenith | 8700124 |
| 4099 | 36900.37000.37100.38200.39200.40600.41800.96900.1507000 | Internal Plaster | 9d | 2026-05-10 | 2026-05-19 | 4083, 4097, 4098FF+5d |  | Zenith | 8700134 |
| 4100 | 36900.37000.37100.38200.39200.40600.41800.96900.1507100 | IPS flooring work | 7d | 2026-05-19 | 2026-05-26 | 4084, 4099 |  | Zenith | 8700144 |
| 4101 | 36900.37000.37100.38200.39200.40600.41800.96900.1507200 | Toilet dado work | 6d | 2026-05-19 | 2026-05-25 | 4085, 4098, 4099 |  | Zenith | 8700154 |
| 4102 | 36900.37000.37100.38200.39200.40600.41800.96900.1507300 | Toilet flooring work | 7d | 2026-05-25 | 2026-06-01 | 4086, 4101 |  | Zenith | 8700164 |
| 4103 | 36900.37000.37100.38200.39200.40600.41800.96900.1507400 | False Cieling panel fixing | 7d | 2026-06-01 | 2026-06-08 | 4087, 4102 |  | Zenith | 8700174 |
| 4104 | 36900.37000.37100.38200.39200.40600.41800.96900.1507500 | Living dinning flooring | 7d | 2026-06-01 | 2026-06-08 | 4088, 4102 |  | Zenith | 8700184 |
| 4105 | 36900.37000.37100.38200.39200.40600.41800.96900.1507600 | Putty primer coat | 8d | 2026-06-08 | 2026-06-16 | 4089, 4104 |  | Zenith | 8700194 |
| 4106 | 36900.37000.37100.38200.39200.40600.41800.96900.1507700 | Aluminium door-window fixing | 12d | 2026-06-26 | 2026-07-07 | 4090, 4100, 4104 |  | Zenith | 8700204 |
| 4107 | 36900.37000.37100.38200.39200.40600.41800.96900.1507800 | Door shutter fixing (Pre Hung) | 8d | 2026-06-16 | 2026-06-24 | 4091, 4105 |  | Zenith | 8700214 |
| 4108 | 36900.37000.37100.38200.39200.40600.41800.96900.1507900 | Electrical wiring work | 10d | 2026-06-26 | 2026-07-05 | 4092, 4107 |  | Zenith | 8700224 |
| 4109 | 36900.37000.37100.38200.39200.40600.41800.96900.1508000 | Painting 1st coat | 12d | 2026-07-22 | 2026-08-02 | 4093, 4108 |  | Zenith | 8700234 |
| 4110 | 36900.37000.37100.38200.39200.40600.41800.97000 | **10th floor roof** | 97.75d | 2026-05-09 | 2026-08-14 |  | start no earlier than 2026-05-09 | Zenith | 8649884 |
| 4111 | 36900.37000.37100.38200.39200.40600.41800.97000.1508100 | Block Work | 6d | 2026-05-09 | 2026-05-15 | 3936, 4095 |  | Zenith | 8700244 |
| 4112 | 36900.37000.37100.38200.39200.40600.41800.97000.1508200 | Fire sprinkler pipe fixing | 5d | 2026-05-15 | 2026-05-20 | 4096, 4111 |  | Zenith | 8700254 |
| 4113 | 36900.37000.37100.38200.39200.40600.41800.97000.1508300 | Internal Plumbing Works | 5d | 2026-05-15 | 2026-05-20 | 4097, 4111 |  | Zenith | 8700264 |
| 4114 | 36900.37000.37100.38200.39200.40600.41800.97000.1508400 | Waterproofing | 5d | 2026-05-20 | 2026-05-25 | 4098, 4113 |  | Zenith | 8700274 |
| 4115 | 36900.37000.37100.38200.39200.40600.41800.97000.1508500 | Internal Plaster | 9d | 2026-05-21 | 2026-05-30 | 4099, 4113, 4114FF+5d |  | Zenith | 8700284 |
| 4116 | 36900.37000.37100.38200.39200.40600.41800.97000.1508600 | IPS flooring work | 7d | 2026-05-30 | 2026-06-06 | 4100, 4115 |  | Zenith | 8700294 |
| 4117 | 36900.37000.37100.38200.39200.40600.41800.97000.1508700 | Toilet dado work | 6d | 2026-05-30 | 2026-06-05 | 4101, 4114, 4115 |  | Zenith | 8700304 |
| 4118 | 36900.37000.37100.38200.39200.40600.41800.97000.1508800 | Toilet flooring work | 7d | 2026-06-05 | 2026-06-12 | 4102, 4117 |  | Zenith | 8700314 |
| 4119 | 36900.37000.37100.38200.39200.40600.41800.97000.1508900 | False Cieling panel fixing | 7d | 2026-06-12 | 2026-06-19 | 4103, 4118 |  | Zenith | 8700324 |
| 4120 | 36900.37000.37100.38200.39200.40600.41800.97000.1509000 | Living dinning flooring | 7d | 2026-06-12 | 2026-06-19 | 4104, 4118 |  | Zenith | 8700334 |
| 4121 | 36900.37000.37100.38200.39200.40600.41800.97000.1509100 | Putty primer coat | 8d | 2026-06-19 | 2026-06-27 | 4105, 4120 |  | Zenith | 8700344 |
| 4122 | 36900.37000.37100.38200.39200.40600.41800.97000.1509200 | Aluminium door-window fixing | 12d | 2026-07-08 | 2026-07-19 | 4106, 4116, 4120 |  | Zenith | 8700354 |
| 4123 | 36900.37000.37100.38200.39200.40600.41800.97000.1509300 | Door shutter fixing (Pre Hung) | 8d | 2026-06-27 | 2026-07-05 | 4107, 4121 |  | Zenith | 8700364 |
| 4124 | 36900.37000.37100.38200.39200.40600.41800.97000.1509400 | Electrical wiring work | 10d | 2026-07-06 | 2026-07-15 | 4108, 4123 |  | Zenith | 8700374 |
| 4125 | 36900.37000.37100.38200.39200.40600.41800.97000.1509500 | Painting 1st coat | 12d | 2026-08-03 | 2026-08-14 | 4109, 4124 |  | Zenith | 8700384 |

| ID | WBS | Task | Duration | Start | Finish | Predecessors | Constraint | Calendar | Unique_Task_ID |
| --- | --- | --- | --- | --- | --- | --- | --- | --- | --- |
| 4126 | 36900.37000.37100.38200.39200.40600.41800.97100 | **11th floor roof** | 94.75d | 2026-05-24 | 2026-08-26 |  | start no earlier than 2026-05-24 | Zenith | 8649894 |
| 4127 | 36900.37000.37100.38200.39200.40600.41800.97100.1509600 | Block Work | 6d | 2026-05-24 | 2026-05-30 | 3937, 4111 |  | Zenith | 8700394 |
| 4128 | 36900.37000.37100.38200.39200.40600.41800.97100.1509700 | Fire sprinkler pipe fixing | 5d | 2026-05-30 | 2026-06-04 | 4112, 4127 |  | Zenith | 8700404 |
| 4129 | 36900.37000.37100.38200.39200.40600.41800.97100.1509800 | Internal Plumbing Works | 5d | 2026-05-30 | 2026-06-04 | 4113, 4127 |  | Zenith | 8700414 |
| 4130 | 36900.37000.37100.38200.39200.40600.41800.97100.1509900 | Waterproofing | 5d | 2026-06-04 | 2026-06-09 | 4114, 4129 |  | Zenith | 8700424 |
| 4131 | 36900.37000.37100.38200.39200.40600.41800.97100.1510000 | Internal Plaster | 9d | 2026-06-05 | 2026-06-14 | 4115, 4129, 4130FF+5d |  | Zenith | 8700434 |
| 4132 | 36900.37000.37100.38200.39200.40600.41800.97100.1510100 | IPS flooring work | 7d | 2026-06-14 | 2026-06-21 | 4116, 4131 |  | Zenith | 8700444 |
| 4133 | 36900.37000.37100.38200.39200.40600.41800.97100.1510200 | Toilet dado work | 6d | 2026-06-14 | 2026-06-20 | 4117, 4130, 4131 |  | Zenith | 8700454 |
| 4134 | 36900.37000.37100.38200.39200.40600.41800.97100.1510300 | Toilet flooring work | 7d | 2026-06-20 | 2026-06-27 | 4118, 4133 |  | Zenith | 8700464 |
| 4135 | 36900.37000.37100.38200.39200.40600.41800.97100.1510400 | False Cieling panel fixing | 7d | 2026-06-27 | 2026-07-04 | 4119, 4134 |  | Zenith | 8700474 |
| 4136 | 36900.37000.37100.38200.39200.40600.41800.97100.1510500 | Living dinning flooring | 7d | 2026-06-27 | 2026-07-04 | 4120, 4134 |  | Zenith | 8700484 |
| 4137 | 36900.37000.37100.38200.39200.40600.41800.97100.1510600 | Putty primer coat | 8d | 2026-07-04 | 2026-07-12 | 4121, 4136 |  | Zenith | 8700494 |
| 4138 | 36900.37000.37100.38200.39200.40600.41800.97100.1510700 | Aluminium door-window fixing | 12d | 2026-07-20 | 2026-07-31 | 4122, 4132, 4136 |  | Zenith | 8700504 |
| 4139 | 36900.37000.37100.38200.39200.40600.41800.97100.1510800 | Door shutter fixing (Pre Hung) | 8d | 2026-07-12 | 2026-07-20 | 4123, 4137 |  | Zenith | 8700514 |
| 4140 | 36900.37000.37100.38200.39200.40600.41800.97100.1510900 | Electrical wiring work | 10d | 2026-07-20 | 2026-07-30 | 4124, 4139 |  | Zenith | 8700524 |
| 4141 | 36900.37000.37100.38200.39200.40600.41800.97100.1511000 | Painting 1st coat | 12d | 2026-08-15 | 2026-08-26 | 4125, 4140 |  | Zenith | 8700534 |
| 4142 | 36900.37000.37100.38200.39200.40600.41800.97200 | **12th floor roof** | 95.75d | 2026-06-04 | 2026-09-07 |  | start no earlier than 2026-06-04 | Zenith | 8649904 |
| 4143 | 36900.37000.37100.38200.39200.40600.41800.97200.1511100 | Block Work | 6d | 2026-06-04 | 2026-06-10 | 3938, 4127 |  | Zenith | 8700544 |
| 4144 | 36900.37000.37100.38200.39200.40600.41800.97200.1511200 | Fire sprinkler pipe fixing | 5d | 2026-06-10 | 2026-06-15 | 4128, 4143 |  | Zenith | 8700554 |
| 4145 | 36900.37000.37100.38200.39200.40600.41800.97200.1511300 | Internal Plumbing Works | 5d | 2026-06-10 | 2026-06-15 | 4129, 4143 |  | Zenith | 8700564 |
| 4146 | 36900.37000.37100.38200.39200.40600.41800.97200.1511400 | Waterproofing | 5d | 2026-06-15 | 2026-06-20 | 4130, 4145 |  | Zenith | 8700574 |
| 4147 | 36900.37000.37100.38200.39200.40600.41800.97200.1511500 | Internal Plaster | 9d | 2026-06-16 | 2026-06-25 | 4131, 4145, 4146FF+5d |  | Zenith | 8700584 |
| 4148 | 36900.37000.37100.38200.39200.40600.41800.97200.1511600 | IPS flooring work | 7d | 2026-06-25 | 2026-07-02 | 4132, 4147 |  | Zenith | 8700594 |
| 4149 | 36900.37000.37100.38200.39200.40600.41800.97200.1511700 | Toilet dado work | 6d | 2026-06-25 | 2026-07-01 | 4133, 4146, 4147 |  | Zenith | 8700604 |
| 4150 | 36900.37000.37100.38200.39200.40600.41800.97200.1511800 | Toilet flooring work | 7d | 2026-07-01 | 2026-07-08 | 4134, 4149 |  | Zenith | 8700614 |
| 4151 | 36900.37000.37100.38200.39200.40600.41800.97200.1511900 | False Cieling panel fixing | 7d | 2026-07-08 | 2026-07-15 | 4135, 4150 |  | Zenith | 8700624 |
| 4152 | 36900.37000.37100.38200.39200.40600.41800.97200.1512000 | Living dinning flooring | 7d | 2026-07-08 | 2026-07-15 | 4136, 4150 |  | Zenith | 8700634 |
| 4153 | 36900.37000.37100.38200.39200.40600.41800.97200.1512100 | Putty primer coat | 8d | 2026-07-15 | 2026-07-23 | 4137, 4152 |  | Zenith | 8700644 |
| 4154 | 36900.37000.37100.38200.39200.40600.41800.97200.1512200 | Aluminium door-window fixing | 12d | 2026-08-01 | 2026-08-12 | 4138, 4148, 4152 |  | Zenith | 8700654 |
| 4155 | 36900.37000.37100.38200.39200.40600.41800.97200.1512300 | Door shutter fixing (Pre Hung) | 8d | 2026-07-23 | 2026-07-31 | 4139, 4153 |  | Zenith | 8700664 |
| 4156 | 36900.37000.37100.38200.39200.40600.41800.97200.1512400 | Electrical wiring work | 10d | 2026-07-31 | 2026-08-10 | 4140, 4155 |  | Zenith | 8700674 |
| 4157 | 36900.37000.37100.38200.39200.40600.41800.97200.1512500 | Painting 1st coat | 12d | 2026-08-27 | 2026-09-07 | 4141, 4156 |  | Zenith | 8700684 |

| ID | WBS | Task | Duration | Start | Finish | Predecessors | Constraint | Calendar | Unique_Task_ID |
| --- | --- | --- | --- | --- | --- | --- | --- | --- | --- |
| 4158 | 36900.37000.37100.38200.39200.40600.41800.97300 | **13th floor roof** | 96.75d | 2026-06-15 | 2026-09-19 |  | start no earlier than 2026-06-15 | Zenith | 8649914 |
| 4159 | 36900.37000.37100.38200.39200.40600.41800.97300.1512600 | Block Work | 6d | 2026-06-15 | 2026-06-21 | 3939, 4143 |  | Zenith | 8700694 |
| 4160 | 36900.37000.37100.38200.39200.40600.41800.97300.1512700 | Fire sprinkler pipe fixing | 5d | 2026-06-21 | 2026-06-26 | 4144, 4159 |  | Zenith | 8700704 |
| 4161 | 36900.37000.37100.38200.39200.40600.41800.97300.1512800 | Internal Plumbing Works | 5d | 2026-06-21 | 2026-06-26 | 4145, 4159 |  | Zenith | 8700714 |
| 4162 | 36900.37000.37100.38200.39200.40600.41800.97300.1512900 | Waterproofing | 5d | 2026-06-26 | 2026-07-01 | 4146, 4161 |  | Zenith | 8700724 |
| 4163 | 36900.37000.37100.38200.39200.40600.41800.97300.1513000 | Internal Plaster | 9d | 2026-06-27 | 2026-07-06 | 4147, 4161, 4162FF+5d |  | Zenith | 8700734 |
| 4164 | 36900.37000.37100.38200.39200.40600.41800.97300.1513100 | IPS flooring work | 7d | 2026-07-06 | 2026-07-13 | 4148, 4163 |  | Zenith | 8700744 |
| 4165 | 36900.37000.37100.38200.39200.40600.41800.97300.1513200 | Toilet dado work | 6d | 2026-07-06 | 2026-07-12 | 4149, 4162, 4163 |  | Zenith | 8700754 |
| 4166 | 36900.37000.37100.38200.39200.40600.41800.97300.1513300 | Toilet flooring work | 7d | 2026-07-12 | 2026-07-19 | 4150, 4165 |  | Zenith | 8700764 |
| 4167 | 36900.37000.37100.38200.39200.40600.41800.97300.1513400 | False Cieling panel fixing | 7d | 2026-07-19 | 2026-07-26 | 4151, 4166 |  | Zenith | 8700774 |
| 4168 | 36900.37000.37100.38200.39200.40600.41800.97300.1513500 | Living dinning flooring | 7d | 2026-07-19 | 2026-07-26 | 4152, 4166 |  | Zenith | 8700784 |
| 4169 | 36900.37000.37100.38200.39200.40600.41800.97300.1513600 | Putty primer coat | 8d | 2026-07-26 | 2026-08-03 | 4153, 4168 |  | Zenith | 8700794 |
| 4170 | 36900.37000.37100.38200.39200.40600.41800.97300.1513700 | Aluminium door-window fixing | 12d | 2026-08-13 | 2026-08-24 | 4154, 4164, 4168 |  | Zenith | 8700804 |
| 4171 | 36900.37000.37100.38200.39200.40600.41800.97300.1513800 | Door shutter fixing (Pre Hung) | 8d | 2026-08-03 | 2026-08-11 | 4155, 4169 |  | Zenith | 8700814 |
| 4172 | 36900.37000.37100.38200.39200.40600.41800.97300.1513900 | Electrical wiring work | 10d | 2026-08-11 | 2026-08-21 | 4156, 4171 |  | Zenith | 8700824 |
| 4173 | 36900.37000.37100.38200.39200.40600.41800.97300.1514000 | Painting 1st coat | 12d | 2026-09-08 | 2026-09-19 | 4157, 4172 |  | Zenith | 8700834 |
| 4174 | 36900.37000.37100.38200.39200.40600.41800.97400 | **14th floor roof** | 97.75d | 2026-06-26 | 2026-10-01 |  | start no earlier than 2026-06-26 | Zenith | 8649924 |
| 4175 | 36900.37000.37100.38200.39200.40600.41800.97400.1514100 | Block Work | 6d | 2026-06-26 | 2026-07-02 | 3940, 4159 |  | Zenith | 8700844 |
| 4176 | 36900.37000.37100.38200.39200.40600.41800.97400.1514200 | Fire sprinkler pipe fixing | 5d | 2026-07-02 | 2026-07-07 | 4160, 4175 |  | Zenith | 8700854 |
| 4177 | 36900.37000.37100.38200.39200.40600.41800.97400.1514300 | Internal Plumbing Works | 5d | 2026-07-02 | 2026-07-07 | 4161, 4175 |  | Zenith | 8700864 |
| 4178 | 36900.37000.37100.38200.39200.40600.41800.97400.1514400 | Waterproofing | 5d | 2026-07-07 | 2026-07-12 | 4162, 4177 |  | Zenith | 8700874 |
| 4179 | 36900.37000.37100.38200.39200.40600.41800.97400.1514500 | Internal Plaster | 9d | 2026-07-08 | 2026-07-17 | 4163, 4177, 4178FF+5d |  | Zenith | 8700884 |
| 4180 | 36900.37000.37100.38200.39200.40600.41800.97400.1514600 | IPS flooring work | 7d | 2026-07-17 | 2026-07-24 | 4164, 4179 |  | Zenith | 8700894 |
| 4181 | 36900.37000.37100.38200.39200.40600.41800.97400.1514700 | Toilet dado work | 6d | 2026-07-17 | 2026-07-23 | 4165, 4178, 4179 |  | Zenith | 8700904 |
| 4182 | 36900.37000.37100.38200.39200.40600.41800.97400.1514800 | Toilet flooring work | 7d | 2026-07-23 | 2026-07-30 | 4166, 4181 |  | Zenith | 8700914 |
| 4183 | 36900.37000.37100.38200.39200.40600.41800.97400.1514900 | False Cieling panel fixing | 7d | 2026-07-30 | 2026-08-06 | 4167, 4182 |  | Zenith | 8700924 |
| 4184 | 36900.37000.37100.38200.39200.40600.41800.97400.1515000 | Living dinning flooring | 7d | 2026-07-30 | 2026-08-06 | 4168, 4182 |  | Zenith | 8700934 |
| 4185 | 36900.37000.37100.38200.39200.40600.41800.97400.1515100 | Putty primer coat | 8d | 2026-08-06 | 2026-08-14 | 4169, 4184 |  | Zenith | 8700944 |
| 4186 | 36900.37000.37100.38200.39200.40600.41800.97400.1515200 | Aluminium door-window fixing | 12d | 2026-08-25 | 2026-09-05 | 4170, 4180, 4184 |  | Zenith | 8700954 |
| 4187 | 36900.37000.37100.38200.39200.40600.41800.97400.1515300 | Door shutter fixing (Pre Hung) | 8d | 2026-08-14 | 2026-08-22 | 4171, 4185 |  | Zenith | 8700964 |
| 4188 | 36900.37000.37100.38200.39200.40600.41800.97400.1515400 | Electrical wiring work | 10d | 2026-08-22 | 2026-09-01 | 4172, 4187 |  | Zenith | 8700974 |
| 4189 | 36900.37000.37100.38200.39200.40600.41800.97400.1515500 | Painting 1st coat | 12d | 2026-09-20 | 2026-10-01 | 4173, 4188 |  | Zenith | 8700984 |

| ID | WBS | Task | Duration | Start | Finish | Predecessors | Constraint | Calendar | Unique_Task_ID |
| --- | --- | --- | --- | --- | --- | --- | --- | --- | --- |
| 4190 | 36900.37000.37100.38200.39200.40600.41800.97500 | **15th floor roof** | 98.75d | 2026-07-07 | 2026-10-13 |  | start no earlier than 2026-07-07 | Zenith | 8649934 |
| 4191 | 36900.37000.37100.38200.39200.40600.41800.97500.1515600 | Block Work | 6d | 2026-07-07 | 2026-07-13 | 3941, 4175 |  | Zenith | 8700994 |
| 4192 | 36900.37000.37100.38200.39200.40600.41800.97500.1515700 | Fire sprinkler pipe fixing | 5d | 2026-07-13 | 2026-07-18 | 4176, 4191 |  | Zenith | 8701004 |
| 4193 | 36900.37000.37100.38200.39200.40600.41800.97500.1515800 | Internal Plumbing Works | 5d | 2026-07-13 | 2026-07-18 | 4177, 4191 |  | Zenith | 8701014 |
| 4194 | 36900.37000.37100.38200.39200.40600.41800.97500.1515900 | Waterproofing | 5d | 2026-07-18 | 2026-07-23 | 4178, 4193 |  | Zenith | 8701024 |
| 4195 | 36900.37000.37100.38200.39200.40600.41800.97500.1516000 | Internal Plaster | 9d | 2026-07-19 | 2026-07-28 | 4179, 4193, 4194FF+5d |  | Zenith | 8701034 |
| 4196 | 36900.37000.37100.38200.39200.40600.41800.97500.1516100 | IPS flooring work | 7d | 2026-07-28 | 2026-08-04 | 4180, 4195 |  | Zenith | 8701044 |
| 4197 | 36900.37000.37100.38200.39200.40600.41800.97500.1516200 | Toilet dado work | 6d | 2026-07-28 | 2026-08-03 | 4181, 4194, 4195 |  | Zenith | 8701054 |
| 4198 | 36900.37000.37100.38200.39200.40600.41800.97500.1516300 | Toilet flooring work | 7d | 2026-08-03 | 2026-08-10 | 4182, 4197 |  | Zenith | 8701064 |
| 4199 | 36900.37000.37100.38200.39200.40600.41800.97500.1516400 | False Cieling panel fixing | 7d | 2026-08-10 | 2026-08-17 | 4183, 4198 |  | Zenith | 8701074 |
| 4200 | 36900.37000.37100.38200.39200.40600.41800.97500.1516500 | Living dinning flooring | 7d | 2026-08-10 | 2026-08-17 | 4184, 4198 |  | Zenith | 8701084 |
| 4201 | 36900.37000.37100.38200.39200.40600.41800.97500.1516600 | Aluminium door-window fixing | 8d | 2026-09-06 | 2026-09-13 | 4186, 4196, 4200 |  | Zenith | 8701094 |
| 4202 | 36900.37000.37100.38200.39200.40600.41800.97500.1516700 | Putty primer coat | 12d | 2026-08-17 | 2026-08-29 | 4185, 4200 |  | Zenith | 8701104 |
| 4203 | 36900.37000.37100.38200.39200.40600.41800.97500.1516800 | Door shutter fixing (Pre Hung) | 8d | 2026-08-29 | 2026-09-06 | 4187, 4202 |  | Zenith | 8701114 |
| 4204 | 36900.37000.37100.38200.39200.40600.41800.97500.1516900 | Electrical wiring work | 10d | 2026-09-06 | 2026-09-16 | 4188, 4203 |  | Zenith | 8701124 |
| 4205 | 36900.37000.37100.38200.39200.40600.41800.97500.1517000 | Painting 1st coat | 12d | 2026-10-02 | 2026-10-13 | 4189, 4204 |  | Zenith | 8701134 |
| 4206 | 36900.37000.37100.38200.39200.40600.41800.97600 | **16th floor roof** | 99.75d | 2026-07-18 | 2026-10-25 |  | start no earlier than 2026-07-18 | Zenith | 8649944 |
| 4207 | 36900.37000.37100.38200.39200.40600.41800.97600.1517100 | Block Work | 6d | 2026-07-18 | 2026-07-24 | 3942, 4191 |  | Zenith | 8701144 |
| 4208 | 36900.37000.37100.38200.39200.40600.41800.97600.1517200 | Fire sprinkler pipe fixing | 5d | 2026-07-24 | 2026-07-29 | 4192, 4207 |  | Zenith | 8701154 |
| 4209 | 36900.37000.37100.38200.39200.40600.41800.97600.1517300 | Internal Plumbing Works | 5d | 2026-07-24 | 2026-07-29 | 4193, 4207 |  | Zenith | 8701164 |
| 4210 | 36900.37000.37100.38200.39200.40600.41800.97600.1517400 | Waterproofing | 5d | 2026-07-29 | 2026-08-03 | 4194, 4209 |  | Zenith | 8701174 |
| 4211 | 36900.37000.37100.38200.39200.40600.41800.97600.1517500 | Internal Plaster | 9d | 2026-07-30 | 2026-08-08 | 4195, 4209, 4210FF+5d |  | Zenith | 8701184 |
| 4212 | 36900.37000.37100.38200.39200.40600.41800.97600.1517600 | IPS flooring work | 7d | 2026-08-08 | 2026-08-15 | 4196, 4211 |  | Zenith | 8701194 |
| 4213 | 36900.37000.37100.38200.39200.40600.41800.97600.1517700 | Toilet dado work | 6d | 2026-08-08 | 2026-08-14 | 4197, 4210, 4211 |  | Zenith | 8701204 |
| 4214 | 36900.37000.37100.38200.39200.40600.41800.97600.1517800 | Toilet flooring work | 7d | 2026-08-14 | 2026-08-21 | 4198, 4213 |  | Zenith | 8701214 |
| 4215 | 36900.37000.37100.38200.39200.40600.41800.97600.1517900 | False Cieling panel fixing | 7d | 2026-08-21 | 2026-08-28 | 4199, 4214 |  | Zenith | 8701224 |
| 4216 | 36900.37000.37100.38200.39200.40600.41800.97600.1518000 | Living dinning flooring | 7d | 2026-08-21 | 2026-08-28 | 4200, 4214 |  | Zenith | 8701234 |
| 4217 | 36900.37000.37100.38200.39200.40600.41800.97600.1518100 | Putty primer coat | 8d | 2026-08-29 | 2026-09-06 | 4202, 4216 |  | Zenith | 8701244 |
| 4218 | 36900.37000.37100.38200.39200.40600.41800.97600.1518200 | Aluminium door-window fixing | 12d | 2026-09-14 | 2026-09-25 | 4201, 4212, 4216 |  | Zenith | 8701254 |
| 4219 | 36900.37000.37100.38200.39200.40600.41800.97600.1518300 | Door shutter fixing (Pre Hung) | 8d | 2026-09-06 | 2026-09-14 | 4203, 4217 |  | Zenith | 8701264 |
| 4220 | 36900.37000.37100.38200.39200.40600.41800.97600.1518400 | Electrical wiring work | 10d | 2026-09-16 | 2026-09-26 | 4204, 4219 |  | Zenith | 8701274 |
| 4221 | 36900.37000.37100.38200.39200.40600.41800.97600.1518500 | Painting 1st coat | 12d | 2026-10-14 | 2026-10-25 | 4205, 4220 |  | Zenith | 8701284 |

| ID | WBS | Task | Duration | Start | Finish | Predecessors | Constraint | Calendar | Unique_Task_ID |
| --- | --- | --- | --- | --- | --- | --- | --- | --- | --- |
| 4222 | 36900.37000.37100.38200.39200.40600.41800.97700 | **17th floor roof** | 100.75d | 2026-07-29 | 2026-12-21 |  | start no earlier than 2026-07-29 | Zenith | 8649954 |
| 4223 | 36900.37000.37100.38200.39200.40600.41800.97700.1518600 | Block Work | 6d | 2026-07-29 | 2026-08-04 | 3943, 4207 |  | Zenith | 8701294 |
| 4224 | 36900.37000.37100.38200.39200.40600.41800.97700.1518700 | Fire sprinkler pipe fixing | 5d | 2026-08-04 | 2026-08-09 | 4208, 4223 |  | Zenith | 8701304 |
| 4225 | 36900.37000.37100.38200.39200.40600.41800.97700.1518800 | Internal Plumbing Works | 5d | 2026-08-04 | 2026-08-09 | 4209, 4223 |  | Zenith | 8701314 |
| 4226 | 36900.37000.37100.38200.39200.40600.41800.97700.1518900 | Waterproofing | 5d | 2026-08-09 | 2026-08-14 | 4210, 4225 |  | Zenith | 8701324 |
| 4227 | 36900.37000.37100.38200.39200.40600.41800.97700.1519000 | Internal Plaster | 9d | 2026-08-10 | 2026-08-19 | 4211, 4225, 4226FF+5d |  | Zenith | 8701334 |
| 4228 | 36900.37000.37100.38200.39200.40600.41800.97700.1519100 | IPS flooring work | 7d | 2026-08-19 | 2026-08-26 | 4212, 4227 |  | Zenith | 8701344 |
| 4229 | 36900.37000.37100.38200.39200.40600.41800.97700.1519200 | Toilet dado work | 6d | 2026-08-19 | 2026-08-25 | 4213, 4226, 4227 |  | Zenith | 8701354 |
| 4230 | 36900.37000.37100.38200.39200.40600.41800.97700.1519300 | Toilet flooring work | 7d | 2026-08-25 | 2026-09-01 | 4214, 4229 |  | Zenith | 8701364 |
| 4231 | 36900.37000.37100.38200.39200.40600.41800.97700.1519400 | False Cieling panel fixing | 7d | 2026-09-01 | 2026-09-08 | 4215, 4230 |  | Zenith | 8701374 |
| 4232 | 36900.37000.37100.38200.39200.40600.41800.97700.1519500 | Living dinning flooring | 7d | 2026-09-01 | 2026-09-08 | 4216, 4230 |  | Zenith | 8701384 |
| 4233 | 36900.37000.37100.38200.39200.40600.41800.97700.1519600 | Putty primer coat | 8d | 2026-09-08 | 2026-09-16 | 4217, 4232 |  | Zenith | 8701394 |
| 4234 | 36900.37000.37100.38200.39200.40600.41800.97700.1519700 | Aluminium door-window fixing | 12d | 2026-09-26 | 2026-10-07 | 4218, 4228, 4232 |  | Zenith | 8701404 |
| 4235 | 36900.37000.37100.38200.39200.40600.41800.97700.1519800 | Door shutter fixing (Pre Hung) | 8d | 2026-09-16 | 2026-09-24 | 4219, 4233 |  | Zenith | 8701414 |
| 4236 | 36900.37000.37100.38200.39200.40600.41800.97700.1519900 | Electrical wiring work | 10d | 2026-09-26 | 2026-10-06 | 4220, 4235 |  | Zenith | 8701424 |
| 4237 | 36900.37000.37100.38200.39200.40600.41800.97700.1520000 | Painting 1st coat | 12d | 2026-10-26 | 2026-12-21 | 4221, 4236 |  | Zenith | 8701434 |
| 4238 | 36900.37000.37100.38200.39200.40600.41800.97800 | **18th floor roof** | 101.75d | 2026-08-09 | 2027-01-02 |  | start no earlier than 2026-08-09 | Zenith | 8649964 |
| 4239 | 36900.37000.37100.38200.39200.40600.41800.97800.1520100 | Block Work | 6d | 2026-08-09 | 2026-08-15 | 3944, 4223 |  | Zenith | 8701444 |
| 4240 | 36900.37000.37100.38200.39200.40600.41800.97800.1520200 | Fire sprinkler pipe fixing | 5d | 2026-08-15 | 2026-08-20 | 4224, 4239 |  | Zenith | 8701454 |
| 4241 | 36900.37000.37100.38200.39200.40600.41800.97800.1520300 | Internal Plumbing Works | 5d | 2026-08-15 | 2026-08-20 | 4225, 4239 |  | Zenith | 8701464 |
| 4242 | 36900.37000.37100.38200.39200.40600.41800.97800.1520400 | Waterproofing | 5d | 2026-08-20 | 2026-08-25 | 4226, 4241 |  | Zenith | 8701474 |
| 4243 | 36900.37000.37100.38200.39200.40600.41800.97800.1520500 | Internal Plaster | 9d | 2026-08-21 | 2026-08-30 | 4227, 4241, 4242FF+5d |  | Zenith | 8701484 |
| 4244 | 36900.37000.37100.38200.39200.40600.41800.97800.1520600 | IPS flooring work | 7d | 2026-08-30 | 2026-09-06 | 4228, 4243 |  | Zenith | 8701494 |
| 4245 | 36900.37000.37100.38200.39200.40600.41800.97800.1520700 | Toilet dado work | 6d | 2026-08-30 | 2026-09-05 | 4229, 4242, 4243 |  | Zenith | 8701504 |
| 4246 | 36900.37000.37100.38200.39200.40600.41800.97800.1520800 | Toilet flooring work | 7d | 2026-09-05 | 2026-09-12 | 4230, 4245 |  | Zenith | 8701514 |
| 4247 | 36900.37000.37100.38200.39200.40600.41800.97800.1520900 | False Cieling panel fixing | 7d | 2026-09-12 | 2026-09-19 | 4231, 4246 |  | Zenith | 8701524 |
| 4248 | 36900.37000.37100.38200.39200.40600.41800.97800.1521000 | Living dinning flooring | 7d | 2026-09-12 | 2026-09-19 | 4232, 4246 |  | Zenith | 8701534 |
| 4249 | 36900.37000.37100.38200.39200.40600.41800.97800.1521100 | Putty primer coat | 8d | 2026-09-19 | 2026-09-27 | 4233, 4248 |  | Zenith | 8701544 |
| 4250 | 36900.37000.37100.38200.39200.40600.41800.97800.1521200 | Aluminium door-window fixing | 12d | 2026-10-08 | 2026-10-19 | 4234, 4244, 4248 |  | Zenith | 8701554 |
| 4251 | 36900.37000.37100.38200.39200.40600.41800.97800.1521300 | Door shutter fixing (Pre Hung) | 8d | 2026-09-27 | 2026-10-05 | 4235, 4249 |  | Zenith | 8701564 |
| 4252 | 36900.37000.37100.38200.39200.40600.41800.97800.1521400 | Electrical wiring work | 10d | 2026-10-06 | 2026-10-16 | 4236, 4251 |  | Zenith | 8701574 |
| 4253 | 36900.37000.37100.38200.39200.40600.41800.97800.1521500 | Painting 1st coat | 12d | 2026-12-22 | 2027-01-02 | 4237, 4252 |  | Zenith | 8701584 |

| ID | WBS | Task | Duration | Start | Finish | Predecessors | Constraint | Calendar | Unique_Task_ID |
| --- | --- | --- | --- | --- | --- | --- | --- | --- | --- |
| 4254 | 36900.37000.37100.38200.39200.40600.41800.97900 | **19th floor roof** | 102.75d | 2026-08-20 | 2027-01-14 |  | start no earlier than 2026-08-20 | Zenith | 8649974 |
| 4255 | 36900.37000.37100.38200.39200.40600.41800.97900.1521600 | Block Work | 6d | 2026-08-20 | 2026-08-26 | 3945, 4239 |  | Zenith | 8701594 |
| 4256 | 36900.37000.37100.38200.39200.40600.41800.97900.1521700 | Fire sprinkler pipe fixing | 4d | 2026-08-26 | 2026-08-30 | 4240, 4255 |  | Zenith | 8701604 |
| 4257 | 36900.37000.37100.38200.39200.40600.41800.97900.1521800 | Internal Plumbing Works | 4d | 2026-08-26 | 2026-08-30 | 4241, 4255 |  | Zenith | 8701614 |
| 4258 | 36900.37000.37100.38200.39200.40600.41800.97900.1521900 | Waterproofing | 4d | 2026-08-30 | 2026-09-03 | 4242, 4257 |  | Zenith | 8701624 |
| 4259 | 36900.37000.37100.38200.39200.40600.41800.97900.1522000 | Internal Plaster | 9d | 2026-08-30 | 2026-09-08 | 4243, 4257, 4258FF+5d |  | Zenith | 8701634 |
| 4260 | 36900.37000.37100.38200.39200.40600.41800.97900.1522100 | IPS flooring work | 7d | 2026-09-08 | 2026-09-15 | 4244, 4259 |  | Zenith | 8701644 |
| 4261 | 36900.37000.37100.38200.39200.40600.41800.97900.1522200 | Toilet dado work | 6d | 2026-09-08 | 2026-09-14 | 4245, 4258, 4259 |  | Zenith | 8701654 |
| 4262 | 36900.37000.37100.38200.39200.40600.41800.97900.1522300 | Toilet flooring work | 7d | 2026-09-14 | 2026-09-21 | 4246, 4261 |  | Zenith | 8701664 |
| 4263 | 36900.37000.37100.38200.39200.40600.41800.97900.1522400 | False Cieling panel fixing | 7d | 2026-09-21 | 2026-09-28 | 4247, 4262 |  | Zenith | 8701674 |
| 4264 | 36900.37000.37100.38200.39200.40600.41800.97900.1522500 | Living dinning flooring | 7d | 2026-09-21 | 2026-09-28 | 4248, 4262 |  | Zenith | 8701684 |
| 4265 | 36900.37000.37100.38200.39200.40600.41800.97900.1522600 | Putty primer coat | 8d | 2026-09-28 | 2026-10-06 | 4249, 4264 |  | Zenith | 8701694 |
| 4266 | 36900.37000.37100.38200.39200.40600.41800.97900.1522700 | Aluminium door-window fixing | 12d | 2026-10-20 | 2026-10-31 | 4250, 4260, 4264 |  | Zenith | 8701704 |
| 4267 | 36900.37000.37100.38200.39200.40600.41800.97900.1522800 | Door shutter fixing (Pre Hung) | 8d | 2026-10-06 | 2026-10-14 | 4251, 4265 |  | Zenith | 8701714 |
| 4268 | 36900.37000.37100.38200.39200.40600.41800.97900.1522900 | Electrical wiring work | 10d | 2026-10-16 | 2026-10-26 | 4252, 4267 |  | Zenith | 8701724 |
| 4269 | 36900.37000.37100.38200.39200.40600.41800.97900.1523000 | Painting 1st coat | 12d | 2027-01-03 | 2027-01-14 | 4253, 4268 |  | Zenith | 8701734 |
| 4270 | 36900.37000.37100.38200.39200.40600.41800.98000 | **20th floor roof** | 103.75d | 2026-08-31 | 2027-01-26 |  | start no earlier than 2026-08-31 | Zenith | 8649984 |
| 4271 | 36900.37000.37100.38200.39200.40600.41800.98000.1523100 | Block Work | 6d | 2026-08-31 | 2026-09-06 | 3946, 4255 |  | Zenith | 8701744 |
| 4272 | 36900.37000.37100.38200.39200.40600.41800.98000.1523200 | Fire sprinkler pipe fixing | 4d | 2026-09-06 | 2026-09-10 | 4256, 4271 |  | Zenith | 8701754 |
| 4273 | 36900.37000.37100.38200.39200.40600.41800.98000.1523300 | Internal Plumbing Works | 4d | 2026-09-06 | 2026-09-10 | 4257, 4271 |  | Zenith | 8701764 |
| 4274 | 36900.37000.37100.38200.39200.40600.41800.98000.1523400 | Waterproofing | 4d | 2026-09-10 | 2026-09-14 | 4258, 4273 |  | Zenith | 8701774 |
| 4275 | 36900.37000.37100.38200.39200.40600.41800.98000.1523500 | Internal Plaster | 9d | 2026-09-10 | 2026-09-19 | 4259, 4273, 4274FF+5d |  | Zenith | 8701784 |
| 4276 | 36900.37000.37100.38200.39200.40600.41800.98000.1523600 | IPS flooring work | 7d | 2026-09-19 | 2026-09-26 | 4260, 4275 |  | Zenith | 8701794 |
| 4277 | 36900.37000.37100.38200.39200.40600.41800.98000.1523700 | Toilet dado work | 6d | 2026-09-19 | 2026-09-25 | 4261, 4274, 4275 |  | Zenith | 8701804 |
| 4278 | 36900.37000.37100.38200.39200.40600.41800.98000.1523800 | Toilet flooring work | 7d | 2026-09-25 | 2026-10-02 | 4262, 4277 |  | Zenith | 8701814 |
| 4279 | 36900.37000.37100.38200.39200.40600.41800.98000.1523900 | False Cieling panel fixing | 7d | 2026-10-02 | 2026-10-09 | 4263, 4278 |  | Zenith | 8701824 |
| 4280 | 36900.37000.37100.38200.39200.40600.41800.98000.1524000 | Living dinning flooring | 7d | 2026-10-02 | 2026-10-09 | 4264, 4278 |  | Zenith | 8701834 |
| 4281 | 36900.37000.37100.38200.39200.40600.41800.98000.1524100 | Putty primer coat | 8d | 2026-10-09 | 2026-10-17 | 4265, 4280 |  | Zenith | 8701844 |
| 4282 | 36900.37000.37100.38200.39200.40600.41800.98000.1524200 | Aluminium door-window fixing | 12d | 2026-12-16 | 2026-12-27 | 4266, 4276, 4280 |  | Zenith | 8701854 |
| 4283 | 36900.37000.37100.38200.39200.40600.41800.98000.1524300 | Door shutter fixing (Pre Hung) | 8d | 2026-10-17 | 2026-10-25 | 4267, 4281 |  | Zenith | 8701864 |
| 4284 | 36900.37000.37100.38200.39200.40600.41800.98000.1524400 | Electrical wiring work | 10d | 2026-10-26 | 2026-12-20 | 4268, 4283 |  | Zenith | 8701874 |
| 4285 | 36900.37000.37100.38200.39200.40600.41800.98000.1524500 | Painting 1st coat | 12d | 2027-01-15 | 2027-01-26 | 4269, 4284 |  | Zenith | 8701884 |

| ID | WBS | Task | Duration | Start | Finish | Predecessors | Constraint | Calendar | Unique_Task_ID |
| --- | --- | --- | --- | --- | --- | --- | --- | --- | --- |
| 4286 | 36900.37000.37100.38200.39200.40600.41800.98100 | **21st floor roof** | 104.75d | 2026-09-11 | 2027-02-07 |  | start no earlier than 2026-09-11 | Zenith | 8649994 |
| 4287 | 36900.37000.37100.38200.39200.40600.41800.98100.1524600 | Block Work | 6d | 2026-09-11 | 2026-09-17 | 3947, 4271 |  | Zenith | 8701894 |
| 4288 | 36900.37000.37100.38200.39200.40600.41800.98100.1524700 | Fire sprinkler pipe fixing | 4d | 2026-09-17 | 2026-09-21 | 4272, 4287 |  | Zenith | 8701904 |
| 4289 | 36900.37000.37100.38200.39200.40600.41800.98100.1524800 | Internal Plumbing Works | 4d | 2026-09-17 | 2026-09-21 | 4273, 4287 |  | Zenith | 8701914 |
| 4290 | 36900.37000.37100.38200.39200.40600.41800.98100.1524900 | Waterproofing | 4d | 2026-09-21 | 2026-09-25 | 4274, 4289 |  | Zenith | 8701924 |
| 4291 | 36900.37000.37100.38200.39200.40600.41800.98100.1525000 | Internal Plaster | 10d | 2026-09-21 | 2026-10-01 | 4275, 4289, 4290FF+5d |  | Zenith | 8701934 |
| 4292 | 36900.37000.37100.38200.39200.40600.41800.98100.1525100 | IPS flooring work | 7d | 2026-10-01 | 2026-10-08 | 4276, 4291 |  | Zenith | 8701944 |
| 4293 | 36900.37000.37100.38200.39200.40600.41800.98100.1525200 | Toilet dado work | 6d | 2026-10-01 | 2026-10-07 | 4277, 4290, 4291 |  | Zenith | 8701954 |
| 4294 | 36900.37000.37100.38200.39200.40600.41800.98100.1525300 | Toilet flooring work | 7d | 2026-10-07 | 2026-10-14 | 4278, 4293 |  | Zenith | 8701964 |
| 4295 | 36900.37000.37100.38200.39200.40600.41800.98100.1525400 | False Cieling panel fixing | 7d | 2026-10-14 | 2026-10-21 | 4279, 4294 |  | Zenith | 8701974 |
| 4296 | 36900.37000.37100.38200.39200.40600.41800.98100.1525500 | Living dinning flooring | 7d | 2026-10-14 | 2026-10-21 | 4280, 4294 |  | Zenith | 8701984 |
| 4297 | 36900.37000.37100.38200.39200.40600.41800.98100.1525600 | Putty primer coat | 8d | 2026-10-21 | 2026-10-29 | 4281, 4296 |  | Zenith | 8701994 |
| 4298 | 36900.37000.37100.38200.39200.40600.41800.98100.1525700 | Aluminium door-window fixing | 12d | 2026-12-28 | 2027-01-08 | 4282, 4292, 4296 |  | Zenith | 8702004 |
| 4299 | 36900.37000.37100.38200.39200.40600.41800.98100.1525800 | Door shutter fixing (Pre Hung) | 8d | 2026-10-29 | 2026-12-21 | 4283, 4297 |  | Zenith | 8702014 |
| 4300 | 36900.37000.37100.38200.39200.40600.41800.98100.1525900 | Electrical wiring work | 10d | 2026-12-21 | 2026-12-31 | 4284, 4299 |  | Zenith | 8702024 |
| 4301 | 36900.37000.37100.38200.39200.40600.41800.98100.1526000 | Painting 1st coat | 12d | 2027-01-27 | 2027-02-07 | 4285, 4300 |  | Zenith | 8702034 |
| 4302 | 36900.37000.37100.38200.39200.40600.41800.98200 | **22nd floor roof** | 105.75d | 2026-09-22 | 2027-02-19 |  | start no earlier than 2026-09-22 | Zenith | 8650004 |
| 4303 | 36900.37000.37100.38200.39200.40600.41800.98200.1526100 | Block Work | 6d | 2026-09-22 | 2026-09-28 | 3948, 4287 |  | Zenith | 8702044 |
| 4304 | 36900.37000.37100.38200.39200.40600.41800.98200.1526200 | Fire sprinkler pipe fixing | 4d | 2026-09-28 | 2026-10-02 | 4288, 4303 |  | Zenith | 8702054 |
| 4305 | 36900.37000.37100.38200.39200.40600.41800.98200.1526300 | Internal Plumbing Works | 4d | 2026-09-28 | 2026-10-02 | 4289, 4303 |  | Zenith | 8702064 |
| 4306 | 36900.37000.37100.38200.39200.40600.41800.98200.1526400 | Waterproofing | 4d | 2026-10-02 | 2026-10-06 | 4290, 4305 |  | Zenith | 8702074 |
| 4307 | 36900.37000.37100.38200.39200.40600.41800.98200.1526500 | Internal Plaster | 10d | 2026-10-02 | 2026-10-12 | 4291, 4305, 4306FF+5d |  | Zenith | 8702084 |
| 4308 | 36900.37000.37100.38200.39200.40600.41800.98200.1526600 | IPS flooring work | 7d | 2026-10-12 | 2026-10-19 | 4292, 4307 |  | Zenith | 8702094 |
| 4309 | 36900.37000.37100.38200.39200.40600.41800.98200.1526700 | Toilet dado work | 6d | 2026-10-12 | 2026-10-18 | 4293, 4306, 4307 |  | Zenith | 8702104 |
| 4310 | 36900.37000.37100.38200.39200.40600.41800.98200.1526800 | Toilet flooring work | 7d | 2026-10-18 | 2026-10-25 | 4294, 4309 |  | Zenith | 8702114 |
| 4311 | 36900.37000.37100.38200.39200.40600.41800.98200.1526900 | False Cieling panel fixing | 7d | 2026-10-25 | 2026-12-16 | 4295, 4310 |  | Zenith | 8702124 |
| 4312 | 36900.37000.37100.38200.39200.40600.41800.98200.1527000 | Living dinning flooring | 7d | 2026-10-25 | 2026-12-16 | 4296, 4310 |  | Zenith | 8702134 |
| 4313 | 36900.37000.37100.38200.39200.40600.41800.98200.1527100 | Putty primer coat | 8d | 2026-12-16 | 2026-12-24 | 4297, 4312 |  | Zenith | 8702144 |
| 4314 | 36900.37000.37100.38200.39200.40600.41800.98200.1527200 | Aluminium door-window fixing | 12d | 2027-01-09 | 2027-01-20 | 4298, 4308, 4312 |  | Zenith | 8702154 |
| 4315 | 36900.37000.37100.38200.39200.40600.41800.98200.1527300 | Door shutter fixing (Pre Hung) | 8d | 2026-12-24 | 2027-01-01 | 4299, 4313 |  | Zenith | 8702164 |
| 4316 | 36900.37000.37100.38200.39200.40600.41800.98200.1527400 | Electrical wiring work | 10d | 2027-01-01 | 2027-01-11 | 4300, 4315 |  | Zenith | 8702174 |
| 4317 | 36900.37000.37100.38200.39200.40600.41800.98200.1527500 | Painting 1st coat | 12d | 2027-02-08 | 2027-02-19 | 4301, 4316 |  | Zenith | 8702184 |

| ID | WBS | Task | Duration | Start | Finish | Predecessors | Constraint | Calendar | Unique_Task_ID |
| --- | --- | --- | --- | --- | --- | --- | --- | --- | --- |
| 4318 | 36900.37000.37100.38200.39200.40600.41800.98300 | **23rd floor roof** | 106.75d | 2026-10-03 | 2027-03-03 |  | start no earlier than 2026-10-03 | Zenith | 8650014 |
| 4319 | 36900.37000.37100.38200.39200.40600.41800.98300.1527600 | Block Work | 6d | 2026-10-03 | 2026-10-09 | 3949, 4303 |  | Zenith | 8702194 |
| 4320 | 36900.37000.37100.38200.39200.40600.41800.98300.1527700 | Fire sprinkler pipe fixing | 5d | 2026-10-09 | 2026-10-14 | 4304, 4319 |  | Zenith | 8702204 |
| 4321 | 36900.37000.37100.38200.39200.40600.41800.98300.1527800 | Internal Plumbing Works | 5d | 2026-10-09 | 2026-10-14 | 4305, 4319 |  | Zenith | 8702214 |
| 4322 | 36900.37000.37100.38200.39200.40600.41800.98300.1527900 | Waterproofing | 5d | 2026-10-14 | 2026-10-19 | 4306, 4321 |  | Zenith | 8702224 |
| 4323 | 36900.37000.37100.38200.39200.40600.41800.98300.1528000 | Internal Plaster | 9d | 2026-10-15 | 2026-10-24 | 4307, 4321, 4322FF+5d |  | Zenith | 8702234 |
| 4324 | 36900.37000.37100.38200.39200.40600.41800.98300.1528100 | IPS flooring work | 7d | 2026-10-24 | 2026-10-31 | 4308, 4323 |  | Zenith | 8702244 |
| 4325 | 36900.37000.37100.38200.39200.40600.41800.98300.1528200 | Toilet dado work | 6d | 2026-10-24 | 2026-10-30 | 4309, 4322, 4323 |  | Zenith | 8702254 |
| 4326 | 36900.37000.37100.38200.39200.40600.41800.98300.1528300 | Toilet flooring work | 7d | 2026-10-30 | 2026-12-21 | 4310, 4325 |  | Zenith | 8702264 |
| 4327 | 36900.37000.37100.38200.39200.40600.41800.98300.1528400 | False Cieling panel fixing | 7d | 2026-12-21 | 2026-12-28 | 4311, 4326 |  | Zenith | 8702274 |
| 4328 | 36900.37000.37100.38200.39200.40600.41800.98300.1528500 | Living dinning flooring | 7d | 2026-12-21 | 2026-12-28 | 4312, 4326 |  | Zenith | 8702284 |
| 4329 | 36900.37000.37100.38200.39200.40600.41800.98300.1528600 | Putty primer coat | 8d | 2026-12-28 | 2027-01-05 | 4313, 4328 |  | Zenith | 8702294 |
| 4330 | 36900.37000.37100.38200.39200.40600.41800.98300.1528700 | Aluminium door-window fixing | 12d | 2027-01-21 | 2027-02-01 | 4314, 4324, 4328 |  | Zenith | 8702304 |
| 4331 | 36900.37000.37100.38200.39200.40600.41800.98300.1528800 | Door shutter fixing (Pre Hung) | 8d | 2027-01-05 | 2027-01-13 | 4315, 4329 |  | Zenith | 8702314 |
| 4332 | 36900.37000.37100.38200.39200.40600.41800.98300.1528900 | Electrical wiring work | 10d | 2027-01-13 | 2027-01-23 | 4316, 4331 |  | Zenith | 8702324 |
| 4333 | 36900.37000.37100.38200.39200.40600.41800.98300.1529000 | Painting 1st coat | 12d | 2027-02-20 | 2027-03-03 | 4317, 4332 |  | Zenith | 8702334 |
| 4334 | 36900.37000.37100.38200.39200.40600.41800.98400 | **24th floor roof** | 107.75d | 2026-10-14 | 2027-03-15 |  | start no earlier than 2026-10-14 | Zenith | 8650024 |
| 4335 | 36900.37000.37100.38200.39200.40600.41800.98400.1529100 | Block Work | 6d | 2026-10-14 | 2026-10-20 | 3950, 4319 |  | Zenith | 8702344 |
| 4336 | 36900.37000.37100.38200.39200.40600.41800.98400.1529200 | Fire sprinkler pipe fixing | 5d | 2026-10-20 | 2026-10-25 | 4320, 4335 |  | Zenith | 8702354 |
| 4337 | 36900.37000.37100.38200.39200.40600.41800.98400.1529300 | Internal Plumbing Works | 5d | 2026-10-20 | 2026-10-25 | 4321, 4335 |  | Zenith | 8702364 |
| 4338 | 36900.37000.37100.38200.39200.40600.41800.98400.1529400 | Waterproofing | 5d | 2026-10-25 | 2026-10-30 | 4322, 4337 |  | Zenith | 8702374 |
| 4339 | 36900.37000.37100.38200.39200.40600.41800.98400.1529500 | Internal Plaster | 9d | 2026-10-26 | 2026-12-19 | 4323, 4337, 4338FF+5d |  | Zenith | 8702384 |
| 4340 | 36900.37000.37100.38200.39200.40600.41800.98400.1529600 | IPS flooring work | 7d | 2026-12-19 | 2026-12-26 | 4324, 4339 |  | Zenith | 8702394 |
| 4341 | 36900.37000.37100.38200.39200.40600.41800.98400.1529700 | Toilet dado work | 6d | 2026-12-19 | 2026-12-25 | 4325, 4338, 4339 |  | Zenith | 8702404 |
| 4342 | 36900.37000.37100.38200.39200.40600.41800.98400.1529800 | Toilet flooring work | 7d | 2026-12-25 | 2027-01-01 | 4326, 4341 |  | Zenith | 8702414 |
| 4343 | 36900.37000.37100.38200.39200.40600.41800.98400.1529900 | False Cieling panel fixing | 7d | 2027-01-01 | 2027-01-08 | 4327, 4342 |  | Zenith | 8702424 |
| 4344 | 36900.37000.37100.38200.39200.40600.41800.98400.1530000 | Living dinning flooring | 7d | 2027-01-01 | 2027-01-08 | 4328, 4342 |  | Zenith | 8702434 |
| 4345 | 36900.37000.37100.38200.39200.40600.41800.98400.1530100 | Putty primer coat | 8d | 2027-01-08 | 2027-01-16 | 4329, 4344 |  | Zenith | 8702444 |
| 4346 | 36900.37000.37100.38200.39200.40600.41800.98400.1530200 | Aluminium door-window fixing | 12d | 2027-02-02 | 2027-02-13 | 4330, 4340, 4344 |  | Zenith | 8702454 |
| 4347 | 36900.37000.37100.38200.39200.40600.41800.98400.1530300 | Door shutter fixing (Pre Hung) | 8d | 2027-01-16 | 2027-01-24 | 4331, 4345 |  | Zenith | 8702464 |
| 4348 | 36900.37000.37100.38200.39200.40600.41800.98400.1530400 | Electrical wiring work | 10d | 2027-01-24 | 2027-02-03 | 4332, 4347 |  | Zenith | 8702474 |
| 4349 | 36900.37000.37100.38200.39200.40600.41800.98400.1530500 | Painting 1st coat | 12d | 2027-03-04 | 2027-03-15 | 4333, 4348 |  | Zenith | 8702484 |

| ID | WBS | Task | Duration | Start | Finish | Predecessors | Constraint | Calendar | Unique_Task_ID |
| --- | --- | --- | --- | --- | --- | --- | --- | --- | --- |
| 4350 | 36900.37000.37100.38200.39200.40600.41800.98500 | **25th floor roof** | 108.75d | 2026-10-25 | 2027-03-27 |  | start no earlier than 2026-10-25 | Zenith | 8650034 |
| 4351 | 36900.37000.37100.38200.39200.40600.41800.98500.1530600 | Block Work | 6d | 2026-10-25 | 2026-10-31 | 3951, 4335 |  | Zenith | 8702494 |
| 4352 | 36900.37000.37100.38200.39200.40600.41800.98500.1530700 | Fire sprinkler pipe fixing | 5d | 2026-10-31 | 2026-12-20 | 4336, 4351 |  | Zenith | 8702504 |
| 4353 | 36900.37000.37100.38200.39200.40600.41800.98500.1530800 | Internal Plumbing Works | 5d | 2026-10-31 | 2026-12-20 | 4337, 4351 |  | Zenith | 8702514 |
| 4354 | 36900.37000.37100.38200.39200.40600.41800.98500.1530900 | Waterproofing | 5d | 2026-12-20 | 2026-12-25 | 4338, 4353 |  | Zenith | 8702524 |
| 4355 | 36900.37000.37100.38200.39200.40600.41800.98500.1531000 | Internal Plaster | 9d | 2026-12-21 | 2026-12-30 | 4339, 4353, 4354FF+5d |  | Zenith | 8702534 |
| 4356 | 36900.37000.37100.38200.39200.40600.41800.98500.1531100 | IPS flooring work | 7d | 2026-12-30 | 2027-01-06 | 4340, 4355 |  | Zenith | 8702544 |
| 4357 | 36900.37000.37100.38200.39200.40600.41800.98500.1531200 | Toilet dado work | 6d | 2026-12-30 | 2027-01-05 | 4341, 4354, 4355 |  | Zenith | 8702554 |
| 4358 | 36900.37000.37100.38200.39200.40600.41800.98500.1531300 | Toilet flooring work | 7d | 2027-01-05 | 2027-01-12 | 4342, 4357 |  | Zenith | 8702564 |
| 4359 | 36900.37000.37100.38200.39200.40600.41800.98500.1531400 | False Cieling panel fixing | 7d | 2027-01-12 | 2027-01-19 | 4343, 4358 |  | Zenith | 8702574 |
| 4360 | 36900.37000.37100.38200.39200.40600.41800.98500.1531500 | Living dinning flooring | 7d | 2027-01-12 | 2027-01-19 | 4344, 4358 |  | Zenith | 8702584 |
| 4361 | 36900.37000.37100.38200.39200.40600.41800.98500.1531600 | Putty primer coat | 8d | 2027-01-19 | 2027-01-27 | 4345, 4360 |  | Zenith | 8702594 |
| 4362 | 36900.37000.37100.38200.39200.40600.41800.98500.1531700 | Aluminium door-window fixing | 12d | 2027-02-14 | 2027-02-25 | 4346, 4356, 4360 |  | Zenith | 8702604 |
| 4363 | 36900.37000.37100.38200.39200.40600.41800.98500.1531800 | Door shutter fixing (Pre Hung) | 8d | 2027-01-27 | 2027-02-04 | 4347, 4361 |  | Zenith | 8702614 |
| 4364 | 36900.37000.37100.38200.39200.40600.41800.98500.1531900 | Electrical wiring work | 10d | 2027-02-04 | 2027-02-14 | 4348, 4363 |  | Zenith | 8702624 |
| 4365 | 36900.37000.37100.38200.39200.40600.41800.98500.1532000 | Painting 1st coat | 12d | 2027-03-16 | 2027-03-27 | 4349, 4364 |  | Zenith | 8702634 |
| 4366 | 36900.37000.37100.38200.39200.40600.41800.98600 | **26th floor roof** | 105.75d | 2026-12-24 | 2027-04-08 |  | start no earlier than 2026-12-24 | Zenith | 8650044 |
| 4367 | 36900.37000.37100.38200.39200.40600.41800.98600.1532100 | Block Work | 7d | 2026-12-24 | 2026-12-31 | 3952, 4351 |  | Zenith | 8702644 |
| 4368 | 36900.37000.37100.38200.39200.40600.41800.98600.1532200 | Fire sprinkler pipe fixing | 7d | 2026-12-31 | 2027-01-07 | 4352, 4367 |  | Zenith | 8702654 |
| 4369 | 36900.37000.37100.38200.39200.40600.41800.98600.1532300 | Internal Plumbing Works | 7d | 2026-12-31 | 2027-01-07 | 4353, 4367 |  | Zenith | 8702664 |
| 4370 | 36900.37000.37100.38200.39200.40600.41800.98600.1532400 | Waterproofing | 7d | 2027-01-07 | 2027-01-14 | 4354, 4369 |  | Zenith | 8702674 |
| 4371 | 36900.37000.37100.38200.39200.40600.41800.98600.1532500 | Internal Plaster | 7d | 2027-01-12 | 2027-01-19 | 4355, 4369, 4370FF+5d |  | Zenith | 8702684 |
| 4372 | 36900.37000.37100.38200.39200.40600.41800.98600.1532600 | IPS flooring work | 7d | 2027-01-19 | 2027-01-26 | 4356, 4371 |  | Zenith | 8702694 |
| 4373 | 36900.37000.37100.38200.39200.40600.41800.98600.1532700 | Toilet dado work | 6d | 2027-01-19 | 2027-01-25 | 4357, 4370, 4371 |  | Zenith | 8702704 |
| 4374 | 36900.37000.37100.38200.39200.40600.41800.98600.1532800 | Toilet flooring work | 7d | 2027-01-25 | 2027-02-01 | 4358, 4373 |  | Zenith | 8702714 |
| 4375 | 36900.37000.37100.38200.39200.40600.41800.98600.1532900 | False Cieling panel fixing | 7d | 2027-02-01 | 2027-02-08 | 4359, 4374 |  | Zenith | 8702724 |
| 4376 | 36900.37000.37100.38200.39200.40600.41800.98600.1533000 | Living dinning flooring | 7d | 2027-02-01 | 2027-02-08 | 4360, 4374 |  | Zenith | 8702734 |
| 4377 | 36900.37000.37100.38200.39200.40600.41800.98600.1533100 | Putty primer coat | 8d | 2027-02-08 | 2027-02-16 | 4361, 4376 |  | Zenith | 8702744 |
| 4378 | 36900.37000.37100.38200.39200.40600.41800.98600.1533200 | Aluminium door-window fixing | 12d | 2027-02-26 | 2027-03-09 | 4362, 4372, 4376 |  | Zenith | 8702754 |
| 4379 | 36900.37000.37100.38200.39200.40600.41800.98600.1533300 | Door shutter fixing (Pre Hung) | 8d | 2027-02-16 | 2027-02-24 | 4363, 4377 |  | Zenith | 8702764 |
| 4380 | 36900.37000.37100.38200.39200.40600.41800.98600.1533400 | Electrical wiring work | 10d | 2027-02-24 | 2027-03-06 | 4364, 4379 |  | Zenith | 8702774 |
| 4381 | 36900.37000.37100.38200.39200.40600.41800.98600.1533500 | Painting 1st coat | 12d | 2027-03-28 | 2027-04-08 | 4365, 4380 |  | Zenith | 8702784 |

| ID | WBS | Task | Duration | Start | Finish | Predecessors | Constraint | Calendar | Unique_Task_ID |
| --- | --- | --- | --- | --- | --- | --- | --- | --- | --- |
| 4382 | 36900.37000.37100.38200.39200.40600.41800.98700 | **27th floor roof** | 106.75d | 2027-01-04 | 2027-04-20 |  | start no earlier than 2027-01-04 | Zenith | 8650054 |
| 4383 | 36900.37000.37100.38200.39200.40600.41800.98700.1533600 | Block Work | 7d | 2027-01-04 | 2027-01-11 | 3953, 4367 |  | Zenith | 8702794 |
| 4384 | 36900.37000.37100.38200.39200.40600.41800.98700.1533700 | Fire sprinkler pipe fixing | 7d | 2027-01-11 | 2027-01-18 | 4368, 4383 |  | Zenith | 8702804 |
| 4385 | 36900.37000.37100.38200.39200.40600.41800.98700.1533800 | Internal Plumbing Works | 7d | 2027-01-11 | 2027-01-18 | 4369, 4383 |  | Zenith | 8702814 |
| 4386 | 36900.37000.37100.38200.39200.40600.41800.98700.1533900 | Waterproofing | 7d | 2027-01-18 | 2027-01-25 | 4370, 4385 |  | Zenith | 8702824 |
| 4387 | 36900.37000.37100.38200.39200.40600.41800.98700.1534000 | Internal Plaster | 7d | 2027-01-23 | 2027-01-30 | 4371, 4385, 4386FF+5d |  | Zenith | 8702834 |
| 4388 | 36900.37000.37100.38200.39200.40600.41800.98700.1534100 | IPS flooring work | 7d | 2027-01-30 | 2027-02-06 | 4372, 4387 |  | Zenith | 8702844 |
| 4389 | 36900.37000.37100.38200.39200.40600.41800.98700.1534200 | Toilet dado work | 6d | 2027-01-30 | 2027-02-05 | 4373, 4386, 4387 |  | Zenith | 8702854 |
| 4390 | 36900.37000.37100.38200.39200.40600.41800.98700.1534300 | Toilet flooring work | 7d | 2027-02-05 | 2027-02-12 | 4374, 4389 |  | Zenith | 8702864 |
| 4391 | 36900.37000.37100.38200.39200.40600.41800.98700.1534400 | False Cieling panel fixing | 7d | 2027-02-12 | 2027-02-19 | 4375, 4390 |  | Zenith | 8702874 |
| 4392 | 36900.37000.37100.38200.39200.40600.41800.98700.1534500 | Living dinning flooring | 7d | 2027-02-12 | 2027-02-19 | 4376, 4390 |  | Zenith | 8702884 |
| 4393 | 36900.37000.37100.38200.39200.40600.41800.98700.1534600 | Putty primer coat | 8d | 2027-02-19 | 2027-02-27 | 4377, 4392 |  | Zenith | 8702894 |
| 4394 | 36900.37000.37100.38200.39200.40600.41800.98700.1534700 | Aluminium door-window fixing | 12d | 2027-03-10 | 2027-03-21 | 4378, 4388, 4392 |  | Zenith | 8702904 |
| 4395 | 36900.37000.37100.38200.39200.40600.41800.98700.1534800 | Door shutter fixing (Pre Hung) | 8d | 2027-02-27 | 2027-03-07 | 4379, 4393 |  | Zenith | 8702914 |
| 4396 | 36900.37000.37100.38200.39200.40600.41800.98700.1534900 | Electrical wiring work | 10d | 2027-03-07 | 2027-03-17 | 4380, 4395 |  | Zenith | 8702924 |
| 4397 | 36900.37000.37100.38200.39200.40600.41800.98700.1535000 | Painting 1st coat | 12d | 2027-04-09 | 2027-04-20 | 4381, 4396 |  | Zenith | 8702934 |
| 4398 | 36900.37000.37100.38200.39200.40600.41800.98800 | **28th floor roof** | 107.75d | 2027-01-15 | 2027-05-02 |  | start no earlier than 2027-01-15 | Zenith | 8650064 |
| 4399 | 36900.37000.37100.38200.39200.40600.41800.98800.1535100 | Block Work | 7d | 2027-01-15 | 2027-01-22 | 3954, 4383 |  | Zenith | 8702944 |
| 4400 | 36900.37000.37100.38200.39200.40600.41800.98800.1535200 | Fire sprinkler pipe fixing | 7d | 2027-01-22 | 2027-01-29 | 4384, 4399 |  | Zenith | 8702954 |
| 4401 | 36900.37000.37100.38200.39200.40600.41800.98800.1535300 | Internal Plumbing Works | 7d | 2027-01-22 | 2027-01-29 | 4385, 4399 |  | Zenith | 8702964 |
| 4402 | 36900.37000.37100.38200.39200.40600.41800.98800.1535400 | Waterproofing | 7d | 2027-01-29 | 2027-02-05 | 4386, 4401 |  | Zenith | 8702974 |
| 4403 | 36900.37000.37100.38200.39200.40600.41800.98800.1535500 | Internal Plaster | 7d | 2027-02-03 | 2027-02-10 | 4387, 4401, 4402FF+5d |  | Zenith | 8702984 |
| 4404 | 36900.37000.37100.38200.39200.40600.41800.98800.1535600 | IPS flooring work | 7d | 2027-02-10 | 2027-02-17 | 4388, 4403 |  | Zenith | 8702994 |
| 4405 | 36900.37000.37100.38200.39200.40600.41800.98800.1535700 | Toilet dado work | 6d | 2027-02-10 | 2027-02-16 | 4389, 4402, 4403 |  | Zenith | 8703004 |
| 4406 | 36900.37000.37100.38200.39200.40600.41800.98800.1535800 | Toilet flooring work | 7d | 2027-02-16 | 2027-02-23 | 4390, 4405 |  | Zenith | 8703014 |
| 4407 | 36900.37000.37100.38200.39200.40600.41800.98800.1535900 | False Cieling panel fixing | 7d | 2027-02-23 | 2027-03-02 | 4391, 4406 |  | Zenith | 8703024 |
| 4408 | 36900.37000.37100.38200.39200.40600.41800.98800.1536000 | Living dinning flooring | 7d | 2027-02-23 | 2027-03-02 | 4392, 4406 |  | Zenith | 8703034 |
| 4409 | 36900.37000.37100.38200.39200.40600.41800.98800.1536100 | Putty primer coat | 8d | 2027-03-02 | 2027-03-10 | 4393, 4408 |  | Zenith | 8703044 |
| 4410 | 36900.37000.37100.38200.39200.40600.41800.98800.1536200 | Aluminium door-window fixing | 12d | 2027-03-22 | 2027-04-02 | 4394, 4404, 4408 |  | Zenith | 8703054 |
| 4411 | 36900.37000.37100.38200.39200.40600.41800.98800.1536300 | Door shutter fixing (Pre Hung) | 8d | 2027-03-10 | 2027-03-18 | 4395, 4409 |  | Zenith | 8703064 |
| 4412 | 36900.37000.37100.38200.39200.40600.41800.98800.1536400 | Electrical wiring work | 10d | 2027-03-18 | 2027-03-28 | 4396, 4411 |  | Zenith | 8703074 |
| 4413 | 36900.37000.37100.38200.39200.40600.41800.98800.1536500 | Painting 1st coat | 12d | 2027-04-21 | 2027-05-02 | 4397, 4412 |  | Zenith | 8703084 |

| ID | WBS | Task | Duration | Start | Finish | Predecessors | Constraint | Calendar | Unique_Task_ID |
| --- | --- | --- | --- | --- | --- | --- | --- | --- | --- |
| 4414 | 36900.37000.37100.38200.39200.40600.41800.98900 | **29th floor roof** | 108.75d | 2027-01-26 | 2027-05-14 |  | start no earlier than 2027-01-26 | Zenith | 8650074 |
| 4415 | 36900.37000.37100.38200.39200.40600.41800.98900.1536600 | Block Work | 7d | 2027-01-26 | 2027-02-02 | 3955, 4399 |  | Zenith | 8703094 |
| 4416 | 36900.37000.37100.38200.39200.40600.41800.98900.1536700 | Fire sprinkler pipe fixing | 7d | 2027-02-02 | 2027-02-09 | 4400, 4415 |  | Zenith | 8703104 |
| 4417 | 36900.37000.37100.38200.39200.40600.41800.98900.1536800 | Internal Plumbing Works | 7d | 2027-02-02 | 2027-02-09 | 4401, 4415 |  | Zenith | 8703114 |
| 4418 | 36900.37000.37100.38200.39200.40600.41800.98900.1536900 | Waterproofing | 7d | 2027-02-09 | 2027-02-16 | 4402, 4417 |  | Zenith | 8703124 |
| 4419 | 36900.37000.37100.38200.39200.40600.41800.98900.1537000 | Internal Plaster | 7d | 2027-02-14 | 2027-02-21 | 4403, 4417, 4418FF+5d |  | Zenith | 8703134 |
| 4420 | 36900.37000.37100.38200.39200.40600.41800.98900.1537100 | IPS flooring work | 7d | 2027-02-21 | 2027-02-28 | 4404, 4419 |  | Zenith | 8703144 |
| 4421 | 36900.37000.37100.38200.39200.40600.41800.98900.1537200 | Toilet dado work | 6d | 2027-02-21 | 2027-02-27 | 4405, 4418, 4419 |  | Zenith | 8703154 |
| 4422 | 36900.37000.37100.38200.39200.40600.41800.98900.1537300 | Toilet flooring work | 7d | 2027-02-27 | 2027-03-06 | 4406, 4421 |  | Zenith | 8703164 |
| 4423 | 36900.37000.37100.38200.39200.40600.41800.98900.1537400 | False Cieling panel fixing | 7d | 2027-03-06 | 2027-03-13 | 4407, 4422 |  | Zenith | 8703174 |
| 4424 | 36900.37000.37100.38200.39200.40600.41800.98900.1537500 | Living dinning flooring | 7d | 2027-03-06 | 2027-03-13 | 4408, 4422 |  | Zenith | 8703184 |
| 4425 | 36900.37000.37100.38200.39200.40600.41800.98900.1537600 | Putty primer coat | 8d | 2027-03-13 | 2027-03-21 | 4409, 4424 |  | Zenith | 8703194 |
| 4426 | 36900.37000.37100.38200.39200.40600.41800.98900.1537700 | Aluminium door-window fixing | 12d | 2027-04-03 | 2027-04-14 | 4410, 4420, 4424 |  | Zenith | 8703204 |
| 4427 | 36900.37000.37100.38200.39200.40600.41800.98900.1537800 | Door shutter fixing (Pre Hung) | 8d | 2027-03-21 | 2027-03-29 | 4411, 4425 |  | Zenith | 8703214 |
| 4428 | 36900.37000.37100.38200.39200.40600.41800.98900.1537900 | Electrical wiring work | 10d | 2027-03-29 | 2027-04-08 | 4412, 4427 |  | Zenith | 8703224 |
| 4429 | 36900.37000.37100.38200.39200.40600.41800.98900.1538000 | Painting 1st coat | 12d | 2027-05-03 | 2027-05-14 | 4413, 4428 |  | Zenith | 8703234 |
| 4430 | 36900.37000.37100.38200.39200.40600.41800.99000 | **30th floor roof** | 116d | 2027-02-06 | 2027-06-02 |  | start no earlier than 2027-02-06 | Zenith | 8650084 |
| 4431 | 36900.37000.37100.38200.39200.40600.41800.99000.1538100 | Block Work | 10d | 2027-02-06 | 2027-02-16 | 3956, 4415 |  | Zenith | 8703244 |
| 4432 | 36900.37000.37100.38200.39200.40600.41800.99000.1538200 | Fire sprinkler pipe fixing | 6d | 2027-02-16 | 2027-02-22 | 4416, 4431 |  | Zenith | 8703254 |
| 4433 | 36900.37000.37100.38200.39200.40600.41800.99000.1538300 | Internal Plumbing Works | 10d | 2027-02-16 | 2027-02-26 | 4417, 4431 |  | Zenith | 8703264 |
| 4434 | 36900.37000.37100.38200.39200.40600.41800.99000.1538400 | Waterproofing | 14d | 2027-02-26 | 2027-03-12 | 4418, 4433 |  | Zenith | 8703274 |
| 4435 | 36900.37000.37100.38200.39200.40600.41800.99000.1538500 | Internal Plaster | 14d | 2027-03-03 | 2027-03-17 | 4419, 4433, 4434FF+5d |  | Zenith | 8703284 |
| 4436 | 36900.37000.37100.38200.39200.40600.41800.99000.1538600 | IPS flooring work | 10d | 2027-03-17 | 2027-03-27 | 4420, 4435 |  | Zenith | 8703294 |
| 4437 | 36900.37000.37100.38200.39200.40600.41800.99000.1538700 | Toilet dado work | 10d | 2027-03-17 | 2027-03-27 | 4421, 4434, 4435 |  | Zenith | 8703304 |
| 4438 | 36900.37000.37100.38200.39200.40600.41800.99000.1538800 | Toilet flooring work | 7d | 2027-03-27 | 2027-04-03 | 4422, 4437 |  | Zenith | 8703314 |
| 4439 | 36900.37000.37100.38200.39200.40600.41800.99000.1538900 | False Cieling panel fixing | 10d | 2027-04-03 | 2027-04-13 | 4423, 4438 |  | Zenith | 8703324 |
| 4440 | 36900.37000.37100.38200.39200.40600.41800.99000.1539000 | Living dinning flooring | 13d | 2027-04-03 | 2027-04-16 | 4424, 4438 |  | Zenith | 8703334 |
| 4441 | 36900.37000.37100.38200.39200.40600.41800.99000.1539100 | Putty primer coat | 12d | 2027-04-16 | 2027-04-28 | 4425, 4440 |  | Zenith | 8703344 |
| 4442 | 36900.37000.37100.38200.39200.40600.41800.99000.1539200 | Aluminium door-window fixing | 15d | 2027-04-16 | 2027-05-01 | 4426, 4436, 4440 |  | Zenith | 8703354 |
| 4443 | 36900.37000.37100.38200.39200.40600.41800.99000.1539300 | Door shutter fixing (Pre Hung) | 8d | 2027-04-28 | 2027-05-06 | 4427, 4441 |  | Zenith | 8703364 |
| 4444 | 36900.37000.37100.38200.39200.40600.41800.99000.1539400 | Electrical wiring work | 12d | 2027-05-06 | 2027-05-18 | 4428, 4443 |  | Zenith | 8703374 |
| 4445 | 36900.37000.37100.38200.39200.40600.41800.99000.1539500 | Painting 1st coat | 15d | 2027-05-18 | 2027-06-02 | 4429, 4444 |  | Zenith | 8703384 |

| ID | WBS | Task | Duration | Start | Finish | Predecessors | Constraint | Calendar | Unique_Task_ID |
| --- | --- | --- | --- | --- | --- | --- | --- | --- | --- |
| 4446 | 36900.37000.37100.38200.39200.40600.41800.99100 | **31st floor roof** | 120d | 2027-02-17 | 2027-06-17 |  | start no earlier than 2027-02-17 | Zenith | 8650094 |
| 4447 | 36900.37000.37100.38200.39200.40600.41800.99100.1539600 | Block Work | 10d | 2027-02-17 | 2027-02-27 | 3957, 4431 |  | Zenith | 8703394 |
| 4448 | 36900.37000.37100.38200.39200.40600.41800.99100.1539700 | Fire sprinkler pipe fixing | 6d | 2027-02-27 | 2027-03-05 | 4432, 4447 |  | Zenith | 8703404 |
| 4449 | 36900.37000.37100.38200.39200.40600.41800.99100.1539800 | Internal Plumbing Works | 10d | 2027-02-27 | 2027-03-09 | 4433, 4447 |  | Zenith | 8703414 |
| 4450 | 36900.37000.37100.38200.39200.40600.41800.99100.1539900 | Waterproofing | 14d | 2027-03-12 | 2027-03-26 | 4434, 4449 |  | Zenith | 8703424 |
| 4451 | 36900.37000.37100.38200.39200.40600.41800.99100.1540000 | Internal Plaster | 14d | 2027-03-17 | 2027-03-31 | 4435, 4449, 4450FF+5d |  | Zenith | 8703434 |
| 4452 | 36900.37000.37100.38200.39200.40600.41800.99100.1540100 | IPS flooring work | 10d | 2027-03-31 | 2027-04-10 | 4436, 4451 |  | Zenith | 8703444 |
| 4453 | 36900.37000.37100.38200.39200.40600.41800.99100.1540200 | Toilet dado work | 10d | 2027-03-31 | 2027-04-10 | 4437, 4450, 4451 |  | Zenith | 8703454 |
| 4454 | 36900.37000.37100.38200.39200.40600.41800.99100.1540300 | Toilet flooring work | 7d | 2027-04-10 | 2027-04-17 | 4438, 4453 |  | Zenith | 8703464 |
| 4455 | 36900.37000.37100.38200.39200.40600.41800.99100.1540400 | False Cieling panel fixing | 10d | 2027-04-17 | 2027-04-27 | 4439, 4454 |  | Zenith | 8703474 |
| 4456 | 36900.37000.37100.38200.39200.40600.41800.99100.1540500 | Living dinning flooring | 13d | 2027-04-17 | 2027-04-30 | 4440, 4454 |  | Zenith | 8703484 |
| 4457 | 36900.37000.37100.38200.39200.40600.41800.99100.1540600 | Putty primer coat | 12d | 2027-04-30 | 2027-05-12 | 4441, 4456 |  | Zenith | 8703494 |
| 4458 | 36900.37000.37100.38200.39200.40600.41800.99100.1540700 | Aluminium door-window fixing | 15d | 2027-05-01 | 2027-05-16 | 4442, 4452, 4456 |  | Zenith | 8703504 |
| 4459 | 36900.37000.37100.38200.39200.40600.41800.99100.1540800 | Door shutter fixing (Pre Hung) | 8d | 2027-05-12 | 2027-05-20 | 4443, 4457 |  | Zenith | 8703514 |
| 4460 | 36900.37000.37100.38200.39200.40600.41800.99100.1540900 | Electrical wiring work | 12d | 2027-05-20 | 2027-06-01 | 4444, 4459 |  | Zenith | 8703524 |
| 4461 | 36900.37000.37100.38200.39200.40600.41800.99100.1541000 | Painting 1st coat | 15d | 2027-06-02 | 2027-06-17 | 4445, 4460 |  | Zenith | 8703534 |
| 4462 | 36900.37000.37100.38200.39200.40600.41800.99200 | **32nd floor roof** | 120d | 2027-03-04 | 2027-07-02 |  | start no earlier than 2027-03-04 | Zenith | 8650104 |
| 4463 | 36900.37000.37100.38200.39200.40600.41800.99200.1541100 | Block Work | 10d | 2027-03-04 | 2027-03-14 | 3958, 4447 |  | Zenith | 8703544 |
| 4464 | 36900.37000.37100.38200.39200.40600.41800.99200.1541200 | Fire sprinkler pipe fixing | 6d | 2027-03-14 | 2027-03-20 | 4448, 4463 |  | Zenith | 8703554 |
| 4465 | 36900.37000.37100.38200.39200.40600.41800.99200.1541300 | Internal Plumbing Works | 10d | 2027-03-14 | 2027-03-24 | 4449, 4463 |  | Zenith | 8703564 |
| 4466 | 36900.37000.37100.38200.39200.40600.41800.99200.1541400 | Waterproofing | 14d | 2027-03-26 | 2027-04-09 | 4450, 4465 |  | Zenith | 8703574 |
| 4467 | 36900.37000.37100.38200.39200.40600.41800.99200.1541500 | Internal Plaster | 14d | 2027-03-31 | 2027-04-14 | 4451, 4465, 4466FF+5d |  | Zenith | 8703584 |
| 4468 | 36900.37000.37100.38200.39200.40600.41800.99200.1541600 | IPS flooring work | 10d | 2027-04-14 | 2027-04-24 | 4452, 4467 |  | Zenith | 8703594 |
| 4469 | 36900.37000.37100.38200.39200.40600.41800.99200.1541700 | Toilet dado work | 10d | 2027-04-14 | 2027-04-24 | 4453, 4466, 4467 |  | Zenith | 8703604 |
| 4470 | 36900.37000.37100.38200.39200.40600.41800.99200.1541800 | Toilet flooring work | 7d | 2027-04-24 | 2027-05-01 | 4454, 4469 |  | Zenith | 8703614 |
| 4471 | 36900.37000.37100.38200.39200.40600.41800.99200.1541900 | False Cieling panel fixing | 10d | 2027-05-01 | 2027-05-11 | 4455, 4470 |  | Zenith | 8703624 |
| 4472 | 36900.37000.37100.38200.39200.40600.41800.99200.1542000 | Living dinning flooring | 13d | 2027-05-01 | 2027-05-14 | 4456, 4470 |  | Zenith | 8703634 |
| 4473 | 36900.37000.37100.38200.39200.40600.41800.99200.1542100 | Putty primer coat | 12d | 2027-05-14 | 2027-05-26 | 4457, 4472 |  | Zenith | 8703644 |
| 4474 | 36900.37000.37100.38200.39200.40600.41800.99200.1542200 | Aluminium door-window fixing | 15d | 2027-05-16 | 2027-05-31 | 4458, 4468, 4472 |  | Zenith | 8703654 |
| 4475 | 36900.37000.37100.38200.39200.40600.41800.99200.1542300 | Door shutter fixing (Pre Hung) | 8d | 2027-05-26 | 2027-06-03 | 4459, 4473 |  | Zenith | 8703664 |
| 4476 | 36900.37000.37100.38200.39200.40600.41800.99200.1542400 | Electrical wiring work | 12d | 2027-06-03 | 2027-06-15 | 4460, 4475 |  | Zenith | 8703674 |
| 4477 | 36900.37000.37100.38200.39200.40600.41800.99200.1542500 | Painting 1st coat | 15d | 2027-06-17 | 2027-07-02 | 4461, 4476 |  | Zenith | 8703684 |

| ID | WBS | Task | Duration | Start | Finish | Predecessors | Constraint | Calendar | Unique_Task_ID |
| --- | --- | --- | --- | --- | --- | --- | --- | --- | --- |
| 4478 | 36900.37000.37100.38200.39200.40600.41800.99300 | **33rd floor roof** | 125d | 2027-03-14 | 2027-07-17 |  | start no earlier than 2027-03-14 | Zenith | 8650114 |
| 4479 | 36900.37000.37100.38200.39200.40600.41800.99300.1542600 | Block Work | 10d | 2027-03-14 | 2027-03-24 | 3959, 4463 |  | Zenith | 8703694 |
| 4480 | 36900.37000.37100.38200.39200.40600.41800.99300.1542700 | Fire sprinkler pipe fixing | 6d | 2027-03-24 | 2027-03-30 | 4464, 4479 |  | Zenith | 8703704 |
| 4481 | 36900.37000.37100.38200.39200.40600.41800.99300.1542800 | Internal Plumbing Works | 10d | 2027-03-24 | 2027-04-03 | 4465, 4479 |  | Zenith | 8703714 |
| 4482 | 36900.37000.37100.38200.39200.40600.41800.99300.1542900 | Waterproofing | 14d | 2027-04-09 | 2027-04-23 | 4466, 4481 |  | Zenith | 8703724 |
| 4483 | 36900.37000.37100.38200.39200.40600.41800.99300.1543000 | Internal Plaster | 14d | 2027-04-14 | 2027-04-28 | 4467, 4481, 4482FF+5d |  | Zenith | 8703734 |
| 4484 | 36900.37000.37100.38200.39200.40600.41800.99300.1543100 | IPS flooring work | 10d | 2027-04-28 | 2027-05-08 | 4468, 4483 |  | Zenith | 8703744 |
| 4485 | 36900.37000.37100.38200.39200.40600.41800.99300.1543200 | Toilet dado work | 10d | 2027-04-28 | 2027-05-08 | 4469, 4482, 4483 |  | Zenith | 8703754 |
| 4486 | 36900.37000.37100.38200.39200.40600.41800.99300.1543300 | Toilet flooring work | 7d | 2027-05-08 | 2027-05-15 | 4470, 4485 |  | Zenith | 8703764 |
| 4487 | 36900.37000.37100.38200.39200.40600.41800.99300.1543400 | False Cieling panel fixing | 10d | 2027-05-15 | 2027-05-25 | 4471, 4486 |  | Zenith | 8703774 |
| 4488 | 36900.37000.37100.38200.39200.40600.41800.99300.1543500 | Living dinning flooring | 13d | 2027-05-15 | 2027-05-28 | 4472, 4486 |  | Zenith | 8703784 |
| 4489 | 36900.37000.37100.38200.39200.40600.41800.99300.1543600 | Putty primer coat | 12d | 2027-05-28 | 2027-06-09 | 4473, 4488 |  | Zenith | 8703794 |
| 4490 | 36900.37000.37100.38200.39200.40600.41800.99300.1543700 | Aluminium door-window fixing | 15d | 2027-05-31 | 2027-06-15 | 4474, 4484, 4488 |  | Zenith | 8703804 |
| 4491 | 36900.37000.37100.38200.39200.40600.41800.99300.1543800 | Door shutter fixing (Pre Hung) | 8d | 2027-06-09 | 2027-06-17 | 4475, 4489 |  | Zenith | 8703814 |
| 4492 | 36900.37000.37100.38200.39200.40600.41800.99300.1543900 | Electrical wiring work | 12d | 2027-06-17 | 2027-06-29 | 4476, 4491 |  | Zenith | 8703824 |
| 4493 | 36900.37000.37100.38200.39200.40600.41800.99300.1544000 | Painting 1st coat | 15d | 2027-07-02 | 2027-07-17 | 4477, 4492 |  | Zenith | 8703834 |
| 4494 | 36900.37000.37100.38200.39200.40600.41800.99400 | **34th floor roof** | 130d | 2027-03-24 | 2027-08-01 |  | start no earlier than 2027-03-24 | Zenith | 8650124 |
| 4495 | 36900.37000.37100.38200.39200.40600.41800.99400.1544100 | Block Work | 10d | 2027-03-24 | 2027-04-03 | 3960, 4479 |  | Zenith | 8703844 |
| 4496 | 36900.37000.37100.38200.39200.40600.41800.99400.1544200 | Fire sprinkler pipe fixing | 6d | 2027-04-03 | 2027-04-09 | 4480, 4495 |  | Zenith | 8703854 |
| 4497 | 36900.37000.37100.38200.39200.40600.41800.99400.1544300 | Internal Plumbing Works | 10d | 2027-04-03 | 2027-04-13 | 4481, 4495 |  | Zenith | 8703864 |
| 4498 | 36900.37000.37100.38200.39200.40600.41800.99400.1544400 | Waterproofing | 14d | 2027-04-23 | 2027-05-07 | 4482, 4497 |  | Zenith | 8703874 |
| 4499 | 36900.37000.37100.38200.39200.40600.41800.99400.1544500 | Internal Plaster | 14d | 2027-04-28 | 2027-05-12 | 4483, 4497, 4498FF+5d |  | Zenith | 8703884 |
| 4500 | 36900.37000.37100.38200.39200.40600.41800.99400.1544600 | IPS flooring work | 10d | 2027-05-12 | 2027-05-22 | 4484, 4499 |  | Zenith | 8703894 |
| 4501 | 36900.37000.37100.38200.39200.40600.41800.99400.1544700 | Toilet dado work | 10d | 2027-05-12 | 2027-05-22 | 4485, 4498, 4499 |  | Zenith | 8703904 |
| 4502 | 36900.37000.37100.38200.39200.40600.41800.99400.1544800 | Toilet flooring work | 7d | 2027-05-22 | 2027-05-29 | 4486, 4501 |  | Zenith | 8703914 |
| 4503 | 36900.37000.37100.38200.39200.40600.41800.99400.1544900 | False Cieling panel fixing | 10d | 2027-05-29 | 2027-06-08 | 4487, 4502 |  | Zenith | 8703924 |
| 4504 | 36900.37000.37100.38200.39200.40600.41800.99400.1545000 | Living dinning flooring | 13d | 2027-05-29 | 2027-06-11 | 4488, 4502 |  | Zenith | 8703934 |
| 4505 | 36900.37000.37100.38200.39200.40600.41800.99400.1545100 | Putty primer coat | 12d | 2027-06-11 | 2027-06-23 | 4489, 4504 |  | Zenith | 8703944 |
| 4506 | 36900.37000.37100.38200.39200.40600.41800.99400.1545200 | Aluminium door-window fixing | 15d | 2027-06-15 | 2027-06-30 | 4490, 4500, 4504 |  | Zenith | 8703954 |
| 4507 | 36900.37000.37100.38200.39200.40600.41800.99400.1545300 | Door shutter fixing (Pre Hung) | 8d | 2027-06-23 | 2027-07-01 | 4491, 4505 |  | Zenith | 8703964 |
| 4508 | 36900.37000.37100.38200.39200.40600.41800.99400.1545400 | Electrical wiring work | 12d | 2027-07-01 | 2027-07-13 | 4492, 4507 |  | Zenith | 8703974 |
| 4509 | 36900.37000.37100.38200.39200.40600.41800.99400.1545500 | Painting 1st coat | 15d | 2027-07-17 | 2027-08-01 | 4493, 4508 |  | Zenith | 8703984 |

| ID | WBS | Task | Duration | Start | Finish | Predecessors | Constraint | Calendar | Unique_Task_ID |
| --- | --- | --- | --- | --- | --- | --- | --- | --- | --- |
| 4510 | 36900.37000.37100.38200.39200.40600.41800.55200 | **35th Floor** | 185d | 2027-04-03 | 2027-10-05 |  | start no earlier than 2027-04-03 | Zenith | 8648304 |
| 4511 | 36900.37000.37100.38200.39200.40600.41800.55200.1545600 | Block Work | 10d | 2027-04-03 | 2027-04-13 | 3961, 4495 |  | Zenith | 8703994 |
| 4512 | 36900.37000.37100.38200.39200.40600.41800.55200.1545700 | Fire sprinkler pipe fixing | 6d | 2027-04-13 | 2027-04-19 | 4496, 4511 |  | Zenith | 8704004 |
| 4513 | 36900.37000.37100.38200.39200.40600.41800.55200.1545800 | Internal Plumbing Works | 10d | 2027-04-13 | 2027-04-23 | 4497, 4511 |  | Zenith | 8704014 |
| 4514 | 36900.37000.37100.38200.39200.40600.41800.55200.1545900 | Waterproofing | 14d | 2027-05-07 | 2027-05-21 | 4498, 4513 |  | Zenith | 8704024 |
| 4515 | 36900.37000.37100.38200.39200.40600.41800.55200.1546000 | Internal Plaster | 14d | 2027-05-12 | 2027-05-26 | 4499, 4513, 4514FF+5d |  | Zenith | 8704034 |
| 4516 | 36900.37000.37100.38200.39200.40600.41800.55200.1546100 | IPS flooring work | 10d | 2027-05-26 | 2027-06-05 | 4500, 4514, 4515 |  | Zenith | 8704044 |
| 4517 | 36900.37000.37100.38200.39200.40600.41800.55200.1546200 | Toilet dado work | 10d | 2027-06-05 | 2027-06-15 | 4501, 4516 |  | Zenith | 8704054 |
| 4518 | 36900.37000.37100.38200.39200.40600.41800.55200.1546300 | Toilet flooring work | 7d | 2027-06-15 | 2027-06-22 | 4502, 4517 |  | Zenith | 8704064 |
| 4519 | 36900.37000.37100.38200.39200.40600.41800.55200.1546400 | False ceiling | 10d | 2027-06-22 | 2027-07-02 | 4503, 4518 |  | Zenith | 8704074 |
| 4520 | 36900.37000.37100.38200.39200.40600.41800.55200.1546500 | Living dinning flooring | 13d | 2027-06-22 | 2027-07-05 | 4504, 4518 |  | Zenith | 8704084 |
| 4521 | 36900.37000.37100.38200.39200.40600.41800.55200.1546600 | Putty Primer coat | 12d | 2027-07-05 | 2027-07-17 | 4505, 4512, 4519, 4520 |  | Zenith | 8704094 |
| 4522 | 36900.37000.37100.38200.39200.40600.41800.55200.1546700 | Aluminium door-window fixing | 15d | 2027-07-05 | 2027-07-20 | 4506, 4516, 4520 |  | Zenith | 8704104 |
| 4523 | 36900.37000.37100.38200.39200.40600.41800.55200.1546800 | Door shutter fixing (Pre Hung) | 8d | 2027-07-17 | 2027-07-25 | 4507, 4521 |  | Zenith | 8704114 |
| 4524 | 36900.37000.37100.38200.39200.40600.41800.55200.1546900 | Electrical wiring work | 12d | 2027-07-25 | 2027-08-06 | 4508, 4523 |  | Zenith | 8704124 |
| 4525 | 36900.37000.37100.38200.39200.40600.41800.55200.1547000 | Painting 1st coat | 15d | 2027-08-06 | 2027-08-21 | 4509, 4524 |  | Zenith | 8704134 |
| 4526 | 36900.37000.37100.38200.39200.40600.41800.55200.1547100 | Misc. Works | 45d | 2027-08-21 | 2027-10-05 | 4525 |  | Zenith | 8704144 |
| 4527 | 36900.37000.37100.38200.39200.40600.224500 | **Terrace Finishing** | 116d | 2027-04-08 | 2027-08-01 |  | start no earlier than 2027-04-08 | Zenith | 8656794 |
| 4528 | 36900.37000.37100.38200.39200.40600.224500.989900 | Terrace waterproofing | 40d | 2027-04-08 | 2027-05-17 | 3925FS+2d |  | Zenith | 8685624 |
| 4529 | 36900.37000.37100.38200.39200.40600.224500.990000 | Terrace finishing | 75d | 2027-05-19 | 2027-08-01 | 4528FS+1d |  | Zenith | 8685614 |
| 4530 | 36900.37000.37100.38200.39200.40600.48500 | **Balcony Railing** | 446d | 2026-03-21 | 2027-07-25 |  | start no earlier than 2026-03-21 | Zenith | 8648144 |
| 4531 | 36900.37000.37100.38200.39200.40600.48500.990100 | 1st Floor | 10d | 2026-03-21 | 2026-03-31 | 3992FF |  | Zenith | 8685604 |
| 4532 | 36900.37000.37100.38200.39200.40600.48500.990200 | 2nd Floor | 10d | 2026-04-09 | 2026-04-19 | 4531, 4008 |  | Zenith | 8685594 |
| 4533 | 36900.37000.37100.38200.39200.40600.48500.990300 | 3rd Floor | 10d | 2026-04-19 | 2026-04-29 | 4532, 4024 |  | Zenith | 8685584 |
| 4534 | 36900.37000.37100.38200.39200.40600.48500.990400 | 4th Floor | 10d | 2026-04-29 | 2026-05-09 | 4533, 4040 |  | Zenith | 8685574 |
| 4535 | 36900.37000.37100.38200.39200.40600.48500.990500 | 5th Floor | 10d | 2026-05-09 | 2026-05-19 | 4534, 4056 |  | Zenith | 8685564 |
| 4536 | 36900.37000.37100.38200.39200.40600.48500.990600 | 6th Floor | 10d | 2026-05-19 | 2026-05-29 | 4535, 4072 |  | Zenith | 8685554 |
| 4537 | 36900.37000.37100.38200.39200.40600.48500.990700 | 7th Floor | 10d | 2026-05-29 | 2026-06-08 | 4536, 4088 |  | Zenith | 8685544 |
| 4538 | 36900.37000.37100.38200.39200.40600.48500.990800 | 8th Floor | 10d | 2026-06-08 | 2026-06-18 | 4537, 4104 |  | Zenith | 8685534 |
| 4539 | 36900.37000.37100.38200.39200.40600.48500.990900 | 9th Floor | 10d | 2026-06-19 | 2026-06-29 | 4538, 4120 |  | Zenith | 8685524 |
| 4540 | 36900.37000.37100.38200.39200.40600.48500.991000 | 10th Floor | 10d | 2026-07-04 | 2026-07-14 | 4539, 4136 |  | Zenith | 8685514 |
| 4541 | 36900.37000.37100.38200.39200.40600.48500.991100 | 11th Floor | 10d | 2026-07-15 | 2026-07-25 | 4540, 4152 |  | Zenith | 8685504 |
| 4542 | 36900.37000.37100.38200.39200.40600.48500.991200 | 12th Floor | 10d | 2026-07-26 | 2026-08-05 | 4541, 4168 |  | Zenith | 8685494 |
| 4543 | 36900.37000.37100.38200.39200.40600.48500.991300 | 13th Floor | 10d | 2026-08-06 | 2026-08-16 | 4542, 4184 |  | Zenith | 8685484 |
| 4544 | 36900.37000.37100.38200.39200.40600.48500.991400 | 14th Floor | 10d | 2026-08-17 | 2026-08-27 | 4543, 4200 |  | Zenith | 8685474 |
| 4545 | 36900.37000.37100.38200.39200.40600.48500.991500 | 15th Floor | 10d | 2026-08-28 | 2026-09-07 | 4544, 4216 |  | Zenith | 8685464 |
| 4546 | 36900.37000.37100.38200.39200.40600.48500.991600 | 16th Floor | 10d | 2026-09-08 | 2026-09-18 | 4545, 4232 |  | Zenith | 8685454 |
| 4547 | 36900.37000.37100.38200.39200.40600.48500.991700 | 17th Floor | 10d | 2026-09-19 | 2026-09-29 | 4546, 4248 |  | Zenith | 8685444 |
| 4548 | 36900.37000.37100.38200.39200.40600.48500.991800 | 18th Floor | 10d | 2026-09-29 | 2026-10-09 | 4547, 4264 |  | Zenith | 8685434 |
| 4549 | 36900.37000.37100.38200.39200.40600.48500.991900 | 19th Floor | 10d | 2026-10-09 | 2026-10-19 | 4548, 4280 |  | Zenith | 8685424 |
| 4550 | 36900.37000.37100.38200.39200.40600.48500.992000 | 20th Floor | 10d | 2026-10-21 | 2026-10-31 | 4549, 4296 |  | Zenith | 8685414 |
| 4551 | 36900.37000.37100.38200.39200.40600.48500.992100 | 21st Floor | 10d | 2026-12-16 | 2026-12-26 | 4550, 4312 |  | Zenith | 8685404 |
| 4552 | 36900.37000.37100.38200.39200.40600.48500.992200 | 22nd Floor | 10d | 2026-12-28 | 2027-01-07 | 4551, 4328 |  | Zenith | 8685394 |
| 4553 | 36900.37000.37100.38200.39200.40600.48500.992300 | 23rd Floor | 10d | 2027-01-08 | 2027-01-18 | 4552, 4344 |  | Zenith | 8685384 |
| 4554 | 36900.37000.37100.38200.39200.40600.48500.992400 | 24th Floor | 10d | 2027-01-19 | 2027-01-29 | 4553, 4360 |  | Zenith | 8685374 |
| 4555 | 36900.37000.37100.38200.39200.40600.48500.992500 | 25th Floor | 10d | 2027-02-08 | 2027-02-18 | 4554, 4376 |  | Zenith | 8685364 |
| 4556 | 36900.37000.37100.38200.39200.40600.48500.992600 | 26th Floor | 10d | 2027-02-19 | 2027-03-01 | 4555, 4392 |  | Zenith | 8685354 |
| 4557 | 36900.37000.37100.38200.39200.40600.48500.992700 | 27th Floor | 10d | 2027-03-02 | 2027-03-12 | 4556, 4408 |  | Zenith | 8685344 |
| 4558 | 36900.37000.37100.38200.39200.40600.48500.992800 | 28th Floor | 10d | 2027-03-13 | 2027-03-23 | 4557, 4424 |  | Zenith | 8685334 |
| 4559 | 36900.37000.37100.38200.39200.40600.48500.992900 | 29th Floor | 10d | 2027-04-16 | 2027-04-26 | 4558, 4440 |  | Zenith | 8685324 |
| 4560 | 36900.37000.37100.38200.39200.40600.48500.993000 | 30th Floor | 10d | 2027-04-30 | 2027-05-10 | 4559, 4456 |  | Zenith | 8685314 |
| 4561 | 36900.37000.37100.38200.39200.40600.48500.993100 | 31st Floor | 10d | 2027-05-14 | 2027-05-24 | 4560, 4472 |  | Zenith | 8685304 |
| 4562 | 36900.37000.37100.38200.39200.40600.48500.993200 | 32nd Floor | 10d | 2027-05-28 | 2027-06-07 | 4561, 4488 |  | Zenith | 8685294 |
| 4563 | 36900.37000.37100.38200.39200.40600.48500.993300 | 33rd Floor | 10d | 2027-06-11 | 2027-06-21 | 4562, 4504 |  | Zenith | 8685284 |
| 4564 | 36900.37000.37100.38200.39200.40600.48500.993400 | 34th Floor | 10d | 2027-07-05 | 2027-07-15 | 4563, 4520 |  | Zenith | 8685274 |
| 4565 | 36900.37000.37100.38200.39200.40600.48500.993500 | 35th Floor | 10d | 2027-07-15 | 2027-07-25 | 4564 |  | Zenith | 8685264 |

| ID | WBS | Task | Duration | Start | Finish | Predecessors | Constraint | Calendar | Unique_Task_ID |
| --- | --- | --- | --- | --- | --- | --- | --- | --- | --- |
| 4566 | 36900.37000.37100.38200.39200.40600.120000 | **Common Area Finishing** | 379d | 2026-08-17 | 2027-10-15 |  | start no earlier than 2026-08-17 | Zenith | 8651654 |
| 4567 | 36900.37000.37100.38200.39200.40600.120000.993600 | Masonary Work | 40d | 2026-08-17 | 2026-09-26 | 4200 |  | Zenith | 8685254 |
| 4568 | 36900.37000.37100.38200.39200.40600.120000.993700 | Fire sprinkler pipe fixing | 40d | 2026-09-26 | 2026-12-20 | 4567 |  | Zenith | 8685244 |
| 4569 | 36900.37000.37100.38200.39200.40600.120000.993800 | Corridoor, staircase, shaft Plaster & whitewash | 120d | 2026-09-26 | 2027-03-10 | 4567 |  | Zenith | 8685234 |
| 4570 | 36900.37000.37100.38200.39200.40600.120000.993900 | Staircase railing fixing | 100d | 2026-09-26 | 2027-02-18 | 4567 |  | Zenith | 8685224 |
| 4571 | 36900.37000.37100.38200.39200.40600.120000.994000 | Fire staircase flooring | 120d | 2026-10-06 | 2027-03-20 | 4570FF+30d |  | Zenith | 8685214 |
| 4572 | 36900.37000.37100.38200.39200.40600.120000.994100 | Main staircase flooring | 120d | 2026-10-06 | 2027-03-20 | 4570FF+30d |  | Zenith | 8685204 |
| 4573 | 36900.37000.37100.38200.39200.40600.120000.994200 | Fire door work | 45d | 2027-03-20 | 2027-05-04 | 4571 |  | Zenith | 8685194 |
| 4574 | 36900.37000.37100.38200.39200.40600.120000.994300 | Lobby flooring & Corridor | 120d | 2026-12-20 | 2027-04-19 | 4572FF+30d |  | Zenith | 8685184 |
| 4575 | 36900.37000.37100.38200.39200.40600.120000.994400 | Ceiling & wall putty | 120d | 2027-04-18 | 2027-08-16 | 4573FF+15d, 4574FF+30d, 4521FF+30d |  | Zenith | 8685174 |
| 4576 | 36900.37000.37100.38200.39200.40600.120000.994500 | Electrical wiring work | 120d | 2027-05-03 | 2027-08-31 | 4575FF+15d |  | Zenith | 8685164 |
| 4577 | 36900.37000.37100.38200.39200.40600.120000.994600 | Ceiling & wall painting | 120d | 2027-05-23 | 2027-09-20 | 4568FS+20d, 4575SS+20d, 4576FF+20d |  | Zenith | 8685154 |
| 4578 | 36900.37000.37100.38200.39200.40600.120000.994700 | Light fixture supply & installation | 45d | 2027-08-31 | 2027-10-15 | 4575, 4577FF+25d |  | Zenith | 8685144 |
| 4579 | 36900.37000.37100.38200.121200 | **MEP work** | 341.75d | 2026-12-25 | 2028-01-15 |  | start no earlier than 2026-12-25 | Zenith | 8651894 |
| 4580 | 36900.37000.37100.38200.121200.125300 | **Electrical work** | 240d | 2027-04-06 | 2028-01-15 |  | start no earlier than 2027-04-06 | Zenith | 8652114 |
| 4581 | 36900.37000.37100.38200.121200.125300.830100 | Cable Tray | 90d | 2027-04-06 | 2027-07-04 | 3925 |  | Zenith | 8723554 |
| 4582 | 36900.37000.37100.38200.121200.125300.830200 | Cable, main & sub main | 60d | 2027-05-21 | 2027-07-19 | 4581SS+45d |  | Zenith | 8723544 |
| 4583 | 36900.37000.37100.38200.121200.125300.830300 | LT panel & DB | 90d | 2027-07-05 | 2027-10-02 | 4581 |  | Zenith | 8723534 |
| 4584 | 36900.37000.37100.38200.121200.125300.830400 | Rising main | 90d | 2027-07-20 | 2027-10-17 | 4581FS+15d |  | Zenith | 8723524 |
| 4585 | 36900.37000.37100.38200.121200.125300.830500 | Earthing Works | 60d | 2027-07-25 | 2027-09-22 | 4581FS+20d |  | Zenith | 8723514 |
| 4586 | 36900.37000.37100.38200.121200.125300.830600 | Energy meter | 60d | 2027-10-03 | 2028-01-15 | 4582, 4585FS+10d |  | Zenith | 8723504 |
| 4587 | 36900.37000.37100.38200.121200.125300.830700 | HVAC & Exhast fan | 120d | 2027-06-30 | 2027-10-27 | 4581FS-5d |  | Zenith | 8723494 |
| 4588 | 36900.37000.37100.38200.121200.125300.830800 | FTTH | 60d | 2027-09-18 | 2027-12-31 | 4583FS-15d |  | Zenith | 8723484 |
| 4589 | 36900.37000.37100.38200.121200.125300.830900 | Security System - FA & PA | 60d | 2027-10-03 | 2028-01-15 | 4583, 4584FF+10d, 4587FF+2d, 4588FF |  | Zenith | 8723474 |

| ID | WBS | Task | Duration | Start | Finish | Predecessors | Constraint | Calendar | Unique_Task_ID |
| --- | --- | --- | --- | --- | --- | --- | --- | --- | --- |
| 4590 | 36900.37000.37100.38200.121200.164400 | **Plumbing work** | 175d | 2027-05-18 | 2027-12-23 |  | start no earlier than 2027-05-18 | Zenith | 8652814 |
| 4591 | 36900.37000.37100.38200.121200.164400.831000 | Terrace looping | 45d | 2027-05-18 | 2027-07-01 | 4528 |  | Zenith | 8723464 |
| 4592 | 36900.37000.37100.38200.121200.164400.831100 | Shaft Plumbing | 70d | 2027-07-02 | 2027-09-09 | 4591, 4569FS-30d |  | Zenith | 8723454 |
| 4593 | 36900.37000.37100.38200.121200.164400.831200 | CP sanitary fixture supply | 45d | 2027-09-10 | 2027-10-24 | 4592 |  | Zenith | 8723444 |
| 4594 | 36900.37000.37100.38200.121200.164400.831300 | Cold & flushing water supply | 45d | 2027-09-10 | 2027-10-24 | 4592 |  | Zenith | 8723434 |
| 4595 | 36900.37000.37100.38200.121200.164400.831400 | Misc work | 30d | 2027-10-10 | 2027-12-23 | 4593FS-15d, 4594FS-15d |  | Zenith | 8723424 |
| 4596 | 36900.37000.37100.38200.121200.211300 | **Fire fighting work** | 248.75d | 2026-12-25 | 2027-08-30 |  | start no earlier than 2026-12-25 | Zenith | 8654094 |
| 4597 | 36900.37000.37100.38200.121200.211300.831500 | Fire hydrant work | 75d | 2026-12-25 | 2027-03-10 | 4569SS+45d |  | Zenith | 8723414 |
| 4598 | 36900.37000.37100.38200.121200.211300.831600 | Pipe connection & sprinkler installation | 45d | 2027-07-17 | 2027-08-30 | 4597FS+1d, 4600FF+15d |  | Zenith | 8723404 |
| 4599 | 36900.37000.37100.38200.121200.211300.831700 | Shaft Downtake works | 60d | 2027-05-18 | 2027-07-16 | 4528, 4569FS-60d |  | Zenith | 8723394 |
| 4600 | 36900.37000.37100.38200.121200.211300.831800 | Connection to pump room | 30d | 2027-07-17 | 2027-08-15 | 4599 |  | Zenith | 8723384 |
| 4601 | 36900.37000.37100.38200.121200.219300 | **Lift work** | 160d | 2027-04-13 | 2027-09-20 |  | start no earlier than 2027-04-13 | Zenith | 8656614 |
| 4602 | 36900.37000.37100.38200.121200.219300.831900 | Lift Shaft/Pit Handover | 40d | 2027-04-13 | 2027-05-23 | 3963FS+5d |  | Zenith | 8723374 |
| 4603 | 36900.37000.37100.38200.121200.219300.832000 | Lift installation work | 60d | 2027-05-23 | 2027-07-22 | 4602 |  | Zenith | 8723364 |
| 4604 | 36900.37000.37100.38200.121200.219300.832100 | Lift testing and commissioning | 60d | 2027-07-22 | 2027-09-20 | 4603, 4574 |  | Zenith | 8723354 |
| 4605 | 36900.37000.37100.38200.226100 | **Basement lobby** | 90d | 2027-06-07 | 2027-09-05 |  | start no earlier than 2027-06-07 | Zenith | 8656884 |
| 4606 | 36900.37000.37100.38200.226100.405700 | Basement lobby | 90d | 2027-06-07 | 2027-09-05 | 4602FS+15d, 3742FS+15d, 3743FS+15d |  | Zenith | 8731444 |
| 4607 | 36900.37000.37100.38200.222200 | **External Paint Works** | 90d | 2027-07-20 | 2027-10-18 |  | start no earlier than 2027-07-20 | Zenith | 8656674 |
| 4608 | 36900.37000.37100.38200.222200.405800 | Surface prepration with Primer | 60d | 2027-07-25 | 2027-09-23 | 3963FS+2d, 4565 |  | Zenith | 8731434 |
| 4609 | 36900.37000.37100.38200.222200.405900 | External Painting (Texture & first coat) | 90d | 2027-07-20 | 2027-10-18 | 4608FF+10d, 4522 |  | Zenith | 8731424 |
| 4610 | 36900.37000.37100.38200.303200 | OC Application/Readiness | 2d | 2028-03-22 | 2028-03-23 | 3920FF+348d, 4609FF, 4598FF+30d, 4595FF, 4606FF+30d, 4604FF, 4589FF, 4586FF, 4529FF+30d, 4526FF+15d, 4575FF+0.25d, 4565FF, 4522FF+0.25d |  | Zenith | 8735354 |
| 4611 | 36900.37000.37100.38200.303300 | OC Receipt | 60d | 2028-03-24 | 2028-05-22 | 4610 |  | Zenith | 8735344 |
| 4612 | 36900.37000.37100.38200.126400 | **Post OC activities** | 470.75d | 2027-10-30 | 2029-05-12 |  | start no earlier than 2027-10-30 | Zenith | 8652094 |
| 4613 | 36900.37000.37100.38200.126400.406000 | CP & Sanitaryware | 150d | 2028-05-23 | 2028-10-19 | 4611 |  | Zenith | 8731414 |
| 4614 | 36900.37000.37100.38200.126400.406100 | Electrical Fixtures And Fittings | 150d | 2028-05-23 | 2028-10-19 | 4611 |  | Zenith | 8731404 |
| 4615 | 36900.37000.37100.38200.126400.406200 | Final coat paint external | 100d | 2028-05-23 | 2028-08-30 | 4611 |  | Zenith | 8731394 |
| 4616 | 36900.37000.37100.38200.126400.406300 | Final Coat Paint Internal | 150d | 2028-05-23 | 2028-10-19 | 4611, 4525 |  | Zenith | 8731384 |
| 4617 | 36900.37000.37100.38200.126400.406400 | Balcony Railing Glass Fixing | 120d | 2028-10-20 | 2029-04-02 | 4616, 4565FS+30d |  | Zenith | 8731374 |
| 4618 | 36900.37000.37100.38200.126400.406500 | MEP | 150d | 2027-10-30 | 2028-05-12 | 4578FS+15d |  | Zenith | 8731364 |
| 4619 | 36900.37000.37100.38200.126400.406600 | Wooden Flooring | 180d | 2028-05-08 | 2028-12-18 | 4616FF+15d |  | Zenith | 8731354 |
| 4620 | 36900.37000.37100.38200.126400.406700 | Split AC Units installation | 100d | 2029-01-03 | 2029-04-12 | 4619FS+15d |  | Zenith | 8731344 |
| 4621 | 36900.37000.37100.38200.126400.406800 | Misc. works (Modular kitchen & others) | 180d | 2028-09-30 | 2029-05-12 | 4620FF+30d |  | Zenith | 8731334 |
| 4622 | 36900.37000.37100.38200.303400 | Offer To Possession | 180d | 2028-10-15 | 2029-05-27 | 4611FF+150d, 4613FF+20d, 4614FF+20d, 4615FF+20d, 4620FF+10d, 4618FF+30d, 4617FF+15d, 4621FF+15d |  | Zenith | 8735334 |

| ID | WBS | Task | Duration | Start | Finish | Predecessors | Complete | Constraint | Calendar | Unique_Task_ID |
| --- | --- | --- | --- | --- | --- | --- | --- | --- | --- | --- |
| 4623 | 36900.37000.37100.37700 | **Tower 06** | 1878.25d | 2024-05-19 | 2030-03-07 |  | 3% | start no earlier than 2024-05-19 | Zenith | 8647554 |
| 4624 | 36900.37000.37100.37700.63600 | **Sub-Structure Works** | 657d | 2024-05-19 | 2026-05-05 |  | 68% | start no earlier than 2024-05-19 | Zenith | 8648404 |
| 4625 | 36900.37000.37100.37700.63600.141100 | **Soil Bed Preparation** | 166d | 2024-05-19 | 2024-11-14 |  | 100% | start no earlier than 2024-05-19 | Zenith | 8652834 |
| 4626 | 36900.37000.37100.37700.63600.141100.230300 | Excavation (2m) | 43d | 2024-05-19 | 2024-06-30 | 3699SS+10d | 100% | start no earlier than 2024-05-19 | Zenith | 8723344 |
| 4627 | 36900.37000.37100.37700.63600.141100.230400 | Soldier Piling shop drawing approval | 9d | 2024-06-22 | 2024-06-30 | 4626FS+33d | 100% | start no earlier than 2024-06-22 | Zenith | 8723334 |
| 4628 | 36900.37000.37100.37700.63600.141100.230500 | Mobilization & Soldier Piling with Excavation (4m) | 31d | 2024-05-31 | 2024-06-30 | 4627 | 100% | start no earlier than 2024-05-31 | Zenith | 8723324 |
| 4629 | 36900.37000.37100.37700.63600.141100.230600 | Balance B3 bulk Excavation | 20d | 2024-10-01 | 2024-10-20 | 4628 | 100% | start no earlier than 2024-10-01 | Zenith | 8723314 |
| 4630 | 36900.37000.37100.37700.63600.141100.230700 | Soil dressing & ATT | 6d | 2024-10-26 | 2024-11-14 | 4629FS+8d | 100% | start no earlier than 2024-10-26 | Zenith | 8723304 |
| 4631 | 36900.37000.37100.37700.63600.119200 | **Structure Works** | 356.5d | 2024-10-30 | 2025-12-20 |  | 92% | start no earlier than 2024-10-30 | Zenith | 8651764 |
| 4632 | 36900.37000.37100.37700.63600.119200.138700 | **Raft Foundation** | 84.5d | 2024-10-30 | 2025-03-08 |  | 100% | start no earlier than 2024-10-30 | Zenith | 8652704 |
| 4633 | 36900.37000.37100.37700.63600.119200.138700.260400 | PCC | 1.5d | 2024-10-30 | 2024-12-14 | 4630, 3706SS+10d | 100% | start no earlier than 2024-10-30 | Zenith | 8685134 |
| 4634 | 36900.37000.37100.37700.63600.119200.138700.260300 | Column/SW layout marking | 25d | 2025-01-06 | 2025-01-30 | 4633 | 100% | start no earlier than 2025-01-06 | Zenith | 8685124 |
| 4635 | 36900.37000.37100.37700.63600.119200.138700.260200 | Reinforcement | 27d | 2025-01-13 | 2025-03-06 | 4634SS+9d | 100% | start no earlier than 2025-01-13 | Zenith | 8685114 |
| 4636 | 36900.37000.37100.37700.63600.119200.138700.260100 | Formwork (Conventional) | 6d | 2025-02-25 | 2025-03-06 | 4635FF+4d | 100% | start no earlier than 2025-02-25 | Zenith | 8685104 |
| 4637 | 36900.37000.37100.37700.63600.119200.138700.260000 | Concreting | 2d | 2025-03-07 | 2025-03-08 | 4636FF+3d | 100% | start no earlier than 2025-03-07 | Zenith | 8685094 |
| 4638 | 36900.37000.37100.37700.63600.119200.136500 | **Basement 03 Roof Slab (Dummy/Stitch Slab)** | 7d | 2025-03-24 | 2025-03-30 |  | 100% | start no earlier than 2025-03-24 | Zenith | 8652334 |
| 4639 | 36900.37000.37100.37700.63600.119200.136500.259900 | Column/SW Reinforcement | 1d | 2025-03-24 | 2025-03-24 | 4637 | 100% | start no earlier than 2025-03-24 | Zenith | 8685084 |
| 4640 | 36900.37000.37100.37700.63600.119200.136500.259800 | SW Formwork (Conventional) | 1d | 2025-03-25 | 2025-03-25 | 4639SS | 100% | start no earlier than 2025-03-25 | Zenith | 8685074 |
| 4641 | 36900.37000.37100.37700.63600.119200.136500.259700 | Column/SW Concreting | 1d | 2025-03-26 | 2025-03-26 | 4640SS | 100% | start no earlier than 2025-03-26 | Zenith | 8685064 |
| 4642 | 36900.37000.37100.37700.63600.119200.136500.259600 | Slab Formwork (Conventional) | 1d | 2025-03-27 | 2025-03-27 | 4641SS+1d | 100% | start no earlier than 2025-03-27 | Zenith | 8685054 |
| 4643 | 36900.37000.37100.37700.63600.119200.136500.259500 | Slab Reinforcement + Conduting | 1d | 2025-03-28 | 2025-03-28 | 4642 | 100% | start no earlier than 2025-03-28 | Zenith | 8685044 |
| 4644 | 36900.37000.37100.37700.63600.119200.136500.259400 | Concreting | 2d | 2025-03-29 | 2025-03-30 | 4643 | 100% | start no earlier than 2025-03-29 | Zenith | 8685034 |
| 4645 | 36900.37000.37100.37700.63600.119200.136600 | **Basement 02 Roof Slab** | 125.95d | 2025-03-30 | 2025-08-02 |  | 100% | start no earlier than 2025-03-30 | Zenith | 8652324 |
| 4646 | 36900.37000.37100.37700.63600.119200.136600.259300 | Column/SW Reinforcement | 16d | 2025-03-30 | 2025-05-21 | 4644FS-7d | 100% | start no earlier than 2025-03-30 | Zenith | 8685024 |
| 4647 | 36900.37000.37100.37700.63600.119200.136600.259200 | SW Formwork (Conventional) | 22d | 2025-04-09 | 2025-07-29 | 4646SS+11d | 100% | start no earlier than 2025-04-09 | Zenith | 8685014 |
| 4648 | 36900.37000.37100.37700.63600.119200.136600.259100 | Column/SW Concreting | 22d | 2025-04-08 | 2025-07-30 | 4647SS | 100% | start no earlier than 2025-04-08 | Zenith | 8685004 |
| 4649 | 36900.37000.37100.37700.63600.119200.136600.259000 | Slab Formwork (Conventional) | 16d | 2025-05-15 | 2025-07-30 | 4648SS+34d | 100% | start no earlier than 2025-05-15 | Zenith | 8684994 |
| 4650 | 36900.37000.37100.37700.63600.119200.136600.258900 | Slab Reinforcement + Conduting | 9d | 2025-07-07 | 2025-08-01 | 4649FS-22d | 100% | start no earlier than 2025-07-07 | Zenith | 8684984 |
| 4651 | 36900.37000.37100.37700.63600.119200.136600.258800 | Concreting | 8d | 2025-07-16 | 2025-08-02 | 4650FS-14.95d | 100% | start no earlier than 2025-07-16 | Zenith | 8684974 |

| ID | WBS | Task | Duration | Start | Finish | Predecessors | Complete | Constraint | Calendar | Unique_Task_ID |
| --- | --- | --- | --- | --- | --- | --- | --- | --- | --- | --- |
| 4652 | 36900.37000.37100.37700.63600.119200.136700 | **Basement 01 Roof Slab** | 89d | 2025-08-05 | 2025-11-01 |  | 100% | start no earlier than 2025-08-05 | Zenith | 8652314 |
| 4653 | 36900.37000.37100.37700.63600.119200.136700.258700 | Column/SW Reinforcement | 15d | 2025-08-05 | 2025-10-06 | 4651 | 100% | start no earlier than 2025-08-05 | Zenith | 8684964 |
| 4654 | 36900.37000.37100.37700.63600.119200.136700.258600 | SW Formwork (Conventional) | 18d | 2025-08-11 | 2025-10-14 | 4653SS+4d | 100% | start no earlier than 2025-08-11 | Zenith | 8684954 |
| 4655 | 36900.37000.37100.37700.63600.119200.136700.258500 | Column/SW Concreting | 16d | 2025-08-13 | 2025-10-14 | 4654SS+3d | 100% | start no earlier than 2025-08-13 | Zenith | 8684944 |
| 4656 | 36900.37000.37100.37700.63600.119200.136700.258400 | Slab Formwork (Conventional) | 10d | 2025-09-20 | 2025-10-30 | 4655SS+26d | 100% | start no earlier than 2025-09-20 | Zenith | 8684934 |
| 4657 | 36900.37000.37100.37700.63600.119200.136700.258300 | Slab Reinforcement + Conduting | 10d | 2025-10-01 | 2025-10-30 | 4656FS-28d | 100% | start no earlier than 2025-10-01 | Zenith | 8684924 |
| 4658 | 36900.37000.37100.37700.63600.119200.136700.258200 | Concreting | 6d | 2025-10-19 | 2025-11-01 | 4657FS-10d | 100% | start no earlier than 2025-10-19 | Zenith | 8684914 |
| 4659 | 36900.37000.37100.37700.63600.119200.138800 | **Podium Slab/Ground Roof Floor Slab** | 42d | 2025-10-25 | 2025-12-20 |  | 47% | start no earlier than 2025-10-25 | Zenith | 8652304 |
| 4660 | 36900.37000.37100.37700.63600.119200.138800.258100 | Column/SW Reinforcement | 9d | 2025-10-25 | 2025-11-19 | 4658FS-15d | 88% | start no earlier than 2025-10-25 | Zenith | 8684904 |
| 4661 | 36900.37000.37100.37700.63600.119200.138800.258000 | SW Formwork (Conventional) | 9d | 2025-10-27 | 2025-12-20 | 4660SS+4d | 66% | start no earlier than 2025-10-27 | Zenith | 8684894 |
| 4662 | 36900.37000.37100.37700.63600.119200.138800.257900 | Column/SW Concreting | 9d | 2025-10-28 | 2025-11-22 | 4661SS+4d | 55% | start no earlier than 2025-10-28 | Zenith | 8684884 |
| 4663 | 36900.37000.37100.37700.63600.119200.138800.994800 | Slab Formwork (Conventional) | 9d | 2025-11-19 | 2025-11-27 | 4662SS+13d |  |  | Zenith | 8684874 |
| 4664 | 36900.37000.37100.37700.63600.119200.138800.994900 | Slab Reinforcement + Conduting | 3d | 2025-11-28 | 2025-11-30 | 4663 |  |  | Zenith | 8684864 |
| 4665 | 36900.37000.37100.37700.63600.119200.138800.995000 | Concreting | 1d | 2025-12-16 | 2025-12-16 | 4664 |  |  | Zenith | 8684854 |
| 4666 | 36900.37000.37100.37700.63600.211200 | **Substructure Finishes** | 110d | 2026-01-16 | 2026-05-05 |  |  | start no earlier than 2026-01-16 | Zenith | 8654084 |
| 4667 | 36900.37000.37100.37700.63600.211200.832200 | Masonary Work | 35d | 2026-01-16 | 2026-02-19 | 4665FS+30d |  |  | Zenith | 8723294 |
| 4668 | 36900.37000.37100.37700.63600.211200.832300 | Plaster Work | 30d | 2026-02-20 | 2026-03-21 | 4667 |  |  | Zenith | 8723284 |
| 4669 | 36900.37000.37100.37700.63600.211200.832400 | Structural Steel work | 50d | 2026-02-15 | 2026-04-05 | 4665FS+60d |  |  | Zenith | 8723274 |
| 4670 | 36900.37000.37100.37700.63600.211200.832500 | White Wash | 35d | 2026-04-01 | 2026-05-05 | 4668FS+10d |  |  | Zenith | 8723264 |
| 4671 | 36900.37000.37100.37700.38600 | **Superstructure** | 667.25d | 2025-12-17 | 2028-01-13 |  |  | start no earlier than 2025-12-17 | Zenith | 8647654 |
| 4672 | 36900.37000.37100.37700.38600.44200 | **RCC structure** | 472d | 2025-12-17 | 2027-05-17 |  |  | start no earlier than 2025-12-17 | Zenith | 8647914 |
| 4673 | 36900.37000.37100.37700.38600.44200.183900 | **1st Floor Roof slab** | 33d | 2025-12-17 | 2026-01-18 |  |  | start no earlier than 2025-12-17 | Zenith | 8654824 |
| 4674 | 36900.37000.37100.37700.38600.44200.183900.995100 | Reinforcement | 28d | 2025-12-17 | 2026-01-13 | 4665 |  |  | Zenith | 8684844 |
| 4675 | 36900.37000.37100.37700.38600.44200.183900.995200 | Conduiting | 28d | 2025-12-20 | 2026-01-16 | 4674SS+3d |  |  | Zenith | 8684834 |
| 4676 | 36900.37000.37100.37700.38600.44200.183900.995300 | Formwork | 28d | 2025-12-21 | 2026-01-17 | 4674SS+4d |  |  | Zenith | 8684824 |
| 4677 | 36900.37000.37100.37700.38600.44200.183900.995400 | Concreting | 1d | 2026-01-18 | 2026-01-18 | 4675FS+1d, 4676 |  |  | Zenith | 8684814 |

| ID | WBS | Task | Duration | Start | Finish | Predecessors | Constraint | Calendar | Unique_Task_ID |
| --- | --- | --- | --- | --- | --- | --- | --- | --- | --- |
| 4678 | 36900.37000.37100.37700.38600.44200.184000 | **2nd Floor Roof slab** | 21d | 2026-01-19 | 2026-02-08 |  | start no earlier than 2026-01-19 | Zenith | 8654834 |
| 4679 | 36900.37000.37100.37700.38600.44200.184000.995500 | Reinforcement | 16d | 2026-01-19 | 2026-02-03 | 4677 |  | Zenith | 8684804 |
| 4680 | 36900.37000.37100.37700.38600.44200.184000.995600 | Conduiting | 16d | 2026-01-22 | 2026-02-06 | 4679SS+3d |  | Zenith | 8684794 |
| 4681 | 36900.37000.37100.37700.38600.44200.184000.995700 | Formwork | 16d | 2026-01-23 | 2026-02-07 | 4679SS+4d |  | Zenith | 8684784 |
| 4682 | 36900.37000.37100.37700.38600.44200.184000.995800 | Concreting | 1d | 2026-02-08 | 2026-02-08 | 4680FS+1d, 4681 |  | Zenith | 8684774 |
| 4683 | 36900.37000.37100.37700.38600.44200.184100 | **3rd Floor Roof slab** | 15d | 2026-02-09 | 2026-02-23 |  | start no earlier than 2026-02-09 | Zenith | 8654844 |
| 4684 | 36900.37000.37100.37700.38600.44200.184100.995900 | Reinforcement | 10d | 2026-02-09 | 2026-02-18 | 4682 |  | Zenith | 8684764 |
| 4685 | 36900.37000.37100.37700.38600.44200.184100.996000 | Conduiting | 10d | 2026-02-12 | 2026-02-21 | 4684SS+3d |  | Zenith | 8684754 |
| 4686 | 36900.37000.37100.37700.38600.44200.184100.996100 | Formwork | 10d | 2026-02-13 | 2026-02-22 | 4684SS+4d |  | Zenith | 8684744 |
| 4687 | 36900.37000.37100.37700.38600.44200.184100.996200 | Concreting | 1d | 2026-02-23 | 2026-02-23 | 4685FS+1d, 4686 |  | Zenith | 8684734 |
| 4688 | 36900.37000.37100.37700.38600.44200.184200 | **4th floor roof slab** | 9d | 2026-02-24 | 2026-03-04 |  | start no earlier than 2026-02-24 | Zenith | 8654854 |
| 4689 | 36900.37000.37100.37700.38600.44200.184200.996300 | Reinforcement | 6d | 2026-02-24 | 2026-03-01 | 4687 |  | Zenith | 8684724 |
| 4690 | 36900.37000.37100.37700.38600.44200.184200.996400 | Conduiting | 6d | 2026-02-25 | 2026-03-02 | 4689SS+1d |  | Zenith | 8684714 |
| 4691 | 36900.37000.37100.37700.38600.44200.184200.996500 | Formwork | 6d | 2026-02-26 | 2026-03-03 | 4689SS+2d |  | Zenith | 8684704 |
| 4692 | 36900.37000.37100.37700.38600.44200.184200.996600 | Concreting | 1d | 2026-03-04 | 2026-03-04 | 4690FS+1d, 4691 |  | Zenith | 8684694 |
| 4693 | 36900.37000.37100.37700.38600.44200.184300 | **5th floor roof slab** | 9d | 2026-03-05 | 2026-03-13 |  | start no earlier than 2026-03-05 | Zenith | 8654864 |
| 4694 | 36900.37000.37100.37700.38600.44200.184300.996700 | Reinforcement | 6d | 2026-03-05 | 2026-03-10 | 4692 |  | Zenith | 8684684 |
| 4695 | 36900.37000.37100.37700.38600.44200.184300.996800 | Conduiting | 6d | 2026-03-06 | 2026-03-11 | 4694SS+1d |  | Zenith | 8684674 |
| 4696 | 36900.37000.37100.37700.38600.44200.184300.996900 | Formwork | 6d | 2026-03-07 | 2026-03-12 | 4694SS+2d |  | Zenith | 8684664 |
| 4697 | 36900.37000.37100.37700.38600.44200.184300.997000 | Concreting | 1d | 2026-03-13 | 2026-03-13 | 4695FS+1d, 4696 |  | Zenith | 8684654 |
| 4698 | 36900.37000.37100.37700.38600.44200.184400 | **6th floor roof slab** | 9d | 2026-03-14 | 2026-03-22 |  | start no earlier than 2026-03-14 | Zenith | 8654874 |
| 4699 | 36900.37000.37100.37700.38600.44200.184400.997100 | Reinforcement | 6d | 2026-03-14 | 2026-03-19 | 4697 |  | Zenith | 8684644 |
| 4700 | 36900.37000.37100.37700.38600.44200.184400.997200 | Conduiting | 6d | 2026-03-15 | 2026-03-20 | 4699SS+1d |  | Zenith | 8684634 |
| 4701 | 36900.37000.37100.37700.38600.44200.184400.997300 | Formwork | 6d | 2026-03-16 | 2026-03-21 | 4699SS+2d |  | Zenith | 8684624 |
| 4702 | 36900.37000.37100.37700.38600.44200.184400.997400 | Concreting | 1d | 2026-03-22 | 2026-03-22 | 4700FS+1d, 4701 |  | Zenith | 8684614 |

| ID | WBS | Task | Duration | Start | Finish | Predecessors | Constraint | Calendar | Unique_Task_ID |
| --- | --- | --- | --- | --- | --- | --- | --- | --- | --- |
| 4703 | 36900.37000.37100.37700.38600.44200.184500 | **7th floor roof slab** | 9d | 2026-03-23 | 2026-03-31 |  | start no earlier than 2026-03-23 | Zenith | 8654884 |
| 4704 | 36900.37000.37100.37700.38600.44200.184500.997500 | Reinforcement | 6d | 2026-03-23 | 2026-03-28 | 4702 |  | Zenith | 8684604 |
| 4705 | 36900.37000.37100.37700.38600.44200.184500.997600 | Conduiting | 6d | 2026-03-24 | 2026-03-29 | 4704SS+1d |  | Zenith | 8684594 |
| 4706 | 36900.37000.37100.37700.38600.44200.184500.997700 | Formwork | 6d | 2026-03-25 | 2026-03-30 | 4704SS+2d |  | Zenith | 8684584 |
| 4707 | 36900.37000.37100.37700.38600.44200.184500.997800 | Concreting | 1d | 2026-03-31 | 2026-03-31 | 4705FS+1d, 4706 |  | Zenith | 8684574 |
| 4708 | 36900.37000.37100.37700.38600.44200.184600 | **8th floor roof slab** | 9d | 2026-04-01 | 2026-04-09 |  | start no earlier than 2026-04-01 | Zenith | 8654894 |
| 4709 | 36900.37000.37100.37700.38600.44200.184600.997900 | Reinforcement | 6d | 2026-04-01 | 2026-04-06 | 4707 |  | Zenith | 8684564 |
| 4710 | 36900.37000.37100.37700.38600.44200.184600.998000 | Conduiting | 6d | 2026-04-02 | 2026-04-07 | 4709SS+1d |  | Zenith | 8684554 |
| 4711 | 36900.37000.37100.37700.38600.44200.184600.998100 | Formwork | 6d | 2026-04-03 | 2026-04-08 | 4709SS+2d |  | Zenith | 8684544 |
| 4712 | 36900.37000.37100.37700.38600.44200.184600.998200 | Concreting | 1d | 2026-04-09 | 2026-04-09 | 4710FS+1d, 4711 |  | Zenith | 8684534 |
| 4713 | 36900.37000.37100.37700.38600.44200.184700 | **9th floor roof slab** | 9d | 2026-04-10 | 2026-04-18 |  | start no earlier than 2026-04-10 | Zenith | 8654904 |
| 4714 | 36900.37000.37100.37700.38600.44200.184700.998300 | Reinforcement | 6d | 2026-04-10 | 2026-04-15 | 4712 |  | Zenith | 8684524 |
| 4715 | 36900.37000.37100.37700.38600.44200.184700.998400 | Conduiting | 6d | 2026-04-11 | 2026-04-16 | 4714SS+1d |  | Zenith | 8684514 |
| 4716 | 36900.37000.37100.37700.38600.44200.184700.998500 | Formwork | 6d | 2026-04-12 | 2026-04-17 | 4714SS+2d |  | Zenith | 8684504 |
| 4717 | 36900.37000.37100.37700.38600.44200.184700.998600 | Concreting | 1d | 2026-04-18 | 2026-04-18 | 4715FS+1d, 4716 |  | Zenith | 8684494 |
| 4718 | 36900.37000.37100.37700.38600.44200.184800 | **10th floor roof slab** | 11d | 2026-04-19 | 2026-04-29 |  | start no earlier than 2026-04-19 | Zenith | 8654914 |
| 4719 | 36900.37000.37100.37700.38600.44200.184800.998700 | Reinforcement | 8d | 2026-04-19 | 2026-04-26 | 4717 |  | Zenith | 8684484 |
| 4720 | 36900.37000.37100.37700.38600.44200.184800.998800 | Conduiting | 8d | 2026-04-20 | 2026-04-27 | 4719SS+1d |  | Zenith | 8684474 |
| 4721 | 36900.37000.37100.37700.38600.44200.184800.998900 | Formwork | 8d | 2026-04-21 | 2026-04-28 | 4719SS+2d |  | Zenith | 8684464 |
| 4722 | 36900.37000.37100.37700.38600.44200.184800.999000 | Concreting | 1d | 2026-04-29 | 2026-04-29 | 4720FS+1d, 4721 |  | Zenith | 8684454 |
| 4723 | 36900.37000.37100.37700.38600.44200.184900 | **11th floor roof slab** | 11d | 2026-04-30 | 2026-05-10 |  | start no earlier than 2026-04-30 | Zenith | 8654924 |
| 4724 | 36900.37000.37100.37700.38600.44200.184900.999100 | Reinforcement | 8d | 2026-04-30 | 2026-05-07 | 4722 |  | Zenith | 8684444 |
| 4725 | 36900.37000.37100.37700.38600.44200.184900.999200 | Conduiting | 8d | 2026-05-01 | 2026-05-08 | 4724SS+1d |  | Zenith | 8684434 |
| 4726 | 36900.37000.37100.37700.38600.44200.184900.999300 | Formwork | 8d | 2026-05-02 | 2026-05-09 | 4724SS+2d |  | Zenith | 8684424 |
| 4727 | 36900.37000.37100.37700.38600.44200.184900.999400 | Concreting | 1d | 2026-05-10 | 2026-05-10 | 4725FS+1d, 4726 |  | Zenith | 8684414 |

| ID | WBS | Task | Duration | Start | Finish | Predecessors | Constraint | Calendar | Unique_Task_ID |
| --- | --- | --- | --- | --- | --- | --- | --- | --- | --- |
| 4728 | 36900.37000.37100.37700.38600.44200.185000 | **12th floor roof slab** | 11d | 2026-05-11 | 2026-05-21 |  | start no earlier than 2026-05-11 | Zenith | 8654934 |
| 4729 | 36900.37000.37100.37700.38600.44200.185000.999500 | Reinforcement | 8d | 2026-05-11 | 2026-05-18 | 4727 |  | Zenith | 8684404 |
| 4730 | 36900.37000.37100.37700.38600.44200.185000.999600 | Conduiting | 8d | 2026-05-12 | 2026-05-19 | 4729SS+1d |  | Zenith | 8684394 |
| 4731 | 36900.37000.37100.37700.38600.44200.185000.999700 | Formwork | 8d | 2026-05-13 | 2026-05-20 | 4729SS+2d |  | Zenith | 8684384 |
| 4732 | 36900.37000.37100.37700.38600.44200.185000.999800 | Concreting | 1d | 2026-05-21 | 2026-05-21 | 4730FS+1d, 4731 |  | Zenith | 8684374 |
| 4733 | 36900.37000.37100.37700.38600.44200.185100 | **13th floor roof slab** | 11d | 2026-05-22 | 2026-06-01 |  | start no earlier than 2026-05-22 | Zenith | 8654944 |
| 4734 | 36900.37000.37100.37700.38600.44200.185100.999900 | Reinforcement | 8d | 2026-05-22 | 2026-05-29 | 4732 |  | Zenith | 8684364 |
| 4735 | 36900.37000.37100.37700.38600.44200.185100.1000000 | Conduiting | 8d | 2026-05-23 | 2026-05-30 | 4734SS+1d |  | Zenith | 8684354 |
| 4736 | 36900.37000.37100.37700.38600.44200.185100.1000100 | Formwork | 8d | 2026-05-24 | 2026-05-31 | 4734SS+2d |  | Zenith | 8684344 |
| 4737 | 36900.37000.37100.37700.38600.44200.185100.1000200 | Concreting | 1d | 2026-06-01 | 2026-06-01 | 4735FS+1d, 4736 |  | Zenith | 8684334 |
| 4738 | 36900.37000.37100.37700.38600.44200.185200 | **14th floor roof slab** | 15d | 2026-06-02 | 2026-06-16 |  | start no earlier than 2026-06-02 | Zenith | 8654954 |
| 4739 | 36900.37000.37100.37700.38600.44200.185200.1000300 | Reinforcement | 12d | 2026-06-02 | 2026-06-13 | 4737 |  | Zenith | 8684324 |
| 4740 | 36900.37000.37100.37700.38600.44200.185200.1000400 | Conduiting | 12d | 2026-06-03 | 2026-06-14 | 4739SS+1d |  | Zenith | 8684314 |
| 4741 | 36900.37000.37100.37700.38600.44200.185200.1000500 | Formwork | 12d | 2026-06-04 | 2026-06-15 | 4739SS+2d |  | Zenith | 8684304 |
| 4742 | 36900.37000.37100.37700.38600.44200.185200.1000600 | Concreting | 1d | 2026-06-16 | 2026-06-16 | 4740FS+1d, 4741 |  | Zenith | 8684294 |
| 4743 | 36900.37000.37100.37700.38600.44200.185300 | **15th floor roof slab** | 11d | 2026-06-17 | 2026-06-27 |  | start no earlier than 2026-06-17 | Zenith | 8654964 |
| 4744 | 36900.37000.37100.37700.38600.44200.185300.1000700 | Reinforcement | 8d | 2026-06-17 | 2026-06-24 | 4742 |  | Zenith | 8684284 |
| 4745 | 36900.37000.37100.37700.38600.44200.185300.1000800 | Conduiting | 8d | 2026-06-18 | 2026-06-25 | 4744SS+1d |  | Zenith | 8684274 |
| 4746 | 36900.37000.37100.37700.38600.44200.185300.1000900 | Formwork | 8d | 2026-06-19 | 2026-06-26 | 4744SS+2d |  | Zenith | 8684264 |
| 4747 | 36900.37000.37100.37700.38600.44200.185300.1001000 | Concreting | 1d | 2026-06-27 | 2026-06-27 | 4745FS+1d, 4746 |  | Zenith | 8684254 |
| 4748 | 36900.37000.37100.37700.38600.44200.185400 | **16th floor roof slab** | 11d | 2026-06-28 | 2026-07-08 |  | start no earlier than 2026-06-28 | Zenith | 8654974 |
| 4749 | 36900.37000.37100.37700.38600.44200.185400.1001100 | Reinforcement | 8d | 2026-06-28 | 2026-07-05 | 4747 |  | Zenith | 8684244 |
| 4750 | 36900.37000.37100.37700.38600.44200.185400.1001200 | Conduiting | 8d | 2026-06-29 | 2026-07-06 | 4749SS+1d |  | Zenith | 8684234 |
| 4751 | 36900.37000.37100.37700.38600.44200.185400.1001300 | Formwork | 8d | 2026-06-30 | 2026-07-07 | 4749SS+2d |  | Zenith | 8684224 |
| 4752 | 36900.37000.37100.37700.38600.44200.185400.1001400 | Concreting | 1d | 2026-07-08 | 2026-07-08 | 4750, 4751 |  | Zenith | 8684214 |

| ID | WBS | Task | Duration | Start | Finish | Predecessors | Constraint | Calendar | Unique_Task_ID |
| --- | --- | --- | --- | --- | --- | --- | --- | --- | --- |
| 4753 | 36900.37000.37100.37700.38600.44200.185500 | **17th floor roof slab** | 11d | 2026-07-09 | 2026-07-19 |  | start no earlier than 2026-07-09 | Zenith | 8654984 |
| 4754 | 36900.37000.37100.37700.38600.44200.185500.1001500 | Reinforcement | 8d | 2026-07-09 | 2026-07-16 | 4752 |  | Zenith | 8684204 |
| 4755 | 36900.37000.37100.37700.38600.44200.185500.1001600 | Conduiting | 8d | 2026-07-10 | 2026-07-17 | 4754SS+1d |  | Zenith | 8684194 |
| 4756 | 36900.37000.37100.37700.38600.44200.185500.1001700 | Formwork | 8d | 2026-07-11 | 2026-07-18 | 4754SS+2d |  | Zenith | 8684184 |
| 4757 | 36900.37000.37100.37700.38600.44200.185500.1001800 | Concreting | 1d | 2026-07-19 | 2026-07-19 | 4755FS+1d, 4756 |  | Zenith | 8684174 |
| 4758 | 36900.37000.37100.37700.38600.44200.185600 | **18th floor roof slab** | 11d | 2026-07-20 | 2026-07-30 |  | start no earlier than 2026-07-20 | Zenith | 8654994 |
| 4759 | 36900.37000.37100.37700.38600.44200.185600.1001900 | Reinforcement | 8d | 2026-07-20 | 2026-07-27 | 4757 |  | Zenith | 8684164 |
| 4760 | 36900.37000.37100.37700.38600.44200.185600.1002000 | Conduiting | 8d | 2026-07-21 | 2026-07-28 | 4759SS+1d |  | Zenith | 8684154 |
| 4761 | 36900.37000.37100.37700.38600.44200.185600.1002100 | Formwork | 8d | 2026-07-22 | 2026-07-29 | 4759SS+2d |  | Zenith | 8684144 |
| 4762 | 36900.37000.37100.37700.38600.44200.185600.1002200 | Concreting | 1d | 2026-07-30 | 2026-07-30 | 4760FS+1d, 4761 |  | Zenith | 8684134 |
| 4763 | 36900.37000.37100.37700.38600.44200.185700 | **19th floor roof slab** | 11d | 2026-07-31 | 2026-08-10 |  | start no earlier than 2026-07-31 | Zenith | 8655004 |
| 4764 | 36900.37000.37100.37700.38600.44200.185700.1002300 | Reinforcement | 8d | 2026-07-31 | 2026-08-07 | 4762 |  | Zenith | 8684124 |
| 4765 | 36900.37000.37100.37700.38600.44200.185700.1002400 | Conduiting | 8d | 2026-08-01 | 2026-08-08 | 4764SS+1d |  | Zenith | 8684114 |
| 4766 | 36900.37000.37100.37700.38600.44200.185700.1002500 | Formwork | 8d | 2026-08-02 | 2026-08-09 | 4764SS+2d |  | Zenith | 8684104 |
| 4767 | 36900.37000.37100.37700.38600.44200.185700.1002600 | Concreting | 1d | 2026-08-10 | 2026-08-10 | 4765FS+1d, 4766 |  | Zenith | 8684094 |
| 4768 | 36900.37000.37100.37700.38600.44200.185800 | **20th floor roof slab** | 11d | 2026-08-11 | 2026-08-21 |  | start no earlier than 2026-08-11 | Zenith | 8655014 |
| 4769 | 36900.37000.37100.37700.38600.44200.185800.1002700 | Reinforcement | 8d | 2026-08-11 | 2026-08-18 | 4767 |  | Zenith | 8684084 |
| 4770 | 36900.37000.37100.37700.38600.44200.185800.1002800 | Conduiting | 8d | 2026-08-12 | 2026-08-19 | 4769SS+1d |  | Zenith | 8684074 |
| 4771 | 36900.37000.37100.37700.38600.44200.185800.1002900 | Formwork | 8d | 2026-08-13 | 2026-08-20 | 4769SS+2d |  | Zenith | 8684064 |
| 4772 | 36900.37000.37100.37700.38600.44200.185800.1003000 | Concreting | 1d | 2026-08-21 | 2026-08-21 | 4770FS+1d, 4771 |  | Zenith | 8684054 |
| 4773 | 36900.37000.37100.37700.38600.44200.185900 | **21st floor roof slab** | 11d | 2026-08-22 | 2026-09-01 |  | start no earlier than 2026-08-22 | Zenith | 8655034 |
| 4774 | 36900.37000.37100.37700.38600.44200.185900.1003100 | Reinforcement | 8d | 2026-08-22 | 2026-08-29 | 4772 |  | Zenith | 8684044 |
| 4775 | 36900.37000.37100.37700.38600.44200.185900.1003200 | Conduiting | 8d | 2026-08-23 | 2026-08-30 | 4774SS+1d |  | Zenith | 8684034 |
| 4776 | 36900.37000.37100.37700.38600.44200.185900.1003300 | Formwork | 8d | 2026-08-24 | 2026-08-31 | 4774SS+2d |  | Zenith | 8684024 |
| 4777 | 36900.37000.37100.37700.38600.44200.185900.1003400 | Concreting | 1d | 2026-09-01 | 2026-09-01 | 4775FS+1d, 4776 |  | Zenith | 8684014 |

| ID | WBS | Task | Duration | Start | Finish | Predecessors | Constraint | Calendar | Unique_Task_ID |
| --- | --- | --- | --- | --- | --- | --- | --- | --- | --- |
| 4778 | 36900.37000.37100.37700.38600.44200.186000 | **22nd floor roof slab** | 11d | 2026-09-02 | 2026-09-12 |  | start no earlier than 2026-09-02 | Zenith | 8655054 |
| 4779 | 36900.37000.37100.37700.38600.44200.186000.1003500 | Reinforcement | 8d | 2026-09-02 | 2026-09-09 | 4777 |  | Zenith | 8684004 |
| 4780 | 36900.37000.37100.37700.38600.44200.186000.1003600 | Conduiting | 8d | 2026-09-03 | 2026-09-10 | 4779SS+1d |  | Zenith | 8683994 |
| 4781 | 36900.37000.37100.37700.38600.44200.186000.1003700 | Formwork | 8d | 2026-09-04 | 2026-09-11 | 4779SS+2d |  | Zenith | 8683984 |
| 4782 | 36900.37000.37100.37700.38600.44200.186000.1003800 | Concreting | 1d | 2026-09-12 | 2026-09-12 | 4780FS+1d, 4781 |  | Zenith | 8683974 |
| 4783 | 36900.37000.37100.37700.38600.44200.186100 | **23rd floor roof slab** | 11d | 2026-09-13 | 2026-09-23 |  | start no earlier than 2026-09-13 | Zenith | 8655084 |
| 4784 | 36900.37000.37100.37700.38600.44200.186100.1003900 | Reinforcement | 8d | 2026-09-13 | 2026-09-20 | 4782 |  | Zenith | 8683964 |
| 4785 | 36900.37000.37100.37700.38600.44200.186100.1004000 | Conduiting | 8d | 2026-09-14 | 2026-09-21 | 4784SS+1d |  | Zenith | 8683954 |
| 4786 | 36900.37000.37100.37700.38600.44200.186100.1004100 | Formwork | 8d | 2026-09-15 | 2026-09-22 | 4784SS+2d |  | Zenith | 8683944 |
| 4787 | 36900.37000.37100.37700.38600.44200.186100.1004200 | Concreting | 1d | 2026-09-23 | 2026-09-23 | 4785FS+1d, 4786 |  | Zenith | 8683934 |
| 4788 | 36900.37000.37100.37700.38600.44200.186200 | **24th floor roof slab** | 11d | 2026-09-24 | 2026-10-04 |  | start no earlier than 2026-09-24 | Zenith | 8655094 |
| 4789 | 36900.37000.37100.37700.38600.44200.186200.1004300 | Reinforcement | 8d | 2026-09-24 | 2026-10-01 | 4787 |  | Zenith | 8683924 |
| 4790 | 36900.37000.37100.37700.38600.44200.186200.1004400 | Conduiting | 8d | 2026-09-25 | 2026-10-02 | 4789SS+1d |  | Zenith | 8683914 |
| 4791 | 36900.37000.37100.37700.38600.44200.186200.1004500 | Formwork | 8d | 2026-09-26 | 2026-10-03 | 4789SS+2d |  | Zenith | 8683904 |
| 4792 | 36900.37000.37100.37700.38600.44200.186200.1004600 | Concreting | 1d | 2026-10-04 | 2026-10-04 | 4790FS+1d, 4791 |  | Zenith | 8683894 |
| 4793 | 36900.37000.37100.37700.38600.44200.186300 | **25th floor roof slab** | 11d | 2026-10-05 | 2026-10-15 |  | start no earlier than 2026-10-05 | Zenith | 8655104 |
| 4794 | 36900.37000.37100.37700.38600.44200.186300.1004700 | Reinforcement | 8d | 2026-10-05 | 2026-10-12 | 4792 |  | Zenith | 8683884 |
| 4795 | 36900.37000.37100.37700.38600.44200.186300.1004800 | Conduiting | 8d | 2026-10-06 | 2026-10-13 | 4794SS+1d |  | Zenith | 8683874 |
| 4796 | 36900.37000.37100.37700.38600.44200.186300.1004900 | Formwork | 8d | 2026-10-07 | 2026-10-14 | 4794SS+2d |  | Zenith | 8683864 |
| 4797 | 36900.37000.37100.37700.38600.44200.186300.1005000 | Concreting | 1d | 2026-10-15 | 2026-10-15 | 4795FS+1d, 4796 |  | Zenith | 8683854 |
| 4798 | 36900.37000.37100.37700.38600.44200.186400 | **26th floor roof slab** | 11d | 2026-10-16 | 2026-10-26 |  | start no earlier than 2026-10-16 | Zenith | 8655114 |
| 4799 | 36900.37000.37100.37700.38600.44200.186400.1005100 | Reinforcement | 8d | 2026-10-16 | 2026-10-23 | 4797 |  | Zenith | 8683844 |
| 4800 | 36900.37000.37100.37700.38600.44200.186400.1005200 | Conduiting | 8d | 2026-10-17 | 2026-10-24 | 4799SS+1d |  | Zenith | 8683834 |
| 4801 | 36900.37000.37100.37700.38600.44200.186400.1005300 | Formwork | 8d | 2026-10-18 | 2026-10-25 | 4799SS+2d |  | Zenith | 8683824 |
| 4802 | 36900.37000.37100.37700.38600.44200.186400.1005400 | Concreting | 1d | 2026-10-26 | 2026-10-26 | 4800FS+1d, 4801 |  | Zenith | 8683814 |

| ID | WBS | Task | Duration | Start | Finish | Predecessors | Constraint | Calendar | Unique_Task_ID |
| --- | --- | --- | --- | --- | --- | --- | --- | --- | --- |
| 4803 | 36900.37000.37100.37700.38600.44200.186500 | **27th floor roof slab** | 11d | 2026-10-27 | 2026-12-21 |  | start no earlier than 2026-10-27 | Zenith | 8655124 |
| 4804 | 36900.37000.37100.37700.38600.44200.186500.1005500 | Reinforcement | 8d | 2026-10-27 | 2026-12-18 | 4802 |  | Zenith | 8683804 |
| 4805 | 36900.37000.37100.37700.38600.44200.186500.1005600 | Conduiting | 8d | 2026-10-28 | 2026-12-19 | 4804SS+1d |  | Zenith | 8683794 |
| 4806 | 36900.37000.37100.37700.38600.44200.186500.1005700 | Formwork | 8d | 2026-10-29 | 2026-12-20 | 4804SS+2d |  | Zenith | 8683784 |
| 4807 | 36900.37000.37100.37700.38600.44200.186500.1005800 | Concreting | 1d | 2026-12-21 | 2026-12-21 | 4805FS+1d, 4806 |  | Zenith | 8683774 |
| 4808 | 36900.37000.37100.37700.38600.44200.186600 | **28th floor roof slab** | 11d | 2026-12-22 | 2027-01-01 |  | start no earlier than 2026-12-22 | Zenith | 8655134 |
| 4809 | 36900.37000.37100.37700.38600.44200.186600.1005900 | Reinforcement | 8d | 2026-12-22 | 2026-12-29 | 4807 |  | Zenith | 8683764 |
| 4810 | 36900.37000.37100.37700.38600.44200.186600.1006000 | Conduiting | 8d | 2026-12-23 | 2026-12-30 | 4809SS+1d |  | Zenith | 8683754 |
| 4811 | 36900.37000.37100.37700.38600.44200.186600.1006100 | Formwork | 8d | 2026-12-24 | 2026-12-31 | 4809SS+2d |  | Zenith | 8683744 |
| 4812 | 36900.37000.37100.37700.38600.44200.186600.1006200 | Concreting | 1d | 2027-01-01 | 2027-01-01 | 4810FS+1d, 4811 |  | Zenith | 8683734 |
| 4813 | 36900.37000.37100.37700.38600.44200.186700 | **29th floor roof slab** | 15d | 2027-01-02 | 2027-01-16 |  | start no earlier than 2027-01-02 | Zenith | 8655144 |
| 4814 | 36900.37000.37100.37700.38600.44200.186700.1006300 | Reinforcement | 12d | 2027-01-02 | 2027-01-13 | 4812 |  | Zenith | 8683724 |
| 4815 | 36900.37000.37100.37700.38600.44200.186700.1006400 | Conduiting | 12d | 2027-01-03 | 2027-01-14 | 4814SS+1d |  | Zenith | 8683714 |
| 4816 | 36900.37000.37100.37700.38600.44200.186700.1006500 | Formwork | 12d | 2027-01-04 | 2027-01-15 | 4814SS+2d |  | Zenith | 8683704 |
| 4817 | 36900.37000.37100.37700.38600.44200.186700.1006600 | Concreting | 1d | 2027-01-16 | 2027-01-16 | 4815FS+1d, 4816 |  | Zenith | 8683694 |
| 4818 | 36900.37000.37100.37700.38600.44200.186800 | **30th floor roof slab** | 11d | 2027-01-17 | 2027-01-27 |  | start no earlier than 2027-01-17 | Zenith | 8655154 |
| 4819 | 36900.37000.37100.37700.38600.44200.186800.1006700 | Reinforcement | 8d | 2027-01-17 | 2027-01-24 | 4817 |  | Zenith | 8683684 |
| 4820 | 36900.37000.37100.37700.38600.44200.186800.1006800 | Conduiting | 8d | 2027-01-18 | 2027-01-25 | 4819SS+1d |  | Zenith | 8683674 |
| 4821 | 36900.37000.37100.37700.38600.44200.186800.1006900 | Formwork | 8d | 2027-01-19 | 2027-01-26 | 4819SS+2d |  | Zenith | 8683664 |
| 4822 | 36900.37000.37100.37700.38600.44200.186800.1007000 | Concreting | 1d | 2027-01-27 | 2027-01-27 | 4820FS+1d, 4821 |  | Zenith | 8683654 |
| 4823 | 36900.37000.37100.37700.38600.44200.186900 | **31st floor roof slab** | 11d | 2027-01-28 | 2027-02-07 |  | start no earlier than 2027-01-28 | Zenith | 8655164 |
| 4824 | 36900.37000.37100.37700.38600.44200.186900.1007100 | Reinforcement | 8d | 2027-01-28 | 2027-02-04 | 4822 |  | Zenith | 8683644 |
| 4825 | 36900.37000.37100.37700.38600.44200.186900.1007200 | Conduiting | 8d | 2027-01-29 | 2027-02-05 | 4824SS+1d |  | Zenith | 8683634 |
| 4826 | 36900.37000.37100.37700.38600.44200.186900.1007300 | Formwork | 8d | 2027-01-30 | 2027-02-06 | 4824SS+2d |  | Zenith | 8683624 |
| 4827 | 36900.37000.37100.37700.38600.44200.186900.1007400 | Concreting | 1d | 2027-02-07 | 2027-02-07 | 4825FS+1d, 4826 |  | Zenith | 8683614 |

| ID | WBS | Task | Duration | Start | Finish | Predecessors | Constraint | Calendar | Unique_Task_ID |
| --- | --- | --- | --- | --- | --- | --- | --- | --- | --- |
| 4828 | 36900.37000.37100.37700.38600.44200.187000 | **32nd floor roof slab** | 11d | 2027-02-08 | 2027-02-18 |  | start no earlier than 2027-02-08 | Zenith | 8655174 |
| 4829 | 36900.37000.37100.37700.38600.44200.187000.1007500 | Reinforcement | 8d | 2027-02-08 | 2027-02-15 | 4827 |  | Zenith | 8683604 |
| 4830 | 36900.37000.37100.37700.38600.44200.187000.1007600 | Conduiting | 8d | 2027-02-09 | 2027-02-16 | 4829SS+1d |  | Zenith | 8683594 |
| 4831 | 36900.37000.37100.37700.38600.44200.187000.1007700 | Formwork | 8d | 2027-02-10 | 2027-02-17 | 4829SS+2d |  | Zenith | 8683584 |
| 4832 | 36900.37000.37100.37700.38600.44200.187000.1007800 | Concreting | 1d | 2027-02-18 | 2027-02-18 | 4830FS+1d, 4831 |  | Zenith | 8683574 |
| 4833 | 36900.37000.37100.37700.38600.44200.187100 | **33rd floor roof slab** | 11d | 2027-02-19 | 2027-03-01 |  | start no earlier than 2027-02-19 | Zenith | 8655184 |
| 4834 | 36900.37000.37100.37700.38600.44200.187100.1007900 | Reinforcement | 8d | 2027-02-19 | 2027-02-26 | 4832 |  | Zenith | 8683564 |
| 4835 | 36900.37000.37100.37700.38600.44200.187100.1008000 | Conduiting | 8d | 2027-02-20 | 2027-02-27 | 4834SS+1d |  | Zenith | 8683554 |
| 4836 | 36900.37000.37100.37700.38600.44200.187100.1008100 | Formwork | 8d | 2027-02-21 | 2027-02-28 | 4834SS+2d |  | Zenith | 8683544 |
| 4837 | 36900.37000.37100.37700.38600.44200.187100.1008200 | Concreting | 1d | 2027-03-01 | 2027-03-01 | 4835FS+1d, 4836 |  | Zenith | 8683534 |
| 4838 | 36900.37000.37100.37700.38600.44200.187200 | **34th floor roof slab** | 11d | 2027-03-02 | 2027-03-12 |  | start no earlier than 2027-03-02 | Zenith | 8655194 |
| 4839 | 36900.37000.37100.37700.38600.44200.187200.1008300 | Reinforcement | 8d | 2027-03-02 | 2027-03-09 | 4837 |  | Zenith | 8683524 |
| 4840 | 36900.37000.37100.37700.38600.44200.187200.1008400 | Conduiting | 8d | 2027-03-03 | 2027-03-10 | 4839SS+1d |  | Zenith | 8683514 |
| 4841 | 36900.37000.37100.37700.38600.44200.187200.1008500 | Formwork | 8d | 2027-03-04 | 2027-03-11 | 4839SS+2d |  | Zenith | 8683504 |
| 4842 | 36900.37000.37100.37700.38600.44200.187200.1008600 | Concreting | 1d | 2027-03-12 | 2027-03-12 | 4840FS+1d, 4841 |  | Zenith | 8683494 |
| 4843 | 36900.37000.37100.37700.38600.44200.187300 | **35th floor roof slab** | 11d | 2027-03-13 | 2027-03-23 |  | start no earlier than 2027-03-13 | Zenith | 8655204 |
| 4844 | 36900.37000.37100.37700.38600.44200.187300.1008700 | Reinforcement | 8d | 2027-03-13 | 2027-03-20 | 4842 |  | Zenith | 8683484 |
| 4845 | 36900.37000.37100.37700.38600.44200.187300.1008800 | Conduiting | 8d | 2027-03-14 | 2027-03-21 | 4844SS+1d |  | Zenith | 8683474 |
| 4846 | 36900.37000.37100.37700.38600.44200.187300.1008900 | Formwork | 8d | 2027-03-15 | 2027-03-22 | 4844SS+2d |  | Zenith | 8683464 |
| 4847 | 36900.37000.37100.37700.38600.44200.187300.1009000 | Concreting | 1d | 2027-03-23 | 2027-03-23 | 4845FS+1d, 4846 |  | Zenith | 8683454 |
| 4848 | 36900.37000.37100.37700.38600.44200.187400 | **Terrace floor slab** | 15d | 2027-03-24 | 2027-04-07 |  | start no earlier than 2027-03-24 | Zenith | 8655214 |
| 4849 | 36900.37000.37100.37700.38600.44200.187400.1009100 | Reinforcement | 11d | 2027-03-24 | 2027-04-03 | 4847 |  | Zenith | 8683444 |
| 4850 | 36900.37000.37100.37700.38600.44200.187400.1009200 | Conduiting | 11d | 2027-03-25 | 2027-04-04 | 4849SS+1d |  | Zenith | 8683434 |
| 4851 | 36900.37000.37100.37700.38600.44200.187400.1009300 | Formwork | 11d | 2027-03-26 | 2027-04-05 | 4849SS+2d |  | Zenith | 8683424 |
| 4852 | 36900.37000.37100.37700.38600.44200.187400.1009400 | Concreting | 2d | 2027-04-06 | 2027-04-07 | 4850FS+1d, 4851 |  | Zenith | 8683414 |

| ID | WBS | Task | Duration | Start | Finish | Predecessors | Constraint | Calendar | Unique_Task_ID |
| --- | --- | --- | --- | --- | --- | --- | --- | --- | --- |
| 4853 | 36900.37000.37100.37700.38600.44200.187500 | **OHT, Mumty & Machine Room, Parapet** | 40d | 2027-04-08 | 2027-05-17 |  | start no earlier than 2027-04-08 | Zenith | 8655224 |
| 4854 | 36900.37000.37100.37700.38600.44200.187500.1009500 | Reinforcement | 25d | 2027-04-08 | 2027-05-02 | 4852 |  | Zenith | 8683404 |
| 4855 | 36900.37000.37100.37700.38600.44200.187500.1009600 | Flanges fixing & Conduiting | 15d | 2027-04-09 | 2027-04-23 | 4854SS+1d |  | Zenith | 8683394 |
| 4856 | 36900.37000.37100.37700.38600.44200.187500.1009700 | Formwork | 30d | 2027-04-14 | 2027-05-13 | 4854SS+6d |  | Zenith | 8683384 |
| 4857 | 36900.37000.37100.37700.38600.44200.187500.1009800 | Concreting | 4d | 2027-05-14 | 2027-05-17 | 4855FS+5d, 4856 |  | Zenith | 8683374 |
| 4858 | 36900.37000.37100.37700.38600.46700 | **Post Pour Activities** | 396.25d | 2026-03-05 | 2027-05-20 |  | start no earlier than 2026-03-05 | Zenith | 8648014 |
| 4859 | 36900.37000.37100.37700.38600.46700.832600 | 1st Floor | 7d | 2026-03-05 | 2026-03-11 | 4692 |  | Zenith | 8723254 |
| 4860 | 36900.37000.37100.37700.38600.46700.832700 | 2nd Floor | 7d | 2026-03-14 | 2026-03-21 | 4859FS+0.25d, 4697FS+0.25d |  | Zenith | 8723244 |
| 4861 | 36900.37000.37100.37700.38600.46700.832800 | 3rd Floor | 7d | 2026-03-23 | 2026-03-30 | 4860FS+0.25d, 4702FS+0.25d |  | Zenith | 8723234 |
| 4862 | 36900.37000.37100.37700.38600.46700.832900 | 4th Floor | 7d | 2026-04-01 | 2026-04-08 | 4861FS+0.25d, 4707FS+0.25d |  | Zenith | 8723224 |
| 4863 | 36900.37000.37100.37700.38600.46700.833000 | 5th Floor | 7d | 2026-04-10 | 2026-04-17 | 4862FS+0.25d, 4712FS+0.25d |  | Zenith | 8723214 |
| 4864 | 36900.37000.37100.37700.38600.46700.833100 | 6th Floor | 7d | 2026-04-19 | 2026-04-26 | 4863FS+0.25d, 4717FS+0.25d |  | Zenith | 8723204 |
| 4865 | 36900.37000.37100.37700.38600.46700.833200 | 7th Floor | 7d | 2026-04-30 | 2026-05-07 | 4864FS+0.25d, 4722FS+0.25d |  | Zenith | 8723194 |
| 4866 | 36900.37000.37100.37700.38600.46700.833300 | 8th Floor | 7d | 2026-05-11 | 2026-05-18 | 4865FS+0.25d, 4727FS+0.25d |  | Zenith | 8723184 |
| 4867 | 36900.37000.37100.37700.38600.46700.833400 | 9th Floor | 7d | 2026-05-22 | 2026-05-29 | 4866FS+0.25d, 4732FS+0.25d |  | Zenith | 8723174 |
| 4868 | 36900.37000.37100.37700.38600.46700.833500 | 10th Floor | 7d | 2026-06-02 | 2026-06-09 | 4867FS+0.25d, 4737FS+0.25d |  | Zenith | 8723164 |
| 4869 | 36900.37000.37100.37700.38600.46700.833600 | 11th Floor | 7d | 2026-06-17 | 2026-06-24 | 4868FS+0.25d, 4742FS+0.25d |  | Zenith | 8723154 |
| 4870 | 36900.37000.37100.37700.38600.46700.833700 | 12th Floor | 7d | 2026-06-28 | 2026-07-05 | 4869FS+0.25d, 4747FS+0.25d |  | Zenith | 8723144 |
| 4871 | 36900.37000.37100.37700.38600.46700.833800 | 13th Floor | 7d | 2026-07-09 | 2026-07-16 | 4870FS+0.25d, 4752FS+0.25d |  | Zenith | 8723134 |
| 4872 | 36900.37000.37100.37700.38600.46700.833900 | 14th Floor | 7d | 2026-07-20 | 2026-07-27 | 4871FS+0.25d, 4757FS+0.25d |  | Zenith | 8723124 |
| 4873 | 36900.37000.37100.37700.38600.46700.834000 | 15th Floor | 7d | 2026-07-31 | 2026-08-07 | 4872FS+0.25d, 4762FS+0.25d |  | Zenith | 8723114 |
| 4874 | 36900.37000.37100.37700.38600.46700.834100 | 16th Floor | 7d | 2026-08-11 | 2026-08-18 | 4873FS+0.25d, 4767FS+0.25d |  | Zenith | 8723104 |
| 4875 | 36900.37000.37100.37700.38600.46700.834200 | 17th Floor | 7d | 2026-08-22 | 2026-08-29 | 4874FS+0.25d, 4772FS+0.25d |  | Zenith | 8723094 |
| 4876 | 36900.37000.37100.37700.38600.46700.834300 | 18th Floor | 7d | 2026-09-02 | 2026-09-09 | 4875FS+0.25d, 4777FS+0.25d |  | Zenith | 8723084 |
| 4877 | 36900.37000.37100.37700.38600.46700.834400 | 19th Floor | 7d | 2026-09-13 | 2026-09-20 | 4876FS+0.25d, 4782FS+0.25d |  | Zenith | 8723074 |
| 4878 | 36900.37000.37100.37700.38600.46700.834500 | 20th Floor | 7d | 2026-09-24 | 2026-10-01 | 4877FS+0.25d, 4787FS+0.25d |  | Zenith | 8723064 |
| 4879 | 36900.37000.37100.37700.38600.46700.834600 | 21st Floor | 7d | 2026-10-05 | 2026-10-12 | 4878FS+0.25d, 4792FS+0.25d |  | Zenith | 8723054 |
| 4880 | 36900.37000.37100.37700.38600.46700.834700 | 22nd Floor | 7d | 2026-10-16 | 2026-10-23 | 4879FS+0.25d, 4797FS+0.25d |  | Zenith | 8723044 |
| 4881 | 36900.37000.37100.37700.38600.46700.834800 | 23rd Floor | 7d | 2026-10-27 | 2026-12-18 | 4880FS+0.25d, 4802FS+0.25d |  | Zenith | 8723034 |
| 4882 | 36900.37000.37100.37700.38600.46700.834900 | 24th Floor | 7d | 2026-12-22 | 2026-12-29 | 4881FS+0.25d, 4807FS+0.25d |  | Zenith | 8723024 |
| 4883 | 36900.37000.37100.37700.38600.46700.835000 | 25th Floor | 7d | 2027-01-02 | 2027-01-09 | 4882FS+0.25d, 4812FS+0.25d |  | Zenith | 8723014 |
| 4884 | 36900.37000.37100.37700.38600.46700.835100 | 26th Floor | 7d | 2027-01-17 | 2027-01-24 | 4883FS+0.25d, 4817FS+0.25d |  | Zenith | 8723004 |
| 4885 | 36900.37000.37100.37700.38600.46700.835200 | 27th Floor | 7d | 2027-01-28 | 2027-02-04 | 4884FS+0.25d, 4822FS+0.25d |  | Zenith | 8722994 |
| 4886 | 36900.37000.37100.37700.38600.46700.835300 | 28th Floor | 7d | 2027-02-08 | 2027-02-15 | 4885FS+0.25d, 4827FS+0.25d |  | Zenith | 8722984 |
| 4887 | 36900.37000.37100.37700.38600.46700.835400 | 29th Floor | 7d | 2027-02-19 | 2027-02-26 | 4886FS+0.25d, 4832FS+0.25d |  | Zenith | 8722974 |
| 4888 | 36900.37000.37100.37700.38600.46700.835500 | 30th Floor | 7d | 2027-03-02 | 2027-03-09 | 4887FS+0.25d, 4837FS+0.25d |  | Zenith | 8722964 |
| 4889 | 36900.37000.37100.37700.38600.46700.835600 | 31st Floor | 7d | 2027-03-13 | 2027-03-20 | 4888FS+0.25d, 4842FS+0.25d |  | Zenith | 8722954 |
| 4890 | 36900.37000.37100.37700.38600.46700.835700 | 32nd Flood | 7d | 2027-03-24 | 2027-03-31 | 4889FS+0.25d, 4847FS+0.25d |  | Zenith | 8722944 |
| 4891 | 36900.37000.37100.37700.38600.46700.835800 | 33rd Floor | 7d | 2027-04-08 | 2027-04-15 | 4890FS+0.25d, 4852FS+0.25d |  | Zenith | 8722934 |
| 4892 | 36900.37000.37100.37700.38600.46700.835900 | 34th Floor | 7d | 2027-04-15 | 2027-04-22 | 4891 |  | Zenith | 8722924 |
| 4893 | 36900.37000.37100.37700.38600.46700.836000 | 35th Floor | 7d | 2027-04-22 | 2027-04-29 | 4892 |  | Zenith | 8722914 |
| 4894 | 36900.37000.37100.37700.38600.46700.836100 | 36th Floor | 7d | 2027-04-29 | 2027-05-06 | 4893 |  | Zenith | 8722904 |
| 4895 | 36900.37000.37100.37700.38600.46700.836200 | Terrace | 7d | 2027-05-06 | 2027-05-13 | 4894 |  | Zenith | 8722894 |
| 4896 | 36900.37000.37100.37700.38600.46700.836300 | Mumty & Machine Room | 7d | 2027-05-13 | 2027-05-20 | 4895 |  | Zenith | 8722884 |

| ID | WBS | Task | Duration | Start | Finish | Predecessors | Constraint | Calendar | Unique_Task_ID |
| --- | --- | --- | --- | --- | --- | --- | --- | --- | --- |
| 4897 | 36900.37000.37100.37700.38600.40100 | **Finishing work** | 582.25d | 2026-03-12 | 2028-01-13 |  | start no earlier than 2026-03-12 | Zenith | 8647734 |
| 4898 | 36900.37000.37100.37700.38600.40100.41200 | **Flat finishing** | 572.25d | 2026-03-12 | 2028-01-03 |  | start no earlier than 2026-03-12 | Zenith | 8647824 |
| 4899 | 36900.37000.37100.37700.38600.40100.41200.99500 | **1st Floor roof** | 79d | 2026-03-12 | 2026-05-29 |  | start no earlier than 2026-03-12 | Zenith | 8650134 |
| 4900 | 36900.37000.37100.37700.38600.40100.41200.99500.1547200 | Block Work | 6d | 2026-03-12 | 2026-03-17 | 4859 |  | Zenith | 8704154 |
| 4901 | 36900.37000.37100.37700.38600.40100.41200.99500.1547300 | Fire sprinkler pipe fixing | 5d | 2026-03-18 | 2026-03-22 | 4900 |  | Zenith | 8704164 |
| 4902 | 36900.37000.37100.37700.38600.40100.41200.99500.1547400 | Internal Plumbing Works | 5d | 2026-03-18 | 2026-03-22 | 4900 |  | Zenith | 8704174 |
| 4903 | 36900.37000.37100.37700.38600.40100.41200.99500.1547500 | Waterproofing | 5d | 2026-03-23 | 2026-03-27 | 4902 |  | Zenith | 8704184 |
| 4904 | 36900.37000.37100.37700.38600.40100.41200.99500.1547600 | Internal Plaster | 9d | 2026-03-24 | 2026-04-01 | 4902, 4903FF+5d |  | Zenith | 8704194 |
| 4905 | 36900.37000.37100.37700.38600.40100.41200.99500.1547700 | IPS flooring work | 7d | 2026-04-02 | 2026-04-08 | 4904 |  | Zenith | 8704204 |
| 4906 | 36900.37000.37100.37700.38600.40100.41200.99500.1547800 | Toilet dado work | 6d | 2026-04-02 | 2026-04-07 | 4903, 4904 |  | Zenith | 8704214 |
| 4907 | 36900.37000.37100.37700.38600.40100.41200.99500.1547900 | Toilet flooring work | 7d | 2026-04-08 | 2026-04-14 | 4906 |  | Zenith | 8704224 |
| 4908 | 36900.37000.37100.37700.38600.40100.41200.99500.1548000 | False Cieling panel fixing | 7d | 2026-04-15 | 2026-04-21 | 4907 |  | Zenith | 8704234 |
| 4909 | 36900.37000.37100.37700.38600.40100.41200.99500.1548100 | Living dinning flooring | 7d | 2026-04-15 | 2026-04-21 | 4907 |  | Zenith | 8704244 |
| 4910 | 36900.37000.37100.37700.38600.40100.41200.99500.1548200 | Putty primer coat | 8d | 2026-04-22 | 2026-04-29 | 4909 |  | Zenith | 8704254 |
| 4911 | 36900.37000.37100.37700.38600.40100.41200.99500.1548300 | Aluminium door-window fixing | 12d | 2026-04-22 | 2026-05-03 | 4905, 4909 |  | Zenith | 8704264 |
| 4912 | 36900.37000.37100.37700.38600.40100.41200.99500.1548400 | Door shutter fixing (Pre Hung) | 8d | 2026-04-30 | 2026-05-07 | 4910 |  | Zenith | 8704274 |
| 4913 | 36900.37000.37100.37700.38600.40100.41200.99500.1548500 | Electrical wiring work | 10d | 2026-05-08 | 2026-05-17 | 4912 |  | Zenith | 8704284 |
| 4914 | 36900.37000.37100.37700.38600.40100.41200.99500.1548600 | Painting 1st coat | 12d | 2026-05-18 | 2026-05-29 | 4913 |  | Zenith | 8704294 |
| 4915 | 36900.37000.37100.37700.38600.40100.41200.99600 | **2nd floor roof** | 81.75d | 2026-03-21 | 2026-06-10 |  | start no earlier than 2026-03-21 | Zenith | 8650144 |
| 4916 | 36900.37000.37100.37700.38600.40100.41200.99600.1548700 | Block Work | 6d | 2026-03-21 | 2026-03-27 | 4860, 4900 |  | Zenith | 8704304 |
| 4917 | 36900.37000.37100.37700.38600.40100.41200.99600.1548800 | Fire sprinkler pipe fixing | 5d | 2026-03-27 | 2026-04-01 | 4901, 4916 |  | Zenith | 8704314 |
| 4918 | 36900.37000.37100.37700.38600.40100.41200.99600.1548900 | Internal Plumbing Works | 5d | 2026-03-27 | 2026-04-01 | 4902, 4916 |  | Zenith | 8704324 |
| 4919 | 36900.37000.37100.37700.38600.40100.41200.99600.1549000 | Waterproofing | 5d | 2026-04-01 | 2026-04-06 | 4903, 4918 |  | Zenith | 8704334 |
| 4920 | 36900.37000.37100.37700.38600.40100.41200.99600.1549100 | Internal Plaster | 9d | 2026-04-02 | 2026-04-11 | 4904, 4918, 4919FF+5d |  | Zenith | 8704344 |
| 4921 | 36900.37000.37100.37700.38600.40100.41200.99600.1549200 | IPS flooring work | 7d | 2026-04-11 | 2026-04-18 | 4905, 4920 |  | Zenith | 8704354 |
| 4922 | 36900.37000.37100.37700.38600.40100.41200.99600.1549300 | Toilet dado work | 6d | 2026-04-11 | 2026-04-17 | 4906, 4919, 4920 |  | Zenith | 8704364 |
| 4923 | 36900.37000.37100.37700.38600.40100.41200.99600.1549400 | Toilet flooring work | 7d | 2026-04-17 | 2026-04-24 | 4907, 4922 |  | Zenith | 8704374 |
| 4924 | 36900.37000.37100.37700.38600.40100.41200.99600.1549500 | False Cieling panel fixing | 7d | 2026-04-24 | 2026-05-01 | 4908, 4923 |  | Zenith | 8704384 |
| 4925 | 36900.37000.37100.37700.38600.40100.41200.99600.1549600 | Living dinning flooring | 7d | 2026-04-24 | 2026-05-01 | 4909, 4923 |  | Zenith | 8704394 |
| 4926 | 36900.37000.37100.37700.38600.40100.41200.99600.1549700 | Putty primer coat | 8d | 2026-05-01 | 2026-05-09 | 4910, 4925 |  | Zenith | 8704404 |
| 4927 | 36900.37000.37100.37700.38600.40100.41200.99600.1549800 | Aluminium door-window fixing | 12d | 2026-05-04 | 2026-05-15 | 4911, 4921, 4925 |  | Zenith | 8704414 |
| 4928 | 36900.37000.37100.37700.38600.40100.41200.99600.1549900 | Door shutter fixing (Pre Hung) | 8d | 2026-05-09 | 2026-05-17 | 4912, 4926 |  | Zenith | 8704424 |
| 4929 | 36900.37000.37100.37700.38600.40100.41200.99600.1550000 | Electrical wiring work | 10d | 2026-05-18 | 2026-05-27 | 4913, 4928 |  | Zenith | 8704434 |
| 4930 | 36900.37000.37100.37700.38600.40100.41200.99600.1550100 | Painting 1st coat | 12d | 2026-05-30 | 2026-06-10 | 4914, 4929 |  | Zenith | 8704444 |

| ID | WBS | Task | Duration | Start | Finish | Predecessors | Constraint | Calendar | Unique_Task_ID |
| --- | --- | --- | --- | --- | --- | --- | --- | --- | --- |
| 4931 | 36900.37000.37100.37700.38600.40100.41200.99700 | **3rd floor roof** | 84.75d | 2026-03-30 | 2026-06-22 |  | start no earlier than 2026-03-30 | Zenith | 8650154 |
| 4932 | 36900.37000.37100.37700.38600.40100.41200.99700.1550200 | Block Work | 6d | 2026-03-30 | 2026-04-05 | 4861, 4916 |  | Zenith | 8704454 |
| 4933 | 36900.37000.37100.37700.38600.40100.41200.99700.1550300 | Fire sprinkler pipe fixing | 5d | 2026-04-05 | 2026-04-10 | 4917, 4932 |  | Zenith | 8704464 |
| 4934 | 36900.37000.37100.37700.38600.40100.41200.99700.1550400 | Internal Plumbing Works | 5d | 2026-04-05 | 2026-04-10 | 4918, 4932 |  | Zenith | 8704474 |
| 4935 | 36900.37000.37100.37700.38600.40100.41200.99700.1550500 | Waterproofing | 5d | 2026-04-10 | 2026-04-15 | 4919, 4934 |  | Zenith | 8704484 |
| 4936 | 36900.37000.37100.37700.38600.40100.41200.99700.1550600 | Internal Plaster | 9d | 2026-04-11 | 2026-04-20 | 4920, 4934, 4935FF+5d |  | Zenith | 8704494 |
| 4937 | 36900.37000.37100.37700.38600.40100.41200.99700.1550700 | IPS flooring work | 7d | 2026-04-20 | 2026-04-27 | 4921, 4936 |  | Zenith | 8704504 |
| 4938 | 36900.37000.37100.37700.38600.40100.41200.99700.1550800 | Toilet dado work | 6d | 2026-04-20 | 2026-04-26 | 4922, 4935, 4936 |  | Zenith | 8704514 |
| 4939 | 36900.37000.37100.37700.38600.40100.41200.99700.1550900 | Toilet flooring work | 7d | 2026-04-26 | 2026-05-03 | 4923, 4938 |  | Zenith | 8704524 |
| 4940 | 36900.37000.37100.37700.38600.40100.41200.99700.1551000 | False Cieling panel fixing | 7d | 2026-05-03 | 2026-05-10 | 4924, 4939 |  | Zenith | 8704534 |
| 4941 | 36900.37000.37100.37700.38600.40100.41200.99700.1551100 | Living dinning flooring | 7d | 2026-05-03 | 2026-05-10 | 4925, 4939 |  | Zenith | 8704544 |
| 4942 | 36900.37000.37100.37700.38600.40100.41200.99700.1551200 | Putty primer coat | 8d | 2026-05-10 | 2026-05-18 | 4926, 4941 |  | Zenith | 8704554 |
| 4943 | 36900.37000.37100.37700.38600.40100.41200.99700.1551300 | Aluminium door-window fixing | 12d | 2026-05-16 | 2026-05-27 | 4927, 4937, 4941 |  | Zenith | 8704564 |
| 4944 | 36900.37000.37100.37700.38600.40100.41200.99700.1551400 | Door shutter fixing (Pre Hung) | 8d | 2026-05-18 | 2026-05-26 | 4928, 4942 |  | Zenith | 8704574 |
| 4945 | 36900.37000.37100.37700.38600.40100.41200.99700.1551500 | Electrical wiring work | 10d | 2026-05-28 | 2026-06-06 | 4929, 4944 |  | Zenith | 8704584 |
| 4946 | 36900.37000.37100.37700.38600.40100.41200.99700.1551600 | Painting 1st coat | 12d | 2026-06-11 | 2026-06-22 | 4930, 4945 |  | Zenith | 8704594 |
| 4947 | 36900.37000.37100.37700.38600.40100.41200.99800 | **4th floor roof** | 87.75d | 2026-04-08 | 2026-07-04 |  | start no earlier than 2026-04-08 | Zenith | 8650164 |
| 4948 | 36900.37000.37100.37700.38600.40100.41200.99800.1551700 | Block Work | 6d | 2026-04-08 | 2026-04-14 | 4862, 4932 |  | Zenith | 8704604 |
| 4949 | 36900.37000.37100.37700.38600.40100.41200.99800.1551800 | Fire sprinkler pipe fixing | 5d | 2026-04-14 | 2026-04-19 | 4933, 4948 |  | Zenith | 8704614 |
| 4950 | 36900.37000.37100.37700.38600.40100.41200.99800.1551900 | Internal Plumbing Works | 5d | 2026-04-14 | 2026-04-19 | 4934, 4948 |  | Zenith | 8704624 |
| 4951 | 36900.37000.37100.37700.38600.40100.41200.99800.1552000 | Waterproofing | 5d | 2026-04-19 | 2026-04-24 | 4935, 4950 |  | Zenith | 8704634 |
| 4952 | 36900.37000.37100.37700.38600.40100.41200.99800.1552100 | Internal Plaster | 9d | 2026-04-20 | 2026-04-29 | 4936, 4950, 4951FF+5d |  | Zenith | 8704644 |
| 4953 | 36900.37000.37100.37700.38600.40100.41200.99800.1552200 | IPS flooring work | 7d | 2026-04-29 | 2026-05-06 | 4937, 4952 |  | Zenith | 8704654 |
| 4954 | 36900.37000.37100.37700.38600.40100.41200.99800.1552300 | Toilet dado work | 6d | 2026-04-29 | 2026-05-05 | 4938, 4951, 4952 |  | Zenith | 8704664 |
| 4955 | 36900.37000.37100.37700.38600.40100.41200.99800.1552400 | Toilet flooring work | 7d | 2026-05-05 | 2026-05-12 | 4939, 4954 |  | Zenith | 8704674 |
| 4956 | 36900.37000.37100.37700.38600.40100.41200.99800.1552500 | False Cieling panel fixing | 7d | 2026-05-12 | 2026-05-19 | 4940, 4955 |  | Zenith | 8704684 |
| 4957 | 36900.37000.37100.37700.38600.40100.41200.99800.1552600 | Living dinning flooring | 7d | 2026-05-12 | 2026-05-19 | 4941, 4955 |  | Zenith | 8704694 |
| 4958 | 36900.37000.37100.37700.38600.40100.41200.99800.1552700 | Putty primer coat | 8d | 2026-05-19 | 2026-05-27 | 4942, 4957 |  | Zenith | 8704704 |
| 4959 | 36900.37000.37100.37700.38600.40100.41200.99800.1552800 | Aluminium door-window fixing | 12d | 2026-05-28 | 2026-06-08 | 4943, 4953, 4957 |  | Zenith | 8704714 |
| 4960 | 36900.37000.37100.37700.38600.40100.41200.99800.1552900 | Door shutter fixing (Pre Hung) | 8d | 2026-05-27 | 2026-06-04 | 4944, 4958 |  | Zenith | 8704724 |
| 4961 | 36900.37000.37100.37700.38600.40100.41200.99800.1553000 | Electrical wiring work | 10d | 2026-06-07 | 2026-06-16 | 4945, 4960 |  | Zenith | 8704734 |
| 4962 | 36900.37000.37100.37700.38600.40100.41200.99800.1553100 | Painting 1st coat | 12d | 2026-06-23 | 2026-07-04 | 4946, 4961 |  | Zenith | 8704744 |

| ID | WBS | Task | Duration | Start | Finish | Predecessors | Constraint | Calendar | Unique_Task_ID |
| --- | --- | --- | --- | --- | --- | --- | --- | --- | --- |
| 4963 | 36900.37000.37100.37700.38600.40100.41200.99900 | **5th floor roof** | 90.75d | 2026-04-17 | 2026-07-16 |  | start no earlier than 2026-04-17 | Zenith | 8650174 |
| 4964 | 36900.37000.37100.37700.38600.40100.41200.99900.1553200 | Block Work | 6d | 2026-04-17 | 2026-04-23 | 4863, 4948 |  | Zenith | 8704754 |
| 4965 | 36900.37000.37100.37700.38600.40100.41200.99900.1553300 | Fire sprinkler pipe fixing | 5d | 2026-04-23 | 2026-04-28 | 4949, 4964 |  | Zenith | 8704764 |
| 4966 | 36900.37000.37100.37700.38600.40100.41200.99900.1553400 | Internal Plumbing Works | 5d | 2026-04-23 | 2026-04-28 | 4950, 4964 |  | Zenith | 8704774 |
| 4967 | 36900.37000.37100.37700.38600.40100.41200.99900.1553500 | Waterproofing | 5d | 2026-04-28 | 2026-05-03 | 4951, 4966 |  | Zenith | 8704784 |
| 4968 | 36900.37000.37100.37700.38600.40100.41200.99900.1553600 | Internal Plaster | 9d | 2026-04-29 | 2026-05-08 | 4952, 4966, 4967FF+5d |  | Zenith | 8704794 |
| 4969 | 36900.37000.37100.37700.38600.40100.41200.99900.1553700 | IPS flooring work | 7d | 2026-05-08 | 2026-05-15 | 4953, 4968 |  | Zenith | 8704804 |
| 4970 | 36900.37000.37100.37700.38600.40100.41200.99900.1553800 | Toilet dado work | 6d | 2026-05-08 | 2026-05-14 | 4954, 4967, 4968 |  | Zenith | 8704814 |
| 4971 | 36900.37000.37100.37700.38600.40100.41200.99900.1553900 | Toilet flooring work | 7d | 2026-05-14 | 2026-05-21 | 4955, 4970 |  | Zenith | 8704824 |
| 4972 | 36900.37000.37100.37700.38600.40100.41200.99900.1554000 | False Cieling panel fixing | 7d | 2026-05-21 | 2026-05-28 | 4956, 4971 |  | Zenith | 8704834 |
| 4973 | 36900.37000.37100.37700.38600.40100.41200.99900.1554100 | Living dinning flooring | 7d | 2026-05-21 | 2026-05-28 | 4957, 4971 |  | Zenith | 8704844 |
| 4974 | 36900.37000.37100.37700.38600.40100.41200.99900.1554200 | Putty primer coat | 8d | 2026-05-28 | 2026-06-05 | 4958, 4973 |  | Zenith | 8704854 |
| 4975 | 36900.37000.37100.37700.38600.40100.41200.99900.1554300 | Aluminium door-window fixing | 12d | 2026-06-09 | 2026-06-20 | 4959, 4969, 4973 |  | Zenith | 8704864 |
| 4976 | 36900.37000.37100.37700.38600.40100.41200.99900.1554400 | Door shutter fixing (Pre Hung) | 8d | 2026-06-05 | 2026-06-13 | 4960, 4974 |  | Zenith | 8704874 |
| 4977 | 36900.37000.37100.37700.38600.40100.41200.99900.1554500 | Electrical wiring work | 10d | 2026-06-17 | 2026-06-26 | 4961, 4976 |  | Zenith | 8704884 |
| 4978 | 36900.37000.37100.37700.38600.40100.41200.99900.1554600 | Painting 1st coat | 12d | 2026-07-05 | 2026-07-16 | 4962, 4977 |  | Zenith | 8704894 |
| 4979 | 36900.37000.37100.37700.38600.40100.41200.100000 | **6th floor roof** | 93.75d | 2026-04-26 | 2026-07-28 |  | start no earlier than 2026-04-26 | Zenith | 8650184 |
| 4980 | 36900.37000.37100.37700.38600.40100.41200.100000.1554700 | Block Work | 6d | 2026-04-26 | 2026-05-02 | 4864, 4964 |  | Zenith | 8704904 |
| 4981 | 36900.37000.37100.37700.38600.40100.41200.100000.1554800 | Fire sprinkler pipe fixing | 5d | 2026-05-02 | 2026-05-07 | 4965, 4980 |  | Zenith | 8704914 |
| 4982 | 36900.37000.37100.37700.38600.40100.41200.100000.1554900 | Internal Plumbing Works | 5d | 2026-05-02 | 2026-05-07 | 4966, 4980 |  | Zenith | 8704924 |
| 4983 | 36900.37000.37100.37700.38600.40100.41200.100000.1555000 | Waterproofing | 5d | 2026-05-07 | 2026-05-12 | 4967, 4982 |  | Zenith | 8704934 |
| 4984 | 36900.37000.37100.37700.38600.40100.41200.100000.1555100 | Internal Plaster | 9d | 2026-05-08 | 2026-05-17 | 4968, 4982, 4983FF+5d |  | Zenith | 8704944 |
| 4985 | 36900.37000.37100.37700.38600.40100.41200.100000.1555200 | IPS flooring work | 7d | 2026-05-17 | 2026-05-24 | 4969, 4984 |  | Zenith | 8704954 |
| 4986 | 36900.37000.37100.37700.38600.40100.41200.100000.1555300 | Toilet dado work | 6d | 2026-05-17 | 2026-05-23 | 4970, 4983, 4984 |  | Zenith | 8704964 |
| 4987 | 36900.37000.37100.37700.38600.40100.41200.100000.1555400 | Toilet flooring work | 7d | 2026-05-23 | 2026-05-30 | 4971, 4986 |  | Zenith | 8704974 |
| 4988 | 36900.37000.37100.37700.38600.40100.41200.100000.1555500 | False Cieling panel fixing | 7d | 2026-05-30 | 2026-06-06 | 4972, 4987 |  | Zenith | 8704984 |
| 4989 | 36900.37000.37100.37700.38600.40100.41200.100000.1555600 | Living dinning flooring | 7d | 2026-05-30 | 2026-06-06 | 4973, 4987 |  | Zenith | 8704994 |
| 4990 | 36900.37000.37100.37700.38600.40100.41200.100000.1555700 | Putty primer coat | 8d | 2026-06-06 | 2026-06-14 | 4974, 4989 |  | Zenith | 8705004 |
| 4991 | 36900.37000.37100.37700.38600.40100.41200.100000.1555800 | Aluminium door-window fixing | 12d | 2026-06-21 | 2026-07-02 | 4975, 4985, 4989 |  | Zenith | 8705014 |
| 4992 | 36900.37000.37100.37700.38600.40100.41200.100000.1555900 | Door shutter fixing (Pre Hung) | 8d | 2026-06-14 | 2026-06-22 | 4976, 4990 |  | Zenith | 8705024 |
| 4993 | 36900.37000.37100.37700.38600.40100.41200.100000.1556000 | Electrical wiring work | 10d | 2026-06-27 | 2026-07-06 | 4977, 4992 |  | Zenith | 8705034 |
| 4994 | 36900.37000.37100.37700.38600.40100.41200.100000.1556100 | Painting 1st coat | 12d | 2026-07-17 | 2026-07-28 | 4978, 4993 |  | Zenith | 8705044 |

| ID | WBS | Task | Duration | Start | Finish | Predecessors | Constraint | Calendar | Unique_Task_ID |
| --- | --- | --- | --- | --- | --- | --- | --- | --- | --- |
| 4995 | 36900.37000.37100.37700.38600.40100.41200.100100 | **7th floor roof** | 94.75d | 2026-05-07 | 2026-08-09 |  | start no earlier than 2026-05-07 | Zenith | 8650194 |
| 4996 | 36900.37000.37100.37700.38600.40100.41200.100100.1556200 | Block Work | 6d | 2026-05-07 | 2026-05-13 | 4865, 4980 |  | Zenith | 8705054 |
| 4997 | 36900.37000.37100.37700.38600.40100.41200.100100.1556300 | Fire sprinkler pipe fixing | 5d | 2026-05-13 | 2026-05-18 | 4981, 4996 |  | Zenith | 8705064 |
| 4998 | 36900.37000.37100.37700.38600.40100.41200.100100.1556400 | Internal Plumbing Works | 5d | 2026-05-13 | 2026-05-18 | 4982, 4996 |  | Zenith | 8705074 |
| 4999 | 36900.37000.37100.37700.38600.40100.41200.100100.1556500 | Waterproofing | 5d | 2026-05-18 | 2026-05-23 | 4983, 4998 |  | Zenith | 8705084 |
| 5000 | 36900.37000.37100.37700.38600.40100.41200.100100.1556600 | Internal Plaster | 9d | 2026-05-19 | 2026-05-28 | 4984, 4998, 4999FF+5d |  | Zenith | 8705094 |
| 5001 | 36900.37000.37100.37700.38600.40100.41200.100100.1556700 | IPS flooring work | 7d | 2026-05-28 | 2026-06-04 | 4985, 5000 |  | Zenith | 8705104 |
| 5002 | 36900.37000.37100.37700.38600.40100.41200.100100.1556800 | Toilet dado work | 6d | 2026-05-28 | 2026-06-03 | 4986, 4999, 5000 |  | Zenith | 8705114 |
| 5003 | 36900.37000.37100.37700.38600.40100.41200.100100.1556900 | Toilet flooring work | 7d | 2026-06-03 | 2026-06-10 | 4987, 5002 |  | Zenith | 8705124 |
| 5004 | 36900.37000.37100.37700.38600.40100.41200.100100.1557000 | False Cieling panel fixing | 7d | 2026-06-10 | 2026-06-17 | 4988, 5003 |  | Zenith | 8705134 |
| 5005 | 36900.37000.37100.37700.38600.40100.41200.100100.1557100 | Living dinning flooring | 7d | 2026-06-10 | 2026-06-17 | 4989, 5003 |  | Zenith | 8705144 |
| 5006 | 36900.37000.37100.37700.38600.40100.41200.100100.1557200 | Putty primer coat | 8d | 2026-06-17 | 2026-06-25 | 4990, 5005 |  | Zenith | 8705154 |
| 5007 | 36900.37000.37100.37700.38600.40100.41200.100100.1557300 | Aluminium door-window fixing | 12d | 2026-07-03 | 2026-07-14 | 4991, 5001, 5005 |  | Zenith | 8705164 |
| 5008 | 36900.37000.37100.37700.38600.40100.41200.100100.1557400 | Door shutter fixing (Pre Hung) | 8d | 2026-06-25 | 2026-07-03 | 4992, 5006 |  | Zenith | 8705174 |
| 5009 | 36900.37000.37100.37700.38600.40100.41200.100100.1557500 | Electrical wiring work | 10d | 2026-07-07 | 2026-07-16 | 4993, 5008 |  | Zenith | 8705184 |
| 5010 | 36900.37000.37100.37700.38600.40100.41200.100100.1557600 | Painting 1st coat | 12d | 2026-07-29 | 2026-08-09 | 4994, 5009 |  | Zenith | 8705194 |
| 5011 | 36900.37000.37100.37700.38600.40100.41200.100200 | **8th floor roof** | 95.75d | 2026-05-18 | 2026-08-21 |  | start no earlier than 2026-05-18 | Zenith | 8650204 |
| 5012 | 36900.37000.37100.37700.38600.40100.41200.100200.1557700 | Block Work | 6d | 2026-05-18 | 2026-05-24 | 4866, 4996 |  | Zenith | 8705204 |
| 5013 | 36900.37000.37100.37700.38600.40100.41200.100200.1557800 | Fire sprinkler pipe fixing | 5d | 2026-05-24 | 2026-05-29 | 4997, 5012 |  | Zenith | 8705214 |
| 5014 | 36900.37000.37100.37700.38600.40100.41200.100200.1557900 | Internal Plumbing Works | 5d | 2026-05-24 | 2026-05-29 | 4998, 5012 |  | Zenith | 8705224 |
| 5015 | 36900.37000.37100.37700.38600.40100.41200.100200.1558000 | Waterproofing | 5d | 2026-05-29 | 2026-06-03 | 4999, 5014 |  | Zenith | 8705234 |
| 5016 | 36900.37000.37100.37700.38600.40100.41200.100200.1558100 | Internal Plaster | 9d | 2026-05-30 | 2026-06-08 | 5000, 5014, 5015FF+5d |  | Zenith | 8705244 |
| 5017 | 36900.37000.37100.37700.38600.40100.41200.100200.1558200 | IPS flooring work | 7d | 2026-06-08 | 2026-06-15 | 5001, 5016 |  | Zenith | 8705254 |
| 5018 | 36900.37000.37100.37700.38600.40100.41200.100200.1558300 | Toilet dado work | 6d | 2026-06-08 | 2026-06-14 | 5002, 5015, 5016 |  | Zenith | 8705264 |
| 5019 | 36900.37000.37100.37700.38600.40100.41200.100200.1558400 | Toilet flooring work | 7d | 2026-06-14 | 2026-06-21 | 5003, 5018 |  | Zenith | 8705274 |
| 5020 | 36900.37000.37100.37700.38600.40100.41200.100200.1558500 | False Cieling panel fixing | 7d | 2026-06-21 | 2026-06-28 | 5004, 5019 |  | Zenith | 8705284 |
| 5021 | 36900.37000.37100.37700.38600.40100.41200.100200.1558600 | Living dinning flooring | 7d | 2026-06-21 | 2026-06-28 | 5005, 5019 |  | Zenith | 8705294 |
| 5022 | 36900.37000.37100.37700.38600.40100.41200.100200.1558700 | Putty primer coat | 8d | 2026-06-28 | 2026-07-06 | 5006, 5021 |  | Zenith | 8705304 |
| 5023 | 36900.37000.37100.37700.38600.40100.41200.100200.1558800 | Aluminium door-window fixing | 12d | 2026-07-15 | 2026-07-26 | 5007, 5017, 5021 |  | Zenith | 8705314 |
| 5024 | 36900.37000.37100.37700.38600.40100.41200.100200.1558900 | Door shutter fixing (Pre Hung) | 8d | 2026-07-06 | 2026-07-14 | 5008, 5022 |  | Zenith | 8705324 |
| 5025 | 36900.37000.37100.37700.38600.40100.41200.100200.1559000 | Electrical wiring work | 10d | 2026-07-17 | 2026-07-26 | 5009, 5024 |  | Zenith | 8705334 |
| 5026 | 36900.37000.37100.37700.38600.40100.41200.100200.1559100 | Painting 1st coat | 12d | 2026-08-10 | 2026-08-21 | 5010, 5025 |  | Zenith | 8705344 |

| ID | WBS | Task | Duration | Start | Finish | Predecessors | Constraint | Calendar | Unique_Task_ID |
| --- | --- | --- | --- | --- | --- | --- | --- | --- | --- |
| 5027 | 36900.37000.37100.37700.38600.40100.41200.100300 | **9th floor roof** | 96.75d | 2026-05-29 | 2026-09-02 |  | start no earlier than 2026-05-29 | Zenith | 8650214 |
| 5028 | 36900.37000.37100.37700.38600.40100.41200.100300.1559200 | Block Work | 6d | 2026-05-29 | 2026-06-04 | 4867, 5012 |  | Zenith | 8705354 |
| 5029 | 36900.37000.37100.37700.38600.40100.41200.100300.1559300 | Fire sprinkler pipe fixing | 5d | 2026-06-04 | 2026-06-09 | 5013, 5028 |  | Zenith | 8705364 |
| 5030 | 36900.37000.37100.37700.38600.40100.41200.100300.1559400 | Internal Plumbing Works | 5d | 2026-06-04 | 2026-06-09 | 5014, 5028 |  | Zenith | 8705374 |
| 5031 | 36900.37000.37100.37700.38600.40100.41200.100300.1559500 | Waterproofing | 5d | 2026-06-09 | 2026-06-14 | 5015, 5030 |  | Zenith | 8705384 |
| 5032 | 36900.37000.37100.37700.38600.40100.41200.100300.1559600 | Internal Plaster | 9d | 2026-06-10 | 2026-06-19 | 5016, 5030, 5031FF+5d |  | Zenith | 8705394 |
| 5033 | 36900.37000.37100.37700.38600.40100.41200.100300.1559700 | IPS flooring work | 7d | 2026-06-19 | 2026-06-26 | 5017, 5032 |  | Zenith | 8705404 |
| 5034 | 36900.37000.37100.37700.38600.40100.41200.100300.1559800 | Toilet dado work | 6d | 2026-06-19 | 2026-06-25 | 5018, 5031, 5032 |  | Zenith | 8705414 |
| 5035 | 36900.37000.37100.37700.38600.40100.41200.100300.1559900 | Toilet flooring work | 7d | 2026-06-25 | 2026-07-02 | 5019, 5034 |  | Zenith | 8705424 |
| 5036 | 36900.37000.37100.37700.38600.40100.41200.100300.1560000 | False Cieling panel fixing | 7d | 2026-07-02 | 2026-07-09 | 5020, 5035 |  | Zenith | 8705434 |
| 5037 | 36900.37000.37100.37700.38600.40100.41200.100300.1560100 | Living dinning flooring | 7d | 2026-07-02 | 2026-07-09 | 5021, 5035 |  | Zenith | 8705444 |
| 5038 | 36900.37000.37100.37700.38600.40100.41200.100300.1560200 | Putty primer coat | 8d | 2026-07-09 | 2026-07-17 | 5022, 5037 |  | Zenith | 8705454 |
| 5039 | 36900.37000.37100.37700.38600.40100.41200.100300.1560300 | Aluminium door-window fixing | 12d | 2026-07-27 | 2026-08-07 | 5023, 5033, 5037 |  | Zenith | 8705464 |
| 5040 | 36900.37000.37100.37700.38600.40100.41200.100300.1560400 | Door shutter fixing (Pre Hung) | 8d | 2026-07-17 | 2026-07-25 | 5024, 5038 |  | Zenith | 8705474 |
| 5041 | 36900.37000.37100.37700.38600.40100.41200.100300.1560500 | Electrical wiring work | 10d | 2026-07-27 | 2026-08-05 | 5025, 5040 |  | Zenith | 8705484 |
| 5042 | 36900.37000.37100.37700.38600.40100.41200.100300.1560600 | Painting 1st coat | 12d | 2026-08-22 | 2026-09-02 | 5026, 5041 |  | Zenith | 8705494 |
| 5043 | 36900.37000.37100.37700.38600.40100.41200.100400 | **10th floor roof** | 97.75d | 2026-06-09 | 2026-09-14 |  | start no earlier than 2026-06-09 | Zenith | 8650224 |
| 5044 | 36900.37000.37100.37700.38600.40100.41200.100400.1560700 | Block Work | 6d | 2026-06-09 | 2026-06-15 | 4868, 5028 |  | Zenith | 8705504 |
| 5045 | 36900.37000.37100.37700.38600.40100.41200.100400.1560800 | Fire sprinkler pipe fixing | 5d | 2026-06-15 | 2026-06-20 | 5029, 5044 |  | Zenith | 8705514 |
| 5046 | 36900.37000.37100.37700.38600.40100.41200.100400.1560900 | Internal Plumbing Works | 5d | 2026-06-15 | 2026-06-20 | 5030, 5044 |  | Zenith | 8705524 |
| 5047 | 36900.37000.37100.37700.38600.40100.41200.100400.1561000 | Waterproofing | 5d | 2026-06-20 | 2026-06-25 | 5031, 5046 |  | Zenith | 8705534 |
| 5048 | 36900.37000.37100.37700.38600.40100.41200.100400.1561100 | Internal Plaster | 9d | 2026-06-21 | 2026-06-30 | 5032, 5046, 5047FF+5d |  | Zenith | 8705544 |
| 5049 | 36900.37000.37100.37700.38600.40100.41200.100400.1561200 | IPS flooring work | 7d | 2026-06-30 | 2026-07-07 | 5033, 5048 |  | Zenith | 8705554 |
| 5050 | 36900.37000.37100.37700.38600.40100.41200.100400.1561300 | Toilet dado work | 6d | 2026-06-30 | 2026-07-06 | 5034, 5047, 5048 |  | Zenith | 8705564 |
| 5051 | 36900.37000.37100.37700.38600.40100.41200.100400.1561400 | Toilet flooring work | 7d | 2026-07-06 | 2026-07-13 | 5035, 5050 |  | Zenith | 8705574 |
| 5052 | 36900.37000.37100.37700.38600.40100.41200.100400.1561500 | False Cieling panel fixing | 7d | 2026-07-13 | 2026-07-20 | 5036, 5051 |  | Zenith | 8705584 |
| 5053 | 36900.37000.37100.37700.38600.40100.41200.100400.1561600 | Living dinning flooring | 7d | 2026-07-13 | 2026-07-20 | 5037, 5051 |  | Zenith | 8705594 |
| 5054 | 36900.37000.37100.37700.38600.40100.41200.100400.1561700 | Putty primer coat | 8d | 2026-07-20 | 2026-07-28 | 5038, 5053 |  | Zenith | 8705604 |
| 5055 | 36900.37000.37100.37700.38600.40100.41200.100400.1561800 | Aluminium door-window fixing | 12d | 2026-08-08 | 2026-08-19 | 5039, 5049, 5053 |  | Zenith | 8705614 |
| 5056 | 36900.37000.37100.37700.38600.40100.41200.100400.1561900 | Door shutter fixing (Pre Hung) | 8d | 2026-07-28 | 2026-08-05 | 5040, 5054 |  | Zenith | 8705624 |
| 5057 | 36900.37000.37100.37700.38600.40100.41200.100400.1562000 | Electrical wiring work | 10d | 2026-08-06 | 2026-08-15 | 5041, 5056 |  | Zenith | 8705634 |
| 5058 | 36900.37000.37100.37700.38600.40100.41200.100400.1562100 | Painting 1st coat | 12d | 2026-09-03 | 2026-09-14 | 5042, 5057 |  | Zenith | 8705644 |

| ID | WBS | Task | Duration | Start | Finish | Predecessors | Constraint | Calendar | Unique_Task_ID |
| --- | --- | --- | --- | --- | --- | --- | --- | --- | --- |
| 5059 | 36900.37000.37100.37700.38600.40100.41200.100500 | **11th floor roof** | 94.75d | 2026-06-24 | 2026-09-26 |  | start no earlier than 2026-06-24 | Zenith | 8650234 |
| 5060 | 36900.37000.37100.37700.38600.40100.41200.100500.1562200 | Block Work | 6d | 2026-06-24 | 2026-06-30 | 4869, 5044 |  | Zenith | 8705654 |
| 5061 | 36900.37000.37100.37700.38600.40100.41200.100500.1562300 | Fire sprinkler pipe fixing | 5d | 2026-06-30 | 2026-07-05 | 5045, 5060 |  | Zenith | 8705664 |
| 5062 | 36900.37000.37100.37700.38600.40100.41200.100500.1562400 | Internal Plumbing Works | 5d | 2026-06-30 | 2026-07-05 | 5046, 5060 |  | Zenith | 8705674 |
| 5063 | 36900.37000.37100.37700.38600.40100.41200.100500.1562500 | Waterproofing | 5d | 2026-07-05 | 2026-07-10 | 5047, 5062 |  | Zenith | 8705684 |
| 5064 | 36900.37000.37100.37700.38600.40100.41200.100500.1562600 | Internal Plaster | 9d | 2026-07-06 | 2026-07-15 | 5048, 5062, 5063FF+5d |  | Zenith | 8705694 |
| 5065 | 36900.37000.37100.37700.38600.40100.41200.100500.1562700 | IPS flooring work | 7d | 2026-07-15 | 2026-07-22 | 5049, 5064 |  | Zenith | 8705704 |
| 5066 | 36900.37000.37100.37700.38600.40100.41200.100500.1562800 | Toilet dado work | 6d | 2026-07-15 | 2026-07-21 | 5050, 5063, 5064 |  | Zenith | 8705714 |
| 5067 | 36900.37000.37100.37700.38600.40100.41200.100500.1562900 | Toilet flooring work | 7d | 2026-07-21 | 2026-07-28 | 5051, 5066 |  | Zenith | 8705724 |
| 5068 | 36900.37000.37100.37700.38600.40100.41200.100500.1563000 | False Cieling panel fixing | 7d | 2026-07-28 | 2026-08-04 | 5052, 5067 |  | Zenith | 8705734 |
| 5069 | 36900.37000.37100.37700.38600.40100.41200.100500.1563100 | Living dinning flooring | 7d | 2026-07-28 | 2026-08-04 | 5053, 5067 |  | Zenith | 8705744 |
| 5070 | 36900.37000.37100.37700.38600.40100.41200.100500.1563200 | Putty primer coat | 8d | 2026-08-04 | 2026-08-12 | 5054, 5069 |  | Zenith | 8705754 |
| 5071 | 36900.37000.37100.37700.38600.40100.41200.100500.1563300 | Aluminium door-window fixing | 12d | 2026-08-20 | 2026-08-31 | 5055, 5065, 5069 |  | Zenith | 8705764 |
| 5072 | 36900.37000.37100.37700.38600.40100.41200.100500.1563400 | Door shutter fixing (Pre Hung) | 8d | 2026-08-12 | 2026-08-20 | 5056, 5070 |  | Zenith | 8705774 |
| 5073 | 36900.37000.37100.37700.38600.40100.41200.100500.1563500 | Electrical wiring work | 10d | 2026-08-20 | 2026-08-30 | 5057, 5072 |  | Zenith | 8705784 |
| 5074 | 36900.37000.37100.37700.38600.40100.41200.100500.1563600 | Painting 1st coat | 12d | 2026-09-15 | 2026-09-26 | 5058, 5073 |  | Zenith | 8705794 |
| 5075 | 36900.37000.37100.37700.38600.40100.41200.100600 | **12th floor roof** | 95.75d | 2026-07-05 | 2026-10-08 |  | start no earlier than 2026-07-05 | Zenith | 8650244 |
| 5076 | 36900.37000.37100.37700.38600.40100.41200.100600.1563700 | Block Work | 6d | 2026-07-05 | 2026-07-11 | 4870, 5060 |  | Zenith | 8705804 |
| 5077 | 36900.37000.37100.37700.38600.40100.41200.100600.1563800 | Fire sprinkler pipe fixing | 5d | 2026-07-11 | 2026-07-16 | 5061, 5076 |  | Zenith | 8705814 |
| 5078 | 36900.37000.37100.37700.38600.40100.41200.100600.1563900 | Internal Plumbing Works | 5d | 2026-07-11 | 2026-07-16 | 5062, 5076 |  | Zenith | 8705824 |
| 5079 | 36900.37000.37100.37700.38600.40100.41200.100600.1564000 | Waterproofing | 5d | 2026-07-16 | 2026-07-21 | 5063, 5078 |  | Zenith | 8705834 |
| 5080 | 36900.37000.37100.37700.38600.40100.41200.100600.1564100 | Internal Plaster | 9d | 2026-07-17 | 2026-07-26 | 5064, 5078, 5079FF+5d |  | Zenith | 8705844 |
| 5081 | 36900.37000.37100.37700.38600.40100.41200.100600.1564200 | IPS flooring work | 7d | 2026-07-26 | 2026-08-02 | 5065, 5080 |  | Zenith | 8705854 |
| 5082 | 36900.37000.37100.37700.38600.40100.41200.100600.1564300 | Toilet dado work | 6d | 2026-07-26 | 2026-08-01 | 5066, 5079, 5080 |  | Zenith | 8705864 |
| 5083 | 36900.37000.37100.37700.38600.40100.41200.100600.1564400 | Toilet flooring work | 7d | 2026-08-01 | 2026-08-08 | 5067, 5082 |  | Zenith | 8705874 |
| 5084 | 36900.37000.37100.37700.38600.40100.41200.100600.1564500 | False Cieling panel fixing | 7d | 2026-08-08 | 2026-08-15 | 5068, 5083 |  | Zenith | 8705884 |
| 5085 | 36900.37000.37100.37700.38600.40100.41200.100600.1564600 | Living dinning flooring | 7d | 2026-08-08 | 2026-08-15 | 5069, 5083 |  | Zenith | 8705894 |
| 5086 | 36900.37000.37100.37700.38600.40100.41200.100600.1564700 | Putty primer coat | 8d | 2026-08-15 | 2026-08-23 | 5070, 5085 |  | Zenith | 8705904 |
| 5087 | 36900.37000.37100.37700.38600.40100.41200.100600.1564800 | Aluminium door-window fixing | 12d | 2026-09-01 | 2026-09-12 | 5071, 5081, 5085 |  | Zenith | 8705914 |
| 5088 | 36900.37000.37100.37700.38600.40100.41200.100600.1564900 | Door shutter fixing (Pre Hung) | 8d | 2026-08-23 | 2026-08-31 | 5072, 5086 |  | Zenith | 8705924 |
| 5089 | 36900.37000.37100.37700.38600.40100.41200.100600.1565000 | Electrical wiring work | 10d | 2026-08-31 | 2026-09-10 | 5073, 5088 |  | Zenith | 8705934 |
| 5090 | 36900.37000.37100.37700.38600.40100.41200.100600.1565100 | Painting 1st coat | 12d | 2026-09-27 | 2026-10-08 | 5074, 5089 |  | Zenith | 8705944 |

| ID | WBS | Task | Duration | Start | Finish | Predecessors | Constraint | Calendar | Unique_Task_ID |
| --- | --- | --- | --- | --- | --- | --- | --- | --- | --- |
| 5091 | 36900.37000.37100.37700.38600.40100.41200.100700 | **13th floor roof** | 96.75d | 2026-07-16 | 2026-10-20 |  | start no earlier than 2026-07-16 | Zenith | 8650254 |
| 5092 | 36900.37000.37100.37700.38600.40100.41200.100700.1565200 | Block Work | 6d | 2026-07-16 | 2026-07-22 | 4871, 5076 |  | Zenith | 8705954 |
| 5093 | 36900.37000.37100.37700.38600.40100.41200.100700.1565300 | Fire sprinkler pipe fixing | 5d | 2026-07-22 | 2026-07-27 | 5077, 5092 |  | Zenith | 8705964 |
| 5094 | 36900.37000.37100.37700.38600.40100.41200.100700.1565400 | Internal Plumbing Works | 5d | 2026-07-22 | 2026-07-27 | 5078, 5092 |  | Zenith | 8705974 |
| 5095 | 36900.37000.37100.37700.38600.40100.41200.100700.1565500 | Waterproofing | 5d | 2026-07-27 | 2026-08-01 | 5079, 5094 |  | Zenith | 8705984 |
| 5096 | 36900.37000.37100.37700.38600.40100.41200.100700.1565600 | Internal Plaster | 9d | 2026-07-28 | 2026-08-06 | 5080, 5094, 5095FF+5d |  | Zenith | 8705994 |
| 5097 | 36900.37000.37100.37700.38600.40100.41200.100700.1565700 | IPS flooring work | 7d | 2026-08-06 | 2026-08-13 | 5081, 5096 |  | Zenith | 8706004 |
| 5098 | 36900.37000.37100.37700.38600.40100.41200.100700.1565800 | Toilet dado work | 6d | 2026-08-06 | 2026-08-12 | 5082, 5095, 5096 |  | Zenith | 8706014 |
| 5099 | 36900.37000.37100.37700.38600.40100.41200.100700.1565900 | Toilet flooring work | 7d | 2026-08-12 | 2026-08-19 | 5083, 5098 |  | Zenith | 8706024 |
| 5100 | 36900.37000.37100.37700.38600.40100.41200.100700.1566000 | False Cieling panel fixing | 7d | 2026-08-19 | 2026-08-26 | 5084, 5099 |  | Zenith | 8706034 |
| 5101 | 36900.37000.37100.37700.38600.40100.41200.100700.1566100 | Living dinning flooring | 7d | 2026-08-19 | 2026-08-26 | 5085, 5099 |  | Zenith | 8706044 |
| 5102 | 36900.37000.37100.37700.38600.40100.41200.100700.1566200 | Putty primer coat | 8d | 2026-08-26 | 2026-09-03 | 5086, 5101 |  | Zenith | 8706054 |
| 5103 | 36900.37000.37100.37700.38600.40100.41200.100700.1566300 | Aluminium door-window fixing | 12d | 2026-09-13 | 2026-09-24 | 5087, 5097, 5101 |  | Zenith | 8706064 |
| 5104 | 36900.37000.37100.37700.38600.40100.41200.100700.1566400 | Door shutter fixing (Pre Hung) | 8d | 2026-09-03 | 2026-09-11 | 5088, 5102 |  | Zenith | 8706074 |
| 5105 | 36900.37000.37100.37700.38600.40100.41200.100700.1566500 | Electrical wiring work | 10d | 2026-09-11 | 2026-09-21 | 5089, 5104 |  | Zenith | 8706084 |
| 5106 | 36900.37000.37100.37700.38600.40100.41200.100700.1566600 | Painting 1st coat | 12d | 2026-10-09 | 2026-10-20 | 5090, 5105 |  | Zenith | 8706094 |
| 5107 | 36900.37000.37100.37700.38600.40100.41200.100800 | **14th floor roof** | 97.75d | 2026-07-27 | 2026-12-16 |  | start no earlier than 2026-07-27 | Zenith | 8650264 |
| 5108 | 36900.37000.37100.37700.38600.40100.41200.100800.1566700 | Block Work | 6d | 2026-07-27 | 2026-08-02 | 4872, 5092 |  | Zenith | 8706104 |
| 5109 | 36900.37000.37100.37700.38600.40100.41200.100800.1566800 | Fire sprinkler pipe fixing | 5d | 2026-08-02 | 2026-08-07 | 5093, 5108 |  | Zenith | 8706114 |
| 5110 | 36900.37000.37100.37700.38600.40100.41200.100800.1566900 | Internal Plumbing Works | 5d | 2026-08-02 | 2026-08-07 | 5094, 5108 |  | Zenith | 8706124 |
| 5111 | 36900.37000.37100.37700.38600.40100.41200.100800.1567000 | Waterproofing | 5d | 2026-08-07 | 2026-08-12 | 5095, 5110 |  | Zenith | 8706134 |
| 5112 | 36900.37000.37100.37700.38600.40100.41200.100800.1567100 | Internal Plaster | 9d | 2026-08-08 | 2026-08-17 | 5096, 5110, 5111FF+5d |  | Zenith | 8706144 |
| 5113 | 36900.37000.37100.37700.38600.40100.41200.100800.1567200 | IPS flooring work | 7d | 2026-08-17 | 2026-08-24 | 5097, 5112 |  | Zenith | 8706154 |
| 5114 | 36900.37000.37100.37700.38600.40100.41200.100800.1567300 | Toilet dado work | 6d | 2026-08-17 | 2026-08-23 | 5098, 5111, 5112 |  | Zenith | 8706164 |
| 5115 | 36900.37000.37100.37700.38600.40100.41200.100800.1567400 | Toilet flooring work | 7d | 2026-08-23 | 2026-08-30 | 5099, 5114 |  | Zenith | 8706174 |
| 5116 | 36900.37000.37100.37700.38600.40100.41200.100800.1567500 | False Cieling panel fixing | 7d | 2026-08-30 | 2026-09-06 | 5100, 5115 |  | Zenith | 8706184 |
| 5117 | 36900.37000.37100.37700.38600.40100.41200.100800.1567600 | Living dinning flooring | 7d | 2026-08-30 | 2026-09-06 | 5101, 5115 |  | Zenith | 8706194 |
| 5118 | 36900.37000.37100.37700.38600.40100.41200.100800.1567700 | Putty primer coat | 8d | 2026-09-06 | 2026-09-14 | 5102, 5117 |  | Zenith | 8706204 |
| 5119 | 36900.37000.37100.37700.38600.40100.41200.100800.1567800 | Aluminium door-window fixing | 12d | 2026-09-25 | 2026-10-06 | 5103, 5113, 5117 |  | Zenith | 8706214 |
| 5120 | 36900.37000.37100.37700.38600.40100.41200.100800.1567900 | Door shutter fixing (Pre Hung) | 8d | 2026-09-14 | 2026-09-22 | 5104, 5118 |  | Zenith | 8706224 |
| 5121 | 36900.37000.37100.37700.38600.40100.41200.100800.1568000 | Electrical wiring work | 10d | 2026-09-22 | 2026-10-02 | 5105, 5120 |  | Zenith | 8706234 |
| 5122 | 36900.37000.37100.37700.38600.40100.41200.100800.1568100 | Painting 1st coat | 12d | 2026-10-21 | 2026-12-16 | 5106, 5121 |  | Zenith | 8706244 |

| ID | WBS | Task | Duration | Start | Finish | Predecessors | Constraint | Calendar | Unique_Task_ID |
| --- | --- | --- | --- | --- | --- | --- | --- | --- | --- |
| 5123 | 36900.37000.37100.37700.38600.40100.41200.100900 | **15th floor roof** | 98.75d | 2026-08-07 | 2026-12-28 |  | start no earlier than 2026-08-07 | Zenith | 8650274 |
| 5124 | 36900.37000.37100.37700.38600.40100.41200.100900.1568200 | Block Work | 6d | 2026-08-07 | 2026-08-13 | 4873, 5108 |  | Zenith | 8706254 |
| 5125 | 36900.37000.37100.37700.38600.40100.41200.100900.1568300 | Fire sprinkler pipe fixing | 5d | 2026-08-13 | 2026-08-18 | 5109, 5124 |  | Zenith | 8706264 |
| 5126 | 36900.37000.37100.37700.38600.40100.41200.100900.1568400 | Internal Plumbing Works | 5d | 2026-08-13 | 2026-08-18 | 5110, 5124 |  | Zenith | 8706274 |
| 5127 | 36900.37000.37100.37700.38600.40100.41200.100900.1568500 | Waterproofing | 5d | 2026-08-18 | 2026-08-23 | 5111, 5126 |  | Zenith | 8706284 |
| 5128 | 36900.37000.37100.37700.38600.40100.41200.100900.1568600 | Internal Plaster | 9d | 2026-08-19 | 2026-08-28 | 5112, 5126, 5127FF+5d |  | Zenith | 8706294 |
| 5129 | 36900.37000.37100.37700.38600.40100.41200.100900.1568700 | IPS flooring work | 7d | 2026-08-28 | 2026-09-04 | 5113, 5128 |  | Zenith | 8706304 |
| 5130 | 36900.37000.37100.37700.38600.40100.41200.100900.1568800 | Toilet dado work | 6d | 2026-08-28 | 2026-09-03 | 5114, 5127, 5128 |  | Zenith | 8706314 |
| 5131 | 36900.37000.37100.37700.38600.40100.41200.100900.1568900 | Toilet flooring work | 7d | 2026-09-03 | 2026-09-10 | 5115, 5130 |  | Zenith | 8706324 |
| 5132 | 36900.37000.37100.37700.38600.40100.41200.100900.1569000 | False Cieling panel fixing | 7d | 2026-09-10 | 2026-09-17 | 5116, 5131 |  | Zenith | 8706334 |
| 5133 | 36900.37000.37100.37700.38600.40100.41200.100900.1569100 | Living dinning flooring | 7d | 2026-09-10 | 2026-09-17 | 5117, 5131 |  | Zenith | 8706344 |
| 5134 | 36900.37000.37100.37700.38600.40100.41200.100900.1569200 | Aluminium door-window fixing | 8d | 2026-10-07 | 2026-10-14 | 5119, 5129, 5133 |  | Zenith | 8706354 |
| 5135 | 36900.37000.37100.37700.38600.40100.41200.100900.1569300 | Putty primer coat | 12d | 2026-09-17 | 2026-09-29 | 5118, 5133 |  | Zenith | 8706364 |
| 5136 | 36900.37000.37100.37700.38600.40100.41200.100900.1569400 | Door shutter fixing (Pre Hung) | 8d | 2026-09-29 | 2026-10-07 | 5120, 5135 |  | Zenith | 8706374 |
| 5137 | 36900.37000.37100.37700.38600.40100.41200.100900.1569500 | Electrical wiring work | 10d | 2026-10-07 | 2026-10-17 | 5121, 5136 |  | Zenith | 8706384 |
| 5138 | 36900.37000.37100.37700.38600.40100.41200.100900.1569600 | Painting 1st coat | 12d | 2026-12-17 | 2026-12-28 | 5122, 5137 |  | Zenith | 8706394 |
| 5139 | 36900.37000.37100.37700.38600.40100.41200.101000 | **16th floor roof** | 99.75d | 2026-08-18 | 2027-01-09 |  | start no earlier than 2026-08-18 | Zenith | 8650284 |
| 5140 | 36900.37000.37100.37700.38600.40100.41200.101000.1569700 | Block Work | 6d | 2026-08-18 | 2026-08-24 | 4874, 5124 |  | Zenith | 8706404 |
| 5141 | 36900.37000.37100.37700.38600.40100.41200.101000.1569800 | Fire sprinkler pipe fixing | 5d | 2026-08-24 | 2026-08-29 | 5125, 5140 |  | Zenith | 8706414 |
| 5142 | 36900.37000.37100.37700.38600.40100.41200.101000.1569900 | Internal Plumbing Works | 5d | 2026-08-24 | 2026-08-29 | 5126, 5140 |  | Zenith | 8706424 |
| 5143 | 36900.37000.37100.37700.38600.40100.41200.101000.1570000 | Waterproofing | 5d | 2026-08-29 | 2026-09-03 | 5127, 5142 |  | Zenith | 8706434 |
| 5144 | 36900.37000.37100.37700.38600.40100.41200.101000.1570100 | Internal Plaster | 9d | 2026-08-30 | 2026-09-08 | 5128, 5142, 5143FF+5d |  | Zenith | 8706444 |
| 5145 | 36900.37000.37100.37700.38600.40100.41200.101000.1570200 | IPS flooring work | 7d | 2026-09-08 | 2026-09-15 | 5129, 5144 |  | Zenith | 8706454 |
| 5146 | 36900.37000.37100.37700.38600.40100.41200.101000.1570300 | Toilet dado work | 6d | 2026-09-08 | 2026-09-14 | 5130, 5143, 5144 |  | Zenith | 8706464 |
| 5147 | 36900.37000.37100.37700.38600.40100.41200.101000.1570400 | Toilet flooring work | 7d | 2026-09-14 | 2026-09-21 | 5131, 5146 |  | Zenith | 8706474 |
| 5148 | 36900.37000.37100.37700.38600.40100.41200.101000.1570500 | False Cieling panel fixing | 7d | 2026-09-21 | 2026-09-28 | 5132, 5147 |  | Zenith | 8706484 |
| 5149 | 36900.37000.37100.37700.38600.40100.41200.101000.1570600 | Living dinning flooring | 7d | 2026-09-21 | 2026-09-28 | 5133, 5147 |  | Zenith | 8706494 |
| 5150 | 36900.37000.37100.37700.38600.40100.41200.101000.1570700 | Putty primer coat | 8d | 2026-09-29 | 2026-10-07 | 5135, 5149 |  | Zenith | 8706504 |
| 5151 | 36900.37000.37100.37700.38600.40100.41200.101000.1570800 | Aluminium door-window fixing | 12d | 2026-10-15 | 2026-10-26 | 5134, 5145, 5149 |  | Zenith | 8706514 |
| 5152 | 36900.37000.37100.37700.38600.40100.41200.101000.1570900 | Door shutter fixing (Pre Hung) | 8d | 2026-10-07 | 2026-10-15 | 5136, 5150 |  | Zenith | 8706524 |
| 5153 | 36900.37000.37100.37700.38600.40100.41200.101000.1571000 | Electrical wiring work | 10d | 2026-10-17 | 2026-10-27 | 5137, 5152 |  | Zenith | 8706534 |
| 5154 | 36900.37000.37100.37700.38600.40100.41200.101000.1571100 | Painting 1st coat | 12d | 2026-12-29 | 2027-01-09 | 5138, 5153 |  | Zenith | 8706544 |

| ID | WBS | Task | Duration | Start | Finish | Predecessors | Constraint | Calendar | Unique_Task_ID |
| --- | --- | --- | --- | --- | --- | --- | --- | --- | --- |
| 5155 | 36900.37000.37100.37700.38600.40100.41200.101100 | **17th floor roof** | 100.75d | 2026-08-29 | 2027-01-21 |  | start no earlier than 2026-08-29 | Zenith | 8650294 |
| 5156 | 36900.37000.37100.37700.38600.40100.41200.101100.1571200 | Block Work | 6d | 2026-08-29 | 2026-09-04 | 4875, 5140 |  | Zenith | 8706554 |
| 5157 | 36900.37000.37100.37700.38600.40100.41200.101100.1571300 | Fire sprinkler pipe fixing | 5d | 2026-09-04 | 2026-09-09 | 5141, 5156 |  | Zenith | 8706564 |
| 5158 | 36900.37000.37100.37700.38600.40100.41200.101100.1571400 | Internal Plumbing Works | 5d | 2026-09-04 | 2026-09-09 | 5142, 5156 |  | Zenith | 8706574 |
| 5159 | 36900.37000.37100.37700.38600.40100.41200.101100.1571500 | Waterproofing | 5d | 2026-09-09 | 2026-09-14 | 5143, 5158 |  | Zenith | 8706584 |
| 5160 | 36900.37000.37100.37700.38600.40100.41200.101100.1571600 | Internal Plaster | 9d | 2026-09-10 | 2026-09-19 | 5144, 5158, 5159FF+5d |  | Zenith | 8706594 |
| 5161 | 36900.37000.37100.37700.38600.40100.41200.101100.1571700 | IPS flooring work | 7d | 2026-09-19 | 2026-09-26 | 5145, 5160 |  | Zenith | 8706604 |
| 5162 | 36900.37000.37100.37700.38600.40100.41200.101100.1571800 | Toilet dado work | 6d | 2026-09-19 | 2026-09-25 | 5146, 5159, 5160 |  | Zenith | 8706614 |
| 5163 | 36900.37000.37100.37700.38600.40100.41200.101100.1571900 | Toilet flooring work | 7d | 2026-09-25 | 2026-10-02 | 5147, 5162 |  | Zenith | 8706624 |
| 5164 | 36900.37000.37100.37700.38600.40100.41200.101100.1572000 | False Cieling panel fixing | 7d | 2026-10-02 | 2026-10-09 | 5148, 5163 |  | Zenith | 8706634 |
| 5165 | 36900.37000.37100.37700.38600.40100.41200.101100.1572100 | Living dinning flooring | 7d | 2026-10-02 | 2026-10-09 | 5149, 5163 |  | Zenith | 8706644 |
| 5166 | 36900.37000.37100.37700.38600.40100.41200.101100.1572200 | Putty primer coat | 8d | 2026-10-09 | 2026-10-17 | 5150, 5165 |  | Zenith | 8706654 |
| 5167 | 36900.37000.37100.37700.38600.40100.41200.101100.1572300 | Aluminium door-window fixing | 12d | 2026-10-27 | 2026-12-22 | 5151, 5161, 5165 |  | Zenith | 8706664 |
| 5168 | 36900.37000.37100.37700.38600.40100.41200.101100.1572400 | Door shutter fixing (Pre Hung) | 8d | 2026-10-17 | 2026-10-25 | 5152, 5166 |  | Zenith | 8706674 |
| 5169 | 36900.37000.37100.37700.38600.40100.41200.101100.1572500 | Electrical wiring work | 10d | 2026-10-27 | 2026-12-21 | 5153, 5168 |  | Zenith | 8706684 |
| 5170 | 36900.37000.37100.37700.38600.40100.41200.101100.1572600 | Painting 1st coat | 12d | 2027-01-10 | 2027-01-21 | 5154, 5169 |  | Zenith | 8706694 |
| 5171 | 36900.37000.37100.37700.38600.40100.41200.101200 | **18th floor roof** | 101.75d | 2026-09-09 | 2027-02-02 |  | start no earlier than 2026-09-09 | Zenith | 8650304 |
| 5172 | 36900.37000.37100.37700.38600.40100.41200.101200.1572700 | Block Work | 6d | 2026-09-09 | 2026-09-15 | 4876, 5156 |  | Zenith | 8706704 |
| 5173 | 36900.37000.37100.37700.38600.40100.41200.101200.1572800 | Fire sprinkler pipe fixing | 5d | 2026-09-15 | 2026-09-20 | 5157, 5172 |  | Zenith | 8706714 |
| 5174 | 36900.37000.37100.37700.38600.40100.41200.101200.1572900 | Internal Plumbing Works | 5d | 2026-09-15 | 2026-09-20 | 5158, 5172 |  | Zenith | 8706724 |
| 5175 | 36900.37000.37100.37700.38600.40100.41200.101200.1573000 | Waterproofing | 5d | 2026-09-20 | 2026-09-25 | 5159, 5174 |  | Zenith | 8706734 |
| 5176 | 36900.37000.37100.37700.38600.40100.41200.101200.1573100 | Internal Plaster | 9d | 2026-09-21 | 2026-09-30 | 5160, 5174, 5175FF+5d |  | Zenith | 8706744 |
| 5177 | 36900.37000.37100.37700.38600.40100.41200.101200.1573200 | IPS flooring work | 7d | 2026-09-30 | 2026-10-07 | 5161, 5176 |  | Zenith | 8706754 |
| 5178 | 36900.37000.37100.37700.38600.40100.41200.101200.1573300 | Toilet dado work | 6d | 2026-09-30 | 2026-10-06 | 5162, 5175, 5176 |  | Zenith | 8706764 |
| 5179 | 36900.37000.37100.37700.38600.40100.41200.101200.1573400 | Toilet flooring work | 7d | 2026-10-06 | 2026-10-13 | 5163, 5178 |  | Zenith | 8706774 |
| 5180 | 36900.37000.37100.37700.38600.40100.41200.101200.1573500 | False Cieling panel fixing | 7d | 2026-10-13 | 2026-10-20 | 5164, 5179 |  | Zenith | 8706784 |
| 5181 | 36900.37000.37100.37700.38600.40100.41200.101200.1573600 | Living dinning flooring | 7d | 2026-10-13 | 2026-10-20 | 5165, 5179 |  | Zenith | 8706794 |
| 5182 | 36900.37000.37100.37700.38600.40100.41200.101200.1573700 | Putty primer coat | 8d | 2026-10-20 | 2026-10-28 | 5166, 5181 |  | Zenith | 8706804 |
| 5183 | 36900.37000.37100.37700.38600.40100.41200.101200.1573800 | Aluminium door-window fixing | 12d | 2026-12-23 | 2027-01-03 | 5167, 5177, 5181 |  | Zenith | 8706814 |
| 5184 | 36900.37000.37100.37700.38600.40100.41200.101200.1573900 | Door shutter fixing (Pre Hung) | 8d | 2026-10-28 | 2026-12-20 | 5168, 5182 |  | Zenith | 8706824 |
| 5185 | 36900.37000.37100.37700.38600.40100.41200.101200.1574000 | Electrical wiring work | 10d | 2026-12-21 | 2026-12-31 | 5169, 5184 |  | Zenith | 8706834 |
| 5186 | 36900.37000.37100.37700.38600.40100.41200.101200.1574100 | Painting 1st coat | 12d | 2027-01-22 | 2027-02-02 | 5170, 5185 |  | Zenith | 8706844 |

| ID | WBS | Task | Duration | Start | Finish | Predecessors | Constraint | Calendar | Unique_Task_ID |
| --- | --- | --- | --- | --- | --- | --- | --- | --- | --- |
| 5187 | 36900.37000.37100.37700.38600.40100.41200.101300 | **19th floor roof** | 102.75d | 2026-09-20 | 2027-02-14 |  | start no earlier than 2026-09-20 | Zenith | 8650314 |
| 5188 | 36900.37000.37100.37700.38600.40100.41200.101300.1574200 | Block Work | 6d | 2026-09-20 | 2026-09-26 | 4877, 5172 |  | Zenith | 8706854 |
| 5189 | 36900.37000.37100.37700.38600.40100.41200.101300.1574300 | Fire sprinkler pipe fixing | 4d | 2026-09-26 | 2026-09-30 | 5173, 5188 |  | Zenith | 8706864 |
| 5190 | 36900.37000.37100.37700.38600.40100.41200.101300.1574400 | Internal Plumbing Works | 4d | 2026-09-26 | 2026-09-30 | 5174, 5188 |  | Zenith | 8706874 |
| 5191 | 36900.37000.37100.37700.38600.40100.41200.101300.1574500 | Waterproofing | 4d | 2026-09-30 | 2026-10-04 | 5175, 5190 |  | Zenith | 8706884 |
| 5192 | 36900.37000.37100.37700.38600.40100.41200.101300.1574600 | Internal Plaster | 9d | 2026-09-30 | 2026-10-09 | 5176, 5190, 5191FF+5d |  | Zenith | 8706894 |
| 5193 | 36900.37000.37100.37700.38600.40100.41200.101300.1574700 | IPS flooring work | 7d | 2026-10-09 | 2026-10-16 | 5177, 5192 |  | Zenith | 8706904 |
| 5194 | 36900.37000.37100.37700.38600.40100.41200.101300.1574800 | Toilet dado work | 6d | 2026-10-09 | 2026-10-15 | 5178, 5191, 5192 |  | Zenith | 8706914 |
| 5195 | 36900.37000.37100.37700.38600.40100.41200.101300.1574900 | Toilet flooring work | 7d | 2026-10-15 | 2026-10-22 | 5179, 5194 |  | Zenith | 8706924 |
| 5196 | 36900.37000.37100.37700.38600.40100.41200.101300.1575000 | False Cieling panel fixing | 7d | 2026-10-22 | 2026-10-29 | 5180, 5195 |  | Zenith | 8706934 |
| 5197 | 36900.37000.37100.37700.38600.40100.41200.101300.1575100 | Living dinning flooring | 7d | 2026-10-22 | 2026-10-29 | 5181, 5195 |  | Zenith | 8706944 |
| 5198 | 36900.37000.37100.37700.38600.40100.41200.101300.1575200 | Putty primer coat | 8d | 2026-10-29 | 2026-12-21 | 5182, 5197 |  | Zenith | 8706954 |
| 5199 | 36900.37000.37100.37700.38600.40100.41200.101300.1575300 | Aluminium door-window fixing | 12d | 2027-01-04 | 2027-01-15 | 5183, 5193, 5197 |  | Zenith | 8706964 |
| 5200 | 36900.37000.37100.37700.38600.40100.41200.101300.1575400 | Door shutter fixing (Pre Hung) | 8d | 2026-12-21 | 2026-12-29 | 5184, 5198 |  | Zenith | 8706974 |
| 5201 | 36900.37000.37100.37700.38600.40100.41200.101300.1575500 | Electrical wiring work | 10d | 2026-12-31 | 2027-01-10 | 5185, 5200 |  | Zenith | 8706984 |
| 5202 | 36900.37000.37100.37700.38600.40100.41200.101300.1575600 | Painting 1st coat | 12d | 2027-02-03 | 2027-02-14 | 5186, 5201 |  | Zenith | 8706994 |
| 5203 | 36900.37000.37100.37700.38600.40100.41200.101400 | **20th floor roof** | 103.75d | 2026-10-01 | 2027-02-26 |  | start no earlier than 2026-10-01 | Zenith | 8650324 |
| 5204 | 36900.37000.37100.37700.38600.40100.41200.101400.1575700 | Block Work | 6d | 2026-10-01 | 2026-10-07 | 4878, 5188 |  | Zenith | 8707004 |
| 5205 | 36900.37000.37100.37700.38600.40100.41200.101400.1575800 | Fire sprinkler pipe fixing | 4d | 2026-10-07 | 2026-10-11 | 5189, 5204 |  | Zenith | 8707014 |
| 5206 | 36900.37000.37100.37700.38600.40100.41200.101400.1575900 | Internal Plumbing Works | 4d | 2026-10-07 | 2026-10-11 | 5190, 5204 |  | Zenith | 8707024 |
| 5207 | 36900.37000.37100.37700.38600.40100.41200.101400.1576000 | Waterproofing | 4d | 2026-10-11 | 2026-10-15 | 5191, 5206 |  | Zenith | 8707034 |
| 5208 | 36900.37000.37100.37700.38600.40100.41200.101400.1576100 | Internal Plaster | 9d | 2026-10-11 | 2026-10-20 | 5192, 5206, 5207FF+5d |  | Zenith | 8707044 |
| 5209 | 36900.37000.37100.37700.38600.40100.41200.101400.1576200 | IPS flooring work | 7d | 2026-10-20 | 2026-10-27 | 5193, 5208 |  | Zenith | 8707054 |
| 5210 | 36900.37000.37100.37700.38600.40100.41200.101400.1576300 | Toilet dado work | 6d | 2026-10-20 | 2026-10-26 | 5194, 5207, 5208 |  | Zenith | 8707064 |
| 5211 | 36900.37000.37100.37700.38600.40100.41200.101400.1576400 | Toilet flooring work | 7d | 2026-10-26 | 2026-12-17 | 5195, 5210 |  | Zenith | 8707074 |
| 5212 | 36900.37000.37100.37700.38600.40100.41200.101400.1576500 | False Cieling panel fixing | 7d | 2026-12-17 | 2026-12-24 | 5196, 5211 |  | Zenith | 8707084 |
| 5213 | 36900.37000.37100.37700.38600.40100.41200.101400.1576600 | Living dinning flooring | 7d | 2026-12-17 | 2026-12-24 | 5197, 5211 |  | Zenith | 8707094 |
| 5214 | 36900.37000.37100.37700.38600.40100.41200.101400.1576700 | Putty primer coat | 8d | 2026-12-24 | 2027-01-01 | 5198, 5213 |  | Zenith | 8707104 |
| 5215 | 36900.37000.37100.37700.38600.40100.41200.101400.1576800 | Aluminium door-window fixing | 12d | 2027-01-16 | 2027-01-27 | 5199, 5209, 5213 |  | Zenith | 8707114 |
| 5216 | 36900.37000.37100.37700.38600.40100.41200.101400.1576900 | Door shutter fixing (Pre Hung) | 8d | 2027-01-01 | 2027-01-09 | 5200, 5214 |  | Zenith | 8707124 |
| 5217 | 36900.37000.37100.37700.38600.40100.41200.101400.1577000 | Electrical wiring work | 10d | 2027-01-10 | 2027-01-20 | 5201, 5216 |  | Zenith | 8707134 |
| 5218 | 36900.37000.37100.37700.38600.40100.41200.101400.1577100 | Painting 1st coat | 12d | 2027-02-15 | 2027-02-26 | 5202, 5217 |  | Zenith | 8707144 |

| ID | WBS | Task | Duration | Start | Finish | Predecessors | Constraint | Calendar | Unique_Task_ID |
| --- | --- | --- | --- | --- | --- | --- | --- | --- | --- |
| 5219 | 36900.37000.37100.37700.38600.40100.41200.101500 | **21st floor roof** | 104.75d | 2026-10-12 | 2027-03-10 |  | start no earlier than 2026-10-12 | Zenith | 8650334 |
| 5220 | 36900.37000.37100.37700.38600.40100.41200.101500.1577200 | Block Work | 6d | 2026-10-12 | 2026-10-18 | 4879, 5204 |  | Zenith | 8707154 |
| 5221 | 36900.37000.37100.37700.38600.40100.41200.101500.1577300 | Fire sprinkler pipe fixing | 4d | 2026-10-18 | 2026-10-22 | 5205, 5220 |  | Zenith | 8707164 |
| 5222 | 36900.37000.37100.37700.38600.40100.41200.101500.1577400 | Internal Plumbing Works | 4d | 2026-10-18 | 2026-10-22 | 5206, 5220 |  | Zenith | 8707174 |
| 5223 | 36900.37000.37100.37700.38600.40100.41200.101500.1577500 | Waterproofing | 4d | 2026-10-22 | 2026-10-26 | 5207, 5222 |  | Zenith | 8707184 |
| 5224 | 36900.37000.37100.37700.38600.40100.41200.101500.1577600 | Internal Plaster | 10d | 2026-10-22 | 2026-12-16 | 5208, 5222, 5223FF+5d |  | Zenith | 8707194 |
| 5225 | 36900.37000.37100.37700.38600.40100.41200.101500.1577700 | IPS flooring work | 7d | 2026-12-16 | 2026-12-23 | 5209, 5224 |  | Zenith | 8707204 |
| 5226 | 36900.37000.37100.37700.38600.40100.41200.101500.1577800 | Toilet dado work | 6d | 2026-12-16 | 2026-12-22 | 5210, 5223, 5224 |  | Zenith | 8707214 |
| 5227 | 36900.37000.37100.37700.38600.40100.41200.101500.1577900 | Toilet flooring work | 7d | 2026-12-22 | 2026-12-29 | 5211, 5226 |  | Zenith | 8707224 |
| 5228 | 36900.37000.37100.37700.38600.40100.41200.101500.1578000 | False Cieling panel fixing | 7d | 2026-12-29 | 2027-01-05 | 5212, 5227 |  | Zenith | 8707234 |
| 5229 | 36900.37000.37100.37700.38600.40100.41200.101500.1578100 | Living dinning flooring | 7d | 2026-12-29 | 2027-01-05 | 5213, 5227 |  | Zenith | 8707244 |
| 5230 | 36900.37000.37100.37700.38600.40100.41200.101500.1578200 | Putty primer coat | 8d | 2027-01-05 | 2027-01-13 | 5214, 5229 |  | Zenith | 8707254 |
| 5231 | 36900.37000.37100.37700.38600.40100.41200.101500.1578300 | Aluminium door-window fixing | 12d | 2027-01-28 | 2027-02-08 | 5215, 5225, 5229 |  | Zenith | 8707264 |
| 5232 | 36900.37000.37100.37700.38600.40100.41200.101500.1578400 | Door shutter fixing (Pre Hung) | 8d | 2027-01-13 | 2027-01-21 | 5216, 5230 |  | Zenith | 8707274 |
| 5233 | 36900.37000.37100.37700.38600.40100.41200.101500.1578500 | Electrical wiring work | 10d | 2027-01-21 | 2027-01-31 | 5217, 5232 |  | Zenith | 8707284 |
| 5234 | 36900.37000.37100.37700.38600.40100.41200.101500.1578600 | Painting 1st coat | 12d | 2027-02-27 | 2027-03-10 | 5218, 5233 |  | Zenith | 8707294 |
| 5235 | 36900.37000.37100.37700.38600.40100.41200.101600 | **22nd floor roof** | 105.75d | 2026-10-23 | 2027-03-22 |  | start no earlier than 2026-10-23 | Zenith | 8650344 |
| 5236 | 36900.37000.37100.37700.38600.40100.41200.101600.1578700 | Block Work | 6d | 2026-10-23 | 2026-10-29 | 4880, 5220 |  | Zenith | 8707304 |
| 5237 | 36900.37000.37100.37700.38600.40100.41200.101600.1578800 | Fire sprinkler pipe fixing | 4d | 2026-10-29 | 2026-12-17 | 5221, 5236 |  | Zenith | 8707314 |
| 5238 | 36900.37000.37100.37700.38600.40100.41200.101600.1578900 | Internal Plumbing Works | 4d | 2026-10-29 | 2026-12-17 | 5222, 5236 |  | Zenith | 8707324 |
| 5239 | 36900.37000.37100.37700.38600.40100.41200.101600.1579000 | Waterproofing | 4d | 2026-12-17 | 2026-12-21 | 5223, 5238 |  | Zenith | 8707334 |
| 5240 | 36900.37000.37100.37700.38600.40100.41200.101600.1579100 | Internal Plaster | 10d | 2026-12-17 | 2026-12-27 | 5224, 5238, 5239FF+5d |  | Zenith | 8707344 |
| 5241 | 36900.37000.37100.37700.38600.40100.41200.101600.1579200 | IPS flooring work | 7d | 2026-12-27 | 2027-01-03 | 5225, 5240 |  | Zenith | 8707354 |
| 5242 | 36900.37000.37100.37700.38600.40100.41200.101600.1579300 | Toilet dado work | 6d | 2026-12-27 | 2027-01-02 | 5226, 5239, 5240 |  | Zenith | 8707364 |
| 5243 | 36900.37000.37100.37700.38600.40100.41200.101600.1579400 | Toilet flooring work | 7d | 2027-01-02 | 2027-01-09 | 5227, 5242 |  | Zenith | 8707374 |
| 5244 | 36900.37000.37100.37700.38600.40100.41200.101600.1579500 | False Cieling panel fixing | 7d | 2027-01-09 | 2027-01-16 | 5228, 5243 |  | Zenith | 8707384 |
| 5245 | 36900.37000.37100.37700.38600.40100.41200.101600.1579600 | Living dinning flooring | 7d | 2027-01-09 | 2027-01-16 | 5229, 5243 |  | Zenith | 8707394 |
| 5246 | 36900.37000.37100.37700.38600.40100.41200.101600.1579700 | Putty primer coat | 8d | 2027-01-16 | 2027-01-24 | 5230, 5245 |  | Zenith | 8707404 |
| 5247 | 36900.37000.37100.37700.38600.40100.41200.101600.1579800 | Aluminium door-window fixing | 12d | 2027-02-09 | 2027-02-20 | 5231, 5241, 5245 |  | Zenith | 8707414 |
| 5248 | 36900.37000.37100.37700.38600.40100.41200.101600.1579900 | Door shutter fixing (Pre Hung) | 8d | 2027-01-24 | 2027-02-01 | 5232, 5246 |  | Zenith | 8707424 |
| 5249 | 36900.37000.37100.37700.38600.40100.41200.101600.1580000 | Electrical wiring work | 10d | 2027-02-01 | 2027-02-11 | 5233, 5248 |  | Zenith | 8707434 |
| 5250 | 36900.37000.37100.37700.38600.40100.41200.101600.1580100 | Painting 1st coat | 12d | 2027-03-11 | 2027-03-22 | 5234, 5249 |  | Zenith | 8707444 |

| ID | WBS | Task | Duration | Start | Finish | Predecessors | Constraint | Calendar | Unique_Task_ID |
| --- | --- | --- | --- | --- | --- | --- | --- | --- | --- |
| 5251 | 36900.37000.37100.37700.38600.40100.41200.101700 | **23rd floor roof** | 106.75d | 2026-12-18 | 2027-04-03 |  | start no earlier than 2026-12-18 | Zenith | 8650354 |
| 5252 | 36900.37000.37100.37700.38600.40100.41200.101700.1580200 | Block Work | 6d | 2026-12-18 | 2026-12-24 | 4881, 5236 |  | Zenith | 8707454 |
| 5253 | 36900.37000.37100.37700.38600.40100.41200.101700.1580300 | Fire sprinkler pipe fixing | 5d | 2026-12-24 | 2026-12-29 | 5237, 5252 |  | Zenith | 8707464 |
| 5254 | 36900.37000.37100.37700.38600.40100.41200.101700.1580400 | Internal Plumbing Works | 5d | 2026-12-24 | 2026-12-29 | 5238, 5252 |  | Zenith | 8707474 |
| 5255 | 36900.37000.37100.37700.38600.40100.41200.101700.1580500 | Waterproofing | 5d | 2026-12-29 | 2027-01-03 | 5239, 5254 |  | Zenith | 8707484 |
| 5256 | 36900.37000.37100.37700.38600.40100.41200.101700.1580600 | Internal Plaster | 9d | 2026-12-30 | 2027-01-08 | 5240, 5254, 5255FF+5d |  | Zenith | 8707494 |
| 5257 | 36900.37000.37100.37700.38600.40100.41200.101700.1580700 | IPS flooring work | 7d | 2027-01-08 | 2027-01-15 | 5241, 5256 |  | Zenith | 8707504 |
| 5258 | 36900.37000.37100.37700.38600.40100.41200.101700.1580800 | Toilet dado work | 6d | 2027-01-08 | 2027-01-14 | 5242, 5255, 5256 |  | Zenith | 8707514 |
| 5259 | 36900.37000.37100.37700.38600.40100.41200.101700.1580900 | Toilet flooring work | 7d | 2027-01-14 | 2027-01-21 | 5243, 5258 |  | Zenith | 8707524 |
| 5260 | 36900.37000.37100.37700.38600.40100.41200.101700.1581000 | False Cieling panel fixing | 7d | 2027-01-21 | 2027-01-28 | 5244, 5259 |  | Zenith | 8707534 |
| 5261 | 36900.37000.37100.37700.38600.40100.41200.101700.1581100 | Living dinning flooring | 7d | 2027-01-21 | 2027-01-28 | 5245, 5259 |  | Zenith | 8707544 |
| 5262 | 36900.37000.37100.37700.38600.40100.41200.101700.1581200 | Putty primer coat | 8d | 2027-01-28 | 2027-02-05 | 5246, 5261 |  | Zenith | 8707554 |
| 5263 | 36900.37000.37100.37700.38600.40100.41200.101700.1581300 | Aluminium door-window fixing | 12d | 2027-02-21 | 2027-03-04 | 5247, 5257, 5261 |  | Zenith | 8707564 |
| 5264 | 36900.37000.37100.37700.38600.40100.41200.101700.1581400 | Door shutter fixing (Pre Hung) | 8d | 2027-02-05 | 2027-02-13 | 5248, 5262 |  | Zenith | 8707574 |
| 5265 | 36900.37000.37100.37700.38600.40100.41200.101700.1581500 | Electrical wiring work | 10d | 2027-02-13 | 2027-02-23 | 5249, 5264 |  | Zenith | 8707584 |
| 5266 | 36900.37000.37100.37700.38600.40100.41200.101700.1581600 | Painting 1st coat | 12d | 2027-03-23 | 2027-04-03 | 5250, 5265 |  | Zenith | 8707594 |
| 5267 | 36900.37000.37100.37700.38600.40100.41200.101800 | **24th floor roof** | 107.75d | 2026-12-29 | 2027-04-15 |  | start no earlier than 2026-12-29 | Zenith | 8650364 |
| 5268 | 36900.37000.37100.37700.38600.40100.41200.101800.1581700 | Block Work | 6d | 2026-12-29 | 2027-01-04 | 4882, 5252 |  | Zenith | 8707604 |
| 5269 | 36900.37000.37100.37700.38600.40100.41200.101800.1581800 | Fire sprinkler pipe fixing | 5d | 2027-01-04 | 2027-01-09 | 5253, 5268 |  | Zenith | 8707614 |
| 5270 | 36900.37000.37100.37700.38600.40100.41200.101800.1581900 | Internal Plumbing Works | 5d | 2027-01-04 | 2027-01-09 | 5254, 5268 |  | Zenith | 8707624 |
| 5271 | 36900.37000.37100.37700.38600.40100.41200.101800.1582000 | Waterproofing | 5d | 2027-01-09 | 2027-01-14 | 5255, 5270 |  | Zenith | 8707634 |
| 5272 | 36900.37000.37100.37700.38600.40100.41200.101800.1582100 | Internal Plaster | 9d | 2027-01-10 | 2027-01-19 | 5256, 5270, 5271FF+5d |  | Zenith | 8707644 |
| 5273 | 36900.37000.37100.37700.38600.40100.41200.101800.1582200 | IPS flooring work | 7d | 2027-01-19 | 2027-01-26 | 5257, 5272 |  | Zenith | 8707654 |
| 5274 | 36900.37000.37100.37700.38600.40100.41200.101800.1582300 | Toilet dado work | 6d | 2027-01-19 | 2027-01-25 | 5258, 5271, 5272 |  | Zenith | 8707664 |
| 5275 | 36900.37000.37100.37700.38600.40100.41200.101800.1582400 | Toilet flooring work | 7d | 2027-01-25 | 2027-02-01 | 5259, 5274 |  | Zenith | 8707674 |
| 5276 | 36900.37000.37100.37700.38600.40100.41200.101800.1582500 | False Cieling panel fixing | 7d | 2027-02-01 | 2027-02-08 | 5260, 5275 |  | Zenith | 8707684 |
| 5277 | 36900.37000.37100.37700.38600.40100.41200.101800.1582600 | Living dinning flooring | 7d | 2027-02-01 | 2027-02-08 | 5261, 5275 |  | Zenith | 8707694 |
| 5278 | 36900.37000.37100.37700.38600.40100.41200.101800.1582700 | Putty primer coat | 8d | 2027-02-08 | 2027-02-16 | 5262, 5277 |  | Zenith | 8707704 |
| 5279 | 36900.37000.37100.37700.38600.40100.41200.101800.1582800 | Aluminium door-window fixing | 12d | 2027-03-05 | 2027-03-16 | 5263, 5273, 5277 |  | Zenith | 8707714 |
| 5280 | 36900.37000.37100.37700.38600.40100.41200.101800.1582900 | Door shutter fixing (Pre Hung) | 8d | 2027-02-16 | 2027-02-24 | 5264, 5278 |  | Zenith | 8707724 |
| 5281 | 36900.37000.37100.37700.38600.40100.41200.101800.1583000 | Electrical wiring work | 10d | 2027-02-24 | 2027-03-06 | 5265, 5280 |  | Zenith | 8707734 |
| 5282 | 36900.37000.37100.37700.38600.40100.41200.101800.1583100 | Painting 1st coat | 12d | 2027-04-04 | 2027-04-15 | 5266, 5281 |  | Zenith | 8707744 |

| ID | WBS | Task | Duration | Start | Finish | Predecessors | Constraint | Calendar | Unique_Task_ID |
| --- | --- | --- | --- | --- | --- | --- | --- | --- | --- |
| 5283 | 36900.37000.37100.37700.38600.40100.41200.101900 | **25th floor roof** | 108.75d | 2027-01-09 | 2027-04-27 |  | start no earlier than 2027-01-09 | Zenith | 8650374 |
| 5284 | 36900.37000.37100.37700.38600.40100.41200.101900.1583200 | Block Work | 6d | 2027-01-09 | 2027-01-15 | 4883, 5268 |  | Zenith | 8707754 |
| 5285 | 36900.37000.37100.37700.38600.40100.41200.101900.1583300 | Fire sprinkler pipe fixing | 5d | 2027-01-15 | 2027-01-20 | 5269, 5284 |  | Zenith | 8707764 |
| 5286 | 36900.37000.37100.37700.38600.40100.41200.101900.1583400 | Internal Plumbing Works | 5d | 2027-01-15 | 2027-01-20 | 5270, 5284 |  | Zenith | 8707774 |
| 5287 | 36900.37000.37100.37700.38600.40100.41200.101900.1583500 | Waterproofing | 5d | 2027-01-20 | 2027-01-25 | 5271, 5286 |  | Zenith | 8707784 |
| 5288 | 36900.37000.37100.37700.38600.40100.41200.101900.1583600 | Internal Plaster | 9d | 2027-01-21 | 2027-01-30 | 5272, 5286, 5287FF+5d |  | Zenith | 8707794 |
| 5289 | 36900.37000.37100.37700.38600.40100.41200.101900.1583700 | IPS flooring work | 7d | 2027-01-30 | 2027-02-06 | 5273, 5288 |  | Zenith | 8707804 |
| 5290 | 36900.37000.37100.37700.38600.40100.41200.101900.1583800 | Toilet dado work | 6d | 2027-01-30 | 2027-02-05 | 5274, 5287, 5288 |  | Zenith | 8707814 |
| 5291 | 36900.37000.37100.37700.38600.40100.41200.101900.1583900 | Toilet flooring work | 7d | 2027-02-05 | 2027-02-12 | 5275, 5290 |  | Zenith | 8707824 |
| 5292 | 36900.37000.37100.37700.38600.40100.41200.101900.1584000 | False Cieling panel fixing | 7d | 2027-02-12 | 2027-02-19 | 5276, 5291 |  | Zenith | 8707834 |
| 5293 | 36900.37000.37100.37700.38600.40100.41200.101900.1584100 | Living dinning flooring | 7d | 2027-02-12 | 2027-02-19 | 5277, 5291 |  | Zenith | 8707844 |
| 5294 | 36900.37000.37100.37700.38600.40100.41200.101900.1584200 | Putty primer coat | 8d | 2027-02-19 | 2027-02-27 | 5278, 5293 |  | Zenith | 8707854 |
| 5295 | 36900.37000.37100.37700.38600.40100.41200.101900.1584300 | Aluminium door-window fixing | 12d | 2027-03-17 | 2027-03-28 | 5279, 5289, 5293 |  | Zenith | 8707864 |
| 5296 | 36900.37000.37100.37700.38600.40100.41200.101900.1584400 | Door shutter fixing (Pre Hung) | 8d | 2027-02-27 | 2027-03-07 | 5280, 5294 |  | Zenith | 8707874 |
| 5297 | 36900.37000.37100.37700.38600.40100.41200.101900.1584500 | Electrical wiring work | 10d | 2027-03-07 | 2027-03-17 | 5281, 5296 |  | Zenith | 8707884 |
| 5298 | 36900.37000.37100.37700.38600.40100.41200.101900.1584600 | Painting 1st coat | 12d | 2027-04-16 | 2027-04-27 | 5282, 5297 |  | Zenith | 8707894 |
| 5299 | 36900.37000.37100.37700.38600.40100.41200.102000 | **26th floor roof** | 105.75d | 2027-01-24 | 2027-05-09 |  | start no earlier than 2027-01-24 | Zenith | 8650384 |
| 5300 | 36900.37000.37100.37700.38600.40100.41200.102000.1584700 | Block Work | 7d | 2027-01-24 | 2027-01-31 | 4884, 5284 |  | Zenith | 8707904 |
| 5301 | 36900.37000.37100.37700.38600.40100.41200.102000.1584800 | Fire sprinkler pipe fixing | 7d | 2027-01-31 | 2027-02-07 | 5285, 5300 |  | Zenith | 8707914 |
| 5302 | 36900.37000.37100.37700.38600.40100.41200.102000.1584900 | Internal Plumbing Works | 7d | 2027-01-31 | 2027-02-07 | 5286, 5300 |  | Zenith | 8707924 |
| 5303 | 36900.37000.37100.37700.38600.40100.41200.102000.1585000 | Waterproofing | 7d | 2027-02-07 | 2027-02-14 | 5287, 5302 |  | Zenith | 8707934 |
| 5304 | 36900.37000.37100.37700.38600.40100.41200.102000.1585100 | Internal Plaster | 7d | 2027-02-12 | 2027-02-19 | 5288, 5302, 5303FF+5d |  | Zenith | 8707944 |
| 5305 | 36900.37000.37100.37700.38600.40100.41200.102000.1585200 | IPS flooring work | 7d | 2027-02-19 | 2027-02-26 | 5289, 5304 |  | Zenith | 8707954 |
| 5306 | 36900.37000.37100.37700.38600.40100.41200.102000.1585300 | Toilet dado work | 6d | 2027-02-19 | 2027-02-25 | 5290, 5303, 5304 |  | Zenith | 8707964 |
| 5307 | 36900.37000.37100.37700.38600.40100.41200.102000.1585400 | Toilet flooring work | 7d | 2027-02-25 | 2027-03-04 | 5291, 5306 |  | Zenith | 8707974 |
| 5308 | 36900.37000.37100.37700.38600.40100.41200.102000.1585500 | False Cieling panel fixing | 7d | 2027-03-04 | 2027-03-11 | 5292, 5307 |  | Zenith | 8707984 |
| 5309 | 36900.37000.37100.37700.38600.40100.41200.102000.1585600 | Living dinning flooring | 7d | 2027-03-04 | 2027-03-11 | 5293, 5307 |  | Zenith | 8707994 |
| 5310 | 36900.37000.37100.37700.38600.40100.41200.102000.1585700 | Putty primer coat | 8d | 2027-03-11 | 2027-03-19 | 5294, 5309 |  | Zenith | 8708004 |
| 5311 | 36900.37000.37100.37700.38600.40100.41200.102000.1585800 | Aluminium door-window fixing | 12d | 2027-03-29 | 2027-04-09 | 5295, 5305, 5309 |  | Zenith | 8708014 |
| 5312 | 36900.37000.37100.37700.38600.40100.41200.102000.1585900 | Door shutter fixing (Pre Hung) | 8d | 2027-03-19 | 2027-03-27 | 5296, 5310 |  | Zenith | 8708024 |
| 5313 | 36900.37000.37100.37700.38600.40100.41200.102000.1586000 | Electrical wiring work | 10d | 2027-03-27 | 2027-04-06 | 5297, 5312 |  | Zenith | 8708034 |
| 5314 | 36900.37000.37100.37700.38600.40100.41200.102000.1586100 | Painting 1st coat | 12d | 2027-04-28 | 2027-05-09 | 5298, 5313 |  | Zenith | 8708044 |

| ID | WBS | Task | Duration | Start | Finish | Predecessors | Constraint | Calendar | Unique_Task_ID |
| --- | --- | --- | --- | --- | --- | --- | --- | --- | --- |
| 5315 | 36900.37000.37100.37700.38600.40100.41200.102100 | **27th floor roof** | 106.75d | 2027-02-04 | 2027-05-21 |  | start no earlier than 2027-02-04 | Zenith | 8650394 |
| 5316 | 36900.37000.37100.37700.38600.40100.41200.102100.1586200 | Block Work | 7d | 2027-02-04 | 2027-02-11 | 4885, 5300 |  | Zenith | 8708054 |
| 5317 | 36900.37000.37100.37700.38600.40100.41200.102100.1586300 | Fire sprinkler pipe fixing | 7d | 2027-02-11 | 2027-02-18 | 5301, 5316 |  | Zenith | 8708064 |
| 5318 | 36900.37000.37100.37700.38600.40100.41200.102100.1586400 | Internal Plumbing Works | 7d | 2027-02-11 | 2027-02-18 | 5302, 5316 |  | Zenith | 8708074 |
| 5319 | 36900.37000.37100.37700.38600.40100.41200.102100.1586500 | Waterproofing | 7d | 2027-02-18 | 2027-02-25 | 5303, 5318 |  | Zenith | 8708084 |
| 5320 | 36900.37000.37100.37700.38600.40100.41200.102100.1586600 | Internal Plaster | 7d | 2027-02-23 | 2027-03-02 | 5304, 5318, 5319FF+5d |  | Zenith | 8708094 |
| 5321 | 36900.37000.37100.37700.38600.40100.41200.102100.1586700 | IPS flooring work | 7d | 2027-03-02 | 2027-03-09 | 5305, 5320 |  | Zenith | 8708104 |
| 5322 | 36900.37000.37100.37700.38600.40100.41200.102100.1586800 | Toilet dado work | 6d | 2027-03-02 | 2027-03-08 | 5306, 5319, 5320 |  | Zenith | 8708114 |
| 5323 | 36900.37000.37100.37700.38600.40100.41200.102100.1586900 | Toilet flooring work | 7d | 2027-03-08 | 2027-03-15 | 5307, 5322 |  | Zenith | 8708124 |
| 5324 | 36900.37000.37100.37700.38600.40100.41200.102100.1587000 | False Cieling panel fixing | 7d | 2027-03-15 | 2027-03-22 | 5308, 5323 |  | Zenith | 8708134 |
| 5325 | 36900.37000.37100.37700.38600.40100.41200.102100.1587100 | Living dinning flooring | 7d | 2027-03-15 | 2027-03-22 | 5309, 5323 |  | Zenith | 8708144 |
| 5326 | 36900.37000.37100.37700.38600.40100.41200.102100.1587200 | Putty primer coat | 8d | 2027-03-22 | 2027-03-30 | 5310, 5325 |  | Zenith | 8708154 |
| 5327 | 36900.37000.37100.37700.38600.40100.41200.102100.1587300 | Aluminium door-window fixing | 12d | 2027-04-10 | 2027-04-21 | 5311, 5321, 5325 |  | Zenith | 8708164 |
| 5328 | 36900.37000.37100.37700.38600.40100.41200.102100.1587400 | Door shutter fixing (Pre Hung) | 8d | 2027-03-30 | 2027-04-07 | 5312, 5326 |  | Zenith | 8708174 |
| 5329 | 36900.37000.37100.37700.38600.40100.41200.102100.1587500 | Electrical wiring work | 10d | 2027-04-07 | 2027-04-17 | 5313, 5328 |  | Zenith | 8708184 |
| 5330 | 36900.37000.37100.37700.38600.40100.41200.102100.1587600 | Painting 1st coat | 12d | 2027-05-10 | 2027-05-21 | 5314, 5329 |  | Zenith | 8708194 |
| 5331 | 36900.37000.37100.37700.38600.40100.41200.102200 | **28th floor roof** | 107.75d | 2027-02-15 | 2027-06-02 |  | start no earlier than 2027-02-15 | Zenith | 8650404 |
| 5332 | 36900.37000.37100.37700.38600.40100.41200.102200.1587700 | Block Work | 7d | 2027-02-15 | 2027-02-22 | 4886, 5316 |  | Zenith | 8708204 |
| 5333 | 36900.37000.37100.37700.38600.40100.41200.102200.1587800 | Fire sprinkler pipe fixing | 7d | 2027-02-22 | 2027-03-01 | 5317, 5332 |  | Zenith | 8708214 |
| 5334 | 36900.37000.37100.37700.38600.40100.41200.102200.1587900 | Internal Plumbing Works | 7d | 2027-02-22 | 2027-03-01 | 5318, 5332 |  | Zenith | 8708224 |
| 5335 | 36900.37000.37100.37700.38600.40100.41200.102200.1588000 | Waterproofing | 7d | 2027-03-01 | 2027-03-08 | 5319, 5334 |  | Zenith | 8708234 |
| 5336 | 36900.37000.37100.37700.38600.40100.41200.102200.1588100 | Internal Plaster | 7d | 2027-03-06 | 2027-03-13 | 5320, 5334, 5335FF+5d |  | Zenith | 8708244 |
| 5337 | 36900.37000.37100.37700.38600.40100.41200.102200.1588200 | IPS flooring work | 7d | 2027-03-13 | 2027-03-20 | 5321, 5336 |  | Zenith | 8708254 |
| 5338 | 36900.37000.37100.37700.38600.40100.41200.102200.1588300 | Toilet dado work | 6d | 2027-03-13 | 2027-03-19 | 5322, 5335, 5336 |  | Zenith | 8708264 |
| 5339 | 36900.37000.37100.37700.38600.40100.41200.102200.1588400 | Toilet flooring work | 7d | 2027-03-19 | 2027-03-26 | 5323, 5338 |  | Zenith | 8708274 |
| 5340 | 36900.37000.37100.37700.38600.40100.41200.102200.1588500 | False Cieling panel fixing | 7d | 2027-03-26 | 2027-04-02 | 5324, 5339 |  | Zenith | 8708284 |
| 5341 | 36900.37000.37100.37700.38600.40100.41200.102200.1588600 | Living dinning flooring | 7d | 2027-03-26 | 2027-04-02 | 5325, 5339 |  | Zenith | 8708294 |
| 5342 | 36900.37000.37100.37700.38600.40100.41200.102200.1588700 | Putty primer coat | 8d | 2027-04-02 | 2027-04-10 | 5326, 5341 |  | Zenith | 8708304 |
| 5343 | 36900.37000.37100.37700.38600.40100.41200.102200.1588800 | Aluminium door-window fixing | 12d | 2027-04-22 | 2027-05-03 | 5327, 5337, 5341 |  | Zenith | 8708314 |
| 5344 | 36900.37000.37100.37700.38600.40100.41200.102200.1588900 | Door shutter fixing (Pre Hung) | 8d | 2027-04-10 | 2027-04-18 | 5328, 5342 |  | Zenith | 8708324 |
| 5345 | 36900.37000.37100.37700.38600.40100.41200.102200.1589000 | Electrical wiring work | 10d | 2027-04-18 | 2027-04-28 | 5329, 5344 |  | Zenith | 8708334 |
| 5346 | 36900.37000.37100.37700.38600.40100.41200.102200.1589100 | Painting 1st coat | 12d | 2027-05-22 | 2027-06-02 | 5330, 5345 |  | Zenith | 8708344 |

| ID | WBS | Task | Duration | Start | Finish | Predecessors | Constraint | Calendar | Unique_Task_ID |
| --- | --- | --- | --- | --- | --- | --- | --- | --- | --- |
| 5347 | 36900.37000.37100.37700.38600.40100.41200.102300 | **29th floor roof** | 108.75d | 2027-02-26 | 2027-06-14 |  | start no earlier than 2027-02-26 | Zenith | 8650414 |
| 5348 | 36900.37000.37100.37700.38600.40100.41200.102300.1589200 | Block Work | 7d | 2027-02-26 | 2027-03-05 | 4887, 5332 |  | Zenith | 8708354 |
| 5349 | 36900.37000.37100.37700.38600.40100.41200.102300.1589300 | Fire sprinkler pipe fixing | 7d | 2027-03-05 | 2027-03-12 | 5333, 5348 |  | Zenith | 8708364 |
| 5350 | 36900.37000.37100.37700.38600.40100.41200.102300.1589400 | Internal Plumbing Works | 7d | 2027-03-05 | 2027-03-12 | 5334, 5348 |  | Zenith | 8708374 |
| 5351 | 36900.37000.37100.37700.38600.40100.41200.102300.1589500 | Waterproofing | 7d | 2027-03-12 | 2027-03-19 | 5335, 5350 |  | Zenith | 8708384 |
| 5352 | 36900.37000.37100.37700.38600.40100.41200.102300.1589600 | Internal Plaster | 7d | 2027-03-17 | 2027-03-24 | 5336, 5350, 5351FF+5d |  | Zenith | 8708394 |
| 5353 | 36900.37000.37100.37700.38600.40100.41200.102300.1589700 | IPS flooring work | 7d | 2027-03-24 | 2027-03-31 | 5337, 5352 |  | Zenith | 8708404 |
| 5354 | 36900.37000.37100.37700.38600.40100.41200.102300.1589800 | Toilet dado work | 6d | 2027-03-24 | 2027-03-30 | 5338, 5351, 5352 |  | Zenith | 8708414 |
| 5355 | 36900.37000.37100.37700.38600.40100.41200.102300.1589900 | Toilet flooring work | 7d | 2027-03-30 | 2027-04-06 | 5339, 5354 |  | Zenith | 8708424 |
| 5356 | 36900.37000.37100.37700.38600.40100.41200.102300.1590000 | False Cieling panel fixing | 7d | 2027-04-06 | 2027-04-13 | 5340, 5355 |  | Zenith | 8708434 |
| 5357 | 36900.37000.37100.37700.38600.40100.41200.102300.1590100 | Living dinning flooring | 7d | 2027-04-06 | 2027-04-13 | 5341, 5355 |  | Zenith | 8708444 |
| 5358 | 36900.37000.37100.37700.38600.40100.41200.102300.1590200 | Putty primer coat | 8d | 2027-04-13 | 2027-04-21 | 5342, 5357 |  | Zenith | 8708454 |
| 5359 | 36900.37000.37100.37700.38600.40100.41200.102300.1590300 | Aluminium door-window fixing | 12d | 2027-05-04 | 2027-05-15 | 5343, 5353, 5357 |  | Zenith | 8708464 |
| 5360 | 36900.37000.37100.37700.38600.40100.41200.102300.1590400 | Door shutter fixing (Pre Hung) | 8d | 2027-04-21 | 2027-04-29 | 5344, 5358 |  | Zenith | 8708474 |
| 5361 | 36900.37000.37100.37700.38600.40100.41200.102300.1590500 | Electrical wiring work | 10d | 2027-04-29 | 2027-05-09 | 5345, 5360 |  | Zenith | 8708484 |
| 5362 | 36900.37000.37100.37700.38600.40100.41200.102300.1590600 | Painting 1st coat | 12d | 2027-06-03 | 2027-06-14 | 5346, 5361 |  | Zenith | 8708494 |
| 5363 | 36900.37000.37100.37700.38600.40100.41200.102400 | **30th floor roof** | 116d | 2027-03-09 | 2027-07-03 |  | start no earlier than 2027-03-09 | Zenith | 8650424 |
| 5364 | 36900.37000.37100.37700.38600.40100.41200.102400.1590700 | Block Work | 10d | 2027-03-09 | 2027-03-19 | 4888, 5348 |  | Zenith | 8708504 |
| 5365 | 36900.37000.37100.37700.38600.40100.41200.102400.1590800 | Fire sprinkler pipe fixing | 6d | 2027-03-19 | 2027-03-25 | 5349, 5364 |  | Zenith | 8708514 |
| 5366 | 36900.37000.37100.37700.38600.40100.41200.102400.1590900 | Internal Plumbing Works | 10d | 2027-03-19 | 2027-03-29 | 5350, 5364 |  | Zenith | 8708524 |
| 5367 | 36900.37000.37100.37700.38600.40100.41200.102400.1591000 | Waterproofing | 14d | 2027-03-29 | 2027-04-12 | 5351, 5366 |  | Zenith | 8708534 |
| 5368 | 36900.37000.37100.37700.38600.40100.41200.102400.1591100 | Internal Plaster | 14d | 2027-04-03 | 2027-04-17 | 5352, 5366, 5367FF+5d |  | Zenith | 8708544 |
| 5369 | 36900.37000.37100.37700.38600.40100.41200.102400.1591200 | IPS flooring work | 10d | 2027-04-17 | 2027-04-27 | 5353, 5368 |  | Zenith | 8708554 |
| 5370 | 36900.37000.37100.37700.38600.40100.41200.102400.1591300 | Toilet dado work | 10d | 2027-04-17 | 2027-04-27 | 5354, 5367, 5368 |  | Zenith | 8708564 |
| 5371 | 36900.37000.37100.37700.38600.40100.41200.102400.1591400 | Toilet flooring work | 7d | 2027-04-27 | 2027-05-04 | 5355, 5370 |  | Zenith | 8708574 |
| 5372 | 36900.37000.37100.37700.38600.40100.41200.102400.1591500 | False Cieling panel fixing | 10d | 2027-05-04 | 2027-05-14 | 5356, 5371 |  | Zenith | 8708584 |
| 5373 | 36900.37000.37100.37700.38600.40100.41200.102400.1591600 | Living dinning flooring | 13d | 2027-05-04 | 2027-05-17 | 5357, 5371 |  | Zenith | 8708594 |
| 5374 | 36900.37000.37100.37700.38600.40100.41200.102400.1591700 | Putty primer coat | 12d | 2027-05-17 | 2027-05-29 | 5358, 5373 |  | Zenith | 8708604 |
| 5375 | 36900.37000.37100.37700.38600.40100.41200.102400.1591800 | Aluminium door-window fixing | 15d | 2027-05-17 | 2027-06-01 | 5359, 5369, 5373 |  | Zenith | 8708614 |
| 5376 | 36900.37000.37100.37700.38600.40100.41200.102400.1591900 | Door shutter fixing (Pre Hung) | 8d | 2027-05-29 | 2027-06-06 | 5360, 5374 |  | Zenith | 8708624 |
| 5377 | 36900.37000.37100.37700.38600.40100.41200.102400.1592000 | Electrical wiring work | 12d | 2027-06-06 | 2027-06-18 | 5361, 5376 |  | Zenith | 8708634 |
| 5378 | 36900.37000.37100.37700.38600.40100.41200.102400.1592100 | Painting 1st coat | 15d | 2027-06-18 | 2027-07-03 | 5362, 5377 |  | Zenith | 8708644 |

| ID | WBS | Task | Duration | Start | Finish | Predecessors | Constraint | Calendar | Unique_Task_ID |
| --- | --- | --- | --- | --- | --- | --- | --- | --- | --- |
| 5379 | 36900.37000.37100.37700.38600.40100.41200.102500 | **31st floor roof** | 120d | 2027-03-20 | 2027-07-18 |  | start no earlier than 2027-03-20 | Zenith | 8650434 |
| 5380 | 36900.37000.37100.37700.38600.40100.41200.102500.1592200 | Block Work | 10d | 2027-03-20 | 2027-03-30 | 4889, 5364 |  | Zenith | 8708654 |
| 5381 | 36900.37000.37100.37700.38600.40100.41200.102500.1592300 | Fire sprinkler pipe fixing | 6d | 2027-03-30 | 2027-04-05 | 5365, 5380 |  | Zenith | 8708664 |
| 5382 | 36900.37000.37100.37700.38600.40100.41200.102500.1592400 | Internal Plumbing Works | 10d | 2027-03-30 | 2027-04-09 | 5366, 5380 |  | Zenith | 8708674 |
| 5383 | 36900.37000.37100.37700.38600.40100.41200.102500.1592500 | Waterproofing | 14d | 2027-04-12 | 2027-04-26 | 5367, 5382 |  | Zenith | 8708684 |
| 5384 | 36900.37000.37100.37700.38600.40100.41200.102500.1592600 | Internal Plaster | 14d | 2027-04-17 | 2027-05-01 | 5368, 5382, 5383FF+5d |  | Zenith | 8708694 |
| 5385 | 36900.37000.37100.37700.38600.40100.41200.102500.1592700 | IPS flooring work | 10d | 2027-05-01 | 2027-05-11 | 5369, 5384 |  | Zenith | 8708704 |
| 5386 | 36900.37000.37100.37700.38600.40100.41200.102500.1592800 | Toilet dado work | 10d | 2027-05-01 | 2027-05-11 | 5370, 5383, 5384 |  | Zenith | 8708714 |
| 5387 | 36900.37000.37100.37700.38600.40100.41200.102500.1592900 | Toilet flooring work | 7d | 2027-05-11 | 2027-05-18 | 5371, 5386 |  | Zenith | 8708724 |
| 5388 | 36900.37000.37100.37700.38600.40100.41200.102500.1593000 | False Cieling panel fixing | 10d | 2027-05-18 | 2027-05-28 | 5372, 5387 |  | Zenith | 8708734 |
| 5389 | 36900.37000.37100.37700.38600.40100.41200.102500.1593100 | Living dinning flooring | 13d | 2027-05-18 | 2027-05-31 | 5373, 5387 |  | Zenith | 8708744 |
| 5390 | 36900.37000.37100.37700.38600.40100.41200.102500.1593200 | Putty primer coat | 12d | 2027-05-31 | 2027-06-12 | 5374, 5389 |  | Zenith | 8708754 |
| 5391 | 36900.37000.37100.37700.38600.40100.41200.102500.1593300 | Aluminium door-window fixing | 15d | 2027-06-01 | 2027-06-16 | 5375, 5385, 5389 |  | Zenith | 8708764 |
| 5392 | 36900.37000.37100.37700.38600.40100.41200.102500.1593400 | Door shutter fixing (Pre Hung) | 8d | 2027-06-12 | 2027-06-20 | 5376, 5390 |  | Zenith | 8708774 |
| 5393 | 36900.37000.37100.37700.38600.40100.41200.102500.1593500 | Electrical wiring work | 12d | 2027-06-20 | 2027-07-02 | 5377, 5392 |  | Zenith | 8708784 |
| 5394 | 36900.37000.37100.37700.38600.40100.41200.102500.1593600 | Painting 1st coat | 15d | 2027-07-03 | 2027-07-18 | 5378, 5393 |  | Zenith | 8708794 |
| 5395 | 36900.37000.37100.37700.38600.40100.41200.102600 | **32nd floor roof** | 124d | 2027-03-31 | 2027-08-02 |  | start no earlier than 2027-03-31 | Zenith | 8650444 |
| 5396 | 36900.37000.37100.37700.38600.40100.41200.102600.1593700 | Block Work | 10d | 2027-03-31 | 2027-04-10 | 4890, 5380 |  | Zenith | 8708804 |
| 5397 | 36900.37000.37100.37700.38600.40100.41200.102600.1593800 | Fire sprinkler pipe fixing | 6d | 2027-04-10 | 2027-04-16 | 5381, 5396 |  | Zenith | 8708814 |
| 5398 | 36900.37000.37100.37700.38600.40100.41200.102600.1593900 | Internal Plumbing Works | 10d | 2027-04-10 | 2027-04-20 | 5382, 5396 |  | Zenith | 8708824 |
| 5399 | 36900.37000.37100.37700.38600.40100.41200.102600.1594000 | Waterproofing | 14d | 2027-04-26 | 2027-05-10 | 5383, 5398 |  | Zenith | 8708834 |
| 5400 | 36900.37000.37100.37700.38600.40100.41200.102600.1594100 | Internal Plaster | 14d | 2027-05-01 | 2027-05-15 | 5384, 5398, 5399FF+5d |  | Zenith | 8708844 |
| 5401 | 36900.37000.37100.37700.38600.40100.41200.102600.1594200 | IPS flooring work | 10d | 2027-05-15 | 2027-05-25 | 5385, 5400 |  | Zenith | 8708854 |
| 5402 | 36900.37000.37100.37700.38600.40100.41200.102600.1594300 | Toilet dado work | 10d | 2027-05-15 | 2027-05-25 | 5386, 5399, 5400 |  | Zenith | 8708864 |
| 5403 | 36900.37000.37100.37700.38600.40100.41200.102600.1594400 | Toilet flooring work | 7d | 2027-05-25 | 2027-06-01 | 5387, 5402 |  | Zenith | 8708874 |
| 5404 | 36900.37000.37100.37700.38600.40100.41200.102600.1594500 | False Cieling panel fixing | 10d | 2027-06-01 | 2027-06-11 | 5388, 5403 |  | Zenith | 8708884 |
| 5405 | 36900.37000.37100.37700.38600.40100.41200.102600.1594600 | Living dinning flooring | 13d | 2027-06-01 | 2027-06-14 | 5389, 5403 |  | Zenith | 8708894 |
| 5406 | 36900.37000.37100.37700.38600.40100.41200.102600.1594700 | Putty primer coat | 12d | 2027-06-14 | 2027-06-26 | 5390, 5405 |  | Zenith | 8708904 |
| 5407 | 36900.37000.37100.37700.38600.40100.41200.102600.1594800 | Aluminium door-window fixing | 15d | 2027-06-16 | 2027-07-01 | 5391, 5401, 5405 |  | Zenith | 8708914 |
| 5408 | 36900.37000.37100.37700.38600.40100.41200.102600.1594900 | Door shutter fixing (Pre Hung) | 8d | 2027-06-26 | 2027-07-04 | 5392, 5406 |  | Zenith | 8708924 |
| 5409 | 36900.37000.37100.37700.38600.40100.41200.102600.1595000 | Electrical wiring work | 12d | 2027-07-04 | 2027-07-16 | 5393, 5408 |  | Zenith | 8708934 |
| 5410 | 36900.37000.37100.37700.38600.40100.41200.102600.1595100 | Painting 1st coat | 15d | 2027-07-18 | 2027-08-02 | 5394, 5409 |  | Zenith | 8708944 |

| ID | WBS | Task | Duration | Start | Finish | Predecessors | Constraint | Calendar | Unique_Task_ID |
| --- | --- | --- | --- | --- | --- | --- | --- | --- | --- |
| 5411 | 36900.37000.37100.37700.38600.40100.41200.102700 | **33rd floor roof** | 124d | 2027-04-15 | 2027-08-17 |  | start no earlier than 2027-04-15 | Zenith | 8650454 |
| 5412 | 36900.37000.37100.37700.38600.40100.41200.102700.1595200 | Block Work | 10d | 2027-04-15 | 2027-04-25 | 4891, 5396 |  | Zenith | 8708954 |
| 5413 | 36900.37000.37100.37700.38600.40100.41200.102700.1595300 | Fire sprinkler pipe fixing | 6d | 2027-04-25 | 2027-05-01 | 5397, 5412 |  | Zenith | 8708964 |
| 5414 | 36900.37000.37100.37700.38600.40100.41200.102700.1595400 | Internal Plumbing Works | 10d | 2027-04-25 | 2027-05-05 | 5398, 5412 |  | Zenith | 8708974 |
| 5415 | 36900.37000.37100.37700.38600.40100.41200.102700.1595500 | Waterproofing | 14d | 2027-05-10 | 2027-05-24 | 5399, 5414 |  | Zenith | 8708984 |
| 5416 | 36900.37000.37100.37700.38600.40100.41200.102700.1595600 | Internal Plaster | 14d | 2027-05-15 | 2027-05-29 | 5400, 5414, 5415FF+5d |  | Zenith | 8708994 |
| 5417 | 36900.37000.37100.37700.38600.40100.41200.102700.1595700 | IPS flooring work | 10d | 2027-05-29 | 2027-06-08 | 5401, 5416 |  | Zenith | 8709004 |
| 5418 | 36900.37000.37100.37700.38600.40100.41200.102700.1595800 | Toilet dado work | 10d | 2027-05-29 | 2027-06-08 | 5402, 5415, 5416 |  | Zenith | 8709014 |
| 5419 | 36900.37000.37100.37700.38600.40100.41200.102700.1595900 | Toilet flooring work | 7d | 2027-06-08 | 2027-06-15 | 5403, 5418 |  | Zenith | 8709024 |
| 5420 | 36900.37000.37100.37700.38600.40100.41200.102700.1596000 | False Cieling panel fixing | 10d | 2027-06-15 | 2027-06-25 | 5404, 5419 |  | Zenith | 8709034 |
| 5421 | 36900.37000.37100.37700.38600.40100.41200.102700.1596100 | Living dinning flooring | 13d | 2027-06-15 | 2027-06-28 | 5405, 5419 |  | Zenith | 8709044 |
| 5422 | 36900.37000.37100.37700.38600.40100.41200.102700.1596200 | Putty primer coat | 12d | 2027-06-28 | 2027-07-10 | 5406, 5421 |  | Zenith | 8709054 |
| 5423 | 36900.37000.37100.37700.38600.40100.41200.102700.1596300 | Aluminium door-window fixing | 15d | 2027-07-01 | 2027-07-16 | 5407, 5417, 5421 |  | Zenith | 8709064 |
| 5424 | 36900.37000.37100.37700.38600.40100.41200.102700.1596400 | Door shutter fixing (Pre Hung) | 8d | 2027-07-10 | 2027-07-18 | 5408, 5422 |  | Zenith | 8709074 |
| 5425 | 36900.37000.37100.37700.38600.40100.41200.102700.1596500 | Electrical wiring work | 12d | 2027-07-18 | 2027-07-30 | 5409, 5424 |  | Zenith | 8709084 |
| 5426 | 36900.37000.37100.37700.38600.40100.41200.102700.1596600 | Painting 1st coat | 15d | 2027-08-02 | 2027-08-17 | 5410, 5425 |  | Zenith | 8709094 |
| 5427 | 36900.37000.37100.37700.38600.40100.41200.102800 | **34th floor roof** | 129d | 2027-04-25 | 2027-09-01 |  | start no earlier than 2027-04-25 | Zenith | 8650464 |
| 5428 | 36900.37000.37100.37700.38600.40100.41200.102800.1596700 | Block Work | 10d | 2027-04-25 | 2027-05-05 | 4892, 5412 |  | Zenith | 8709104 |
| 5429 | 36900.37000.37100.37700.38600.40100.41200.102800.1596800 | Fire sprinkler pipe fixing | 6d | 2027-05-05 | 2027-05-11 | 5413, 5428 |  | Zenith | 8709114 |
| 5430 | 36900.37000.37100.37700.38600.40100.41200.102800.1596900 | Internal Plumbing Works | 10d | 2027-05-05 | 2027-05-15 | 5414, 5428 |  | Zenith | 8709124 |
| 5431 | 36900.37000.37100.37700.38600.40100.41200.102800.1597000 | Waterproofing | 14d | 2027-05-24 | 2027-06-07 | 5415, 5430 |  | Zenith | 8709134 |
| 5432 | 36900.37000.37100.37700.38600.40100.41200.102800.1597100 | Internal Plaster | 14d | 2027-05-29 | 2027-06-12 | 5416, 5430, 5431FF+5d |  | Zenith | 8709144 |
| 5433 | 36900.37000.37100.37700.38600.40100.41200.102800.1597200 | IPS flooring work | 10d | 2027-06-12 | 2027-06-22 | 5417, 5432 |  | Zenith | 8709154 |
| 5434 | 36900.37000.37100.37700.38600.40100.41200.102800.1597300 | Toilet dado work | 10d | 2027-06-12 | 2027-06-22 | 5418, 5431, 5432 |  | Zenith | 8709164 |
| 5435 | 36900.37000.37100.37700.38600.40100.41200.102800.1597400 | Toilet flooring work | 7d | 2027-06-22 | 2027-06-29 | 5419, 5434 |  | Zenith | 8709174 |
| 5436 | 36900.37000.37100.37700.38600.40100.41200.102800.1597500 | False Cieling panel fixing | 10d | 2027-06-29 | 2027-07-09 | 5420, 5435 |  | Zenith | 8709184 |
| 5437 | 36900.37000.37100.37700.38600.40100.41200.102800.1597600 | Living dinning flooring | 13d | 2027-06-29 | 2027-07-12 | 5421, 5435 |  | Zenith | 8709194 |
| 5438 | 36900.37000.37100.37700.38600.40100.41200.102800.1597700 | Putty primer coat | 12d | 2027-07-12 | 2027-07-24 | 5422, 5437 |  | Zenith | 8709204 |
| 5439 | 36900.37000.37100.37700.38600.40100.41200.102800.1597800 | Aluminium door-window fixing | 15d | 2027-07-16 | 2027-07-31 | 5423, 5433, 5437 |  | Zenith | 8709214 |
| 5440 | 36900.37000.37100.37700.38600.40100.41200.102800.1597900 | Door shutter fixing (Pre Hung) | 8d | 2027-07-24 | 2027-08-01 | 5424, 5438 |  | Zenith | 8709224 |
| 5441 | 36900.37000.37100.37700.38600.40100.41200.102800.1598000 | Electrical wiring work | 12d | 2027-08-01 | 2027-08-13 | 5425, 5440 |  | Zenith | 8709234 |
| 5442 | 36900.37000.37100.37700.38600.40100.41200.102800.1598100 | Painting 1st coat | 15d | 2027-08-17 | 2027-09-01 | 5426, 5441 |  | Zenith | 8709244 |

| ID | WBS | Task | Duration | Start | Finish | Predecessors | Constraint | Calendar | Unique_Task_ID |
| --- | --- | --- | --- | --- | --- | --- | --- | --- | --- |
| 5443 | 36900.37000.37100.37700.38600.40100.41200.102900 | **35th floor roof** | 134d | 2027-05-05 | 2027-09-16 |  | start no earlier than 2027-05-05 | Zenith | 8650474 |
| 5444 | 36900.37000.37100.37700.38600.40100.41200.102900.1598200 | Block Work | 10d | 2027-05-05 | 2027-05-15 | 4893, 5428 |  | Zenith | 8709254 |
| 5445 | 36900.37000.37100.37700.38600.40100.41200.102900.1598300 | Fire sprinkler pipe fixing | 6d | 2027-05-15 | 2027-05-21 | 5429, 5444 |  | Zenith | 8709264 |
| 5446 | 36900.37000.37100.37700.38600.40100.41200.102900.1598400 | Internal Plumbing Works | 10d | 2027-05-15 | 2027-05-25 | 5430, 5444 |  | Zenith | 8709274 |
| 5447 | 36900.37000.37100.37700.38600.40100.41200.102900.1598500 | Waterproofing | 14d | 2027-06-07 | 2027-06-21 | 5431, 5446 |  | Zenith | 8709284 |
| 5448 | 36900.37000.37100.37700.38600.40100.41200.102900.1598600 | Internal Plaster | 14d | 2027-06-12 | 2027-06-26 | 5432, 5446, 5447FF+5d |  | Zenith | 8709294 |
| 5449 | 36900.37000.37100.37700.38600.40100.41200.102900.1598700 | IPS flooring work | 10d | 2027-06-26 | 2027-07-06 | 5433, 5448 |  | Zenith | 8709304 |
| 5450 | 36900.37000.37100.37700.38600.40100.41200.102900.1598800 | Toilet dado work | 10d | 2027-06-26 | 2027-07-06 | 5434, 5447, 5448 |  | Zenith | 8709314 |
| 5451 | 36900.37000.37100.37700.38600.40100.41200.102900.1598900 | Toilet flooring work | 7d | 2027-07-06 | 2027-07-13 | 5435, 5450 |  | Zenith | 8709324 |
| 5452 | 36900.37000.37100.37700.38600.40100.41200.102900.1599000 | False Cieling panel fixing | 10d | 2027-07-13 | 2027-07-23 | 5436, 5451 |  | Zenith | 8709334 |
| 5453 | 36900.37000.37100.37700.38600.40100.41200.102900.1599100 | Living dinning flooring | 13d | 2027-07-13 | 2027-07-26 | 5437, 5451 |  | Zenith | 8709344 |
| 5454 | 36900.37000.37100.37700.38600.40100.41200.102900.1599200 | Putty primer coat | 12d | 2027-07-26 | 2027-08-07 | 5438, 5453 |  | Zenith | 8709354 |
| 5455 | 36900.37000.37100.37700.38600.40100.41200.102900.1599300 | Aluminium door-window fixing | 15d | 2027-07-31 | 2027-08-15 | 5439, 5449, 5453 |  | Zenith | 8709364 |
| 5456 | 36900.37000.37100.37700.38600.40100.41200.102900.1599400 | Door shutter fixing (Pre Hung) | 8d | 2027-08-07 | 2027-08-15 | 5440, 5454 |  | Zenith | 8709374 |
| 5457 | 36900.37000.37100.37700.38600.40100.41200.102900.1599500 | Electrical wiring work | 12d | 2027-08-15 | 2027-08-27 | 5441, 5456 |  | Zenith | 8709384 |
| 5458 | 36900.37000.37100.37700.38600.40100.41200.102900.1599600 | Painting 1st coat | 15d | 2027-09-01 | 2027-09-16 | 5442, 5457 |  | Zenith | 8709394 |
| 5459 | 36900.37000.37100.37700.38600.40100.41200.58200 | **36th Floor** | 188d | 2027-05-15 | 2028-01-03 |  | start no earlier than 2027-05-15 | Zenith | 8648314 |
| 5460 | 36900.37000.37100.37700.38600.40100.41200.58200.1599700 | Block Work | 10d | 2027-05-15 | 2027-05-25 | 4894, 5444 |  | Zenith | 8709404 |
| 5461 | 36900.37000.37100.37700.38600.40100.41200.58200.1599800 | Fire sprinkler pipe fixing | 6d | 2027-05-25 | 2027-05-31 | 5445, 5460 |  | Zenith | 8709414 |
| 5462 | 36900.37000.37100.37700.38600.40100.41200.58200.1599900 | Internal Plumbing Works | 10d | 2027-05-25 | 2027-06-04 | 5446, 5460 |  | Zenith | 8709424 |
| 5463 | 36900.37000.37100.37700.38600.40100.41200.58200.1600000 | Waterproofing | 14d | 2027-06-21 | 2027-07-05 | 5447, 5462 |  | Zenith | 8709434 |
| 5464 | 36900.37000.37100.37700.38600.40100.41200.58200.1600100 | Internal Plaster | 14d | 2027-06-26 | 2027-07-10 | 5448, 5462, 5463FF+5d |  | Zenith | 8709444 |
| 5465 | 36900.37000.37100.37700.38600.40100.41200.58200.1600200 | IPS flooring work | 10d | 2027-07-10 | 2027-07-20 | 5449, 5463, 5464 |  | Zenith | 8709454 |
| 5466 | 36900.37000.37100.37700.38600.40100.41200.58200.1600300 | Toilet dado work | 10d | 2027-07-20 | 2027-07-30 | 5450, 5465 |  | Zenith | 8709464 |
| 5467 | 36900.37000.37100.37700.38600.40100.41200.58200.1600400 | Toilet flooring work | 7d | 2027-07-30 | 2027-08-06 | 5451, 5466 |  | Zenith | 8709474 |
| 5468 | 36900.37000.37100.37700.38600.40100.41200.58200.1600500 | False ceiling | 10d | 2027-08-06 | 2027-08-16 | 5452, 5467 |  | Zenith | 8709484 |
| 5469 | 36900.37000.37100.37700.38600.40100.41200.58200.1600600 | Living dinning flooring | 13d | 2027-08-06 | 2027-08-19 | 5453, 5467 |  | Zenith | 8709494 |
| 5470 | 36900.37000.37100.37700.38600.40100.41200.58200.1600700 | Putty Primer coat | 12d | 2027-08-19 | 2027-08-31 | 5454, 5461, 5468, 5469 |  | Zenith | 8709504 |
| 5471 | 36900.37000.37100.37700.38600.40100.41200.58200.1600800 | Aluminium door-window fixing | 15d | 2027-08-19 | 2027-09-03 | 5455, 5465, 5469 |  | Zenith | 8709514 |
| 5472 | 36900.37000.37100.37700.38600.40100.41200.58200.1600900 | Door shutter fixing (Pre Hung) | 8d | 2027-08-31 | 2027-09-08 | 5456, 5470 |  | Zenith | 8709524 |
| 5473 | 36900.37000.37100.37700.38600.40100.41200.58200.1601000 | Electrical wiring work | 12d | 2027-09-08 | 2027-09-20 | 5457, 5472 |  | Zenith | 8709534 |
| 5474 | 36900.37000.37100.37700.38600.40100.41200.58200.1601100 | Painting 1st coat | 15d | 2027-09-20 | 2027-10-05 | 5458, 5473 |  | Zenith | 8709544 |
| 5475 | 36900.37000.37100.37700.38600.40100.41200.58200.1601200 | Misc. Works | 45d | 2027-10-05 | 2028-01-03 | 5474 |  | Zenith | 8709554 |

| ID | WBS | Task | Duration | Start | Finish | Predecessors | Constraint | Calendar | Unique_Task_ID |
| --- | --- | --- | --- | --- | --- | --- | --- | --- | --- |
| 5476 | 36900.37000.37100.37700.38600.40100.224400 | **Terrace Finishing** | 116d | 2027-05-20 | 2027-09-12 |  | start no earlier than 2027-05-20 | Zenith | 8656804 |
| 5477 | 36900.37000.37100.37700.38600.40100.224400.1009900 | Terrace waterproofing | 40d | 2027-05-20 | 2027-06-28 | 4857FS+2d |  | Zenith | 8683364 |
| 5478 | 36900.37000.37100.37700.38600.40100.224400.1010000 | Terrace finishing | 75d | 2027-06-30 | 2027-09-12 | 5477FS+1d |  | Zenith | 8683354 |
| 5479 | 36900.37000.37100.37700.38600.40100.47800 | **Balcony Railing** | 454d | 2026-04-23 | 2027-09-04 |  | start no earlier than 2026-04-23 | Zenith | 8648114 |
| 5480 | 36900.37000.37100.37700.38600.40100.47800.1010100 | 1st Floor | 8d | 2026-04-23 | 2026-05-01 | 4925FF |  | Zenith | 8683344 |
| 5481 | 36900.37000.37100.37700.38600.40100.47800.1010200 | 2nd Floor | 8d | 2026-05-10 | 2026-05-18 | 5480, 4941 |  | Zenith | 8683334 |
| 5482 | 36900.37000.37100.37700.38600.40100.47800.1010300 | 3rd Floor | 8d | 2026-05-19 | 2026-05-27 | 5481, 4957 |  | Zenith | 8683324 |
| 5483 | 36900.37000.37100.37700.38600.40100.47800.1010400 | 4th Floor | 8d | 2026-05-28 | 2026-06-05 | 5482, 4973 |  | Zenith | 8683314 |
| 5484 | 36900.37000.37100.37700.38600.40100.47800.1010500 | 5th Floor | 8d | 2026-06-06 | 2026-06-14 | 5483, 4989 |  | Zenith | 8683304 |
| 5485 | 36900.37000.37100.37700.38600.40100.47800.1010600 | 6th Floor | 8d | 2026-06-17 | 2026-06-25 | 5484, 5005 |  | Zenith | 8683294 |
| 5486 | 36900.37000.37100.37700.38600.40100.47800.1010700 | 7th Floor | 8d | 2026-06-28 | 2026-07-06 | 5485, 5021 |  | Zenith | 8683284 |
| 5487 | 36900.37000.37100.37700.38600.40100.47800.1010800 | 8th Floor | 8d | 2026-07-09 | 2026-07-17 | 5486, 5037 |  | Zenith | 8683274 |
| 5488 | 36900.37000.37100.37700.38600.40100.47800.1010900 | 9th Floor | 8d | 2026-07-20 | 2026-07-28 | 5487, 5053 |  | Zenith | 8683264 |
| 5489 | 36900.37000.37100.37700.38600.40100.47800.1011000 | 10th Floor | 8d | 2026-08-04 | 2026-08-12 | 5488, 5069 |  | Zenith | 8683254 |
| 5490 | 36900.37000.37100.37700.38600.40100.47800.1011100 | 11th Floor | 8d | 2026-08-15 | 2026-08-23 | 5489, 5085 |  | Zenith | 8683244 |
| 5491 | 36900.37000.37100.37700.38600.40100.47800.1011200 | 12th Floor | 8d | 2026-08-26 | 2026-09-03 | 5490, 5101 |  | Zenith | 8683234 |
| 5492 | 36900.37000.37100.37700.38600.40100.47800.1011300 | 13th Floor | 8d | 2026-09-06 | 2026-09-14 | 5491, 5117 |  | Zenith | 8683224 |
| 5493 | 36900.37000.37100.37700.38600.40100.47800.1011400 | 14th Floor | 8d | 2026-09-17 | 2026-09-25 | 5492, 5133 |  | Zenith | 8683214 |
| 5494 | 36900.37000.37100.37700.38600.40100.47800.1011500 | 15th Floor | 8d | 2026-09-28 | 2026-10-06 | 5493, 5149 |  | Zenith | 8683204 |
| 5495 | 36900.37000.37100.37700.38600.40100.47800.1011600 | 16th Floor | 8d | 2026-10-09 | 2026-10-17 | 5494, 5165 |  | Zenith | 8683194 |
| 5496 | 36900.37000.37100.37700.38600.40100.47800.1011700 | 17th Floor | 8d | 2026-10-20 | 2026-10-28 | 5495, 5181 |  | Zenith | 8683184 |
| 5497 | 36900.37000.37100.37700.38600.40100.47800.1011800 | 18th Floor | 8d | 2026-10-29 | 2026-12-21 | 5496, 5197 |  | Zenith | 8683174 |
| 5498 | 36900.37000.37100.37700.38600.40100.47800.1011900 | 19th Floor | 8d | 2026-12-24 | 2027-01-01 | 5497, 5213 |  | Zenith | 8683164 |
| 5499 | 36900.37000.37100.37700.38600.40100.47800.1012000 | 20th Floor | 8d | 2027-01-05 | 2027-01-13 | 5498, 5229 |  | Zenith | 8683154 |
| 5500 | 36900.37000.37100.37700.38600.40100.47800.1012100 | 21st Floor | 8d | 2027-01-16 | 2027-01-24 | 5499, 5245 |  | Zenith | 8683144 |
| 5501 | 36900.37000.37100.37700.38600.40100.47800.1012200 | 22nd Floor | 8d | 2027-01-28 | 2027-02-05 | 5500, 5261 |  | Zenith | 8683134 |
| 5502 | 36900.37000.37100.37700.38600.40100.47800.1012300 | 23rd Floor | 8d | 2027-02-08 | 2027-02-16 | 5501, 5277 |  | Zenith | 8683124 |
| 5503 | 36900.37000.37100.37700.38600.40100.47800.1012400 | 24th Floor | 8d | 2027-02-19 | 2027-02-27 | 5502, 5293 |  | Zenith | 8683114 |
| 5504 | 36900.37000.37100.37700.38600.40100.47800.1012500 | 25th Floor | 8d | 2027-03-11 | 2027-03-19 | 5503, 5309 |  | Zenith | 8683104 |
| 5505 | 36900.37000.37100.37700.38600.40100.47800.1012600 | 26th Floor | 8d | 2027-03-22 | 2027-03-30 | 5504, 5325 |  | Zenith | 8683094 |
| 5506 | 36900.37000.37100.37700.38600.40100.47800.1012700 | 27th Floor | 8d | 2027-04-02 | 2027-04-10 | 5505, 5341 |  | Zenith | 8683084 |
| 5507 | 36900.37000.37100.37700.38600.40100.47800.1012800 | 28th Floor | 8d | 2027-04-13 | 2027-04-21 | 5506, 5357 |  | Zenith | 8683074 |
| 5508 | 36900.37000.37100.37700.38600.40100.47800.1012900 | 29th Floor | 8d | 2027-05-17 | 2027-05-25 | 5507, 5373 |  | Zenith | 8683064 |
| 5509 | 36900.37000.37100.37700.38600.40100.47800.1013000 | 30th Floor | 8d | 2027-05-31 | 2027-06-08 | 5508, 5389 |  | Zenith | 8683054 |
| 5510 | 36900.37000.37100.37700.38600.40100.47800.1013100 | 31st Floor | 8d | 2027-06-14 | 2027-06-22 | 5509, 5405 |  | Zenith | 8683044 |
| 5511 | 36900.37000.37100.37700.38600.40100.47800.1013200 | 32nd Floor | 8d | 2027-06-28 | 2027-07-06 | 5510, 5421 |  | Zenith | 8683034 |
| 5512 | 36900.37000.37100.37700.38600.40100.47800.1013300 | 33rd Floor | 8d | 2027-07-12 | 2027-07-20 | 5511, 5437 |  | Zenith | 8683024 |
| 5513 | 36900.37000.37100.37700.38600.40100.47800.1013400 | 34th Floor | 8d | 2027-07-26 | 2027-08-03 | 5512, 5453 |  | Zenith | 8683014 |
| 5514 | 36900.37000.37100.37700.38600.40100.47800.1013500 | 35th Floor | 8d | 2027-08-19 | 2027-08-27 | 5513, 5469 |  | Zenith | 8683004 |
| 5515 | 36900.37000.37100.37700.38600.40100.47800.1013600 | 36th Floor | 8d | 2027-08-27 | 2027-09-04 | 5514 |  | Zenith | 8682994 |

| ID | WBS | Task | Duration | Start | Finish | Predecessors | Constraint | Calendar | Unique_Task_ID |
| --- | --- | --- | --- | --- | --- | --- | --- | --- | --- |
| 5516 | 36900.37000.37100.37700.38600.40100.120100 | **Common Area Finishing** | 393d | 2026-09-17 | 2028-01-13 |  | start no earlier than 2026-09-17 | Zenith | 8651664 |
| 5517 | 36900.37000.37100.37700.38600.40100.120100.1013700 | Masonary Work | 40d | 2026-09-17 | 2026-10-27 | 5133 |  | Zenith | 8682984 |
| 5518 | 36900.37000.37100.37700.38600.40100.120100.1013800 | Fire sprinkler pipe fixing | 40d | 2026-10-27 | 2027-01-20 | 5517 |  | Zenith | 8682974 |
| 5519 | 36900.37000.37100.37700.38600.40100.120100.1013900 | Corridoor, staircase, shaft Plaster & whitewash | 120d | 2026-10-27 | 2027-04-10 | 5517 |  | Zenith | 8682964 |
| 5520 | 36900.37000.37100.37700.38600.40100.120100.1014000 | Staircase railing fixing | 100d | 2026-10-27 | 2027-03-21 | 5517 |  | Zenith | 8682954 |
| 5521 | 36900.37000.37100.37700.38600.40100.120100.1014100 | Fire staircase flooring | 120d | 2026-12-21 | 2027-04-20 | 5520FF+30d |  | Zenith | 8682944 |
| 5522 | 36900.37000.37100.37700.38600.40100.120100.1014200 | Main staircase flooring | 120d | 2026-12-21 | 2027-04-20 | 5520FF+30d |  | Zenith | 8682934 |
| 5523 | 36900.37000.37100.37700.38600.40100.120100.1014300 | Fire door work | 45d | 2027-04-20 | 2027-06-04 | 5521 |  | Zenith | 8682924 |
| 5524 | 36900.37000.37100.37700.38600.40100.120100.1014400 | Lobby flooring & Corridor | 120d | 2027-01-20 | 2027-05-20 | 5522FF+30d |  | Zenith | 8682914 |
| 5525 | 36900.37000.37100.37700.38600.40100.120100.1014500 | Ceiling & wall putty | 120d | 2027-06-02 | 2027-09-30 | 5523FF+15d, 5524FF+30d, 5470FF+30d |  | Zenith | 8682904 |
| 5526 | 36900.37000.37100.37700.38600.40100.120100.1014600 | Electrical wiring work | 120d | 2027-06-17 | 2027-10-15 | 5525FF+15d |  | Zenith | 8682894 |
| 5527 | 36900.37000.37100.37700.38600.40100.120100.1014700 | Ceiling & wall painting | 120d | 2027-07-07 | 2027-12-19 | 5518FS+20d, 5525SS+20d, 5526FF+20d |  | Zenith | 8682884 |
| 5528 | 36900.37000.37100.37700.38600.40100.120100.1014800 | Light fixture supply & installation | 45d | 2027-10-15 | 2028-01-13 | 5525, 5527FF+25d |  | Zenith | 8682874 |
| 5529 | 36900.37000.37100.37700.121100 | **MEP work** | 352.75d | 2027-01-25 | 2028-02-26 |  | start no earlier than 2027-01-25 | Zenith | 8651904 |
| 5530 | 36900.37000.37100.37700.121100.125200 | **Electrical work** | 240d | 2027-05-18 | 2028-02-26 |  | start no earlier than 2027-05-18 | Zenith | 8652074 |
| 5531 | 36900.37000.37100.37700.121100.125200.836400 | Cable Tray | 90d | 2027-05-18 | 2027-08-15 | 4857 |  | Zenith | 8722874 |
| 5532 | 36900.37000.37100.37700.121100.125200.836500 | Cable, main & sub main | 60d | 2027-07-02 | 2027-08-30 | 5531SS+45d |  | Zenith | 8722864 |
| 5533 | 36900.37000.37100.37700.121100.125200.836600 | LT panel & DB | 90d | 2027-08-16 | 2027-12-28 | 5531 |  | Zenith | 8722854 |
| 5534 | 36900.37000.37100.37700.121100.125200.836700 | Rising main | 90d | 2027-08-31 | 2028-01-12 | 5531FS+15d |  | Zenith | 8722844 |
| 5535 | 36900.37000.37100.37700.121100.125200.836800 | Earthing Works | 60d | 2027-09-05 | 2027-12-18 | 5531FS+20d |  | Zenith | 8722834 |
| 5536 | 36900.37000.37100.37700.121100.125200.836900 | Energy meter | 60d | 2027-12-29 | 2028-02-26 | 5532, 5535FS+10d |  | Zenith | 8722824 |
| 5537 | 36900.37000.37100.37700.121100.125200.837000 | HVAC & Exhast fan | 120d | 2027-08-11 | 2028-01-22 | 5531FS-5d |  | Zenith | 8722814 |
| 5538 | 36900.37000.37100.37700.121100.125200.837100 | FTTH | 60d | 2027-10-30 | 2028-02-11 | 5533FS-15d |  | Zenith | 8722804 |
| 5539 | 36900.37000.37100.37700.121100.125200.837200 | Security System - FA & PA | 60d | 2027-12-29 | 2028-02-26 | 5533, 5534FF+10d, 5537FF+2d, 5538FF |  | Zenith | 8722794 |

| ID | WBS | Task | Duration | Start | Finish | Predecessors | Constraint | Calendar | Unique_Task_ID |
| --- | --- | --- | --- | --- | --- | --- | --- | --- | --- |
| 5540 | 36900.37000.37100.37700.121100.164500 | **Plumbing work** | 175d | 2027-06-29 | 2028-02-03 |  | start no earlier than 2027-06-29 | Zenith | 8652874 |
| 5541 | 36900.37000.37100.37700.121100.164500.837300 | Terrace looping | 45d | 2027-06-29 | 2027-08-12 | 5477 |  | Zenith | 8722784 |
| 5542 | 36900.37000.37100.37700.121100.164500.837400 | Shaft Plumbing | 70d | 2027-08-13 | 2027-10-21 | 5541, 5519FS-30d |  | Zenith | 8722774 |
| 5543 | 36900.37000.37100.37700.121100.164500.837500 | CP sanitary fixture supply | 45d | 2027-10-22 | 2028-01-19 | 5542 |  | Zenith | 8722764 |
| 5544 | 36900.37000.37100.37700.121100.164500.837600 | Cold & flushing water supply | 45d | 2027-10-22 | 2028-01-19 | 5542 |  | Zenith | 8722754 |
| 5545 | 36900.37000.37100.37700.121100.164500.837700 | Misc work | 30d | 2028-01-05 | 2028-02-03 | 5543FS-15d, 5544FS-15d |  | Zenith | 8722744 |
| 5546 | 36900.37000.37100.37700.121100.211100 | **Fire fighting work** | 259.75d | 2027-01-25 | 2027-10-11 |  | start no earlier than 2027-01-25 | Zenith | 8654054 |
| 5547 | 36900.37000.37100.37700.121100.211100.837800 | Fire hydrant work | 75d | 2027-01-25 | 2027-04-10 | 5519SS+45d |  | Zenith | 8722734 |
| 5548 | 36900.37000.37100.37700.121100.211100.837900 | Pipe connection & sprinkler installation | 45d | 2027-08-28 | 2027-10-11 | 5547FS+1d, 5550FF+15d |  | Zenith | 8722724 |
| 5549 | 36900.37000.37100.37700.121100.211100.838000 | Shaft Downtake works | 60d | 2027-06-29 | 2027-08-27 | 5477, 5519FS-60d |  | Zenith | 8722714 |
| 5550 | 36900.37000.37100.37700.121100.211100.838100 | Connection to pump room | 30d | 2027-08-28 | 2027-09-26 | 5549 |  | Zenith | 8722704 |
| 5551 | 36900.37000.37100.37700.121100.219200 | **Lift work** | 145d | 2027-05-25 | 2027-10-17 |  | start no earlier than 2027-05-25 | Zenith | 8656604 |
| 5552 | 36900.37000.37100.37700.121100.219200.838200 | Lift Shaft/Pit Handover | 40d | 2027-05-25 | 2027-07-04 | 4896FS+5d |  | Zenith | 8722694 |
| 5553 | 36900.37000.37100.37700.121100.219200.838300 | Lift installation work | 60d | 2027-07-04 | 2027-09-02 | 5552 |  | Zenith | 8722684 |
| 5554 | 36900.37000.37100.37700.121100.219200.838400 | Lift testing and commissioning | 45d | 2027-09-02 | 2027-10-17 | 5553, 5524 |  | Zenith | 8722674 |
| 5555 | 36900.37000.37100.37700.226200 | **Basement lobby** | 80d | 2027-07-19 | 2027-10-07 |  | start no earlier than 2027-07-19 | Zenith | 8656894 |
| 5556 | 36900.37000.37100.37700.226200.406900 | Basement lobby | 80d | 2027-07-19 | 2027-10-07 | 5552FS+15d, 4669FS+15d, 4670FS+15d |  | Zenith | 8731324 |
| 5557 | 36900.37000.37100.37700.222100 | **External Paint Works** | 80d | 2027-09-03 | 2028-01-06 |  | start no earlier than 2027-09-03 | Zenith | 8656704 |
| 5558 | 36900.37000.37100.37700.222100.407000 | Surface prepration with Primer | 60d | 2027-09-04 | 2027-12-18 | 4896FS+2d, 5515 |  | Zenith | 8731314 |
| 5559 | 36900.37000.37100.37700.222100.407100 | External Painting (Texture & first coat) | 80d | 2027-09-03 | 2028-01-06 | 5558FF+10d, 5471 |  | Zenith | 8731304 |
| 5560 | 36900.37000.37100.37700.303500 | OC Application/Readiness | 2d | 2028-12-23 | 2028-12-25 | 5637FF, 4852FF+348d, 5559FF, 5548FF, 5545FF, 5556FF, 5554FF, 5539FF, 5536FF, 5478FF, 5475FF, 5525FF+0.25d, 5515FF, 5471FF+0.25d, 5578FF, 5585FF, 5591FF, 5595FF, 5587FF+0.25d |  | Zenith | 8735324 |
| 5561 | 36900.37000.37100.37700.303600 | OC Receipt | 60d | 2028-12-25 | 2029-02-23 | 5560 |  | Zenith | 8735314 |
| 5562 | 36900.37000.37100.37700.126500 | **Post OC activities** | 657d | 2028-01-28 | 2030-02-13 |  | start no earlier than 2028-01-28 | Zenith | 8652044 |
| 5563 | 36900.37000.37100.37700.126500.407200 | CP & Sanitaryware | 150d | 2029-02-23 | 2029-07-23 | 5561 |  | Zenith | 8731294 |
| 5564 | 36900.37000.37100.37700.126500.407300 | Electrical Fixtures And Fittings | 150d | 2029-02-23 | 2029-07-23 | 5561 |  | Zenith | 8731284 |
| 5565 | 36900.37000.37100.37700.126500.407400 | Final coat paint external | 100d | 2029-02-23 | 2029-06-03 | 5561 |  | Zenith | 8731274 |
| 5566 | 36900.37000.37100.37700.126500.407500 | Final Coat Paint Internal | 150d | 2029-02-23 | 2029-07-23 | 5561, 5474 |  | Zenith | 8731264 |
| 5567 | 36900.37000.37100.37700.126500.407600 | Balcony Railing Glass Fixing | 120d | 2029-07-23 | 2030-01-04 | 5566, 5515FS+30d |  | Zenith | 8731254 |
| 5568 | 36900.37000.37100.37700.126500.407700 | MEP | 150d | 2028-01-28 | 2028-06-26 | 5528FS+15d |  | Zenith | 8731244 |
| 5569 | 36900.37000.37100.37700.126500.407800 | Wooden Flooring | 180d | 2029-02-08 | 2029-08-07 | 5566FF+15d |  | Zenith | 8731234 |
| 5570 | 36900.37000.37100.37700.126500.407900 | Split AC Units installation | 100d | 2029-08-22 | 2030-01-14 | 5569FS+15d |  | Zenith | 8731224 |
| 5571 | 36900.37000.37100.37700.126500.408000 | Misc. works (Modular Kitchen & others) | 180d | 2029-07-03 | 2030-02-13 | 5570FF+30d |  | Zenith | 8731214 |
| 5572 | 36900.37000.37100.37700.303700 | Offer To Possession | 182d | 2029-07-23 | 2030-03-07 | 5561FS+150d, 5563FF+20d, 5564FF+20d, 5565FS+20d, 5570FF+10d, 5568FF+30d, 5567FF+15d, 5571FF+15d |  | Zenith | 8735304 |

| ID | WBS | Task | Duration | Start | Finish | Predecessors | Complete | Constraint | Calendar | Unique_Task_ID |
| --- | --- | --- | --- | --- | --- | --- | --- | --- | --- | --- |
| 5573 | 36900.37000.37100.127400 | **NTA** | 1226d | 2025-03-20 | 2028-12-24 |  | 4% | start no earlier than 2025-03-20 | Zenith | 8652064 |
| 5574 | 36900.37000.37100.127400.139200 | **Around Tower 04, 02 & 01** | 1221d | 2025-03-20 | 2028-12-19 |  | 2% | start no earlier than 2025-03-20 | Zenith | 8652594 |
| 5575 | 36900.37000.37100.127400.139200.239200 | NTA Core & Shell - Area 01 | 395d | 2025-03-20 | 2026-10-26 | 32FS+73d | 17% | start no earlier than 2025-03-20 | Zenith | 8731204 |
| 5576 | 36900.37000.37100.127400.139200.408100 | NTA MEP - AR 01 | 400d | 2025-11-19 | 2027-02-21 | 5575FF+70d |  |  | Zenith | 263152 |
| 5577 | 36900.37000.37100.127400.139200.408200 | NTA Finishes, External Development & Misc.- Ar 01 | 400d | 2027-05-20 | 2028-08-06 | 5575FF+560d |  |  | Zenith | 8731194 |
| 5578 | 36900.37000.37100.127400.139200.408300 | NTA Core & Shell - Area 02 | 430d | 2026-09-15 | 2028-02-17 | 2132FF+270d |  |  | Zenith | 8731184 |
| 5579 | 36900.37000.37100.127400.139200.408400 | NTA MEP - AR 02 | 400d | 2027-03-29 | 2028-06-16 | 5578FF+120d |  |  | Zenith | 8731174 |
| 5580 | 36900.37000.37100.127400.139200.408500 | NTA Finishes, External Development & Misc. - Ar 02 | 380d | 2027-09-07 | 2028-12-19 | 5577FF+90d |  |  | Zenith | 8731164 |
| 5581 | 36900.37000.37100.127400.139300 | **Around Tower 03, 05 & 06** | 1220d | 2025-03-26 | 2028-12-24 |  | 6% | start no earlier than 2025-03-26 | Zenith | 8652604 |
| 5582 | 36900.37000.37100.127400.139300.239100 | NTA Core & Shell - Area 03 | 450d | 2025-03-26 | 2026-09-12 | 2821FF+90d | 37% |  | Zenith | 8731154 |
| 5583 | 36900.37000.37100.127400.139300.408600 | NTA MEP - AR 03 | 300d | 2027-04-06 | 2028-03-15 | 5582FF+460d |  |  | Zenith | 8731144 |
| 5584 | 36900.37000.37100.127400.139300.408700 | NTA Finishes & External Development - Ar 03 | 400d | 2027-03-07 | 2028-05-24 | 5582FF+90d, 5583FF+70d |  |  | Zenith | 8731134 |
| 5585 | 36900.37000.37100.127400.139300.408800 | NTA Core & Shell - Area 04 | 430d | 2026-09-27 | 2028-02-29 | 4896FF+240d |  |  | Zenith | 8731124 |
| 5586 | 36900.37000.37100.127400.139300.408900 | NTA MEP - AR 04 | 400d | 2027-03-11 | 2028-05-29 | 5585FF+90d |  |  | Zenith | 8731114 |
| 5587 | 36900.37000.37100.127400.139300.409000 | NTA Finishes & External Development - Ar 04 | 444d | 2027-07-10 | 2028-12-24 | 5580FF+5d, 5584FF+120d, 5585FF+75d, 5586FF+25d |  |  | Zenith | 8731104 |
| 5588 | 36900.37000.37100.217100 | **STP** | 325d | 2027-03-11 | 2028-03-14 |  |  | start no earlier than 2027-03-11 | Zenith | 8656494 |
| 5589 | 36900.37000.37100.217100.303800 | Structure | 160d | 2027-03-11 | 2027-08-17 | 5575FS+90d |  |  | Zenith | 8735294 |
| 5590 | 36900.37000.37100.217100.303900 | Finishes & Misc. | 60d | 2027-10-17 | 2028-01-29 | 5589FS+60d |  |  | Zenith | 8735284 |
| 5591 | 36900.37000.37100.217100.304000 | Electromechanical | 60d | 2028-01-15 | 2028-03-14 | 5590FS-15d |  |  | Zenith | 8735274 |
| 5592 | 36900.37000.37100.217000 | **WTP** | 270d | 2027-04-10 | 2028-02-18 |  |  | start no earlier than 2027-04-10 | Zenith | 8656504 |
| 5593 | 36900.37000.37100.217000.304100 | Structure | 150d | 2027-04-10 | 2027-09-06 | 5589SS+30d |  |  | Zenith | 8735264 |
| 5594 | 36900.37000.37100.217000.304200 | Finishing & Misc. | 60d | 2027-09-07 | 2027-12-20 | 5593 |  |  | Zenith | 8735254 |
| 5595 | 36900.37000.37100.217000.304300 | Electromechanical | 60d | 2027-12-21 | 2028-02-18 | 5594 |  |  | Zenith | 8735244 |
| 5596 | 36900.37000.37100.216900 | **Club House** | 420d | 2027-02-15 | 2028-05-24 |  |  | start no earlier than 2027-02-15 | Zenith | 8656514 |
| 5597 | 36900.37000.37100.216900.304400 | Structure | 240d | 2027-02-15 | 2027-10-12 | 5582FS+110d |  |  | Zenith | 8735234 |
| 5598 | 36900.37000.37100.216900.304500 | Finishing & MEP | 120d | 2027-10-13 | 2028-03-25 | 5597 |  |  | Zenith | 8735224 |
| 5599 | 36900.37000.37100.216900.304600 | Facade works/Misclleneous | 60d | 2028-03-26 | 2028-05-24 | 5598 |  |  | Zenith | 8735214 |

| ID | WBS | Task | Duration | Start | Finish | Predecessors | Complete | Constraint | Calendar | Unique_Task_ID |
| --- | --- | --- | --- | --- | --- | --- | --- | --- | --- | --- |
| 5600 | 36900.37000.51000 | **EWS** | 1017d | 2025-06-18 | 2028-07-13 |  | 6% | start no earlier than 2025-06-18 | Zenith | 8652544 |
| 5601 | 36900.37000.51000.286200 | Sub-Structure | 1d | 2025-11-19 | 2025-11-19 | 4637FS+31d |  |  | Zenith | 8735674 |
| 5602 | 36900.37000.51000.165500 | **Sub-Structure** | 226d | 2025-06-18 | 2026-03-07 |  | 50% | start no earlier than 2025-06-18 | Indian Calendar | 8735684 |
| 5603 | 36900.37000.51000.165500.245000 | Excavation (Soil Dressing) | 48d | 2025-06-18 | 2025-08-10 | 4637FS+32d, 5601FS-49d | 100% | start no earlier than 2025-06-18 | Zenith | 8735694 |
| 5604 | 36900.37000.51000.165500.245100 | Foundation | 39d | 2025-07-07 | 2025-09-30 | 5603FS-34d | 100% | start no earlier than 2025-07-07 | Zenith | 8950034 |
| 5605 | 36900.37000.51000.165500.245200 | Tie Beam Level | 66d | 2025-10-01 | 2026-01-31 | 5604 | 10% | start no earlier than 2025-10-01 | Zenith | 8950054 |
| 5606 | 36900.37000.51000.165500.304700 | Dummy Basement Roof | 35d | 2026-02-01 | 2026-03-07 | 5605 |  |  | Zenith | 8950064 |
| 5607 | 36900.37000.51000.286300 | Super-Structure | 1d | 2026-03-08 | 2026-03-08 | 5606 |  |  | Zenith | 8735664 |
| 5608 | 36900.37000.51000.51300 | **Super - Structure** | 444d | 2026-03-09 | 2027-08-08 |  |  | start no earlier than 2026-03-09 | Indian Calendar | 8735665 |
| 5609 | 36900.37000.51000.51300.304800 | Ground Flr. Roof | 30d | 2026-03-09 | 2026-04-07 | 5607, 5606FS+1d |  |  | Zenith | 8950074 |
| 5610 | 36900.37000.51000.51300.304900 | School 1st Roof | 30d | 2026-04-08 | 2026-05-07 | 5609 |  |  | Zenith | 8950084 |
| 5611 | 36900.37000.51000.51300.305000 | School 2nd Roof | 30d | 2026-05-08 | 2026-06-06 | 5610 |  |  | Zenith | 8950094 |
| 5612 | 36900.37000.51000.51300.305100 | School 3rd Roof | 30d | 2026-06-07 | 2026-07-06 | 5611 |  |  | Zenith | 8950104 |
| 5613 | 36900.37000.51000.51300.305200 | Service Flr. Roof | 30d | 2026-07-07 | 2026-08-05 | 5612 |  |  | Zenith | 8950114 |
| 5614 | 36900.37000.51000.51300.305300 | 5th Floor Roof | 30d | 2026-08-06 | 2026-09-04 | 5613 |  |  | Zenith | 8950124 |
| 5615 | 36900.37000.51000.51300.305400 | 6th Floor Roof | 21d | 2026-09-05 | 2026-09-25 | 5614 |  |  | Zenith | 8950134 |
| 5616 | 36900.37000.51000.51300.305500 | 7th Floor Roof | 13d | 2026-09-26 | 2026-10-08 | 5615 |  |  | Zenith | 8950144 |
| 5617 | 36900.37000.51000.51300.305600 | 8th Floor Roof | 13d | 2026-10-09 | 2026-10-21 | 5616 |  |  | Zenith | 8950154 |
| 5618 | 36900.37000.51000.51300.305700 | 9th Floor Roof | 13d | 2026-10-22 | 2026-12-18 | 5617 |  |  | Zenith | 8950164 |
| 5619 | 36900.37000.51000.51300.305800 | 10th Floor Roof | 13d | 2026-12-19 | 2026-12-31 | 5618 |  |  | Zenith | 8950174 |
| 5620 | 36900.37000.51000.51300.305900 | 11th Floor Roof | 13d | 2027-01-01 | 2027-01-13 | 5619 |  |  | Zenith | 8950184 |
| 5621 | 36900.37000.51000.51300.306000 | 12th Floor Roof | 13d | 2027-01-14 | 2027-01-26 | 5620 |  |  | Zenith | 8950194 |
| 5622 | 36900.37000.51000.51300.306100 | 13th Floor Roof | 13d | 2027-01-27 | 2027-02-08 | 5621 |  |  | Zenith | 8950204 |
| 5623 | 36900.37000.51000.51300.306200 | 14th Floor Roof | 13d | 2027-02-09 | 2027-02-21 | 5622 |  |  | Zenith | 8950214 |
| 5624 | 36900.37000.51000.51300.306300 | 15th Floor Roof | 13d | 2027-02-22 | 2027-03-06 | 5623 |  |  | Zenith | 8950224 |
| 5625 | 36900.37000.51000.51300.306400 | 16th Floor Roof | 13d | 2027-03-07 | 2027-03-19 | 5624 |  |  | Zenith | 8950234 |
| 5626 | 36900.37000.51000.51300.306500 | 17th Floor Roof | 13d | 2027-03-20 | 2027-04-01 | 5625 |  |  | Zenith | 8950244 |
| 5627 | 36900.37000.51000.51300.306600 | 18th Floor Roof | 13d | 2027-04-02 | 2027-04-14 | 5626 |  |  | Zenith | 8950254 |
| 5628 | 36900.37000.51000.51300.306700 | 19th Floor Roof | 13d | 2027-04-15 | 2027-04-27 | 5627 |  |  | Zenith | 8950264 |
| 5629 | 36900.37000.51000.51300.306800 | 20th Floor Roof | 13d | 2027-04-28 | 2027-05-10 | 5628 |  |  | Zenith | 8950274 |
| 5630 | 36900.37000.51000.51300.306900 | Terrace Slab | 45d | 2027-05-11 | 2027-06-24 | 5629 |  |  | Zenith | 8950284 |
| 5631 | 36900.37000.51000.51300.307000 | Above Terrace Activities | 45d | 2027-06-25 | 2027-08-08 | 5630 |  |  | Zenith | 8950294 |
| 5634 | 36900.37000.51000.286400 | Masonary & Plaster | 230d | 2027-04-06 | 2028-01-05 | 5630FF+150d |  |  | Zenith | 552912 |
| 5635 | 36900.37000.51000.286500 | Finishes | 230d | 2027-05-16 | 2028-02-14 | 5630FF+190d |  |  | Zenith | 8735654 |
| 5636 | 36900.37000.51000.286600 | MEP | 90d | 2027-09-28 | 2028-02-09 | 5631FF+140d |  |  | Zenith | 8735644 |
| 5637 | 36900.37000.51000.286700 | Misclleneous | 150d | 2028-02-15 | 2028-07-13 | 5634, 5635, 5636 |  |  | Zenith | 8735634 |

| ID | WBS | Task | Duration | Start | Finish | Predecessors | Complete | Constraint | Calendar | Unique_Task_ID |
| --- | --- | --- | --- | --- | --- | --- | --- | --- | --- | --- |
| 5638 | 36900.37000.45900 | **Phase 1A Commercial & Studio Appartment** | 1747d | 2024-05-17 | 2029-09-09 |  | 6% | start no earlier than 2024-05-17 | Zenith | 8648004 |
| 5639 | 36900.37000.45900.47500 | **Tower** | 1747d | 2024-05-17 | 2029-09-09 |  | 5% | start no earlier than 2024-05-17 | Zenith | 8648074 |
| 5640 | 36900.37000.45900.47500.116600 | **Sub-Structure Works** | 661d | 2024-05-17 | 2026-05-07 |  | 70% | start no earlier than 2024-05-17 | Zenith | 8651634 |
| 5641 | 36900.37000.45900.47500.116600.211000 | **Soil Bed Preparation** | 227d | 2024-05-17 | 2025-02-12 |  | 100% | start no earlier than 2024-05-17 | Zenith | 8656594 |
| 5642 | 36900.37000.45900.47500.116600.211000.230800 | Soldier Piling shop drawing approval | 103d | 2024-05-17 | 2024-08-27 |  | 100% | start no earlier than 2024-06-02 | Zenith | 8722664 |
| 5643 | 36900.37000.45900.47500.116600.211000.230900 | Mobilization & Soldier Piling with Excavation | 79d | 2024-06-28 | 2025-02-09 | 5642 | 100% | start no earlier than 2024-06-28 | Zenith | 8722654 |
| 5644 | 36900.37000.45900.47500.116600.211000.231000 | Soil dressing & ATT | 17d | 2025-01-21 | 2025-02-12 | 5643FS-14d | 100% | start no earlier than 2025-01-21 | Zenith | 8722644 |
| 5645 | 36900.37000.45900.47500.116600.124500 | **Structure Works** | 324d | 2025-01-24 | 2025-12-28 |  | 91% | start no earlier than 2025-01-24 | Zenith | 8651944 |
| 5646 | 36900.37000.45900.47500.116600.124500.139400 | **Raft Foundation** | 66d | 2025-01-24 | 2025-03-30 |  | 100% | start no earlier than 2025-01-24 | Zenith | 8652694 |
| 5647 | 36900.37000.45900.47500.116600.124500.139400.257800 | PCC | 9.95d | 2025-01-24 | 2025-03-09 | 5643FS-4.95d | 100% | start no earlier than 2025-01-24 | Zenith | 8682864 |
| 5648 | 36900.37000.45900.47500.116600.124500.139400.257700 | Column/SW layout marking | 8d | 2025-03-04 | 2025-03-12 | 5647FS+15.05d | 100% | start no earlier than 2025-03-04 | Zenith | 8682854 |
| 5649 | 36900.37000.45900.47500.116600.124500.139400.257600 | Reinforcement | 10d | 2025-03-06 | 2025-03-29 | 5648SS-1d | 100% | start no earlier than 2025-03-06 | Zenith | 8682844 |
| 5650 | 36900.37000.45900.47500.116600.124500.139400.257500 | Formwork (Conventional) | 4d | 2025-03-26 | 2025-03-29 | 5649FF+2d | 100% | start no earlier than 2025-03-26 | Zenith | 8682834 |
| 5651 | 36900.37000.45900.47500.116600.124500.139400.257400 | Concreting | 3d | 2025-03-28 | 2025-03-30 | 5650 | 100% | start no earlier than 2025-03-28 | Zenith | 8682824 |
| 5652 | 36900.37000.45900.47500.116600.124500.136800 | **Basement 02 Roof Slab** | 173d | 2025-04-15 | 2025-10-04 |  | 100% | start no earlier than 2025-04-15 | Zenith | 8652214 |
| 5653 | 36900.37000.45900.47500.116600.124500.136800.257300 | Column/SW Reinforcement | 18d | 2025-04-15 | 2025-05-18 | 5651 | 100% | start no earlier than 2025-04-15 | Zenith | 8682814 |
| 5654 | 36900.37000.45900.47500.116600.124500.136800.257200 | SW Formwork (Conventional) | 16d | 2025-04-21 | 2025-07-30 | 5653FF+4d | 100% | start no earlier than 2025-04-21 | Zenith | 8682804 |
| 5655 | 36900.37000.45900.47500.116600.124500.136800.257100 | Column/SW Concreting | 26d | 2025-04-15 | 2025-09-05 | 5654FF+4d | 100% | start no earlier than 2025-04-15 | Zenith | 8682794 |
| 5656 | 36900.37000.45900.47500.116600.124500.136800.257000 | Slab Formwork (Conventional) | 21d | 2025-07-07 | 2025-09-29 | 5655FF+5d | 100% | start no earlier than 2025-07-07 | Zenith | 8682784 |
| 5657 | 36900.37000.45900.47500.116600.124500.136800.256900 | Slab Reinforcement + Conduting | 14d | 2025-07-18 | 2025-09-30 | 5656FS-74d | 100% | start no earlier than 2025-07-18 | Zenith | 8682774 |
| 5658 | 36900.37000.45900.47500.116600.124500.136800.256800 | Concreting | 6d | 2025-08-02 | 2025-10-04 | 5657FS-61d | 100% | start no earlier than 2025-08-02 | Zenith | 8682764 |
| 5659 | 36900.37000.45900.47500.116600.124500.139500 | **Basement 01 Roof Slab** | 104d | 2025-09-01 | 2025-12-28 |  | 66% | start no earlier than 2025-09-01 | Zenith | 8652194 |
| 5660 | 36900.37000.45900.47500.116600.124500.139500.256700 | Column/SW Reinforcement | 15d | 2025-09-01 | 2025-11-19 | 5658FS-41d | 93% | start no earlier than 2025-09-01 | Zenith | 8682754 |
| 5661 | 36900.37000.45900.47500.116600.124500.139500.256600 | SW Formwork (Conventional) | 10d | 2025-09-05 | 2025-11-23 | 5660FF+4d | 90% |  | Zenith | 8682744 |
| 5662 | 36900.37000.45900.47500.116600.124500.139500.256500 | Column/SW Concreting | 8d | 2025-09-07 | 2025-11-27 | 5661FF+4d | 87% |  | Zenith | 8682734 |
| 5663 | 36900.37000.45900.47500.116600.124500.139500.1014900 | Slab Formwork (Conventional) | 8d | 2025-12-17 | 2025-12-24 | 5662FF+12d |  |  | Zenith | 8682724 |
| 5664 | 36900.37000.45900.47500.116600.124500.139500.1015000 | Slab Reinforcement + Conduting | 3d | 2025-12-25 | 2025-12-27 | 5663 |  |  | Zenith | 8682714 |
| 5665 | 36900.37000.45900.47500.116600.124500.139500.1015100 | Concreting | 1d | 2025-12-28 | 2025-12-28 | 5664 |  |  | Zenith | 8682704 |

| ID | WBS | Task | Duration | Start | Finish | Predecessors | Constraint | Calendar | Unique_Task_ID |
| --- | --- | --- | --- | --- | --- | --- | --- | --- | --- |
| 5666 | 36900.37000.45900.47500.116600.210900 | **Substructure Finishes** | 110d | 2026-01-18 | 2026-05-07 |  | start no earlier than 2026-01-18 | Zenith | 8653354 |
| 5667 | 36900.37000.45900.47500.116600.210900.838500 | Masonary Work | 30d | 2026-01-28 | 2026-02-26 | 5665FS+30d |  | Zenith | 8722634 |
| 5668 | 36900.37000.45900.47500.116600.210900.838600 | Plaster Work | 30d | 2026-02-27 | 2026-03-28 | 5667 |  | Zenith | 8722624 |
| 5669 | 36900.37000.45900.47500.116600.210900.838700 | Structural Steel work | 45d | 2026-01-18 | 2026-03-03 | 5665FS+20d |  | Zenith | 8722614 |
| 5670 | 36900.37000.45900.47500.116600.210900.838800 | White Wash | 30d | 2026-04-08 | 2026-05-07 | 5668FS+10d |  | Zenith | 8722604 |
| 5671 | 36900.37000.45900.47500.49100 | **Superstructure** | 767.25d | 2025-12-29 | 2028-05-04 |  | start no earlier than 2025-12-29 | Zenith | 8648174 |
| 5672 | 36900.37000.45900.47500.49100.51700 | **RCC structure** | 286d | 2025-12-29 | 2026-10-10 |  | start no earlier than 2025-12-29 | Zenith | 8648234 |
| 5673 | 36900.37000.45900.47500.49100.51700.139600 | **GF Roof Slab (Retail)** | 25d | 2025-12-29 | 2026-01-22 |  | start no earlier than 2025-12-29 | Zenith | 8652174 |
| 5674 | 36900.37000.45900.47500.49100.51700.139600.1015200 | Column/SW Reinforcement | 8d | 2025-12-29 | 2026-01-05 | 5665 |  | Zenith | 8682694 |
| 5675 | 36900.37000.45900.47500.49100.51700.139600.1015300 | SW Formwork (Conventional) | 8d | 2026-01-02 | 2026-01-09 | 5674FF+4d |  | Zenith | 8682684 |
| 5676 | 36900.37000.45900.47500.49100.51700.139600.1015400 | Column/SW Concreting | 8d | 2026-01-06 | 2026-01-13 | 5675FF+4d |  | Zenith | 8682674 |
| 5677 | 36900.37000.45900.47500.49100.51700.139600.1015500 | Slab Formwork (Conventional) | 8d | 2026-01-11 | 2026-01-18 | 5676FF+5d |  | Zenith | 8682664 |
| 5678 | 36900.37000.45900.47500.49100.51700.139600.1015600 | Slab Reinforcement + Conduting | 3d | 2026-01-19 | 2026-01-21 | 5677 |  | Zenith | 8682654 |
| 5679 | 36900.37000.45900.47500.49100.51700.139600.1015700 | Concreting | 1d | 2026-01-22 | 2026-01-22 | 5678 |  | Zenith | 8682644 |
| 5680 | 36900.37000.45900.47500.49100.51700.139700 | **1st Roof Slab (Retail)** | 24d | 2026-01-23 | 2026-02-15 |  | start no earlier than 2026-01-23 | Zenith | 8652184 |
| 5681 | 36900.37000.45900.47500.49100.51700.139700.1015800 | Column/SW Reinforcement | 8d | 2026-01-23 | 2026-01-30 | 5679 |  | Zenith | 8682634 |
| 5682 | 36900.37000.45900.47500.49100.51700.139700.1015900 | SW Formwork (Conventional) | 8d | 2026-01-27 | 2026-02-03 | 5681FF+4d |  | Zenith | 8682624 |
| 5683 | 36900.37000.45900.47500.49100.51700.139700.1016000 | Column/SW Concreting | 8d | 2026-01-31 | 2026-02-07 | 5682FF+4d |  | Zenith | 8682614 |
| 5684 | 36900.37000.45900.47500.49100.51700.139700.1016100 | Slab Formwork (Conventional) | 8d | 2026-02-04 | 2026-02-11 | 5683FF+4d |  | Zenith | 8682604 |
| 5685 | 36900.37000.45900.47500.49100.51700.139700.1016200 | Slab Reinforcement + Conduting | 3d | 2026-02-12 | 2026-02-14 | 5684 |  | Zenith | 8682594 |
| 5686 | 36900.37000.45900.47500.49100.51700.139700.1016300 | Concreting | 1d | 2026-02-15 | 2026-02-15 | 5685 |  | Zenith | 8682584 |
| 5687 | 36900.37000.45900.47500.49100.51700.139800 | **2nd Roof Slab (Retail)** | 25d | 2026-02-16 | 2026-03-12 |  | start no earlier than 2026-02-16 | Zenith | 8652204 |
| 5688 | 36900.37000.45900.47500.49100.51700.139800.1016400 | Column/SW Reinforcement | 8d | 2026-02-16 | 2026-02-23 | 5686 |  | Zenith | 8682574 |
| 5689 | 36900.37000.45900.47500.49100.51700.139800.1016500 | SW Formwork (Conventional) | 8d | 2026-02-20 | 2026-02-27 | 5688FF+4d |  | Zenith | 8682564 |
| 5690 | 36900.37000.45900.47500.49100.51700.139800.1016600 | Column/SW Concreting | 8d | 2026-02-24 | 2026-03-03 | 5689FF+4d |  | Zenith | 8682554 |
| 5691 | 36900.37000.45900.47500.49100.51700.139800.1016700 | Slab Formwork (Conventional) | 8d | 2026-03-01 | 2026-03-08 | 5690FF+5d |  | Zenith | 8682544 |
| 5692 | 36900.37000.45900.47500.49100.51700.139800.1016800 | Slab Reinforcement + Conduting | 3d | 2026-03-09 | 2026-03-11 | 5691 |  | Zenith | 8682534 |
| 5693 | 36900.37000.45900.47500.49100.51700.139800.1016900 | Concreting | 1d | 2026-03-12 | 2026-03-12 | 5692 |  | Zenith | 8682524 |

| ID | WBS | Task | Duration | Start | Finish | Predecessors | Constraint | Calendar | Unique_Task_ID |
| --- | --- | --- | --- | --- | --- | --- | --- | --- | --- |
| 5694 | 36900.37000.45900.47500.49100.51700.187600 | **3rd Floor Roof Slab (Studio Appartments - 1st refurbished aluminium setup)** | 32d | 2026-03-13 | 2026-04-13 |  | start no earlier than 2026-03-13 | Zenith | 8652944 |
| 5695 | 36900.37000.45900.47500.49100.51700.187600.1017000 | Reinforcement | 18d | 2026-03-13 | 2026-03-30 | 5693 |  | Zenith | 8682514 |
| 5696 | 36900.37000.45900.47500.49100.51700.187600.1017100 | Conduiting | 18d | 2026-03-15 | 2026-04-01 | 5695FF+2d |  | Zenith | 8682504 |
| 5697 | 36900.37000.45900.47500.49100.51700.187600.1017200 | Formwork | 20d | 2026-03-23 | 2026-04-11 | 5696FF+10d |  | Zenith | 8682494 |
| 5698 | 36900.37000.45900.47500.49100.51700.187600.1017300 | Concreting | 1d | 2026-04-13 | 2026-04-13 | 5697FS+1d |  | Zenith | 8682484 |
| 5699 | 36900.37000.45900.47500.49100.51700.187700 | **4th Floor Roof Slab** | 12d | 2026-04-14 | 2026-04-25 |  | start no earlier than 2026-04-14 | Zenith | 8653344 |
| 5700 | 36900.37000.45900.47500.49100.51700.187700.1017400 | Reinforcement | 10d | 2026-04-14 | 2026-04-23 | 5698 |  | Zenith | 8682474 |
| 5701 | 36900.37000.45900.47500.49100.51700.187700.1017500 | Conduiting | 10d | 2026-04-14 | 2026-04-23 | 5700FF |  | Zenith | 8682464 |
| 5702 | 36900.37000.45900.47500.49100.51700.187700.1017600 | Formwork | 10d | 2026-04-14 | 2026-04-23 | 5701FF |  | Zenith | 8682454 |
| 5703 | 36900.37000.45900.47500.49100.51700.187700.1017700 | Concreting | 1d | 2026-04-25 | 2026-04-25 | 5702FS+1d |  | Zenith | 8682444 |
| 5704 | 36900.37000.45900.47500.49100.51700.187800 | **5th Floor Roof Slab** | 13d | 2026-04-26 | 2026-05-08 |  | start no earlier than 2026-04-26 | Zenith | 8653444 |
| 5705 | 36900.37000.45900.47500.49100.51700.187800.1017800 | Reinforcement | 12d | 2026-04-26 | 2026-05-07 | 5703 |  | Zenith | 8682434 |
| 5706 | 36900.37000.45900.47500.49100.51700.187800.1017900 | Conduiting | 12d | 2026-04-26 | 2026-05-07 | 5705FF |  | Zenith | 8682424 |
| 5707 | 36900.37000.45900.47500.49100.51700.187800.1018000 | Formwork | 12d | 2026-04-26 | 2026-05-07 | 5706FF |  | Zenith | 8682414 |
| 5708 | 36900.37000.45900.47500.49100.51700.187800.1018100 | Concreting | 1d | 2026-05-08 | 2026-05-08 | 5707 |  | Zenith | 8682404 |
| 5709 | 36900.37000.45900.47500.49100.51700.187900 | **6th Floor Roof Slab** | 14d | 2026-05-09 | 2026-05-22 |  | start no earlier than 2026-05-09 | Zenith | 8653734 |
| 5710 | 36900.37000.45900.47500.49100.51700.187900.1018200 | Reinforcement | 12d | 2026-05-09 | 2026-05-20 | 5708 |  | Zenith | 8682394 |
| 5711 | 36900.37000.45900.47500.49100.51700.187900.1018300 | Conduiting | 12d | 2026-05-09 | 2026-05-20 | 5710FF |  | Zenith | 8682384 |
| 5712 | 36900.37000.45900.47500.49100.51700.187900.1018400 | Formwork | 12d | 2026-05-09 | 2026-05-20 | 5711FF |  | Zenith | 8682374 |
| 5713 | 36900.37000.45900.47500.49100.51700.187900.1018500 | Concreting | 1d | 2026-05-22 | 2026-05-22 | 5712FS+1d |  | Zenith | 8682364 |
| 5714 | 36900.37000.45900.47500.49100.51700.188000 | **7th Floor Roof Slab** | 13d | 2026-05-23 | 2026-06-04 |  | start no earlier than 2026-05-23 | Zenith | 8654074 |
| 5715 | 36900.37000.45900.47500.49100.51700.188000.1018600 | Reinforcement | 12d | 2026-05-23 | 2026-06-03 | 5713 |  | Zenith | 8682354 |
| 5716 | 36900.37000.45900.47500.49100.51700.188000.1018700 | Conduiting | 12d | 2026-05-23 | 2026-06-03 | 5715FF |  | Zenith | 8682344 |
| 5717 | 36900.37000.45900.47500.49100.51700.188000.1018800 | Formwork | 12d | 2026-05-23 | 2026-06-03 | 5716FF |  | Zenith | 8682334 |
| 5718 | 36900.37000.45900.47500.49100.51700.188000.1018900 | Concreting | 1d | 2026-06-04 | 2026-06-04 | 5717 |  | Zenith | 8682324 |

| ID | WBS | Task | Duration | Start | Finish | Predecessors | Constraint | Calendar | Unique_Task_ID |
| --- | --- | --- | --- | --- | --- | --- | --- | --- | --- |
| 5719 | 36900.37000.45900.47500.49100.51700.188100 | **8th Floor Roof Slab** | 13d | 2026-06-05 | 2026-06-17 |  | start no earlier than 2026-06-05 | Zenith | 8654764 |
| 5720 | 36900.37000.45900.47500.49100.51700.188100.1019000 | Reinforcement | 12d | 2026-06-05 | 2026-06-16 | 5718 |  | Zenith | 8682314 |
| 5721 | 36900.37000.45900.47500.49100.51700.188100.1019100 | Conduiting | 12d | 2026-06-05 | 2026-06-16 | 5720FF |  | Zenith | 8682304 |
| 5722 | 36900.37000.45900.47500.49100.51700.188100.1019200 | Formwork | 12d | 2026-06-05 | 2026-06-16 | 5721FF |  | Zenith | 8682294 |
| 5723 | 36900.37000.45900.47500.49100.51700.188100.1019300 | Concreting | 1d | 2026-06-17 | 2026-06-17 | 5722 |  | Zenith | 8682284 |
| 5724 | 36900.37000.45900.47500.49100.51700.188200 | **9th Floor Roof Slab** | 13d | 2026-06-18 | 2026-06-30 |  | start no earlier than 2026-06-18 | Zenith | 8655074 |
| 5725 | 36900.37000.45900.47500.49100.51700.188200.1019400 | Reinforcement | 12d | 2026-06-18 | 2026-06-29 | 5723 |  | Zenith | 8682274 |
| 5726 | 36900.37000.45900.47500.49100.51700.188200.1019500 | Conduiting | 12d | 2026-06-18 | 2026-06-29 | 5725FF |  | Zenith | 8682264 |
| 5727 | 36900.37000.45900.47500.49100.51700.188200.1019600 | Formwork | 12d | 2026-06-18 | 2026-06-29 | 5726FF |  | Zenith | 8682254 |
| 5728 | 36900.37000.45900.47500.49100.51700.188200.1019700 | Concreting | 1d | 2026-06-30 | 2026-06-30 | 5727 |  | Zenith | 8682244 |
| 5729 | 36900.37000.45900.47500.49100.51700.188300 | **10th Floor Roof Slab** | 13d | 2026-07-01 | 2026-07-13 |  | start no earlier than 2026-07-01 | Zenith | 8655814 |
| 5730 | 36900.37000.45900.47500.49100.51700.188300.1019800 | Reinforcement | 12d | 2026-07-01 | 2026-07-12 | 5728 |  | Zenith | 8682234 |
| 5731 | 36900.37000.45900.47500.49100.51700.188300.1019900 | Conduiting | 12d | 2026-07-01 | 2026-07-12 | 5730FF |  | Zenith | 8682224 |
| 5732 | 36900.37000.45900.47500.49100.51700.188300.1020000 | Formwork | 12d | 2026-07-01 | 2026-07-12 | 5731FF |  | Zenith | 8682214 |
| 5733 | 36900.37000.45900.47500.49100.51700.188300.1020100 | Concreting | 1d | 2026-07-13 | 2026-07-13 | 5732 |  | Zenith | 8682204 |
| 5734 | 36900.37000.45900.47500.49100.51700.188400 | **11th Floor Roof Slab** | 13d | 2026-07-14 | 2026-07-26 |  | start no earlier than 2026-07-14 | Zenith | 8655924 |
| 5735 | 36900.37000.45900.47500.49100.51700.188400.1020200 | Reinforcement | 12d | 2026-07-14 | 2026-07-25 | 5733 |  | Zenith | 8682194 |
| 5736 | 36900.37000.45900.47500.49100.51700.188400.1020300 | Conduiting | 12d | 2026-07-14 | 2026-07-25 | 5735FF |  | Zenith | 8682184 |
| 5737 | 36900.37000.45900.47500.49100.51700.188400.1020400 | Formwork | 12d | 2026-07-14 | 2026-07-25 | 5736FF |  | Zenith | 8682174 |
| 5738 | 36900.37000.45900.47500.49100.51700.188400.1020500 | Concreting | 1d | 2026-07-26 | 2026-07-26 | 5737 |  | Zenith | 8682164 |
| 5739 | 36900.37000.45900.47500.49100.51700.188500 | **12th Floor Roof Slab** | 13d | 2026-07-27 | 2026-08-08 |  | start no earlier than 2026-07-27 | Zenith | 8656164 |
| 5740 | 36900.37000.45900.47500.49100.51700.188500.1020600 | Reinforcement | 12d | 2026-07-27 | 2026-08-07 | 5738 |  | Zenith | 8682154 |
| 5741 | 36900.37000.45900.47500.49100.51700.188500.1020700 | Conduiting | 12d | 2026-07-27 | 2026-08-07 | 5740FF |  | Zenith | 8682144 |
| 5742 | 36900.37000.45900.47500.49100.51700.188500.1020800 | Formwork | 12d | 2026-07-27 | 2026-08-07 | 5741FF |  | Zenith | 8682134 |
| 5743 | 36900.37000.45900.47500.49100.51700.188500.1020900 | Concreting | 1d | 2026-08-08 | 2026-08-08 | 5742 |  | Zenith | 8682124 |

| ID | WBS | Task | Duration | Start | Finish | Predecessors | Constraint | Calendar | Unique_Task_ID |
| --- | --- | --- | --- | --- | --- | --- | --- | --- | --- |
| 5744 | 36900.37000.45900.47500.49100.51700.188600 | **Terrace Slab** | 17d | 2026-08-09 | 2026-08-25 |  | start no earlier than 2026-08-09 | Zenith | 8656444 |
| 5745 | 36900.37000.45900.47500.49100.51700.188600.1021000 | Reinforcement | 7d | 2026-08-09 | 2026-08-15 | 5743 |  | Zenith | 8682114 |
| 5746 | 36900.37000.45900.47500.49100.51700.188600.1021100 | Conduiting | 7d | 2026-08-11 | 2026-08-17 | 5745FF+2d |  | Zenith | 8682104 |
| 5747 | 36900.37000.45900.47500.49100.51700.188600.1021200 | Formwork | 11d | 2026-08-12 | 2026-08-22 | 5746FF+5d |  | Zenith | 8682094 |
| 5748 | 36900.37000.45900.47500.49100.51700.188600.1021300 | Concreting | 2d | 2026-08-24 | 2026-08-25 | 5747FS+1d |  | Zenith | 8682084 |
| 5749 | 36900.37000.45900.47500.49100.51700.188700 | **OHT, Mumty & Machine Room, Parapet & Deck Slab** | 46d | 2026-08-26 | 2026-10-10 |  | start no earlier than 2026-08-26 | Zenith | 8656454 |
| 5750 | 36900.37000.45900.47500.49100.51700.188700.1021400 | Reinforcement | 26d | 2026-08-26 | 2026-09-20 | 5748 |  | Zenith | 8682074 |
| 5751 | 36900.37000.45900.47500.49100.51700.188700.1021500 | Flanges fixing & Conduiting | 17d | 2026-09-02 | 2026-09-18 | 5750SS+7d |  | Zenith | 8682064 |
| 5752 | 36900.37000.45900.47500.49100.51700.188700.1021600 | Formwork | 24d | 2026-09-16 | 2026-10-09 | 5750FS-5d |  | Zenith | 8682054 |
| 5753 | 36900.37000.45900.47500.49100.51700.188700.1021700 | Concreting | 1d | 2026-10-10 | 2026-10-10 | 5752 |  | Zenith | 8682044 |
| 5754 | 36900.37000.45900.47500.49100.54900 | **Post Pour Activities** | 171d | 2026-04-26 | 2026-10-13 |  | start no earlier than 2026-04-26 | Zenith | 8648254 |
| 5755 | 36900.37000.45900.47500.49100.54900.838900 | Ground Floor (Retail) | 7d | 2026-04-26 | 2026-05-02 | 5703 |  | Zenith | 8722594 |
| 5756 | 36900.37000.45900.47500.49100.54900.839000 | 1st Floor (Retail) | 7d | 2026-05-09 | 2026-05-15 | 5708 |  | Zenith | 8722584 |
| 5757 | 36900.37000.45900.47500.49100.54900.839100 | 2nd Floor (Retail) | 7d | 2026-05-23 | 2026-05-29 | 5713 |  | Zenith | 8722574 |
| 5758 | 36900.37000.45900.47500.49100.54900.839200 | 3rd Floor (Studio Appartment) | 7d | 2026-06-05 | 2026-06-11 | 5718 |  | Zenith | 8722564 |
| 5759 | 36900.37000.45900.47500.49100.54900.839300 | 4th Floor | 7d | 2026-06-18 | 2026-06-24 | 5723 |  | Zenith | 8722554 |
| 5760 | 36900.37000.45900.47500.49100.54900.839400 | 5th Floor | 7d | 2026-07-01 | 2026-07-07 | 5728 |  | Zenith | 8722544 |
| 5761 | 36900.37000.45900.47500.49100.54900.839500 | 6th Floor | 7d | 2026-07-14 | 2026-07-20 | 5733 |  | Zenith | 8722534 |
| 5762 | 36900.37000.45900.47500.49100.54900.839600 | 7th Floor | 7d | 2026-07-27 | 2026-08-02 | 5738 |  | Zenith | 8722524 |
| 5763 | 36900.37000.45900.47500.49100.54900.839700 | 8th Floor | 7d | 2026-08-09 | 2026-08-15 | 5743 |  | Zenith | 8722514 |
| 5764 | 36900.37000.45900.47500.49100.54900.839800 | 9th Floor | 7d | 2026-08-26 | 2026-09-01 | 5748 |  | Zenith | 8722504 |
| 5765 | 36900.37000.45900.47500.49100.54900.839900 | 10th Floor | 7d | 2026-09-02 | 2026-09-08 | 5764 |  | Zenith | 8722494 |
| 5766 | 36900.37000.45900.47500.49100.54900.840000 | 11th Floor | 7d | 2026-09-09 | 2026-09-15 | 5765 |  | Zenith | 8722484 |
| 5767 | 36900.37000.45900.47500.49100.54900.840100 | 12th Floor | 7d | 2026-09-16 | 2026-09-22 | 5766 |  | Zenith | 8722474 |
| 5768 | 36900.37000.45900.47500.49100.54900.840200 | 13th Floor | 7d | 2026-09-23 | 2026-09-29 | 5767 |  | Zenith | 8722464 |
| 5769 | 36900.37000.45900.47500.49100.54900.840300 | Terrace | 7d | 2026-09-30 | 2026-10-06 | 5768 |  | Zenith | 8722454 |
| 5770 | 36900.37000.45900.47500.49100.54900.840400 | Mumty & Machine Room | 7d | 2026-10-07 | 2026-10-13 | 5769 |  | Zenith | 8722444 |

| ID | WBS | Task | Duration | Start | Finish | Predecessors | Constraint | Calendar | Unique_Task_ID |
| --- | --- | --- | --- | --- | --- | --- | --- | --- | --- |
| 5771 | 36900.37000.45900.47500.49100.50900 | **Finishing work** | 351.25d | 2027-04-04 | 2028-05-04 |  | start no earlier than 2027-04-04 | Zenith | 8648214 |
| 5772 | 36900.37000.45900.47500.49100.50900.52000 | **Retail finishing** | 212d | 2027-04-06 | 2027-12-18 |  | start no earlier than 2027-04-06 | Zenith | 8648244 |
| 5773 | 36900.37000.45900.47500.49100.50900.52000.103000 | **1st Floor** | 150d | 2027-04-06 | 2027-09-02 |  | start no earlier than 2027-04-06 | Zenith | 8650484 |
| 5774 | 36900.37000.45900.47500.49100.50900.52000.103000.1601300 | Block Work | 8d | 2027-04-06 | 2027-04-13 | 5759FS+240d |  | Zenith | 8709564 |
| 5775 | 36900.37000.45900.47500.49100.50900.52000.103000.1601400 | Fire sprinkler pipe fixing | 6d | 2027-04-14 | 2027-04-19 | 5774 |  | Zenith | 8709574 |
| 5776 | 36900.37000.45900.47500.49100.50900.52000.103000.1601500 | Internal Plumbing Works | 6d | 2027-04-14 | 2027-04-19 | 5774 |  | Zenith | 8709584 |
| 5777 | 36900.37000.45900.47500.49100.50900.52000.103000.1601600 | Waterproofing | 10d | 2027-04-20 | 2027-04-29 | 5776 |  | Zenith | 8709594 |
| 5778 | 36900.37000.45900.47500.49100.50900.52000.103000.1601700 | Shops, toilet & Corridoor Plaster | 12d | 2027-04-30 | 2027-05-11 | 5776, 5777 |  | Zenith | 8709604 |
| 5779 | 36900.37000.45900.47500.49100.50900.52000.103000.1601800 | Toilet dado work | 8d | 2027-05-12 | 2027-05-19 | 5777, 5778 |  | Zenith | 8709614 |
| 5780 | 36900.37000.45900.47500.49100.50900.52000.103000.1601900 | Toilet flooring work | 5d | 2027-05-20 | 2027-05-24 | 5779 |  | Zenith | 8709624 |
| 5781 | 36900.37000.45900.47500.49100.50900.52000.103000.1602000 | Corridoor/Lobby Flooring with shops threshold | 15d | 2027-05-13 | 2027-05-27 | 5778FS+1d |  | Zenith | 8709634 |
| 5782 | 36900.37000.45900.47500.49100.50900.52000.103000.1602100 | Shops Facade Frame fixing | 14d | 2027-07-01 | 2027-07-14 | 5781FF+48d |  | Zenith | 8709644 |
| 5783 | 36900.37000.45900.47500.49100.50900.52000.103000.1602200 | Shops Facade glass fixing | 14d | 2027-07-06 | 2027-07-19 | 5782FF+5d |  | Zenith | 8709654 |
| 5784 | 36900.37000.45900.47500.49100.50900.52000.103000.1602300 | Corridoor Glass Railing | 25d | 2027-07-05 | 2027-07-29 | 5783FF+10d |  | Zenith | 8709664 |
| 5785 | 36900.37000.45900.47500.49100.50900.52000.103000.1602400 | ACP Cladding, False Ceiling fixing toilet & corridoor | 25d | 2027-07-10 | 2027-08-03 | 5780FS+4d, 5784FF+5d |  | Zenith | 8709674 |
| 5786 | 36900.37000.45900.47500.49100.50900.52000.103000.1602500 | Corridoor & false ceiling Putty | 25d | 2027-07-20 | 2027-08-13 | 5785FF+10d |  | Zenith | 8709684 |
| 5787 | 36900.37000.45900.47500.49100.50900.52000.103000.1602600 | Electrical wiring work | 25d | 2027-07-25 | 2027-08-18 | 5786FF+5d |  | Zenith | 8709694 |
| 5788 | 36900.37000.45900.47500.49100.50900.52000.103000.1602700 | Primer-Painting 1st coat | 30d | 2027-08-04 | 2027-09-02 | 5787FF+15d |  | Zenith | 8709704 |
| 5789 | 36900.37000.45900.47500.49100.50900.52000.103100 | **2nd Floor** | 173d | 2027-04-14 | 2027-10-03 |  | start no earlier than 2027-04-14 | Zenith | 8650494 |
| 5790 | 36900.37000.45900.47500.49100.50900.52000.103100.1602800 | Block Work | 10d | 2027-04-14 | 2027-04-23 | 5760, 5774 |  | Zenith | 8709714 |
| 5791 | 36900.37000.45900.47500.49100.50900.52000.103100.1602900 | Fire sprinkler pipe fixing | 8d | 2027-04-24 | 2027-05-01 | 5775, 5790 |  | Zenith | 8709724 |
| 5792 | 36900.37000.45900.47500.49100.50900.52000.103100.1603000 | Internal Plumbing Works | 8d | 2027-04-24 | 2027-05-01 | 5776, 5790 |  | Zenith | 8709734 |
| 5793 | 36900.37000.45900.47500.49100.50900.52000.103100.1603100 | Waterproofing | 14d | 2027-05-02 | 2027-05-15 | 5777, 5792 |  | Zenith | 8709744 |
| 5794 | 36900.37000.45900.47500.49100.50900.52000.103100.1603200 | Shops, toilet & Corridoor Plaster | 14d | 2027-05-16 | 2027-05-29 | 5778, 5792, 5793 |  | Zenith | 8709754 |
| 5795 | 36900.37000.45900.47500.49100.50900.52000.103100.1603300 | Toilet dado work | 10d | 2027-05-30 | 2027-06-08 | 5779, 5793, 5794 |  | Zenith | 8709764 |
| 5796 | 36900.37000.45900.47500.49100.50900.52000.103100.1603400 | Toilet flooring work | 8d | 2027-06-09 | 2027-06-16 | 5780, 5795 |  | Zenith | 8709774 |
| 5797 | 36900.37000.45900.47500.49100.50900.52000.103100.1603500 | Corridoor/Lobby Flooring with shops threshold | 20d | 2027-05-31 | 2027-06-19 | 5781, 5794FS+1d |  | Zenith | 8709784 |
| 5798 | 36900.37000.45900.47500.49100.50900.52000.103100.1603600 | Shops Facade Frame fixing | 16d | 2027-07-16 | 2027-07-31 | 5782FS+1d, 5797FF+5d |  | Zenith | 8709794 |
| 5799 | 36900.37000.45900.47500.49100.50900.52000.103100.1603700 | Shops Facade glass fixing | 16d | 2027-07-21 | 2027-08-05 | 5783FS+1d, 5798FF+5d |  | Zenith | 8709804 |
| 5800 | 36900.37000.45900.47500.49100.50900.52000.103100.1603800 | Corridoor Glass Railing | 25d | 2027-07-31 | 2027-08-24 | 5784FS+1d, 5799FF+10d |  | Zenith | 8709814 |
| 5801 | 36900.37000.45900.47500.49100.50900.52000.103100.1603900 | ACP Cladding, False Ceiling fixing toilet & corridoor | 25d | 2027-08-05 | 2027-08-29 | 5785FS+1d, 5800FF+5d |  | Zenith | 8709824 |
| 5802 | 36900.37000.45900.47500.49100.50900.52000.103100.1604000 | Corridoor & false ceiling Putty | 25d | 2027-08-15 | 2027-09-08 | 5786FS+1d, 5796FS+4d, 5801FF+10d |  | Zenith | 8709834 |
| 5803 | 36900.37000.45900.47500.49100.50900.52000.103100.1604100 | Electrical wiring work | 30d | 2027-08-20 | 2027-09-18 | 5787FS+1d, 5802FF+5d |  | Zenith | 8709844 |
| 5804 | 36900.37000.45900.47500.49100.50900.52000.103100.1604200 | Primer-Painting 1st coat | 30d | 2027-09-04 | 2027-10-03 | 5788FS+1d, 5803FF+15d |  | Zenith | 8709854 |

| ID | WBS | Task | Duration | Start | Finish | Predecessors | Constraint | Calendar | Unique_Task_ID |
| --- | --- | --- | --- | --- | --- | --- | --- | --- | --- |
| 5805 | 36900.37000.45900.47500.49100.50900.52000.115900 | **Ground Floor** | 194d | 2027-04-24 | 2027-12-18 |  | start no earlier than 2027-04-24 | Zenith | 8651624 |
| 5806 | 36900.37000.45900.47500.49100.50900.52000.115900.1604300 | Block Work | 10d | 2027-04-24 | 2027-05-03 | 5790 |  | Zenith | 8709864 |
| 5807 | 36900.37000.45900.47500.49100.50900.52000.115900.1604400 | Fire sprinkler pipe fixing | 8d | 2027-05-04 | 2027-05-11 | 5791, 5806 |  | Zenith | 8709874 |
| 5808 | 36900.37000.45900.47500.49100.50900.52000.115900.1604500 | Internal Plumbing Works | 8d | 2027-05-04 | 2027-05-11 | 5792, 5806 |  | Zenith | 8709884 |
| 5809 | 36900.37000.45900.47500.49100.50900.52000.115900.1604600 | Waterproofing | 14d | 2027-05-16 | 2027-05-29 | 5793, 5808 |  | Zenith | 8709894 |
| 5810 | 36900.37000.45900.47500.49100.50900.52000.115900.1604700 | Shops, toilet & Corridoor Plaster | 14d | 2027-05-30 | 2027-06-12 | 5794, 5808, 5809 |  | Zenith | 8709904 |
| 5811 | 36900.37000.45900.47500.49100.50900.52000.115900.1604800 | Toilet dado work | 10d | 2027-06-13 | 2027-06-22 | 5795, 5809, 5810 |  | Zenith | 8709914 |
| 5812 | 36900.37000.45900.47500.49100.50900.52000.115900.1604900 | Toilet flooring work | 8d | 2027-06-23 | 2027-06-30 | 5796, 5811 |  | Zenith | 8709924 |
| 5813 | 36900.37000.45900.47500.49100.50900.52000.115900.1605000 | Corridoor/Lobby Flooring with shops threshold | 20d | 2027-06-20 | 2027-07-09 | 5797, 5810FS+1d |  | Zenith | 8709934 |
| 5814 | 36900.37000.45900.47500.49100.50900.52000.115900.1605100 | Shops Facade Frame fixing | 16d | 2027-08-02 | 2027-08-17 | 5798FS+1d, 5813FF+5d |  | Zenith | 8709944 |
| 5815 | 36900.37000.45900.47500.49100.50900.52000.115900.1605200 | Shops Facade glass fixing | 16d | 2027-08-07 | 2027-08-22 | 5799FS+1d, 5814FF+5d |  | Zenith | 8709954 |
| 5816 | 36900.37000.45900.47500.49100.50900.52000.115900.1605300 | ACP Cladding, False Ceiling fixing toilet & corridoor | 25d | 2027-08-31 | 2027-09-24 | 5801FS+1d, 5815FF+15d |  | Zenith | 8709964 |
| 5817 | 36900.37000.45900.47500.49100.50900.52000.115900.1605400 | Corridoor & false ceiling Putty | 25d | 2027-09-10 | 2027-10-04 | 5802FS+1d, 5807FS+5d, 5812FS+4d, 5816FF+10d |  | Zenith | 8709974 |
| 5818 | 36900.37000.45900.47500.49100.50900.52000.115900.1605500 | Electrical wiring work | 25d | 2027-09-20 | 2027-10-14 | 5803FS+1d, 5817FF+5d |  | Zenith | 8709984 |
| 5819 | 36900.37000.45900.47500.49100.50900.52000.115900.1605600 | Primer-Painting 1st coat | 30d | 2027-10-05 | 2027-12-18 | 5804FS+1d, 5818FF+15d |  | Zenith | 8709994 |
| 5820 | 36900.37000.45900.47500.49100.50900.51100 | **Flat finishing** | 267d | 2027-05-04 | 2028-03-11 |  | start no earlier than 2027-05-04 | Zenith | 8648224 |
| 5821 | 36900.37000.45900.47500.49100.50900.51100.103200 | **3rd Floor** | 127d | 2027-05-04 | 2027-09-08 |  | start no earlier than 2027-05-04 | Zenith | 8650504 |
| 5822 | 36900.37000.45900.47500.49100.50900.51100.103200.1605700 | Block Work | 10d | 2027-05-04 | 2027-05-14 | 5806FS+0.25d |  | Zenith | 8710004 |
| 5823 | 36900.37000.45900.47500.49100.50900.51100.103200.1605800 | Fire sprinkler pipe fixing | 6d | 2027-05-14 | 2027-05-20 | 5822 |  | Zenith | 8710014 |
| 5824 | 36900.37000.45900.47500.49100.50900.51100.103200.1605900 | Internal Plumbing Works | 9d | 2027-05-14 | 2027-05-23 | 5822 |  | Zenith | 8710024 |
| 5825 | 36900.37000.45900.47500.49100.50900.51100.103200.1606000 | Waterproofing | 14d | 2027-05-23 | 2027-06-06 | 5824 |  | Zenith | 8710034 |
| 5826 | 36900.37000.45900.47500.49100.50900.51100.103200.1606100 | Internal Plaster | 14d | 2027-05-29 | 2027-06-12 | 5824, 5825FF+6d |  | Zenith | 8710044 |
| 5827 | 36900.37000.45900.47500.49100.50900.51100.103200.1606200 | IPS flooring work | 10d | 2027-06-12 | 2027-06-22 | 5826 |  | Zenith | 8710054 |
| 5828 | 36900.37000.45900.47500.49100.50900.51100.103200.1606300 | Toilet dado work | 10d | 2027-06-12 | 2027-06-22 | 5825, 5826 |  | Zenith | 8710064 |
| 5829 | 36900.37000.45900.47500.49100.50900.51100.103200.1606400 | Toilet flooring work | 10d | 2027-06-22 | 2027-07-02 | 5828 |  | Zenith | 8710074 |
| 5830 | 36900.37000.45900.47500.49100.50900.51100.103200.1606500 | Living dinning flooring | 10d | 2027-07-02 | 2027-07-12 | 5829 |  | Zenith | 8710084 |
| 5831 | 36900.37000.45900.47500.49100.50900.51100.103200.1606600 | False Ceiling works | 10d | 2027-07-12 | 2027-07-22 | 5830 |  | Zenith | 8710094 |
| 5832 | 36900.37000.45900.47500.49100.50900.51100.103200.1606700 | Electrical wiring work | 10d | 2027-07-22 | 2027-08-01 | 5831 |  | Zenith | 8710104 |
| 5833 | 36900.37000.45900.47500.49100.50900.51100.103200.1606800 | Aluminium door-window fixing | 12d | 2027-08-01 | 2027-08-13 | 5827, 5832 |  | Zenith | 8710114 |
| 5834 | 36900.37000.45900.47500.49100.50900.51100.103200.1606900 | Putty primer coat | 8d | 2027-08-13 | 2027-08-21 | 5833 |  | Zenith | 8710124 |
| 5835 | 36900.37000.45900.47500.49100.50900.51100.103200.1607000 | Prehung Door fixing | 6d | 2027-08-21 | 2027-08-27 | 5834 |  | Zenith | 8710134 |
| 5836 | 36900.37000.45900.47500.49100.50900.51100.103200.1607100 | Painting 1st coat | 12d | 2027-08-27 | 2027-09-08 | 5835 |  | Zenith | 8710144 |

| ID | WBS | Task | Duration | Start | Finish | Predecessors | Constraint | Calendar | Unique_Task_ID |
| --- | --- | --- | --- | --- | --- | --- | --- | --- | --- |
| 5837 | 36900.37000.45900.47500.49100.50900.51100.103300 | **4th Floor** | 131d | 2027-05-14 | 2027-09-22 |  | start no earlier than 2027-05-14 | Zenith | 8650514 |
| 5838 | 36900.37000.45900.47500.49100.50900.51100.103300.1607200 | Block Work | 10d | 2027-05-14 | 2027-05-24 | 5762, 5822 |  | Zenith | 8710154 |
| 5839 | 36900.37000.45900.47500.49100.50900.51100.103300.1607300 | Fire sprinkler pipe fixing | 6d | 2027-05-24 | 2027-05-30 | 5823, 5838 |  | Zenith | 8710164 |
| 5840 | 36900.37000.45900.47500.49100.50900.51100.103300.1607400 | Internal Plumbing Works | 9d | 2027-05-24 | 2027-06-02 | 5824, 5838 |  | Zenith | 8710174 |
| 5841 | 36900.37000.45900.47500.49100.50900.51100.103300.1607500 | Waterproofing | 14d | 2027-06-06 | 2027-06-20 | 5825, 5840 |  | Zenith | 8710184 |
| 5842 | 36900.37000.45900.47500.49100.50900.51100.103300.1607600 | Internal Plaster | 14d | 2027-06-12 | 2027-06-26 | 5826, 5840, 5841FF+6d |  | Zenith | 8710194 |
| 5843 | 36900.37000.45900.47500.49100.50900.51100.103300.1607700 | IPS flooring work | 10d | 2027-06-26 | 2027-07-06 | 5827, 5842 |  | Zenith | 8710204 |
| 5844 | 36900.37000.45900.47500.49100.50900.51100.103300.1607800 | Toilet dado work | 10d | 2027-06-26 | 2027-07-06 | 5828, 5841, 5842 |  | Zenith | 8710214 |
| 5845 | 36900.37000.45900.47500.49100.50900.51100.103300.1607900 | Toilet flooring work | 10d | 2027-07-06 | 2027-07-16 | 5829, 5844 |  | Zenith | 8710224 |
| 5846 | 36900.37000.45900.47500.49100.50900.51100.103300.1608000 | Living dinning flooring | 10d | 2027-07-16 | 2027-07-26 | 5830, 5845 |  | Zenith | 8710234 |
| 5847 | 36900.37000.45900.47500.49100.50900.51100.103300.1608100 | False Ceiling works | 10d | 2027-07-26 | 2027-08-05 | 5831, 5846 |  | Zenith | 8710244 |
| 5848 | 36900.37000.45900.47500.49100.50900.51100.103300.1608200 | Electrical wiring work | 10d | 2027-08-05 | 2027-08-15 | 5832, 5847 |  | Zenith | 8710254 |
| 5849 | 36900.37000.45900.47500.49100.50900.51100.103300.1608300 | Aluminium door-window fixing | 12d | 2027-08-15 | 2027-08-27 | 5833, 5843, 5848 |  | Zenith | 8710264 |
| 5850 | 36900.37000.45900.47500.49100.50900.51100.103300.1608400 | Putty primer coat | 8d | 2027-08-27 | 2027-09-04 | 5834, 5849 |  | Zenith | 8710274 |
| 5851 | 36900.37000.45900.47500.49100.50900.51100.103300.1608500 | Prehung Door fixing | 6d | 2027-09-04 | 2027-09-10 | 5835, 5850 |  | Zenith | 8710284 |
| 5852 | 36900.37000.45900.47500.49100.50900.51100.103300.1608600 | Painting 1st coat | 12d | 2027-09-10 | 2027-09-22 | 5836, 5851 |  | Zenith | 8710294 |
| 5853 | 36900.37000.45900.47500.49100.50900.51100.103400 | **5th Floor** | 135d | 2027-05-24 | 2027-10-06 |  | start no earlier than 2027-05-24 | Zenith | 8650524 |
| 5854 | 36900.37000.45900.47500.49100.50900.51100.103400.1608700 | Block Work | 10d | 2027-05-24 | 2027-06-03 | 5763, 5838 |  | Zenith | 8710304 |
| 5855 | 36900.37000.45900.47500.49100.50900.51100.103400.1608800 | Fire sprinkler pipe fixing | 6d | 2027-06-03 | 2027-06-09 | 5839, 5854 |  | Zenith | 8710314 |
| 5856 | 36900.37000.45900.47500.49100.50900.51100.103400.1608900 | Internal Plumbing Works | 9d | 2027-06-03 | 2027-06-12 | 5840, 5854 |  | Zenith | 8710324 |
| 5857 | 36900.37000.45900.47500.49100.50900.51100.103400.1609000 | Waterproofing | 14d | 2027-06-20 | 2027-07-04 | 5841, 5856 |  | Zenith | 8710334 |
| 5858 | 36900.37000.45900.47500.49100.50900.51100.103400.1609100 | Internal Plaster | 14d | 2027-06-26 | 2027-07-10 | 5842, 5856, 5857FF+6d |  | Zenith | 8710344 |
| 5859 | 36900.37000.45900.47500.49100.50900.51100.103400.1609200 | IPS flooring work | 10d | 2027-07-10 | 2027-07-20 | 5843, 5858 |  | Zenith | 8710354 |
| 5860 | 36900.37000.45900.47500.49100.50900.51100.103400.1609300 | Toilet dado work | 10d | 2027-07-10 | 2027-07-20 | 5844, 5857, 5858 |  | Zenith | 8710364 |
| 5861 | 36900.37000.45900.47500.49100.50900.51100.103400.1609400 | Toilet flooring work | 10d | 2027-07-20 | 2027-07-30 | 5845, 5860 |  | Zenith | 8710374 |
| 5862 | 36900.37000.45900.47500.49100.50900.51100.103400.1609500 | Living dinning flooring | 10d | 2027-07-30 | 2027-08-09 | 5846, 5861 |  | Zenith | 8710384 |
| 5863 | 36900.37000.45900.47500.49100.50900.51100.103400.1609600 | False Ceiling works | 10d | 2027-08-09 | 2027-08-19 | 5847, 5862 |  | Zenith | 8710394 |
| 5864 | 36900.37000.45900.47500.49100.50900.51100.103400.1609700 | Electrical wiring work | 10d | 2027-08-19 | 2027-08-29 | 5848, 5863 |  | Zenith | 8710404 |
| 5865 | 36900.37000.45900.47500.49100.50900.51100.103400.1609800 | Aluminium door-window fixing | 12d | 2027-08-29 | 2027-09-10 | 5849, 5859, 5864 |  | Zenith | 8710414 |
| 5866 | 36900.37000.45900.47500.49100.50900.51100.103400.1609900 | Putty primer coat | 8d | 2027-09-10 | 2027-09-18 | 5850, 5865 |  | Zenith | 8710424 |
| 5867 | 36900.37000.45900.47500.49100.50900.51100.103400.1610000 | Prehung Door fixing | 6d | 2027-09-18 | 2027-09-24 | 5851, 5866 |  | Zenith | 8710434 |
| 5868 | 36900.37000.45900.47500.49100.50900.51100.103400.1610100 | Painting 1st coat | 12d | 2027-09-24 | 2027-10-06 | 5852, 5867 |  | Zenith | 8710444 |

| ID | WBS | Task | Duration | Start | Finish | Predecessors | Constraint | Calendar | Unique_Task_ID |
| --- | --- | --- | --- | --- | --- | --- | --- | --- | --- |
| 5869 | 36900.37000.45900.47500.49100.50900.51100.103500 | **6th Floor** | 139d | 2027-06-03 | 2027-10-20 |  | start no earlier than 2027-06-03 | Zenith | 8650534 |
| 5870 | 36900.37000.45900.47500.49100.50900.51100.103500.1610200 | Block Work | 10d | 2027-06-03 | 2027-06-13 | 5764, 5854 |  | Zenith | 8710454 |
| 5871 | 36900.37000.45900.47500.49100.50900.51100.103500.1610300 | Fire sprinkler pipe fixing | 6d | 2027-06-13 | 2027-06-19 | 5855, 5870 |  | Zenith | 8710464 |
| 5872 | 36900.37000.45900.47500.49100.50900.51100.103500.1610400 | Internal Plumbing Works | 9d | 2027-06-13 | 2027-06-22 | 5856, 5870 |  | Zenith | 8710474 |
| 5873 | 36900.37000.45900.47500.49100.50900.51100.103500.1610500 | Waterproofing | 14d | 2027-07-04 | 2027-07-18 | 5857, 5872 |  | Zenith | 8710484 |
| 5874 | 36900.37000.45900.47500.49100.50900.51100.103500.1610600 | Internal Plaster | 14d | 2027-07-10 | 2027-07-24 | 5858, 5872, 5873FF+6d |  | Zenith | 8710494 |
| 5875 | 36900.37000.45900.47500.49100.50900.51100.103500.1610700 | IPS flooring work | 10d | 2027-07-24 | 2027-08-03 | 5859, 5874 |  | Zenith | 8710504 |
| 5876 | 36900.37000.45900.47500.49100.50900.51100.103500.1610800 | Toilet dado work | 10d | 2027-07-24 | 2027-08-03 | 5860, 5873, 5874 |  | Zenith | 8710514 |
| 5877 | 36900.37000.45900.47500.49100.50900.51100.103500.1610900 | Toilet flooring work | 10d | 2027-08-03 | 2027-08-13 | 5861, 5876 |  | Zenith | 8710524 |
| 5878 | 36900.37000.45900.47500.49100.50900.51100.103500.1611000 | Living dinning flooring | 10d | 2027-08-13 | 2027-08-23 | 5862, 5877 |  | Zenith | 8710534 |
| 5879 | 36900.37000.45900.47500.49100.50900.51100.103500.1611100 | False Ceiling works | 10d | 2027-08-23 | 2027-09-02 | 5863, 5878 |  | Zenith | 8710544 |
| 5880 | 36900.37000.45900.47500.49100.50900.51100.103500.1611200 | Electrical wiring work | 10d | 2027-09-02 | 2027-09-12 | 5864, 5879 |  | Zenith | 8710554 |
| 5881 | 36900.37000.45900.47500.49100.50900.51100.103500.1611300 | Aluminium door-window fixing | 12d | 2027-09-12 | 2027-09-24 | 5865, 5875, 5880 |  | Zenith | 8710564 |
| 5882 | 36900.37000.45900.47500.49100.50900.51100.103500.1611400 | Putty primer coat | 8d | 2027-09-24 | 2027-10-02 | 5866, 5881 |  | Zenith | 8710574 |
| 5883 | 36900.37000.45900.47500.49100.50900.51100.103500.1611500 | Prehung Door fixing | 6d | 2027-10-02 | 2027-10-08 | 5867, 5882 |  | Zenith | 8710584 |
| 5884 | 36900.37000.45900.47500.49100.50900.51100.103500.1611600 | Painting 1st coat | 12d | 2027-10-08 | 2027-10-20 | 5868, 5883 |  | Zenith | 8710594 |
| 5885 | 36900.37000.45900.47500.49100.50900.51100.103600 | **7th Floor** | 143d | 2027-06-13 | 2027-12-18 |  | start no earlier than 2027-06-13 | Zenith | 8650544 |
| 5886 | 36900.37000.45900.47500.49100.50900.51100.103600.1611700 | Block Work | 10d | 2027-06-13 | 2027-06-23 | 5765, 5870 |  | Zenith | 8710604 |
| 5887 | 36900.37000.45900.47500.49100.50900.51100.103600.1611800 | Fire sprinkler pipe fixing | 6d | 2027-06-23 | 2027-06-29 | 5871, 5886 |  | Zenith | 8710614 |
| 5888 | 36900.37000.45900.47500.49100.50900.51100.103600.1611900 | Internal Plumbing Works | 9d | 2027-06-23 | 2027-07-02 | 5872, 5886 |  | Zenith | 8710624 |
| 5889 | 36900.37000.45900.47500.49100.50900.51100.103600.1612000 | Waterproofing | 14d | 2027-07-18 | 2027-08-01 | 5873, 5888 |  | Zenith | 8710634 |
| 5890 | 36900.37000.45900.47500.49100.50900.51100.103600.1612100 | Internal Plaster | 14d | 2027-07-24 | 2027-08-07 | 5874, 5888, 5889FF+6d |  | Zenith | 8710644 |
| 5891 | 36900.37000.45900.47500.49100.50900.51100.103600.1612200 | IPS flooring work | 10d | 2027-08-07 | 2027-08-17 | 5875, 5890 |  | Zenith | 8710654 |
| 5892 | 36900.37000.45900.47500.49100.50900.51100.103600.1612300 | Toilet dado work | 10d | 2027-08-07 | 2027-08-17 | 5876, 5889, 5890 |  | Zenith | 8710664 |
| 5893 | 36900.37000.45900.47500.49100.50900.51100.103600.1612400 | Toilet flooring work | 10d | 2027-08-17 | 2027-08-27 | 5877, 5892 |  | Zenith | 8710674 |
| 5894 | 36900.37000.45900.47500.49100.50900.51100.103600.1612500 | Living dinning flooring | 10d | 2027-08-27 | 2027-09-06 | 5878, 5893 |  | Zenith | 8710684 |
| 5895 | 36900.37000.45900.47500.49100.50900.51100.103600.1612600 | False Ceiling works | 10d | 2027-09-06 | 2027-09-16 | 5879, 5894 |  | Zenith | 8710694 |
| 5896 | 36900.37000.45900.47500.49100.50900.51100.103600.1612700 | Electrical wiring work | 10d | 2027-09-16 | 2027-09-26 | 5880, 5895 |  | Zenith | 8710704 |
| 5897 | 36900.37000.45900.47500.49100.50900.51100.103600.1612800 | Aluminium door-window fixing | 12d | 2027-09-26 | 2027-10-08 | 5881, 5891, 5896 |  | Zenith | 8710714 |
| 5898 | 36900.37000.45900.47500.49100.50900.51100.103600.1612900 | Putty primer coat | 8d | 2027-10-08 | 2027-10-16 | 5882, 5897 |  | Zenith | 8710724 |
| 5899 | 36900.37000.45900.47500.49100.50900.51100.103600.1613000 | Prehung Door fixing | 6d | 2027-10-16 | 2027-10-22 | 5883, 5898 |  | Zenith | 8710734 |
| 5900 | 36900.37000.45900.47500.49100.50900.51100.103600.1613100 | Painting 1st coat | 12d | 2027-10-22 | 2027-12-18 | 5884, 5899 |  | Zenith | 8710744 |

| ID | WBS | Task | Duration | Start | Finish | Predecessors | Constraint | Calendar | Unique_Task_ID |
| --- | --- | --- | --- | --- | --- | --- | --- | --- | --- |
| 5901 | 36900.37000.45900.47500.49100.50900.51100.103700 | **8th Floor** | 147d | 2027-06-23 | 2028-01-01 |  | start no earlier than 2027-06-23 | Zenith | 8650554 |
| 5902 | 36900.37000.45900.47500.49100.50900.51100.103700.1613200 | Block Work | 10d | 2027-06-23 | 2027-07-03 | 5766, 5886 |  | Zenith | 8710754 |
| 5903 | 36900.37000.45900.47500.49100.50900.51100.103700.1613300 | Fire sprinkler pipe fixing | 6d | 2027-07-03 | 2027-07-09 | 5887, 5902 |  | Zenith | 8710764 |
| 5904 | 36900.37000.45900.47500.49100.50900.51100.103700.1613400 | Internal Plumbing Works | 9d | 2027-07-03 | 2027-07-12 | 5888, 5902 |  | Zenith | 8710774 |
| 5905 | 36900.37000.45900.47500.49100.50900.51100.103700.1613500 | Waterproofing | 14d | 2027-08-01 | 2027-08-15 | 5889, 5904 |  | Zenith | 8710784 |
| 5906 | 36900.37000.45900.47500.49100.50900.51100.103700.1613600 | Internal Plaster | 14d | 2027-08-07 | 2027-08-21 | 5890, 5904, 5905FF+6d |  | Zenith | 8710794 |
| 5907 | 36900.37000.45900.47500.49100.50900.51100.103700.1613700 | IPS flooring work | 10d | 2027-08-21 | 2027-08-31 | 5891, 5906 |  | Zenith | 8710804 |
| 5908 | 36900.37000.45900.47500.49100.50900.51100.103700.1613800 | Toilet dado work | 10d | 2027-08-21 | 2027-08-31 | 5892, 5905, 5906 |  | Zenith | 8710814 |
| 5909 | 36900.37000.45900.47500.49100.50900.51100.103700.1613900 | Toilet flooring work | 10d | 2027-08-31 | 2027-09-10 | 5893, 5908 |  | Zenith | 8710824 |
| 5910 | 36900.37000.45900.47500.49100.50900.51100.103700.1614000 | Living dinning flooring | 10d | 2027-09-10 | 2027-09-20 | 5894, 5909 |  | Zenith | 8710834 |
| 5911 | 36900.37000.45900.47500.49100.50900.51100.103700.1614100 | False Ceiling works | 10d | 2027-09-20 | 2027-09-30 | 5895, 5910 |  | Zenith | 8710844 |
| 5912 | 36900.37000.45900.47500.49100.50900.51100.103700.1614200 | Electrical wiring work | 10d | 2027-09-30 | 2027-10-10 | 5896, 5911 |  | Zenith | 8710854 |
| 5913 | 36900.37000.45900.47500.49100.50900.51100.103700.1614300 | Aluminium door-window fixing | 12d | 2027-10-10 | 2027-10-22 | 5897, 5907, 5912 |  | Zenith | 8710864 |
| 5914 | 36900.37000.45900.47500.49100.50900.51100.103700.1614400 | Putty primer coat | 8d | 2027-10-22 | 2027-10-30 | 5898, 5913 |  | Zenith | 8710874 |
| 5915 | 36900.37000.45900.47500.49100.50900.51100.103700.1614500 | Prehung Door fixing | 6d | 2027-10-30 | 2027-12-20 | 5899, 5914 |  | Zenith | 8710884 |
| 5916 | 36900.37000.45900.47500.49100.50900.51100.103700.1614600 | Painting 1st coat | 12d | 2027-12-20 | 2028-01-01 | 5900, 5915 |  | Zenith | 8710894 |
| 5917 | 36900.37000.45900.47500.49100.50900.51100.103800 | **9th Floor** | 151d | 2027-07-03 | 2028-01-15 |  | start no earlier than 2027-07-03 | Zenith | 8650564 |
| 5918 | 36900.37000.45900.47500.49100.50900.51100.103800.1614700 | Block Work | 10d | 2027-07-03 | 2027-07-13 | 5767, 5902 |  | Zenith | 8710904 |
| 5919 | 36900.37000.45900.47500.49100.50900.51100.103800.1614800 | Fire sprinkler pipe fixing | 6d | 2027-07-13 | 2027-07-19 | 5903, 5918 |  | Zenith | 8710914 |
| 5920 | 36900.37000.45900.47500.49100.50900.51100.103800.1614900 | Internal Plumbing Works | 9d | 2027-07-13 | 2027-07-22 | 5904, 5918 |  | Zenith | 8710924 |
| 5921 | 36900.37000.45900.47500.49100.50900.51100.103800.1615000 | Waterproofing | 14d | 2027-08-15 | 2027-08-29 | 5905, 5920 |  | Zenith | 8710934 |
| 5922 | 36900.37000.45900.47500.49100.50900.51100.103800.1615100 | Internal Plaster | 14d | 2027-08-21 | 2027-09-04 | 5906, 5920, 5921FF+6d |  | Zenith | 8710944 |
| 5923 | 36900.37000.45900.47500.49100.50900.51100.103800.1615200 | IPS flooring work | 10d | 2027-09-04 | 2027-09-14 | 5907, 5922 |  | Zenith | 8710954 |
| 5924 | 36900.37000.45900.47500.49100.50900.51100.103800.1615300 | Toilet dado work | 10d | 2027-09-04 | 2027-09-14 | 5908, 5921, 5922 |  | Zenith | 8710964 |
| 5925 | 36900.37000.45900.47500.49100.50900.51100.103800.1615400 | Toilet flooring work | 10d | 2027-09-14 | 2027-09-24 | 5909, 5924 |  | Zenith | 8710974 |
| 5926 | 36900.37000.45900.47500.49100.50900.51100.103800.1615500 | Living dinning flooring | 10d | 2027-09-24 | 2027-10-04 | 5910, 5925 |  | Zenith | 8710984 |
| 5927 | 36900.37000.45900.47500.49100.50900.51100.103800.1615600 | False Ceiling works | 10d | 2027-10-04 | 2027-10-14 | 5911, 5926 |  | Zenith | 8710994 |
| 5928 | 36900.37000.45900.47500.49100.50900.51100.103800.1615700 | Electrical wiring work | 10d | 2027-10-14 | 2027-10-24 | 5912, 5927 |  | Zenith | 8711004 |
| 5929 | 36900.37000.45900.47500.49100.50900.51100.103800.1615800 | Aluminium door-window fixing | 12d | 2027-10-24 | 2027-12-20 | 5913, 5923, 5928 |  | Zenith | 8711014 |
| 5930 | 36900.37000.45900.47500.49100.50900.51100.103800.1615900 | Putty primer coat | 8d | 2027-12-20 | 2027-12-28 | 5914, 5929 |  | Zenith | 8711024 |
| 5931 | 36900.37000.45900.47500.49100.50900.51100.103800.1616000 | Prehung Door fixing | 6d | 2027-12-28 | 2028-01-03 | 5915, 5930 |  | Zenith | 8711034 |
| 5932 | 36900.37000.45900.47500.49100.50900.51100.103800.1616100 | Painting 1st coat | 12d | 2028-01-03 | 2028-01-15 | 5916, 5931 |  | Zenith | 8711044 |

| ID | WBS | Task | Duration | Start | Finish | Predecessors | Constraint | Calendar | Unique_Task_ID |
| --- | --- | --- | --- | --- | --- | --- | --- | --- | --- |
| 5933 | 36900.37000.45900.47500.49100.50900.51100.103900 | **10th Floor** | 155d | 2027-07-13 | 2028-01-29 |  | start no earlier than 2027-07-13 | Zenith | 8650574 |
| 5934 | 36900.37000.45900.47500.49100.50900.51100.103900.1616200 | Block Work | 10d | 2027-07-13 | 2027-07-23 | 5768, 5918 |  | Zenith | 8711054 |
| 5935 | 36900.37000.45900.47500.49100.50900.51100.103900.1616300 | Fire sprinkler pipe fixing | 6d | 2027-07-23 | 2027-07-29 | 5919, 5934 |  | Zenith | 8711064 |
| 5936 | 36900.37000.45900.47500.49100.50900.51100.103900.1616400 | Internal Plumbing Works | 9d | 2027-07-23 | 2027-08-01 | 5920, 5934 |  | Zenith | 8711074 |
| 5937 | 36900.37000.45900.47500.49100.50900.51100.103900.1616500 | Waterproofing | 14d | 2027-08-29 | 2027-09-12 | 5921, 5936 |  | Zenith | 8711084 |
| 5938 | 36900.37000.45900.47500.49100.50900.51100.103900.1616600 | Internal Plaster | 14d | 2027-09-04 | 2027-09-18 | 5922, 5936, 5937FF+6d |  | Zenith | 8711094 |
| 5939 | 36900.37000.45900.47500.49100.50900.51100.103900.1616700 | IPS flooring work | 10d | 2027-09-18 | 2027-09-28 | 5923, 5938 |  | Zenith | 8711104 |
| 5940 | 36900.37000.45900.47500.49100.50900.51100.103900.1616800 | Toilet dado work | 10d | 2027-09-18 | 2027-09-28 | 5924, 5937, 5938 |  | Zenith | 8711114 |
| 5941 | 36900.37000.45900.47500.49100.50900.51100.103900.1616900 | Toilet flooring work | 10d | 2027-09-28 | 2027-10-08 | 5925, 5940 |  | Zenith | 8711124 |
| 5942 | 36900.37000.45900.47500.49100.50900.51100.103900.1617000 | Living dinning flooring | 10d | 2027-10-08 | 2027-10-18 | 5926, 5941 |  | Zenith | 8711134 |
| 5943 | 36900.37000.45900.47500.49100.50900.51100.103900.1617100 | False Ceiling works | 10d | 2027-10-18 | 2027-10-28 | 5927, 5942 |  | Zenith | 8711144 |
| 5944 | 36900.37000.45900.47500.49100.50900.51100.103900.1617200 | Electrical wiring work | 10d | 2027-10-28 | 2027-12-22 | 5928, 5943 |  | Zenith | 8711154 |
| 5945 | 36900.37000.45900.47500.49100.50900.51100.103900.1617300 | Aluminium door-window fixing | 12d | 2027-12-22 | 2028-01-03 | 5929, 5939, 5944 |  | Zenith | 8711164 |
| 5946 | 36900.37000.45900.47500.49100.50900.51100.103900.1617400 | Putty primer coat | 8d | 2028-01-03 | 2028-01-11 | 5930, 5945 |  | Zenith | 8711174 |
| 5947 | 36900.37000.45900.47500.49100.50900.51100.103900.1617500 | Prehung Door fixing | 6d | 2028-01-11 | 2028-01-17 | 5931, 5946 |  | Zenith | 8711184 |
| 5948 | 36900.37000.45900.47500.49100.50900.51100.103900.1617600 | Painting 1st coat | 12d | 2028-01-17 | 2028-01-29 | 5932, 5947 |  | Zenith | 8711194 |
| 5949 | 36900.37000.45900.47500.49100.50900.51100.104000 | **11th Floor** | 159d | 2027-07-23 | 2028-02-12 |  | start no earlier than 2027-07-23 | Zenith | 8650584 |
| 5950 | 36900.37000.45900.47500.49100.50900.51100.104000.1617700 | Block Work | 10d | 2027-07-23 | 2027-08-02 | 5769, 5934 |  | Zenith | 8711204 |
| 5951 | 36900.37000.45900.47500.49100.50900.51100.104000.1617800 | Fire sprinkler pipe fixing | 6d | 2027-08-02 | 2027-08-08 | 5935, 5950 |  | Zenith | 8711214 |
| 5952 | 36900.37000.45900.47500.49100.50900.51100.104000.1617900 | Internal Plumbing Works | 9d | 2027-08-02 | 2027-08-11 | 5936, 5950 |  | Zenith | 8711224 |
| 5953 | 36900.37000.45900.47500.49100.50900.51100.104000.1618000 | Waterproofing | 14d | 2027-09-12 | 2027-09-26 | 5937, 5952 |  | Zenith | 8711234 |
| 5954 | 36900.37000.45900.47500.49100.50900.51100.104000.1618100 | Internal Plaster | 14d | 2027-09-18 | 2027-10-02 | 5938, 5952, 5953FF+6d |  | Zenith | 8711244 |
| 5955 | 36900.37000.45900.47500.49100.50900.51100.104000.1618200 | IPS flooring work | 10d | 2027-10-02 | 2027-10-12 | 5939, 5954 |  | Zenith | 8711254 |
| 5956 | 36900.37000.45900.47500.49100.50900.51100.104000.1618300 | Toilet dado work | 10d | 2027-10-02 | 2027-10-12 | 5940, 5953, 5954 |  | Zenith | 8711264 |
| 5957 | 36900.37000.45900.47500.49100.50900.51100.104000.1618400 | Toilet flooring work | 10d | 2027-10-12 | 2027-10-22 | 5941, 5956 |  | Zenith | 8711274 |
| 5958 | 36900.37000.45900.47500.49100.50900.51100.104000.1618500 | Living dinning flooring | 10d | 2027-10-22 | 2027-12-16 | 5942, 5957 |  | Zenith | 8711284 |
| 5959 | 36900.37000.45900.47500.49100.50900.51100.104000.1618600 | False Ceiling works | 10d | 2027-12-16 | 2027-12-26 | 5943, 5958 |  | Zenith | 8711294 |
| 5960 | 36900.37000.45900.47500.49100.50900.51100.104000.1618700 | Electrical wiring work | 10d | 2027-12-26 | 2028-01-05 | 5944, 5959 |  | Zenith | 8711304 |
| 5961 | 36900.37000.45900.47500.49100.50900.51100.104000.1618800 | Aluminium door-window fixing | 12d | 2028-01-05 | 2028-01-17 | 5945, 5955, 5960 |  | Zenith | 8711314 |
| 5962 | 36900.37000.45900.47500.49100.50900.51100.104000.1618900 | Putty primer coat | 8d | 2028-01-17 | 2028-01-25 | 5946, 5961 |  | Zenith | 8711324 |
| 5963 | 36900.37000.45900.47500.49100.50900.51100.104000.1619000 | Prehung Door fixing | 6d | 2028-01-25 | 2028-01-31 | 5947, 5962 |  | Zenith | 8711334 |
| 5964 | 36900.37000.45900.47500.49100.50900.51100.104000.1619100 | Painting 1st coat | 12d | 2028-01-31 | 2028-02-12 | 5948, 5963 |  | Zenith | 8711344 |

| ID | WBS | Task | Duration | Start | Finish | Predecessors | Constraint | Calendar | Unique_Task_ID |
| --- | --- | --- | --- | --- | --- | --- | --- | --- | --- |
| 5965 | 36900.37000.45900.47500.49100.50900.51100.104100 | **12th Floor** | 163d | 2027-08-02 | 2028-02-26 |  | start no earlier than 2027-08-02 | Zenith | 8650594 |
| 5966 | 36900.37000.45900.47500.49100.50900.51100.104100.1619200 | Block Work | 10d | 2027-08-02 | 2027-08-12 | 5770, 5950 |  | Zenith | 8711354 |
| 5967 | 36900.37000.45900.47500.49100.50900.51100.104100.1619300 | Fire sprinkler pipe fixing | 6d | 2027-08-12 | 2027-08-18 | 5951, 5966 |  | Zenith | 8711364 |
| 5968 | 36900.37000.45900.47500.49100.50900.51100.104100.1619400 | Internal Plumbing Works | 9d | 2027-08-12 | 2027-08-21 | 5952, 5966 |  | Zenith | 8711374 |
| 5969 | 36900.37000.45900.47500.49100.50900.51100.104100.1619500 | Waterproofing | 14d | 2027-09-26 | 2027-10-10 | 5953, 5968 |  | Zenith | 8711384 |
| 5970 | 36900.37000.45900.47500.49100.50900.51100.104100.1619600 | Internal Plaster | 14d | 2027-10-02 | 2027-10-16 | 5954, 5968, 5969FF+6d |  | Zenith | 8711394 |
| 5971 | 36900.37000.45900.47500.49100.50900.51100.104100.1619700 | IPS flooring work | 10d | 2027-10-16 | 2027-10-26 | 5955, 5970 |  | Zenith | 8711404 |
| 5972 | 36900.37000.45900.47500.49100.50900.51100.104100.1619800 | Toilet dado work | 10d | 2027-10-16 | 2027-10-26 | 5956, 5969, 5970 |  | Zenith | 8711414 |
| 5973 | 36900.37000.45900.47500.49100.50900.51100.104100.1619900 | Toilet flooring work | 10d | 2027-10-26 | 2027-12-20 | 5957, 5972 |  | Zenith | 8711424 |
| 5974 | 36900.37000.45900.47500.49100.50900.51100.104100.1620000 | Living dinning flooring | 10d | 2027-12-20 | 2027-12-30 | 5958, 5973 |  | Zenith | 8711434 |
| 5975 | 36900.37000.45900.47500.49100.50900.51100.104100.1620100 | False Ceiling works | 10d | 2027-12-30 | 2028-01-09 | 5959, 5974 |  | Zenith | 8711444 |
| 5976 | 36900.37000.45900.47500.49100.50900.51100.104100.1620200 | Electrical wiring work | 10d | 2028-01-09 | 2028-01-19 | 5960, 5975 |  | Zenith | 8711454 |
| 5977 | 36900.37000.45900.47500.49100.50900.51100.104100.1620300 | Aluminium door-window fixing | 12d | 2028-01-19 | 2028-01-31 | 5961, 5971, 5976 |  | Zenith | 8711464 |
| 5978 | 36900.37000.45900.47500.49100.50900.51100.104100.1620400 | Putty primer coat | 8d | 2028-01-31 | 2028-02-08 | 5962, 5977 |  | Zenith | 8711474 |
| 5979 | 36900.37000.45900.47500.49100.50900.51100.104100.1620500 | Prehung Door fixing | 6d | 2028-02-08 | 2028-02-14 | 5963, 5978 |  | Zenith | 8711484 |
| 5980 | 36900.37000.45900.47500.49100.50900.51100.104100.1620600 | Painting 1st coat | 12d | 2028-02-14 | 2028-02-26 | 5964, 5979 |  | Zenith | 8711494 |
| 5981 | 36900.37000.45900.47500.49100.50900.51100.104200 | **13th Floor** | 167d | 2027-08-12 | 2028-03-11 |  | start no earlier than 2027-08-12 | Zenith | 8650604 |
| 5982 | 36900.37000.45900.47500.49100.50900.51100.104200.1620700 | Block Work | 10d | 2027-08-12 | 2027-08-22 | 5966 |  | Zenith | 8711504 |
| 5983 | 36900.37000.45900.47500.49100.50900.51100.104200.1620800 | Fire sprinkler pipe fixing | 6d | 2027-08-22 | 2027-08-28 | 5967, 5982 |  | Zenith | 8711514 |
| 5984 | 36900.37000.45900.47500.49100.50900.51100.104200.1620900 | Internal Plumbing Works | 9d | 2027-08-22 | 2027-08-31 | 5968, 5982 |  | Zenith | 8711524 |
| 5985 | 36900.37000.45900.47500.49100.50900.51100.104200.1621000 | Waterproofing | 14d | 2027-10-10 | 2027-10-24 | 5969, 5984 |  | Zenith | 8711534 |
| 5986 | 36900.37000.45900.47500.49100.50900.51100.104200.1621100 | Internal Plaster | 14d | 2027-10-16 | 2027-10-30 | 5970, 5983FS+15d, 5984, 5985FF+6d |  | Zenith | 8711544 |
| 5987 | 36900.37000.45900.47500.49100.50900.51100.104200.1621200 | IPS flooring work | 10d | 2027-10-30 | 2027-12-24 | 5971, 5986 |  | Zenith | 8711554 |
| 5988 | 36900.37000.45900.47500.49100.50900.51100.104200.1621300 | Toilet dado work | 10d | 2027-10-30 | 2027-12-24 | 5972, 5985, 5986 |  | Zenith | 8711564 |
| 5989 | 36900.37000.45900.47500.49100.50900.51100.104200.1621400 | Toilet flooring work | 10d | 2027-12-24 | 2028-01-03 | 5973, 5988 |  | Zenith | 8711574 |
| 5990 | 36900.37000.45900.47500.49100.50900.51100.104200.1621500 | Living dinning flooring | 10d | 2028-01-03 | 2028-01-13 | 5974, 5989 |  | Zenith | 8711584 |
| 5991 | 36900.37000.45900.47500.49100.50900.51100.104200.1621600 | False Ceiling works | 10d | 2028-01-13 | 2028-01-23 | 5975, 5990 |  | Zenith | 8711594 |
| 5992 | 36900.37000.45900.47500.49100.50900.51100.104200.1621700 | Electrical wiring work | 10d | 2028-01-23 | 2028-02-02 | 5976, 5991 |  | Zenith | 8711604 |
| 5993 | 36900.37000.45900.47500.49100.50900.51100.104200.1621800 | Aluminium door-window fixing | 12d | 2028-02-02 | 2028-02-14 | 5977, 5987, 5992 |  | Zenith | 8711614 |
| 5994 | 36900.37000.45900.47500.49100.50900.51100.104200.1621900 | Putty primer coat | 8d | 2028-02-14 | 2028-02-22 | 5978, 5993 |  | Zenith | 8711624 |
| 5995 | 36900.37000.45900.47500.49100.50900.51100.104200.1622000 | Prehung Door fixing | 6d | 2028-02-22 | 2028-02-28 | 5979, 5994 |  | Zenith | 8711634 |
| 5996 | 36900.37000.45900.47500.49100.50900.51100.104200.1622100 | Painting 1st coat | 12d | 2028-02-28 | 2028-03-11 | 5980, 5995 |  | Zenith | 8711644 |

| ID | WBS | Task | Duration | Start | Finish | Predecessors | Constraint | Calendar | Unique_Task_ID |
| --- | --- | --- | --- | --- | --- | --- | --- | --- | --- |
| 5997 | 36900.37000.45900.47500.49100.50900.224100 | **Terrace Finishing** | 71d | 2027-04-14 | 2027-06-23 |  | start no earlier than 2027-04-14 | Zenith | 8656854 |
| 5998 | 36900.37000.45900.47500.49100.50900.224100.1021800 | Terrace waterproofing | 25d | 2027-04-14 | 2027-05-08 | 5753FS+140d |  | Zenith | 8682034 |
| 5999 | 36900.37000.45900.47500.49100.50900.224100.1021900 | Terrace finishing | 45d | 2027-05-10 | 2027-06-23 | 5998FS+1d |  | Zenith | 8682024 |
| 6000 | 36900.37000.45900.47500.49100.50900.120200 | **Common Area Finishing** | 345d | 2027-04-04 | 2028-04-27 |  | start no earlier than 2027-04-04 | Zenith | 8651754 |
| 6001 | 36900.37000.45900.47500.49100.50900.120200.1022000 | Masonary Work | 45d | 2027-04-14 | 2027-05-28 | 5753FS+140d |  | Zenith | 8682014 |
| 6002 | 36900.37000.45900.47500.49100.50900.120200.1022100 | Fire sprinkler pipe fixing | 45d | 2027-04-04 | 2027-05-18 | 5753FS+130d |  | Zenith | 8682004 |
| 6003 | 36900.37000.45900.47500.49100.50900.120200.1022200 | Corridoor, staircase, shaft Plaster & whitewash | 120d | 2027-05-29 | 2027-09-25 | 6001FF+120d, 6002SS+25d |  | Zenith | 8681994 |
| 6004 | 36900.37000.45900.47500.49100.50900.120200.1022300 | Staircase railing fixing | 100d | 2027-04-19 | 2027-07-27 | 6001FF+60d |  | Zenith | 8681984 |
| 6005 | 36900.37000.45900.47500.49100.50900.120200.1022400 | Fire staircase flooring | 100d | 2027-08-22 | 2028-01-13 | 6004FF+125d |  | Zenith | 8681974 |
| 6006 | 36900.37000.45900.47500.49100.50900.120200.1022500 | Main staircase flooring | 100d | 2027-08-22 | 2028-01-13 | 6004FF+125d |  | Zenith | 8681964 |
| 6007 | 36900.37000.45900.47500.49100.50900.120200.1022600 | Lobby flooring & Corridor | 100d | 2027-09-21 | 2028-02-12 | 6006FF+30d |  | Zenith | 8681954 |
| 6008 | 36900.37000.45900.47500.49100.50900.120200.1022700 | Fire & FHC door work | 60d | 2027-10-26 | 2028-02-07 | 6005FF+25d |  | Zenith | 8681944 |
| 6009 | 36900.37000.45900.47500.49100.50900.120200.1022800 | Ceiling & wall putty | 100d | 2027-10-11 | 2028-03-03 | 6007FF+20d, 6008FF+25d |  | Zenith | 8681934 |
| 6010 | 36900.37000.45900.47500.49100.50900.120200.1022900 | Ceiling & wall primer-painting | 100d | 2027-10-31 | 2028-03-23 | 6009FF+20d |  | Zenith | 8681924 |
| 6011 | 36900.37000.45900.47500.49100.50900.120200.1023000 | Electrical wiring work | 100d | 2027-12-30 | 2028-04-07 | 6010FF+15d |  | Zenith | 8681914 |
| 6012 | 36900.37000.45900.47500.49100.50900.120200.1023100 | Light fixture supply & installation | 20d | 2028-04-08 | 2028-04-27 | 6011 |  | Zenith | 8681904 |
| 6013 | 36900.37000.45900.47500.49100.50900.122000 | **Balcony Railing** | 110d | 2028-01-15 | 2028-05-04 |  | start no earlier than 2028-01-15 | Zenith | 8651884 |
| 6014 | 36900.37000.45900.47500.49100.50900.122000.1023200 | 3rd Floor | 10d | 2028-01-15 | 2028-01-25 | 5878FS+100d |  | Zenith | 8681894 |
| 6015 | 36900.37000.45900.47500.49100.50900.122000.1023300 | 4th Floor | 10d | 2028-01-25 | 2028-02-04 | 6014, 5894 |  | Zenith | 8681884 |
| 6016 | 36900.37000.45900.47500.49100.50900.122000.1023400 | 5th Floor | 10d | 2028-02-04 | 2028-02-14 | 6015, 5910 |  | Zenith | 8681874 |
| 6017 | 36900.37000.45900.47500.49100.50900.122000.1023500 | 6th Floor | 10d | 2028-02-14 | 2028-02-24 | 6016, 5926 |  | Zenith | 8681864 |
| 6018 | 36900.37000.45900.47500.49100.50900.122000.1023600 | 7th Floor | 10d | 2028-02-24 | 2028-03-05 | 6017, 5942 |  | Zenith | 8681854 |
| 6019 | 36900.37000.45900.47500.49100.50900.122000.1023700 | 8th Floor | 10d | 2028-03-05 | 2028-03-15 | 6018, 5958 |  | Zenith | 8681844 |
| 6020 | 36900.37000.45900.47500.49100.50900.122000.1023800 | 9th Floor | 10d | 2028-03-15 | 2028-03-25 | 6019, 5974 |  | Zenith | 8681834 |
| 6021 | 36900.37000.45900.47500.49100.50900.122000.1023900 | 10th Floor | 10d | 2028-03-25 | 2028-04-04 | 6020, 5990 |  | Zenith | 8681824 |
| 6022 | 36900.37000.45900.47500.49100.50900.122000.1024000 | 11th Floor | 10d | 2028-04-04 | 2028-04-14 | 6021 |  | Zenith | 8681814 |
| 6023 | 36900.37000.45900.47500.49100.50900.122000.1024100 | 12th Floor | 10d | 2028-04-14 | 2028-04-24 | 6022 |  | Zenith | 8681804 |
| 6024 | 36900.37000.45900.47500.49100.50900.122000.1024200 | 13th Floor | 10d | 2028-04-24 | 2028-05-04 | 6023 |  | Zenith | 8681794 |

| ID | WBS | Task | Duration | Start | Finish | Predecessors | Constraint | Calendar | Unique_Task_ID |
| --- | --- | --- | --- | --- | --- | --- | --- | --- | --- |
| 6025 | 36900.37000.45900.47500.121000 | **MEP work** | 261d | 2027-03-03 | 2028-01-02 |  | start no earlier than 2027-03-03 | Zenith | 8651874 |
| 6026 | 36900.37000.45900.47500.121000.125100 | **Electrical work** | 160d | 2027-04-04 | 2027-09-10 |  | start no earlier than 2027-04-04 | Zenith | 8652024 |
| 6027 | 36900.37000.45900.47500.121000.125100.840500 | Cable Tray | 60d | 2027-04-04 | 2027-06-02 | 5753FS+130d |  | Zenith | 8722434 |
| 6028 | 36900.37000.45900.47500.121000.125100.840600 | Cable, main & sub main | 30d | 2027-05-09 | 2027-06-07 | 6027FF+5d |  | Zenith | 8722424 |
| 6029 | 36900.37000.45900.47500.121000.125100.840700 | LT panel & DB | 60d | 2027-06-03 | 2027-08-01 | 6027 |  | Zenith | 8722414 |
| 6030 | 36900.37000.45900.47500.121000.125100.840800 | Rising main | 45d | 2027-06-18 | 2027-08-01 | 6027FS+15d |  | Zenith | 8722404 |
| 6031 | 36900.37000.45900.47500.121000.125100.840900 | Earthing Works | 45d | 2027-06-18 | 2027-08-01 | 6027FS+15d |  | Zenith | 8722394 |
| 6032 | 36900.37000.45900.47500.121000.125100.841000 | Energy meter | 30d | 2027-08-12 | 2027-09-10 | 6028, 6031FS+10d |  | Zenith | 8722384 |
| 6033 | 36900.37000.45900.47500.121000.125100.841100 | HVAC & Exhast fan | 75d | 2027-05-29 | 2027-08-11 | 6027FS-5d |  | Zenith | 8722374 |
| 6034 | 36900.37000.45900.47500.121000.125100.841200 | FTTH | 30d | 2027-07-23 | 2027-08-21 | 6029FS-10d |  | Zenith | 8722364 |
| 6035 | 36900.37000.45900.47500.121000.125100.841300 | Security System - FA & PA | 45d | 2027-07-18 | 2027-08-31 | 6029FS-15d, 6030FF+10d, 6033FF+5d, 6034FF |  | Zenith | 8722354 |
| 6036 | 36900.37000.45900.47500.121000.164600 | **Plumbing work** | 74d | 2027-08-17 | 2027-10-29 |  | start no earlier than 2027-08-17 | Zenith | 8652714 |
| 6037 | 36900.37000.45900.47500.121000.164600.841400 | Terrace looping | 20d | 2027-08-17 | 2027-09-05 | 5998FS+100d |  | Zenith | 8722344 |
| 6038 | 36900.37000.45900.47500.121000.164600.841500 | Shaft Plumbing | 20d | 2027-09-06 | 2027-09-25 | 6037, 6003FS-30d |  | Zenith | 8722334 |
| 6039 | 36900.37000.45900.47500.121000.164600.841600 | CP sanitary fixture supply | 20d | 2027-09-26 | 2027-10-15 | 6038 |  | Zenith | 8722324 |
| 6040 | 36900.37000.45900.47500.121000.164600.841700 | Cold & flushing water supply | 20d | 2027-09-26 | 2027-10-15 | 6038 |  | Zenith | 8722314 |
| 6041 | 36900.37000.45900.47500.121000.164600.841800 | Misc work | 20d | 2027-10-10 | 2027-10-29 | 6039FS-6d, 6040FS-6d |  | Zenith | 8722304 |
| 6042 | 36900.37000.45900.47500.121000.210800 | **Fire fighting work** | 75d | 2027-07-13 | 2027-09-25 |  | start no earlier than 2027-07-13 | Zenith | 8653304 |
| 6043 | 36900.37000.45900.47500.121000.210800.841900 | Fire hydrant work | 30d | 2027-07-13 | 2027-08-11 | 6003SS+45d |  | Zenith | 8722294 |
| 6044 | 36900.37000.45900.47500.121000.210800.842000 | Pipe connection & sprinkler installation | 30d | 2027-08-13 | 2027-09-11 | 6043FS+1d |  | Zenith | 8722284 |
| 6045 | 36900.37000.45900.47500.121000.210800.842100 | Shaft Downtake works | 30d | 2027-07-28 | 2027-08-26 | 5998, 6003FS-60d |  | Zenith | 8722274 |
| 6046 | 36900.37000.45900.47500.121000.210800.842200 | Connection to pump room | 30d | 2027-08-27 | 2027-09-25 | 6045 |  | Zenith | 8722264 |
| 6047 | 36900.37000.45900.47500.121000.219100 | **Escalator/Travelator works** | 261d | 2027-03-03 | 2028-01-02 |  | start no earlier than 2027-03-03 | Zenith | 8656584 |
| 6048 | 36900.37000.45900.47500.121000.219100.842300 | Shaft/Pit Handover | 30d | 2027-03-03 | 2027-04-01 | 5770FS+95d |  | Zenith | 8722254 |
| 6049 | 36900.37000.45900.47500.121000.219100.842400 | Escalator/Travelator installation work | 45d | 2027-04-02 | 2027-05-16 | 6048 |  | Zenith | 8722244 |
| 6050 | 36900.37000.45900.47500.121000.219100.842500 | Testing and commissioning | 30d | 2027-10-20 | 2028-01-02 | 6049, 5817FS+15d |  | Zenith | 8722234 |

| ID | WBS | Task | Duration | Start | Finish | Predecessors | Constraint | Calendar | Unique_Task_ID |
| --- | --- | --- | --- | --- | --- | --- | --- | --- | --- |
| 6051 | 36900.37000.45900.47500.121000.219000 | **Lift work** | 165d | 2027-03-13 | 2027-08-24 |  | start no earlier than 2027-03-13 | Zenith | 8656574 |
| 6052 | 36900.37000.45900.47500.121000.219000.842600 | Lift Shaft/Pit Handover | 45d | 2027-03-13 | 2027-04-26 | 5770FS+105d |  | Zenith | 8722224 |
| 6053 | 36900.37000.45900.47500.121000.219000.842700 | Lift installation work | 60d | 2027-04-27 | 2027-06-25 | 6052 |  | Zenith | 8722214 |
| 6054 | 36900.37000.45900.47500.121000.219000.842800 | Lift testing and commissioning | 60d | 2027-06-26 | 2027-08-24 | 6053 |  | Zenith | 8722204 |
| 6055 | 36900.37000.45900.47500.226300 | **Basement lobby** | 60d | 2027-06-26 | 2027-08-24 |  | start no earlier than 2027-06-26 | Zenith | 8656864 |
| 6056 | 36900.37000.45900.47500.226300.409100 | Basement lobby | 60d | 2027-06-26 | 2027-08-24 | 6053FF+60d, 5669FS+75d, 5670FS+75d |  | Zenith | 8731094 |
| 6057 | 36900.37000.45900.47500.222000 | **External Paint Works** | 135d | 2026-10-16 | 2027-04-13 |  | start no earlier than 2026-10-16 | Zenith | 8656724 |
| 6058 | 36900.37000.45900.47500.222000.409200 | Surface prepration | 60d | 2026-10-16 | 2027-01-28 | 5770FS+2d |  | Zenith | 8731084 |
| 6059 | 36900.37000.45900.47500.222000.409300 | External Painting (Primer, texture & first coat) | 60d | 2027-02-13 | 2027-04-13 | 6058FS+15d |  | Zenith | 8731074 |
| 6060 | 36900.37000.45900.47500.307100 | OC Application/Readiness | 1d | 2028-05-02 | 2028-05-02 | 5996FF+15d, 6080FF+15d, 6056FF+15d, 6059FF+15d, 5819FF+10d, 5999FF+60d, 6012FF+5d, 6035FF+15d, 6032FF+15d, 6079FF+5d, 6041FF+15d, 6044FF+15d, 6046FF+15d, 6050FF+15d, 6054FF+15d |  | Zenith | 8735204 |
| 6061 | 36900.37000.45900.47500.307200 | OC Receipt | 60d | 2028-05-03 | 2028-07-01 | 6060 |  | Zenith | 8735194 |
| 6062 | 36900.37000.45900.47500.120900 | **Post OC activities** | 853d | 2026-06-15 | 2029-02-26 |  | start no earlier than 2026-06-15 | Zenith | 8652164 |
| 6063 | 36900.37000.45900.47500.120900.409400 | CP & Sanitaryware | 120d | 2028-07-02 | 2028-10-29 | 6061 |  | Zenith | 8731064 |
| 6064 | 36900.37000.45900.47500.120900.409500 | Electrical Fixtures And Fittings | 120d | 2028-07-02 | 2028-10-29 | 6061 |  | Zenith | 8731054 |
| 6065 | 36900.37000.45900.47500.120900.409600 | Final coat paint external | 90d | 2027-04-14 | 2027-07-12 | 6059 |  | Zenith | 8731044 |
| 6066 | 36900.37000.45900.47500.120900.409700 | Final Coat Paint Internal | 90d | 2028-07-02 | 2028-09-29 | 6061 |  | Zenith | 8731034 |
| 6067 | 36900.37000.45900.47500.120900.409800 | Split AC Units installation | 90d | 2028-10-15 | 2029-02-26 | 6066FS+15d |  | Zenith | 8731024 |
| 6068 | 36900.37000.45900.47500.120900.409900 | Balcony Railing Glass Fixing | 100d | 2028-07-22 | 2028-10-29 | 6066FF+30d, 6024FS+15d |  | Zenith | 8731014 |
| 6069 | 36900.37000.45900.47500.120900.410000 | Wooden Flooring | 180d | 2028-07-02 | 2029-02-11 | 6061 |  | Zenith | 8731004 |
| 6070 | 36900.37000.45900.47500.120900.1778900 | On Completion of 6th Floor | 14d | 2026-06-15 | 2026-07-02 |  | start no earlier than 2026-06-15 | Yashwantpur Finshing | 9323754 |
| 6071 | 36900.37000.45900.47500.120900.1778800 | On Completion of Unit Internal Plaster | 5d | 2026-07-13 | 2026-07-17 |  | start no earlier than 2026-07-13 | Yashwantpur Finshing | 9323764 |
| 6072 | 36900.37000.45900.47500.120900.1778700 | On Application of Occupancy Certificate | 9d | 2026-07-17 | 2026-07-29 |  | start no earlier than 2026-07-17 | Yashwantpur Finshing | 9323765 |
| 6073 | 36900.37000.45900.47500.120900.1778600 | On Intimation of Possession | 4d | 2026-07-21 | 2026-07-24 |  | start no earlier than 2026-07-21 | Yashwantpur Finshing | 9323774 |
| 6074 | 36900.37000.45900.47500.120900.1778500 | On completion of Terrace Slab | 10d | 2026-07-27 | 2026-08-07 |  | start no earlier than 2026-07-27 | Yashwantpur Finshing | 9323784 |
| 6075 | 36900.37000.45900.47500.307300 | Offer To Possession | 180d | 2029-03-14 | 2029-09-09 | 6061FS+150d, 6063FS+15d, 6064FS+15d, 6065FS+15d, 6067FS+15d, 6068FS+15d, 6069FS+15d |  | Zenith | 8735184 |

| ID | WBS | Task | Duration | Start | Finish | Predecessors | Complete | Constraint | Calendar | Unique_Task_ID |
| --- | --- | --- | --- | --- | --- | --- | --- | --- | --- | --- |
| 6076 | 36900.37000.45900.165400 | **NTA** | 1033d | 2025-03-11 | 2028-04-21 |  | 18% | start no earlier than 2025-03-11 | Zenith | 8653434 |
| 6077 | 36900.37000.45900.165400.245300 | Structure | 501d | 2025-03-11 | 2027-01-02 | 5651FS-13d | 30% | start no earlier than 2025-03-11 | Zenith | 8735174 |
| 6078 | 36900.37000.45900.165400.307400 | MEP | 120d | 2027-06-02 | 2027-09-29 | 6077FS+150d |  |  | Zenith | 8735164 |
| 6079 | 36900.37000.45900.165400.307500 | Stack Parking | 45d | 2028-03-08 | 2028-04-21 | 6080FF+10d |  |  | Zenith | 263262 |
| 6080 | 36900.37000.45900.165400.307600 | Finishes, External Development & Misc. | 150d | 2027-09-30 | 2028-04-11 | 6077FS+120d, 6078FF+150d, 5753FF+150d |  |  | Zenith | 8735154 |
| 6081 | 36900.37000.37200 | **Phase 02** | 2227d | 2024-12-06 | 2031-09-17 |  | 1% | start no earlier than 2024-12-06 | Zenith | 8647544 |
| 6082 | 36900.37000.37200.130200 | **Pre-Contract Work** | 95d | 2025-11-19 | 2026-02-21 |  |  | start no earlier than 2025-11-19 | 7 day week No holidays | 8652154 |
| 6083 | 36900.37000.37200.130200.220800 | **Tender Package Release** | 1d | 2025-11-19 | 2025-11-19 |  |  | start no earlier than 2025-11-19 | 7 day week No holidays | 8656544 |
| 6084 | 36900.37000.37200.130200.220800.410100 | Excavation | 1d | 2025-11-19 | 2025-11-19 | 6088SF |  | start no earlier than 2024-02-20 | 7 day week No holidays | 8730994 |
| 6085 | 36900.37000.37200.130200.220800.410200 | Soldier Piling | 1d | 2025-11-19 | 2025-11-19 | 6089SF |  |  | 7 day week No holidays | 8730984 |
| 6086 | 36900.37000.37200.130200.220800.410300 | Core & Shell | 1d | 2025-11-19 | 2025-11-19 | 6090SF |  | start no earlier than 2024-04-30 | 7 day week No holidays | 8730974 |
| 6087 | 36900.37000.37200.130200.220900 | **BOQ Release** | 30d | 2025-11-19 | 2025-12-18 |  |  | start no earlier than 2025-11-19 | 7 day week No holidays | 8656554 |
| 6088 | 36900.37000.37200.130200.220900.410400 | Excavation | 30d | 2025-11-19 | 2025-12-18 | 6092SF-30d |  |  | 7 day week No holidays | 8730964 |
| 6089 | 36900.37000.37200.130200.220900.410500 | Soldier Piling | 30d | 2025-11-19 | 2025-12-18 | 6093SF-30d |  |  | 7 day week No holidays | 8730954 |
| 6090 | 36900.37000.37200.130200.220900.410600 | Core & Shell | 30d | 2025-11-19 | 2025-12-18 | 6094SF-30d |  |  | 7 day week No holidays | 8730944 |
| 6091 | 36900.37000.37200.130200.221000 | **Work Award** | 95d | 2025-11-19 | 2026-02-21 |  |  | start no earlier than 2025-11-19 | 7 day week No holidays | 8656564 |
| 6092 | 36900.37000.37200.130200.221000.410700 | Excavation | 30d | 2025-11-19 | 2025-12-18 | 6098SF-15d |  |  | 7 day week No holidays | 8730934 |
| 6093 | 36900.37000.37200.130200.221000.410800 | Soldier Piling | 45d | 2025-11-19 | 2026-01-02 | 6099SF-15d |  |  | 7 day week No holidays | 8730924 |
| 6094 | 36900.37000.37200.130200.221000.410900 | Core & Shell | 95d | 2025-11-19 | 2026-02-21 | 6104SF-30d |  |  | 7 day week No holidays | 8730914 |
| 6095 | 36900.37000.37200.38400 | **Tower 07** | 1537d | 2025-06-02 | 2030-02-27 |  | 1% | start no earlier than 2025-06-02 | Zenith | 8647624 |
| 6096 | 36900.37000.37200.38400.63700 | **Sub-Structure Works** | 424d | 2025-06-02 | 2026-08-14 |  | 30% | start no earlier than 2025-06-02 | Zenith | 8648414 |
| 6097 | 36900.37000.37200.38400.63700.164700 | **Soil Bed Preparation** | 63d | 2025-06-02 | 2025-08-03 |  | 100% | start no earlier than 2025-06-02 | Zenith | 8653934 |
| 6098 | 36900.37000.37200.38400.63700.164700.231100 | Mass Excavation (2m) | 6d | 2025-06-02 | 2025-06-07 | 7003FS+2d | 100% | start no earlier than 2025-06-02 | Zenith | 8722194 |
| 6099 | 36900.37000.37200.38400.63700.164700.231200 | Mass Excavation (4m) | 6d | 2025-06-04 | 2025-06-09 | 6098 | 100% | start no earlier than 2025-06-04 | Zenith | 8722184 |
| 6100 | 36900.37000.37200.38400.63700.164700.231300 | Foundation Mass Excavation | 3d | 2025-06-09 | 2025-06-11 | 6099 | 100% | start no earlier than 2025-06-09 | Zenith | 8722174 |
| 6101 | 36900.37000.37200.38400.63700.164700.231400 | Soil dressing & ATT | 12d | 2025-06-16 | 2025-08-03 | 6100 | 100% | start no earlier than 2025-06-16 | Zenith | 8722164 |

| ID | WBS | Task | Duration | Start | Finish | Predecessors | Complete | Constraint | Calendar | Unique_Task_ID |
| --- | --- | --- | --- | --- | --- | --- | --- | --- | --- | --- |
| 6102 | 36900.37000.37200.38400.63700.119300 | **Structure Works** | 266d | 2025-06-20 | 2026-03-27 |  | 41% | start no earlier than 2025-06-20 | Zenith | 8651724 |
| 6103 | 36900.37000.37200.38400.63700.119300.139900 | **Raft Foundation** | 107d | 2025-06-20 | 2025-10-04 |  | 100% | start no earlier than 2025-06-20 | Zenith | 8652674 |
| 6104 | 36900.37000.37200.38400.63700.119300.139900.256400 | PCC | 12d | 2025-06-20 | 2025-08-17 | 6101FS-56d | 100% | start no earlier than 2025-06-20 | Zenith | 8681784 |
| 6105 | 36900.37000.37200.38400.63700.119300.139900.256300 | Column/SW layout marking | 15d | 2025-07-16 | 2025-08-17 | 6104FS-32d | 100% | start no earlier than 2025-07-16 | Zenith | 8681774 |
| 6106 | 36900.37000.37200.38400.63700.119300.139900.256200 | Reinforcement | 24d | 2025-07-17 | 2025-09-30 | 6105SS+2d | 100% | start no earlier than 2025-07-17 | Zenith | 8681764 |
| 6107 | 36900.37000.37200.38400.63700.119300.139900.256100 | Formwork (Conventional) | 5d | 2025-09-07 | 2025-09-30 | 6106FF+3d | 100% | start no earlier than 2025-09-07 | Zenith | 8681754 |
| 6108 | 36900.37000.37200.38400.63700.119300.139900.256000 | Concreting | 5d | 2025-09-26 | 2025-10-04 | 6107FF+3d | 100% | start no earlier than 2025-09-26 | Zenith | 8681744 |
| 6109 | 36900.37000.37200.38400.63700.119300.140000 | **Basement 03 Roof Slab (Dummy)/stitch/tie slab** | 25d | 2025-11-19 | 2025-12-28 |  |  | start no earlier than 2025-11-19 | Zenith | 8652224 |
| 6110 | 36900.37000.37200.38400.63700.119300.140000.1024300 | Column/SW Reinforcement | 9d | 2025-11-19 | 2025-11-27 | 6108 |  |  | Zenith | 8681734 |
| 6111 | 36900.37000.37200.38400.63700.119300.140000.1024400 | SW Formwork (Conventional) | 9d | 2025-11-23 | 2025-12-16 | 6110SS+4d |  |  | Zenith | 8681724 |
| 6112 | 36900.37000.37200.38400.63700.119300.140000.1024500 | Column/SW Concreting | 9d | 2025-11-27 | 2025-12-20 | 6111SS+4d |  |  | Zenith | 8681714 |
| 6113 | 36900.37000.37200.38400.63700.119300.140000.1024600 | Slab Formwork (Conventional) | 9d | 2025-12-16 | 2025-12-24 | 6112SS+4d |  |  | Zenith | 8681704 |
| 6114 | 36900.37000.37200.38400.63700.119300.140000.1024700 | Slab Reinforcement + Conduting | 3d | 2025-12-25 | 2025-12-27 | 6113 |  |  | Zenith | 8681694 |
| 6115 | 36900.37000.37200.38400.63700.119300.140000.1024800 | Concreting | 1d | 2025-12-28 | 2025-12-28 | 6114 |  |  | Zenith | 8681684 |
| 6116 | 36900.37000.37200.38400.63700.119300.140100 | **Basement 02 Roof Slab** | 108d | 2025-10-06 | 2026-02-05 |  | 65% | start no earlier than 2025-10-06 | Zenith | 8652234 |
| 6117 | 36900.37000.37200.38400.63700.119300.140100.255900 | Column/SW Reinforcement | 13d | 2025-10-06 | 2025-11-06 | 6115FS-30d | 100% | start no earlier than 2025-10-06 | Zenith | 8681674 |
| 6118 | 36900.37000.37200.38400.63700.119300.140100.255800 | SW Formwork (Conventional) | 12d | 2025-10-16 | 2025-11-22 | 6117SS+4d | 66% | start no earlier than 2025-10-16 | Zenith | 8681664 |
| 6119 | 36900.37000.37200.38400.63700.119300.140100.255700 | Column/SW Concreting | 10d | 2025-10-23 | 2025-11-21 | 6118SS+8d | 70% | start no earlier than 2025-10-23 | Zenith | 8681654 |
| 6120 | 36900.37000.37200.38400.63700.119300.140100.255600 | Slab Formwork (Conventional) | 16d | 2025-11-09 | 2025-11-26 | 6119SS+4d | 50% | start no earlier than 2025-11-09 | Zenith | 8681644 |
| 6121 | 36900.37000.37200.38400.63700.119300.140100.1024900 | Slab Reinforcement + Conduting | 3d | 2026-02-02 | 2026-02-04 | 6120FS+52d |  |  | Zenith | 8681634 |
| 6122 | 36900.37000.37200.38400.63700.119300.140100.1025000 | Concreting | 1d | 2026-02-05 | 2026-02-05 | 6121 |  |  | Zenith | 8681624 |
| 6123 | 36900.37000.37200.38400.63700.119300.140200 | **Basement 01 Roof Slab** | 25d | 2026-02-06 | 2026-03-02 |  |  | start no earlier than 2026-02-06 | Zenith | 8652244 |
| 6124 | 36900.37000.37200.38400.63700.119300.140200.1025100 | Column/SW Reinforcement | 9d | 2026-02-06 | 2026-02-14 | 6122 |  |  | Zenith | 8681614 |
| 6125 | 36900.37000.37200.38400.63700.119300.140200.1025200 | SW Formwork (Conventional) | 9d | 2026-02-10 | 2026-02-18 | 6124SS+4d |  |  | Zenith | 8681604 |
| 6126 | 36900.37000.37200.38400.63700.119300.140200.1025300 | Column/SW Concreting | 9d | 2026-02-14 | 2026-02-22 | 6125SS+4d |  |  | Zenith | 8681594 |
| 6127 | 36900.37000.37200.38400.63700.119300.140200.1025400 | Slab Formwork (Conventional) | 9d | 2026-02-18 | 2026-02-26 | 6126SS+4d |  |  | Zenith | 8681584 |
| 6128 | 36900.37000.37200.38400.63700.119300.140200.1025500 | Slab Reinforcement + Conduting | 3d | 2026-02-27 | 2026-03-01 | 6127 |  |  | Zenith | 8681574 |
| 6129 | 36900.37000.37200.38400.63700.119300.140200.1025600 | Concreting | 1d | 2026-03-02 | 2026-03-02 | 6128 |  |  | Zenith | 8681564 |

| ID | WBS | Task | Duration | Start | Finish | Predecessors | Constraint | Calendar | Unique_Task_ID |
| --- | --- | --- | --- | --- | --- | --- | --- | --- | --- |
| 6130 | 36900.37000.37200.38400.63700.119300.140300 | **Podium Slab/Ground Roof Floor Slab** | 25d | 2026-03-03 | 2026-03-27 |  | start no earlier than 2026-03-03 | Zenith | 8652254 |
| 6131 | 36900.37000.37200.38400.63700.119300.140300.1025700 | Column/SW Reinforcement | 9d | 2026-03-03 | 2026-03-11 | 6129 |  | Zenith | 8681554 |
| 6132 | 36900.37000.37200.38400.63700.119300.140300.1025800 | SW Formwork (Conventional) | 9d | 2026-03-07 | 2026-03-15 | 6131SS+4d |  | Zenith | 8681544 |
| 6133 | 36900.37000.37200.38400.63700.119300.140300.1025900 | Column/SW Concreting | 9d | 2026-03-11 | 2026-03-19 | 6132SS+4d |  | Zenith | 8681534 |
| 6134 | 36900.37000.37200.38400.63700.119300.140300.1026000 | Slab Formwork (Conventional) | 9d | 2026-03-15 | 2026-03-23 | 6133SS+4d |  | Zenith | 8681524 |
| 6135 | 36900.37000.37200.38400.63700.119300.140300.1026100 | Slab Reinforcement + Conduting | 3d | 2026-03-24 | 2026-03-26 | 6134 |  | Zenith | 8681514 |
| 6136 | 36900.37000.37200.38400.63700.119300.140300.1026200 | Concreting | 1d | 2026-03-27 | 2026-03-27 | 6135 |  | Zenith | 8681504 |
| 6137 | 36900.37000.37200.38400.63700.210700 | **Substructure Finishes** | 110d | 2026-04-27 | 2026-08-14 |  | start no earlier than 2026-04-27 | Zenith | 8653984 |
| 6138 | 36900.37000.37200.38400.63700.210700.842900 | Masonary Work | 35d | 2026-04-27 | 2026-05-31 | 6136FS+30d |  | Zenith | 8722154 |
| 6139 | 36900.37000.37200.38400.63700.210700.843000 | Plaster Work | 30d | 2026-06-01 | 2026-06-30 | 6138 |  | Zenith | 8722144 |
| 6140 | 36900.37000.37200.38400.63700.210700.843100 | Structural Steel work | 50d | 2026-05-27 | 2026-07-15 | 6136FS+60d |  | Zenith | 8722134 |
| 6141 | 36900.37000.37200.38400.63700.210700.843200 | White Wash & Misc. | 35d | 2026-07-11 | 2026-08-14 | 6139FS+10d |  | Zenith | 8722124 |
| 6142 | 36900.37000.37200.38400.39400 | **Superstructure** | 848d | 2026-03-28 | 2028-10-20 |  | start no earlier than 2026-03-28 | Zenith | 8647704 |
| 6143 | 36900.37000.37200.38400.39400.45000 | **RCC structure** | 538d | 2026-03-28 | 2027-10-31 |  | start no earlier than 2026-03-28 | Zenith | 8647984 |
| 6144 | 36900.37000.37200.38400.39400.45000.188800 | **1st Floor Roof slab** | 25d | 2026-03-28 | 2026-04-21 |  | start no earlier than 2026-03-28 | Zenith | 8656434 |
| 6145 | 36900.37000.37200.38400.39400.45000.188800.1026300 | Reinforcement | 20d | 2026-03-28 | 2026-04-16 | 6136 |  | Zenith | 8681494 |
| 6146 | 36900.37000.37200.38400.39400.45000.188800.1026400 | Conduiting | 20d | 2026-03-31 | 2026-04-19 | 6145SS+3d |  | Zenith | 8681484 |
| 6147 | 36900.37000.37200.38400.39400.45000.188800.1026500 | Formwork | 20d | 2026-04-01 | 2026-04-20 | 6145SS+4d |  | Zenith | 8681474 |
| 6148 | 36900.37000.37200.38400.39400.45000.188800.1026600 | Concreting | 1d | 2026-04-21 | 2026-04-21 | 6146FS+1d, 6147 |  | Zenith | 8681464 |
| 6149 | 36900.37000.37200.38400.39400.45000.188900 | **2nd Floor Roof slab** | 25d | 2026-04-22 | 2026-05-16 |  | start no earlier than 2026-04-22 | Zenith | 8656424 |
| 6150 | 36900.37000.37200.38400.39400.45000.188900.1026700 | Reinforcement | 20d | 2026-04-22 | 2026-05-11 | 6148 |  | Zenith | 8681454 |
| 6151 | 36900.37000.37200.38400.39400.45000.188900.1026800 | Conduiting | 20d | 2026-04-25 | 2026-05-14 | 6150SS+3d |  | Zenith | 8681444 |
| 6152 | 36900.37000.37200.38400.39400.45000.188900.1026900 | Formwork | 20d | 2026-04-26 | 2026-05-15 | 6150SS+4d |  | Zenith | 8681434 |
| 6153 | 36900.37000.37200.38400.39400.45000.188900.1027000 | Concreting | 1d | 2026-05-16 | 2026-05-16 | 6151FS+1d, 6152 |  | Zenith | 8681424 |

| ID | WBS | Task | Duration | Start | Finish | Predecessors | Constraint | Calendar | Unique_Task_ID |
| --- | --- | --- | --- | --- | --- | --- | --- | --- | --- |
| 6154 | 36900.37000.37200.38400.39400.45000.189000 | **3rd Floor Roof slab** | 18d | 2026-05-17 | 2026-06-03 |  | start no earlier than 2026-05-17 | Zenith | 8656414 |
| 6155 | 36900.37000.37200.38400.39400.45000.189000.1027100 | Reinforcement | 13d | 2026-05-17 | 2026-05-29 | 6153 |  | Zenith | 8681414 |
| 6156 | 36900.37000.37200.38400.39400.45000.189000.1027200 | Conduiting | 13d | 2026-05-20 | 2026-06-01 | 6155SS+3d |  | Zenith | 8681404 |
| 6157 | 36900.37000.37200.38400.39400.45000.189000.1027300 | Formwork | 13d | 2026-05-21 | 2026-06-02 | 6155SS+4d |  | Zenith | 8681394 |
| 6158 | 36900.37000.37200.38400.39400.45000.189000.1027400 | Concreting | 1d | 2026-06-03 | 2026-06-03 | 6156FS+1d, 6157 |  | Zenith | 8681384 |
| 6159 | 36900.37000.37200.38400.39400.45000.189100 | **4th floor roof slab** | 14d | 2026-06-04 | 2026-06-17 |  | start no earlier than 2026-06-04 | Zenith | 8656404 |
| 6160 | 36900.37000.37200.38400.39400.45000.189100.1027500 | Reinforcement | 11d | 2026-06-04 | 2026-06-14 | 6158 |  | Zenith | 8681374 |
| 6161 | 36900.37000.37200.38400.39400.45000.189100.1027600 | Conduiting | 11d | 2026-06-05 | 2026-06-15 | 6160SS+1d |  | Zenith | 8681364 |
| 6162 | 36900.37000.37200.38400.39400.45000.189100.1027700 | Formwork | 11d | 2026-06-06 | 2026-06-16 | 6160SS+2d |  | Zenith | 8681354 |
| 6163 | 36900.37000.37200.38400.39400.45000.189100.1027800 | Concreting | 1d | 2026-06-17 | 2026-06-17 | 6161FS+1d, 6162 |  | Zenith | 8681344 |
| 6164 | 36900.37000.37200.38400.39400.45000.189200 | **5th floor roof slab** | 14d | 2026-06-18 | 2026-07-01 |  | start no earlier than 2026-06-18 | Zenith | 8656394 |
| 6165 | 36900.37000.37200.38400.39400.45000.189200.1027900 | Reinforcement | 11d | 2026-06-18 | 2026-06-28 | 6163 |  | Zenith | 8681334 |
| 6166 | 36900.37000.37200.38400.39400.45000.189200.1028000 | Conduiting | 11d | 2026-06-19 | 2026-06-29 | 6165SS+1d |  | Zenith | 8681324 |
| 6167 | 36900.37000.37200.38400.39400.45000.189200.1028100 | Formwork | 11d | 2026-06-20 | 2026-06-30 | 6165SS+2d |  | Zenith | 8681314 |
| 6168 | 36900.37000.37200.38400.39400.45000.189200.1028200 | Concreting | 1d | 2026-07-01 | 2026-07-01 | 6166FS+1d, 6167 |  | Zenith | 8681304 |
| 6169 | 36900.37000.37200.38400.39400.45000.189300 | **6th floor roof slab** | 14d | 2026-07-02 | 2026-07-15 |  | start no earlier than 2026-07-02 | Zenith | 8656384 |
| 6170 | 36900.37000.37200.38400.39400.45000.189300.1028300 | Reinforcement | 11d | 2026-07-02 | 2026-07-12 | 6168 |  | Zenith | 8681294 |
| 6171 | 36900.37000.37200.38400.39400.45000.189300.1028400 | Conduiting | 11d | 2026-07-03 | 2026-07-13 | 6170SS+1d |  | Zenith | 8681284 |
| 6172 | 36900.37000.37200.38400.39400.45000.189300.1028500 | Formwork | 11d | 2026-07-04 | 2026-07-14 | 6170SS+2d |  | Zenith | 8681274 |
| 6173 | 36900.37000.37200.38400.39400.45000.189300.1028600 | Concreting | 1d | 2026-07-15 | 2026-07-15 | 6171FS+1d, 6172 |  | Zenith | 8681264 |
| 6174 | 36900.37000.37200.38400.39400.45000.189400 | **7th floor roof slab** | 14d | 2026-07-16 | 2026-07-29 |  | start no earlier than 2026-07-16 | Zenith | 8656374 |
| 6175 | 36900.37000.37200.38400.39400.45000.189400.1028700 | Reinforcement | 11d | 2026-07-16 | 2026-07-26 | 6173 |  | Zenith | 8681254 |
| 6176 | 36900.37000.37200.38400.39400.45000.189400.1028800 | Conduiting | 11d | 2026-07-17 | 2026-07-27 | 6175SS+1d |  | Zenith | 8681244 |
| 6177 | 36900.37000.37200.38400.39400.45000.189400.1028900 | Formwork | 11d | 2026-07-18 | 2026-07-28 | 6175SS+2d |  | Zenith | 8681234 |
| 6178 | 36900.37000.37200.38400.39400.45000.189400.1029000 | Concreting | 1d | 2026-07-29 | 2026-07-29 | 6176FS+1d, 6177 |  | Zenith | 8681224 |

| ID | WBS | Task | Duration | Start | Finish | Predecessors | Constraint | Calendar | Unique_Task_ID |
| --- | --- | --- | --- | --- | --- | --- | --- | --- | --- |
| 6179 | 36900.37000.37200.38400.39400.45000.189500 | **8th floor roof slab** | 14d | 2026-07-30 | 2026-08-12 |  | start no earlier than 2026-07-30 | Zenith | 8656364 |
| 6180 | 36900.37000.37200.38400.39400.45000.189500.1029100 | Reinforcement | 11d | 2026-07-30 | 2026-08-09 | 6178 |  | Zenith | 8681214 |
| 6181 | 36900.37000.37200.38400.39400.45000.189500.1029200 | Conduiting | 11d | 2026-07-31 | 2026-08-10 | 6180SS+1d |  | Zenith | 8681204 |
| 6182 | 36900.37000.37200.38400.39400.45000.189500.1029300 | Formwork | 11d | 2026-08-01 | 2026-08-11 | 6180SS+2d |  | Zenith | 8681194 |
| 6183 | 36900.37000.37200.38400.39400.45000.189500.1029400 | Concreting | 1d | 2026-08-12 | 2026-08-12 | 6181FS+1d, 6182 |  | Zenith | 8681184 |
| 6184 | 36900.37000.37200.38400.39400.45000.189600 | **9th floor roof slab** | 14d | 2026-08-13 | 2026-08-26 |  | start no earlier than 2026-08-13 | Zenith | 8656344 |
| 6185 | 36900.37000.37200.38400.39400.45000.189600.1029500 | Reinforcement | 11d | 2026-08-13 | 2026-08-23 | 6183 |  | Zenith | 8681174 |
| 6186 | 36900.37000.37200.38400.39400.45000.189600.1029600 | Conduiting | 11d | 2026-08-14 | 2026-08-24 | 6185SS+1d |  | Zenith | 8681164 |
| 6187 | 36900.37000.37200.38400.39400.45000.189600.1029700 | Formwork | 11d | 2026-08-15 | 2026-08-25 | 6185SS+2d |  | Zenith | 8681154 |
| 6188 | 36900.37000.37200.38400.39400.45000.189600.1029800 | Concreting | 1d | 2026-08-26 | 2026-08-26 | 6186FS+1d, 6187 |  | Zenith | 8681144 |
| 6189 | 36900.37000.37200.38400.39400.45000.189700 | **10th floor roof slab** | 14d | 2026-08-27 | 2026-09-09 |  | start no earlier than 2026-08-27 | Zenith | 8656334 |
| 6190 | 36900.37000.37200.38400.39400.45000.189700.1029900 | Reinforcement | 11d | 2026-08-27 | 2026-09-06 | 6188 |  | Zenith | 8681134 |
| 6191 | 36900.37000.37200.38400.39400.45000.189700.1030000 | Conduiting | 11d | 2026-08-28 | 2026-09-07 | 6190SS+1d |  | Zenith | 8681124 |
| 6192 | 36900.37000.37200.38400.39400.45000.189700.1030100 | Formwork | 11d | 2026-08-29 | 2026-09-08 | 6190SS+2d |  | Zenith | 8681114 |
| 6193 | 36900.37000.37200.38400.39400.45000.189700.1030200 | Concreting | 1d | 2026-09-09 | 2026-09-09 | 6191FS+1d, 6192 |  | Zenith | 8681104 |
| 6194 | 36900.37000.37200.38400.39400.45000.189800 | **11th floor roof slab** | 14d | 2026-09-10 | 2026-09-23 |  | start no earlier than 2026-09-10 | Zenith | 8656324 |
| 6195 | 36900.37000.37200.38400.39400.45000.189800.1030300 | Reinforcement | 11d | 2026-09-10 | 2026-09-20 | 6193 |  | Zenith | 8681094 |
| 6196 | 36900.37000.37200.38400.39400.45000.189800.1030400 | Conduiting | 11d | 2026-09-11 | 2026-09-21 | 6195SS+1d |  | Zenith | 8681084 |
| 6197 | 36900.37000.37200.38400.39400.45000.189800.1030500 | Formwork | 11d | 2026-09-12 | 2026-09-22 | 6195SS+2d |  | Zenith | 8681074 |
| 6198 | 36900.37000.37200.38400.39400.45000.189800.1030600 | Concreting | 1d | 2026-09-23 | 2026-09-23 | 6196FS+1d, 6197 |  | Zenith | 8681064 |
| 6199 | 36900.37000.37200.38400.39400.45000.189900 | **12th floor roof slab** | 14d | 2026-09-24 | 2026-10-07 |  | start no earlier than 2026-09-24 | Zenith | 8656314 |
| 6200 | 36900.37000.37200.38400.39400.45000.189900.1030700 | Reinforcement | 11d | 2026-09-24 | 2026-10-04 | 6198 |  | Zenith | 8681054 |
| 6201 | 36900.37000.37200.38400.39400.45000.189900.1030800 | Conduiting | 11d | 2026-09-25 | 2026-10-05 | 6200SS+1d |  | Zenith | 8681044 |
| 6202 | 36900.37000.37200.38400.39400.45000.189900.1030900 | Formwork | 11d | 2026-09-26 | 2026-10-06 | 6200SS+2d |  | Zenith | 8681034 |
| 6203 | 36900.37000.37200.38400.39400.45000.189900.1031000 | Concreting | 1d | 2026-10-07 | 2026-10-07 | 6201FS+1d, 6202 |  | Zenith | 8681024 |

| ID | WBS | Task | Duration | Start | Finish | Predecessors | Constraint | Calendar | Unique_Task_ID |
| --- | --- | --- | --- | --- | --- | --- | --- | --- | --- |
| 6204 | 36900.37000.37200.38400.39400.45000.190000 | **13th floor roof slab** | 14d | 2026-10-08 | 2026-10-21 |  | start no earlier than 2026-10-08 | Zenith | 8656304 |
| 6205 | 36900.37000.37200.38400.39400.45000.190000.1031100 | Reinforcement | 11d | 2026-10-08 | 2026-10-18 | 6203 |  | Zenith | 8681014 |
| 6206 | 36900.37000.37200.38400.39400.45000.190000.1031200 | Conduiting | 11d | 2026-10-09 | 2026-10-19 | 6205SS+1d |  | Zenith | 8681004 |
| 6207 | 36900.37000.37200.38400.39400.45000.190000.1031300 | Formwork | 11d | 2026-10-10 | 2026-10-20 | 6205SS+2d |  | Zenith | 8680994 |
| 6208 | 36900.37000.37200.38400.39400.45000.190000.1031400 | Concreting | 1d | 2026-10-21 | 2026-10-21 | 6206FS+1d, 6207 |  | Zenith | 8680984 |
| 6209 | 36900.37000.37200.38400.39400.45000.190100 | **14th floor roof slab** | 14d | 2026-10-22 | 2026-12-19 |  | start no earlier than 2026-10-22 | Zenith | 8656294 |
| 6210 | 36900.37000.37200.38400.39400.45000.190100.1031500 | Reinforcement | 12d | 2026-10-22 | 2026-12-17 | 6208 |  | Zenith | 8680974 |
| 6211 | 36900.37000.37200.38400.39400.45000.190100.1031600 | Conduiting | 12d | 2026-10-23 | 2026-12-18 | 6210SS+1d |  | Zenith | 8680964 |
| 6212 | 36900.37000.37200.38400.39400.45000.190100.1031700 | Formwork | 12d | 2026-10-23 | 2026-12-18 | 6210SS+1d |  | Zenith | 8680954 |
| 6213 | 36900.37000.37200.38400.39400.45000.190100.1031800 | Concreting | 1d | 2026-12-19 | 2026-12-19 | 6211, 6212 |  | Zenith | 8680944 |
| 6214 | 36900.37000.37200.38400.39400.45000.190200 | **15th floor roof slab** | 14d | 2026-12-20 | 2027-01-02 |  | start no earlier than 2026-12-20 | Zenith | 8656284 |
| 6215 | 36900.37000.37200.38400.39400.45000.190200.1031900 | Reinforcement | 11d | 2026-12-20 | 2026-12-30 | 6213 |  | Zenith | 8680934 |
| 6216 | 36900.37000.37200.38400.39400.45000.190200.1032000 | Conduiting | 11d | 2026-12-21 | 2026-12-31 | 6215SS+1d |  | Zenith | 8680924 |
| 6217 | 36900.37000.37200.38400.39400.45000.190200.1032100 | Formwork | 11d | 2026-12-22 | 2027-01-01 | 6215SS+2d |  | Zenith | 8680914 |
| 6218 | 36900.37000.37200.38400.39400.45000.190200.1032200 | Concreting | 1d | 2027-01-02 | 2027-01-02 | 6216FS+1d, 6217 |  | Zenith | 8680904 |
| 6219 | 36900.37000.37200.38400.39400.45000.190300 | **16th floor roof slab** | 12d | 2027-01-03 | 2027-01-14 |  | start no earlier than 2027-01-03 | Zenith | 8656274 |
| 6220 | 36900.37000.37200.38400.39400.45000.190300.1032300 | Reinforcement | 9d | 2027-01-03 | 2027-01-11 | 6218 |  | Zenith | 8680894 |
| 6221 | 36900.37000.37200.38400.39400.45000.190300.1032400 | Conduiting | 9d | 2027-01-04 | 2027-01-12 | 6220SS+1d |  | Zenith | 8680884 |
| 6222 | 36900.37000.37200.38400.39400.45000.190300.1032500 | Formwork | 9d | 2027-01-05 | 2027-01-13 | 6220SS+2d |  | Zenith | 8680874 |
| 6223 | 36900.37000.37200.38400.39400.45000.190300.1032600 | Concreting | 1d | 2027-01-14 | 2027-01-14 | 6221, 6222 |  | Zenith | 8680864 |
| 6224 | 36900.37000.37200.38400.39400.45000.190400 | **17th floor roof slab** | 14d | 2027-01-15 | 2027-01-28 |  | start no earlier than 2027-01-15 | Zenith | 8656254 |
| 6225 | 36900.37000.37200.38400.39400.45000.190400.1032700 | Reinforcement | 11d | 2027-01-15 | 2027-01-25 | 6223 |  | Zenith | 8680854 |
| 6226 | 36900.37000.37200.38400.39400.45000.190400.1032800 | Conduiting | 11d | 2027-01-16 | 2027-01-26 | 6225SS+1d |  | Zenith | 8680844 |
| 6227 | 36900.37000.37200.38400.39400.45000.190400.1032900 | Formwork | 11d | 2027-01-17 | 2027-01-27 | 6225SS+2d |  | Zenith | 8680834 |
| 6228 | 36900.37000.37200.38400.39400.45000.190400.1033000 | Concreting | 1d | 2027-01-28 | 2027-01-28 | 6226FS+1d, 6227 |  | Zenith | 8680824 |

| ID | WBS | Task | Duration | Start | Finish | Predecessors | Constraint | Calendar | Unique_Task_ID |
| --- | --- | --- | --- | --- | --- | --- | --- | --- | --- |
| 6229 | 36900.37000.37200.38400.39400.45000.190500 | **18th floor roof slab** | 14d | 2027-01-29 | 2027-02-11 |  | start no earlier than 2027-01-29 | Zenith | 8656244 |
| 6230 | 36900.37000.37200.38400.39400.45000.190500.1033100 | Reinforcement | 11d | 2027-01-29 | 2027-02-08 | 6228 |  | Zenith | 8680814 |
| 6231 | 36900.37000.37200.38400.39400.45000.190500.1033200 | Conduiting | 11d | 2027-01-30 | 2027-02-09 | 6230SS+1d |  | Zenith | 8680804 |
| 6232 | 36900.37000.37200.38400.39400.45000.190500.1033300 | Formwork | 11d | 2027-01-31 | 2027-02-10 | 6230SS+2d |  | Zenith | 8680794 |
| 6233 | 36900.37000.37200.38400.39400.45000.190500.1033400 | Concreting | 1d | 2027-02-11 | 2027-02-11 | 6231FS+1d, 6232 |  | Zenith | 8680784 |
| 6234 | 36900.37000.37200.38400.39400.45000.190600 | **19th floor roof slab** | 13d | 2027-02-12 | 2027-02-24 |  | start no earlier than 2027-02-12 | Zenith | 8656234 |
| 6235 | 36900.37000.37200.38400.39400.45000.190600.1033500 | Reinforcement | 10d | 2027-02-12 | 2027-02-21 | 6233 |  | Zenith | 8680774 |
| 6236 | 36900.37000.37200.38400.39400.45000.190600.1033600 | Conduiting | 10d | 2027-02-13 | 2027-02-22 | 6235SS+1d |  | Zenith | 8680764 |
| 6237 | 36900.37000.37200.38400.39400.45000.190600.1033700 | Formwork | 10d | 2027-02-14 | 2027-02-23 | 6235SS+2d |  | Zenith | 8680754 |
| 6238 | 36900.37000.37200.38400.39400.45000.190600.1033800 | Concreting | 1d | 2027-02-24 | 2027-02-24 | 6236FS+1d, 6237 |  | Zenith | 8680744 |
| 6239 | 36900.37000.37200.38400.39400.45000.190700 | **20th floor roof slab** | 13d | 2027-02-25 | 2027-03-09 |  | start no earlier than 2027-02-25 | Zenith | 8656224 |
| 6240 | 36900.37000.37200.38400.39400.45000.190700.1033900 | Reinforcement | 10d | 2027-02-25 | 2027-03-06 | 6238 |  | Zenith | 8680734 |
| 6241 | 36900.37000.37200.38400.39400.45000.190700.1034000 | Conduiting | 10d | 2027-02-26 | 2027-03-07 | 6240SS+1d |  | Zenith | 8680724 |
| 6242 | 36900.37000.37200.38400.39400.45000.190700.1034100 | Formwork | 10d | 2027-02-27 | 2027-03-08 | 6240SS+2d |  | Zenith | 8680714 |
| 6243 | 36900.37000.37200.38400.39400.45000.190700.1034200 | Concreting | 1d | 2027-03-09 | 2027-03-09 | 6241FS+1d, 6242 |  | Zenith | 8680704 |
| 6244 | 36900.37000.37200.38400.39400.45000.190800 | **21st floor roof slab** | 13d | 2027-03-10 | 2027-03-22 |  | start no earlier than 2027-03-10 | Zenith | 8656214 |
| 6245 | 36900.37000.37200.38400.39400.45000.190800.1034300 | Reinforcement | 10d | 2027-03-10 | 2027-03-19 | 6243 |  | Zenith | 8680694 |
| 6246 | 36900.37000.37200.38400.39400.45000.190800.1034400 | Conduiting | 10d | 2027-03-11 | 2027-03-20 | 6245SS+1d |  | Zenith | 8680684 |
| 6247 | 36900.37000.37200.38400.39400.45000.190800.1034500 | Formwork | 10d | 2027-03-12 | 2027-03-21 | 6245SS+2d |  | Zenith | 8680674 |
| 6248 | 36900.37000.37200.38400.39400.45000.190800.1034600 | Concreting | 1d | 2027-03-22 | 2027-03-22 | 6246FS+1d, 6247 |  | Zenith | 8680664 |
| 6249 | 36900.37000.37200.38400.39400.45000.190900 | **22nd floor roof slab** | 13d | 2027-03-23 | 2027-04-04 |  | start no earlier than 2027-03-23 | Zenith | 8656204 |
| 6250 | 36900.37000.37200.38400.39400.45000.190900.1034700 | Reinforcement | 10d | 2027-03-23 | 2027-04-01 | 6248 |  | Zenith | 8680654 |
| 6251 | 36900.37000.37200.38400.39400.45000.190900.1034800 | Conduiting | 10d | 2027-03-24 | 2027-04-02 | 6250SS+1d |  | Zenith | 8680644 |
| 6252 | 36900.37000.37200.38400.39400.45000.190900.1034900 | Formwork | 10d | 2027-03-25 | 2027-04-03 | 6250SS+2d |  | Zenith | 8680634 |
| 6253 | 36900.37000.37200.38400.39400.45000.190900.1035000 | Concreting | 1d | 2027-04-04 | 2027-04-04 | 6251FS+1d, 6252 |  | Zenith | 8680624 |

| ID | WBS | Task | Duration | Start | Finish | Predecessors | Constraint | Calendar | Unique_Task_ID |
| --- | --- | --- | --- | --- | --- | --- | --- | --- | --- |
| 6254 | 36900.37000.37200.38400.39400.45000.191000 | **23rd floor roof slab** | 13d | 2027-04-05 | 2027-04-17 |  | start no earlier than 2027-04-05 | Zenith | 8656194 |
| 6255 | 36900.37000.37200.38400.39400.45000.191000.1035100 | Reinforcement | 10d | 2027-04-05 | 2027-04-14 | 6253 |  | Zenith | 8680614 |
| 6256 | 36900.37000.37200.38400.39400.45000.191000.1035200 | Conduiting | 10d | 2027-04-06 | 2027-04-15 | 6255SS+1d |  | Zenith | 8680604 |
| 6257 | 36900.37000.37200.38400.39400.45000.191000.1035300 | Formwork | 10d | 2027-04-07 | 2027-04-16 | 6255SS+2d |  | Zenith | 8680594 |
| 6258 | 36900.37000.37200.38400.39400.45000.191000.1035400 | Concreting | 1d | 2027-04-17 | 2027-04-17 | 6256FS+1d, 6257 |  | Zenith | 8680584 |
| 6259 | 36900.37000.37200.38400.39400.45000.191100 | **24th floor roof slab** | 13d | 2027-04-18 | 2027-04-30 |  | start no earlier than 2027-04-18 | Zenith | 8656184 |
| 6260 | 36900.37000.37200.38400.39400.45000.191100.1035500 | Reinforcement | 10d | 2027-04-18 | 2027-04-27 | 6258 |  | Zenith | 8680574 |
| 6261 | 36900.37000.37200.38400.39400.45000.191100.1035600 | Conduiting | 10d | 2027-04-19 | 2027-04-28 | 6260SS+1d |  | Zenith | 8680564 |
| 6262 | 36900.37000.37200.38400.39400.45000.191100.1035700 | Formwork | 10d | 2027-04-20 | 2027-04-29 | 6260SS+2d |  | Zenith | 8680554 |
| 6263 | 36900.37000.37200.38400.39400.45000.191100.1035800 | Concreting | 1d | 2027-04-30 | 2027-04-30 | 6261FS+1d, 6262 |  | Zenith | 8680544 |
| 6264 | 36900.37000.37200.38400.39400.45000.191200 | **25th floor roof slab** | 13d | 2027-05-01 | 2027-05-13 |  | start no earlier than 2027-05-01 | Zenith | 8656174 |
| 6265 | 36900.37000.37200.38400.39400.45000.191200.1035900 | Reinforcement | 10d | 2027-05-01 | 2027-05-10 | 6263 |  | Zenith | 8680534 |
| 6266 | 36900.37000.37200.38400.39400.45000.191200.1036000 | Conduiting | 10d | 2027-05-02 | 2027-05-11 | 6265SS+1d |  | Zenith | 8680524 |
| 6267 | 36900.37000.37200.38400.39400.45000.191200.1036100 | Formwork | 10d | 2027-05-03 | 2027-05-12 | 6265SS+2d |  | Zenith | 8680514 |
| 6268 | 36900.37000.37200.38400.39400.45000.191200.1036200 | Concreting | 1d | 2027-05-13 | 2027-05-13 | 6266FS+1d, 6267 |  | Zenith | 8680504 |
| 6269 | 36900.37000.37200.38400.39400.45000.191300 | **26th floor roof slab** | 13d | 2027-05-14 | 2027-05-26 |  | start no earlier than 2027-05-14 | Zenith | 8656154 |
| 6270 | 36900.37000.37200.38400.39400.45000.191300.1036300 | Reinforcement | 10d | 2027-05-14 | 2027-05-23 | 6268 |  | Zenith | 8680494 |
| 6271 | 36900.37000.37200.38400.39400.45000.191300.1036400 | Conduiting | 10d | 2027-05-15 | 2027-05-24 | 6270SS+1d |  | Zenith | 8680484 |
| 6272 | 36900.37000.37200.38400.39400.45000.191300.1036500 | Formwork | 10d | 2027-05-16 | 2027-05-25 | 6270SS+2d |  | Zenith | 8680474 |
| 6273 | 36900.37000.37200.38400.39400.45000.191300.1036600 | Concreting | 1d | 2027-05-26 | 2027-05-26 | 6271FS+1d, 6272 |  | Zenith | 8680464 |
| 6274 | 36900.37000.37200.38400.39400.45000.191400 | **27th floor roof slab** | 13d | 2027-05-27 | 2027-06-08 |  | start no earlier than 2027-05-27 | Zenith | 8656144 |
| 6275 | 36900.37000.37200.38400.39400.45000.191400.1036700 | Reinforcement | 10d | 2027-05-27 | 2027-06-05 | 6273 |  | Zenith | 8680454 |
| 6276 | 36900.37000.37200.38400.39400.45000.191400.1036800 | Conduiting | 10d | 2027-05-28 | 2027-06-06 | 6275SS+1d |  | Zenith | 8680444 |
| 6277 | 36900.37000.37200.38400.39400.45000.191400.1036900 | Formwork | 10d | 2027-05-29 | 2027-06-07 | 6275SS+2d |  | Zenith | 8680434 |
| 6278 | 36900.37000.37200.38400.39400.45000.191400.1037000 | Concreting | 1d | 2027-06-08 | 2027-06-08 | 6276FS+1d, 6277 |  | Zenith | 8680424 |

| ID | WBS | Task | Duration | Start | Finish | Predecessors | Constraint | Calendar | Unique_Task_ID |
| --- | --- | --- | --- | --- | --- | --- | --- | --- | --- |
| 6279 | 36900.37000.37200.38400.39400.45000.191500 | **28th floor roof slab** | 13d | 2027-06-09 | 2027-06-21 |  | start no earlier than 2027-06-09 | Zenith | 8656134 |
| 6280 | 36900.37000.37200.38400.39400.45000.191500.1037100 | Reinforcement | 10d | 2027-06-09 | 2027-06-18 | 6278 |  | Zenith | 8680414 |
| 6281 | 36900.37000.37200.38400.39400.45000.191500.1037200 | Conduiting | 10d | 2027-06-10 | 2027-06-19 | 6280SS+1d |  | Zenith | 8680404 |
| 6282 | 36900.37000.37200.38400.39400.45000.191500.1037300 | Formwork | 10d | 2027-06-11 | 2027-06-20 | 6280SS+2d |  | Zenith | 8680394 |
| 6283 | 36900.37000.37200.38400.39400.45000.191500.1037400 | Concreting | 1d | 2027-06-21 | 2027-06-21 | 6281FS+1d, 6282 |  | Zenith | 8680384 |
| 6284 | 36900.37000.37200.38400.39400.45000.191600 | **29th floor roof slab** | 13d | 2027-06-22 | 2027-07-04 |  | start no earlier than 2027-06-22 | Zenith | 8656124 |
| 6285 | 36900.37000.37200.38400.39400.45000.191600.1037500 | Reinforcement | 10d | 2027-06-22 | 2027-07-01 | 6283 |  | Zenith | 8680374 |
| 6286 | 36900.37000.37200.38400.39400.45000.191600.1037600 | Conduiting | 10d | 2027-06-23 | 2027-07-02 | 6285SS+1d |  | Zenith | 8680364 |
| 6287 | 36900.37000.37200.38400.39400.45000.191600.1037700 | Formwork | 10d | 2027-06-24 | 2027-07-03 | 6285SS+2d |  | Zenith | 8680354 |
| 6288 | 36900.37000.37200.38400.39400.45000.191600.1037800 | Concreting | 1d | 2027-07-04 | 2027-07-04 | 6286FS+1d, 6287 |  | Zenith | 8680344 |
| 6289 | 36900.37000.37200.38400.39400.45000.191700 | **30th floor roof slab** | 15d | 2027-07-05 | 2027-07-19 |  | start no earlier than 2027-07-05 | Zenith | 8656114 |
| 6290 | 36900.37000.37200.38400.39400.45000.191700.1037900 | Reinforcement | 12d | 2027-07-05 | 2027-07-16 | 6288 |  | Zenith | 8680334 |
| 6291 | 36900.37000.37200.38400.39400.45000.191700.1038000 | Conduiting | 12d | 2027-07-06 | 2027-07-17 | 6290SS+1d |  | Zenith | 8680324 |
| 6292 | 36900.37000.37200.38400.39400.45000.191700.1038100 | Formwork | 12d | 2027-07-07 | 2027-07-18 | 6290SS+2d |  | Zenith | 8680314 |
| 6293 | 36900.37000.37200.38400.39400.45000.191700.1038200 | Concreting | 1d | 2027-07-19 | 2027-07-19 | 6291FS+1d, 6292 |  | Zenith | 8680304 |
| 6294 | 36900.37000.37200.38400.39400.45000.191800 | **31st floor roof slab** | 15d | 2027-07-20 | 2027-08-03 |  | start no earlier than 2027-07-20 | Zenith | 8656104 |
| 6295 | 36900.37000.37200.38400.39400.45000.191800.1038300 | Reinforcement | 12d | 2027-07-20 | 2027-07-31 | 6293 |  | Zenith | 8680294 |
| 6296 | 36900.37000.37200.38400.39400.45000.191800.1038400 | Conduiting | 12d | 2027-07-21 | 2027-08-01 | 6295SS+1d |  | Zenith | 8680284 |
| 6297 | 36900.37000.37200.38400.39400.45000.191800.1038500 | Formwork | 12d | 2027-07-22 | 2027-08-02 | 6295SS+2d |  | Zenith | 8680274 |
| 6298 | 36900.37000.37200.38400.39400.45000.191800.1038600 | Concreting | 1d | 2027-08-03 | 2027-08-03 | 6296FS+1d, 6297 |  | Zenith | 8680264 |
| 6299 | 36900.37000.37200.38400.39400.45000.191900 | **32nd floor roof slab** | 15d | 2027-08-04 | 2027-08-18 |  | start no earlier than 2027-08-04 | Zenith | 8656094 |
| 6300 | 36900.37000.37200.38400.39400.45000.191900.1038700 | Reinforcement | 12d | 2027-08-04 | 2027-08-15 | 6298 |  | Zenith | 8680254 |
| 6301 | 36900.37000.37200.38400.39400.45000.191900.1038800 | Conduiting | 12d | 2027-08-05 | 2027-08-16 | 6300SS+1d |  | Zenith | 8680244 |
| 6302 | 36900.37000.37200.38400.39400.45000.191900.1038900 | Formwork | 12d | 2027-08-06 | 2027-08-17 | 6300SS+2d |  | Zenith | 8680234 |
| 6303 | 36900.37000.37200.38400.39400.45000.191900.1039000 | Concreting | 1d | 2027-08-18 | 2027-08-18 | 6301FS+1d, 6302 |  | Zenith | 8680224 |

| ID | WBS | Task | Duration | Start | Finish | Predecessors | Constraint | Calendar | Unique_Task_ID |
| --- | --- | --- | --- | --- | --- | --- | --- | --- | --- |
| 6304 | 36900.37000.37200.38400.39400.45000.192000 | **33rd floor roof slab** | 15d | 2027-08-19 | 2027-09-02 |  | start no earlier than 2027-08-19 | Zenith | 8656084 |
| 6305 | 36900.37000.37200.38400.39400.45000.192000.1039100 | Reinforcement | 12d | 2027-08-19 | 2027-08-30 | 6303 |  | Zenith | 8680214 |
| 6306 | 36900.37000.37200.38400.39400.45000.192000.1039200 | Conduiting | 12d | 2027-08-20 | 2027-08-31 | 6305SS+1d |  | Zenith | 8680204 |
| 6307 | 36900.37000.37200.38400.39400.45000.192000.1039300 | Formwork | 12d | 2027-08-21 | 2027-09-01 | 6305SS+2d |  | Zenith | 8680194 |
| 6308 | 36900.37000.37200.38400.39400.45000.192000.1039400 | Concreting | 1d | 2027-09-02 | 2027-09-02 | 6306FS+1d, 6307 |  | Zenith | 8680184 |
| 6309 | 36900.37000.37200.38400.39400.45000.192100 | **Terrace floor slab** | 15d | 2027-09-03 | 2027-09-17 |  | start no earlier than 2027-09-03 | Zenith | 8656074 |
| 6310 | 36900.37000.37200.38400.39400.45000.192100.1039500 | Reinforcement | 11d | 2027-09-03 | 2027-09-13 | 6308 |  | Zenith | 8680174 |
| 6311 | 36900.37000.37200.38400.39400.45000.192100.1039600 | Conduiting | 11d | 2027-09-04 | 2027-09-14 | 6310SS+1d |  | Zenith | 8680164 |
| 6312 | 36900.37000.37200.38400.39400.45000.192100.1039700 | Formwork | 11d | 2027-09-05 | 2027-09-15 | 6310SS+2d |  | Zenith | 8680154 |
| 6313 | 36900.37000.37200.38400.39400.45000.192100.1039800 | Concreting | 2d | 2027-09-16 | 2027-09-17 | 6311FS+1d, 6312 |  | Zenith | 8680144 |
| 6314 | 36900.37000.37200.38400.39400.45000.192200 | **OHT, Mumty & Machine Room, Parapet** | 44d | 2027-09-18 | 2027-10-31 |  | start no earlier than 2027-09-18 | Zenith | 8656044 |
| 6315 | 36900.37000.37200.38400.39400.45000.192200.1039900 | Reinforcement | 29d | 2027-09-18 | 2027-10-16 | 6313 |  | Zenith | 8680134 |
| 6316 | 36900.37000.37200.38400.39400.45000.192200.1040000 | Flanges fixing & Conduiting | 19d | 2027-09-19 | 2027-10-07 | 6315SS+1d |  | Zenith | 8680124 |
| 6317 | 36900.37000.37200.38400.39400.45000.192200.1040100 | Formwork | 34d | 2027-09-24 | 2027-10-27 | 6315SS+6d |  | Zenith | 8680114 |
| 6318 | 36900.37000.37200.38400.39400.45000.192200.1040200 | Concreting | 4d | 2027-10-28 | 2027-10-31 | 6316FS+5d, 6317 |  | Zenith | 8680104 |
| 6319 | 36900.37000.37200.38400.39400.48000 | **Post Pour Activities** | 494.5d | 2026-06-25 | 2028-01-30 |  | start no earlier than 2026-06-25 | Zenith | 8648094 |
| 6320 | 36900.37000.37200.38400.39400.48000.843300 | 1st Floor | 7d | 2026-06-25 | 2026-07-01 | 6163FS+7d |  | Zenith | 8722114 |
| 6321 | 36900.37000.37200.38400.39400.48000.843400 | 2nd Floor | 7d | 2026-07-02 | 2026-07-09 | 6320FS+0.25d, 6168FS+0.25d |  | Zenith | 8722104 |
| 6322 | 36900.37000.37200.38400.39400.48000.843500 | 3rd Floor | 7d | 2026-08-13 | 2026-08-20 | 6321FS+0.25d, 6183FS+0.25d |  | Zenith | 8722094 |
| 6323 | 36900.37000.37200.38400.39400.48000.843600 | 4th Floor | 7d | 2026-08-27 | 2026-09-03 | 6322FS+0.25d, 6188FS+0.25d |  | Zenith | 8722084 |
| 6324 | 36900.37000.37200.38400.39400.48000.843700 | 5th Floor | 7d | 2026-09-10 | 2026-09-17 | 6323FS+0.25d, 6193FS+0.25d |  | Zenith | 8722074 |
| 6325 | 36900.37000.37200.38400.39400.48000.843800 | 6th Floor | 7d | 2026-09-24 | 2026-10-01 | 6324FS+0.25d, 6198FS+0.25d |  | Zenith | 8722064 |
| 6326 | 36900.37000.37200.38400.39400.48000.843900 | 7th Floor | 7d | 2026-10-08 | 2026-10-15 | 6325FS+0.25d, 6203FS+0.25d |  | Zenith | 8722054 |
| 6327 | 36900.37000.37200.38400.39400.48000.844000 | 8th Floor | 7d | 2026-10-22 | 2026-10-29 | 6326FS+0.25d, 6208FS+0.25d |  | Zenith | 8722044 |
| 6328 | 36900.37000.37200.38400.39400.48000.844100 | 9th Floor | 7d | 2026-12-20 | 2026-12-27 | 6327FS+0.25d, 6213FS+0.25d |  | Zenith | 8722034 |
| 6329 | 36900.37000.37200.38400.39400.48000.844200 | 10th Floor | 7d | 2027-01-03 | 2027-01-10 | 6328FS+0.25d, 6218FS+0.25d |  | Zenith | 8722024 |
| 6330 | 36900.37000.37200.38400.39400.48000.844300 | 11th Floor | 7d | 2027-01-15 | 2027-01-22 | 6329FS+0.25d, 6223FS+0.25d |  | Zenith | 8722014 |
| 6331 | 36900.37000.37200.38400.39400.48000.844400 | 12th Floor | 7d | 2027-01-29 | 2027-02-05 | 6330FS+0.25d, 6228FS+0.25d |  | Zenith | 8722004 |
| 6332 | 36900.37000.37200.38400.39400.48000.844500 | 13th Floor | 7d | 2027-02-12 | 2027-02-19 | 6331FS+0.25d, 6233FS+0.25d |  | Zenith | 8721994 |
| 6333 | 36900.37000.37200.38400.39400.48000.844600 | 14th Floor | 7d | 2027-02-25 | 2027-03-04 | 6332FS+0.25d, 6238FS+0.25d |  | Zenith | 8721984 |
| 6334 | 36900.37000.37200.38400.39400.48000.844700 | 15th Floor | 7d | 2027-03-10 | 2027-03-17 | 6333FS+0.25d, 6243FS+0.25d |  | Zenith | 8721974 |
| 6335 | 36900.37000.37200.38400.39400.48000.844800 | 16th Floor | 7d | 2027-03-23 | 2027-03-30 | 6334FS+0.25d, 6248FS+0.25d |  | Zenith | 8721964 |
| 6336 | 36900.37000.37200.38400.39400.48000.844900 | 17th Floor | 7d | 2027-04-05 | 2027-04-12 | 6335FS+0.25d, 6253FS+0.25d |  | Zenith | 8721954 |
| 6337 | 36900.37000.37200.38400.39400.48000.845000 | 18th Floor | 7d | 2027-04-18 | 2027-04-25 | 6336FS+0.25d, 6258FS+0.25d |  | Zenith | 8721944 |
| 6338 | 36900.37000.37200.38400.39400.48000.845100 | 19th Floor | 7d | 2027-05-01 | 2027-05-08 | 6337FS+0.25d, 6263FS+0.25d |  | Zenith | 8721934 |
| 6339 | 36900.37000.37200.38400.39400.48000.845200 | 20th Floor | 7d | 2027-05-14 | 2027-05-21 | 6338FS+0.25d, 6268FS+0.25d |  | Zenith | 8721924 |
| 6340 | 36900.37000.37200.38400.39400.48000.845300 | 21st Floor | 7d | 2027-05-27 | 2027-06-03 | 6339FS+0.25d, 6273FS+0.25d |  | Zenith | 8721914 |
| 6341 | 36900.37000.37200.38400.39400.48000.845400 | 22nd Floor | 7d | 2027-06-09 | 2027-06-16 | 6340FS+0.25d, 6278FS+0.25d |  | Zenith | 8721904 |
| 6342 | 36900.37000.37200.38400.39400.48000.845500 | 23rd Floor | 7d | 2027-06-22 | 2027-06-29 | 6341FS+0.25d, 6283FS+0.25d |  | Zenith | 8721894 |
| 6343 | 36900.37000.37200.38400.39400.48000.845600 | 24th Floor | 7d | 2027-07-05 | 2027-07-12 | 6342FS+0.25d, 6288FS+0.25d |  | Zenith | 8721884 |
| 6344 | 36900.37000.37200.38400.39400.48000.845700 | 25th Floor | 7d | 2027-07-20 | 2027-07-27 | 6343FS+0.25d, 6293FS+0.25d |  | Zenith | 8721874 |
| 6345 | 36900.37000.37200.38400.39400.48000.845800 | 26th Floor | 7d | 2027-08-04 | 2027-08-11 | 6344FS+0.25d, 6298FS+0.25d |  | Zenith | 8721864 |
| 6346 | 36900.37000.37200.38400.39400.48000.845900 | 27th Floor | 7d | 2027-08-19 | 2027-08-26 | 6345FS+0.25d, 6303FS+0.25d |  | Zenith | 8721854 |
| 6347 | 36900.37000.37200.38400.39400.48000.846000 | 28th Floor | 7d | 2027-09-03 | 2027-09-10 | 6346FS+0.25d, 6308FS+0.25d |  | Zenith | 8721844 |
| 6348 | 36900.37000.37200.38400.39400.48000.846100 | 29th Floor | 7d | 2027-09-18 | 2027-09-25 | 6347FS+0.25d, 6313FS+0.25d |  | Zenith | 8721834 |
| 6349 | 36900.37000.37200.38400.39400.48000.846200 | 30th Floor | 7d | 2027-10-28 | 2027-12-19 | 6348FS+0.25d, 6317FS+0.25d |  | Zenith | 8721824 |
| 6350 | 36900.37000.37200.38400.39400.48000.846300 | 31st Flood | 7d | 2027-12-19 | 2027-12-26 | 6322FS+0.25d, 6349FS+0.25d |  | Zenith | 8721814 |
| 6351 | 36900.37000.37200.38400.39400.48000.846400 | 32nd Floor | 7d | 2027-12-26 | 2028-01-02 | 6350 |  | Zenith | 8721804 |
| 6352 | 36900.37000.37200.38400.39400.48000.846500 | 33rd Floor | 7d | 2028-01-02 | 2028-01-09 | 6351 |  | Zenith | 8721794 |
| 6353 | 36900.37000.37200.38400.39400.48000.846600 | 34th Floor | 7d | 2028-01-09 | 2028-01-16 | 6352 |  | Zenith | 8721784 |
| 6354 | 36900.37000.37200.38400.39400.48000.846700 | Terrace | 7d | 2028-01-16 | 2028-01-23 | 6353 |  | Zenith | 8721774 |
| 6355 | 36900.37000.37200.38400.39400.48000.846800 | Mumty & Machine Room | 7d | 2028-01-23 | 2028-01-30 | 6354 |  | Zenith | 8721764 |

| ID | WBS | Task | Duration | Start | Finish | Predecessors | Constraint | Calendar | Unique_Task_ID |
| --- | --- | --- | --- | --- | --- | --- | --- | --- | --- |
| 6356 | 36900.37000.37200.38400.39400.41400 | **Finishing work** | 745d | 2026-07-09 | 2028-10-20 |  | start no earlier than 2026-07-09 | Zenith | 8647814 |
| 6357 | 36900.37000.37200.38400.39400.41400.42400 | **Flat finishing** | 745d | 2026-07-09 | 2028-10-20 |  | start no earlier than 2026-07-09 | Zenith | 8647894 |
| 6358 | 36900.37000.37200.38400.39400.41400.42400.104300 | **1st Floor roof** | 206d | 2026-07-09 | 2027-03-16 |  | start no earlier than 2026-07-09 | Zenith | 8650614 |
| 6359 | 36900.37000.37200.38400.39400.41400.42400.104300.1622200 | Block Work | 7d | 2026-07-09 | 2026-07-15 | 6320FS+7d |  | Zenith | 8711654 |
| 6360 | 36900.37000.37200.38400.39400.41400.42400.104300.1622300 | Fire sprinkler pipe fixing | 7d | 2026-07-16 | 2026-07-22 | 6359 |  | Zenith | 8711664 |
| 6361 | 36900.37000.37200.38400.39400.41400.42400.104300.1622400 | Internal Plumbing Works | 10d | 2026-07-16 | 2026-07-25 | 6359 |  | Zenith | 8711674 |
| 6362 | 36900.37000.37200.38400.39400.41400.42400.104300.1622500 | Waterproofing | 14d | 2026-07-26 | 2026-08-08 | 6361 |  | Zenith | 8711684 |
| 6363 | 36900.37000.37200.38400.39400.41400.42400.104300.1622600 | Internal Plaster | 14d | 2026-07-31 | 2026-08-13 | 6361, 6362FF+5d |  | Zenith | 8711694 |
| 6364 | 36900.37000.37200.38400.39400.41400.42400.104300.1622700 | IPS flooring work | 10d | 2026-08-14 | 2026-08-23 | 6363 |  | Zenith | 8711704 |
| 6365 | 36900.37000.37200.38400.39400.41400.42400.104300.1622800 | Toilet dado work | 10d | 2026-08-14 | 2026-08-23 | 6362, 6363 |  | Zenith | 8711714 |
| 6366 | 36900.37000.37200.38400.39400.41400.42400.104300.1622900 | Toilet flooring work | 7d | 2026-08-24 | 2026-08-30 | 6365 |  | Zenith | 8711724 |
| 6367 | 36900.37000.37200.38400.39400.41400.42400.104300.1623000 | False Cieling panel fixing | 10d | 2026-08-31 | 2026-09-09 | 6366 |  | Zenith | 8711734 |
| 6368 | 36900.37000.37200.38400.39400.41400.42400.104300.1623100 | Living dinning flooring | 14d | 2026-08-31 | 2026-09-13 | 6366 |  | Zenith | 8711744 |
| 6369 | 36900.37000.37200.38400.39400.41400.42400.104300.1623200 | Putty primer coat | 12d | 2027-01-12 | 2027-01-23 | 6370FS+15d |  | Zenith | 8711754 |
| 6370 | 36900.37000.37200.38400.39400.41400.42400.104300.1623300 | Aluminium door-window fixing | 15d | 2026-10-29 | 2026-12-27 | 6364FS+45d, 6368FS+45d |  | Zenith | 8711764 |
| 6371 | 36900.37000.37200.38400.39400.41400.42400.104300.1623400 | Door shutter fixing (Pre Hung) | 8d | 2027-01-31 | 2027-02-07 | 6372FS+10d |  | Zenith | 8711774 |
| 6372 | 36900.37000.37200.38400.39400.41400.42400.104300.1623500 | Electrical wiring work | 12d | 2027-01-09 | 2027-01-20 | 6370FS+12d |  | Zenith | 8711784 |
| 6373 | 36900.37000.37200.38400.39400.41400.42400.104300.1623600 | Painting 1st coat | 15d | 2027-03-02 | 2027-03-16 | 6371FS+22d |  | Zenith | 8711794 |
| 6374 | 36900.37000.37200.38400.39400.41400.42400.104400 | **2nd floor roof** | 213d | 2026-07-16 | 2027-03-30 |  | start no earlier than 2026-07-16 | Zenith | 8650624 |
| 6375 | 36900.37000.37200.38400.39400.41400.42400.104400.1623700 | Block Work | 10d | 2026-07-16 | 2026-07-25 | 6321, 6359 |  | Zenith | 8711804 |
| 6376 | 36900.37000.37200.38400.39400.41400.42400.104400.1623800 | Fire sprinkler pipe fixing | 6d | 2026-07-26 | 2026-07-31 | 6360, 6375 |  | Zenith | 8711814 |
| 6377 | 36900.37000.37200.38400.39400.41400.42400.104400.1623900 | Internal Plumbing Works | 10d | 2026-07-26 | 2026-08-04 | 6361, 6375 |  | Zenith | 8711824 |
| 6378 | 36900.37000.37200.38400.39400.41400.42400.104400.1624000 | Waterproofing | 14d | 2026-08-09 | 2026-08-22 | 6362, 6377 |  | Zenith | 8711834 |
| 6379 | 36900.37000.37200.38400.39400.41400.42400.104400.1624100 | Internal Plaster | 14d | 2026-08-14 | 2026-08-27 | 6363, 6377, 6378FF+5d |  | Zenith | 8711844 |
| 6380 | 36900.37000.37200.38400.39400.41400.42400.104400.1624200 | IPS flooring work | 10d | 2026-08-28 | 2026-09-06 | 6364, 6379 |  | Zenith | 8711854 |
| 6381 | 36900.37000.37200.38400.39400.41400.42400.104400.1624300 | Toilet dado work | 10d | 2026-08-28 | 2026-09-06 | 6365, 6378, 6379 |  | Zenith | 8711864 |
| 6382 | 36900.37000.37200.38400.39400.41400.42400.104400.1624400 | Toilet flooring work | 7d | 2026-09-07 | 2026-09-13 | 6366, 6381 |  | Zenith | 8711874 |
| 6383 | 36900.37000.37200.38400.39400.41400.42400.104400.1624500 | False Cieling panel fixing | 10d | 2026-09-14 | 2026-09-23 | 6367, 6382 |  | Zenith | 8711884 |
| 6384 | 36900.37000.37200.38400.39400.41400.42400.104400.1624600 | Living dinning flooring | 14d | 2026-09-14 | 2026-09-27 | 6368, 6382 |  | Zenith | 8711894 |
| 6385 | 36900.37000.37200.38400.39400.41400.42400.104400.1624700 | Putty primer coat | 12d | 2027-01-26 | 2027-02-06 | 6386FS+15d |  | Zenith | 8711904 |
| 6386 | 36900.37000.37200.38400.39400.41400.42400.104400.1624800 | Aluminium door-window fixing | 15d | 2026-12-27 | 2027-01-10 | 6380FS+45d, 6384FS+45d |  | Zenith | 8711914 |
| 6387 | 36900.37000.37200.38400.39400.41400.42400.104400.1624900 | Door shutter fixing (Pre Hung) | 8d | 2027-02-14 | 2027-02-21 | 6388FS+10d |  | Zenith | 8711924 |
| 6388 | 36900.37000.37200.38400.39400.41400.42400.104400.1625000 | Electrical wiring work | 12d | 2027-01-23 | 2027-02-03 | 6386FS+12d |  | Zenith | 8711934 |
| 6389 | 36900.37000.37200.38400.39400.41400.42400.104400.1625100 | Painting 1st coat | 15d | 2027-03-16 | 2027-03-30 | 6387FS+22d |  | Zenith | 8711944 |

| ID | WBS | Task | Duration | Start | Finish | Predecessors | Constraint | Calendar | Unique_Task_ID |
| --- | --- | --- | --- | --- | --- | --- | --- | --- | --- |
| 6390 | 36900.37000.37200.38400.39400.41400.42400.104500 | **3rd floor roof** | 192.75d | 2026-08-20 | 2027-04-14 |  | start no earlier than 2026-08-20 | Zenith | 8650634 |
| 6391 | 36900.37000.37200.38400.39400.41400.42400.104500.1625200 | Block Work | 10d | 2026-08-20 | 2026-08-30 | 6322, 6375 |  | Zenith | 8711954 |
| 6392 | 36900.37000.37200.38400.39400.41400.42400.104500.1625300 | Fire sprinkler pipe fixing | 6d | 2026-08-30 | 2026-09-05 | 6376, 6391 |  | Zenith | 8711964 |
| 6393 | 36900.37000.37200.38400.39400.41400.42400.104500.1625400 | Internal Plumbing Works | 10d | 2026-08-30 | 2026-09-09 | 6377, 6391 |  | Zenith | 8711974 |
| 6394 | 36900.37000.37200.38400.39400.41400.42400.104500.1625500 | Waterproofing | 14d | 2026-09-09 | 2026-09-23 | 6378, 6393 |  | Zenith | 8711984 |
| 6395 | 36900.37000.37200.38400.39400.41400.42400.104500.1625600 | Internal Plaster | 14d | 2026-09-14 | 2026-09-28 | 6379, 6393, 6394FF+5d |  | Zenith | 8711994 |
| 6396 | 36900.37000.37200.38400.39400.41400.42400.104500.1625700 | IPS flooring work | 10d | 2026-09-28 | 2026-10-08 | 6380, 6395 |  | Zenith | 8712004 |
| 6397 | 36900.37000.37200.38400.39400.41400.42400.104500.1625800 | Toilet dado work | 10d | 2026-09-28 | 2026-10-08 | 6381, 6394, 6395 |  | Zenith | 8712014 |
| 6398 | 36900.37000.37200.38400.39400.41400.42400.104500.1625900 | Toilet flooring work | 7d | 2026-10-08 | 2026-10-15 | 6382, 6397 |  | Zenith | 8712024 |
| 6399 | 36900.37000.37200.38400.39400.41400.42400.104500.1626000 | False Cieling panel fixing | 10d | 2026-10-15 | 2026-10-25 | 6383, 6398 |  | Zenith | 8712034 |
| 6400 | 36900.37000.37200.38400.39400.41400.42400.104500.1626100 | Living dinning flooring | 14d | 2026-10-15 | 2026-10-29 | 6384, 6398 |  | Zenith | 8712044 |
| 6401 | 36900.37000.37200.38400.39400.41400.42400.104500.1626200 | Putty primer coat | 12d | 2027-02-07 | 2027-02-18 | 6385, 6400 |  | Zenith | 8712054 |
| 6402 | 36900.37000.37200.38400.39400.41400.42400.104500.1626300 | Aluminium door-window fixing | 15d | 2027-01-11 | 2027-01-25 | 6386, 6396, 6400 |  | Zenith | 8712064 |
| 6403 | 36900.37000.37200.38400.39400.41400.42400.104500.1626400 | Door shutter fixing (Pre Hung) | 8d | 2027-02-22 | 2027-03-01 | 6387, 6401 |  | Zenith | 8712074 |
| 6404 | 36900.37000.37200.38400.39400.41400.42400.104500.1626500 | Electrical wiring work | 12d | 2027-03-02 | 2027-03-13 | 6388, 6403 |  | Zenith | 8712084 |
| 6405 | 36900.37000.37200.38400.39400.41400.42400.104500.1626600 | Painting 1st coat | 15d | 2027-03-31 | 2027-04-14 | 6389, 6404 |  | Zenith | 8712094 |
| 6406 | 36900.37000.37200.38400.39400.41400.42400.104600 | **4th floor roof** | 193.75d | 2026-09-03 | 2027-04-29 |  | start no earlier than 2026-09-03 | Zenith | 8650644 |
| 6407 | 36900.37000.37200.38400.39400.41400.42400.104600.1626700 | Block Work | 10d | 2026-09-03 | 2026-09-13 | 6323, 6391 |  | Zenith | 8712104 |
| 6408 | 36900.37000.37200.38400.39400.41400.42400.104600.1626800 | Fire sprinkler pipe fixing | 6d | 2026-09-13 | 2026-09-19 | 6392, 6407 |  | Zenith | 8712114 |
| 6409 | 36900.37000.37200.38400.39400.41400.42400.104600.1626900 | Internal Plumbing Works | 10d | 2026-09-13 | 2026-09-23 | 6393, 6407 |  | Zenith | 8712124 |
| 6410 | 36900.37000.37200.38400.39400.41400.42400.104600.1627000 | Waterproofing | 14d | 2026-09-23 | 2026-10-07 | 6394, 6409 |  | Zenith | 8712134 |
| 6411 | 36900.37000.37200.38400.39400.41400.42400.104600.1627100 | Internal Plaster | 14d | 2026-09-28 | 2026-10-12 | 6395, 6409, 6410FF+5d |  | Zenith | 8712144 |
| 6412 | 36900.37000.37200.38400.39400.41400.42400.104600.1627200 | IPS flooring work | 10d | 2026-10-12 | 2026-10-22 | 6396, 6411 |  | Zenith | 8712154 |
| 6413 | 36900.37000.37200.38400.39400.41400.42400.104600.1627300 | Toilet dado work | 10d | 2026-10-12 | 2026-10-22 | 6397, 6410, 6411 |  | Zenith | 8712164 |
| 6414 | 36900.37000.37200.38400.39400.41400.42400.104600.1627400 | Toilet flooring work | 7d | 2026-10-22 | 2026-10-29 | 6398, 6413 |  | Zenith | 8712174 |
| 6415 | 36900.37000.37200.38400.39400.41400.42400.104600.1627500 | False Cieling panel fixing | 10d | 2026-10-29 | 2026-12-23 | 6399, 6414 |  | Zenith | 8712184 |
| 6416 | 36900.37000.37200.38400.39400.41400.42400.104600.1627600 | Living dinning flooring | 14d | 2026-10-29 | 2026-12-27 | 6400, 6414 |  | Zenith | 8712194 |
| 6417 | 36900.37000.37200.38400.39400.41400.42400.104600.1627700 | Putty primer coat | 12d | 2027-02-19 | 2027-03-02 | 6401, 6416 |  | Zenith | 8712204 |
| 6418 | 36900.37000.37200.38400.39400.41400.42400.104600.1627800 | Aluminium door-window fixing | 15d | 2027-01-26 | 2027-02-09 | 6402, 6412, 6416 |  | Zenith | 8712214 |
| 6419 | 36900.37000.37200.38400.39400.41400.42400.104600.1627900 | Door shutter fixing (Pre Hung) | 8d | 2027-03-03 | 2027-03-10 | 6403, 6417 |  | Zenith | 8712224 |
| 6420 | 36900.37000.37200.38400.39400.41400.42400.104600.1628000 | Electrical wiring work | 12d | 2027-03-14 | 2027-03-25 | 6404, 6419 |  | Zenith | 8712234 |
| 6421 | 36900.37000.37200.38400.39400.41400.42400.104600.1628100 | Painting 1st coat | 15d | 2027-04-15 | 2027-04-29 | 6405, 6420 |  | Zenith | 8712244 |

| ID | WBS | Task | Duration | Start | Finish | Predecessors | Constraint | Calendar | Unique_Task_ID |
| --- | --- | --- | --- | --- | --- | --- | --- | --- | --- |
| 6422 | 36900.37000.37200.38400.39400.41400.42400.104700 | **5th floor roof** | 194.75d | 2026-09-17 | 2027-05-14 |  | start no earlier than 2026-09-17 | Zenith | 8650654 |
| 6423 | 36900.37000.37200.38400.39400.41400.42400.104700.1628200 | Block Work | 10d | 2026-09-17 | 2026-09-27 | 6324, 6407 |  | Zenith | 8712254 |
| 6424 | 36900.37000.37200.38400.39400.41400.42400.104700.1628300 | Fire sprinkler pipe fixing | 6d | 2026-09-27 | 2026-10-03 | 6408, 6423 |  | Zenith | 8712264 |
| 6425 | 36900.37000.37200.38400.39400.41400.42400.104700.1628400 | Internal Plumbing Works | 10d | 2026-09-27 | 2026-10-07 | 6409, 6423 |  | Zenith | 8712274 |
| 6426 | 36900.37000.37200.38400.39400.41400.42400.104700.1628500 | Waterproofing | 14d | 2026-10-07 | 2026-10-21 | 6410, 6425 |  | Zenith | 8712284 |
| 6427 | 36900.37000.37200.38400.39400.41400.42400.104700.1628600 | Internal Plaster | 14d | 2026-10-12 | 2026-10-26 | 6411, 6425, 6426FF+5d |  | Zenith | 8712294 |
| 6428 | 36900.37000.37200.38400.39400.41400.42400.104700.1628700 | IPS flooring work | 10d | 2026-10-26 | 2026-12-20 | 6412, 6427 |  | Zenith | 8712304 |
| 6429 | 36900.37000.37200.38400.39400.41400.42400.104700.1628800 | Toilet dado work | 10d | 2026-10-26 | 2026-12-20 | 6413, 6426, 6427 |  | Zenith | 8712314 |
| 6430 | 36900.37000.37200.38400.39400.41400.42400.104700.1628900 | Toilet flooring work | 7d | 2026-12-20 | 2026-12-27 | 6414, 6429 |  | Zenith | 8712324 |
| 6431 | 36900.37000.37200.38400.39400.41400.42400.104700.1629000 | False Cieling panel fixing | 10d | 2026-12-27 | 2027-01-06 | 6415, 6430 |  | Zenith | 8712334 |
| 6432 | 36900.37000.37200.38400.39400.41400.42400.104700.1629100 | Living dinning flooring | 14d | 2026-12-27 | 2027-01-10 | 6416, 6430 |  | Zenith | 8712344 |
| 6433 | 36900.37000.37200.38400.39400.41400.42400.104700.1629200 | Putty primer coat | 12d | 2027-03-03 | 2027-03-14 | 6417, 6432 |  | Zenith | 8712354 |
| 6434 | 36900.37000.37200.38400.39400.41400.42400.104700.1629300 | Aluminium door-window fixing | 15d | 2027-02-10 | 2027-02-24 | 6418, 6428, 6432 |  | Zenith | 8712364 |
| 6435 | 36900.37000.37200.38400.39400.41400.42400.104700.1629400 | Door shutter fixing (Pre Hung) | 8d | 2027-03-15 | 2027-03-22 | 6419, 6433 |  | Zenith | 8712374 |
| 6436 | 36900.37000.37200.38400.39400.41400.42400.104700.1629500 | Electrical wiring work | 12d | 2027-03-26 | 2027-04-06 | 6420, 6435 |  | Zenith | 8712384 |
| 6437 | 36900.37000.37200.38400.39400.41400.42400.104700.1629600 | Painting 1st coat | 15d | 2027-04-30 | 2027-05-14 | 6421, 6436 |  | Zenith | 8712394 |
| 6438 | 36900.37000.37200.38400.39400.41400.42400.104800 | **6th floor roof** | 195.75d | 2026-10-01 | 2027-05-29 |  | start no earlier than 2026-10-01 | Zenith | 8650664 |
| 6439 | 36900.37000.37200.38400.39400.41400.42400.104800.1629700 | Block Work | 10d | 2026-10-01 | 2026-10-11 | 6325, 6423 |  | Zenith | 8712404 |
| 6440 | 36900.37000.37200.38400.39400.41400.42400.104800.1629800 | Fire sprinkler pipe fixing | 6d | 2026-10-11 | 2026-10-17 | 6424, 6439 |  | Zenith | 8712414 |
| 6441 | 36900.37000.37200.38400.39400.41400.42400.104800.1629900 | Internal Plumbing Works | 10d | 2026-10-11 | 2026-10-21 | 6425, 6439 |  | Zenith | 8712424 |
| 6442 | 36900.37000.37200.38400.39400.41400.42400.104800.1630000 | Waterproofing | 14d | 2026-10-21 | 2026-12-19 | 6426, 6441 |  | Zenith | 8712434 |
| 6443 | 36900.37000.37200.38400.39400.41400.42400.104800.1630100 | Internal Plaster | 14d | 2026-10-26 | 2026-12-24 | 6427, 6441, 6442FF+5d |  | Zenith | 8712444 |
| 6444 | 36900.37000.37200.38400.39400.41400.42400.104800.1630200 | IPS flooring work | 10d | 2026-12-24 | 2027-01-03 | 6428, 6443 |  | Zenith | 8712454 |
| 6445 | 36900.37000.37200.38400.39400.41400.42400.104800.1630300 | Toilet dado work | 10d | 2026-12-24 | 2027-01-03 | 6429, 6442, 6443 |  | Zenith | 8712464 |
| 6446 | 36900.37000.37200.38400.39400.41400.42400.104800.1630400 | Toilet flooring work | 7d | 2027-01-03 | 2027-01-10 | 6430, 6445 |  | Zenith | 8712474 |
| 6447 | 36900.37000.37200.38400.39400.41400.42400.104800.1630500 | False Cieling panel fixing | 10d | 2027-01-10 | 2027-01-20 | 6431, 6446 |  | Zenith | 8712484 |
| 6448 | 36900.37000.37200.38400.39400.41400.42400.104800.1630600 | Living dinning flooring | 14d | 2027-01-10 | 2027-01-24 | 6432, 6446 |  | Zenith | 8712494 |
| 6449 | 36900.37000.37200.38400.39400.41400.42400.104800.1630700 | Putty primer coat | 12d | 2027-03-15 | 2027-03-26 | 6433, 6448 |  | Zenith | 8712504 |
| 6450 | 36900.37000.37200.38400.39400.41400.42400.104800.1630800 | Aluminium door-window fixing | 15d | 2027-02-25 | 2027-03-11 | 6434, 6444, 6448 |  | Zenith | 8712514 |
| 6451 | 36900.37000.37200.38400.39400.41400.42400.104800.1630900 | Door shutter fixing (Pre Hung) | 8d | 2027-03-27 | 2027-04-03 | 6435, 6449 |  | Zenith | 8712524 |
| 6452 | 36900.37000.37200.38400.39400.41400.42400.104800.1631000 | Electrical wiring work | 12d | 2027-04-07 | 2027-04-18 | 6436, 6451 |  | Zenith | 8712534 |
| 6453 | 36900.37000.37200.38400.39400.41400.42400.104800.1631100 | Painting 1st coat | 15d | 2027-05-15 | 2027-05-29 | 6437, 6452 |  | Zenith | 8712544 |

| ID | WBS | Task | Duration | Start | Finish | Predecessors | Constraint | Calendar | Unique_Task_ID |
| --- | --- | --- | --- | --- | --- | --- | --- | --- | --- |
| 6454 | 36900.37000.37200.38400.39400.41400.42400.104900 | **7th floor roof** | 196.75d | 2026-10-15 | 2027-06-13 |  | start no earlier than 2026-10-15 | Zenith | 8650674 |
| 6455 | 36900.37000.37200.38400.39400.41400.42400.104900.1631200 | Block Work | 10d | 2026-10-15 | 2026-10-25 | 6326, 6439 |  | Zenith | 8712554 |
| 6456 | 36900.37000.37200.38400.39400.41400.42400.104900.1631300 | Fire sprinkler pipe fixing | 6d | 2026-10-25 | 2026-10-31 | 6440, 6455 |  | Zenith | 8712564 |
| 6457 | 36900.37000.37200.38400.39400.41400.42400.104900.1631400 | Internal Plumbing Works | 10d | 2026-10-25 | 2026-12-19 | 6441, 6455 |  | Zenith | 8712574 |
| 6458 | 36900.37000.37200.38400.39400.41400.42400.104900.1631500 | Waterproofing | 14d | 2026-12-19 | 2027-01-02 | 6442, 6457 |  | Zenith | 8712584 |
| 6459 | 36900.37000.37200.38400.39400.41400.42400.104900.1631600 | Internal Plaster | 14d | 2026-12-24 | 2027-01-07 | 6443, 6457, 6458FF+5d |  | Zenith | 8712594 |
| 6460 | 36900.37000.37200.38400.39400.41400.42400.104900.1631700 | IPS flooring work | 10d | 2027-01-07 | 2027-01-17 | 6444, 6459 |  | Zenith | 8712604 |
| 6461 | 36900.37000.37200.38400.39400.41400.42400.104900.1631800 | Toilet dado work | 10d | 2027-01-07 | 2027-01-17 | 6445, 6458, 6459 |  | Zenith | 8712614 |
| 6462 | 36900.37000.37200.38400.39400.41400.42400.104900.1631900 | Toilet flooring work | 7d | 2027-01-17 | 2027-01-24 | 6446, 6461 |  | Zenith | 8712624 |
| 6463 | 36900.37000.37200.38400.39400.41400.42400.104900.1632000 | False Cieling panel fixing | 10d | 2027-01-24 | 2027-02-03 | 6447, 6462 |  | Zenith | 8712634 |
| 6464 | 36900.37000.37200.38400.39400.41400.42400.104900.1632100 | Living dinning flooring | 14d | 2027-01-24 | 2027-02-07 | 6448, 6462 |  | Zenith | 8712644 |
| 6465 | 36900.37000.37200.38400.39400.41400.42400.104900.1632200 | Putty primer coat | 12d | 2027-03-27 | 2027-04-07 | 6449, 6464 |  | Zenith | 8712654 |
| 6466 | 36900.37000.37200.38400.39400.41400.42400.104900.1632300 | Aluminium door-window fixing | 15d | 2027-03-12 | 2027-03-26 | 6450, 6460, 6464 |  | Zenith | 8712664 |
| 6467 | 36900.37000.37200.38400.39400.41400.42400.104900.1632400 | Door shutter fixing (Pre Hung) | 8d | 2027-04-08 | 2027-04-15 | 6451, 6465 |  | Zenith | 8712674 |
| 6468 | 36900.37000.37200.38400.39400.41400.42400.104900.1632500 | Electrical wiring work | 12d | 2027-04-19 | 2027-04-30 | 6452, 6467 |  | Zenith | 8712684 |
| 6469 | 36900.37000.37200.38400.39400.41400.42400.104900.1632600 | Painting 1st coat | 15d | 2027-05-30 | 2027-06-13 | 6453, 6468 |  | Zenith | 8712694 |
| 6470 | 36900.37000.37200.38400.39400.41400.42400.105000 | **8th floor roof** | 197.75d | 2026-10-29 | 2027-06-28 |  | start no earlier than 2026-10-29 | Zenith | 8650684 |
| 6471 | 36900.37000.37200.38400.39400.41400.42400.105000.1632700 | Block Work | 10d | 2026-10-29 | 2026-12-23 | 6327, 6455 |  | Zenith | 8712704 |
| 6472 | 36900.37000.37200.38400.39400.41400.42400.105000.1632800 | Fire sprinkler pipe fixing | 6d | 2026-12-23 | 2026-12-29 | 6456, 6471 |  | Zenith | 8712714 |
| 6473 | 36900.37000.37200.38400.39400.41400.42400.105000.1632900 | Internal Plumbing Works | 10d | 2026-12-23 | 2027-01-02 | 6457, 6471 |  | Zenith | 8712724 |
| 6474 | 36900.37000.37200.38400.39400.41400.42400.105000.1633000 | Waterproofing | 14d | 2027-01-02 | 2027-01-16 | 6458, 6473 |  | Zenith | 8712734 |
| 6475 | 36900.37000.37200.38400.39400.41400.42400.105000.1633100 | Internal Plaster | 14d | 2027-01-07 | 2027-01-21 | 6459, 6473, 6474FF+5d |  | Zenith | 8712744 |
| 6476 | 36900.37000.37200.38400.39400.41400.42400.105000.1633200 | IPS flooring work | 10d | 2027-01-21 | 2027-01-31 | 6460, 6475 |  | Zenith | 8712754 |
| 6477 | 36900.37000.37200.38400.39400.41400.42400.105000.1633300 | Toilet dado work | 10d | 2027-01-21 | 2027-01-31 | 6461, 6474, 6475 |  | Zenith | 8712764 |
| 6478 | 36900.37000.37200.38400.39400.41400.42400.105000.1633400 | Toilet flooring work | 7d | 2027-01-31 | 2027-02-07 | 6462, 6477 |  | Zenith | 8712774 |
| 6479 | 36900.37000.37200.38400.39400.41400.42400.105000.1633500 | False Cieling panel fixing | 10d | 2027-02-07 | 2027-02-17 | 6463, 6478 |  | Zenith | 8712784 |
| 6480 | 36900.37000.37200.38400.39400.41400.42400.105000.1633600 | Living dinning flooring | 14d | 2027-02-07 | 2027-02-21 | 6464, 6478 |  | Zenith | 8712794 |
| 6481 | 36900.37000.37200.38400.39400.41400.42400.105000.1633700 | Putty primer coat | 12d | 2027-04-08 | 2027-04-19 | 6465, 6480 |  | Zenith | 8712804 |
| 6482 | 36900.37000.37200.38400.39400.41400.42400.105000.1633800 | Aluminium door-window fixing | 15d | 2027-03-27 | 2027-04-10 | 6466, 6476, 6480 |  | Zenith | 8712814 |
| 6483 | 36900.37000.37200.38400.39400.41400.42400.105000.1633900 | Door shutter fixing (Pre Hung) | 8d | 2027-04-20 | 2027-04-27 | 6467, 6481 |  | Zenith | 8712824 |
| 6484 | 36900.37000.37200.38400.39400.41400.42400.105000.1634000 | Electrical wiring work | 12d | 2027-05-01 | 2027-05-12 | 6468, 6483 |  | Zenith | 8712834 |
| 6485 | 36900.37000.37200.38400.39400.41400.42400.105000.1634100 | Painting 1st coat | 15d | 2027-06-14 | 2027-06-28 | 6469, 6484 |  | Zenith | 8712844 |

| ID | WBS | Task | Duration | Start | Finish | Predecessors | Constraint | Calendar | Unique_Task_ID |
| --- | --- | --- | --- | --- | --- | --- | --- | --- | --- |
| 6486 | 36900.37000.37200.38400.39400.41400.42400.105100 | **9th floor roof** | 198.75d | 2026-12-27 | 2027-07-13 |  | start no earlier than 2026-12-27 | Zenith | 8650694 |
| 6487 | 36900.37000.37200.38400.39400.41400.42400.105100.1634200 | Block Work | 10d | 2026-12-27 | 2027-01-06 | 6328, 6471 |  | Zenith | 8712854 |
| 6488 | 36900.37000.37200.38400.39400.41400.42400.105100.1634300 | Fire sprinkler pipe fixing | 6d | 2027-01-06 | 2027-01-12 | 6472, 6487 |  | Zenith | 8712864 |
| 6489 | 36900.37000.37200.38400.39400.41400.42400.105100.1634400 | Internal Plumbing Works | 10d | 2027-01-06 | 2027-01-16 | 6473, 6487 |  | Zenith | 8712874 |
| 6490 | 36900.37000.37200.38400.39400.41400.42400.105100.1634500 | Waterproofing | 14d | 2027-01-16 | 2027-01-30 | 6474, 6489 |  | Zenith | 8712884 |
| 6491 | 36900.37000.37200.38400.39400.41400.42400.105100.1634600 | Internal Plaster | 14d | 2027-01-21 | 2027-02-04 | 6475, 6489, 6490FF+5d |  | Zenith | 8712894 |
| 6492 | 36900.37000.37200.38400.39400.41400.42400.105100.1634700 | IPS flooring work | 10d | 2027-02-04 | 2027-02-14 | 6476, 6491 |  | Zenith | 8712904 |
| 6493 | 36900.37000.37200.38400.39400.41400.42400.105100.1634800 | Toilet dado work | 10d | 2027-02-04 | 2027-02-14 | 6477, 6490, 6491 |  | Zenith | 8712914 |
| 6494 | 36900.37000.37200.38400.39400.41400.42400.105100.1634900 | Toilet flooring work | 7d | 2027-02-14 | 2027-02-21 | 6478, 6493 |  | Zenith | 8712924 |
| 6495 | 36900.37000.37200.38400.39400.41400.42400.105100.1635000 | False Cieling panel fixing | 10d | 2027-02-21 | 2027-03-03 | 6479, 6494 |  | Zenith | 8712934 |
| 6496 | 36900.37000.37200.38400.39400.41400.42400.105100.1635100 | Living dinning flooring | 14d | 2027-02-21 | 2027-03-07 | 6480, 6494 |  | Zenith | 8712944 |
| 6497 | 36900.37000.37200.38400.39400.41400.42400.105100.1635200 | Putty primer coat | 12d | 2027-04-20 | 2027-05-01 | 6481, 6496 |  | Zenith | 8712954 |
| 6498 | 36900.37000.37200.38400.39400.41400.42400.105100.1635300 | Aluminium door-window fixing | 15d | 2027-04-11 | 2027-04-25 | 6482, 6492, 6496 |  | Zenith | 8712964 |
| 6499 | 36900.37000.37200.38400.39400.41400.42400.105100.1635400 | Door shutter fixing (Pre Hung) | 8d | 2027-05-02 | 2027-05-09 | 6483, 6497 |  | Zenith | 8712974 |
| 6500 | 36900.37000.37200.38400.39400.41400.42400.105100.1635500 | Electrical wiring work | 12d | 2027-05-13 | 2027-05-24 | 6484, 6499 |  | Zenith | 8712984 |
| 6501 | 36900.37000.37200.38400.39400.41400.42400.105100.1635600 | Painting 1st coat | 15d | 2027-06-29 | 2027-07-13 | 6485, 6500 |  | Zenith | 8712994 |
| 6502 | 36900.37000.37200.38400.39400.41400.42400.105200 | **10th floor roof** | 199.75d | 2027-01-10 | 2027-07-28 |  | start no earlier than 2027-01-10 | Zenith | 8650704 |
| 6503 | 36900.37000.37200.38400.39400.41400.42400.105200.1635700 | Block Work | 10d | 2027-01-10 | 2027-01-20 | 6329, 6487 |  | Zenith | 8713004 |
| 6504 | 36900.37000.37200.38400.39400.41400.42400.105200.1635800 | Fire sprinkler pipe fixing | 6d | 2027-01-20 | 2027-01-26 | 6488, 6503 |  | Zenith | 8713014 |
| 6505 | 36900.37000.37200.38400.39400.41400.42400.105200.1635900 | Internal Plumbing Works | 10d | 2027-01-20 | 2027-01-30 | 6489, 6503 |  | Zenith | 8713024 |
| 6506 | 36900.37000.37200.38400.39400.41400.42400.105200.1636000 | Waterproofing | 14d | 2027-01-30 | 2027-02-13 | 6490, 6505 |  | Zenith | 8713034 |
| 6507 | 36900.37000.37200.38400.39400.41400.42400.105200.1636100 | Internal Plaster | 14d | 2027-02-04 | 2027-02-18 | 6491, 6505, 6506FF+5d |  | Zenith | 8713044 |
| 6508 | 36900.37000.37200.38400.39400.41400.42400.105200.1636200 | IPS flooring work | 10d | 2027-02-18 | 2027-02-28 | 6492, 6507 |  | Zenith | 8713054 |
| 6509 | 36900.37000.37200.38400.39400.41400.42400.105200.1636300 | Toilet dado work | 10d | 2027-02-18 | 2027-02-28 | 6493, 6506, 6507 |  | Zenith | 8713064 |
| 6510 | 36900.37000.37200.38400.39400.41400.42400.105200.1636400 | Toilet flooring work | 7d | 2027-02-28 | 2027-03-07 | 6494, 6509 |  | Zenith | 8713074 |
| 6511 | 36900.37000.37200.38400.39400.41400.42400.105200.1636500 | False Cieling panel fixing | 10d | 2027-03-07 | 2027-03-17 | 6495, 6510 |  | Zenith | 8713084 |
| 6512 | 36900.37000.37200.38400.39400.41400.42400.105200.1636600 | Living dinning flooring | 14d | 2027-03-07 | 2027-03-21 | 6496, 6510 |  | Zenith | 8713094 |
| 6513 | 36900.37000.37200.38400.39400.41400.42400.105200.1636700 | Putty primer coat | 12d | 2027-05-02 | 2027-05-13 | 6497, 6512 |  | Zenith | 8713104 |
| 6514 | 36900.37000.37200.38400.39400.41400.42400.105200.1636800 | Aluminium door-window fixing | 15d | 2027-04-26 | 2027-05-10 | 6498, 6508, 6512 |  | Zenith | 8713114 |
| 6515 | 36900.37000.37200.38400.39400.41400.42400.105200.1636900 | Door shutter fixing (Pre Hung) | 8d | 2027-05-14 | 2027-05-21 | 6499, 6513 |  | Zenith | 8713124 |
| 6516 | 36900.37000.37200.38400.39400.41400.42400.105200.1637000 | Electrical wiring work | 12d | 2027-05-25 | 2027-06-05 | 6500, 6515 |  | Zenith | 8713134 |
| 6517 | 36900.37000.37200.38400.39400.41400.42400.105200.1637100 | Painting 1st coat | 15d | 2027-07-14 | 2027-07-28 | 6501, 6516 |  | Zenith | 8713144 |

| ID | WBS | Task | Duration | Start | Finish | Predecessors | Constraint | Calendar | Unique_Task_ID |
| --- | --- | --- | --- | --- | --- | --- | --- | --- | --- |
| 6518 | 36900.37000.37200.38400.39400.41400.42400.105300 | **11th floor roof** | 202.75d | 2027-01-22 | 2027-08-12 |  | start no earlier than 2027-01-22 | Zenith | 8650714 |
| 6519 | 36900.37000.37200.38400.39400.41400.42400.105300.1637200 | Block Work | 10d | 2027-01-22 | 2027-02-01 | 6330, 6503 |  | Zenith | 8713154 |
| 6520 | 36900.37000.37200.38400.39400.41400.42400.105300.1637300 | Fire sprinkler pipe fixing | 6d | 2027-02-01 | 2027-02-07 | 6504, 6519 |  | Zenith | 8713164 |
| 6521 | 36900.37000.37200.38400.39400.41400.42400.105300.1637400 | Internal Plumbing Works | 10d | 2027-02-01 | 2027-02-11 | 6505, 6519 |  | Zenith | 8713174 |
| 6522 | 36900.37000.37200.38400.39400.41400.42400.105300.1637500 | Waterproofing | 14d | 2027-02-13 | 2027-02-27 | 6506, 6521 |  | Zenith | 8713184 |
| 6523 | 36900.37000.37200.38400.39400.41400.42400.105300.1637600 | Internal Plaster | 14d | 2027-02-18 | 2027-03-04 | 6507, 6521, 6522FF+5d |  | Zenith | 8713194 |
| 6524 | 36900.37000.37200.38400.39400.41400.42400.105300.1637700 | IPS flooring work | 10d | 2027-03-04 | 2027-03-14 | 6508, 6523 |  | Zenith | 8713204 |
| 6525 | 36900.37000.37200.38400.39400.41400.42400.105300.1637800 | Toilet dado work | 10d | 2027-03-04 | 2027-03-14 | 6509, 6522, 6523 |  | Zenith | 8713214 |
| 6526 | 36900.37000.37200.38400.39400.41400.42400.105300.1637900 | Toilet flooring work | 7d | 2027-03-14 | 2027-03-21 | 6510, 6525 |  | Zenith | 8713224 |
| 6527 | 36900.37000.37200.38400.39400.41400.42400.105300.1638000 | False Cieling panel fixing | 10d | 2027-03-21 | 2027-03-31 | 6511, 6526 |  | Zenith | 8713234 |
| 6528 | 36900.37000.37200.38400.39400.41400.42400.105300.1638100 | Living dinning flooring | 14d | 2027-03-21 | 2027-04-04 | 6512, 6526 |  | Zenith | 8713244 |
| 6529 | 36900.37000.37200.38400.39400.41400.42400.105300.1638200 | Putty primer coat | 12d | 2027-05-14 | 2027-05-25 | 6513, 6528 |  | Zenith | 8713254 |
| 6530 | 36900.37000.37200.38400.39400.41400.42400.105300.1638300 | Aluminium door-window fixing | 15d | 2027-05-11 | 2027-05-25 | 6514, 6524, 6528 |  | Zenith | 8713264 |
| 6531 | 36900.37000.37200.38400.39400.41400.42400.105300.1638400 | Door shutter fixing (Pre Hung) | 8d | 2027-05-26 | 2027-06-02 | 6515, 6529 |  | Zenith | 8713274 |
| 6532 | 36900.37000.37200.38400.39400.41400.42400.105300.1638500 | Electrical wiring work | 12d | 2027-06-06 | 2027-06-17 | 6516, 6531 |  | Zenith | 8713284 |
| 6533 | 36900.37000.37200.38400.39400.41400.42400.105300.1638600 | Painting 1st coat | 15d | 2027-07-29 | 2027-08-12 | 6517, 6532 |  | Zenith | 8713294 |
| 6534 | 36900.37000.37200.38400.39400.41400.42400.105400 | **12th floor roof** | 203.75d | 2027-02-05 | 2027-08-27 |  | start no earlier than 2027-02-05 | Zenith | 8650724 |
| 6535 | 36900.37000.37200.38400.39400.41400.42400.105400.1638700 | Block Work | 10d | 2027-02-05 | 2027-02-15 | 6331, 6519 |  | Zenith | 8713304 |
| 6536 | 36900.37000.37200.38400.39400.41400.42400.105400.1638800 | Fire sprinkler pipe fixing | 6d | 2027-02-15 | 2027-02-21 | 6520, 6535 |  | Zenith | 8713314 |
| 6537 | 36900.37000.37200.38400.39400.41400.42400.105400.1638900 | Internal Plumbing Works | 10d | 2027-02-15 | 2027-02-25 | 6521, 6535 |  | Zenith | 8713324 |
| 6538 | 36900.37000.37200.38400.39400.41400.42400.105400.1639000 | Waterproofing | 14d | 2027-02-27 | 2027-03-13 | 6522, 6537 |  | Zenith | 8713334 |
| 6539 | 36900.37000.37200.38400.39400.41400.42400.105400.1639100 | Internal Plaster | 14d | 2027-03-04 | 2027-03-18 | 6523, 6537, 6538FF+5d |  | Zenith | 8713344 |
| 6540 | 36900.37000.37200.38400.39400.41400.42400.105400.1639200 | IPS flooring work | 10d | 2027-03-18 | 2027-03-28 | 6524, 6539 |  | Zenith | 8713354 |
| 6541 | 36900.37000.37200.38400.39400.41400.42400.105400.1639300 | Toilet dado work | 10d | 2027-03-18 | 2027-03-28 | 6525, 6538, 6539 |  | Zenith | 8713364 |
| 6542 | 36900.37000.37200.38400.39400.41400.42400.105400.1639400 | Toilet flooring work | 7d | 2027-03-28 | 2027-04-04 | 6526, 6541 |  | Zenith | 8713374 |
| 6543 | 36900.37000.37200.38400.39400.41400.42400.105400.1639500 | False Cieling panel fixing | 10d | 2027-04-04 | 2027-04-14 | 6527, 6542 |  | Zenith | 8713384 |
| 6544 | 36900.37000.37200.38400.39400.41400.42400.105400.1639600 | Living dinning flooring | 14d | 2027-04-04 | 2027-04-18 | 6528, 6542 |  | Zenith | 8713394 |
| 6545 | 36900.37000.37200.38400.39400.41400.42400.105400.1639700 | Putty primer coat | 12d | 2027-05-26 | 2027-06-06 | 6529, 6544 |  | Zenith | 8713404 |
| 6546 | 36900.37000.37200.38400.39400.41400.42400.105400.1639800 | Aluminium door-window fixing | 15d | 2027-05-26 | 2027-06-09 | 6530, 6540, 6544 |  | Zenith | 8713414 |
| 6547 | 36900.37000.37200.38400.39400.41400.42400.105400.1639900 | Door shutter fixing (Pre Hung) | 8d | 2027-06-07 | 2027-06-14 | 6531, 6545 |  | Zenith | 8713424 |
| 6548 | 36900.37000.37200.38400.39400.41400.42400.105400.1640000 | Electrical wiring work | 12d | 2027-06-18 | 2027-06-29 | 6532, 6547 |  | Zenith | 8713434 |
| 6549 | 36900.37000.37200.38400.39400.41400.42400.105400.1640100 | Painting 1st coat | 15d | 2027-08-13 | 2027-08-27 | 6533, 6548 |  | Zenith | 8713444 |

| ID | WBS | Task | Duration | Start | Finish | Predecessors | Constraint | Calendar | Unique_Task_ID |
| --- | --- | --- | --- | --- | --- | --- | --- | --- | --- |
| 6550 | 36900.37000.37200.38400.39400.41400.42400.105500 | **13th floor roof** | 204.75d | 2027-02-19 | 2027-09-11 |  | start no earlier than 2027-02-19 | Zenith | 8650734 |
| 6551 | 36900.37000.37200.38400.39400.41400.42400.105500.1640200 | Block Work | 10d | 2027-02-19 | 2027-03-01 | 6332, 6535 |  | Zenith | 8713454 |
| 6552 | 36900.37000.37200.38400.39400.41400.42400.105500.1640300 | Fire sprinkler pipe fixing | 6d | 2027-03-01 | 2027-03-07 | 6536, 6551 |  | Zenith | 8713464 |
| 6553 | 36900.37000.37200.38400.39400.41400.42400.105500.1640400 | Internal Plumbing Works | 10d | 2027-03-01 | 2027-03-11 | 6537, 6551 |  | Zenith | 8713474 |
| 6554 | 36900.37000.37200.38400.39400.41400.42400.105500.1640500 | Waterproofing | 14d | 2027-03-13 | 2027-03-27 | 6538, 6553 |  | Zenith | 8713484 |
| 6555 | 36900.37000.37200.38400.39400.41400.42400.105500.1640600 | Internal Plaster | 14d | 2027-03-18 | 2027-04-01 | 6539, 6553, 6554FF+5d |  | Zenith | 8713494 |
| 6556 | 36900.37000.37200.38400.39400.41400.42400.105500.1640700 | IPS flooring work | 10d | 2027-04-01 | 2027-04-11 | 6540, 6555 |  | Zenith | 8713504 |
| 6557 | 36900.37000.37200.38400.39400.41400.42400.105500.1640800 | Toilet dado work | 10d | 2027-04-01 | 2027-04-11 | 6541, 6554, 6555 |  | Zenith | 8713514 |
| 6558 | 36900.37000.37200.38400.39400.41400.42400.105500.1640900 | Toilet flooring work | 7d | 2027-04-11 | 2027-04-18 | 6542, 6557 |  | Zenith | 8713524 |
| 6559 | 36900.37000.37200.38400.39400.41400.42400.105500.1641000 | False Cieling panel fixing | 10d | 2027-04-18 | 2027-04-28 | 6543, 6558 |  | Zenith | 8713534 |
| 6560 | 36900.37000.37200.38400.39400.41400.42400.105500.1641100 | Living dinning flooring | 14d | 2027-04-18 | 2027-05-02 | 6544, 6558 |  | Zenith | 8713544 |
| 6561 | 36900.37000.37200.38400.39400.41400.42400.105500.1641200 | Putty primer coat | 12d | 2027-06-07 | 2027-06-18 | 6545, 6560 |  | Zenith | 8713554 |
| 6562 | 36900.37000.37200.38400.39400.41400.42400.105500.1641300 | Aluminium door-window fixing | 15d | 2027-06-10 | 2027-06-24 | 6546, 6556, 6560 |  | Zenith | 8713564 |
| 6563 | 36900.37000.37200.38400.39400.41400.42400.105500.1641400 | Door shutter fixing (Pre Hung) | 8d | 2027-06-19 | 2027-06-26 | 6547, 6561 |  | Zenith | 8713574 |
| 6564 | 36900.37000.37200.38400.39400.41400.42400.105500.1641500 | Electrical wiring work | 12d | 2027-06-30 | 2027-07-11 | 6548, 6563 |  | Zenith | 8713584 |
| 6565 | 36900.37000.37200.38400.39400.41400.42400.105500.1641600 | Painting 1st coat | 15d | 2027-08-28 | 2027-09-11 | 6549, 6564 |  | Zenith | 8713594 |
| 6566 | 36900.37000.37200.38400.39400.41400.42400.105600 | **14th floor roof** | 206.75d | 2027-03-04 | 2027-09-26 |  | start no earlier than 2027-03-04 | Zenith | 8650744 |
| 6567 | 36900.37000.37200.38400.39400.41400.42400.105600.1641700 | Block Work | 10d | 2027-03-04 | 2027-03-14 | 6333, 6551 |  | Zenith | 8713604 |
| 6568 | 36900.37000.37200.38400.39400.41400.42400.105600.1641800 | Fire sprinkler pipe fixing | 6d | 2027-03-14 | 2027-03-20 | 6552, 6567 |  | Zenith | 8713614 |
| 6569 | 36900.37000.37200.38400.39400.41400.42400.105600.1641900 | Internal Plumbing Works | 10d | 2027-03-14 | 2027-03-24 | 6553, 6567 |  | Zenith | 8713624 |
| 6570 | 36900.37000.37200.38400.39400.41400.42400.105600.1642000 | Waterproofing | 14d | 2027-03-27 | 2027-04-10 | 6554, 6569 |  | Zenith | 8713634 |
| 6571 | 36900.37000.37200.38400.39400.41400.42400.105600.1642100 | Internal Plaster | 14d | 2027-04-01 | 2027-04-15 | 6555, 6569, 6570FF+5d |  | Zenith | 8713644 |
| 6572 | 36900.37000.37200.38400.39400.41400.42400.105600.1642200 | IPS flooring work | 10d | 2027-04-15 | 2027-04-25 | 6556, 6571 |  | Zenith | 8713654 |
| 6573 | 36900.37000.37200.38400.39400.41400.42400.105600.1642300 | Toilet dado work | 10d | 2027-04-15 | 2027-04-25 | 6557, 6570, 6571 |  | Zenith | 8713664 |
| 6574 | 36900.37000.37200.38400.39400.41400.42400.105600.1642400 | Toilet flooring work | 7d | 2027-04-25 | 2027-05-02 | 6558, 6573 |  | Zenith | 8713674 |
| 6575 | 36900.37000.37200.38400.39400.41400.42400.105600.1642500 | False Cieling panel fixing | 10d | 2027-05-02 | 2027-05-12 | 6559, 6574 |  | Zenith | 8713684 |
| 6576 | 36900.37000.37200.38400.39400.41400.42400.105600.1642600 | Living dinning flooring | 14d | 2027-05-02 | 2027-05-16 | 6560, 6574 |  | Zenith | 8713694 |
| 6577 | 36900.37000.37200.38400.39400.41400.42400.105600.1642700 | Putty primer coat | 12d | 2027-06-19 | 2027-06-30 | 6561, 6576 |  | Zenith | 8713704 |
| 6578 | 36900.37000.37200.38400.39400.41400.42400.105600.1642800 | Aluminium door-window fixing | 15d | 2027-06-25 | 2027-07-09 | 6562, 6572, 6576 |  | Zenith | 8713714 |
| 6579 | 36900.37000.37200.38400.39400.41400.42400.105600.1642900 | Door shutter fixing (Pre Hung) | 8d | 2027-07-01 | 2027-07-08 | 6563, 6577 |  | Zenith | 8713724 |
| 6580 | 36900.37000.37200.38400.39400.41400.42400.105600.1643000 | Electrical wiring work | 12d | 2027-07-12 | 2027-07-23 | 6564, 6579 |  | Zenith | 8713734 |
| 6581 | 36900.37000.37200.38400.39400.41400.42400.105600.1643100 | Painting 1st coat | 15d | 2027-09-12 | 2027-09-26 | 6565, 6580 |  | Zenith | 8713744 |

| ID | WBS | Task | Duration | Start | Finish | Predecessors | Constraint | Calendar | Unique_Task_ID |
| --- | --- | --- | --- | --- | --- | --- | --- | --- | --- |
| 6582 | 36900.37000.37200.38400.39400.41400.42400.105700 | **15th floor roof** | 208.75d | 2027-03-17 | 2027-10-11 |  | start no earlier than 2027-03-17 | Zenith | 8650754 |
| 6583 | 36900.37000.37200.38400.39400.41400.42400.105700.1643200 | Block Work | 10d | 2027-03-17 | 2027-03-27 | 6334, 6567 |  | Zenith | 8713754 |
| 6584 | 36900.37000.37200.38400.39400.41400.42400.105700.1643300 | Fire sprinkler pipe fixing | 6d | 2027-03-27 | 2027-04-02 | 6568, 6583 |  | Zenith | 8713764 |
| 6585 | 36900.37000.37200.38400.39400.41400.42400.105700.1643400 | Internal Plumbing Works | 10d | 2027-03-27 | 2027-04-06 | 6569, 6583 |  | Zenith | 8713774 |
| 6586 | 36900.37000.37200.38400.39400.41400.42400.105700.1643500 | Waterproofing | 14d | 2027-04-10 | 2027-04-24 | 6570, 6585 |  | Zenith | 8713784 |
| 6587 | 36900.37000.37200.38400.39400.41400.42400.105700.1643600 | Internal Plaster | 14d | 2027-04-15 | 2027-04-29 | 6571, 6585, 6586FF+5d |  | Zenith | 8713794 |
| 6588 | 36900.37000.37200.38400.39400.41400.42400.105700.1643700 | IPS flooring work | 10d | 2027-04-29 | 2027-05-09 | 6572, 6587 |  | Zenith | 8713804 |
| 6589 | 36900.37000.37200.38400.39400.41400.42400.105700.1643800 | Toilet dado work | 10d | 2027-04-29 | 2027-05-09 | 6573, 6586, 6587 |  | Zenith | 8713814 |
| 6590 | 36900.37000.37200.38400.39400.41400.42400.105700.1643900 | Toilet flooring work | 7d | 2027-05-09 | 2027-05-16 | 6574, 6589 |  | Zenith | 8713824 |
| 6591 | 36900.37000.37200.38400.39400.41400.42400.105700.1644000 | False Cieling panel fixing | 10d | 2027-05-16 | 2027-05-26 | 6575, 6590 |  | Zenith | 8713834 |
| 6592 | 36900.37000.37200.38400.39400.41400.42400.105700.1644100 | Living dinning flooring | 14d | 2027-05-16 | 2027-05-30 | 6576, 6590 |  | Zenith | 8713844 |
| 6593 | 36900.37000.37200.38400.39400.41400.42400.105700.1644200 | Aluminium door-window fixing | 12d | 2027-07-10 | 2027-07-21 | 6578, 6588, 6592 |  | Zenith | 8713854 |
| 6594 | 36900.37000.37200.38400.39400.41400.42400.105700.1644300 | Putty primer coat | 15d | 2027-07-01 | 2027-07-15 | 6577, 6592 |  | Zenith | 8713864 |
| 6595 | 36900.37000.37200.38400.39400.41400.42400.105700.1644400 | Door shutter fixing (Pre Hung) | 8d | 2027-07-16 | 2027-07-23 | 6579, 6594 |  | Zenith | 8713874 |
| 6596 | 36900.37000.37200.38400.39400.41400.42400.105700.1644500 | Electrical wiring work | 12d | 2027-07-24 | 2027-08-04 | 6580, 6595 |  | Zenith | 8713884 |
| 6597 | 36900.37000.37200.38400.39400.41400.42400.105700.1644600 | Painting 1st coat | 15d | 2027-09-27 | 2027-10-11 | 6581, 6596 |  | Zenith | 8713894 |
| 6598 | 36900.37000.37200.38400.39400.41400.42400.105800 | **16th floor roof** | 210.75d | 2027-03-30 | 2027-10-26 |  | start no earlier than 2027-03-30 | Zenith | 8650764 |
| 6599 | 36900.37000.37200.38400.39400.41400.42400.105800.1644700 | Block Work | 10d | 2027-03-30 | 2027-04-09 | 6335, 6583 |  | Zenith | 8713904 |
| 6600 | 36900.37000.37200.38400.39400.41400.42400.105800.1644800 | Fire sprinkler pipe fixing | 6d | 2027-04-09 | 2027-04-15 | 6584, 6599 |  | Zenith | 8713914 |
| 6601 | 36900.37000.37200.38400.39400.41400.42400.105800.1644900 | Internal Plumbing Works | 10d | 2027-04-09 | 2027-04-19 | 6585, 6599 |  | Zenith | 8713924 |
| 6602 | 36900.37000.37200.38400.39400.41400.42400.105800.1645000 | Waterproofing | 14d | 2027-04-24 | 2027-05-08 | 6586, 6601 |  | Zenith | 8713934 |
| 6603 | 36900.37000.37200.38400.39400.41400.42400.105800.1645100 | Internal Plaster | 14d | 2027-04-29 | 2027-05-13 | 6587, 6601, 6602FF+5d |  | Zenith | 8713944 |
| 6604 | 36900.37000.37200.38400.39400.41400.42400.105800.1645200 | IPS flooring work | 10d | 2027-05-13 | 2027-05-23 | 6588, 6603 |  | Zenith | 8713954 |
| 6605 | 36900.37000.37200.38400.39400.41400.42400.105800.1645300 | Toilet dado work | 10d | 2027-05-13 | 2027-05-23 | 6589, 6602, 6603 |  | Zenith | 8713964 |
| 6606 | 36900.37000.37200.38400.39400.41400.42400.105800.1645400 | Toilet flooring work | 7d | 2027-05-23 | 2027-05-30 | 6590, 6605 |  | Zenith | 8713974 |
| 6607 | 36900.37000.37200.38400.39400.41400.42400.105800.1645500 | False Cieling panel fixing | 10d | 2027-05-30 | 2027-06-09 | 6591, 6606 |  | Zenith | 8713984 |
| 6608 | 36900.37000.37200.38400.39400.41400.42400.105800.1645600 | Living dinning flooring | 14d | 2027-05-30 | 2027-06-13 | 6592, 6606 |  | Zenith | 8713994 |
| 6609 | 36900.37000.37200.38400.39400.41400.42400.105800.1645700 | Putty primer coat | 12d | 2027-07-16 | 2027-07-27 | 6594, 6608 |  | Zenith | 8714004 |
| 6610 | 36900.37000.37200.38400.39400.41400.42400.105800.1645800 | Aluminium door-window fixing | 15d | 2027-07-22 | 2027-08-05 | 6593, 6604, 6608 |  | Zenith | 8714014 |
| 6611 | 36900.37000.37200.38400.39400.41400.42400.105800.1645900 | Door shutter fixing (Pre Hung) | 8d | 2027-07-28 | 2027-08-04 | 6595, 6609 |  | Zenith | 8714024 |
| 6612 | 36900.37000.37200.38400.39400.41400.42400.105800.1646000 | Electrical wiring work | 12d | 2027-08-05 | 2027-08-16 | 6596, 6611 |  | Zenith | 8714034 |
| 6613 | 36900.37000.37200.38400.39400.41400.42400.105800.1646100 | Painting 1st coat | 15d | 2027-10-12 | 2027-10-26 | 6597, 6612 |  | Zenith | 8714044 |

| ID | WBS | Task | Duration | Start | Finish | Predecessors | Constraint | Calendar | Unique_Task_ID |
| --- | --- | --- | --- | --- | --- | --- | --- | --- | --- |
| 6614 | 36900.37000.37200.38400.39400.41400.42400.105900 | **17th floor roof** | 212.75d | 2027-04-12 | 2027-12-25 |  | start no earlier than 2027-04-12 | Zenith | 8650774 |
| 6615 | 36900.37000.37200.38400.39400.41400.42400.105900.1646200 | Block Work | 10d | 2027-04-12 | 2027-04-22 | 6336, 6599 |  | Zenith | 8714054 |
| 6616 | 36900.37000.37200.38400.39400.41400.42400.105900.1646300 | Fire sprinkler pipe fixing | 6d | 2027-04-22 | 2027-04-28 | 6600, 6615 |  | Zenith | 8714064 |
| 6617 | 36900.37000.37200.38400.39400.41400.42400.105900.1646400 | Internal Plumbing Works | 10d | 2027-04-22 | 2027-05-02 | 6601, 6615 |  | Zenith | 8714074 |
| 6618 | 36900.37000.37200.38400.39400.41400.42400.105900.1646500 | Waterproofing | 14d | 2027-05-08 | 2027-05-22 | 6602, 6617 |  | Zenith | 8714084 |
| 6619 | 36900.37000.37200.38400.39400.41400.42400.105900.1646600 | Internal Plaster | 14d | 2027-05-13 | 2027-05-27 | 6603, 6617, 6618FF+5d |  | Zenith | 8714094 |
| 6620 | 36900.37000.37200.38400.39400.41400.42400.105900.1646700 | IPS flooring work | 10d | 2027-05-27 | 2027-06-06 | 6604, 6619 |  | Zenith | 8714104 |
| 6621 | 36900.37000.37200.38400.39400.41400.42400.105900.1646800 | Toilet dado work | 10d | 2027-05-27 | 2027-06-06 | 6605, 6618, 6619 |  | Zenith | 8714114 |
| 6622 | 36900.37000.37200.38400.39400.41400.42400.105900.1646900 | Toilet flooring work | 7d | 2027-06-06 | 2027-06-13 | 6606, 6621 |  | Zenith | 8714124 |
| 6623 | 36900.37000.37200.38400.39400.41400.42400.105900.1647000 | False Cieling panel fixing | 10d | 2027-06-13 | 2027-06-23 | 6607, 6622 |  | Zenith | 8714134 |
| 6624 | 36900.37000.37200.38400.39400.41400.42400.105900.1647100 | Living dinning flooring | 14d | 2027-06-13 | 2027-06-27 | 6608, 6622 |  | Zenith | 8714144 |
| 6625 | 36900.37000.37200.38400.39400.41400.42400.105900.1647200 | Putty primer coat | 12d | 2027-07-28 | 2027-08-08 | 6609, 6624 |  | Zenith | 8714154 |
| 6626 | 36900.37000.37200.38400.39400.41400.42400.105900.1647300 | Aluminium door-window fixing | 15d | 2027-08-06 | 2027-08-20 | 6610, 6620, 6624 |  | Zenith | 8714164 |
| 6627 | 36900.37000.37200.38400.39400.41400.42400.105900.1647400 | Door shutter fixing (Pre Hung) | 8d | 2027-08-09 | 2027-08-16 | 6611, 6625 |  | Zenith | 8714174 |
| 6628 | 36900.37000.37200.38400.39400.41400.42400.105900.1647500 | Electrical wiring work | 12d | 2027-08-17 | 2027-08-28 | 6612, 6627 |  | Zenith | 8714184 |
| 6629 | 36900.37000.37200.38400.39400.41400.42400.105900.1647600 | Painting 1st coat | 15d | 2027-10-27 | 2027-12-25 | 6613, 6628 |  | Zenith | 8714194 |
| 6630 | 36900.37000.37200.38400.39400.41400.42400.106000 | **18th floor roof** | 214.75d | 2027-04-25 | 2028-01-09 |  | start no earlier than 2027-04-25 | Zenith | 8650784 |
| 6631 | 36900.37000.37200.38400.39400.41400.42400.106000.1647700 | Block Work | 10d | 2027-04-25 | 2027-05-05 | 6337, 6615 |  | Zenith | 8714204 |
| 6632 | 36900.37000.37200.38400.39400.41400.42400.106000.1647800 | Fire sprinkler pipe fixing | 6d | 2027-05-05 | 2027-05-11 | 6616, 6631 |  | Zenith | 8714214 |
| 6633 | 36900.37000.37200.38400.39400.41400.42400.106000.1647900 | Internal Plumbing Works | 10d | 2027-05-05 | 2027-05-15 | 6617, 6631 |  | Zenith | 8714224 |
| 6634 | 36900.37000.37200.38400.39400.41400.42400.106000.1648000 | Waterproofing | 14d | 2027-05-22 | 2027-06-05 | 6618, 6633 |  | Zenith | 8714234 |
| 6635 | 36900.37000.37200.38400.39400.41400.42400.106000.1648100 | Internal Plaster | 14d | 2027-05-27 | 2027-06-10 | 6619, 6633, 6634FF+5d |  | Zenith | 8714244 |
| 6636 | 36900.37000.37200.38400.39400.41400.42400.106000.1648200 | IPS flooring work | 10d | 2027-06-10 | 2027-06-20 | 6620, 6635 |  | Zenith | 8714254 |
| 6637 | 36900.37000.37200.38400.39400.41400.42400.106000.1648300 | Toilet dado work | 10d | 2027-06-10 | 2027-06-20 | 6621, 6634, 6635 |  | Zenith | 8714264 |
| 6638 | 36900.37000.37200.38400.39400.41400.42400.106000.1648400 | Toilet flooring work | 7d | 2027-06-20 | 2027-06-27 | 6622, 6637 |  | Zenith | 8714274 |
| 6639 | 36900.37000.37200.38400.39400.41400.42400.106000.1648500 | False Cieling panel fixing | 10d | 2027-06-27 | 2027-07-07 | 6623, 6638 |  | Zenith | 8714284 |
| 6640 | 36900.37000.37200.38400.39400.41400.42400.106000.1648600 | Living dinning flooring | 14d | 2027-06-27 | 2027-07-11 | 6624, 6638 |  | Zenith | 8714294 |
| 6641 | 36900.37000.37200.38400.39400.41400.42400.106000.1648700 | Putty primer coat | 12d | 2027-08-09 | 2027-08-20 | 6625, 6640 |  | Zenith | 8714304 |
| 6642 | 36900.37000.37200.38400.39400.41400.42400.106000.1648800 | Aluminium door-window fixing | 15d | 2027-08-21 | 2027-09-04 | 6626, 6636, 6640 |  | Zenith | 8714314 |
| 6643 | 36900.37000.37200.38400.39400.41400.42400.106000.1648900 | Door shutter fixing (Pre Hung) | 8d | 2027-08-21 | 2027-08-28 | 6627, 6641 |  | Zenith | 8714324 |
| 6644 | 36900.37000.37200.38400.39400.41400.42400.106000.1649000 | Electrical wiring work | 12d | 2027-08-29 | 2027-09-09 | 6628, 6643 |  | Zenith | 8714334 |
| 6645 | 36900.37000.37200.38400.39400.41400.42400.106000.1649100 | Painting 1st coat | 15d | 2027-12-26 | 2028-01-09 | 6629, 6644 |  | Zenith | 8714344 |

| ID | WBS | Task | Duration | Start | Finish | Predecessors | Constraint | Calendar | Unique_Task_ID |
| --- | --- | --- | --- | --- | --- | --- | --- | --- | --- |
| 6646 | 36900.37000.37200.38400.39400.41400.42400.106100 | **19th floor roof** | 216.75d | 2027-05-08 | 2028-01-24 |  | start no earlier than 2027-05-08 | Zenith | 8650794 |
| 6647 | 36900.37000.37200.38400.39400.41400.42400.106100.1649200 | Block Work | 10d | 2027-05-08 | 2027-05-18 | 6338, 6631 |  | Zenith | 8714354 |
| 6648 | 36900.37000.37200.38400.39400.41400.42400.106100.1649300 | Fire sprinkler pipe fixing | 6d | 2027-05-18 | 2027-05-24 | 6632, 6647 |  | Zenith | 8714364 |
| 6649 | 36900.37000.37200.38400.39400.41400.42400.106100.1649400 | Internal Plumbing Works | 10d | 2027-05-18 | 2027-05-28 | 6633, 6647 |  | Zenith | 8714374 |
| 6650 | 36900.37000.37200.38400.39400.41400.42400.106100.1649500 | Waterproofing | 14d | 2027-06-05 | 2027-06-19 | 6634, 6649 |  | Zenith | 8714384 |
| 6651 | 36900.37000.37200.38400.39400.41400.42400.106100.1649600 | Internal Plaster | 14d | 2027-06-10 | 2027-06-24 | 6635, 6649, 6650FF+5d |  | Zenith | 8714394 |
| 6652 | 36900.37000.37200.38400.39400.41400.42400.106100.1649700 | IPS flooring work | 10d | 2027-06-24 | 2027-07-04 | 6636, 6651 |  | Zenith | 8714404 |
| 6653 | 36900.37000.37200.38400.39400.41400.42400.106100.1649800 | Toilet dado work | 10d | 2027-06-24 | 2027-07-04 | 6637, 6650, 6651 |  | Zenith | 8714414 |
| 6654 | 36900.37000.37200.38400.39400.41400.42400.106100.1649900 | Toilet flooring work | 7d | 2027-07-04 | 2027-07-11 | 6638, 6653 |  | Zenith | 8714424 |
| 6655 | 36900.37000.37200.38400.39400.41400.42400.106100.1650000 | False Cieling panel fixing | 10d | 2027-07-11 | 2027-07-21 | 6639, 6654 |  | Zenith | 8714434 |
| 6656 | 36900.37000.37200.38400.39400.41400.42400.106100.1650100 | Living dinning flooring | 14d | 2027-07-11 | 2027-07-25 | 6640, 6654 |  | Zenith | 8714444 |
| 6657 | 36900.37000.37200.38400.39400.41400.42400.106100.1650200 | Putty primer coat | 12d | 2027-08-21 | 2027-09-01 | 6641, 6656 |  | Zenith | 8714454 |
| 6658 | 36900.37000.37200.38400.39400.41400.42400.106100.1650300 | Aluminium door-window fixing | 15d | 2027-09-05 | 2027-09-19 | 6642, 6652, 6656 |  | Zenith | 8714464 |
| 6659 | 36900.37000.37200.38400.39400.41400.42400.106100.1650400 | Door shutter fixing (Pre Hung) | 8d | 2027-09-02 | 2027-09-09 | 6643, 6657 |  | Zenith | 8714474 |
| 6660 | 36900.37000.37200.38400.39400.41400.42400.106100.1650500 | Electrical wiring work | 12d | 2027-09-10 | 2027-09-21 | 6644, 6659 |  | Zenith | 8714484 |
| 6661 | 36900.37000.37200.38400.39400.41400.42400.106100.1650600 | Painting 1st coat | 15d | 2028-01-10 | 2028-01-24 | 6645, 6660 |  | Zenith | 8714494 |
| 6662 | 36900.37000.37200.38400.39400.41400.42400.106200 | **20th floor roof** | 218.75d | 2027-05-21 | 2028-02-08 |  | start no earlier than 2027-05-21 | Zenith | 8650804 |
| 6663 | 36900.37000.37200.38400.39400.41400.42400.106200.1650700 | Block Work | 10d | 2027-05-21 | 2027-05-31 | 6339, 6647 |  | Zenith | 8714504 |
| 6664 | 36900.37000.37200.38400.39400.41400.42400.106200.1650800 | Fire sprinkler pipe fixing | 6d | 2027-05-31 | 2027-06-06 | 6648, 6663 |  | Zenith | 8714514 |
| 6665 | 36900.37000.37200.38400.39400.41400.42400.106200.1650900 | Internal Plumbing Works | 10d | 2027-05-31 | 2027-06-10 | 6649, 6663 |  | Zenith | 8714524 |
| 6666 | 36900.37000.37200.38400.39400.41400.42400.106200.1651000 | Waterproofing | 14d | 2027-06-19 | 2027-07-03 | 6650, 6665 |  | Zenith | 8714534 |
| 6667 | 36900.37000.37200.38400.39400.41400.42400.106200.1651100 | Internal Plaster | 14d | 2027-06-24 | 2027-07-08 | 6651, 6665, 6666FF+5d |  | Zenith | 8714544 |
| 6668 | 36900.37000.37200.38400.39400.41400.42400.106200.1651200 | IPS flooring work | 10d | 2027-07-08 | 2027-07-18 | 6652, 6667 |  | Zenith | 8714554 |
| 6669 | 36900.37000.37200.38400.39400.41400.42400.106200.1651300 | Toilet dado work | 10d | 2027-07-08 | 2027-07-18 | 6653, 6666, 6667 |  | Zenith | 8714564 |
| 6670 | 36900.37000.37200.38400.39400.41400.42400.106200.1651400 | Toilet flooring work | 7d | 2027-07-18 | 2027-07-25 | 6654, 6669 |  | Zenith | 8714574 |
| 6671 | 36900.37000.37200.38400.39400.41400.42400.106200.1651500 | False Cieling panel fixing | 10d | 2027-07-25 | 2027-08-04 | 6655, 6670 |  | Zenith | 8714584 |
| 6672 | 36900.37000.37200.38400.39400.41400.42400.106200.1651600 | Living dinning flooring | 14d | 2027-07-25 | 2027-08-08 | 6656, 6670 |  | Zenith | 8714594 |
| 6673 | 36900.37000.37200.38400.39400.41400.42400.106200.1651700 | Putty primer coat | 12d | 2027-09-02 | 2027-09-13 | 6657, 6672 |  | Zenith | 8714604 |
| 6674 | 36900.37000.37200.38400.39400.41400.42400.106200.1651800 | Aluminium door-window fixing | 15d | 2027-09-20 | 2027-10-04 | 6658, 6668, 6672 |  | Zenith | 8714614 |
| 6675 | 36900.37000.37200.38400.39400.41400.42400.106200.1651900 | Door shutter fixing (Pre Hung) | 8d | 2027-09-14 | 2027-09-21 | 6659, 6673 |  | Zenith | 8714624 |
| 6676 | 36900.37000.37200.38400.39400.41400.42400.106200.1652000 | Electrical wiring work | 12d | 2027-09-22 | 2027-10-03 | 6660, 6675 |  | Zenith | 8714634 |
| 6677 | 36900.37000.37200.38400.39400.41400.42400.106200.1652100 | Painting 1st coat | 15d | 2028-01-25 | 2028-02-08 | 6661, 6676 |  | Zenith | 8714644 |

| ID | WBS | Task | Duration | Start | Finish | Predecessors | Constraint | Calendar | Unique_Task_ID |
| --- | --- | --- | --- | --- | --- | --- | --- | --- | --- |
| 6678 | 36900.37000.37200.38400.39400.41400.42400.106300 | **21st floor roof** | 220.75d | 2027-06-03 | 2028-02-23 |  | start no earlier than 2027-06-03 | Zenith | 8650814 |
| 6679 | 36900.37000.37200.38400.39400.41400.42400.106300.1652200 | Block Work | 10d | 2027-06-03 | 2027-06-13 | 6340, 6663 |  | Zenith | 8714654 |
| 6680 | 36900.37000.37200.38400.39400.41400.42400.106300.1652300 | Fire sprinkler pipe fixing | 6d | 2027-06-13 | 2027-06-19 | 6664, 6679 |  | Zenith | 8714664 |
| 6681 | 36900.37000.37200.38400.39400.41400.42400.106300.1652400 | Internal Plumbing Works | 10d | 2027-06-13 | 2027-06-23 | 6665, 6679 |  | Zenith | 8714674 |
| 6682 | 36900.37000.37200.38400.39400.41400.42400.106300.1652500 | Waterproofing | 14d | 2027-07-03 | 2027-07-17 | 6666, 6681 |  | Zenith | 8714684 |
| 6683 | 36900.37000.37200.38400.39400.41400.42400.106300.1652600 | Internal Plaster | 14d | 2027-07-08 | 2027-07-22 | 6667, 6681, 6682FF+5d |  | Zenith | 8714694 |
| 6684 | 36900.37000.37200.38400.39400.41400.42400.106300.1652700 | IPS flooring work | 10d | 2027-07-22 | 2027-08-01 | 6668, 6683 |  | Zenith | 8714704 |
| 6685 | 36900.37000.37200.38400.39400.41400.42400.106300.1652800 | Toilet dado work | 10d | 2027-07-22 | 2027-08-01 | 6669, 6682, 6683 |  | Zenith | 8714714 |
| 6686 | 36900.37000.37200.38400.39400.41400.42400.106300.1652900 | Toilet flooring work | 7d | 2027-08-01 | 2027-08-08 | 6670, 6685 |  | Zenith | 8714724 |
| 6687 | 36900.37000.37200.38400.39400.41400.42400.106300.1653000 | False Cieling panel fixing | 10d | 2027-08-08 | 2027-08-18 | 6671, 6686 |  | Zenith | 8714734 |
| 6688 | 36900.37000.37200.38400.39400.41400.42400.106300.1653100 | Living dinning flooring | 14d | 2027-08-08 | 2027-08-22 | 6672, 6686 |  | Zenith | 8714744 |
| 6689 | 36900.37000.37200.38400.39400.41400.42400.106300.1653200 | Putty primer coat | 12d | 2027-09-14 | 2027-09-25 | 6673, 6688 |  | Zenith | 8714754 |
| 6690 | 36900.37000.37200.38400.39400.41400.42400.106300.1653300 | Aluminium door-window fixing | 15d | 2027-10-05 | 2027-10-19 | 6674, 6684, 6688 |  | Zenith | 8714764 |
| 6691 | 36900.37000.37200.38400.39400.41400.42400.106300.1653400 | Door shutter fixing (Pre Hung) | 8d | 2027-09-26 | 2027-10-03 | 6675, 6689 |  | Zenith | 8714774 |
| 6692 | 36900.37000.37200.38400.39400.41400.42400.106300.1653500 | Electrical wiring work | 12d | 2027-10-04 | 2027-10-15 | 6676, 6691 |  | Zenith | 8714784 |
| 6693 | 36900.37000.37200.38400.39400.41400.42400.106300.1653600 | Painting 1st coat | 15d | 2028-02-09 | 2028-02-23 | 6677, 6692 |  | Zenith | 8714794 |
| 6694 | 36900.37000.37200.38400.39400.41400.42400.106400 | **22nd floor roof** | 222.75d | 2027-06-16 | 2028-03-09 |  | start no earlier than 2027-06-16 | Zenith | 8650824 |
| 6695 | 36900.37000.37200.38400.39400.41400.42400.106400.1653700 | Block Work | 10d | 2027-06-16 | 2027-06-26 | 6341, 6679 |  | Zenith | 8714804 |
| 6696 | 36900.37000.37200.38400.39400.41400.42400.106400.1653800 | Fire sprinkler pipe fixing | 6d | 2027-06-26 | 2027-07-02 | 6680, 6695 |  | Zenith | 8714814 |
| 6697 | 36900.37000.37200.38400.39400.41400.42400.106400.1653900 | Internal Plumbing Works | 10d | 2027-06-26 | 2027-07-06 | 6681, 6695 |  | Zenith | 8714824 |
| 6698 | 36900.37000.37200.38400.39400.41400.42400.106400.1654000 | Waterproofing | 14d | 2027-07-17 | 2027-07-31 | 6682, 6697 |  | Zenith | 8714834 |
| 6699 | 36900.37000.37200.38400.39400.41400.42400.106400.1654100 | Internal Plaster | 14d | 2027-07-22 | 2027-08-05 | 6683, 6697, 6698FF+5d |  | Zenith | 8714844 |
| 6700 | 36900.37000.37200.38400.39400.41400.42400.106400.1654200 | IPS flooring work | 10d | 2027-08-05 | 2027-08-15 | 6684, 6699 |  | Zenith | 8714854 |
| 6701 | 36900.37000.37200.38400.39400.41400.42400.106400.1654300 | Toilet dado work | 10d | 2027-08-05 | 2027-08-15 | 6685, 6698, 6699 |  | Zenith | 8714864 |
| 6702 | 36900.37000.37200.38400.39400.41400.42400.106400.1654400 | Toilet flooring work | 7d | 2027-08-15 | 2027-08-22 | 6686, 6701 |  | Zenith | 8714874 |
| 6703 | 36900.37000.37200.38400.39400.41400.42400.106400.1654500 | False Cieling panel fixing | 10d | 2027-08-22 | 2027-09-01 | 6687, 6702 |  | Zenith | 8714884 |
| 6704 | 36900.37000.37200.38400.39400.41400.42400.106400.1654600 | Living dinning flooring | 14d | 2027-08-22 | 2027-09-05 | 6688, 6702 |  | Zenith | 8714894 |
| 6705 | 36900.37000.37200.38400.39400.41400.42400.106400.1654700 | Putty primer coat | 12d | 2027-09-26 | 2027-10-07 | 6689, 6704 |  | Zenith | 8714904 |
| 6706 | 36900.37000.37200.38400.39400.41400.42400.106400.1654800 | Aluminium door-window fixing | 15d | 2027-10-20 | 2027-12-18 | 6690, 6700, 6704 |  | Zenith | 8714914 |
| 6707 | 36900.37000.37200.38400.39400.41400.42400.106400.1654900 | Door shutter fixing (Pre Hung) | 8d | 2027-10-08 | 2027-10-15 | 6691, 6705 |  | Zenith | 8714924 |
| 6708 | 36900.37000.37200.38400.39400.41400.42400.106400.1655000 | Electrical wiring work | 12d | 2027-10-16 | 2027-10-27 | 6692, 6707 |  | Zenith | 8714934 |
| 6709 | 36900.37000.37200.38400.39400.41400.42400.106400.1655100 | Painting 1st coat | 15d | 2028-02-24 | 2028-03-09 | 6693, 6708 |  | Zenith | 8714944 |

| ID | WBS | Task | Duration | Start | Finish | Predecessors | Constraint | Calendar | Unique_Task_ID |
| --- | --- | --- | --- | --- | --- | --- | --- | --- | --- |
| 6710 | 36900.37000.37200.38400.39400.41400.42400.106500 | **23rd floor roof** | 224.75d | 2027-06-29 | 2028-03-24 |  | start no earlier than 2027-06-29 | Zenith | 8650834 |
| 6711 | 36900.37000.37200.38400.39400.41400.42400.106500.1655200 | Block Work | 10d | 2027-06-29 | 2027-07-09 | 6342, 6695 |  | Zenith | 8714954 |
| 6712 | 36900.37000.37200.38400.39400.41400.42400.106500.1655300 | Fire sprinkler pipe fixing | 6d | 2027-07-09 | 2027-07-15 | 6696, 6711 |  | Zenith | 8714964 |
| 6713 | 36900.37000.37200.38400.39400.41400.42400.106500.1655400 | Internal Plumbing Works | 10d | 2027-07-09 | 2027-07-19 | 6697, 6711 |  | Zenith | 8714974 |
| 6714 | 36900.37000.37200.38400.39400.41400.42400.106500.1655500 | Waterproofing | 14d | 2027-07-31 | 2027-08-14 | 6698, 6713 |  | Zenith | 8714984 |
| 6715 | 36900.37000.37200.38400.39400.41400.42400.106500.1655600 | Internal Plaster | 14d | 2027-08-05 | 2027-08-19 | 6699, 6713, 6714FF+5d |  | Zenith | 8714994 |
| 6716 | 36900.37000.37200.38400.39400.41400.42400.106500.1655700 | IPS flooring work | 10d | 2027-08-19 | 2027-08-29 | 6700, 6715 |  | Zenith | 8715004 |
| 6717 | 36900.37000.37200.38400.39400.41400.42400.106500.1655800 | Toilet dado work | 10d | 2027-08-19 | 2027-08-29 | 6701, 6714, 6715 |  | Zenith | 8715014 |
| 6718 | 36900.37000.37200.38400.39400.41400.42400.106500.1655900 | Toilet flooring work | 7d | 2027-08-29 | 2027-09-05 | 6702, 6717 |  | Zenith | 8715024 |
| 6719 | 36900.37000.37200.38400.39400.41400.42400.106500.1656000 | False Cieling panel fixing | 10d | 2027-09-05 | 2027-09-15 | 6703, 6718 |  | Zenith | 8715034 |
| 6720 | 36900.37000.37200.38400.39400.41400.42400.106500.1656100 | Living dinning flooring | 14d | 2027-09-05 | 2027-09-19 | 6704, 6718 |  | Zenith | 8715044 |
| 6721 | 36900.37000.37200.38400.39400.41400.42400.106500.1656200 | Putty primer coat | 12d | 2027-10-08 | 2027-10-19 | 6705, 6720 |  | Zenith | 8715054 |
| 6722 | 36900.37000.37200.38400.39400.41400.42400.106500.1656300 | Aluminium door-window fixing | 15d | 2027-12-19 | 2028-01-02 | 6706, 6716, 6720 |  | Zenith | 8715064 |
| 6723 | 36900.37000.37200.38400.39400.41400.42400.106500.1656400 | Door shutter fixing (Pre Hung) | 8d | 2027-10-20 | 2027-10-27 | 6707, 6721 |  | Zenith | 8715074 |
| 6724 | 36900.37000.37200.38400.39400.41400.42400.106500.1656500 | Electrical wiring work | 12d | 2027-10-28 | 2027-12-23 | 6708, 6723 |  | Zenith | 8715084 |
| 6725 | 36900.37000.37200.38400.39400.41400.42400.106500.1656600 | Painting 1st coat | 15d | 2028-03-10 | 2028-03-24 | 6709, 6724 |  | Zenith | 8715094 |
| 6726 | 36900.37000.37200.38400.39400.41400.42400.106600 | **24th floor roof** | 226.75d | 2027-07-12 | 2028-04-08 |  | start no earlier than 2027-07-12 | Zenith | 8650844 |
| 6727 | 36900.37000.37200.38400.39400.41400.42400.106600.1656700 | Block Work | 10d | 2027-07-12 | 2027-07-22 | 6343, 6711 |  | Zenith | 8715104 |
| 6728 | 36900.37000.37200.38400.39400.41400.42400.106600.1656800 | Fire sprinkler pipe fixing | 6d | 2027-07-22 | 2027-07-28 | 6712, 6727 |  | Zenith | 8715114 |
| 6729 | 36900.37000.37200.38400.39400.41400.42400.106600.1656900 | Internal Plumbing Works | 10d | 2027-07-22 | 2027-08-01 | 6713, 6727 |  | Zenith | 8715124 |
| 6730 | 36900.37000.37200.38400.39400.41400.42400.106600.1657000 | Waterproofing | 14d | 2027-08-14 | 2027-08-28 | 6714, 6729 |  | Zenith | 8715134 |
| 6731 | 36900.37000.37200.38400.39400.41400.42400.106600.1657100 | Internal Plaster | 14d | 2027-08-19 | 2027-09-02 | 6715, 6729, 6730FF+5d |  | Zenith | 8715144 |
| 6732 | 36900.37000.37200.38400.39400.41400.42400.106600.1657200 | IPS flooring work | 10d | 2027-09-02 | 2027-09-12 | 6716, 6731 |  | Zenith | 8715154 |
| 6733 | 36900.37000.37200.38400.39400.41400.42400.106600.1657300 | Toilet dado work | 10d | 2027-09-02 | 2027-09-12 | 6717, 6730, 6731 |  | Zenith | 8715164 |
| 6734 | 36900.37000.37200.38400.39400.41400.42400.106600.1657400 | Toilet flooring work | 7d | 2027-09-12 | 2027-09-19 | 6718, 6733 |  | Zenith | 8715174 |
| 6735 | 36900.37000.37200.38400.39400.41400.42400.106600.1657500 | False Cieling panel fixing | 10d | 2027-09-19 | 2027-09-29 | 6719, 6734 |  | Zenith | 8715184 |
| 6736 | 36900.37000.37200.38400.39400.41400.42400.106600.1657600 | Living dinning flooring | 14d | 2027-09-19 | 2027-10-03 | 6720, 6734 |  | Zenith | 8715194 |
| 6737 | 36900.37000.37200.38400.39400.41400.42400.106600.1657700 | Putty primer coat | 12d | 2027-10-20 | 2027-10-31 | 6721, 6736 |  | Zenith | 8715204 |
| 6738 | 36900.37000.37200.38400.39400.41400.42400.106600.1657800 | Aluminium door-window fixing | 15d | 2028-01-03 | 2028-01-17 | 6722, 6732, 6736 |  | Zenith | 8715214 |
| 6739 | 36900.37000.37200.38400.39400.41400.42400.106600.1657900 | Door shutter fixing (Pre Hung) | 8d | 2027-12-16 | 2027-12-23 | 6723, 6737 |  | Zenith | 8715224 |
| 6740 | 36900.37000.37200.38400.39400.41400.42400.106600.1658000 | Electrical wiring work | 12d | 2027-12-24 | 2028-01-04 | 6724, 6739 |  | Zenith | 8715234 |
| 6741 | 36900.37000.37200.38400.39400.41400.42400.106600.1658100 | Painting 1st coat | 15d | 2028-03-25 | 2028-04-08 | 6725, 6740 |  | Zenith | 8715244 |

| ID | WBS | Task | Duration | Start | Finish | Predecessors | Constraint | Calendar | Unique_Task_ID |
| --- | --- | --- | --- | --- | --- | --- | --- | --- | --- |
| 6742 | 36900.37000.37200.38400.39400.41400.42400.106700 | **25th floor roof** | 226.75d | 2027-07-27 | 2028-04-23 |  | start no earlier than 2027-07-27 | Zenith | 8650854 |
| 6743 | 36900.37000.37200.38400.39400.41400.42400.106700.1658200 | Block Work | 10d | 2027-07-27 | 2027-08-06 | 6344, 6727 |  | Zenith | 8715254 |
| 6744 | 36900.37000.37200.38400.39400.41400.42400.106700.1658300 | Fire sprinkler pipe fixing | 6d | 2027-08-06 | 2027-08-12 | 6728, 6743 |  | Zenith | 8715264 |
| 6745 | 36900.37000.37200.38400.39400.41400.42400.106700.1658400 | Internal Plumbing Works | 10d | 2027-08-06 | 2027-08-16 | 6729, 6743 |  | Zenith | 8715274 |
| 6746 | 36900.37000.37200.38400.39400.41400.42400.106700.1658500 | Waterproofing | 14d | 2027-08-28 | 2027-09-11 | 6730, 6745 |  | Zenith | 8715284 |
| 6747 | 36900.37000.37200.38400.39400.41400.42400.106700.1658600 | Internal Plaster | 14d | 2027-09-02 | 2027-09-16 | 6731, 6745, 6746FF+5d |  | Zenith | 8715294 |
| 6748 | 36900.37000.37200.38400.39400.41400.42400.106700.1658700 | IPS flooring work | 10d | 2027-09-16 | 2027-09-26 | 6732, 6747 |  | Zenith | 8715304 |
| 6749 | 36900.37000.37200.38400.39400.41400.42400.106700.1658800 | Toilet dado work | 10d | 2027-09-16 | 2027-09-26 | 6733, 6746, 6747 |  | Zenith | 8715314 |
| 6750 | 36900.37000.37200.38400.39400.41400.42400.106700.1658900 | Toilet flooring work | 7d | 2027-09-26 | 2027-10-03 | 6734, 6749 |  | Zenith | 8715324 |
| 6751 | 36900.37000.37200.38400.39400.41400.42400.106700.1659000 | False Cieling panel fixing | 10d | 2027-10-03 | 2027-10-13 | 6735, 6750 |  | Zenith | 8715334 |
| 6752 | 36900.37000.37200.38400.39400.41400.42400.106700.1659100 | Living dinning flooring | 14d | 2027-10-03 | 2027-10-17 | 6736, 6750 |  | Zenith | 8715344 |
| 6753 | 36900.37000.37200.38400.39400.41400.42400.106700.1659200 | Putty primer coat | 12d | 2027-12-16 | 2027-12-27 | 6737, 6752 |  | Zenith | 8715354 |
| 6754 | 36900.37000.37200.38400.39400.41400.42400.106700.1659300 | Aluminium door-window fixing | 15d | 2028-01-18 | 2028-02-01 | 6738, 6748, 6752 |  | Zenith | 8715364 |
| 6755 | 36900.37000.37200.38400.39400.41400.42400.106700.1659400 | Door shutter fixing (Pre Hung) | 8d | 2027-12-28 | 2028-01-04 | 6739, 6753 |  | Zenith | 8715374 |
| 6756 | 36900.37000.37200.38400.39400.41400.42400.106700.1659500 | Electrical wiring work | 12d | 2028-01-05 | 2028-01-16 | 6740, 6755 |  | Zenith | 8715384 |
| 6757 | 36900.37000.37200.38400.39400.41400.42400.106700.1659600 | Painting 1st coat | 15d | 2028-04-09 | 2028-04-23 | 6741, 6756 |  | Zenith | 8715394 |
| 6758 | 36900.37000.37200.38400.39400.41400.42400.106800 | **26th floor roof** | 226.75d | 2027-08-11 | 2028-05-08 |  | start no earlier than 2027-08-11 | Zenith | 8650864 |
| 6759 | 36900.37000.37200.38400.39400.41400.42400.106800.1659700 | Block Work | 10d | 2027-08-11 | 2027-08-21 | 6345, 6743 |  | Zenith | 8715404 |
| 6760 | 36900.37000.37200.38400.39400.41400.42400.106800.1659800 | Fire sprinkler pipe fixing | 6d | 2027-08-21 | 2027-08-27 | 6744, 6759 |  | Zenith | 8715414 |
| 6761 | 36900.37000.37200.38400.39400.41400.42400.106800.1659900 | Internal Plumbing Works | 10d | 2027-08-21 | 2027-08-31 | 6745, 6759 |  | Zenith | 8715424 |
| 6762 | 36900.37000.37200.38400.39400.41400.42400.106800.1660000 | Waterproofing | 14d | 2027-09-11 | 2027-09-25 | 6746, 6761 |  | Zenith | 8715434 |
| 6763 | 36900.37000.37200.38400.39400.41400.42400.106800.1660100 | Internal Plaster | 14d | 2027-09-16 | 2027-09-30 | 6747, 6761, 6762FF+5d |  | Zenith | 8715444 |
| 6764 | 36900.37000.37200.38400.39400.41400.42400.106800.1660200 | IPS flooring work | 10d | 2027-09-30 | 2027-10-10 | 6748, 6763 |  | Zenith | 8715454 |
| 6765 | 36900.37000.37200.38400.39400.41400.42400.106800.1660300 | Toilet dado work | 10d | 2027-09-30 | 2027-10-10 | 6749, 6762, 6763 |  | Zenith | 8715464 |
| 6766 | 36900.37000.37200.38400.39400.41400.42400.106800.1660400 | Toilet flooring work | 7d | 2027-10-10 | 2027-10-17 | 6750, 6765 |  | Zenith | 8715474 |
| 6767 | 36900.37000.37200.38400.39400.41400.42400.106800.1660500 | False Cieling panel fixing | 10d | 2027-10-17 | 2027-10-27 | 6751, 6766 |  | Zenith | 8715484 |
| 6768 | 36900.37000.37200.38400.39400.41400.42400.106800.1660600 | Living dinning flooring | 14d | 2027-10-17 | 2027-10-31 | 6752, 6766 |  | Zenith | 8715494 |
| 6769 | 36900.37000.37200.38400.39400.41400.42400.106800.1660700 | Putty primer coat | 12d | 2027-12-28 | 2028-01-08 | 6753, 6768 |  | Zenith | 8715504 |
| 6770 | 36900.37000.37200.38400.39400.41400.42400.106800.1660800 | Aluminium door-window fixing | 15d | 2028-02-02 | 2028-02-16 | 6754, 6764, 6768 |  | Zenith | 8715514 |
| 6771 | 36900.37000.37200.38400.39400.41400.42400.106800.1660900 | Door shutter fixing (Pre Hung) | 8d | 2028-01-09 | 2028-01-16 | 6755, 6769 |  | Zenith | 8715524 |
| 6772 | 36900.37000.37200.38400.39400.41400.42400.106800.1661000 | Electrical wiring work | 12d | 2028-01-17 | 2028-01-28 | 6756, 6771 |  | Zenith | 8715534 |
| 6773 | 36900.37000.37200.38400.39400.41400.42400.106800.1661100 | Painting 1st coat | 15d | 2028-04-24 | 2028-05-08 | 6757, 6772 |  | Zenith | 8715544 |

| ID | WBS | Task | Duration | Start | Finish | Predecessors | Constraint | Calendar | Unique_Task_ID |
| --- | --- | --- | --- | --- | --- | --- | --- | --- | --- |
| 6774 | 36900.37000.37200.38400.39400.41400.42400.106900 | **27th floor roof** | 226.75d | 2027-08-26 | 2028-05-23 |  | start no earlier than 2027-08-26 | Zenith | 8650874 |
| 6775 | 36900.37000.37200.38400.39400.41400.42400.106900.1661200 | Block Work | 10d | 2027-08-26 | 2027-09-05 | 6346, 6759 |  | Zenith | 8715554 |
| 6776 | 36900.37000.37200.38400.39400.41400.42400.106900.1661300 | Fire sprinkler pipe fixing | 6d | 2027-09-05 | 2027-09-11 | 6760, 6775 |  | Zenith | 8715564 |
| 6777 | 36900.37000.37200.38400.39400.41400.42400.106900.1661400 | Internal Plumbing Works | 10d | 2027-09-05 | 2027-09-15 | 6761, 6775 |  | Zenith | 8715574 |
| 6778 | 36900.37000.37200.38400.39400.41400.42400.106900.1661500 | Waterproofing | 14d | 2027-09-25 | 2027-10-09 | 6762, 6777 |  | Zenith | 8715584 |
| 6779 | 36900.37000.37200.38400.39400.41400.42400.106900.1661600 | Internal Plaster | 14d | 2027-09-30 | 2027-10-14 | 6763, 6777, 6778FF+5d |  | Zenith | 8715594 |
| 6780 | 36900.37000.37200.38400.39400.41400.42400.106900.1661700 | IPS flooring work | 10d | 2027-10-14 | 2027-10-24 | 6764, 6779 |  | Zenith | 8715604 |
| 6781 | 36900.37000.37200.38400.39400.41400.42400.106900.1661800 | Toilet dado work | 10d | 2027-10-14 | 2027-10-24 | 6765, 6778, 6779 |  | Zenith | 8715614 |
| 6782 | 36900.37000.37200.38400.39400.41400.42400.106900.1661900 | Toilet flooring work | 7d | 2027-10-24 | 2027-10-31 | 6766, 6781 |  | Zenith | 8715624 |
| 6783 | 36900.37000.37200.38400.39400.41400.42400.106900.1662000 | False Cieling panel fixing | 10d | 2027-10-31 | 2027-12-25 | 6767, 6782 |  | Zenith | 8715634 |
| 6784 | 36900.37000.37200.38400.39400.41400.42400.106900.1662100 | Living dinning flooring | 14d | 2027-10-31 | 2027-12-29 | 6768, 6782 |  | Zenith | 8715644 |
| 6785 | 36900.37000.37200.38400.39400.41400.42400.106900.1662200 | Putty primer coat | 12d | 2028-01-09 | 2028-01-20 | 6769, 6784 |  | Zenith | 8715654 |
| 6786 | 36900.37000.37200.38400.39400.41400.42400.106900.1662300 | Aluminium door-window fixing | 15d | 2028-02-17 | 2028-03-02 | 6770, 6780, 6784 |  | Zenith | 8715664 |
| 6787 | 36900.37000.37200.38400.39400.41400.42400.106900.1662400 | Door shutter fixing (Pre Hung) | 8d | 2028-01-21 | 2028-01-28 | 6771, 6785 |  | Zenith | 8715674 |
| 6788 | 36900.37000.37200.38400.39400.41400.42400.106900.1662500 | Electrical wiring work | 12d | 2028-01-29 | 2028-02-09 | 6772, 6787 |  | Zenith | 8715684 |
| 6789 | 36900.37000.37200.38400.39400.41400.42400.106900.1662600 | Painting 1st coat | 15d | 2028-05-09 | 2028-05-23 | 6773, 6788 |  | Zenith | 8715694 |
| 6790 | 36900.37000.37200.38400.39400.41400.42400.107000 | **28th floor roof** | 226.75d | 2027-09-10 | 2028-06-07 |  | start no earlier than 2027-09-10 | Zenith | 8650884 |
| 6791 | 36900.37000.37200.38400.39400.41400.42400.107000.1662700 | Block Work | 10d | 2027-09-10 | 2027-09-20 | 6347, 6775 |  | Zenith | 8715704 |
| 6792 | 36900.37000.37200.38400.39400.41400.42400.107000.1662800 | Fire sprinkler pipe fixing | 6d | 2027-09-20 | 2027-09-26 | 6776, 6791 |  | Zenith | 8715714 |
| 6793 | 36900.37000.37200.38400.39400.41400.42400.107000.1662900 | Internal Plumbing Works | 10d | 2027-09-20 | 2027-09-30 | 6777, 6791 |  | Zenith | 8715724 |
| 6794 | 36900.37000.37200.38400.39400.41400.42400.107000.1663000 | Waterproofing | 14d | 2027-10-09 | 2027-10-23 | 6778, 6793 |  | Zenith | 8715734 |
| 6795 | 36900.37000.37200.38400.39400.41400.42400.107000.1663100 | Internal Plaster | 14d | 2027-10-14 | 2027-10-28 | 6779, 6793, 6794FF+5d |  | Zenith | 8715744 |
| 6796 | 36900.37000.37200.38400.39400.41400.42400.107000.1663200 | IPS flooring work | 10d | 2027-10-28 | 2027-12-22 | 6780, 6795 |  | Zenith | 8715754 |
| 6797 | 36900.37000.37200.38400.39400.41400.42400.107000.1663300 | Toilet dado work | 10d | 2027-10-28 | 2027-12-22 | 6781, 6794, 6795 |  | Zenith | 8715764 |
| 6798 | 36900.37000.37200.38400.39400.41400.42400.107000.1663400 | Toilet flooring work | 7d | 2027-12-22 | 2027-12-29 | 6782, 6797 |  | Zenith | 8715774 |
| 6799 | 36900.37000.37200.38400.39400.41400.42400.107000.1663500 | False Cieling panel fixing | 10d | 2027-12-29 | 2028-01-08 | 6783, 6798 |  | Zenith | 8715784 |
| 6800 | 36900.37000.37200.38400.39400.41400.42400.107000.1663600 | Living dinning flooring | 14d | 2027-12-29 | 2028-01-12 | 6784, 6798 |  | Zenith | 8715794 |
| 6801 | 36900.37000.37200.38400.39400.41400.42400.107000.1663700 | Putty primer coat | 12d | 2028-01-21 | 2028-02-01 | 6785, 6800 |  | Zenith | 8715804 |
| 6802 | 36900.37000.37200.38400.39400.41400.42400.107000.1663800 | Aluminium door-window fixing | 15d | 2028-03-03 | 2028-03-17 | 6786, 6796, 6800 |  | Zenith | 8715814 |
| 6803 | 36900.37000.37200.38400.39400.41400.42400.107000.1663900 | Door shutter fixing (Pre Hung) | 8d | 2028-02-02 | 2028-02-09 | 6787, 6801 |  | Zenith | 8715824 |
| 6804 | 36900.37000.37200.38400.39400.41400.42400.107000.1664000 | Electrical wiring work | 12d | 2028-02-10 | 2028-02-21 | 6788, 6803 |  | Zenith | 8715834 |
| 6805 | 36900.37000.37200.38400.39400.41400.42400.107000.1664100 | Painting 1st coat | 15d | 2028-05-24 | 2028-06-07 | 6789, 6804 |  | Zenith | 8715844 |

| ID | WBS | Task | Duration | Start | Finish | Predecessors | Constraint | Calendar | Unique_Task_ID |
| --- | --- | --- | --- | --- | --- | --- | --- | --- | --- |
| 6806 | 36900.37000.37200.38400.39400.41400.42400.107100 | **29th floor roof** | 226.75d | 2027-09-25 | 2028-06-22 |  | start no earlier than 2027-09-25 | Zenith | 8650894 |
| 6807 | 36900.37000.37200.38400.39400.41400.42400.107100.1664200 | Block Work | 10d | 2027-09-25 | 2027-10-05 | 6348, 6791 |  | Zenith | 8715854 |
| 6808 | 36900.37000.37200.38400.39400.41400.42400.107100.1664300 | Fire sprinkler pipe fixing | 6d | 2027-10-05 | 2027-10-11 | 6792, 6807 |  | Zenith | 8715864 |
| 6809 | 36900.37000.37200.38400.39400.41400.42400.107100.1664400 | Internal Plumbing Works | 10d | 2027-10-05 | 2027-10-15 | 6793, 6807 |  | Zenith | 8715874 |
| 6810 | 36900.37000.37200.38400.39400.41400.42400.107100.1664500 | Waterproofing | 14d | 2027-10-23 | 2027-12-21 | 6794, 6809 |  | Zenith | 8715884 |
| 6811 | 36900.37000.37200.38400.39400.41400.42400.107100.1664600 | Internal Plaster | 14d | 2027-10-28 | 2027-12-26 | 6795, 6809, 6810FF+5d |  | Zenith | 8715894 |
| 6812 | 36900.37000.37200.38400.39400.41400.42400.107100.1664700 | IPS flooring work | 10d | 2027-12-26 | 2028-01-05 | 6796, 6811 |  | Zenith | 8715904 |
| 6813 | 36900.37000.37200.38400.39400.41400.42400.107100.1664800 | Toilet dado work | 10d | 2027-12-26 | 2028-01-05 | 6797, 6810, 6811 |  | Zenith | 8715914 |
| 6814 | 36900.37000.37200.38400.39400.41400.42400.107100.1664900 | Toilet flooring work | 7d | 2028-01-05 | 2028-01-12 | 6798, 6813 |  | Zenith | 8715924 |
| 6815 | 36900.37000.37200.38400.39400.41400.42400.107100.1665000 | False Cieling panel fixing | 10d | 2028-01-12 | 2028-01-22 | 6799, 6814 |  | Zenith | 8715934 |
| 6816 | 36900.37000.37200.38400.39400.41400.42400.107100.1665100 | Living dinning flooring | 14d | 2028-01-12 | 2028-01-26 | 6800, 6814 |  | Zenith | 8715944 |
| 6817 | 36900.37000.37200.38400.39400.41400.42400.107100.1665200 | Putty primer coat | 12d | 2028-02-02 | 2028-02-13 | 6801, 6816 |  | Zenith | 8715954 |
| 6818 | 36900.37000.37200.38400.39400.41400.42400.107100.1665300 | Aluminium door-window fixing | 15d | 2028-03-18 | 2028-04-01 | 6802, 6812, 6816 |  | Zenith | 8715964 |
| 6819 | 36900.37000.37200.38400.39400.41400.42400.107100.1665400 | Door shutter fixing (Pre Hung) | 8d | 2028-02-14 | 2028-02-21 | 6803, 6817 |  | Zenith | 8715974 |
| 6820 | 36900.37000.37200.38400.39400.41400.42400.107100.1665500 | Electrical wiring work | 12d | 2028-02-22 | 2028-03-04 | 6804, 6819 |  | Zenith | 8715984 |
| 6821 | 36900.37000.37200.38400.39400.41400.42400.107100.1665600 | Painting 1st coat | 15d | 2028-06-08 | 2028-06-22 | 6805, 6820 |  | Zenith | 8715994 |
| 6822 | 36900.37000.37200.38400.39400.41400.42400.107200 | **30th floor roof** | 201.75d | 2027-12-19 | 2028-07-07 |  | start no earlier than 2027-12-19 | Zenith | 8650904 |
| 6823 | 36900.37000.37200.38400.39400.41400.42400.107200.1665700 | Block Work | 10d | 2027-12-19 | 2027-12-29 | 6349, 6807 |  | Zenith | 8716004 |
| 6824 | 36900.37000.37200.38400.39400.41400.42400.107200.1665800 | Fire sprinkler pipe fixing | 6d | 2027-12-29 | 2028-01-04 | 6808, 6823 |  | Zenith | 8716014 |
| 6825 | 36900.37000.37200.38400.39400.41400.42400.107200.1665900 | Internal Plumbing Works | 10d | 2027-12-29 | 2028-01-08 | 6809, 6823 |  | Zenith | 8716024 |
| 6826 | 36900.37000.37200.38400.39400.41400.42400.107200.1666000 | Waterproofing | 14d | 2028-01-08 | 2028-01-22 | 6810, 6825 |  | Zenith | 8716034 |
| 6827 | 36900.37000.37200.38400.39400.41400.42400.107200.1666100 | Internal Plaster | 14d | 2028-01-13 | 2028-01-27 | 6811, 6825, 6826FF+5d |  | Zenith | 8716044 |
| 6828 | 36900.37000.37200.38400.39400.41400.42400.107200.1666200 | IPS flooring work | 10d | 2028-01-27 | 2028-02-06 | 6812, 6827 |  | Zenith | 8716054 |
| 6829 | 36900.37000.37200.38400.39400.41400.42400.107200.1666300 | Toilet dado work | 10d | 2028-01-27 | 2028-02-06 | 6813, 6826, 6827 |  | Zenith | 8716064 |
| 6830 | 36900.37000.37200.38400.39400.41400.42400.107200.1666400 | Toilet flooring work | 7d | 2028-02-06 | 2028-02-13 | 6814, 6829 |  | Zenith | 8716074 |
| 6831 | 36900.37000.37200.38400.39400.41400.42400.107200.1666500 | False Cieling panel fixing | 10d | 2028-02-13 | 2028-02-23 | 6815, 6830 |  | Zenith | 8716084 |
| 6832 | 36900.37000.37200.38400.39400.41400.42400.107200.1666600 | Living dinning flooring | 14d | 2028-02-13 | 2028-02-27 | 6816, 6830 |  | Zenith | 8716094 |
| 6833 | 36900.37000.37200.38400.39400.41400.42400.107200.1666700 | Putty primer coat | 12d | 2028-02-27 | 2028-03-10 | 6817, 6832 |  | Zenith | 8716104 |
| 6834 | 36900.37000.37200.38400.39400.41400.42400.107200.1666800 | Aluminium door-window fixing | 15d | 2028-04-02 | 2028-04-16 | 6818, 6828, 6832 |  | Zenith | 8716114 |
| 6835 | 36900.37000.37200.38400.39400.41400.42400.107200.1666900 | Door shutter fixing (Pre Hung) | 8d | 2028-03-10 | 2028-03-18 | 6819, 6833 |  | Zenith | 8716124 |
| 6836 | 36900.37000.37200.38400.39400.41400.42400.107200.1667000 | Electrical wiring work | 12d | 2028-03-18 | 2028-03-30 | 6820, 6835 |  | Zenith | 8716134 |
| 6837 | 36900.37000.37200.38400.39400.41400.42400.107200.1667100 | Painting 1st coat | 15d | 2028-06-23 | 2028-07-07 | 6821, 6836 |  | Zenith | 8716144 |

| ID | WBS | Task | Duration | Start | Finish | Predecessors | Constraint | Calendar | Unique_Task_ID |
| --- | --- | --- | --- | --- | --- | --- | --- | --- | --- |
| 6838 | 36900.37000.37200.38400.39400.41400.42400.107300 | **31st floor roof** | 206.75d | 2027-12-29 | 2028-07-22 |  | start no earlier than 2027-12-29 | Zenith | 8650914 |
| 6839 | 36900.37000.37200.38400.39400.41400.42400.107300.1667200 | Block Work | 10d | 2027-12-29 | 2028-01-08 | 6350, 6823 |  | Zenith | 8716154 |
| 6840 | 36900.37000.37200.38400.39400.41400.42400.107300.1667300 | Fire sprinkler pipe fixing | 6d | 2028-01-08 | 2028-01-14 | 6824, 6839 |  | Zenith | 8716164 |
| 6841 | 36900.37000.37200.38400.39400.41400.42400.107300.1667400 | Internal Plumbing Works | 10d | 2028-01-08 | 2028-01-18 | 6825, 6839 |  | Zenith | 8716174 |
| 6842 | 36900.37000.37200.38400.39400.41400.42400.107300.1667500 | Waterproofing | 14d | 2028-01-22 | 2028-02-05 | 6826, 6841 |  | Zenith | 8716184 |
| 6843 | 36900.37000.37200.38400.39400.41400.42400.107300.1667600 | Internal Plaster | 14d | 2028-01-27 | 2028-02-10 | 6827, 6841, 6842FF+5d |  | Zenith | 8716194 |
| 6844 | 36900.37000.37200.38400.39400.41400.42400.107300.1667700 | IPS flooring work | 10d | 2028-02-10 | 2028-02-20 | 6828, 6843 |  | Zenith | 8716204 |
| 6845 | 36900.37000.37200.38400.39400.41400.42400.107300.1667800 | Toilet dado work | 10d | 2028-02-10 | 2028-02-20 | 6829, 6842, 6843 |  | Zenith | 8716214 |
| 6846 | 36900.37000.37200.38400.39400.41400.42400.107300.1667900 | Toilet flooring work | 7d | 2028-02-20 | 2028-02-27 | 6830, 6845 |  | Zenith | 8716224 |
| 6847 | 36900.37000.37200.38400.39400.41400.42400.107300.1668000 | False Cieling panel fixing | 10d | 2028-02-27 | 2028-03-08 | 6831, 6846 |  | Zenith | 8716234 |
| 6848 | 36900.37000.37200.38400.39400.41400.42400.107300.1668100 | Living dinning flooring | 14d | 2028-02-27 | 2028-03-12 | 6832, 6846 |  | Zenith | 8716244 |
| 6849 | 36900.37000.37200.38400.39400.41400.42400.107300.1668200 | Putty primer coat | 12d | 2028-03-12 | 2028-03-24 | 6833, 6848 |  | Zenith | 8716254 |
| 6850 | 36900.37000.37200.38400.39400.41400.42400.107300.1668300 | Aluminium door-window fixing | 15d | 2028-04-17 | 2028-05-01 | 6834, 6844, 6848 |  | Zenith | 8716264 |
| 6851 | 36900.37000.37200.38400.39400.41400.42400.107300.1668400 | Door shutter fixing (Pre Hung) | 8d | 2028-03-24 | 2028-04-01 | 6835, 6849 |  | Zenith | 8716274 |
| 6852 | 36900.37000.37200.38400.39400.41400.42400.107300.1668500 | Electrical wiring work | 12d | 2028-04-01 | 2028-04-13 | 6836, 6851 |  | Zenith | 8716284 |
| 6853 | 36900.37000.37200.38400.39400.41400.42400.107300.1668600 | Painting 1st coat | 15d | 2028-07-08 | 2028-07-22 | 6837, 6852 |  | Zenith | 8716294 |
| 6854 | 36900.37000.37200.38400.39400.41400.42400.107400 | **32nd floor roof** | 211.75d | 2028-01-08 | 2028-08-06 |  | start no earlier than 2028-01-08 | Zenith | 8650924 |
| 6855 | 36900.37000.37200.38400.39400.41400.42400.107400.1668700 | Block Work | 10d | 2028-01-08 | 2028-01-18 | 6351, 6839 |  | Zenith | 8716304 |
| 6856 | 36900.37000.37200.38400.39400.41400.42400.107400.1668800 | Fire sprinkler pipe fixing | 6d | 2028-01-18 | 2028-01-24 | 6840, 6855 |  | Zenith | 8716314 |
| 6857 | 36900.37000.37200.38400.39400.41400.42400.107400.1668900 | Internal Plumbing Works | 10d | 2028-01-18 | 2028-01-28 | 6841, 6855 |  | Zenith | 8716324 |
| 6858 | 36900.37000.37200.38400.39400.41400.42400.107400.1669000 | Waterproofing | 14d | 2028-02-05 | 2028-02-19 | 6842, 6857 |  | Zenith | 8716334 |
| 6859 | 36900.37000.37200.38400.39400.41400.42400.107400.1669100 | Internal Plaster | 14d | 2028-02-10 | 2028-02-24 | 6843, 6857, 6858FF+5d |  | Zenith | 8716344 |
| 6860 | 36900.37000.37200.38400.39400.41400.42400.107400.1669200 | IPS flooring work | 10d | 2028-02-24 | 2028-03-05 | 6844, 6859 |  | Zenith | 8716354 |
| 6861 | 36900.37000.37200.38400.39400.41400.42400.107400.1669300 | Toilet dado work | 10d | 2028-02-24 | 2028-03-05 | 6845, 6858, 6859 |  | Zenith | 8716364 |
| 6862 | 36900.37000.37200.38400.39400.41400.42400.107400.1669400 | Toilet flooring work | 7d | 2028-03-05 | 2028-03-12 | 6846, 6861 |  | Zenith | 8716374 |
| 6863 | 36900.37000.37200.38400.39400.41400.42400.107400.1669500 | False Cieling panel fixing | 10d | 2028-03-12 | 2028-03-22 | 6847, 6862 |  | Zenith | 8716384 |
| 6864 | 36900.37000.37200.38400.39400.41400.42400.107400.1669600 | Living dinning flooring | 14d | 2028-03-12 | 2028-03-26 | 6848, 6862 |  | Zenith | 8716394 |
| 6865 | 36900.37000.37200.38400.39400.41400.42400.107400.1669700 | Putty primer coat | 12d | 2028-03-26 | 2028-04-07 | 6849, 6864 |  | Zenith | 8716404 |
| 6866 | 36900.37000.37200.38400.39400.41400.42400.107400.1669800 | Aluminium door-window fixing | 15d | 2028-05-02 | 2028-05-16 | 6850, 6860, 6864 |  | Zenith | 8716414 |
| 6867 | 36900.37000.37200.38400.39400.41400.42400.107400.1669900 | Door shutter fixing (Pre Hung) | 8d | 2028-04-07 | 2028-04-15 | 6851, 6865 |  | Zenith | 8716424 |
| 6868 | 36900.37000.37200.38400.39400.41400.42400.107400.1670000 | Electrical wiring work | 12d | 2028-04-15 | 2028-04-27 | 6852, 6867 |  | Zenith | 8716434 |
| 6869 | 36900.37000.37200.38400.39400.41400.42400.107400.1670100 | Painting 1st coat | 15d | 2028-07-23 | 2028-08-06 | 6853, 6868 |  | Zenith | 8716444 |

| ID | WBS | Task | Duration | Start | Finish | Predecessors | Constraint | Calendar | Unique_Task_ID |
| --- | --- | --- | --- | --- | --- | --- | --- | --- | --- |
| 6870 | 36900.37000.37200.38400.39400.41400.42400.107500 | **33rd floor roof** | 216.75d | 2028-01-18 | 2028-08-21 |  | start no earlier than 2028-01-18 | Zenith | 8650934 |
| 6871 | 36900.37000.37200.38400.39400.41400.42400.107500.1670200 | Block Work | 10d | 2028-01-18 | 2028-01-28 | 6352, 6855 |  | Zenith | 8716454 |
| 6872 | 36900.37000.37200.38400.39400.41400.42400.107500.1670300 | Fire sprinkler pipe fixing | 6d | 2028-01-28 | 2028-02-03 | 6856, 6871 |  | Zenith | 8716464 |
| 6873 | 36900.37000.37200.38400.39400.41400.42400.107500.1670400 | Internal Plumbing Works | 10d | 2028-01-28 | 2028-02-07 | 6857, 6871 |  | Zenith | 8716474 |
| 6874 | 36900.37000.37200.38400.39400.41400.42400.107500.1670500 | Waterproofing | 14d | 2028-02-19 | 2028-03-04 | 6858, 6873 |  | Zenith | 8716484 |
| 6875 | 36900.37000.37200.38400.39400.41400.42400.107500.1670600 | Internal Plaster | 14d | 2028-02-24 | 2028-03-09 | 6859, 6873, 6874FF+5d |  | Zenith | 8716494 |
| 6876 | 36900.37000.37200.38400.39400.41400.42400.107500.1670700 | IPS flooring work | 10d | 2028-03-09 | 2028-03-19 | 6860, 6875 |  | Zenith | 8716504 |
| 6877 | 36900.37000.37200.38400.39400.41400.42400.107500.1670800 | Toilet dado work | 10d | 2028-03-09 | 2028-03-19 | 6861, 6874, 6875 |  | Zenith | 8716514 |
| 6878 | 36900.37000.37200.38400.39400.41400.42400.107500.1670900 | Toilet flooring work | 7d | 2028-03-19 | 2028-03-26 | 6862, 6877 |  | Zenith | 8716524 |
| 6879 | 36900.37000.37200.38400.39400.41400.42400.107500.1671000 | False Cieling panel fixing | 10d | 2028-03-26 | 2028-04-05 | 6863, 6878 |  | Zenith | 8716534 |
| 6880 | 36900.37000.37200.38400.39400.41400.42400.107500.1671100 | Living dinning flooring | 14d | 2028-03-26 | 2028-04-09 | 6864, 6878 |  | Zenith | 8716544 |
| 6881 | 36900.37000.37200.38400.39400.41400.42400.107500.1671200 | Putty primer coat | 12d | 2028-04-09 | 2028-04-21 | 6865, 6880 |  | Zenith | 8716554 |
| 6882 | 36900.37000.37200.38400.39400.41400.42400.107500.1671300 | Aluminium door-window fixing | 15d | 2028-05-17 | 2028-05-31 | 6866, 6876, 6880 |  | Zenith | 8716564 |
| 6883 | 36900.37000.37200.38400.39400.41400.42400.107500.1671400 | Door shutter fixing (Pre Hung) | 8d | 2028-04-21 | 2028-04-29 | 6867, 6881 |  | Zenith | 8716574 |
| 6884 | 36900.37000.37200.38400.39400.41400.42400.107500.1671500 | Electrical wiring work | 12d | 2028-04-29 | 2028-05-11 | 6868, 6883 |  | Zenith | 8716584 |
| 6885 | 36900.37000.37200.38400.39400.41400.42400.107500.1671600 | Painting 1st coat | 15d | 2028-08-07 | 2028-08-21 | 6869, 6884 |  | Zenith | 8716594 |
| 6886 | 36900.37000.37200.38400.39400.41400.42400.61900 | **34th Floor roof** | 266.75d | 2028-01-28 | 2028-10-20 |  | start no earlier than 2028-01-28 | Zenith | 8648324 |
| 6887 | 36900.37000.37200.38400.39400.41400.42400.61900.1671700 | Block Work | 10d | 2028-01-28 | 2028-02-07 | 6353, 6871 |  | Zenith | 8716604 |
| 6888 | 36900.37000.37200.38400.39400.41400.42400.61900.1671800 | Fire sprinkler pipe fixing | 6d | 2028-02-07 | 2028-02-13 | 6872, 6887 |  | Zenith | 8716614 |
| 6889 | 36900.37000.37200.38400.39400.41400.42400.61900.1671900 | Internal Plumbing Works | 10d | 2028-02-07 | 2028-02-17 | 6873, 6887 |  | Zenith | 8716624 |
| 6890 | 36900.37000.37200.38400.39400.41400.42400.61900.1672000 | Waterproofing | 14d | 2028-03-04 | 2028-03-18 | 6874, 6889 |  | Zenith | 8716634 |
| 6891 | 36900.37000.37200.38400.39400.41400.42400.61900.1672100 | Internal Plaster | 14d | 2028-03-09 | 2028-03-23 | 6875, 6889, 6890FF+5d |  | Zenith | 8716644 |
| 6892 | 36900.37000.37200.38400.39400.41400.42400.61900.1672200 | IPS flooring work | 10d | 2028-03-23 | 2028-04-02 | 6876, 6890, 6891 |  | Zenith | 8716654 |
| 6893 | 36900.37000.37200.38400.39400.41400.42400.61900.1672300 | Toilet dado work | 10d | 2028-04-02 | 2028-04-12 | 6877, 6892 |  | Zenith | 8716664 |
| 6894 | 36900.37000.37200.38400.39400.41400.42400.61900.1672400 | Toilet flooring work | 7d | 2028-04-12 | 2028-04-19 | 6878, 6893 |  | Zenith | 8716674 |
| 6895 | 36900.37000.37200.38400.39400.41400.42400.61900.1672500 | False ceiling | 10d | 2028-04-19 | 2028-04-29 | 6879, 6894 |  | Zenith | 8716684 |
| 6896 | 36900.37000.37200.38400.39400.41400.42400.61900.1672600 | Living dinning flooring | 14d | 2028-04-19 | 2028-05-03 | 6880, 6894 |  | Zenith | 8716694 |
| 6897 | 36900.37000.37200.38400.39400.41400.42400.61900.1672700 | Putty Primer coat | 12d | 2028-05-03 | 2028-05-15 | 6881, 6888, 6895, 6896 |  | Zenith | 8716704 |
| 6898 | 36900.37000.37200.38400.39400.41400.42400.61900.1672800 | Aluminium door-window fixing | 15d | 2028-06-01 | 2028-06-15 | 6882, 6892, 6896 |  | Zenith | 8716714 |
| 6899 | 36900.37000.37200.38400.39400.41400.42400.61900.1672900 | Door shutter fixing (Pre Hung) | 8d | 2028-05-15 | 2028-05-23 | 6883, 6897 |  | Zenith | 8716724 |
| 6900 | 36900.37000.37200.38400.39400.41400.42400.61900.1673000 | Electrical wiring work | 12d | 2028-05-23 | 2028-06-04 | 6884, 6899 |  | Zenith | 8716734 |
| 6901 | 36900.37000.37200.38400.39400.41400.42400.61900.1673100 | Painting 1st coat | 15d | 2028-08-22 | 2028-09-05 | 6885, 6900 |  | Zenith | 8716744 |
| 6902 | 36900.37000.37200.38400.39400.41400.42400.61900.1673200 | Misc. Works | 45d | 2028-09-06 | 2028-10-20 | 6901 |  | Zenith | 8716754 |

| ID | WBS | Task | Duration | Start | Finish | Predecessors | Constraint | Calendar | Unique_Task_ID |
| --- | --- | --- | --- | --- | --- | --- | --- | --- | --- |
| 6903 | 36900.37000.37200.38400.39400.41400.223900 | **Terrace Finishing** | 116d | 2027-12-18 | 2028-04-11 |  | start no earlier than 2027-12-18 | Zenith | 8656814 |
| 6904 | 36900.37000.37200.38400.39400.41400.223900.1040300 | Terrace waterproofing | 40d | 2027-12-18 | 2028-01-26 | 6318FS+2d |  | Zenith | 8680094 |
| 6905 | 36900.37000.37200.38400.39400.41400.223900.1040400 | Terrace finishing | 75d | 2028-01-28 | 2028-04-11 | 6904FS+1d |  | Zenith | 8680084 |
| 6906 | 36900.37000.37200.38400.39400.41400.48800 | **Balcony Railing** | 523.25d | 2026-09-18 | 2028-05-23 |  | start no earlier than 2026-09-18 | Zenith | 8648204 |
| 6907 | 36900.37000.37200.38400.39400.41400.48800.1040500 | 1st Floor | 10d | 2026-09-18 | 2026-09-27 | 6384FF |  | Zenith | 8680074 |
| 6908 | 36900.37000.37200.38400.39400.41400.48800.1040600 | 2nd Floor | 10d | 2026-10-29 | 2026-12-23 | 6907, 6400 |  | Zenith | 8680064 |
| 6909 | 36900.37000.37200.38400.39400.41400.48800.1040700 | 3rd Floor | 10d | 2026-12-27 | 2027-01-06 | 6908, 6416 |  | Zenith | 8680054 |
| 6910 | 36900.37000.37200.38400.39400.41400.48800.1040800 | 4th Floor | 10d | 2027-01-10 | 2027-01-20 | 6909, 6432 |  | Zenith | 8680044 |
| 6911 | 36900.37000.37200.38400.39400.41400.48800.1040900 | 5th Floor | 10d | 2027-01-24 | 2027-02-03 | 6910, 6448 |  | Zenith | 8680034 |
| 6912 | 36900.37000.37200.38400.39400.41400.48800.1041000 | 6th Floor | 10d | 2027-02-07 | 2027-02-17 | 6911, 6464 |  | Zenith | 8680024 |
| 6913 | 36900.37000.37200.38400.39400.41400.48800.1041100 | 7th Floor | 10d | 2027-02-21 | 2027-03-03 | 6912, 6480 |  | Zenith | 8680014 |
| 6914 | 36900.37000.37200.38400.39400.41400.48800.1041200 | 8th Floor | 10d | 2027-03-07 | 2027-03-17 | 6913, 6496 |  | Zenith | 8680004 |
| 6915 | 36900.37000.37200.38400.39400.41400.48800.1041300 | 9th Floor | 10d | 2027-03-21 | 2027-03-31 | 6914, 6512 |  | Zenith | 8679994 |
| 6916 | 36900.37000.37200.38400.39400.41400.48800.1041400 | 10th Floor | 10d | 2027-04-04 | 2027-04-14 | 6915, 6528 |  | Zenith | 8679984 |
| 6917 | 36900.37000.37200.38400.39400.41400.48800.1041500 | 11th Floor | 10d | 2027-04-18 | 2027-04-28 | 6916, 6544 |  | Zenith | 8679974 |
| 6918 | 36900.37000.37200.38400.39400.41400.48800.1041600 | 12th Floor | 10d | 2027-05-02 | 2027-05-12 | 6917, 6560 |  | Zenith | 8679964 |
| 6919 | 36900.37000.37200.38400.39400.41400.48800.1041700 | 13th Floor | 10d | 2027-05-16 | 2027-05-26 | 6918, 6576 |  | Zenith | 8679954 |
| 6920 | 36900.37000.37200.38400.39400.41400.48800.1041800 | 14th Floor | 10d | 2027-05-30 | 2027-06-09 | 6919, 6592 |  | Zenith | 8679944 |
| 6921 | 36900.37000.37200.38400.39400.41400.48800.1041900 | 15th Floor | 10d | 2027-06-13 | 2027-06-23 | 6920, 6608 |  | Zenith | 8679934 |
| 6922 | 36900.37000.37200.38400.39400.41400.48800.1042000 | 16th Floor | 10d | 2027-06-27 | 2027-07-07 | 6921, 6624 |  | Zenith | 8679924 |
| 6923 | 36900.37000.37200.38400.39400.41400.48800.1042100 | 17th Floor | 10d | 2027-07-11 | 2027-07-21 | 6922, 6640 |  | Zenith | 8679914 |
| 6924 | 36900.37000.37200.38400.39400.41400.48800.1042200 | 18th Floor | 10d | 2027-07-25 | 2027-08-04 | 6923, 6656 |  | Zenith | 8679904 |
| 6925 | 36900.37000.37200.38400.39400.41400.48800.1042300 | 19th Floor | 10d | 2027-08-08 | 2027-08-18 | 6924, 6672 |  | Zenith | 8679894 |
| 6926 | 36900.37000.37200.38400.39400.41400.48800.1042400 | 20th Floor | 10d | 2027-08-22 | 2027-09-01 | 6925, 6688 |  | Zenith | 8679884 |
| 6927 | 36900.37000.37200.38400.39400.41400.48800.1042500 | 21st Floor | 10d | 2027-09-05 | 2027-09-15 | 6926, 6704 |  | Zenith | 8679874 |
| 6928 | 36900.37000.37200.38400.39400.41400.48800.1042600 | 22nd Floor | 10d | 2027-09-19 | 2027-09-29 | 6927, 6720 |  | Zenith | 8679864 |
| 6929 | 36900.37000.37200.38400.39400.41400.48800.1042700 | 23rd Floor | 10d | 2027-10-03 | 2027-10-13 | 6928, 6736 |  | Zenith | 8679854 |
| 6930 | 36900.37000.37200.38400.39400.41400.48800.1042800 | 24th Floor | 10d | 2027-10-17 | 2027-10-27 | 6929, 6752 |  | Zenith | 8679844 |
| 6931 | 36900.37000.37200.38400.39400.41400.48800.1042900 | 25th Floor | 10d | 2027-10-31 | 2027-12-25 | 6930, 6768 |  | Zenith | 8679834 |
| 6932 | 36900.37000.37200.38400.39400.41400.48800.1043000 | 26th Floor | 10d | 2027-12-29 | 2028-01-08 | 6931, 6784 |  | Zenith | 8679824 |
| 6933 | 36900.37000.37200.38400.39400.41400.48800.1043100 | 27th Floor | 10d | 2028-01-12 | 2028-01-22 | 6932, 6800 |  | Zenith | 8679814 |
| 6934 | 36900.37000.37200.38400.39400.41400.48800.1043200 | 28th Floor | 10d | 2028-01-26 | 2028-02-05 | 6933, 6816 |  | Zenith | 8679804 |
| 6935 | 36900.37000.37200.38400.39400.41400.48800.1043300 | 29th Floor | 10d | 2028-02-27 | 2028-03-08 | 6934, 6832 |  | Zenith | 8679794 |
| 6936 | 36900.37000.37200.38400.39400.41400.48800.1043400 | 30th Floor | 10d | 2028-03-12 | 2028-03-22 | 6935, 6848 |  | Zenith | 8679784 |
| 6937 | 36900.37000.37200.38400.39400.41400.48800.1043500 | 31st Floor | 10d | 2028-03-26 | 2028-04-05 | 6936, 6864 |  | Zenith | 8679774 |
| 6938 | 36900.37000.37200.38400.39400.41400.48800.1043600 | 32nd Floor | 10d | 2028-04-09 | 2028-04-19 | 6937, 6880 |  | Zenith | 8679764 |
| 6939 | 36900.37000.37200.38400.39400.41400.48800.1043700 | 33rd Floor | 10d | 2028-05-03 | 2028-05-13 | 6938, 6896 |  | Zenith | 8679754 |
| 6940 | 36900.37000.37200.38400.39400.41400.48800.1043800 | 34th Floor | 10d | 2028-05-13 | 2028-05-23 | 6939 |  | Zenith | 8679744 |

| ID | WBS | Task | Duration | Start | Finish | Predecessors | Constraint | Calendar | Unique_Task_ID |
| --- | --- | --- | --- | --- | --- | --- | --- | --- | --- |
| 6941 | 36900.37000.37200.38400.39400.41400.120300 | **Common Area Finishing** | 290d | 2027-12-16 | 2028-09-30 |  | start no earlier than 2027-12-16 | Zenith | 8651674 |
| 6942 | 36900.37000.37200.38400.39400.41400.120300.1043900 | Masonary Work | 40d | 2027-12-16 | 2028-01-24 | 6318 |  | Zenith | 8679734 |
| 6943 | 36900.37000.37200.38400.39400.41400.120300.1044000 | Fire sprinkler pipe fixing | 40d | 2028-01-25 | 2028-03-04 | 6942 |  | Zenith | 8679724 |
| 6944 | 36900.37000.37200.38400.39400.41400.120300.1044100 | Corridoor, staircase, shaft Plaster & whitewash | 120d | 2028-01-25 | 2028-05-23 | 6942 |  | Zenith | 8679714 |
| 6945 | 36900.37000.37200.38400.39400.41400.120300.1044200 | Staircase railing fixing | 100d | 2028-01-25 | 2028-05-03 | 6942 |  | Zenith | 8679704 |
| 6946 | 36900.37000.37200.38400.39400.41400.120300.1044300 | Fire staircase flooring | 120d | 2028-02-04 | 2028-06-02 | 6945FF+30d |  | Zenith | 8679694 |
| 6947 | 36900.37000.37200.38400.39400.41400.120300.1044400 | Main staircase flooring | 120d | 2028-02-04 | 2028-06-02 | 6945FF+30d |  | Zenith | 8679684 |
| 6948 | 36900.37000.37200.38400.39400.41400.120300.1044500 | Fire door work | 45d | 2028-06-03 | 2028-07-17 | 6946 |  | Zenith | 8679674 |
| 6949 | 36900.37000.37200.38400.39400.41400.120300.1044600 | Lobby flooring & Corridor | 120d | 2028-03-05 | 2028-07-02 | 6947FF+30d |  | Zenith | 8679664 |
| 6950 | 36900.37000.37200.38400.39400.41400.120300.1044700 | Ceiling & wall putty | 120d | 2028-04-04 | 2028-08-01 | 6948FF+15d, 6949FF+30d, 6897FF+30d |  | Zenith | 8679654 |
| 6951 | 36900.37000.37200.38400.39400.41400.120300.1044800 | Electrical wiring work | 120d | 2028-04-19 | 2028-08-16 | 6950FF+15d |  | Zenith | 8679644 |
| 6952 | 36900.37000.37200.38400.39400.41400.120300.1044900 | Ceiling & wall painting | 120d | 2028-05-09 | 2028-09-05 | 6943FS+20d, 6950SS+20d, 6951FF+20d |  | Zenith | 8679634 |
| 6953 | 36900.37000.37200.38400.39400.41400.120300.1045000 | Light fixture supply & installation | 45d | 2028-08-17 | 2028-09-30 | 6950, 6952FF+25d |  | Zenith | 8679624 |
| 6954 | 36900.37000.37200.38400.120800 | **MEP work** | 260d | 2027-12-16 | 2028-08-31 |  | start no earlier than 2027-12-16 | Zenith | 8651914 |
| 6955 | 36900.37000.37200.38400.120800.125000 | **Electrical work** | 240d | 2027-12-16 | 2028-08-11 |  | start no earlier than 2027-12-16 | Zenith | 8651994 |
| 6956 | 36900.37000.37200.38400.120800.125000.846900 | Cable Tray | 90d | 2027-12-16 | 2028-03-14 | 6318 |  | Zenith | 8721754 |
| 6957 | 36900.37000.37200.38400.120800.125000.847000 | Cable, main & sub main | 60d | 2028-01-30 | 2028-03-29 | 6956SS+45d |  | Zenith | 8721744 |
| 6958 | 36900.37000.37200.38400.120800.125000.847100 | LT panel & DB | 90d | 2028-03-15 | 2028-06-12 | 6956 |  | Zenith | 8721734 |
| 6959 | 36900.37000.37200.38400.120800.125000.847200 | Rising main | 90d | 2028-03-30 | 2028-06-27 | 6956FS+15d |  | Zenith | 8721724 |
| 6960 | 36900.37000.37200.38400.120800.125000.847300 | Earthing Works | 60d | 2028-04-04 | 2028-06-02 | 6956FS+20d |  | Zenith | 8721714 |
| 6961 | 36900.37000.37200.38400.120800.125000.847400 | Energy meter | 60d | 2028-06-13 | 2028-08-11 | 6957, 6960FS+10d |  | Zenith | 8721704 |
| 6962 | 36900.37000.37200.38400.120800.125000.847500 | HVAC & Exhast fan | 120d | 2028-03-10 | 2028-07-07 | 6956FS-5d |  | Zenith | 8721694 |
| 6963 | 36900.37000.37200.38400.120800.125000.847600 | FTTH | 60d | 2028-05-29 | 2028-07-27 | 6958FS-15d |  | Zenith | 8721684 |
| 6964 | 36900.37000.37200.38400.120800.125000.847700 | Security System - FA & PA | 60d | 2028-06-13 | 2028-08-11 | 6958, 6959FF+10d, 6962FF+2d, 6963FF |  | Zenith | 8721674 |

| ID | WBS | Task | Duration | Start | Finish | Predecessors | Constraint | Calendar | Unique_Task_ID |
| --- | --- | --- | --- | --- | --- | --- | --- | --- | --- |
| 6965 | 36900.37000.37200.38400.120800.164800 | **Plumbing work** | 218d | 2028-01-27 | 2028-08-31 |  | start no earlier than 2028-01-27 | Zenith | 8652894 |
| 6966 | 36900.37000.37200.38400.120800.164800.847800 | Terrace looping | 45d | 2028-01-27 | 2028-03-11 | 6904 |  | Zenith | 8721664 |
| 6967 | 36900.37000.37200.38400.120800.164800.847900 | Shaft Plumbing | 70d | 2028-04-24 | 2028-07-02 | 6966, 6944FS-30d |  | Zenith | 8721654 |
| 6968 | 36900.37000.37200.38400.120800.164800.848000 | CP sanitary fixture supply | 45d | 2028-07-03 | 2028-08-16 | 6967 |  | Zenith | 8721644 |
| 6969 | 36900.37000.37200.38400.120800.164800.848100 | Cold & flushing water supply | 45d | 2028-07-03 | 2028-08-16 | 6967 |  | Zenith | 8721634 |
| 6970 | 36900.37000.37200.38400.120800.164800.848200 | Misc work | 30d | 2028-08-02 | 2028-08-31 | 6968FS-15d, 6969FS-15d |  | Zenith | 8721624 |
| 6971 | 36900.37000.37200.38400.120800.210600 | **Fire fighting work** | 121d | 2028-03-10 | 2028-07-08 |  | start no earlier than 2028-03-10 | Zenith | 8654064 |
| 6972 | 36900.37000.37200.38400.120800.210600.848300 | Fire hydrant work | 75d | 2028-03-10 | 2028-05-23 | 6944SS+45d |  | Zenith | 8721614 |
| 6973 | 36900.37000.37200.38400.120800.210600.848400 | Pipe connection & sprinkler installation | 45d | 2028-05-25 | 2028-07-08 | 6972FS+1d, 6975FF+15d |  | Zenith | 8721604 |
| 6974 | 36900.37000.37200.38400.120800.210600.848500 | Shaft Downtake works | 60d | 2028-03-25 | 2028-05-23 | 6904, 6944FS-60d |  | Zenith | 8721594 |
| 6975 | 36900.37000.37200.38400.120800.210600.848600 | Connection to pump room | 30d | 2028-05-24 | 2028-06-22 | 6974 |  | Zenith | 8721584 |
| 6976 | 36900.37000.37200.38400.120800.218900 | **Lift work** | 209.5d | 2028-02-04 | 2028-08-31 |  | start no earlier than 2028-02-04 | Zenith | 8656534 |
| 6977 | 36900.37000.37200.38400.120800.218900.848700 | Lift Shaft/Pit Handover | 40d | 2028-02-04 | 2028-03-15 | 6355FS+5d |  | Zenith | 8721574 |
| 6978 | 36900.37000.37200.38400.120800.218900.848800 | Lift installation work | 60d | 2028-03-15 | 2028-05-14 | 6977 |  | Zenith | 8721564 |
| 6979 | 36900.37000.37200.38400.120800.218900.848900 | Lift testing and commissioning | 60d | 2028-07-03 | 2028-08-31 | 6978, 6949 |  | Zenith | 8721554 |
| 6980 | 36900.37000.37200.38400.226400 | **Basement lobby** | 90d | 2028-03-30 | 2028-06-28 |  | start no earlier than 2028-03-30 | Zenith | 8656904 |
| 6981 | 36900.37000.37200.38400.226400.411000 | Basement lobby | 90d | 2028-03-30 | 2028-06-28 | 6977FS+15d, 6140FS+15d, 6141FS+15d |  | Zenith | 8730904 |
| 6982 | 36900.37000.37200.38400.221900 | **External Paint Works** | 123.75d | 2028-05-23 | 2028-09-23 |  | start no earlier than 2028-05-23 | Zenith | 8656754 |
| 6983 | 36900.37000.37200.38400.221900.411100 | Surface prepration with Primer | 60d | 2028-05-23 | 2028-07-22 | 6355FS+2d, 6940 |  | Zenith | 8730894 |
| 6984 | 36900.37000.37200.38400.221900.411200 | External Painting (Texture & first coat) | 100d | 2028-06-16 | 2028-09-23 | 6983FF+10d, 6898 |  | Zenith | 8730884 |
| 6985 | 36900.37000.37200.38400.307700 | OC Application/Readiness | 2d | 2028-12-18 | 2028-12-19 | 6313FF+349d, 6984FF+30d, 6973FF+30d, 6970FF, 6981FF+30d, 6979FF, 6964FF, 6961FF, 6905FF+30d, 6902FF+15d, 6950FF+0.25d, 6940FF, 6898FF+0.25d |  | Zenith | 8735144 |
| 6986 | 36900.37000.37200.38400.307800 | OC Receipt | 60d | 2028-12-20 | 2029-02-17 | 6985 |  | Zenith | 8735134 |
| 6987 | 36900.37000.37200.38400.126600 | **Post OC activities** | 390d | 2028-10-16 | 2030-02-07 |  | start no earlier than 2028-10-16 | Zenith | 8651954 |
| 6988 | 36900.37000.37200.38400.126600.411300 | CP & Sanitaryware | 150d | 2029-02-18 | 2029-07-17 | 6986 |  | Zenith | 8730874 |
| 6989 | 36900.37000.37200.38400.126600.411400 | Electrical Fixtures And Fittings | 150d | 2029-02-18 | 2029-07-17 | 6986 |  | Zenith | 8730864 |
| 6990 | 36900.37000.37200.38400.126600.411500 | Final coat paint external | 100d | 2029-02-18 | 2029-05-28 | 6986 |  | Zenith | 8730854 |
| 6991 | 36900.37000.37200.38400.126600.411600 | Final Coat Paint Internal | 150d | 2029-02-18 | 2029-07-17 | 6986, 6901 |  | Zenith | 8730844 |
| 6992 | 36900.37000.37200.38400.126600.411700 | Balcony Railing Glass Fixing | 120d | 2029-07-18 | 2029-12-29 | 6991, 6940FS+30d |  | Zenith | 8730834 |
| 6993 | 36900.37000.37200.38400.126600.411800 | MEP | 150d | 2028-10-16 | 2029-04-28 | 6953FS+15d |  | Zenith | 8730824 |
| 6994 | 36900.37000.37200.38400.126600.411900 | Wooden Flooring | 180d | 2029-02-03 | 2029-08-01 | 6991FF+15d |  | Zenith | 8730814 |
| 6995 | 36900.37000.37200.38400.126600.412000 | Split AC Units installation | 100d | 2029-08-17 | 2030-01-08 | 6994FS+15d |  | Zenith | 8730804 |
| 6996 | 36900.37000.37200.38400.126600.412100 | Misc. works (Modular Kitchen & others) | 180d | 2029-06-28 | 2030-02-07 | 6995FF+30d |  | Zenith | 8730794 |
| 6997 | 36900.37000.37200.38400.307900 | Offer To Possession | 180d | 2029-07-18 | 2030-02-27 | 6986FS+150d, 6988FF+20d, 6989FF+20d, 6990FF+20d, 6995FF+10d, 6993FF+30d, 6992FF+15d, 6996FF+15d |  | Zenith | 8735124 |

| ID | WBS | Task | Duration | Start | Finish | Predecessors | Complete | Constraint | Calendar | Unique_Task_ID |
| --- | --- | --- | --- | --- | --- | --- | --- | --- | --- | --- |
| 6998 | 36900.37000.37200.37800 | **Tower 08** | 1742d | 2025-01-24 | 2030-05-14 |  | 1% | start no earlier than 2025-01-24 | Zenith | 8647564 |
| 6999 | 36900.37000.37200.37800.63800 | **Sub-Structure Works** | 526d | 2025-01-24 | 2026-07-18 |  | 44% | start no earlier than 2025-01-24 | Zenith | 8648424 |
| 7000 | 36900.37000.37200.37800.63800.164900 | **Soil Bed Preparation** | 324d | 2025-01-24 | 2025-12-28 |  | 83% | start no earlier than 2025-01-24 | Zenith | 8656464 |
| 7001 | 36900.37000.37200.37800.63800.164900.849000 | Excavation (2m) | 1d | 2025-12-16 | 2025-12-16 |  |  | start no earlier than 2025-12-16 | Zenith | 8721544 |
| 7002 | 36900.37000.37200.37800.63800.164900.231500 | Mobilization & Soldier Piling with Excavation | 72d | 2025-01-24 | 2025-12-28 | 7952SS+18d | 81% | start no earlier than 2025-01-24 | Zenith | 8721534 |
| 7003 | 36900.37000.37200.37800.63800.164900.231600 | Foundation bulk Excavation | 6d | 2025-05-06 | 2025-05-11 | 7002 | 100% | start no earlier than 2025-05-06 | Zenith | 8721524 |
| 7004 | 36900.37000.37200.37800.63800.164900.231700 | Soil dressing & ATT | 6d | 2025-05-12 | 2025-05-17 | 7003 | 100% | start no earlier than 2025-05-12 | Zenith | 8721514 |
| 7005 | 36900.37000.37200.37800.63800.119400 | **Structure Works** | 276d | 2025-05-14 | 2026-02-28 |  | 55% | start no earlier than 2025-05-14 | Zenith | 8651714 |
| 7006 | 36900.37000.37200.37800.63800.119400.141200 | **Raft Foundation** | 121d | 2025-05-14 | 2025-09-11 |  | 100% | start no earlier than 2025-05-14 | Zenith | 8652654 |
| 7007 | 36900.37000.37200.37800.63800.119400.141200.255500 | PCC | 5d | 2025-05-14 | 2025-05-18 | 7004FS+1d | 100% | start no earlier than 2025-05-14 | Zenith | 8679614 |
| 7008 | 36900.37000.37200.37800.63800.119400.141200.255400 | Column/SW layout marking | 10d | 2025-05-18 | 2025-06-16 | 7007 | 100% | start no earlier than 2025-05-18 | Zenith | 8679604 |
| 7009 | 36900.37000.37200.37800.63800.119400.141200.255300 | Reinforcement | 53d | 2025-05-18 | 2025-08-30 | 7008SS+1d | 100% | start no earlier than 2025-05-18 | Zenith | 8679594 |
| 7010 | 36900.37000.37200.37800.63800.119400.141200.255200 | Formwork (Conventional) | 10d | 2025-07-16 | 2025-09-09 | 7009FF+3d | 100% | start no earlier than 2025-07-16 | Zenith | 8679584 |
| 7011 | 36900.37000.37200.37800.63800.119400.141200.255100 | Concreting | 10d | 2025-07-20 | 2025-09-11 | 7010FF+3d | 100% | start no earlier than 2025-07-20 | Zenith | 8679574 |
| 7012 | 36900.37000.37200.37800.63800.119400.141300 | **Basement 03 Roof Slab (Dummy)/stitch/tie slab** | 25d | 2025-11-19 | 2025-12-28 |  |  | start no earlier than 2025-11-19 | Zenith | 8652264 |
| 7013 | 36900.37000.37200.37800.63800.119400.141300.1045100 | Column/SW Reinforcement | 9d | 2025-11-19 | 2025-11-27 | 7011 |  |  | Zenith | 8679564 |
| 7014 | 36900.37000.37200.37800.63800.119400.141300.1045200 | SW Formwork (Conventional) | 9d | 2025-11-23 | 2025-12-16 | 7013SS+4d |  |  | Zenith | 8679554 |
| 7015 | 36900.37000.37200.37800.63800.119400.141300.1045300 | Column/SW Concreting | 9d | 2025-11-27 | 2025-12-20 | 7014SS+4d |  |  | Zenith | 8679544 |
| 7016 | 36900.37000.37200.37800.63800.119400.141300.1045400 | Slab Formwork (Conventional) | 9d | 2025-12-16 | 2025-12-24 | 7015SS+4d |  |  | Zenith | 8679534 |
| 7017 | 36900.37000.37200.37800.63800.119400.141300.1045500 | Slab Reinforcement + Conduting | 3d | 2025-12-25 | 2025-12-27 | 7016 |  |  | Zenith | 8679524 |
| 7018 | 36900.37000.37200.37800.63800.119400.141300.1045600 | Concreting | 1d | 2025-12-28 | 2025-12-28 | 7017 |  |  | Zenith | 8679514 |
| 7019 | 36900.37000.37200.37800.63800.119400.136900 | **Basement 02 Roof Slab** | 102d | 2025-08-27 | 2025-12-21 |  | 84% | start no earlier than 2025-08-27 | Zenith | 8652274 |
| 7020 | 36900.37000.37200.37800.63800.119400.136900.255000 | Column/SW Reinforcement | 20d | 2025-08-27 | 2025-10-21 | 7018FS-53d | 100% | start no earlier than 2025-08-27 | Zenith | 8679504 |
| 7021 | 36900.37000.37200.37800.63800.119400.136900.254900 | SW Formwork (Conventional) | 18d | 2025-09-09 | 2025-12-21 | 7020SS+4d | 83% | start no earlier than 2025-09-09 | Zenith | 8679494 |
| 7022 | 36900.37000.37200.37800.63800.119400.136900.254800 | Column/SW Concreting | 19d | 2025-09-14 | 2025-12-21 | 7021SS+4d | 84% | start no earlier than 2025-09-14 | Zenith | 8679484 |
| 7023 | 36900.37000.37200.37800.63800.119400.136900.254700 | Slab Formwork (Conventional) | 10d | 2025-10-27 | 2025-11-21 | 7022SS+36d | 70% | start no earlier than 2025-10-27 | Zenith | 8679474 |
| 7024 | 36900.37000.37200.37800.63800.119400.136900.254600 | Slab Reinforcement + Conduting | 17d | 2025-10-28 | 2025-11-24 | 7023FS-25d | 82% |  | Zenith | 8679464 |
| 7025 | 36900.37000.37200.37800.63800.119400.136900.254500 | Concreting | 10d | 2025-11-10 | 2025-11-27 | 7024FS-15d | 70% |  | Zenith | 8679454 |

| ID | WBS | Task | Duration | Start | Finish | Predecessors | Constraint | Calendar | Unique_Task_ID |
| --- | --- | --- | --- | --- | --- | --- | --- | --- | --- |
| 7026 | 36900.37000.37200.37800.63800.119400.141400 | **Basement 01 Roof Slab** | 25d | 2026-01-10 | 2026-02-03 |  | start no earlier than 2026-01-10 | Zenith | 8652284 |
| 7027 | 36900.37000.37200.37800.63800.119400.141400.1045700 | Column/SW Reinforcement | 9d | 2026-01-10 | 2026-01-18 | 7025FS+28d |  | Zenith | 8679444 |
| 7028 | 36900.37000.37200.37800.63800.119400.141400.1045800 | SW Formwork (Conventional) | 9d | 2026-01-14 | 2026-01-22 | 7027SS+4d |  | Zenith | 8679434 |
| 7029 | 36900.37000.37200.37800.63800.119400.141400.1045900 | Column/SW Concreting | 9d | 2026-01-18 | 2026-01-26 | 7028SS+4d |  | Zenith | 8679424 |
| 7030 | 36900.37000.37200.37800.63800.119400.141400.1046000 | Slab Formwork (Conventional) | 9d | 2026-01-22 | 2026-01-30 | 7029SS+4d |  | Zenith | 8679414 |
| 7031 | 36900.37000.37200.37800.63800.119400.141400.1046100 | Slab Reinforcement + Conduting | 3d | 2026-01-31 | 2026-02-02 | 7030 |  | Zenith | 8679404 |
| 7032 | 36900.37000.37200.37800.63800.119400.141400.1046200 | Concreting | 1d | 2026-02-03 | 2026-02-03 | 7031 |  | Zenith | 8679394 |
| 7033 | 36900.37000.37200.37800.63800.119400.141500 | **Podium Slab/Ground Roof Floor Slab** | 25d | 2026-02-04 | 2026-02-28 |  | start no earlier than 2026-02-04 | Zenith | 8652294 |
| 7034 | 36900.37000.37200.37800.63800.119400.141500.1046300 | Column/SW Reinforcement | 9d | 2026-02-04 | 2026-02-12 | 7032 |  | Zenith | 8679384 |
| 7035 | 36900.37000.37200.37800.63800.119400.141500.1046400 | SW Formwork (Conventional) | 9d | 2026-02-08 | 2026-02-16 | 7034SS+4d |  | Zenith | 8679374 |
| 7036 | 36900.37000.37200.37800.63800.119400.141500.1046500 | Column/SW Concreting | 9d | 2026-02-12 | 2026-02-20 | 7035SS+4d |  | Zenith | 8679364 |
| 7037 | 36900.37000.37200.37800.63800.119400.141500.1046600 | Slab Formwork (Conventional) | 9d | 2026-02-16 | 2026-02-24 | 7036SS+4d |  | Zenith | 8679354 |
| 7038 | 36900.37000.37200.37800.63800.119400.141500.1046700 | Slab Reinforcement + Conduting | 3d | 2026-02-25 | 2026-02-27 | 7037 |  | Zenith | 8679344 |
| 7039 | 36900.37000.37200.37800.63800.119400.141500.1046800 | Concreting | 1d | 2026-02-28 | 2026-02-28 | 7038 |  | Zenith | 8679334 |
| 7040 | 36900.37000.37200.37800.63800.210500 | **Substructure Finishes** | 110d | 2026-03-31 | 2026-07-18 |  | start no earlier than 2026-03-31 | Zenith | 8656474 |
| 7041 | 36900.37000.37200.37800.63800.210500.849100 | Masonary Work | 35d | 2026-03-31 | 2026-05-04 | 7039FS+30d |  | Zenith | 8721504 |
| 7042 | 36900.37000.37200.37800.63800.210500.849200 | Plaster Work | 30d | 2026-05-05 | 2026-06-03 | 7041 |  | Zenith | 8721494 |
| 7043 | 36900.37000.37200.37800.63800.210500.849300 | Structural Steel work | 50d | 2026-04-30 | 2026-06-18 | 7039FS+60d |  | Zenith | 8721484 |
| 7044 | 36900.37000.37200.37800.63800.210500.849400 | White Wash | 35d | 2026-06-14 | 2026-07-18 | 7042FS+10d |  | Zenith | 8721474 |
| 7045 | 36900.37000.37200.37800.38700 | **Superstructure** | 945d | 2026-03-01 | 2029-02-12 |  | start no earlier than 2026-03-01 | Zenith | 8647644 |
| 7046 | 36900.37000.37200.37800.38700.44100 | **RCC structure** | 537d | 2026-03-01 | 2027-10-03 |  | start no earlier than 2026-03-01 | Zenith | 8647924 |
| 7047 | 36900.37000.37200.37800.38700.44100.192300 | **1st Floor Roof slab** | 24d | 2026-03-01 | 2026-03-24 |  | start no earlier than 2026-03-01 | Zenith | 8655694 |
| 7048 | 36900.37000.37200.37800.38700.44100.192300.1046900 | Reinforcement | 19d | 2026-03-01 | 2026-03-19 | 7039 |  | Zenith | 8679324 |
| 7049 | 36900.37000.37200.37800.38700.44100.192300.1047000 | Conduiting | 19d | 2026-03-04 | 2026-03-22 | 7048SS+3d |  | Zenith | 8679314 |
| 7050 | 36900.37000.37200.37800.38700.44100.192300.1047100 | Formwork | 19d | 2026-03-05 | 2026-03-23 | 7048SS+4d |  | Zenith | 8679304 |
| 7051 | 36900.37000.37200.37800.38700.44100.192300.1047200 | Concreting | 1d | 2026-03-24 | 2026-03-24 | 7049FS+1d, 7050 |  | Zenith | 8679294 |

| ID | WBS | Task | Duration | Start | Finish | Predecessors | Constraint | Calendar | Unique_Task_ID |
| --- | --- | --- | --- | --- | --- | --- | --- | --- | --- |
| 7052 | 36900.37000.37200.37800.38700.44100.192400 | **2nd Floor Roof slab** | 26d | 2026-03-25 | 2026-04-19 |  | start no earlier than 2026-03-25 | Zenith | 8655684 |
| 7053 | 36900.37000.37200.37800.38700.44100.192400.1047300 | Reinforcement | 21d | 2026-03-25 | 2026-04-14 | 7051 |  | Zenith | 8679284 |
| 7054 | 36900.37000.37200.37800.38700.44100.192400.1047400 | Conduiting | 21d | 2026-03-28 | 2026-04-17 | 7053SS+3d |  | Zenith | 8679274 |
| 7055 | 36900.37000.37200.37800.38700.44100.192400.1047500 | Formwork | 21d | 2026-03-29 | 2026-04-18 | 7053SS+4d |  | Zenith | 8679264 |
| 7056 | 36900.37000.37200.37800.38700.44100.192400.1047600 | Concreting | 1d | 2026-04-19 | 2026-04-19 | 7054FS+1d, 7055 |  | Zenith | 8679254 |
| 7057 | 36900.37000.37200.37800.38700.44100.192500 | **3rd Floor Roof slab** | 18d | 2026-04-20 | 2026-05-07 |  | start no earlier than 2026-04-20 | Zenith | 8655674 |
| 7058 | 36900.37000.37200.37800.38700.44100.192500.1047700 | Reinforcement | 13d | 2026-04-20 | 2026-05-02 | 7056 |  | Zenith | 8679244 |
| 7059 | 36900.37000.37200.37800.38700.44100.192500.1047800 | Conduiting | 13d | 2026-04-23 | 2026-05-05 | 7058SS+3d |  | Zenith | 8679234 |
| 7060 | 36900.37000.37200.37800.38700.44100.192500.1047900 | Formwork | 13d | 2026-04-24 | 2026-05-06 | 7058SS+4d |  | Zenith | 8679224 |
| 7061 | 36900.37000.37200.37800.38700.44100.192500.1048000 | Concreting | 1d | 2026-05-07 | 2026-05-07 | 7059FS+1d, 7060 |  | Zenith | 8679214 |
| 7062 | 36900.37000.37200.37800.38700.44100.192600 | **4th floor roof slab** | 13d | 2026-05-08 | 2026-05-20 |  | start no earlier than 2026-05-08 | Zenith | 8655664 |
| 7063 | 36900.37000.37200.37800.38700.44100.192600.1048100 | Reinforcement | 10d | 2026-05-08 | 2026-05-17 | 7061 |  | Zenith | 8679204 |
| 7064 | 36900.37000.37200.37800.38700.44100.192600.1048200 | Conduiting | 10d | 2026-05-09 | 2026-05-18 | 7063SS+1d |  | Zenith | 8679194 |
| 7065 | 36900.37000.37200.37800.38700.44100.192600.1048300 | Formwork | 10d | 2026-05-10 | 2026-05-19 | 7063SS+2d |  | Zenith | 8679184 |
| 7066 | 36900.37000.37200.37800.38700.44100.192600.1048400 | Concreting | 1d | 2026-05-20 | 2026-05-20 | 7064FS+1d, 7065 |  | Zenith | 8679174 |
| 7067 | 36900.37000.37200.37800.38700.44100.192700 | **5th floor roof slab** | 13d | 2026-05-21 | 2026-06-02 |  | start no earlier than 2026-05-21 | Zenith | 8655654 |
| 7068 | 36900.37000.37200.37800.38700.44100.192700.1048500 | Reinforcement | 10d | 2026-05-21 | 2026-05-30 | 7066 |  | Zenith | 8679164 |
| 7069 | 36900.37000.37200.37800.38700.44100.192700.1048600 | Conduiting | 10d | 2026-05-22 | 2026-05-31 | 7068SS+1d |  | Zenith | 8679154 |
| 7070 | 36900.37000.37200.37800.38700.44100.192700.1048700 | Formwork | 10d | 2026-05-23 | 2026-06-01 | 7068SS+2d |  | Zenith | 8679144 |
| 7071 | 36900.37000.37200.37800.38700.44100.192700.1048800 | Concreting | 1d | 2026-06-02 | 2026-06-02 | 7069FS+1d, 7070 |  | Zenith | 8679134 |
| 7072 | 36900.37000.37200.37800.38700.44100.192800 | **6th floor roof slab** | 13d | 2026-06-03 | 2026-06-15 |  | start no earlier than 2026-06-03 | Zenith | 8655644 |
| 7073 | 36900.37000.37200.37800.38700.44100.192800.1048900 | Reinforcement | 10d | 2026-06-03 | 2026-06-12 | 7071 |  | Zenith | 8679124 |
| 7074 | 36900.37000.37200.37800.38700.44100.192800.1049000 | Conduiting | 10d | 2026-06-04 | 2026-06-13 | 7073SS+1d |  | Zenith | 8679114 |
| 7075 | 36900.37000.37200.37800.38700.44100.192800.1049100 | Formwork | 10d | 2026-06-05 | 2026-06-14 | 7073SS+2d |  | Zenith | 8679104 |
| 7076 | 36900.37000.37200.37800.38700.44100.192800.1049200 | Concreting | 1d | 2026-06-15 | 2026-06-15 | 7074FS+1d, 7075 |  | Zenith | 8679094 |

| ID | WBS | Task | Duration | Start | Finish | Predecessors | Constraint | Calendar | Unique_Task_ID |
| --- | --- | --- | --- | --- | --- | --- | --- | --- | --- |
| 7077 | 36900.37000.37200.37800.38700.44100.192900 | **7th floor roof slab** | 13d | 2026-06-16 | 2026-06-28 |  | start no earlier than 2026-06-16 | Zenith | 8655634 |
| 7078 | 36900.37000.37200.37800.38700.44100.192900.1049300 | Reinforcement | 10d | 2026-06-16 | 2026-06-25 | 7076 |  | Zenith | 8679084 |
| 7079 | 36900.37000.37200.37800.38700.44100.192900.1049400 | Conduiting | 10d | 2026-06-17 | 2026-06-26 | 7078SS+1d |  | Zenith | 8679074 |
| 7080 | 36900.37000.37200.37800.38700.44100.192900.1049500 | Formwork | 10d | 2026-06-18 | 2026-06-27 | 7078SS+2d |  | Zenith | 8679064 |
| 7081 | 36900.37000.37200.37800.38700.44100.192900.1049600 | Concreting | 1d | 2026-06-28 | 2026-06-28 | 7079FS+1d, 7080 |  | Zenith | 8679054 |
| 7082 | 36900.37000.37200.37800.38700.44100.193000 | **8th floor roof slab** | 13d | 2026-06-29 | 2026-07-11 |  | start no earlier than 2026-06-29 | Zenith | 8655624 |
| 7083 | 36900.37000.37200.37800.38700.44100.193000.1049700 | Reinforcement | 10d | 2026-06-29 | 2026-07-08 | 7081 |  | Zenith | 8679044 |
| 7084 | 36900.37000.37200.37800.38700.44100.193000.1049800 | Conduiting | 10d | 2026-06-30 | 2026-07-09 | 7083SS+1d |  | Zenith | 8679034 |
| 7085 | 36900.37000.37200.37800.38700.44100.193000.1049900 | Formwork | 10d | 2026-07-01 | 2026-07-10 | 7083SS+2d |  | Zenith | 8679024 |
| 7086 | 36900.37000.37200.37800.38700.44100.193000.1050000 | Concreting | 1d | 2026-07-11 | 2026-07-11 | 7084FS+1d, 7085 |  | Zenith | 8679014 |
| 7087 | 36900.37000.37200.37800.38700.44100.193100 | **9th floor roof slab** | 13d | 2026-07-12 | 2026-07-24 |  | start no earlier than 2026-07-12 | Zenith | 8655614 |
| 7088 | 36900.37000.37200.37800.38700.44100.193100.1050100 | Reinforcement | 10d | 2026-07-12 | 2026-07-21 | 7086 |  | Zenith | 8679004 |
| 7089 | 36900.37000.37200.37800.38700.44100.193100.1050200 | Conduiting | 10d | 2026-07-13 | 2026-07-22 | 7088SS+1d |  | Zenith | 8678994 |
| 7090 | 36900.37000.37200.37800.38700.44100.193100.1050300 | Formwork | 10d | 2026-07-14 | 2026-07-23 | 7088SS+2d |  | Zenith | 8678984 |
| 7091 | 36900.37000.37200.37800.38700.44100.193100.1050400 | Concreting | 1d | 2026-07-24 | 2026-07-24 | 7089FS+1d, 7090 |  | Zenith | 8678974 |
| 7092 | 36900.37000.37200.37800.38700.44100.193200 | **10th floor roof slab** | 13d | 2026-07-25 | 2026-08-06 |  | start no earlier than 2026-07-25 | Zenith | 8655604 |
| 7093 | 36900.37000.37200.37800.38700.44100.193200.1050500 | Reinforcement | 10d | 2026-07-25 | 2026-08-03 | 7091 |  | Zenith | 8678964 |
| 7094 | 36900.37000.37200.37800.38700.44100.193200.1050600 | Conduiting | 10d | 2026-07-26 | 2026-08-04 | 7093SS+1d |  | Zenith | 8678954 |
| 7095 | 36900.37000.37200.37800.38700.44100.193200.1050700 | Formwork | 10d | 2026-07-27 | 2026-08-05 | 7093SS+2d |  | Zenith | 8678944 |
| 7096 | 36900.37000.37200.37800.38700.44100.193200.1050800 | Concreting | 1d | 2026-08-06 | 2026-08-06 | 7094FS+1d, 7095 |  | Zenith | 8678934 |
| 7097 | 36900.37000.37200.37800.38700.44100.193300 | **11th floor roof slab** | 13d | 2026-08-07 | 2026-08-19 |  | start no earlier than 2026-08-07 | Zenith | 8655594 |
| 7098 | 36900.37000.37200.37800.38700.44100.193300.1050900 | Reinforcement | 10d | 2026-08-07 | 2026-08-16 | 7096 |  | Zenith | 8678924 |
| 7099 | 36900.37000.37200.37800.38700.44100.193300.1051000 | Conduiting | 10d | 2026-08-08 | 2026-08-17 | 7098SS+1d |  | Zenith | 8678914 |
| 7100 | 36900.37000.37200.37800.38700.44100.193300.1051100 | Formwork | 10d | 2026-08-09 | 2026-08-18 | 7098SS+2d |  | Zenith | 8678904 |
| 7101 | 36900.37000.37200.37800.38700.44100.193300.1051200 | Concreting | 1d | 2026-08-19 | 2026-08-19 | 7099FS+1d, 7100 |  | Zenith | 8678894 |

| ID | WBS | Task | Duration | Start | Finish | Predecessors | Constraint | Calendar | Unique_Task_ID |
| --- | --- | --- | --- | --- | --- | --- | --- | --- | --- |
| 7102 | 36900.37000.37200.37800.38700.44100.193400 | **12th floor roof slab** | 13d | 2026-08-20 | 2026-09-01 |  | start no earlier than 2026-08-20 | Zenith | 8655574 |
| 7103 | 36900.37000.37200.37800.38700.44100.193400.1051300 | Reinforcement | 10d | 2026-08-20 | 2026-08-29 | 7101 |  | Zenith | 8678884 |
| 7104 | 36900.37000.37200.37800.38700.44100.193400.1051400 | Conduiting | 10d | 2026-08-21 | 2026-08-30 | 7103SS+1d |  | Zenith | 8678874 |
| 7105 | 36900.37000.37200.37800.38700.44100.193400.1051500 | Formwork | 10d | 2026-08-22 | 2026-08-31 | 7103SS+2d |  | Zenith | 8678864 |
| 7106 | 36900.37000.37200.37800.38700.44100.193400.1051600 | Concreting | 1d | 2026-09-01 | 2026-09-01 | 7104FS+1d, 7105 |  | Zenith | 8678854 |
| 7107 | 36900.37000.37200.37800.38700.44100.193500 | **13th floor roof slab** | 13d | 2026-09-02 | 2026-09-14 |  | start no earlier than 2026-09-02 | Zenith | 8655564 |
| 7108 | 36900.37000.37200.37800.38700.44100.193500.1051700 | Reinforcement | 10d | 2026-09-02 | 2026-09-11 | 7106 |  | Zenith | 8678844 |
| 7109 | 36900.37000.37200.37800.38700.44100.193500.1051800 | Conduiting | 10d | 2026-09-03 | 2026-09-12 | 7108SS+1d |  | Zenith | 8678834 |
| 7110 | 36900.37000.37200.37800.38700.44100.193500.1051900 | Formwork | 10d | 2026-09-04 | 2026-09-13 | 7108SS+2d |  | Zenith | 8678824 |
| 7111 | 36900.37000.37200.37800.38700.44100.193500.1052000 | Concreting | 1d | 2026-09-14 | 2026-09-14 | 7109FS+1d, 7110 |  | Zenith | 8678814 |
| 7112 | 36900.37000.37200.37800.38700.44100.193600 | **14th floor roof slab** | 13d | 2026-09-15 | 2026-09-27 |  | start no earlier than 2026-09-15 | Zenith | 8655554 |
| 7113 | 36900.37000.37200.37800.38700.44100.193600.1052100 | Reinforcement | 10d | 2026-09-15 | 2026-09-24 | 7111 |  | Zenith | 8678804 |
| 7114 | 36900.37000.37200.37800.38700.44100.193600.1052200 | Conduiting | 10d | 2026-09-16 | 2026-09-25 | 7113SS+1d |  | Zenith | 8678794 |
| 7115 | 36900.37000.37200.37800.38700.44100.193600.1052300 | Formwork | 10d | 2026-09-17 | 2026-09-26 | 7113SS+2d |  | Zenith | 8678784 |
| 7116 | 36900.37000.37200.37800.38700.44100.193600.1052400 | Concreting | 1d | 2026-09-27 | 2026-09-27 | 7114FS+1d, 7115 |  | Zenith | 8678774 |
| 7117 | 36900.37000.37200.37800.38700.44100.193700 | **15th floor roof slab** | 13d | 2026-09-28 | 2026-10-10 |  | start no earlier than 2026-09-28 | Zenith | 8655544 |
| 7118 | 36900.37000.37200.37800.38700.44100.193700.1052500 | Reinforcement | 10d | 2026-09-28 | 2026-10-07 | 7116 |  | Zenith | 8678764 |
| 7119 | 36900.37000.37200.37800.38700.44100.193700.1052600 | Conduiting | 10d | 2026-09-29 | 2026-10-08 | 7118SS+1d |  | Zenith | 8678754 |
| 7120 | 36900.37000.37200.37800.38700.44100.193700.1052700 | Formwork | 10d | 2026-09-30 | 2026-10-09 | 7118SS+2d |  | Zenith | 8678744 |
| 7121 | 36900.37000.37200.37800.38700.44100.193700.1052800 | Concreting | 1d | 2026-10-10 | 2026-10-10 | 7119FS+1d, 7120 |  | Zenith | 8678734 |
| 7122 | 36900.37000.37200.37800.38700.44100.193800 | **16th floor roof slab** | 13d | 2026-10-11 | 2026-10-23 |  | start no earlier than 2026-10-11 | Zenith | 8655534 |
| 7123 | 36900.37000.37200.37800.38700.44100.193800.1052900 | Reinforcement | 10d | 2026-10-11 | 2026-10-20 | 7121 |  | Zenith | 8678724 |
| 7124 | 36900.37000.37200.37800.38700.44100.193800.1053000 | Conduiting | 10d | 2026-10-12 | 2026-10-21 | 7123SS+1d |  | Zenith | 8678714 |
| 7125 | 36900.37000.37200.37800.38700.44100.193800.1053100 | Formwork | 10d | 2026-10-13 | 2026-10-22 | 7123SS+2d |  | Zenith | 8678704 |
| 7126 | 36900.37000.37200.37800.38700.44100.193800.1053200 | Concreting | 1d | 2026-10-23 | 2026-10-23 | 7124, 7125 |  | Zenith | 8678694 |

| ID | WBS | Task | Duration | Start | Finish | Predecessors | Constraint | Calendar | Unique_Task_ID |
| --- | --- | --- | --- | --- | --- | --- | --- | --- | --- |
| 7127 | 36900.37000.37200.37800.38700.44100.193900 | **17th floor roof slab** | 12d | 2026-10-24 | 2026-12-19 |  | start no earlier than 2026-10-24 | Zenith | 8655524 |
| 7128 | 36900.37000.37200.37800.38700.44100.193900.1053300 | Reinforcement | 10d | 2026-10-24 | 2026-12-17 | 7126 |  | Zenith | 8678684 |
| 7129 | 36900.37000.37200.37800.38700.44100.193900.1053400 | Conduiting | 10d | 2026-10-25 | 2026-12-18 | 7128SS+1d |  | Zenith | 8678674 |
| 7130 | 36900.37000.37200.37800.38700.44100.193900.1053500 | Formwork | 10d | 2026-10-25 | 2026-12-18 | 7128SS+1d |  | Zenith | 8678664 |
| 7131 | 36900.37000.37200.37800.38700.44100.193900.1053600 | Concreting | 1d | 2026-12-19 | 2026-12-19 | 7129, 7130 |  | Zenith | 8678654 |
| 7132 | 36900.37000.37200.37800.38700.44100.194000 | **18th floor roof slab** | 13d | 2026-12-20 | 2027-01-01 |  | start no earlier than 2026-12-20 | Zenith | 8655514 |
| 7133 | 36900.37000.37200.37800.38700.44100.194000.1053700 | Reinforcement | 10d | 2026-12-20 | 2026-12-29 | 7131 |  | Zenith | 8678644 |
| 7134 | 36900.37000.37200.37800.38700.44100.194000.1053800 | Conduiting | 10d | 2026-12-21 | 2026-12-30 | 7133SS+1d |  | Zenith | 8678634 |
| 7135 | 36900.37000.37200.37800.38700.44100.194000.1053900 | Formwork | 10d | 2026-12-22 | 2026-12-31 | 7133SS+2d |  | Zenith | 8678624 |
| 7136 | 36900.37000.37200.37800.38700.44100.194000.1054000 | Concreting | 1d | 2027-01-01 | 2027-01-01 | 7134FS+1d, 7135 |  | Zenith | 8678614 |
| 7137 | 36900.37000.37200.37800.38700.44100.194100 | **19th floor roof slab** | 13d | 2027-01-02 | 2027-01-14 |  | start no earlier than 2027-01-02 | Zenith | 8655504 |
| 7138 | 36900.37000.37200.37800.38700.44100.194100.1054100 | Reinforcement | 10d | 2027-01-02 | 2027-01-11 | 7136 |  | Zenith | 8678604 |
| 7139 | 36900.37000.37200.37800.38700.44100.194100.1054200 | Conduiting | 10d | 2027-01-03 | 2027-01-12 | 7138SS+1d |  | Zenith | 8678594 |
| 7140 | 36900.37000.37200.37800.38700.44100.194100.1054300 | Formwork | 10d | 2027-01-04 | 2027-01-13 | 7138SS+2d |  | Zenith | 8678584 |
| 7141 | 36900.37000.37200.37800.38700.44100.194100.1054400 | Concreting | 1d | 2027-01-14 | 2027-01-14 | 7139FS+1d, 7140 |  | Zenith | 8678574 |
| 7142 | 36900.37000.37200.37800.38700.44100.194200 | **20th floor roof slab** | 12d | 2027-01-15 | 2027-01-26 |  | start no earlier than 2027-01-15 | Zenith | 8655494 |
| 7143 | 36900.37000.37200.37800.38700.44100.194200.1054500 | Reinforcement | 9d | 2027-01-15 | 2027-01-23 | 7141 |  | Zenith | 8678564 |
| 7144 | 36900.37000.37200.37800.38700.44100.194200.1054600 | Conduiting | 9d | 2027-01-16 | 2027-01-24 | 7143SS+1d |  | Zenith | 8678554 |
| 7145 | 36900.37000.37200.37800.38700.44100.194200.1054700 | Formwork | 9d | 2027-01-17 | 2027-01-25 | 7143SS+2d |  | Zenith | 8678544 |
| 7146 | 36900.37000.37200.37800.38700.44100.194200.1054800 | Concreting | 1d | 2027-01-26 | 2027-01-26 | 7144FS+1d, 7145 |  | Zenith | 8678534 |
| 7147 | 36900.37000.37200.37800.38700.44100.194300 | **21st floor roof slab** | 12d | 2027-01-27 | 2027-02-07 |  | start no earlier than 2027-01-27 | Zenith | 8655474 |
| 7148 | 36900.37000.37200.37800.38700.44100.194300.1054900 | Reinforcement | 9d | 2027-01-27 | 2027-02-04 | 7146 |  | Zenith | 8678524 |
| 7149 | 36900.37000.37200.37800.38700.44100.194300.1055000 | Conduiting | 9d | 2027-01-28 | 2027-02-05 | 7148SS+1d |  | Zenith | 8678514 |
| 7150 | 36900.37000.37200.37800.38700.44100.194300.1055100 | Formwork | 9d | 2027-01-29 | 2027-02-06 | 7148SS+2d |  | Zenith | 8678504 |
| 7151 | 36900.37000.37200.37800.38700.44100.194300.1055200 | Concreting | 1d | 2027-02-07 | 2027-02-07 | 7149FS+1d, 7150 |  | Zenith | 8678494 |

| ID | WBS | Task | Duration | Start | Finish | Predecessors | Constraint | Calendar | Unique_Task_ID |
| --- | --- | --- | --- | --- | --- | --- | --- | --- | --- |
| 7152 | 36900.37000.37200.37800.38700.44100.194400 | **22nd floor roof slab** | 12d | 2027-02-08 | 2027-02-19 |  | start no earlier than 2027-02-08 | Zenith | 8655444 |
| 7153 | 36900.37000.37200.37800.38700.44100.194400.1055300 | Reinforcement | 9d | 2027-02-08 | 2027-02-16 | 7151 |  | Zenith | 8678484 |
| 7154 | 36900.37000.37200.37800.38700.44100.194400.1055400 | Conduiting | 9d | 2027-02-09 | 2027-02-17 | 7153SS+1d |  | Zenith | 8678474 |
| 7155 | 36900.37000.37200.37800.38700.44100.194400.1055500 | Formwork | 9d | 2027-02-10 | 2027-02-18 | 7153SS+2d |  | Zenith | 8678464 |
| 7156 | 36900.37000.37200.37800.38700.44100.194400.1055600 | Concreting | 1d | 2027-02-19 | 2027-02-19 | 7154FS+1d, 7155 |  | Zenith | 8678454 |
| 7157 | 36900.37000.37200.37800.38700.44100.194500 | **23rd floor roof slab** | 12d | 2027-02-20 | 2027-03-03 |  | start no earlier than 2027-02-20 | Zenith | 8655414 |
| 7158 | 36900.37000.37200.37800.38700.44100.194500.1055700 | Reinforcement | 9d | 2027-02-20 | 2027-02-28 | 7156 |  | Zenith | 8678444 |
| 7159 | 36900.37000.37200.37800.38700.44100.194500.1055800 | Conduiting | 9d | 2027-02-21 | 2027-03-01 | 7158SS+1d |  | Zenith | 8678434 |
| 7160 | 36900.37000.37200.37800.38700.44100.194500.1055900 | Formwork | 9d | 2027-02-22 | 2027-03-02 | 7158SS+2d |  | Zenith | 8678424 |
| 7161 | 36900.37000.37200.37800.38700.44100.194500.1056000 | Concreting | 1d | 2027-03-03 | 2027-03-03 | 7159FS+1d, 7160 |  | Zenith | 8678414 |
| 7162 | 36900.37000.37200.37800.38700.44100.194600 | **24th floor roof slab** | 12d | 2027-03-04 | 2027-03-15 |  | start no earlier than 2027-03-04 | Zenith | 8655404 |
| 7163 | 36900.37000.37200.37800.38700.44100.194600.1056100 | Reinforcement | 9d | 2027-03-04 | 2027-03-12 | 7161 |  | Zenith | 8678404 |
| 7164 | 36900.37000.37200.37800.38700.44100.194600.1056200 | Conduiting | 9d | 2027-03-05 | 2027-03-13 | 7163SS+1d |  | Zenith | 8678394 |
| 7165 | 36900.37000.37200.37800.38700.44100.194600.1056300 | Formwork | 9d | 2027-03-06 | 2027-03-14 | 7163SS+2d |  | Zenith | 8678384 |
| 7166 | 36900.37000.37200.37800.38700.44100.194600.1056400 | Concreting | 1d | 2027-03-15 | 2027-03-15 | 7164FS+1d, 7165 |  | Zenith | 8678374 |
| 7167 | 36900.37000.37200.37800.38700.44100.194700 | **25th floor roof slab** | 12d | 2027-03-16 | 2027-03-27 |  | start no earlier than 2027-03-16 | Zenith | 8655394 |
| 7168 | 36900.37000.37200.37800.38700.44100.194700.1056500 | Reinforcement | 9d | 2027-03-16 | 2027-03-24 | 7166 |  | Zenith | 8678364 |
| 7169 | 36900.37000.37200.37800.38700.44100.194700.1056600 | Conduiting | 9d | 2027-03-17 | 2027-03-25 | 7168SS+1d |  | Zenith | 8678354 |
| 7170 | 36900.37000.37200.37800.38700.44100.194700.1056700 | Formwork | 9d | 2027-03-18 | 2027-03-26 | 7168SS+2d |  | Zenith | 8678344 |
| 7171 | 36900.37000.37200.37800.38700.44100.194700.1056800 | Concreting | 1d | 2027-03-27 | 2027-03-27 | 7169FS+1d, 7170 |  | Zenith | 8678334 |
| 7172 | 36900.37000.37200.37800.38700.44100.194800 | **26th floor roof slab** | 12d | 2027-03-28 | 2027-04-08 |  | start no earlier than 2027-03-28 | Zenith | 8655384 |
| 7173 | 36900.37000.37200.37800.38700.44100.194800.1056900 | Reinforcement | 9d | 2027-03-28 | 2027-04-05 | 7171 |  | Zenith | 8678324 |
| 7174 | 36900.37000.37200.37800.38700.44100.194800.1057000 | Conduiting | 9d | 2027-03-29 | 2027-04-06 | 7173SS+1d |  | Zenith | 8678314 |
| 7175 | 36900.37000.37200.37800.38700.44100.194800.1057100 | Formwork | 9d | 2027-03-30 | 2027-04-07 | 7173SS+2d |  | Zenith | 8678304 |
| 7176 | 36900.37000.37200.37800.38700.44100.194800.1057200 | Concreting | 1d | 2027-04-08 | 2027-04-08 | 7174FS+1d, 7175 |  | Zenith | 8678294 |

| ID | WBS | Task | Duration | Start | Finish | Predecessors | Constraint | Calendar | Unique_Task_ID |
| --- | --- | --- | --- | --- | --- | --- | --- | --- | --- |
| 7177 | 36900.37000.37200.37800.38700.44100.194900 | **27th floor roof slab** | 12d | 2027-04-09 | 2027-04-20 |  | start no earlier than 2027-04-09 | Zenith | 8655374 |
| 7178 | 36900.37000.37200.37800.38700.44100.194900.1057300 | Reinforcement | 9d | 2027-04-09 | 2027-04-17 | 7176 |  | Zenith | 8678284 |
| 7179 | 36900.37000.37200.37800.38700.44100.194900.1057400 | Conduiting | 9d | 2027-04-10 | 2027-04-18 | 7178SS+1d |  | Zenith | 8678274 |
| 7180 | 36900.37000.37200.37800.38700.44100.194900.1057500 | Formwork | 9d | 2027-04-11 | 2027-04-19 | 7178SS+2d |  | Zenith | 8678264 |
| 7181 | 36900.37000.37200.37800.38700.44100.194900.1057600 | Concreting | 1d | 2027-04-20 | 2027-04-20 | 7179FS+1d, 7180 |  | Zenith | 8678254 |
| 7182 | 36900.37000.37200.37800.38700.44100.195000 | **28th floor roof slab** | 12d | 2027-04-21 | 2027-05-02 |  | start no earlier than 2027-04-21 | Zenith | 8655364 |
| 7183 | 36900.37000.37200.37800.38700.44100.195000.1057700 | Reinforcement | 9d | 2027-04-21 | 2027-04-29 | 7181 |  | Zenith | 8678244 |
| 7184 | 36900.37000.37200.37800.38700.44100.195000.1057800 | Conduiting | 9d | 2027-04-22 | 2027-04-30 | 7183SS+1d |  | Zenith | 8678234 |
| 7185 | 36900.37000.37200.37800.38700.44100.195000.1057900 | Formwork | 9d | 2027-04-23 | 2027-05-01 | 7183SS+2d |  | Zenith | 8678224 |
| 7186 | 36900.37000.37200.37800.38700.44100.195000.1058000 | Concreting | 1d | 2027-05-02 | 2027-05-02 | 7184FS+1d, 7185 |  | Zenith | 8678214 |
| 7187 | 36900.37000.37200.37800.38700.44100.195100 | **29th floor roof slab** | 12d | 2027-05-03 | 2027-05-14 |  | start no earlier than 2027-05-03 | Zenith | 8655354 |
| 7188 | 36900.37000.37200.37800.38700.44100.195100.1058100 | Reinforcement | 9d | 2027-05-03 | 2027-05-11 | 7186 |  | Zenith | 8678204 |
| 7189 | 36900.37000.37200.37800.38700.44100.195100.1058200 | Conduiting | 9d | 2027-05-04 | 2027-05-12 | 7188SS+1d |  | Zenith | 8678194 |
| 7190 | 36900.37000.37200.37800.38700.44100.195100.1058300 | Formwork | 9d | 2027-05-05 | 2027-05-13 | 7188SS+2d |  | Zenith | 8678184 |
| 7191 | 36900.37000.37200.37800.38700.44100.195100.1058400 | Concreting | 1d | 2027-05-14 | 2027-05-14 | 7189FS+1d, 7190 |  | Zenith | 8678174 |
| 7192 | 36900.37000.37200.37800.38700.44100.195200 | **30th floor roof slab** | 14d | 2027-05-15 | 2027-05-28 |  | start no earlier than 2027-05-15 | Zenith | 8655344 |
| 7193 | 36900.37000.37200.37800.38700.44100.195200.1058500 | Reinforcement | 11d | 2027-05-15 | 2027-05-25 | 7191 |  | Zenith | 8678164 |
| 7194 | 36900.37000.37200.37800.38700.44100.195200.1058600 | Conduiting | 11d | 2027-05-16 | 2027-05-26 | 7193SS+1d |  | Zenith | 8678154 |
| 7195 | 36900.37000.37200.37800.38700.44100.195200.1058700 | Formwork | 11d | 2027-05-17 | 2027-05-27 | 7193SS+2d |  | Zenith | 8678144 |
| 7196 | 36900.37000.37200.37800.38700.44100.195200.1058800 | Concreting | 1d | 2027-05-28 | 2027-05-28 | 7194FS+1d, 7195 |  | Zenith | 8678134 |
| 7197 | 36900.37000.37200.37800.38700.44100.195300 | **31st floor roof slab** | 14d | 2027-05-29 | 2027-06-11 |  | start no earlier than 2027-05-29 | Zenith | 8655334 |
| 7198 | 36900.37000.37200.37800.38700.44100.195300.1058900 | Reinforcement | 11d | 2027-05-29 | 2027-06-08 | 7196 |  | Zenith | 8678124 |
| 7199 | 36900.37000.37200.37800.38700.44100.195300.1059000 | Conduiting | 11d | 2027-05-30 | 2027-06-09 | 7198SS+1d |  | Zenith | 8678114 |
| 7200 | 36900.37000.37200.37800.38700.44100.195300.1059100 | Formwork | 11d | 2027-05-31 | 2027-06-10 | 7198SS+2d |  | Zenith | 8678104 |
| 7201 | 36900.37000.37200.37800.38700.44100.195300.1059200 | Concreting | 1d | 2027-06-11 | 2027-06-11 | 7199FS+1d, 7200 |  | Zenith | 8678094 |

| ID | WBS | Task | Duration | Start | Finish | Predecessors | Constraint | Calendar | Unique_Task_ID |
| --- | --- | --- | --- | --- | --- | --- | --- | --- | --- |
| 7202 | 36900.37000.37200.37800.38700.44100.195400 | **32nd floor roof slab** | 14d | 2027-06-12 | 2027-06-25 |  | start no earlier than 2027-06-12 | Zenith | 8655324 |
| 7203 | 36900.37000.37200.37800.38700.44100.195400.1059300 | Reinforcement | 11d | 2027-06-12 | 2027-06-22 | 7201 |  | Zenith | 8678084 |
| 7204 | 36900.37000.37200.37800.38700.44100.195400.1059400 | Conduiting | 11d | 2027-06-13 | 2027-06-23 | 7203SS+1d |  | Zenith | 8678074 |
| 7205 | 36900.37000.37200.37800.38700.44100.195400.1059500 | Formwork | 11d | 2027-06-14 | 2027-06-24 | 7203SS+2d |  | Zenith | 8678064 |
| 7206 | 36900.37000.37200.37800.38700.44100.195400.1059600 | Concreting | 1d | 2027-06-25 | 2027-06-25 | 7204FS+1d, 7205 |  | Zenith | 8678054 |
| 7207 | 36900.37000.37200.37800.38700.44100.195500 | **33rd floor roof slab** | 14d | 2027-06-26 | 2027-07-09 |  | start no earlier than 2027-06-26 | Zenith | 8655314 |
| 7208 | 36900.37000.37200.37800.38700.44100.195500.1059700 | Reinforcement | 11d | 2027-06-26 | 2027-07-06 | 7206 |  | Zenith | 8678044 |
| 7209 | 36900.37000.37200.37800.38700.44100.195500.1059800 | Conduiting | 11d | 2027-06-27 | 2027-07-07 | 7208SS+1d |  | Zenith | 8678034 |
| 7210 | 36900.37000.37200.37800.38700.44100.195500.1059900 | Formwork | 11d | 2027-06-28 | 2027-07-08 | 7208SS+2d |  | Zenith | 8678024 |
| 7211 | 36900.37000.37200.37800.38700.44100.195500.1060000 | Concreting | 1d | 2027-07-09 | 2027-07-09 | 7209FS+1d, 7210 |  | Zenith | 8678014 |
| 7212 | 36900.37000.37200.37800.38700.44100.195600 | **34th floor roof slab** | 14d | 2027-07-10 | 2027-07-23 |  | start no earlier than 2027-07-10 | Zenith | 8655304 |
| 7213 | 36900.37000.37200.37800.38700.44100.195600.1060100 | Reinforcement | 11d | 2027-07-10 | 2027-07-20 | 7211 |  | Zenith | 8678004 |
| 7214 | 36900.37000.37200.37800.38700.44100.195600.1060200 | Conduiting | 11d | 2027-07-11 | 2027-07-21 | 7213SS+1d |  | Zenith | 8677994 |
| 7215 | 36900.37000.37200.37800.38700.44100.195600.1060300 | Formwork | 11d | 2027-07-12 | 2027-07-22 | 7213SS+2d |  | Zenith | 8677984 |
| 7216 | 36900.37000.37200.37800.38700.44100.195600.1060400 | Concreting | 1d | 2027-07-23 | 2027-07-23 | 7214FS+1d, 7215 |  | Zenith | 8677974 |
| 7217 | 36900.37000.37200.37800.38700.44100.195700 | **35th floor roof slab** | 14d | 2027-07-24 | 2027-08-06 |  | start no earlier than 2027-07-24 | Zenith | 8655294 |
| 7218 | 36900.37000.37200.37800.38700.44100.195700.1060500 | Reinforcement | 11d | 2027-07-24 | 2027-08-03 | 7216 |  | Zenith | 8677964 |
| 7219 | 36900.37000.37200.37800.38700.44100.195700.1060600 | Conduiting | 11d | 2027-07-25 | 2027-08-04 | 7218SS+1d |  | Zenith | 8677954 |
| 7220 | 36900.37000.37200.37800.38700.44100.195700.1060700 | Formwork | 11d | 2027-07-26 | 2027-08-05 | 7218SS+2d |  | Zenith | 8677944 |
| 7221 | 36900.37000.37200.37800.38700.44100.195700.1060800 | Concreting | 1d | 2027-08-06 | 2027-08-06 | 7219FS+1d, 7220 |  | Zenith | 8677934 |
| 7222 | 36900.37000.37200.37800.38700.44100.195800 | **Terrace floor slab** | 23d | 2027-08-07 | 2027-08-29 |  | start no earlier than 2027-08-07 | Zenith | 8655284 |
| 7223 | 36900.37000.37200.37800.38700.44100.195800.1060900 | Reinforcement | 19d | 2027-08-07 | 2027-08-25 | 7221 |  | Zenith | 8677924 |
| 7224 | 36900.37000.37200.37800.38700.44100.195800.1061000 | Conduiting | 19d | 2027-08-08 | 2027-08-26 | 7223SS+1d |  | Zenith | 8677914 |
| 7225 | 36900.37000.37200.37800.38700.44100.195800.1061100 | Formwork | 19d | 2027-08-09 | 2027-08-27 | 7223SS+2d |  | Zenith | 8677904 |
| 7226 | 36900.37000.37200.37800.38700.44100.195800.1061200 | Concreting | 2d | 2027-08-28 | 2027-08-29 | 7224FS+1d, 7225 |  | Zenith | 8677894 |

| ID | WBS | Task | Duration | Start | Finish | Predecessors | Constraint | Calendar | Unique_Task_ID |
| --- | --- | --- | --- | --- | --- | --- | --- | --- | --- |
| 7227 | 36900.37000.37200.37800.38700.44100.195900 | **OHT, Mumty & Machine Room, Parapet** | 35d | 2027-08-30 | 2027-10-03 |  | start no earlier than 2027-08-30 | Zenith | 8655274 |
| 7228 | 36900.37000.37200.37800.38700.44100.195900.1061300 | Reinforcement | 20d | 2027-08-30 | 2027-09-18 | 7226 |  | Zenith | 8677884 |
| 7229 | 36900.37000.37200.37800.38700.44100.195900.1061400 | Flanges fixing & Conduiting | 10d | 2027-08-31 | 2027-09-09 | 7228SS+1d |  | Zenith | 8677874 |
| 7230 | 36900.37000.37200.37800.38700.44100.195900.1061500 | Formwork | 25d | 2027-09-05 | 2027-09-29 | 7228SS+6d |  | Zenith | 8677864 |
| 7231 | 36900.37000.37200.37800.38700.44100.195900.1061600 | Concreting | 4d | 2027-09-30 | 2027-10-03 | 7229FS+5d, 7230 |  | Zenith | 8677854 |
| 7232 | 36900.37000.37200.37800.38700.47000 | **Post Pour Activities** | 463.25d | 2026-05-21 | 2027-10-11 |  | start no earlier than 2026-05-21 | Zenith | 8648024 |
| 7233 | 36900.37000.37200.37800.38700.47000.849500 | 1st Floor | 7d | 2026-05-21 | 2026-05-27 | 7066 |  | Zenith | 8721464 |
| 7234 | 36900.37000.37200.37800.38700.47000.849600 | 2nd Floor | 7d | 2026-06-03 | 2026-06-10 | 7233FS+0.25d, 7071FS+0.25d |  | Zenith | 8721454 |
| 7235 | 36900.37000.37200.37800.38700.47000.849700 | 3rd Floor | 7d | 2026-06-16 | 2026-06-23 | 7234FS+0.25d, 7076FS+0.25d |  | Zenith | 8721444 |
| 7236 | 36900.37000.37200.37800.38700.47000.849800 | 4th Floor | 7d | 2026-06-29 | 2026-07-06 | 7235FS+0.25d, 7081FS+0.25d |  | Zenith | 8721434 |
| 7237 | 36900.37000.37200.37800.38700.47000.849900 | 5th Floor | 7d | 2026-07-12 | 2026-07-19 | 7236FS+0.25d, 7086FS+0.25d |  | Zenith | 8721424 |
| 7238 | 36900.37000.37200.37800.38700.47000.850000 | 6th Floor | 7d | 2026-07-25 | 2026-08-01 | 7237FS+0.25d, 7091FS+0.25d |  | Zenith | 8721414 |
| 7239 | 36900.37000.37200.37800.38700.47000.850100 | 7th Floor | 7d | 2026-08-07 | 2026-08-14 | 7238FS+0.25d, 7096FS+0.25d |  | Zenith | 8721404 |
| 7240 | 36900.37000.37200.37800.38700.47000.850200 | 8th Floor | 7d | 2026-08-20 | 2026-08-27 | 7239FS+0.25d, 7101FS+0.25d |  | Zenith | 8721394 |
| 7241 | 36900.37000.37200.37800.38700.47000.850300 | 9th Floor | 7d | 2026-09-02 | 2026-09-09 | 7240FS+0.25d, 7106FS+0.25d |  | Zenith | 8721384 |
| 7242 | 36900.37000.37200.37800.38700.47000.850400 | 10th Floor | 7d | 2026-09-15 | 2026-09-22 | 7241FS+0.25d, 7111FS+0.25d |  | Zenith | 8721374 |
| 7243 | 36900.37000.37200.37800.38700.47000.850500 | 11th Floor | 7d | 2026-09-28 | 2026-10-05 | 7242FS+0.25d, 7116FS+0.25d |  | Zenith | 8721364 |
| 7244 | 36900.37000.37200.37800.38700.47000.850600 | 12th Floor | 7d | 2026-10-11 | 2026-10-18 | 7243FS+0.25d, 7121FS+0.25d |  | Zenith | 8721354 |
| 7245 | 36900.37000.37200.37800.38700.47000.850700 | 13th Floor | 7d | 2026-10-24 | 2026-10-31 | 7244FS+0.25d, 7126FS+0.25d |  | Zenith | 8721344 |
| 7246 | 36900.37000.37200.37800.38700.47000.850800 | 14th Floor | 7d | 2026-12-20 | 2026-12-27 | 7245FS+0.25d, 7131FS+0.25d |  | Zenith | 8721334 |
| 7247 | 36900.37000.37200.37800.38700.47000.850900 | 15th Floor | 7d | 2027-01-02 | 2027-01-09 | 7246FS+0.25d, 7136FS+0.25d |  | Zenith | 8721324 |
| 7248 | 36900.37000.37200.37800.38700.47000.851000 | 16th Floor | 7d | 2027-01-15 | 2027-01-22 | 7247FS+0.25d, 7141FS+0.25d |  | Zenith | 8721314 |
| 7249 | 36900.37000.37200.37800.38700.47000.851100 | 17th Floor | 7d | 2027-01-27 | 2027-02-03 | 7248FS+0.25d, 7146FS+0.25d |  | Zenith | 8721304 |
| 7250 | 36900.37000.37200.37800.38700.47000.851200 | 18th Floor | 7d | 2027-02-08 | 2027-02-15 | 7249FS+0.25d, 7151FS+0.25d |  | Zenith | 8721294 |
| 7251 | 36900.37000.37200.37800.38700.47000.851300 | 19th Floor | 7d | 2027-02-20 | 2027-02-27 | 7250FS+0.25d, 7156FS+0.25d |  | Zenith | 8721284 |
| 7252 | 36900.37000.37200.37800.38700.47000.851400 | 20th Floor | 7d | 2027-03-04 | 2027-03-11 | 7251FS+0.25d, 7161FS+0.25d |  | Zenith | 8721274 |
| 7253 | 36900.37000.37200.37800.38700.47000.851500 | 21st Floor | 7d | 2027-03-16 | 2027-03-23 | 7252FS+0.25d, 7166FS+0.25d |  | Zenith | 8721264 |
| 7254 | 36900.37000.37200.37800.38700.47000.851600 | 22nd Floor | 7d | 2027-03-28 | 2027-04-04 | 7253FS+0.25d, 7171FS+0.25d |  | Zenith | 8721254 |
| 7255 | 36900.37000.37200.37800.38700.47000.851700 | 23rd Floor | 7d | 2027-04-09 | 2027-04-16 | 7254FS+0.25d, 7176FS+0.25d |  | Zenith | 8721244 |
| 7256 | 36900.37000.37200.37800.38700.47000.851800 | 24th Floor | 7d | 2027-04-21 | 2027-04-28 | 7255FS+0.25d, 7181FS+0.25d |  | Zenith | 8721234 |
| 7257 | 36900.37000.37200.37800.38700.47000.851900 | 25th Floor | 7d | 2027-05-03 | 2027-05-10 | 7256FS+0.25d, 7186FS+0.25d |  | Zenith | 8721224 |
| 7258 | 36900.37000.37200.37800.38700.47000.852000 | 26th Floor | 7d | 2027-05-15 | 2027-05-22 | 7257FS+0.25d, 7191FS+0.25d |  | Zenith | 8721214 |
| 7259 | 36900.37000.37200.37800.38700.47000.852100 | 27th Floor | 7d | 2027-05-29 | 2027-06-05 | 7258FS+0.25d, 7196FS+0.25d |  | Zenith | 8721204 |
| 7260 | 36900.37000.37200.37800.38700.47000.852200 | 28th Floor | 7d | 2027-06-12 | 2027-06-19 | 7259FS+0.25d, 7201FS+0.25d |  | Zenith | 8721194 |
| 7261 | 36900.37000.37200.37800.38700.47000.852300 | 29th Floor | 7d | 2027-06-26 | 2027-07-03 | 7260FS+0.25d, 7206FS+0.25d |  | Zenith | 8721184 |
| 7262 | 36900.37000.37200.37800.38700.47000.852400 | 30th Floor | 7d | 2027-07-10 | 2027-07-17 | 7261FS+0.25d, 7211FS+0.25d |  | Zenith | 8721174 |
| 7263 | 36900.37000.37200.37800.38700.47000.852500 | 31st Floor | 7d | 2027-07-24 | 2027-07-31 | 7262FS+0.25d, 7216FS+0.25d |  | Zenith | 8721164 |
| 7264 | 36900.37000.37200.37800.38700.47000.852600 | 32nd Flood | 7d | 2027-08-07 | 2027-08-14 | 7263FS+0.25d, 7221FS+0.25d |  | Zenith | 8721154 |
| 7265 | 36900.37000.37200.37800.38700.47000.852700 | 33rd Floor | 7d | 2027-08-30 | 2027-09-06 | 7264FS+0.25d, 7226FS+0.25d |  | Zenith | 8721144 |
| 7266 | 36900.37000.37200.37800.38700.47000.852800 | 34th Floor | 7d | 2027-09-06 | 2027-09-13 | 7265 |  | Zenith | 8721134 |
| 7267 | 36900.37000.37200.37800.38700.47000.852900 | 35th Floor | 7d | 2027-09-13 | 2027-09-20 | 7266 |  | Zenith | 8721124 |
| 7268 | 36900.37000.37200.37800.38700.47000.853000 | 36th Floor | 7d | 2027-09-20 | 2027-09-27 | 7267 |  | Zenith | 8721114 |
| 7269 | 36900.37000.37200.37800.38700.47000.853100 | Terrace | 7d | 2027-09-27 | 2027-10-04 | 7268 |  | Zenith | 8721104 |
| 7270 | 36900.37000.37200.37800.38700.47000.853200 | Mumty & Machine Room | 7d | 2027-10-04 | 2027-10-11 | 7269 |  | Zenith | 8721094 |

| ID | WBS | Task | Duration | Start | Finish | Predecessors | Constraint | Calendar | Unique_Task_ID |
| --- | --- | --- | --- | --- | --- | --- | --- | --- | --- |
| 7271 | 36900.37000.37200.37800.38700.40200 | **Finishing work** | 857d | 2026-05-28 | 2029-02-12 |  | start no earlier than 2026-05-28 | Zenith | 8647744 |
| 7272 | 36900.37000.37200.37800.38700.40200.41100 | **Flat finishing** | 857d | 2026-05-28 | 2029-02-12 |  | start no earlier than 2026-05-28 | Zenith | 8647834 |
| 7273 | 36900.37000.37200.37800.38700.40200.41100.107600 | **1st Floor roof** | 287d | 2026-05-28 | 2027-04-24 |  | start no earlier than 2026-05-28 | Zenith | 8650944 |
| 7274 | 36900.37000.37200.37800.38700.40200.41100.107600.1673300 | Block Work | 12d | 2026-05-28 | 2026-06-08 | 7233 |  | Zenith | 8716764 |
| 7275 | 36900.37000.37200.37800.38700.40200.41100.107600.1673400 | Fire sprinkler pipe fixing | 6d | 2026-06-09 | 2026-06-14 | 7274 |  | Zenith | 8716774 |
| 7276 | 36900.37000.37200.37800.38700.40200.41100.107600.1673500 | Internal Plumbing Works | 10d | 2026-06-09 | 2026-06-18 | 7274 |  | Zenith | 8716784 |
| 7277 | 36900.37000.37200.37800.38700.40200.41100.107600.1673600 | Waterproofing | 14d | 2026-06-19 | 2026-07-02 | 7276 |  | Zenith | 8716794 |
| 7278 | 36900.37000.37200.37800.38700.40200.41100.107600.1673700 | Internal Plaster | 14d | 2026-06-24 | 2026-07-07 | 7276, 7277FF+5d |  | Zenith | 8716804 |
| 7279 | 36900.37000.37200.37800.38700.40200.41100.107600.1673800 | IPS flooring work | 10d | 2026-07-08 | 2026-07-17 | 7278 |  | Zenith | 8716814 |
| 7280 | 36900.37000.37200.37800.38700.40200.41100.107600.1673900 | Toilet dado work | 10d | 2026-07-08 | 2026-07-17 | 7277, 7278 |  | Zenith | 8716824 |
| 7281 | 36900.37000.37200.37800.38700.40200.41100.107600.1674000 | Toilet flooring work | 7d | 2026-07-18 | 2026-07-24 | 7280 |  | Zenith | 8716834 |
| 7282 | 36900.37000.37200.37800.38700.40200.41100.107600.1674100 | False Cieling panel fixing | 10d | 2026-07-25 | 2026-08-03 | 7281 |  | Zenith | 8716844 |
| 7283 | 36900.37000.37200.37800.38700.40200.41100.107600.1674200 | Living dinning flooring | 14d | 2026-07-25 | 2026-08-07 | 7281 |  | Zenith | 8716854 |
| 7284 | 36900.37000.37200.37800.38700.40200.41100.107600.1674300 | Putty primer coat | 12d | 2027-01-20 | 2027-01-31 | 7285FS+60d |  | Zenith | 8716864 |
| 7285 | 36900.37000.37200.37800.38700.40200.41100.107600.1674400 | Aluminium door-window fixing | 15d | 2026-09-22 | 2026-10-06 | 7279FS+45d, 7283FS+45d |  | Zenith | 8716874 |
| 7286 | 36900.37000.37200.37800.38700.40200.41100.107600.1674500 | Door shutter fixing (Pre Hung) | 8d | 2027-03-03 | 2027-03-10 | 7284FS+30d |  | Zenith | 8716884 |
| 7287 | 36900.37000.37200.37800.38700.40200.41100.107600.1674600 | Electrical wiring work | 12d | 2026-12-21 | 2027-01-01 | 7285FS+30d |  | Zenith | 8716894 |
| 7288 | 36900.37000.37200.37800.38700.40200.41100.107600.1674700 | Painting 1st coat | 15d | 2027-04-10 | 2027-04-24 | 7286FS+30d |  | Zenith | 8716904 |
| 7289 | 36900.37000.37200.37800.38700.40200.41100.107700 | **2nd floor roof** | 288.75d | 2026-06-10 | 2027-05-09 |  | start no earlier than 2026-06-10 | Zenith | 8650954 |
| 7290 | 36900.37000.37200.37800.38700.40200.41100.107700.1674800 | Block Work | 10d | 2026-06-10 | 2026-06-20 | 7234, 7274 |  | Zenith | 8716914 |
| 7291 | 36900.37000.37200.37800.38700.40200.41100.107700.1674900 | Fire sprinkler pipe fixing | 6d | 2026-06-20 | 2026-06-26 | 7275, 7290 |  | Zenith | 8716924 |
| 7292 | 36900.37000.37200.37800.38700.40200.41100.107700.1675000 | Internal Plumbing Works | 10d | 2026-06-20 | 2026-06-30 | 7276, 7290 |  | Zenith | 8716934 |
| 7293 | 36900.37000.37200.37800.38700.40200.41100.107700.1675100 | Waterproofing | 14d | 2026-07-03 | 2026-07-16 | 7277, 7292 |  | Zenith | 8716944 |
| 7294 | 36900.37000.37200.37800.38700.40200.41100.107700.1675200 | Internal Plaster | 14d | 2026-07-08 | 2026-07-21 | 7278, 7292, 7293FF+5d |  | Zenith | 8716954 |
| 7295 | 36900.37000.37200.37800.38700.40200.41100.107700.1675300 | IPS flooring work | 10d | 2026-07-22 | 2026-07-31 | 7279, 7294 |  | Zenith | 8716964 |
| 7296 | 36900.37000.37200.37800.38700.40200.41100.107700.1675400 | Toilet dado work | 10d | 2026-07-22 | 2026-07-31 | 7280, 7293, 7294 |  | Zenith | 8716974 |
| 7297 | 36900.37000.37200.37800.38700.40200.41100.107700.1675500 | Toilet flooring work | 7d | 2026-08-01 | 2026-08-07 | 7281, 7296 |  | Zenith | 8716984 |
| 7298 | 36900.37000.37200.37800.38700.40200.41100.107700.1675600 | False Cieling panel fixing | 10d | 2026-08-08 | 2026-08-17 | 7282, 7297 |  | Zenith | 8716994 |
| 7299 | 36900.37000.37200.37800.38700.40200.41100.107700.1675700 | Living dinning flooring | 14d | 2026-08-08 | 2026-08-21 | 7283, 7297 |  | Zenith | 8717004 |
| 7300 | 36900.37000.37200.37800.38700.40200.41100.107700.1675800 | Putty primer coat | 12d | 2027-02-01 | 2027-02-12 | 7284, 7299 |  | Zenith | 8717014 |
| 7301 | 36900.37000.37200.37800.38700.40200.41100.107700.1675900 | Aluminium door-window fixing | 15d | 2026-10-07 | 2026-10-21 | 7285, 7295, 7299 |  | Zenith | 8717024 |
| 7302 | 36900.37000.37200.37800.38700.40200.41100.107700.1676000 | Door shutter fixing (Pre Hung) | 8d | 2027-03-11 | 2027-03-18 | 7286, 7300 |  | Zenith | 8717034 |
| 7303 | 36900.37000.37200.37800.38700.40200.41100.107700.1676100 | Electrical wiring work | 12d | 2027-03-19 | 2027-03-30 | 7287, 7302 |  | Zenith | 8717044 |
| 7304 | 36900.37000.37200.37800.38700.40200.41100.107700.1676200 | Painting 1st coat | 15d | 2027-04-25 | 2027-05-09 | 7288, 7303 |  | Zenith | 8717054 |

| ID | WBS | Task | Duration | Start | Finish | Predecessors | Constraint | Calendar | Unique_Task_ID |
| --- | --- | --- | --- | --- | --- | --- | --- | --- | --- |
| 7305 | 36900.37000.37200.37800.38700.40200.41100.107800 | **3rd floor roof** | 290.75d | 2026-06-23 | 2027-05-24 |  | start no earlier than 2026-06-23 | Zenith | 8650964 |
| 7306 | 36900.37000.37200.37800.38700.40200.41100.107800.1676300 | Block Work | 10d | 2026-06-23 | 2026-07-03 | 7235, 7290 |  | Zenith | 8717064 |
| 7307 | 36900.37000.37200.37800.38700.40200.41100.107800.1676400 | Fire sprinkler pipe fixing | 6d | 2026-07-03 | 2026-07-09 | 7291, 7306 |  | Zenith | 8717074 |
| 7308 | 36900.37000.37200.37800.38700.40200.41100.107800.1676500 | Internal Plumbing Works | 10d | 2026-07-03 | 2026-07-13 | 7292, 7306 |  | Zenith | 8717084 |
| 7309 | 36900.37000.37200.37800.38700.40200.41100.107800.1676600 | Waterproofing | 14d | 2026-07-17 | 2026-07-30 | 7293, 7308 |  | Zenith | 8717094 |
| 7310 | 36900.37000.37200.37800.38700.40200.41100.107800.1676700 | Internal Plaster | 14d | 2026-07-22 | 2026-08-04 | 7294, 7308, 7309FF+5d |  | Zenith | 8717104 |
| 7311 | 36900.37000.37200.37800.38700.40200.41100.107800.1676800 | IPS flooring work | 10d | 2026-08-05 | 2026-08-14 | 7295, 7310 |  | Zenith | 8717114 |
| 7312 | 36900.37000.37200.37800.38700.40200.41100.107800.1676900 | Toilet dado work | 10d | 2026-08-05 | 2026-08-14 | 7296, 7309, 7310 |  | Zenith | 8717124 |
| 7313 | 36900.37000.37200.37800.38700.40200.41100.107800.1677000 | Toilet flooring work | 7d | 2026-08-15 | 2026-08-21 | 7297, 7312 |  | Zenith | 8717134 |
| 7314 | 36900.37000.37200.37800.38700.40200.41100.107800.1677100 | False Cieling panel fixing | 10d | 2026-08-22 | 2026-08-31 | 7298, 7313 |  | Zenith | 8717144 |
| 7315 | 36900.37000.37200.37800.38700.40200.41100.107800.1677200 | Living dinning flooring | 14d | 2026-08-22 | 2026-09-04 | 7299, 7313 |  | Zenith | 8717154 |
| 7316 | 36900.37000.37200.37800.38700.40200.41100.107800.1677300 | Putty primer coat | 12d | 2027-02-13 | 2027-02-24 | 7300, 7315 |  | Zenith | 8717164 |
| 7317 | 36900.37000.37200.37800.38700.40200.41100.107800.1677400 | Aluminium door-window fixing | 15d | 2026-10-22 | 2026-12-20 | 7301, 7311, 7315 |  | Zenith | 8717174 |
| 7318 | 36900.37000.37200.37800.38700.40200.41100.107800.1677500 | Door shutter fixing (Pre Hung) | 8d | 2027-03-19 | 2027-03-26 | 7302, 7316 |  | Zenith | 8717184 |
| 7319 | 36900.37000.37200.37800.38700.40200.41100.107800.1677600 | Electrical wiring work | 12d | 2027-03-31 | 2027-04-11 | 7303, 7318 |  | Zenith | 8717194 |
| 7320 | 36900.37000.37200.37800.38700.40200.41100.107800.1677700 | Painting 1st coat | 15d | 2027-05-10 | 2027-05-24 | 7304, 7319 |  | Zenith | 8717204 |
| 7321 | 36900.37000.37200.37800.38700.40200.41100.107900 | **4th floor roof** | 292.75d | 2026-07-06 | 2027-06-08 |  | start no earlier than 2026-07-06 | Zenith | 8650974 |
| 7322 | 36900.37000.37200.37800.38700.40200.41100.107900.1677800 | Block Work | 10d | 2026-07-06 | 2026-07-16 | 7236, 7306 |  | Zenith | 8717214 |
| 7323 | 36900.37000.37200.37800.38700.40200.41100.107900.1677900 | Fire sprinkler pipe fixing | 6d | 2026-07-16 | 2026-07-22 | 7307, 7322 |  | Zenith | 8717224 |
| 7324 | 36900.37000.37200.37800.38700.40200.41100.107900.1678000 | Internal Plumbing Works | 10d | 2026-07-16 | 2026-07-26 | 7308, 7322 |  | Zenith | 8717234 |
| 7325 | 36900.37000.37200.37800.38700.40200.41100.107900.1678100 | Waterproofing | 14d | 2026-07-31 | 2026-08-13 | 7309, 7324 |  | Zenith | 8717244 |
| 7326 | 36900.37000.37200.37800.38700.40200.41100.107900.1678200 | Internal Plaster | 14d | 2026-08-05 | 2026-08-18 | 7310, 7324, 7325FF+5d |  | Zenith | 8717254 |
| 7327 | 36900.37000.37200.37800.38700.40200.41100.107900.1678300 | IPS flooring work | 10d | 2026-08-19 | 2026-08-28 | 7311, 7326 |  | Zenith | 8717264 |
| 7328 | 36900.37000.37200.37800.38700.40200.41100.107900.1678400 | Toilet dado work | 10d | 2026-08-19 | 2026-08-28 | 7312, 7325, 7326 |  | Zenith | 8717274 |
| 7329 | 36900.37000.37200.37800.38700.40200.41100.107900.1678500 | Toilet flooring work | 7d | 2026-08-29 | 2026-09-04 | 7313, 7328 |  | Zenith | 8717284 |
| 7330 | 36900.37000.37200.37800.38700.40200.41100.107900.1678600 | False Cieling panel fixing | 10d | 2026-09-05 | 2026-09-14 | 7314, 7329 |  | Zenith | 8717294 |
| 7331 | 36900.37000.37200.37800.38700.40200.41100.107900.1678700 | Living dinning flooring | 14d | 2026-09-05 | 2026-09-18 | 7315, 7329 |  | Zenith | 8717304 |
| 7332 | 36900.37000.37200.37800.38700.40200.41100.107900.1678800 | Putty primer coat | 12d | 2027-02-25 | 2027-03-08 | 7316, 7331 |  | Zenith | 8717314 |
| 7333 | 36900.37000.37200.37800.38700.40200.41100.107900.1678900 | Aluminium door-window fixing | 15d | 2026-12-21 | 2027-01-04 | 7317, 7327, 7331 |  | Zenith | 8717324 |
| 7334 | 36900.37000.37200.37800.38700.40200.41100.107900.1679000 | Door shutter fixing (Pre Hung) | 8d | 2027-03-27 | 2027-04-03 | 7318, 7332 |  | Zenith | 8717334 |
| 7335 | 36900.37000.37200.37800.38700.40200.41100.107900.1679100 | Electrical wiring work | 12d | 2027-04-12 | 2027-04-23 | 7319, 7334 |  | Zenith | 8717344 |
| 7336 | 36900.37000.37200.37800.38700.40200.41100.107900.1679200 | Painting 1st coat | 15d | 2027-05-25 | 2027-06-08 | 7320, 7335 |  | Zenith | 8717354 |

| ID | WBS | Task | Duration | Start | Finish | Predecessors | Constraint | Calendar | Unique_Task_ID |
| --- | --- | --- | --- | --- | --- | --- | --- | --- | --- |
| 7337 | 36900.37000.37200.37800.38700.40200.41100.108000 | **5th floor roof** | 294.75d | 2026-07-19 | 2027-06-23 |  | start no earlier than 2026-07-19 | Zenith | 8650984 |
| 7338 | 36900.37000.37200.37800.38700.40200.41100.108000.1679300 | Block Work | 10d | 2026-07-19 | 2026-07-29 | 7237, 7322 |  | Zenith | 8717364 |
| 7339 | 36900.37000.37200.37800.38700.40200.41100.108000.1679400 | Fire sprinkler pipe fixing | 6d | 2026-07-29 | 2026-08-04 | 7323, 7338 |  | Zenith | 8717374 |
| 7340 | 36900.37000.37200.37800.38700.40200.41100.108000.1679500 | Internal Plumbing Works | 10d | 2026-07-29 | 2026-08-08 | 7324, 7338 |  | Zenith | 8717384 |
| 7341 | 36900.37000.37200.37800.38700.40200.41100.108000.1679600 | Waterproofing | 14d | 2026-08-14 | 2026-08-27 | 7325, 7340 |  | Zenith | 8717394 |
| 7342 | 36900.37000.37200.37800.38700.40200.41100.108000.1679700 | Internal Plaster | 14d | 2026-08-19 | 2026-09-01 | 7326, 7340, 7341FF+5d |  | Zenith | 8717404 |
| 7343 | 36900.37000.37200.37800.38700.40200.41100.108000.1679800 | IPS flooring work | 10d | 2026-09-02 | 2026-09-11 | 7327, 7342 |  | Zenith | 8717414 |
| 7344 | 36900.37000.37200.37800.38700.40200.41100.108000.1679900 | Toilet dado work | 10d | 2026-09-02 | 2026-09-11 | 7328, 7341, 7342 |  | Zenith | 8717424 |
| 7345 | 36900.37000.37200.37800.38700.40200.41100.108000.1680000 | Toilet flooring work | 7d | 2026-09-12 | 2026-09-18 | 7329, 7344 |  | Zenith | 8717434 |
| 7346 | 36900.37000.37200.37800.38700.40200.41100.108000.1680100 | False Cieling panel fixing | 10d | 2026-09-19 | 2026-09-28 | 7330, 7345 |  | Zenith | 8717444 |
| 7347 | 36900.37000.37200.37800.38700.40200.41100.108000.1680200 | Living dinning flooring | 14d | 2026-09-19 | 2026-10-02 | 7331, 7345 |  | Zenith | 8717454 |
| 7348 | 36900.37000.37200.37800.38700.40200.41100.108000.1680300 | Putty primer coat | 12d | 2027-03-09 | 2027-03-20 | 7332, 7347 |  | Zenith | 8717464 |
| 7349 | 36900.37000.37200.37800.38700.40200.41100.108000.1680400 | Aluminium door-window fixing | 15d | 2027-01-05 | 2027-01-19 | 7333, 7343, 7347 |  | Zenith | 8717474 |
| 7350 | 36900.37000.37200.37800.38700.40200.41100.108000.1680500 | Door shutter fixing (Pre Hung) | 8d | 2027-04-04 | 2027-04-11 | 7334, 7348 |  | Zenith | 8717484 |
| 7351 | 36900.37000.37200.37800.38700.40200.41100.108000.1680600 | Electrical wiring work | 12d | 2027-04-24 | 2027-05-05 | 7335, 7350 |  | Zenith | 8717494 |
| 7352 | 36900.37000.37200.37800.38700.40200.41100.108000.1680700 | Painting 1st coat | 15d | 2027-06-09 | 2027-06-23 | 7336, 7351 |  | Zenith | 8717504 |
| 7353 | 36900.37000.37200.37800.38700.40200.41100.108100 | **6th floor roof** | 296.75d | 2026-08-01 | 2027-07-08 |  | start no earlier than 2026-08-01 | Zenith | 8650994 |
| 7354 | 36900.37000.37200.37800.38700.40200.41100.108100.1680800 | Block Work | 10d | 2026-08-01 | 2026-08-11 | 7238, 7338 |  | Zenith | 8717514 |
| 7355 | 36900.37000.37200.37800.38700.40200.41100.108100.1680900 | Fire sprinkler pipe fixing | 6d | 2026-08-11 | 2026-08-17 | 7339, 7354 |  | Zenith | 8717524 |
| 7356 | 36900.37000.37200.37800.38700.40200.41100.108100.1681000 | Internal Plumbing Works | 10d | 2026-08-11 | 2026-08-21 | 7340, 7354 |  | Zenith | 8717534 |
| 7357 | 36900.37000.37200.37800.38700.40200.41100.108100.1681100 | Waterproofing | 14d | 2026-08-28 | 2026-09-10 | 7341, 7356 |  | Zenith | 8717544 |
| 7358 | 36900.37000.37200.37800.38700.40200.41100.108100.1681200 | Internal Plaster | 14d | 2026-09-02 | 2026-09-15 | 7342, 7356, 7357FF+5d |  | Zenith | 8717554 |
| 7359 | 36900.37000.37200.37800.38700.40200.41100.108100.1681300 | IPS flooring work | 10d | 2026-09-16 | 2026-09-25 | 7343, 7358 |  | Zenith | 8717564 |
| 7360 | 36900.37000.37200.37800.38700.40200.41100.108100.1681400 | Toilet dado work | 10d | 2026-09-16 | 2026-09-25 | 7344, 7357, 7358 |  | Zenith | 8717574 |
| 7361 | 36900.37000.37200.37800.38700.40200.41100.108100.1681500 | Toilet flooring work | 7d | 2026-09-26 | 2026-10-02 | 7345, 7360 |  | Zenith | 8717584 |
| 7362 | 36900.37000.37200.37800.38700.40200.41100.108100.1681600 | False Cieling panel fixing | 10d | 2026-10-03 | 2026-10-12 | 7346, 7361 |  | Zenith | 8717594 |
| 7363 | 36900.37000.37200.37800.38700.40200.41100.108100.1681700 | Living dinning flooring | 14d | 2026-10-03 | 2026-10-16 | 7347, 7361 |  | Zenith | 8717604 |
| 7364 | 36900.37000.37200.37800.38700.40200.41100.108100.1681800 | Putty primer coat | 12d | 2027-03-21 | 2027-04-01 | 7348, 7363 |  | Zenith | 8717614 |
| 7365 | 36900.37000.37200.37800.38700.40200.41100.108100.1681900 | Aluminium door-window fixing | 15d | 2027-01-20 | 2027-02-03 | 7349, 7359, 7363 |  | Zenith | 8717624 |
| 7366 | 36900.37000.37200.37800.38700.40200.41100.108100.1682000 | Door shutter fixing (Pre Hung) | 8d | 2027-04-12 | 2027-04-19 | 7350, 7364 |  | Zenith | 8717634 |
| 7367 | 36900.37000.37200.37800.38700.40200.41100.108100.1682100 | Electrical wiring work | 12d | 2027-05-06 | 2027-05-17 | 7351, 7366 |  | Zenith | 8717644 |
| 7368 | 36900.37000.37200.37800.38700.40200.41100.108100.1682200 | Painting 1st coat | 15d | 2027-06-24 | 2027-07-08 | 7352, 7367 |  | Zenith | 8717654 |

| ID | WBS | Task | Duration | Start | Finish | Predecessors | Constraint | Calendar | Unique_Task_ID |
| --- | --- | --- | --- | --- | --- | --- | --- | --- | --- |
| 7369 | 36900.37000.37200.37800.38700.40200.41100.108200 | **7th floor roof** | 298.75d | 2026-08-14 | 2027-07-23 |  | start no earlier than 2026-08-14 | Zenith | 8651004 |
| 7370 | 36900.37000.37200.37800.38700.40200.41100.108200.1682300 | Block Work | 10d | 2026-08-14 | 2026-08-24 | 7239, 7354 |  | Zenith | 8717664 |
| 7371 | 36900.37000.37200.37800.38700.40200.41100.108200.1682400 | Fire sprinkler pipe fixing | 6d | 2026-08-24 | 2026-08-30 | 7355, 7370 |  | Zenith | 8717674 |
| 7372 | 36900.37000.37200.37800.38700.40200.41100.108200.1682500 | Internal Plumbing Works | 10d | 2026-08-24 | 2026-09-03 | 7356, 7370 |  | Zenith | 8717684 |
| 7373 | 36900.37000.37200.37800.38700.40200.41100.108200.1682600 | Waterproofing | 14d | 2026-09-11 | 2026-09-24 | 7357, 7372 |  | Zenith | 8717694 |
| 7374 | 36900.37000.37200.37800.38700.40200.41100.108200.1682700 | Internal Plaster | 14d | 2026-09-16 | 2026-09-29 | 7358, 7372, 7373FF+5d |  | Zenith | 8717704 |
| 7375 | 36900.37000.37200.37800.38700.40200.41100.108200.1682800 | IPS flooring work | 10d | 2026-09-30 | 2026-10-09 | 7359, 7374 |  | Zenith | 8717714 |
| 7376 | 36900.37000.37200.37800.38700.40200.41100.108200.1682900 | Toilet dado work | 10d | 2026-09-30 | 2026-10-09 | 7360, 7373, 7374 |  | Zenith | 8717724 |
| 7377 | 36900.37000.37200.37800.38700.40200.41100.108200.1683000 | Toilet flooring work | 7d | 2026-10-10 | 2026-10-16 | 7361, 7376 |  | Zenith | 8717734 |
| 7378 | 36900.37000.37200.37800.38700.40200.41100.108200.1683100 | False Cieling panel fixing | 10d | 2026-10-17 | 2026-10-26 | 7362, 7377 |  | Zenith | 8717744 |
| 7379 | 36900.37000.37200.37800.38700.40200.41100.108200.1683200 | Living dinning flooring | 14d | 2026-10-17 | 2026-10-30 | 7363, 7377 |  | Zenith | 8717754 |
| 7380 | 36900.37000.37200.37800.38700.40200.41100.108200.1683300 | Putty primer coat | 12d | 2027-04-02 | 2027-04-13 | 7364, 7379 |  | Zenith | 8717764 |
| 7381 | 36900.37000.37200.37800.38700.40200.41100.108200.1683400 | Aluminium door-window fixing | 15d | 2027-02-04 | 2027-02-18 | 7365, 7375, 7379 |  | Zenith | 8717774 |
| 7382 | 36900.37000.37200.37800.38700.40200.41100.108200.1683500 | Door shutter fixing (Pre Hung) | 8d | 2027-04-20 | 2027-04-27 | 7366, 7380 |  | Zenith | 8717784 |
| 7383 | 36900.37000.37200.37800.38700.40200.41100.108200.1683600 | Electrical wiring work | 12d | 2027-05-18 | 2027-05-29 | 7367, 7382 |  | Zenith | 8717794 |
| 7384 | 36900.37000.37200.37800.38700.40200.41100.108200.1683700 | Painting 1st coat | 15d | 2027-07-09 | 2027-07-23 | 7368, 7383 |  | Zenith | 8717804 |
| 7385 | 36900.37000.37200.37800.38700.40200.41100.108300 | **8th floor roof** | 300.75d | 2026-08-27 | 2027-08-07 |  | start no earlier than 2026-08-27 | Zenith | 8651014 |
| 7386 | 36900.37000.37200.37800.38700.40200.41100.108300.1683800 | Block Work | 10d | 2026-08-27 | 2026-09-06 | 7240, 7370 |  | Zenith | 8717814 |
| 7387 | 36900.37000.37200.37800.38700.40200.41100.108300.1683900 | Fire sprinkler pipe fixing | 6d | 2026-09-06 | 2026-09-12 | 7371, 7386 |  | Zenith | 8717824 |
| 7388 | 36900.37000.37200.37800.38700.40200.41100.108300.1684000 | Internal Plumbing Works | 10d | 2026-09-06 | 2026-09-16 | 7372, 7386 |  | Zenith | 8717834 |
| 7389 | 36900.37000.37200.37800.38700.40200.41100.108300.1684100 | Waterproofing | 14d | 2026-09-25 | 2026-10-08 | 7373, 7388 |  | Zenith | 8717844 |
| 7390 | 36900.37000.37200.37800.38700.40200.41100.108300.1684200 | Internal Plaster | 14d | 2026-09-30 | 2026-10-13 | 7374, 7388, 7389FF+5d |  | Zenith | 8717854 |
| 7391 | 36900.37000.37200.37800.38700.40200.41100.108300.1684300 | IPS flooring work | 10d | 2026-10-14 | 2026-10-23 | 7375, 7390 |  | Zenith | 8717864 |
| 7392 | 36900.37000.37200.37800.38700.40200.41100.108300.1684400 | Toilet dado work | 10d | 2026-10-14 | 2026-10-23 | 7376, 7389, 7390 |  | Zenith | 8717874 |
| 7393 | 36900.37000.37200.37800.38700.40200.41100.108300.1684500 | Toilet flooring work | 7d | 2026-10-24 | 2026-10-30 | 7377, 7392 |  | Zenith | 8717884 |
| 7394 | 36900.37000.37200.37800.38700.40200.41100.108300.1684600 | False Cieling panel fixing | 10d | 2026-10-31 | 2026-12-24 | 7378, 7393 |  | Zenith | 8717894 |
| 7395 | 36900.37000.37200.37800.38700.40200.41100.108300.1684700 | Living dinning flooring | 14d | 2026-10-31 | 2026-12-28 | 7379, 7393 |  | Zenith | 8717904 |
| 7396 | 36900.37000.37200.37800.38700.40200.41100.108300.1684800 | Putty primer coat | 12d | 2027-04-14 | 2027-04-25 | 7380, 7395 |  | Zenith | 8717914 |
| 7397 | 36900.37000.37200.37800.38700.40200.41100.108300.1684900 | Aluminium door-window fixing | 15d | 2027-02-19 | 2027-03-05 | 7381, 7391, 7395 |  | Zenith | 8717924 |
| 7398 | 36900.37000.37200.37800.38700.40200.41100.108300.1685000 | Door shutter fixing (Pre Hung) | 8d | 2027-04-28 | 2027-05-05 | 7382, 7396 |  | Zenith | 8717934 |
| 7399 | 36900.37000.37200.37800.38700.40200.41100.108300.1685100 | Electrical wiring work | 12d | 2027-05-30 | 2027-06-10 | 7383, 7398 |  | Zenith | 8717944 |
| 7400 | 36900.37000.37200.37800.38700.40200.41100.108300.1685200 | Painting 1st coat | 15d | 2027-07-24 | 2027-08-07 | 7384, 7399 |  | Zenith | 8717954 |

| ID | WBS | Task | Duration | Start | Finish | Predecessors | Constraint | Calendar | Unique_Task_ID |
| --- | --- | --- | --- | --- | --- | --- | --- | --- | --- |
| 7401 | 36900.37000.37200.37800.38700.40200.41100.108400 | **9th floor roof** | 302.75d | 2026-09-09 | 2027-08-22 |  | start no earlier than 2026-09-09 | Zenith | 8651024 |
| 7402 | 36900.37000.37200.37800.38700.40200.41100.108400.1685300 | Block Work | 10d | 2026-09-09 | 2026-09-19 | 7241, 7386 |  | Zenith | 8717964 |
| 7403 | 36900.37000.37200.37800.38700.40200.41100.108400.1685400 | Fire sprinkler pipe fixing | 6d | 2026-09-19 | 2026-09-25 | 7387, 7402 |  | Zenith | 8717974 |
| 7404 | 36900.37000.37200.37800.38700.40200.41100.108400.1685500 | Internal Plumbing Works | 10d | 2026-09-19 | 2026-09-29 | 7388, 7402 |  | Zenith | 8717984 |
| 7405 | 36900.37000.37200.37800.38700.40200.41100.108400.1685600 | Waterproofing | 14d | 2026-10-09 | 2026-10-22 | 7389, 7404 |  | Zenith | 8717994 |
| 7406 | 36900.37000.37200.37800.38700.40200.41100.108400.1685700 | Internal Plaster | 14d | 2026-10-14 | 2026-10-27 | 7390, 7404, 7405FF+5d |  | Zenith | 8718004 |
| 7407 | 36900.37000.37200.37800.38700.40200.41100.108400.1685800 | IPS flooring work | 10d | 2026-10-28 | 2026-12-21 | 7391, 7406 |  | Zenith | 8718014 |
| 7408 | 36900.37000.37200.37800.38700.40200.41100.108400.1685900 | Toilet dado work | 10d | 2026-10-28 | 2026-12-21 | 7392, 7405, 7406 |  | Zenith | 8718024 |
| 7409 | 36900.37000.37200.37800.38700.40200.41100.108400.1686000 | Toilet flooring work | 7d | 2026-12-22 | 2026-12-28 | 7393, 7408 |  | Zenith | 8718034 |
| 7410 | 36900.37000.37200.37800.38700.40200.41100.108400.1686100 | False Cieling panel fixing | 10d | 2026-12-29 | 2027-01-07 | 7394, 7409 |  | Zenith | 8718044 |
| 7411 | 36900.37000.37200.37800.38700.40200.41100.108400.1686200 | Living dinning flooring | 14d | 2026-12-29 | 2027-01-11 | 7395, 7409 |  | Zenith | 8718054 |
| 7412 | 36900.37000.37200.37800.38700.40200.41100.108400.1686300 | Putty primer coat | 12d | 2027-04-26 | 2027-05-07 | 7396, 7411 |  | Zenith | 8718064 |
| 7413 | 36900.37000.37200.37800.38700.40200.41100.108400.1686400 | Aluminium door-window fixing | 15d | 2027-03-06 | 2027-03-20 | 7397, 7407, 7411 |  | Zenith | 8718074 |
| 7414 | 36900.37000.37200.37800.38700.40200.41100.108400.1686500 | Door shutter fixing (Pre Hung) | 8d | 2027-05-08 | 2027-05-15 | 7398, 7412 |  | Zenith | 8718084 |
| 7415 | 36900.37000.37200.37800.38700.40200.41100.108400.1686600 | Electrical wiring work | 12d | 2027-06-11 | 2027-06-22 | 7399, 7414 |  | Zenith | 8718094 |
| 7416 | 36900.37000.37200.37800.38700.40200.41100.108400.1686700 | Painting 1st coat | 15d | 2027-08-08 | 2027-08-22 | 7400, 7415 |  | Zenith | 8718104 |
| 7417 | 36900.37000.37200.37800.38700.40200.41100.108500 | **10th floor roof** | 304.75d | 2026-09-22 | 2027-09-06 |  | start no earlier than 2026-09-22 | Zenith | 8651034 |
| 7418 | 36900.37000.37200.37800.38700.40200.41100.108500.1686800 | Block Work | 10d | 2026-09-22 | 2026-10-02 | 7242, 7402 |  | Zenith | 8718114 |
| 7419 | 36900.37000.37200.37800.38700.40200.41100.108500.1686900 | Fire sprinkler pipe fixing | 6d | 2026-10-02 | 2026-10-08 | 7403, 7418 |  | Zenith | 8718124 |
| 7420 | 36900.37000.37200.37800.38700.40200.41100.108500.1687000 | Internal Plumbing Works | 10d | 2026-10-02 | 2026-10-12 | 7404, 7418 |  | Zenith | 8718134 |
| 7421 | 36900.37000.37200.37800.38700.40200.41100.108500.1687100 | Waterproofing | 14d | 2026-10-23 | 2026-12-20 | 7405, 7420 |  | Zenith | 8718144 |
| 7422 | 36900.37000.37200.37800.38700.40200.41100.108500.1687200 | Internal Plaster | 14d | 2026-10-28 | 2026-12-25 | 7406, 7420, 7421FF+5d |  | Zenith | 8718154 |
| 7423 | 36900.37000.37200.37800.38700.40200.41100.108500.1687300 | IPS flooring work | 10d | 2026-12-26 | 2027-01-04 | 7407, 7422 |  | Zenith | 8718164 |
| 7424 | 36900.37000.37200.37800.38700.40200.41100.108500.1687400 | Toilet dado work | 10d | 2026-12-26 | 2027-01-04 | 7408, 7421, 7422 |  | Zenith | 8718174 |
| 7425 | 36900.37000.37200.37800.38700.40200.41100.108500.1687500 | Toilet flooring work | 7d | 2027-01-05 | 2027-01-11 | 7409, 7424 |  | Zenith | 8718184 |
| 7426 | 36900.37000.37200.37800.38700.40200.41100.108500.1687600 | False Cieling panel fixing | 10d | 2027-01-12 | 2027-01-21 | 7410, 7425 |  | Zenith | 8718194 |
| 7427 | 36900.37000.37200.37800.38700.40200.41100.108500.1687700 | Living dinning flooring | 14d | 2027-01-12 | 2027-01-25 | 7411, 7425 |  | Zenith | 8718204 |
| 7428 | 36900.37000.37200.37800.38700.40200.41100.108500.1687800 | Putty primer coat | 12d | 2027-05-08 | 2027-05-19 | 7412, 7427 |  | Zenith | 8718214 |
| 7429 | 36900.37000.37200.37800.38700.40200.41100.108500.1687900 | Aluminium door-window fixing | 15d | 2027-03-21 | 2027-04-04 | 7413, 7423, 7427 |  | Zenith | 8718224 |
| 7430 | 36900.37000.37200.37800.38700.40200.41100.108500.1688000 | Door shutter fixing (Pre Hung) | 8d | 2027-05-20 | 2027-05-27 | 7414, 7428 |  | Zenith | 8718234 |
| 7431 | 36900.37000.37200.37800.38700.40200.41100.108500.1688100 | Electrical wiring work | 12d | 2027-06-23 | 2027-07-04 | 7415, 7430 |  | Zenith | 8718244 |
| 7432 | 36900.37000.37200.37800.38700.40200.41100.108500.1688200 | Painting 1st coat | 15d | 2027-08-23 | 2027-09-06 | 7416, 7431 |  | Zenith | 8718254 |

| ID | WBS | Task | Duration | Start | Finish | Predecessors | Constraint | Calendar | Unique_Task_ID |
| --- | --- | --- | --- | --- | --- | --- | --- | --- | --- |
| 7433 | 36900.37000.37200.37800.38700.40200.41100.108600 | **11th floor roof** | 306.75d | 2026-10-05 | 2027-09-21 |  | start no earlier than 2026-10-05 | Zenith | 8651044 |
| 7434 | 36900.37000.37200.37800.38700.40200.41100.108600.1688300 | Block Work | 10d | 2026-10-05 | 2026-10-15 | 7243, 7418 |  | Zenith | 8718264 |
| 7435 | 36900.37000.37200.37800.38700.40200.41100.108600.1688400 | Fire sprinkler pipe fixing | 6d | 2026-10-15 | 2026-10-21 | 7419, 7434 |  | Zenith | 8718274 |
| 7436 | 36900.37000.37200.37800.38700.40200.41100.108600.1688500 | Internal Plumbing Works | 10d | 2026-10-15 | 2026-10-25 | 7420, 7434 |  | Zenith | 8718284 |
| 7437 | 36900.37000.37200.37800.38700.40200.41100.108600.1688600 | Waterproofing | 14d | 2026-12-21 | 2027-01-03 | 7421, 7436 |  | Zenith | 8718294 |
| 7438 | 36900.37000.37200.37800.38700.40200.41100.108600.1688700 | Internal Plaster | 14d | 2026-12-26 | 2027-01-08 | 7422, 7436, 7437FF+5d |  | Zenith | 8718304 |
| 7439 | 36900.37000.37200.37800.38700.40200.41100.108600.1688800 | IPS flooring work | 10d | 2027-01-09 | 2027-01-18 | 7423, 7438 |  | Zenith | 8718314 |
| 7440 | 36900.37000.37200.37800.38700.40200.41100.108600.1688900 | Toilet dado work | 10d | 2027-01-09 | 2027-01-18 | 7424, 7437, 7438 |  | Zenith | 8718324 |
| 7441 | 36900.37000.37200.37800.38700.40200.41100.108600.1689000 | Toilet flooring work | 7d | 2027-01-19 | 2027-01-25 | 7425, 7440 |  | Zenith | 8718334 |
| 7442 | 36900.37000.37200.37800.38700.40200.41100.108600.1689100 | False Cieling panel fixing | 10d | 2027-01-26 | 2027-02-04 | 7426, 7441 |  | Zenith | 8718344 |
| 7443 | 36900.37000.37200.37800.38700.40200.41100.108600.1689200 | Living dinning flooring | 14d | 2027-01-26 | 2027-02-08 | 7427, 7441 |  | Zenith | 8718354 |
| 7444 | 36900.37000.37200.37800.38700.40200.41100.108600.1689300 | Putty primer coat | 12d | 2027-05-20 | 2027-05-31 | 7428, 7443 |  | Zenith | 8718364 |
| 7445 | 36900.37000.37200.37800.38700.40200.41100.108600.1689400 | Aluminium door-window fixing | 15d | 2027-04-05 | 2027-04-19 | 7429, 7439, 7443 |  | Zenith | 8718374 |
| 7446 | 36900.37000.37200.37800.38700.40200.41100.108600.1689500 | Door shutter fixing (Pre Hung) | 8d | 2027-06-01 | 2027-06-08 | 7430, 7444 |  | Zenith | 8718384 |
| 7447 | 36900.37000.37200.37800.38700.40200.41100.108600.1689600 | Electrical wiring work | 12d | 2027-07-05 | 2027-07-16 | 7431, 7446 |  | Zenith | 8718394 |
| 7448 | 36900.37000.37200.37800.38700.40200.41100.108600.1689700 | Painting 1st coat | 15d | 2027-09-07 | 2027-09-21 | 7432, 7447 |  | Zenith | 8718404 |
| 7449 | 36900.37000.37200.37800.38700.40200.41100.108700 | **12th floor roof** | 308.75d | 2026-10-18 | 2027-10-06 |  | start no earlier than 2026-10-18 | Zenith | 8651054 |
| 7450 | 36900.37000.37200.37800.38700.40200.41100.108700.1689800 | Block Work | 10d | 2026-10-18 | 2026-10-28 | 7244, 7434 |  | Zenith | 8718414 |
| 7451 | 36900.37000.37200.37800.38700.40200.41100.108700.1689900 | Fire sprinkler pipe fixing | 6d | 2026-10-28 | 2026-12-18 | 7435, 7450 |  | Zenith | 8718424 |
| 7452 | 36900.37000.37200.37800.38700.40200.41100.108700.1690000 | Internal Plumbing Works | 10d | 2026-10-28 | 2026-12-22 | 7436, 7450 |  | Zenith | 8718434 |
| 7453 | 36900.37000.37200.37800.38700.40200.41100.108700.1690100 | Waterproofing | 14d | 2027-01-04 | 2027-01-17 | 7437, 7452 |  | Zenith | 8718444 |
| 7454 | 36900.37000.37200.37800.38700.40200.41100.108700.1690200 | Internal Plaster | 14d | 2027-01-09 | 2027-01-22 | 7438, 7452, 7453FF+5d |  | Zenith | 8718454 |
| 7455 | 36900.37000.37200.37800.38700.40200.41100.108700.1690300 | IPS flooring work | 10d | 2027-01-23 | 2027-02-01 | 7439, 7454 |  | Zenith | 8718464 |
| 7456 | 36900.37000.37200.37800.38700.40200.41100.108700.1690400 | Toilet dado work | 10d | 2027-01-23 | 2027-02-01 | 7440, 7453, 7454 |  | Zenith | 8718474 |
| 7457 | 36900.37000.37200.37800.38700.40200.41100.108700.1690500 | Toilet flooring work | 7d | 2027-02-02 | 2027-02-08 | 7441, 7456 |  | Zenith | 8718484 |
| 7458 | 36900.37000.37200.37800.38700.40200.41100.108700.1690600 | False Cieling panel fixing | 10d | 2027-02-09 | 2027-02-18 | 7442, 7457 |  | Zenith | 8718494 |
| 7459 | 36900.37000.37200.37800.38700.40200.41100.108700.1690700 | Living dinning flooring | 14d | 2027-02-09 | 2027-02-22 | 7443, 7457 |  | Zenith | 8718504 |
| 7460 | 36900.37000.37200.37800.38700.40200.41100.108700.1690800 | Putty primer coat | 12d | 2027-06-01 | 2027-06-12 | 7444, 7459 |  | Zenith | 8718514 |
| 7461 | 36900.37000.37200.37800.38700.40200.41100.108700.1690900 | Aluminium door-window fixing | 15d | 2027-04-20 | 2027-05-04 | 7445, 7455, 7459 |  | Zenith | 8718524 |
| 7462 | 36900.37000.37200.37800.38700.40200.41100.108700.1691000 | Door shutter fixing (Pre Hung) | 8d | 2027-06-13 | 2027-06-20 | 7446, 7460 |  | Zenith | 8718534 |
| 7463 | 36900.37000.37200.37800.38700.40200.41100.108700.1691100 | Electrical wiring work | 12d | 2027-07-17 | 2027-07-28 | 7447, 7462 |  | Zenith | 8718544 |
| 7464 | 36900.37000.37200.37800.38700.40200.41100.108700.1691200 | Painting 1st coat | 15d | 2027-09-22 | 2027-10-06 | 7448, 7463 |  | Zenith | 8718554 |

| ID | WBS | Task | Duration | Start | Finish | Predecessors | Constraint | Calendar | Unique_Task_ID |
| --- | --- | --- | --- | --- | --- | --- | --- | --- | --- |
| 7465 | 36900.37000.37200.37800.38700.40200.41100.108800 | **13th floor roof** | 310.75d | 2026-10-31 | 2027-10-21 |  | start no earlier than 2026-10-31 | Zenith | 8651064 |
| 7466 | 36900.37000.37200.37800.38700.40200.41100.108800.1691300 | Block Work | 10d | 2026-10-31 | 2026-12-25 | 7245, 7450 |  | Zenith | 8718564 |
| 7467 | 36900.37000.37200.37800.38700.40200.41100.108800.1691400 | Fire sprinkler pipe fixing | 6d | 2026-12-25 | 2026-12-31 | 7451, 7466 |  | Zenith | 8718574 |
| 7468 | 36900.37000.37200.37800.38700.40200.41100.108800.1691500 | Internal Plumbing Works | 10d | 2026-12-25 | 2027-01-04 | 7452, 7466 |  | Zenith | 8718584 |
| 7469 | 36900.37000.37200.37800.38700.40200.41100.108800.1691600 | Waterproofing | 14d | 2027-01-18 | 2027-01-31 | 7453, 7468 |  | Zenith | 8718594 |
| 7470 | 36900.37000.37200.37800.38700.40200.41100.108800.1691700 | Internal Plaster | 14d | 2027-01-23 | 2027-02-05 | 7454, 7468, 7469FF+5d |  | Zenith | 8718604 |
| 7471 | 36900.37000.37200.37800.38700.40200.41100.108800.1691800 | IPS flooring work | 10d | 2027-02-06 | 2027-02-15 | 7455, 7470 |  | Zenith | 8718614 |
| 7472 | 36900.37000.37200.37800.38700.40200.41100.108800.1691900 | Toilet dado work | 10d | 2027-02-06 | 2027-02-15 | 7456, 7469, 7470 |  | Zenith | 8718624 |
| 7473 | 36900.37000.37200.37800.38700.40200.41100.108800.1692000 | Toilet flooring work | 7d | 2027-02-16 | 2027-02-22 | 7457, 7472 |  | Zenith | 8718634 |
| 7474 | 36900.37000.37200.37800.38700.40200.41100.108800.1692100 | False Cieling panel fixing | 10d | 2027-02-23 | 2027-03-04 | 7458, 7473 |  | Zenith | 8718644 |
| 7475 | 36900.37000.37200.37800.38700.40200.41100.108800.1692200 | Living dinning flooring | 16d | 2027-02-23 | 2027-03-10 | 7459, 7473 |  | Zenith | 8718654 |
| 7476 | 36900.37000.37200.37800.38700.40200.41100.108800.1692300 | Putty primer coat | 12d | 2027-06-13 | 2027-06-24 | 7460, 7475 |  | Zenith | 8718664 |
| 7477 | 36900.37000.37200.37800.38700.40200.41100.108800.1692400 | Aluminium door-window fixing | 15d | 2027-05-05 | 2027-05-19 | 7461, 7471, 7475 |  | Zenith | 8718674 |
| 7478 | 36900.37000.37200.37800.38700.40200.41100.108800.1692500 | Door shutter fixing (Pre Hung) | 8d | 2027-06-25 | 2027-07-02 | 7462, 7476 |  | Zenith | 8718684 |
| 7479 | 36900.37000.37200.37800.38700.40200.41100.108800.1692600 | Electrical wiring work | 12d | 2027-07-29 | 2027-08-09 | 7463, 7478 |  | Zenith | 8718694 |
| 7480 | 36900.37000.37200.37800.38700.40200.41100.108800.1692700 | Painting 1st coat | 15d | 2027-10-07 | 2027-10-21 | 7464, 7479 |  | Zenith | 8718704 |
| 7481 | 36900.37000.37200.37800.38700.40200.41100.108900 | **14th floor roof** | 313.75d | 2026-12-27 | 2027-12-20 |  | start no earlier than 2026-12-27 | Zenith | 8651074 |
| 7482 | 36900.37000.37200.37800.38700.40200.41100.108900.1692800 | Block Work | 10d | 2026-12-27 | 2027-01-06 | 7246, 7466 |  | Zenith | 8718714 |
| 7483 | 36900.37000.37200.37800.38700.40200.41100.108900.1692900 | Fire sprinkler pipe fixing | 6d | 2027-01-06 | 2027-01-12 | 7467, 7482 |  | Zenith | 8718724 |
| 7484 | 36900.37000.37200.37800.38700.40200.41100.108900.1693000 | Internal Plumbing Works | 10d | 2027-01-06 | 2027-01-16 | 7468, 7482 |  | Zenith | 8718734 |
| 7485 | 36900.37000.37200.37800.38700.40200.41100.108900.1693100 | Waterproofing | 14d | 2027-02-01 | 2027-02-14 | 7469, 7484 |  | Zenith | 8718744 |
| 7486 | 36900.37000.37200.37800.38700.40200.41100.108900.1693200 | Internal Plaster | 14d | 2027-02-06 | 2027-02-19 | 7470, 7484, 7485FF+5d |  | Zenith | 8718754 |
| 7487 | 36900.37000.37200.37800.38700.40200.41100.108900.1693300 | IPS flooring work | 10d | 2027-02-20 | 2027-03-01 | 7471, 7486 |  | Zenith | 8718764 |
| 7488 | 36900.37000.37200.37800.38700.40200.41100.108900.1693400 | Toilet dado work | 10d | 2027-02-20 | 2027-03-01 | 7472, 7485, 7486 |  | Zenith | 8718774 |
| 7489 | 36900.37000.37200.37800.38700.40200.41100.108900.1693500 | Toilet flooring work | 7d | 2027-03-02 | 2027-03-08 | 7473, 7488 |  | Zenith | 8718784 |
| 7490 | 36900.37000.37200.37800.38700.40200.41100.108900.1693600 | False Cieling panel fixing | 10d | 2027-03-09 | 2027-03-18 | 7474, 7489 |  | Zenith | 8718794 |
| 7491 | 36900.37000.37200.37800.38700.40200.41100.108900.1693700 | Living dinning flooring | 14d | 2027-03-11 | 2027-03-24 | 7475, 7489 |  | Zenith | 8718804 |
| 7492 | 36900.37000.37200.37800.38700.40200.41100.108900.1693800 | Putty primer coat | 12d | 2027-06-25 | 2027-07-06 | 7476, 7491 |  | Zenith | 8718814 |
| 7493 | 36900.37000.37200.37800.38700.40200.41100.108900.1693900 | Aluminium door-window fixing | 15d | 2027-05-20 | 2027-06-03 | 7477, 7487, 7491 |  | Zenith | 8718824 |
| 7494 | 36900.37000.37200.37800.38700.40200.41100.108900.1694000 | Door shutter fixing (Pre Hung) | 8d | 2027-07-07 | 2027-07-14 | 7478, 7492 |  | Zenith | 8718834 |
| 7495 | 36900.37000.37200.37800.38700.40200.41100.108900.1694100 | Electrical wiring work | 12d | 2027-08-10 | 2027-08-21 | 7479, 7494 |  | Zenith | 8718844 |
| 7496 | 36900.37000.37200.37800.38700.40200.41100.108900.1694200 | Painting 1st coat | 15d | 2027-10-22 | 2027-12-20 | 7480, 7495 |  | Zenith | 8718854 |

| ID | WBS | Task | Duration | Start | Finish | Predecessors | Constraint | Calendar | Unique_Task_ID |
| --- | --- | --- | --- | --- | --- | --- | --- | --- | --- |
| 7497 | 36900.37000.37200.37800.38700.40200.41100.109000 | **15th floor roof** | 315.75d | 2027-01-09 | 2028-01-04 |  | start no earlier than 2027-01-09 | Zenith | 8651084 |
| 7498 | 36900.37000.37200.37800.38700.40200.41100.109000.1694300 | Block Work | 10d | 2027-01-09 | 2027-01-19 | 7247, 7482 |  | Zenith | 8718864 |
| 7499 | 36900.37000.37200.37800.38700.40200.41100.109000.1694400 | Fire sprinkler pipe fixing | 6d | 2027-01-19 | 2027-01-25 | 7483, 7498 |  | Zenith | 8718874 |
| 7500 | 36900.37000.37200.37800.38700.40200.41100.109000.1694500 | Internal Plumbing Works | 10d | 2027-01-19 | 2027-01-29 | 7484, 7498 |  | Zenith | 8718884 |
| 7501 | 36900.37000.37200.37800.38700.40200.41100.109000.1694600 | Waterproofing | 14d | 2027-02-15 | 2027-02-28 | 7485, 7500 |  | Zenith | 8718894 |
| 7502 | 36900.37000.37200.37800.38700.40200.41100.109000.1694700 | Internal Plaster | 14d | 2027-02-20 | 2027-03-05 | 7486, 7500, 7501FF+5d |  | Zenith | 8718904 |
| 7503 | 36900.37000.37200.37800.38700.40200.41100.109000.1694800 | IPS flooring work | 10d | 2027-03-06 | 2027-03-15 | 7487, 7502 |  | Zenith | 8718914 |
| 7504 | 36900.37000.37200.37800.38700.40200.41100.109000.1694900 | Toilet dado work | 10d | 2027-03-06 | 2027-03-15 | 7488, 7501, 7502 |  | Zenith | 8718924 |
| 7505 | 36900.37000.37200.37800.38700.40200.41100.109000.1695000 | Toilet flooring work | 7d | 2027-03-16 | 2027-03-22 | 7489, 7504 |  | Zenith | 8718934 |
| 7506 | 36900.37000.37200.37800.38700.40200.41100.109000.1695100 | False Cieling panel fixing | 10d | 2027-03-23 | 2027-04-01 | 7490, 7505 |  | Zenith | 8718944 |
| 7507 | 36900.37000.37200.37800.38700.40200.41100.109000.1695200 | Living dinning flooring | 16d | 2027-03-25 | 2027-04-09 | 7491, 7505 |  | Zenith | 8718954 |
| 7508 | 36900.37000.37200.37800.38700.40200.41100.109000.1695300 | Aluminium door-window fixing | 12d | 2027-06-04 | 2027-06-15 | 7493, 7503, 7507 |  | Zenith | 8718964 |
| 7509 | 36900.37000.37200.37800.38700.40200.41100.109000.1695400 | Putty primer coat | 15d | 2027-07-07 | 2027-07-21 | 7492, 7507 |  | Zenith | 8718974 |
| 7510 | 36900.37000.37200.37800.38700.40200.41100.109000.1695500 | Door shutter fixing (Pre Hung) | 8d | 2027-07-22 | 2027-07-29 | 7494, 7509 |  | Zenith | 8718984 |
| 7511 | 36900.37000.37200.37800.38700.40200.41100.109000.1695600 | Electrical wiring work | 12d | 2027-08-22 | 2027-09-02 | 7495, 7510 |  | Zenith | 8718994 |
| 7512 | 36900.37000.37200.37800.38700.40200.41100.109000.1695700 | Painting 1st coat | 15d | 2027-12-21 | 2028-01-04 | 7496, 7511 |  | Zenith | 8719004 |
| 7513 | 36900.37000.37200.37800.38700.40200.41100.109100 | **16th floor roof** | 317.75d | 2027-01-22 | 2028-01-19 |  | start no earlier than 2027-01-22 | Zenith | 8651094 |
| 7514 | 36900.37000.37200.37800.38700.40200.41100.109100.1695800 | Block Work | 10d | 2027-01-22 | 2027-02-01 | 7248, 7498 |  | Zenith | 8719014 |
| 7515 | 36900.37000.37200.37800.38700.40200.41100.109100.1695900 | Fire sprinkler pipe fixing | 6d | 2027-02-01 | 2027-02-07 | 7499, 7514 |  | Zenith | 8719024 |
| 7516 | 36900.37000.37200.37800.38700.40200.41100.109100.1696000 | Internal Plumbing Works | 10d | 2027-02-01 | 2027-02-11 | 7500, 7514 |  | Zenith | 8719034 |
| 7517 | 36900.37000.37200.37800.38700.40200.41100.109100.1696100 | Waterproofing | 14d | 2027-03-01 | 2027-03-14 | 7501, 7516 |  | Zenith | 8719044 |
| 7518 | 36900.37000.37200.37800.38700.40200.41100.109100.1696200 | Internal Plaster | 14d | 2027-03-06 | 2027-03-19 | 7502, 7516, 7517FF+5d |  | Zenith | 8719054 |
| 7519 | 36900.37000.37200.37800.38700.40200.41100.109100.1696300 | IPS flooring work | 10d | 2027-03-20 | 2027-03-29 | 7503, 7518 |  | Zenith | 8719064 |
| 7520 | 36900.37000.37200.37800.38700.40200.41100.109100.1696400 | Toilet dado work | 10d | 2027-03-20 | 2027-03-29 | 7504, 7517, 7518 |  | Zenith | 8719074 |
| 7521 | 36900.37000.37200.37800.38700.40200.41100.109100.1696500 | Toilet flooring work | 7d | 2027-03-30 | 2027-04-05 | 7505, 7520 |  | Zenith | 8719084 |
| 7522 | 36900.37000.37200.37800.38700.40200.41100.109100.1696600 | False Cieling panel fixing | 10d | 2027-04-06 | 2027-04-15 | 7506, 7521 |  | Zenith | 8719094 |
| 7523 | 36900.37000.37200.37800.38700.40200.41100.109100.1696700 | Living dinning flooring | 14d | 2027-04-10 | 2027-04-23 | 7507, 7521 |  | Zenith | 8719104 |
| 7524 | 36900.37000.37200.37800.38700.40200.41100.109100.1696800 | Putty primer coat | 12d | 2027-07-22 | 2027-08-02 | 7509, 7523 |  | Zenith | 8719114 |
| 7525 | 36900.37000.37200.37800.38700.40200.41100.109100.1696900 | Aluminium door-window fixing | 15d | 2027-06-16 | 2027-06-30 | 7508, 7519, 7523 |  | Zenith | 8719124 |
| 7526 | 36900.37000.37200.37800.38700.40200.41100.109100.1697000 | Door shutter fixing (Pre Hung) | 8d | 2027-08-03 | 2027-08-10 | 7510, 7524 |  | Zenith | 8719134 |
| 7527 | 36900.37000.37200.37800.38700.40200.41100.109100.1697100 | Electrical wiring work | 12d | 2027-09-03 | 2027-09-14 | 7511, 7526 |  | Zenith | 8719144 |
| 7528 | 36900.37000.37200.37800.38700.40200.41100.109100.1697200 | Painting 1st coat | 15d | 2028-01-05 | 2028-01-19 | 7512, 7527 |  | Zenith | 8719154 |

| ID | WBS | Task | Duration | Start | Finish | Predecessors | Constraint | Calendar | Unique_Task_ID |
| --- | --- | --- | --- | --- | --- | --- | --- | --- | --- |
| 7529 | 36900.37000.37200.37800.38700.40200.41100.109200 | **17th floor roof** | 320.75d | 2027-02-03 | 2028-02-03 |  | start no earlier than 2027-02-03 | Zenith | 8651104 |
| 7530 | 36900.37000.37200.37800.38700.40200.41100.109200.1697300 | Block Work | 10d | 2027-02-03 | 2027-02-13 | 7249, 7514 |  | Zenith | 8719164 |
| 7531 | 36900.37000.37200.37800.38700.40200.41100.109200.1697400 | Fire sprinkler pipe fixing | 6d | 2027-02-13 | 2027-02-19 | 7515, 7530 |  | Zenith | 8719174 |
| 7532 | 36900.37000.37200.37800.38700.40200.41100.109200.1697500 | Internal Plumbing Works | 10d | 2027-02-13 | 2027-02-23 | 7516, 7530 |  | Zenith | 8719184 |
| 7533 | 36900.37000.37200.37800.38700.40200.41100.109200.1697600 | Waterproofing | 14d | 2027-03-15 | 2027-03-28 | 7517, 7532 |  | Zenith | 8719194 |
| 7534 | 36900.37000.37200.37800.38700.40200.41100.109200.1697700 | Internal Plaster | 14d | 2027-03-20 | 2027-04-02 | 7518, 7532, 7533FF+5d |  | Zenith | 8719204 |
| 7535 | 36900.37000.37200.37800.38700.40200.41100.109200.1697800 | IPS flooring work | 10d | 2027-04-03 | 2027-04-12 | 7519, 7534 |  | Zenith | 8719214 |
| 7536 | 36900.37000.37200.37800.38700.40200.41100.109200.1697900 | Toilet dado work | 10d | 2027-04-03 | 2027-04-12 | 7520, 7533, 7534 |  | Zenith | 8719224 |
| 7537 | 36900.37000.37200.37800.38700.40200.41100.109200.1698000 | Toilet flooring work | 7d | 2027-04-13 | 2027-04-19 | 7521, 7536 |  | Zenith | 8719234 |
| 7538 | 36900.37000.37200.37800.38700.40200.41100.109200.1698100 | False Cieling panel fixing | 10d | 2027-04-20 | 2027-04-29 | 7522, 7537 |  | Zenith | 8719244 |
| 7539 | 36900.37000.37200.37800.38700.40200.41100.109200.1698200 | Living dinning flooring | 14d | 2027-04-24 | 2027-05-07 | 7523, 7537 |  | Zenith | 8719254 |
| 7540 | 36900.37000.37200.37800.38700.40200.41100.109200.1698300 | Putty primer coat | 12d | 2027-08-03 | 2027-08-14 | 7524, 7539 |  | Zenith | 8719264 |
| 7541 | 36900.37000.37200.37800.38700.40200.41100.109200.1698400 | Aluminium door-window fixing | 15d | 2027-07-01 | 2027-07-15 | 7525, 7535, 7539 |  | Zenith | 8719274 |
| 7542 | 36900.37000.37200.37800.38700.40200.41100.109200.1698500 | Door shutter fixing (Pre Hung) | 8d | 2027-08-15 | 2027-08-22 | 7526, 7540 |  | Zenith | 8719284 |
| 7543 | 36900.37000.37200.37800.38700.40200.41100.109200.1698600 | Electrical wiring work | 12d | 2027-09-15 | 2027-09-26 | 7527, 7542 |  | Zenith | 8719294 |
| 7544 | 36900.37000.37200.37800.38700.40200.41100.109200.1698700 | Painting 1st coat | 15d | 2028-01-20 | 2028-02-03 | 7528, 7543 |  | Zenith | 8719304 |
| 7545 | 36900.37000.37200.37800.38700.40200.41100.109300 | **18th floor roof** | 323.75d | 2027-02-15 | 2028-02-18 |  | start no earlier than 2027-02-15 | Zenith | 8651114 |
| 7546 | 36900.37000.37200.37800.38700.40200.41100.109300.1698800 | Block Work | 10d | 2027-02-15 | 2027-02-25 | 7250, 7530 |  | Zenith | 8719314 |
| 7547 | 36900.37000.37200.37800.38700.40200.41100.109300.1698900 | Fire sprinkler pipe fixing | 6d | 2027-02-25 | 2027-03-03 | 7531, 7546 |  | Zenith | 8719324 |
| 7548 | 36900.37000.37200.37800.38700.40200.41100.109300.1699000 | Internal Plumbing Works | 10d | 2027-02-25 | 2027-03-07 | 7532, 7546 |  | Zenith | 8719334 |
| 7549 | 36900.37000.37200.37800.38700.40200.41100.109300.1699100 | Waterproofing | 14d | 2027-03-29 | 2027-04-11 | 7533, 7548 |  | Zenith | 8719344 |
| 7550 | 36900.37000.37200.37800.38700.40200.41100.109300.1699200 | Internal Plaster | 14d | 2027-04-03 | 2027-04-16 | 7534, 7548, 7549FF+5d |  | Zenith | 8719354 |
| 7551 | 36900.37000.37200.37800.38700.40200.41100.109300.1699300 | IPS flooring work | 10d | 2027-04-17 | 2027-04-26 | 7535, 7550 |  | Zenith | 8719364 |
| 7552 | 36900.37000.37200.37800.38700.40200.41100.109300.1699400 | Toilet dado work | 10d | 2027-04-17 | 2027-04-26 | 7536, 7549, 7550 |  | Zenith | 8719374 |
| 7553 | 36900.37000.37200.37800.38700.40200.41100.109300.1699500 | Toilet flooring work | 7d | 2027-04-27 | 2027-05-03 | 7537, 7552 |  | Zenith | 8719384 |
| 7554 | 36900.37000.37200.37800.38700.40200.41100.109300.1699600 | False Cieling panel fixing | 10d | 2027-05-04 | 2027-05-13 | 7538, 7553 |  | Zenith | 8719394 |
| 7555 | 36900.37000.37200.37800.38700.40200.41100.109300.1699700 | Living dinning flooring | 14d | 2027-05-08 | 2027-05-21 | 7539, 7553 |  | Zenith | 8719404 |
| 7556 | 36900.37000.37200.37800.38700.40200.41100.109300.1699800 | Putty primer coat | 12d | 2027-08-15 | 2027-08-26 | 7540, 7555 |  | Zenith | 8719414 |
| 7557 | 36900.37000.37200.37800.38700.40200.41100.109300.1699900 | Aluminium door-window fixing | 15d | 2027-07-16 | 2027-07-30 | 7541, 7551, 7555 |  | Zenith | 8719424 |
| 7558 | 36900.37000.37200.37800.38700.40200.41100.109300.1700000 | Door shutter fixing (Pre Hung) | 8d | 2027-08-27 | 2027-09-03 | 7542, 7556 |  | Zenith | 8719434 |
| 7559 | 36900.37000.37200.37800.38700.40200.41100.109300.1700100 | Electrical wiring work | 12d | 2027-09-27 | 2027-10-08 | 7543, 7558 |  | Zenith | 8719444 |
| 7560 | 36900.37000.37200.37800.38700.40200.41100.109300.1700200 | Painting 1st coat | 15d | 2028-02-04 | 2028-02-18 | 7544, 7559 |  | Zenith | 8719454 |

| ID | WBS | Task | Duration | Start | Finish | Predecessors | Constraint | Calendar | Unique_Task_ID |
| --- | --- | --- | --- | --- | --- | --- | --- | --- | --- |
| 7561 | 36900.37000.37200.37800.38700.40200.41100.109400 | **19th floor roof** | 326.75d | 2027-02-27 | 2028-03-04 |  | start no earlier than 2027-02-27 | Zenith | 8651124 |
| 7562 | 36900.37000.37200.37800.38700.40200.41100.109400.1700300 | Block Work | 10d | 2027-02-27 | 2027-03-09 | 7251, 7546 |  | Zenith | 8719464 |
| 7563 | 36900.37000.37200.37800.38700.40200.41100.109400.1700400 | Fire sprinkler pipe fixing | 6d | 2027-03-09 | 2027-03-15 | 7547, 7562 |  | Zenith | 8719474 |
| 7564 | 36900.37000.37200.37800.38700.40200.41100.109400.1700500 | Internal Plumbing Works | 10d | 2027-03-09 | 2027-03-19 | 7548, 7562 |  | Zenith | 8719484 |
| 7565 | 36900.37000.37200.37800.38700.40200.41100.109400.1700600 | Waterproofing | 14d | 2027-04-12 | 2027-04-25 | 7549, 7564 |  | Zenith | 8719494 |
| 7566 | 36900.37000.37200.37800.38700.40200.41100.109400.1700700 | Internal Plaster | 14d | 2027-04-17 | 2027-04-30 | 7550, 7564, 7565FF+5d |  | Zenith | 8719504 |
| 7567 | 36900.37000.37200.37800.38700.40200.41100.109400.1700800 | IPS flooring work | 10d | 2027-05-01 | 2027-05-10 | 7551, 7566 |  | Zenith | 8719514 |
| 7568 | 36900.37000.37200.37800.38700.40200.41100.109400.1700900 | Toilet dado work | 10d | 2027-05-01 | 2027-05-10 | 7552, 7565, 7566 |  | Zenith | 8719524 |
| 7569 | 36900.37000.37200.37800.38700.40200.41100.109400.1701000 | Toilet flooring work | 7d | 2027-05-11 | 2027-05-17 | 7553, 7568 |  | Zenith | 8719534 |
| 7570 | 36900.37000.37200.37800.38700.40200.41100.109400.1701100 | False Cieling panel fixing | 10d | 2027-05-18 | 2027-05-27 | 7554, 7569 |  | Zenith | 8719544 |
| 7571 | 36900.37000.37200.37800.38700.40200.41100.109400.1701200 | Living dinning flooring | 16d | 2027-05-22 | 2027-06-06 | 7555, 7569 |  | Zenith | 8719554 |
| 7572 | 36900.37000.37200.37800.38700.40200.41100.109400.1701300 | Putty primer coat | 12d | 2027-08-27 | 2027-09-07 | 7556, 7571 |  | Zenith | 8719564 |
| 7573 | 36900.37000.37200.37800.38700.40200.41100.109400.1701400 | Aluminium door-window fixing | 15d | 2027-07-31 | 2027-08-14 | 7557, 7567, 7571 |  | Zenith | 8719574 |
| 7574 | 36900.37000.37200.37800.38700.40200.41100.109400.1701500 | Door shutter fixing (Pre Hung) | 8d | 2027-09-08 | 2027-09-15 | 7558, 7572 |  | Zenith | 8719584 |
| 7575 | 36900.37000.37200.37800.38700.40200.41100.109400.1701600 | Electrical wiring work | 12d | 2027-10-09 | 2027-10-20 | 7559, 7574 |  | Zenith | 8719594 |
| 7576 | 36900.37000.37200.37800.38700.40200.41100.109400.1701700 | Painting 1st coat | 15d | 2028-02-19 | 2028-03-04 | 7560, 7575 |  | Zenith | 8719604 |
| 7577 | 36900.37000.37200.37800.38700.40200.41100.109500 | **20th floor roof** | 329.75d | 2027-03-11 | 2028-03-19 |  | start no earlier than 2027-03-11 | Zenith | 8651134 |
| 7578 | 36900.37000.37200.37800.38700.40200.41100.109500.1701800 | Block Work | 10d | 2027-03-11 | 2027-03-21 | 7252, 7562 |  | Zenith | 8719614 |
| 7579 | 36900.37000.37200.37800.38700.40200.41100.109500.1701900 | Fire sprinkler pipe fixing | 6d | 2027-03-21 | 2027-03-27 | 7563, 7578 |  | Zenith | 8719624 |
| 7580 | 36900.37000.37200.37800.38700.40200.41100.109500.1702000 | Internal Plumbing Works | 10d | 2027-03-21 | 2027-03-31 | 7564, 7578 |  | Zenith | 8719634 |
| 7581 | 36900.37000.37200.37800.38700.40200.41100.109500.1702100 | Waterproofing | 14d | 2027-04-26 | 2027-05-09 | 7565, 7580 |  | Zenith | 8719644 |
| 7582 | 36900.37000.37200.37800.38700.40200.41100.109500.1702200 | Internal Plaster | 14d | 2027-05-01 | 2027-05-14 | 7566, 7580, 7581FF+5d |  | Zenith | 8719654 |
| 7583 | 36900.37000.37200.37800.38700.40200.41100.109500.1702300 | IPS flooring work | 10d | 2027-05-15 | 2027-05-24 | 7567, 7582 |  | Zenith | 8719664 |
| 7584 | 36900.37000.37200.37800.38700.40200.41100.109500.1702400 | Toilet dado work | 10d | 2027-05-15 | 2027-05-24 | 7568, 7581, 7582 |  | Zenith | 8719674 |
| 7585 | 36900.37000.37200.37800.38700.40200.41100.109500.1702500 | Toilet flooring work | 7d | 2027-05-25 | 2027-05-31 | 7569, 7584 |  | Zenith | 8719684 |
| 7586 | 36900.37000.37200.37800.38700.40200.41100.109500.1702600 | False Cieling panel fixing | 10d | 2027-06-01 | 2027-06-10 | 7570, 7585 |  | Zenith | 8719694 |
| 7587 | 36900.37000.37200.37800.38700.40200.41100.109500.1702700 | Living dinning flooring | 14d | 2027-06-07 | 2027-06-20 | 7571, 7585 |  | Zenith | 8719704 |
| 7588 | 36900.37000.37200.37800.38700.40200.41100.109500.1702800 | Putty primer coat | 12d | 2027-09-08 | 2027-09-19 | 7572, 7587 |  | Zenith | 8719714 |
| 7589 | 36900.37000.37200.37800.38700.40200.41100.109500.1702900 | Aluminium door-window fixing | 15d | 2027-08-15 | 2027-08-29 | 7573, 7583, 7587 |  | Zenith | 8719724 |
| 7590 | 36900.37000.37200.37800.38700.40200.41100.109500.1703000 | Door shutter fixing (Pre Hung) | 8d | 2027-09-20 | 2027-09-27 | 7574, 7588 |  | Zenith | 8719734 |
| 7591 | 36900.37000.37200.37800.38700.40200.41100.109500.1703100 | Electrical wiring work | 12d | 2027-10-21 | 2027-12-16 | 7575, 7590 |  | Zenith | 8719744 |
| 7592 | 36900.37000.37200.37800.38700.40200.41100.109500.1703200 | Painting 1st coat | 15d | 2028-03-05 | 2028-03-19 | 7576, 7591 |  | Zenith | 8719754 |

| ID | WBS | Task | Duration | Start | Finish | Predecessors | Constraint | Calendar | Unique_Task_ID |
| --- | --- | --- | --- | --- | --- | --- | --- | --- | --- |
| 7593 | 36900.37000.37200.37800.38700.40200.41100.109600 | **21st floor roof** | 332.75d | 2027-03-23 | 2028-04-03 |  | start no earlier than 2027-03-23 | Zenith | 8651144 |
| 7594 | 36900.37000.37200.37800.38700.40200.41100.109600.1703300 | Block Work | 10d | 2027-03-23 | 2027-04-02 | 7253, 7578 |  | Zenith | 8719764 |
| 7595 | 36900.37000.37200.37800.38700.40200.41100.109600.1703400 | Fire sprinkler pipe fixing | 6d | 2027-04-02 | 2027-04-08 | 7579, 7594 |  | Zenith | 8719774 |
| 7596 | 36900.37000.37200.37800.38700.40200.41100.109600.1703500 | Internal Plumbing Works | 10d | 2027-04-02 | 2027-04-12 | 7580, 7594 |  | Zenith | 8719784 |
| 7597 | 36900.37000.37200.37800.38700.40200.41100.109600.1703600 | Waterproofing | 14d | 2027-05-10 | 2027-05-23 | 7581, 7596 |  | Zenith | 8719794 |
| 7598 | 36900.37000.37200.37800.38700.40200.41100.109600.1703700 | Internal Plaster | 14d | 2027-05-15 | 2027-05-28 | 7582, 7596, 7597FF+5d |  | Zenith | 8719804 |
| 7599 | 36900.37000.37200.37800.38700.40200.41100.109600.1703800 | IPS flooring work | 10d | 2027-05-29 | 2027-06-07 | 7583, 7598 |  | Zenith | 8719814 |
| 7600 | 36900.37000.37200.37800.38700.40200.41100.109600.1703900 | Toilet dado work | 10d | 2027-05-29 | 2027-06-07 | 7584, 7597, 7598 |  | Zenith | 8719824 |
| 7601 | 36900.37000.37200.37800.38700.40200.41100.109600.1704000 | Toilet flooring work | 7d | 2027-06-08 | 2027-06-14 | 7585, 7600 |  | Zenith | 8719834 |
| 7602 | 36900.37000.37200.37800.38700.40200.41100.109600.1704100 | False Cieling panel fixing | 10d | 2027-06-15 | 2027-06-24 | 7586, 7601 |  | Zenith | 8719844 |
| 7603 | 36900.37000.37200.37800.38700.40200.41100.109600.1704200 | Living dinning flooring | 14d | 2027-06-21 | 2027-07-04 | 7587, 7601 |  | Zenith | 8719854 |
| 7604 | 36900.37000.37200.37800.38700.40200.41100.109600.1704300 | Putty primer coat | 12d | 2027-09-20 | 2027-10-01 | 7588, 7603 |  | Zenith | 8719864 |
| 7605 | 36900.37000.37200.37800.38700.40200.41100.109600.1704400 | Aluminium door-window fixing | 15d | 2027-08-30 | 2027-09-13 | 7589, 7599, 7603 |  | Zenith | 8719874 |
| 7606 | 36900.37000.37200.37800.38700.40200.41100.109600.1704500 | Door shutter fixing (Pre Hung) | 8d | 2027-10-02 | 2027-10-09 | 7590, 7604 |  | Zenith | 8719884 |
| 7607 | 36900.37000.37200.37800.38700.40200.41100.109600.1704600 | Electrical wiring work | 12d | 2027-12-17 | 2027-12-28 | 7591, 7606 |  | Zenith | 8719894 |
| 7608 | 36900.37000.37200.37800.38700.40200.41100.109600.1704700 | Painting 1st coat | 15d | 2028-03-20 | 2028-04-03 | 7592, 7607 |  | Zenith | 8719904 |
| 7609 | 36900.37000.37200.37800.38700.40200.41100.109700 | **22nd floor roof** | 335.75d | 2027-04-04 | 2028-04-18 |  | start no earlier than 2027-04-04 | Zenith | 8651154 |
| 7610 | 36900.37000.37200.37800.38700.40200.41100.109700.1704800 | Block Work | 10d | 2027-04-04 | 2027-04-14 | 7254, 7594 |  | Zenith | 8719914 |
| 7611 | 36900.37000.37200.37800.38700.40200.41100.109700.1704900 | Fire sprinkler pipe fixing | 6d | 2027-04-14 | 2027-04-20 | 7595, 7610 |  | Zenith | 8719924 |
| 7612 | 36900.37000.37200.37800.38700.40200.41100.109700.1705000 | Internal Plumbing Works | 10d | 2027-04-14 | 2027-04-24 | 7596, 7610 |  | Zenith | 8719934 |
| 7613 | 36900.37000.37200.37800.38700.40200.41100.109700.1705100 | Waterproofing | 14d | 2027-05-24 | 2027-06-06 | 7597, 7612 |  | Zenith | 8719944 |
| 7614 | 36900.37000.37200.37800.38700.40200.41100.109700.1705200 | Internal Plaster | 14d | 2027-05-29 | 2027-06-11 | 7598, 7612, 7613FF+5d |  | Zenith | 8719954 |
| 7615 | 36900.37000.37200.37800.38700.40200.41100.109700.1705300 | IPS flooring work | 10d | 2027-06-12 | 2027-06-21 | 7599, 7614 |  | Zenith | 8719964 |
| 7616 | 36900.37000.37200.37800.38700.40200.41100.109700.1705400 | Toilet dado work | 10d | 2027-06-12 | 2027-06-21 | 7600, 7613, 7614 |  | Zenith | 8719974 |
| 7617 | 36900.37000.37200.37800.38700.40200.41100.109700.1705500 | Toilet flooring work | 7d | 2027-06-22 | 2027-06-28 | 7601, 7616 |  | Zenith | 8719984 |
| 7618 | 36900.37000.37200.37800.38700.40200.41100.109700.1705600 | False Cieling panel fixing | 10d | 2027-06-29 | 2027-07-08 | 7602, 7617 |  | Zenith | 8719994 |
| 7619 | 36900.37000.37200.37800.38700.40200.41100.109700.1705700 | Living dinning flooring | 14d | 2027-07-05 | 2027-07-18 | 7603, 7617 |  | Zenith | 8720004 |
| 7620 | 36900.37000.37200.37800.38700.40200.41100.109700.1705800 | Putty primer coat | 12d | 2027-10-02 | 2027-10-13 | 7604, 7619 |  | Zenith | 8720014 |
| 7621 | 36900.37000.37200.37800.38700.40200.41100.109700.1705900 | Aluminium door-window fixing | 15d | 2027-09-14 | 2027-09-28 | 7605, 7615, 7619 |  | Zenith | 8720024 |
| 7622 | 36900.37000.37200.37800.38700.40200.41100.109700.1706000 | Door shutter fixing (Pre Hung) | 8d | 2027-10-14 | 2027-10-21 | 7606, 7620 |  | Zenith | 8720034 |
| 7623 | 36900.37000.37200.37800.38700.40200.41100.109700.1706100 | Electrical wiring work | 12d | 2027-12-29 | 2028-01-09 | 7607, 7622 |  | Zenith | 8720044 |
| 7624 | 36900.37000.37200.37800.38700.40200.41100.109700.1706200 | Painting 1st coat | 15d | 2028-04-04 | 2028-04-18 | 7608, 7623 |  | Zenith | 8720054 |

| ID | WBS | Task | Duration | Start | Finish | Predecessors | Constraint | Calendar | Unique_Task_ID |
| --- | --- | --- | --- | --- | --- | --- | --- | --- | --- |
| 7625 | 36900.37000.37200.37800.38700.40200.41100.109800 | **23rd floor roof** | 338.75d | 2027-04-16 | 2028-05-03 |  | start no earlier than 2027-04-16 | Zenith | 8651164 |
| 7626 | 36900.37000.37200.37800.38700.40200.41100.109800.1706300 | Block Work | 10d | 2027-04-16 | 2027-04-26 | 7255, 7610 |  | Zenith | 8720064 |
| 7627 | 36900.37000.37200.37800.38700.40200.41100.109800.1706400 | Fire sprinkler pipe fixing | 6d | 2027-04-26 | 2027-05-02 | 7611, 7626 |  | Zenith | 8720074 |
| 7628 | 36900.37000.37200.37800.38700.40200.41100.109800.1706500 | Internal Plumbing Works | 10d | 2027-04-26 | 2027-05-06 | 7612, 7626 |  | Zenith | 8720084 |
| 7629 | 36900.37000.37200.37800.38700.40200.41100.109800.1706600 | Waterproofing | 14d | 2027-06-07 | 2027-06-20 | 7613, 7628 |  | Zenith | 8720094 |
| 7630 | 36900.37000.37200.37800.38700.40200.41100.109800.1706700 | Internal Plaster | 14d | 2027-06-12 | 2027-06-25 | 7614, 7628, 7629FF+5d |  | Zenith | 8720104 |
| 7631 | 36900.37000.37200.37800.38700.40200.41100.109800.1706800 | IPS flooring work | 10d | 2027-06-26 | 2027-07-05 | 7615, 7630 |  | Zenith | 8720114 |
| 7632 | 36900.37000.37200.37800.38700.40200.41100.109800.1706900 | Toilet dado work | 10d | 2027-06-26 | 2027-07-05 | 7616, 7629, 7630 |  | Zenith | 8720124 |
| 7633 | 36900.37000.37200.37800.38700.40200.41100.109800.1707000 | Toilet flooring work | 7d | 2027-07-06 | 2027-07-12 | 7617, 7632 |  | Zenith | 8720134 |
| 7634 | 36900.37000.37200.37800.38700.40200.41100.109800.1707100 | False Cieling panel fixing | 10d | 2027-07-13 | 2027-07-22 | 7618, 7633 |  | Zenith | 8720144 |
| 7635 | 36900.37000.37200.37800.38700.40200.41100.109800.1707200 | Living dinning flooring | 14d | 2027-07-19 | 2027-08-01 | 7619, 7633 |  | Zenith | 8720154 |
| 7636 | 36900.37000.37200.37800.38700.40200.41100.109800.1707300 | Putty primer coat | 12d | 2027-10-14 | 2027-10-25 | 7620, 7635 |  | Zenith | 8720164 |
| 7637 | 36900.37000.37200.37800.38700.40200.41100.109800.1707400 | Aluminium door-window fixing | 15d | 2027-09-29 | 2027-10-13 | 7621, 7631, 7635 |  | Zenith | 8720174 |
| 7638 | 36900.37000.37200.37800.38700.40200.41100.109800.1707500 | Door shutter fixing (Pre Hung) | 8d | 2027-10-26 | 2027-12-17 | 7622, 7636 |  | Zenith | 8720184 |
| 7639 | 36900.37000.37200.37800.38700.40200.41100.109800.1707600 | Electrical wiring work | 12d | 2028-01-10 | 2028-01-21 | 7623, 7638 |  | Zenith | 8720194 |
| 7640 | 36900.37000.37200.37800.38700.40200.41100.109800.1707700 | Painting 1st coat | 15d | 2028-04-19 | 2028-05-03 | 7624, 7639 |  | Zenith | 8720204 |
| 7641 | 36900.37000.37200.37800.38700.40200.41100.109900 | **24th floor roof** | 341.75d | 2027-04-28 | 2028-05-18 |  | start no earlier than 2027-04-28 | Zenith | 8651174 |
| 7642 | 36900.37000.37200.37800.38700.40200.41100.109900.1707800 | Block Work | 10d | 2027-04-28 | 2027-05-08 | 7256, 7626 |  | Zenith | 8720214 |
| 7643 | 36900.37000.37200.37800.38700.40200.41100.109900.1707900 | Fire sprinkler pipe fixing | 6d | 2027-05-08 | 2027-05-14 | 7627, 7642 |  | Zenith | 8726694 |
| 7644 | 36900.37000.37200.37800.38700.40200.41100.109900.1708000 | Internal Plumbing Works | 10d | 2027-05-08 | 2027-05-18 | 7628, 7642 |  | Zenith | 8726704 |
| 7645 | 36900.37000.37200.37800.38700.40200.41100.109900.1708100 | Waterproofing | 14d | 2027-06-21 | 2027-07-04 | 7629, 7644 |  | Zenith | 8726714 |
| 7646 | 36900.37000.37200.37800.38700.40200.41100.109900.1708200 | Internal Plaster | 14d | 2027-06-26 | 2027-07-09 | 7630, 7644, 7645FF+5d |  | Zenith | 8726724 |
| 7647 | 36900.37000.37200.37800.38700.40200.41100.109900.1708300 | IPS flooring work | 10d | 2027-07-10 | 2027-07-19 | 7631, 7646 |  | Zenith | 8726734 |
| 7648 | 36900.37000.37200.37800.38700.40200.41100.109900.1708400 | Toilet dado work | 10d | 2027-07-10 | 2027-07-19 | 7632, 7645, 7646 |  | Zenith | 8726744 |
| 7649 | 36900.37000.37200.37800.38700.40200.41100.109900.1708500 | Toilet flooring work | 7d | 2027-07-20 | 2027-07-26 | 7633, 7648 |  | Zenith | 8726754 |
| 7650 | 36900.37000.37200.37800.38700.40200.41100.109900.1708600 | False Cieling panel fixing | 10d | 2027-07-27 | 2027-08-05 | 7634, 7649 |  | Zenith | 8726764 |
| 7651 | 36900.37000.37200.37800.38700.40200.41100.109900.1708700 | Living dinning flooring | 14d | 2027-08-02 | 2027-08-15 | 7635, 7649 |  | Zenith | 8726774 |
| 7652 | 36900.37000.37200.37800.38700.40200.41100.109900.1708800 | Putty primer coat | 12d | 2027-10-26 | 2027-12-21 | 7636, 7651 |  | Zenith | 8726784 |
| 7653 | 36900.37000.37200.37800.38700.40200.41100.109900.1708900 | Aluminium door-window fixing | 15d | 2027-10-14 | 2027-10-28 | 7637, 7647, 7651 |  | Zenith | 8726794 |
| 7654 | 36900.37000.37200.37800.38700.40200.41100.109900.1709000 | Door shutter fixing (Pre Hung) | 8d | 2027-12-22 | 2027-12-29 | 7638, 7652 |  | Zenith | 8726804 |
| 7655 | 36900.37000.37200.37800.38700.40200.41100.109900.1709100 | Electrical wiring work | 12d | 2028-01-22 | 2028-02-02 | 7639, 7654 |  | Zenith | 8726814 |
| 7656 | 36900.37000.37200.37800.38700.40200.41100.109900.1709200 | Painting 1st coat | 15d | 2028-05-04 | 2028-05-18 | 7640, 7655 |  | Zenith | 8726824 |

| ID | WBS | Task | Duration | Start | Finish | Predecessors | Constraint | Calendar | Unique_Task_ID |
| --- | --- | --- | --- | --- | --- | --- | --- | --- | --- |
| 7657 | 36900.37000.37200.37800.38700.40200.41100.110000 | **25th floor roof** | 344.75d | 2027-05-10 | 2028-06-02 |  | start no earlier than 2027-05-10 | Zenith | 8651184 |
| 7658 | 36900.37000.37200.37800.38700.40200.41100.110000.1709300 | Block Work | 10d | 2027-05-10 | 2027-05-20 | 7257, 7642 |  | Zenith | 8726834 |
| 7659 | 36900.37000.37200.37800.38700.40200.41100.110000.1709400 | Fire sprinkler pipe fixing | 6d | 2027-05-20 | 2027-05-26 | 7643, 7658 |  | Zenith | 8726844 |
| 7660 | 36900.37000.37200.37800.38700.40200.41100.110000.1709500 | Internal Plumbing Works | 10d | 2027-05-20 | 2027-05-30 | 7644, 7658 |  | Zenith | 8726854 |
| 7661 | 36900.37000.37200.37800.38700.40200.41100.110000.1709600 | Waterproofing | 14d | 2027-07-05 | 2027-07-18 | 7645, 7660 |  | Zenith | 8726864 |
| 7662 | 36900.37000.37200.37800.38700.40200.41100.110000.1709700 | Internal Plaster | 14d | 2027-07-10 | 2027-07-23 | 7646, 7660, 7661FF+5d |  | Zenith | 8726874 |
| 7663 | 36900.37000.37200.37800.38700.40200.41100.110000.1709800 | IPS flooring work | 10d | 2027-07-24 | 2027-08-02 | 7647, 7662 |  | Zenith | 8726884 |
| 7664 | 36900.37000.37200.37800.38700.40200.41100.110000.1709900 | Toilet dado work | 10d | 2027-07-24 | 2027-08-02 | 7648, 7661, 7662 |  | Zenith | 8726894 |
| 7665 | 36900.37000.37200.37800.38700.40200.41100.110000.1710000 | Toilet flooring work | 7d | 2027-08-03 | 2027-08-09 | 7649, 7664 |  | Zenith | 8726904 |
| 7666 | 36900.37000.37200.37800.38700.40200.41100.110000.1710100 | False Cieling panel fixing | 10d | 2027-08-10 | 2027-08-19 | 7650, 7665 |  | Zenith | 8726914 |
| 7667 | 36900.37000.37200.37800.38700.40200.41100.110000.1710200 | Living dinning flooring | 14d | 2027-08-16 | 2027-08-29 | 7651, 7665 |  | Zenith | 8726924 |
| 7668 | 36900.37000.37200.37800.38700.40200.41100.110000.1710300 | Putty primer coat | 12d | 2027-12-22 | 2028-01-02 | 7652, 7667 |  | Zenith | 8726934 |
| 7669 | 36900.37000.37200.37800.38700.40200.41100.110000.1710400 | Aluminium door-window fixing | 15d | 2027-10-29 | 2027-12-27 | 7653, 7663, 7667 |  | Zenith | 8726944 |
| 7670 | 36900.37000.37200.37800.38700.40200.41100.110000.1710500 | Door shutter fixing (Pre Hung) | 8d | 2028-01-03 | 2028-01-10 | 7654, 7668 |  | Zenith | 8726954 |
| 7671 | 36900.37000.37200.37800.38700.40200.41100.110000.1710600 | Electrical wiring work | 12d | 2028-02-03 | 2028-02-14 | 7655, 7670 |  | Zenith | 8726964 |
| 7672 | 36900.37000.37200.37800.38700.40200.41100.110000.1710700 | Painting 1st coat | 15d | 2028-05-19 | 2028-06-02 | 7656, 7671 |  | Zenith | 8726974 |
| 7673 | 36900.37000.37200.37800.38700.40200.41100.110100 | **26th floor roof** | 347.75d | 2027-05-22 | 2028-06-17 |  | start no earlier than 2027-05-22 | Zenith | 8651194 |
| 7674 | 36900.37000.37200.37800.38700.40200.41100.110100.1710800 | Block Work | 10d | 2027-05-22 | 2027-06-01 | 7258, 7658 |  | Zenith | 8726984 |
| 7675 | 36900.37000.37200.37800.38700.40200.41100.110100.1710900 | Fire sprinkler pipe fixing | 6d | 2027-06-01 | 2027-06-07 | 7659, 7674 |  | Zenith | 8726994 |
| 7676 | 36900.37000.37200.37800.38700.40200.41100.110100.1711000 | Internal Plumbing Works | 10d | 2027-06-01 | 2027-06-11 | 7660, 7674 |  | Zenith | 8727004 |
| 7677 | 36900.37000.37200.37800.38700.40200.41100.110100.1711100 | Waterproofing | 14d | 2027-07-19 | 2027-08-01 | 7661, 7676 |  | Zenith | 8727014 |
| 7678 | 36900.37000.37200.37800.38700.40200.41100.110100.1711200 | Internal Plaster | 14d | 2027-07-24 | 2027-08-06 | 7662, 7676, 7677FF+5d |  | Zenith | 8727024 |
| 7679 | 36900.37000.37200.37800.38700.40200.41100.110100.1711300 | IPS flooring work | 10d | 2027-08-07 | 2027-08-16 | 7663, 7678 |  | Zenith | 8727034 |
| 7680 | 36900.37000.37200.37800.38700.40200.41100.110100.1711400 | Toilet dado work | 10d | 2027-08-07 | 2027-08-16 | 7664, 7677, 7678 |  | Zenith | 8727044 |
| 7681 | 36900.37000.37200.37800.38700.40200.41100.110100.1711500 | Toilet flooring work | 7d | 2027-08-17 | 2027-08-23 | 7665, 7680 |  | Zenith | 8727054 |
| 7682 | 36900.37000.37200.37800.38700.40200.41100.110100.1711600 | False Cieling panel fixing | 10d | 2027-08-24 | 2027-09-02 | 7666, 7681 |  | Zenith | 8727064 |
| 7683 | 36900.37000.37200.37800.38700.40200.41100.110100.1711700 | Living dinning flooring | 14d | 2027-08-30 | 2027-09-12 | 7667, 7681 |  | Zenith | 8727074 |
| 7684 | 36900.37000.37200.37800.38700.40200.41100.110100.1711800 | Putty primer coat | 12d | 2028-01-03 | 2028-01-14 | 7668, 7683 |  | Zenith | 8727084 |
| 7685 | 36900.37000.37200.37800.38700.40200.41100.110100.1711900 | Aluminium door-window fixing | 15d | 2027-12-28 | 2028-01-11 | 7669, 7679, 7683 |  | Zenith | 8727094 |
| 7686 | 36900.37000.37200.37800.38700.40200.41100.110100.1712000 | Door shutter fixing (Pre Hung) | 8d | 2028-01-15 | 2028-01-22 | 7670, 7684 |  | Zenith | 8727104 |
| 7687 | 36900.37000.37200.37800.38700.40200.41100.110100.1712100 | Electrical wiring work | 12d | 2028-02-15 | 2028-02-26 | 7671, 7686 |  | Zenith | 8727114 |
| 7688 | 36900.37000.37200.37800.38700.40200.41100.110100.1712200 | Painting 1st coat | 15d | 2028-06-03 | 2028-06-17 | 7672, 7687 |  | Zenith | 8727124 |

| ID | WBS | Task | Duration | Start | Finish | Predecessors | Constraint | Calendar | Unique_Task_ID |
| --- | --- | --- | --- | --- | --- | --- | --- | --- | --- |
| 7689 | 36900.37000.37200.37800.38700.40200.41100.110200 | **27th floor roof** | 348.75d | 2027-06-05 | 2028-07-02 |  | start no earlier than 2027-06-05 | Zenith | 8651204 |
| 7690 | 36900.37000.37200.37800.38700.40200.41100.110200.1712300 | Block Work | 10d | 2027-06-05 | 2027-06-15 | 7259, 7674 |  | Zenith | 8727134 |
| 7691 | 36900.37000.37200.37800.38700.40200.41100.110200.1712400 | Fire sprinkler pipe fixing | 6d | 2027-06-15 | 2027-06-21 | 7675, 7690 |  | Zenith | 8727144 |
| 7692 | 36900.37000.37200.37800.38700.40200.41100.110200.1712500 | Internal Plumbing Works | 10d | 2027-06-15 | 2027-06-25 | 7676, 7690 |  | Zenith | 8727154 |
| 7693 | 36900.37000.37200.37800.38700.40200.41100.110200.1712600 | Waterproofing | 14d | 2027-08-02 | 2027-08-15 | 7677, 7692 |  | Zenith | 8727164 |
| 7694 | 36900.37000.37200.37800.38700.40200.41100.110200.1712700 | Internal Plaster | 14d | 2027-08-07 | 2027-08-20 | 7678, 7692, 7693FF+5d |  | Zenith | 8727174 |
| 7695 | 36900.37000.37200.37800.38700.40200.41100.110200.1712800 | IPS flooring work | 10d | 2027-08-21 | 2027-08-30 | 7679, 7694 |  | Zenith | 8727184 |
| 7696 | 36900.37000.37200.37800.38700.40200.41100.110200.1712900 | Toilet dado work | 10d | 2027-08-21 | 2027-08-30 | 7680, 7693, 7694 |  | Zenith | 8727194 |
| 7697 | 36900.37000.37200.37800.38700.40200.41100.110200.1713000 | Toilet flooring work | 7d | 2027-08-31 | 2027-09-06 | 7681, 7696 |  | Zenith | 8727204 |
| 7698 | 36900.37000.37200.37800.38700.40200.41100.110200.1713100 | False Cieling panel fixing | 10d | 2027-09-07 | 2027-09-16 | 7682, 7697 |  | Zenith | 8727214 |
| 7699 | 36900.37000.37200.37800.38700.40200.41100.110200.1713200 | Living dinning flooring | 14d | 2027-09-13 | 2027-09-26 | 7683, 7697 |  | Zenith | 8727224 |
| 7700 | 36900.37000.37200.37800.38700.40200.41100.110200.1713300 | Putty primer coat | 12d | 2028-01-15 | 2028-01-26 | 7684, 7699 |  | Zenith | 8727234 |
| 7701 | 36900.37000.37200.37800.38700.40200.41100.110200.1713400 | Aluminium door-window fixing | 15d | 2028-01-12 | 2028-01-26 | 7685, 7695, 7699 |  | Zenith | 8727244 |
| 7702 | 36900.37000.37200.37800.38700.40200.41100.110200.1713500 | Door shutter fixing (Pre Hung) | 8d | 2028-01-27 | 2028-02-03 | 7686, 7700 |  | Zenith | 8727254 |
| 7703 | 36900.37000.37200.37800.38700.40200.41100.110200.1713600 | Electrical wiring work | 12d | 2028-02-27 | 2028-03-09 | 7687, 7702 |  | Zenith | 8727264 |
| 7704 | 36900.37000.37200.37800.38700.40200.41100.110200.1713700 | Painting 1st coat | 15d | 2028-06-18 | 2028-07-02 | 7688, 7703 |  | Zenith | 8727274 |
| 7705 | 36900.37000.37200.37800.38700.40200.41100.110300 | **28th floor roof** | 349.75d | 2027-06-19 | 2028-07-17 |  | start no earlier than 2027-06-19 | Zenith | 8651214 |
| 7706 | 36900.37000.37200.37800.38700.40200.41100.110300.1713800 | Block Work | 10d | 2027-06-19 | 2027-06-29 | 7260, 7690 |  | Zenith | 8727284 |
| 7707 | 36900.37000.37200.37800.38700.40200.41100.110300.1713900 | Fire sprinkler pipe fixing | 6d | 2027-06-29 | 2027-07-05 | 7691, 7706 |  | Zenith | 8727294 |
| 7708 | 36900.37000.37200.37800.38700.40200.41100.110300.1714000 | Internal Plumbing Works | 10d | 2027-06-29 | 2027-07-09 | 7692, 7706 |  | Zenith | 8727304 |
| 7709 | 36900.37000.37200.37800.38700.40200.41100.110300.1714100 | Waterproofing | 14d | 2027-08-16 | 2027-08-29 | 7693, 7708 |  | Zenith | 8727314 |
| 7710 | 36900.37000.37200.37800.38700.40200.41100.110300.1714200 | Internal Plaster | 14d | 2027-08-21 | 2027-09-03 | 7694, 7708, 7709FF+5d |  | Zenith | 8727324 |
| 7711 | 36900.37000.37200.37800.38700.40200.41100.110300.1714300 | IPS flooring work | 10d | 2027-09-04 | 2027-09-13 | 7695, 7710 |  | Zenith | 8727334 |
| 7712 | 36900.37000.37200.37800.38700.40200.41100.110300.1714400 | Toilet dado work | 10d | 2027-09-04 | 2027-09-13 | 7696, 7709, 7710 |  | Zenith | 8727344 |
| 7713 | 36900.37000.37200.37800.38700.40200.41100.110300.1714500 | Toilet flooring work | 7d | 2027-09-14 | 2027-09-20 | 7697, 7712 |  | Zenith | 8727354 |
| 7714 | 36900.37000.37200.37800.38700.40200.41100.110300.1714600 | False Cieling panel fixing | 10d | 2027-09-21 | 2027-09-30 | 7698, 7713 |  | Zenith | 8727364 |
| 7715 | 36900.37000.37200.37800.38700.40200.41100.110300.1714700 | Living dinning flooring | 14d | 2027-09-27 | 2027-10-10 | 7699, 7713 |  | Zenith | 8727374 |
| 7716 | 36900.37000.37200.37800.38700.40200.41100.110300.1714800 | Putty primer coat | 12d | 2028-01-27 | 2028-02-07 | 7700, 7715 |  | Zenith | 8727384 |
| 7717 | 36900.37000.37200.37800.38700.40200.41100.110300.1714900 | Aluminium door-window fixing | 15d | 2028-01-27 | 2028-02-10 | 7701, 7711, 7715 |  | Zenith | 8727394 |
| 7718 | 36900.37000.37200.37800.38700.40200.41100.110300.1715000 | Door shutter fixing (Pre Hung) | 8d | 2028-02-08 | 2028-02-15 | 7702, 7716 |  | Zenith | 8727404 |
| 7719 | 36900.37000.37200.37800.38700.40200.41100.110300.1715100 | Electrical wiring work | 12d | 2028-03-10 | 2028-03-21 | 7703, 7718 |  | Zenith | 8727414 |
| 7720 | 36900.37000.37200.37800.38700.40200.41100.110300.1715200 | Painting 1st coat | 15d | 2028-07-03 | 2028-07-17 | 7704, 7719 |  | Zenith | 8727424 |

| ID | WBS | Task | Duration | Start | Finish | Predecessors | Constraint | Calendar | Unique_Task_ID |
| --- | --- | --- | --- | --- | --- | --- | --- | --- | --- |
| 7721 | 36900.37000.37200.37800.38700.40200.41100.110400 | **29th floor roof** | 350.75d | 2027-07-03 | 2028-08-01 |  | start no earlier than 2027-07-03 | Zenith | 8651224 |
| 7722 | 36900.37000.37200.37800.38700.40200.41100.110400.1715300 | Block Work | 10d | 2027-07-03 | 2027-07-13 | 7261, 7706 |  | Zenith | 8727434 |
| 7723 | 36900.37000.37200.37800.38700.40200.41100.110400.1715400 | Fire sprinkler pipe fixing | 6d | 2027-07-13 | 2027-07-19 | 7707, 7722 |  | Zenith | 8727444 |
| 7724 | 36900.37000.37200.37800.38700.40200.41100.110400.1715500 | Internal Plumbing Works | 10d | 2027-07-13 | 2027-07-23 | 7708, 7722 |  | Zenith | 8727454 |
| 7725 | 36900.37000.37200.37800.38700.40200.41100.110400.1715600 | Waterproofing | 14d | 2027-08-30 | 2027-09-12 | 7709, 7724 |  | Zenith | 8727464 |
| 7726 | 36900.37000.37200.37800.38700.40200.41100.110400.1715700 | Internal Plaster | 14d | 2027-09-04 | 2027-09-17 | 7710, 7724, 7725FF+5d |  | Zenith | 8727474 |
| 7727 | 36900.37000.37200.37800.38700.40200.41100.110400.1715800 | IPS flooring work | 10d | 2027-09-18 | 2027-09-27 | 7711, 7726 |  | Zenith | 8727484 |
| 7728 | 36900.37000.37200.37800.38700.40200.41100.110400.1715900 | Toilet dado work | 10d | 2027-09-18 | 2027-09-27 | 7712, 7725, 7726 |  | Zenith | 8727494 |
| 7729 | 36900.37000.37200.37800.38700.40200.41100.110400.1716000 | Toilet flooring work | 7d | 2027-09-28 | 2027-10-04 | 7713, 7728 |  | Zenith | 8727504 |
| 7730 | 36900.37000.37200.37800.38700.40200.41100.110400.1716100 | False Cieling panel fixing | 10d | 2027-10-05 | 2027-10-14 | 7714, 7729 |  | Zenith | 8727514 |
| 7731 | 36900.37000.37200.37800.38700.40200.41100.110400.1716200 | Living dinning flooring | 14d | 2027-10-11 | 2027-10-24 | 7715, 7729 |  | Zenith | 8727524 |
| 7732 | 36900.37000.37200.37800.38700.40200.41100.110400.1716300 | Putty primer coat | 12d | 2028-02-08 | 2028-02-19 | 7716, 7731 |  | Zenith | 8727534 |
| 7733 | 36900.37000.37200.37800.38700.40200.41100.110400.1716400 | Aluminium door-window fixing | 15d | 2028-02-11 | 2028-02-25 | 7717, 7727, 7731 |  | Zenith | 8727544 |
| 7734 | 36900.37000.37200.37800.38700.40200.41100.110400.1716500 | Door shutter fixing (Pre Hung) | 8d | 2028-02-20 | 2028-02-27 | 7718, 7732 |  | Zenith | 8727554 |
| 7735 | 36900.37000.37200.37800.38700.40200.41100.110400.1716600 | Electrical wiring work | 12d | 2028-03-22 | 2028-04-02 | 7719, 7734 |  | Zenith | 8727564 |
| 7736 | 36900.37000.37200.37800.38700.40200.41100.110400.1716700 | Painting 1st coat | 15d | 2028-07-18 | 2028-08-01 | 7720, 7735 |  | Zenith | 8727574 |
| 7737 | 36900.37000.37200.37800.38700.40200.41100.110500 | **30th floor roof** | 351.75d | 2027-07-17 | 2028-08-16 |  | start no earlier than 2027-07-17 | Zenith | 8651234 |
| 7738 | 36900.37000.37200.37800.38700.40200.41100.110500.1716800 | Block Work | 10d | 2027-07-17 | 2027-07-27 | 7262, 7722 |  | Zenith | 8727584 |
| 7739 | 36900.37000.37200.37800.38700.40200.41100.110500.1716900 | Fire sprinkler pipe fixing | 6d | 2027-07-27 | 2027-08-02 | 7723, 7738 |  | Zenith | 8727594 |
| 7740 | 36900.37000.37200.37800.38700.40200.41100.110500.1717000 | Internal Plumbing Works | 10d | 2027-07-27 | 2027-08-06 | 7724, 7738 |  | Zenith | 8727604 |
| 7741 | 36900.37000.37200.37800.38700.40200.41100.110500.1717100 | Waterproofing | 14d | 2027-09-13 | 2027-09-26 | 7725, 7740 |  | Zenith | 8727614 |
| 7742 | 36900.37000.37200.37800.38700.40200.41100.110500.1717200 | Internal Plaster | 14d | 2027-09-18 | 2027-10-01 | 7726, 7740, 7741FF+5d |  | Zenith | 8727624 |
| 7743 | 36900.37000.37200.37800.38700.40200.41100.110500.1717300 | IPS flooring work | 10d | 2027-10-02 | 2027-10-11 | 7727, 7742 |  | Zenith | 8727634 |
| 7744 | 36900.37000.37200.37800.38700.40200.41100.110500.1717400 | Toilet dado work | 10d | 2027-10-02 | 2027-10-11 | 7728, 7741, 7742 |  | Zenith | 8727644 |
| 7745 | 36900.37000.37200.37800.38700.40200.41100.110500.1717500 | Toilet flooring work | 7d | 2027-10-12 | 2027-10-18 | 7729, 7744 |  | Zenith | 8727654 |
| 7746 | 36900.37000.37200.37800.38700.40200.41100.110500.1717600 | False Cieling panel fixing | 10d | 2027-10-19 | 2027-10-28 | 7730, 7745 |  | Zenith | 8727664 |
| 7747 | 36900.37000.37200.37800.38700.40200.41100.110500.1717700 | Living dinning flooring | 14d | 2027-10-25 | 2027-12-22 | 7731, 7745 |  | Zenith | 8727674 |
| 7748 | 36900.37000.37200.37800.38700.40200.41100.110500.1717800 | Putty primer coat | 12d | 2028-02-20 | 2028-03-02 | 7732, 7747 |  | Zenith | 8727684 |
| 7749 | 36900.37000.37200.37800.38700.40200.41100.110500.1717900 | Aluminium door-window fixing | 15d | 2028-02-26 | 2028-03-11 | 7733, 7743, 7747 |  | Zenith | 8727694 |
| 7750 | 36900.37000.37200.37800.38700.40200.41100.110500.1718000 | Door shutter fixing (Pre Hung) | 8d | 2028-03-03 | 2028-03-10 | 7734, 7748 |  | Zenith | 8727704 |
| 7751 | 36900.37000.37200.37800.38700.40200.41100.110500.1718100 | Electrical wiring work | 12d | 2028-04-03 | 2028-04-14 | 7735, 7750 |  | Zenith | 8727714 |
| 7752 | 36900.37000.37200.37800.38700.40200.41100.110500.1718200 | Painting 1st coat | 15d | 2028-08-02 | 2028-08-16 | 7736, 7751 |  | Zenith | 8727724 |

| ID | WBS | Task | Duration | Start | Finish | Predecessors | Constraint | Calendar | Unique_Task_ID |
| --- | --- | --- | --- | --- | --- | --- | --- | --- | --- |
| 7753 | 36900.37000.37200.37800.38700.40200.41100.110600 | **31st floor roof** | 352.75d | 2027-07-31 | 2028-08-31 |  | start no earlier than 2027-07-31 | Zenith | 8651244 |
| 7754 | 36900.37000.37200.37800.38700.40200.41100.110600.1718300 | Block Work | 10d | 2027-07-31 | 2027-08-10 | 7263, 7738 |  | Zenith | 8727734 |
| 7755 | 36900.37000.37200.37800.38700.40200.41100.110600.1718400 | Fire sprinkler pipe fixing | 6d | 2027-08-10 | 2027-08-16 | 7739, 7754 |  | Zenith | 8727744 |
| 7756 | 36900.37000.37200.37800.38700.40200.41100.110600.1718500 | Internal Plumbing Works | 10d | 2027-08-10 | 2027-08-20 | 7740, 7754 |  | Zenith | 8727754 |
| 7757 | 36900.37000.37200.37800.38700.40200.41100.110600.1718600 | Waterproofing | 14d | 2027-09-27 | 2027-10-10 | 7741, 7756 |  | Zenith | 8727764 |
| 7758 | 36900.37000.37200.37800.38700.40200.41100.110600.1718700 | Internal Plaster | 14d | 2027-10-02 | 2027-10-15 | 7742, 7756, 7757FF+5d |  | Zenith | 8727774 |
| 7759 | 36900.37000.37200.37800.38700.40200.41100.110600.1718800 | IPS flooring work | 10d | 2027-10-16 | 2027-10-25 | 7743, 7758 |  | Zenith | 8727784 |
| 7760 | 36900.37000.37200.37800.38700.40200.41100.110600.1718900 | Toilet dado work | 10d | 2027-10-16 | 2027-10-25 | 7744, 7757, 7758 |  | Zenith | 8727794 |
| 7761 | 36900.37000.37200.37800.38700.40200.41100.110600.1719000 | Toilet flooring work | 7d | 2027-10-26 | 2027-12-16 | 7745, 7760 |  | Zenith | 8727804 |
| 7762 | 36900.37000.37200.37800.38700.40200.41100.110600.1719100 | False Cieling panel fixing | 10d | 2027-12-17 | 2027-12-26 | 7746, 7761 |  | Zenith | 8727814 |
| 7763 | 36900.37000.37200.37800.38700.40200.41100.110600.1719200 | Living dinning flooring | 14d | 2027-12-23 | 2028-01-05 | 7747, 7761 |  | Zenith | 8727824 |
| 7764 | 36900.37000.37200.37800.38700.40200.41100.110600.1719300 | Putty primer coat | 12d | 2028-03-03 | 2028-03-14 | 7748, 7763 |  | Zenith | 8727834 |
| 7765 | 36900.37000.37200.37800.38700.40200.41100.110600.1719400 | Aluminium door-window fixing | 15d | 2028-03-12 | 2028-03-26 | 7749, 7759, 7763 |  | Zenith | 8727844 |
| 7766 | 36900.37000.37200.37800.38700.40200.41100.110600.1719500 | Door shutter fixing (Pre Hung) | 8d | 2028-03-15 | 2028-03-22 | 7750, 7764 |  | Zenith | 8727854 |
| 7767 | 36900.37000.37200.37800.38700.40200.41100.110600.1719600 | Electrical wiring work | 12d | 2028-04-15 | 2028-04-26 | 7751, 7766 |  | Zenith | 8727864 |
| 7768 | 36900.37000.37200.37800.38700.40200.41100.110600.1719700 | Painting 1st coat | 15d | 2028-08-17 | 2028-08-31 | 7752, 7767 |  | Zenith | 8727874 |
| 7769 | 36900.37000.37200.37800.38700.40200.41100.110700 | **32nd floor roof** | 353.75d | 2027-08-14 | 2028-09-15 |  | start no earlier than 2027-08-14 | Zenith | 8651254 |
| 7770 | 36900.37000.37200.37800.38700.40200.41100.110700.1719800 | Block Work | 10d | 2027-08-14 | 2027-08-24 | 7264, 7754 |  | Zenith | 8727884 |
| 7771 | 36900.37000.37200.37800.38700.40200.41100.110700.1719900 | Fire sprinkler pipe fixing | 6d | 2027-08-24 | 2027-08-30 | 7755, 7770 |  | Zenith | 8727894 |
| 7772 | 36900.37000.37200.37800.38700.40200.41100.110700.1720000 | Internal Plumbing Works | 10d | 2027-08-24 | 2027-09-03 | 7756, 7770 |  | Zenith | 8727904 |
| 7773 | 36900.37000.37200.37800.38700.40200.41100.110700.1720100 | Waterproofing | 14d | 2027-10-11 | 2027-10-24 | 7757, 7772 |  | Zenith | 8727914 |
| 7774 | 36900.37000.37200.37800.38700.40200.41100.110700.1720200 | Internal Plaster | 14d | 2027-10-16 | 2027-10-29 | 7758, 7772, 7773FF+5d |  | Zenith | 8727924 |
| 7775 | 36900.37000.37200.37800.38700.40200.41100.110700.1720300 | IPS flooring work | 10d | 2027-10-30 | 2027-12-23 | 7759, 7774 |  | Zenith | 8727934 |
| 7776 | 36900.37000.37200.37800.38700.40200.41100.110700.1720400 | Toilet dado work | 10d | 2027-10-30 | 2027-12-23 | 7760, 7773, 7774 |  | Zenith | 8727944 |
| 7777 | 36900.37000.37200.37800.38700.40200.41100.110700.1720500 | Toilet flooring work | 7d | 2027-12-24 | 2027-12-30 | 7761, 7776 |  | Zenith | 8727954 |
| 7778 | 36900.37000.37200.37800.38700.40200.41100.110700.1720600 | False Cieling panel fixing | 10d | 2027-12-31 | 2028-01-09 | 7762, 7777 |  | Zenith | 8727964 |
| 7779 | 36900.37000.37200.37800.38700.40200.41100.110700.1720700 | Living dinning flooring | 14d | 2028-01-06 | 2028-01-19 | 7763, 7777 |  | Zenith | 8727974 |
| 7780 | 36900.37000.37200.37800.38700.40200.41100.110700.1720800 | Putty primer coat | 12d | 2028-03-15 | 2028-03-26 | 7764, 7779 |  | Zenith | 8727984 |
| 7781 | 36900.37000.37200.37800.38700.40200.41100.110700.1720900 | Aluminium door-window fixing | 15d | 2028-03-27 | 2028-04-10 | 7765, 7775, 7779 |  | Zenith | 8727994 |
| 7782 | 36900.37000.37200.37800.38700.40200.41100.110700.1721000 | Door shutter fixing (Pre Hung) | 8d | 2028-03-27 | 2028-04-03 | 7766, 7780 |  | Zenith | 8728004 |
| 7783 | 36900.37000.37200.37800.38700.40200.41100.110700.1721100 | Electrical wiring work | 12d | 2028-04-27 | 2028-05-08 | 7767, 7782 |  | Zenith | 8728014 |
| 7784 | 36900.37000.37200.37800.38700.40200.41100.110700.1721200 | Painting 1st coat | 15d | 2028-09-01 | 2028-09-15 | 7768, 7783 |  | Zenith | 8728024 |

| ID | WBS | Task | Duration | Start | Finish | Predecessors | Constraint | Calendar | Unique_Task_ID |
| --- | --- | --- | --- | --- | --- | --- | --- | --- | --- |
| 7785 | 36900.37000.37200.37800.38700.40200.41100.110800 | **33rd floor roof** | 345.75d | 2027-09-06 | 2028-09-30 |  | start no earlier than 2027-09-06 | Zenith | 8651264 |
| 7786 | 36900.37000.37200.37800.38700.40200.41100.110800.1721300 | Block Work | 10d | 2027-09-06 | 2027-09-16 | 7265, 7770 |  | Zenith | 8728034 |
| 7787 | 36900.37000.37200.37800.38700.40200.41100.110800.1721400 | Fire sprinkler pipe fixing | 6d | 2027-09-16 | 2027-09-22 | 7771, 7786 |  | Zenith | 8728044 |
| 7788 | 36900.37000.37200.37800.38700.40200.41100.110800.1721500 | Internal Plumbing Works | 10d | 2027-09-16 | 2027-09-26 | 7772, 7786 |  | Zenith | 8728054 |
| 7789 | 36900.37000.37200.37800.38700.40200.41100.110800.1721600 | Waterproofing | 14d | 2027-10-25 | 2027-12-22 | 7773, 7788 |  | Zenith | 8728064 |
| 7790 | 36900.37000.37200.37800.38700.40200.41100.110800.1721700 | Internal Plaster | 14d | 2027-10-30 | 2027-12-27 | 7774, 7788, 7789FF+5d |  | Zenith | 8728074 |
| 7791 | 36900.37000.37200.37800.38700.40200.41100.110800.1721800 | IPS flooring work | 10d | 2027-12-28 | 2028-01-06 | 7775, 7790 |  | Zenith | 8728084 |
| 7792 | 36900.37000.37200.37800.38700.40200.41100.110800.1721900 | Toilet dado work | 10d | 2027-12-28 | 2028-01-06 | 7776, 7789, 7790 |  | Zenith | 8728094 |
| 7793 | 36900.37000.37200.37800.38700.40200.41100.110800.1722000 | Toilet flooring work | 7d | 2028-01-07 | 2028-01-13 | 7777, 7792 |  | Zenith | 8728104 |
| 7794 | 36900.37000.37200.37800.38700.40200.41100.110800.1722100 | False Cieling panel fixing | 10d | 2028-01-14 | 2028-01-23 | 7778, 7793 |  | Zenith | 8728114 |
| 7795 | 36900.37000.37200.37800.38700.40200.41100.110800.1722200 | Living dinning flooring | 16d | 2028-01-20 | 2028-02-04 | 7779, 7793 |  | Zenith | 8728124 |
| 7796 | 36900.37000.37200.37800.38700.40200.41100.110800.1722300 | Putty primer coat | 12d | 2028-03-27 | 2028-04-07 | 7780, 7795 |  | Zenith | 8728134 |
| 7797 | 36900.37000.37200.37800.38700.40200.41100.110800.1722400 | Aluminium door-window fixing | 15d | 2028-04-11 | 2028-04-25 | 7781, 7791, 7795 |  | Zenith | 8728144 |
| 7798 | 36900.37000.37200.37800.38700.40200.41100.110800.1722500 | Door shutter fixing (Pre Hung) | 8d | 2028-04-08 | 2028-04-15 | 7782, 7796 |  | Zenith | 8728154 |
| 7799 | 36900.37000.37200.37800.38700.40200.41100.110800.1722600 | Electrical wiring work | 12d | 2028-05-09 | 2028-05-20 | 7783, 7798 |  | Zenith | 8728164 |
| 7800 | 36900.37000.37200.37800.38700.40200.41100.110800.1722700 | Painting 1st coat | 15d | 2028-09-16 | 2028-09-30 | 7784, 7799 |  | Zenith | 8728174 |
| 7801 | 36900.37000.37200.37800.38700.40200.41100.110900 | **34th floor roof** | 350.75d | 2027-09-16 | 2028-10-15 |  | start no earlier than 2027-09-16 | Zenith | 8651274 |
| 7802 | 36900.37000.37200.37800.38700.40200.41100.110900.1722800 | Block Work | 10d | 2027-09-16 | 2027-09-26 | 7266, 7786 |  | Zenith | 8728184 |
| 7803 | 36900.37000.37200.37800.38700.40200.41100.110900.1722900 | Fire sprinkler pipe fixing | 6d | 2027-09-26 | 2027-10-02 | 7787, 7802 |  | Zenith | 8728194 |
| 7804 | 36900.37000.37200.37800.38700.40200.41100.110900.1723000 | Internal Plumbing Works | 10d | 2027-09-26 | 2027-10-06 | 7788, 7802 |  | Zenith | 8728204 |
| 7805 | 36900.37000.37200.37800.38700.40200.41100.110900.1723100 | Waterproofing | 14d | 2027-12-23 | 2028-01-05 | 7789, 7804 |  | Zenith | 8728214 |
| 7806 | 36900.37000.37200.37800.38700.40200.41100.110900.1723200 | Internal Plaster | 14d | 2027-12-28 | 2028-01-10 | 7790, 7804, 7805FF+5d |  | Zenith | 8728224 |
| 7807 | 36900.37000.37200.37800.38700.40200.41100.110900.1723300 | IPS flooring work | 10d | 2028-01-11 | 2028-01-20 | 7791, 7806 |  | Zenith | 8728234 |
| 7808 | 36900.37000.37200.37800.38700.40200.41100.110900.1723400 | Toilet dado work | 10d | 2028-01-11 | 2028-01-20 | 7792, 7805, 7806 |  | Zenith | 8728244 |
| 7809 | 36900.37000.37200.37800.38700.40200.41100.110900.1723500 | Toilet flooring work | 7d | 2028-01-21 | 2028-01-27 | 7793, 7808 |  | Zenith | 8728254 |
| 7810 | 36900.37000.37200.37800.38700.40200.41100.110900.1723600 | False Cieling panel fixing | 10d | 2028-01-28 | 2028-02-06 | 7794, 7809 |  | Zenith | 8728264 |
| 7811 | 36900.37000.37200.37800.38700.40200.41100.110900.1723700 | Living dinning flooring | 16d | 2028-02-05 | 2028-02-20 | 7795, 7809 |  | Zenith | 8728274 |
| 7812 | 36900.37000.37200.37800.38700.40200.41100.110900.1723800 | Putty primer coat | 12d | 2028-04-08 | 2028-04-19 | 7796, 7811 |  | Zenith | 8728284 |
| 7813 | 36900.37000.37200.37800.38700.40200.41100.110900.1723900 | Aluminium door-window fixing | 15d | 2028-04-26 | 2028-05-10 | 7797, 7807, 7811 |  | Zenith | 8728294 |
| 7814 | 36900.37000.37200.37800.38700.40200.41100.110900.1724000 | Door shutter fixing (Pre Hung) | 8d | 2028-04-20 | 2028-04-27 | 7798, 7812 |  | Zenith | 8728304 |
| 7815 | 36900.37000.37200.37800.38700.40200.41100.110900.1724100 | Electrical wiring work | 12d | 2028-05-21 | 2028-06-01 | 7799, 7814 |  | Zenith | 8728314 |
| 7816 | 36900.37000.37200.37800.38700.40200.41100.110900.1724200 | Painting 1st coat | 15d | 2028-10-01 | 2028-10-15 | 7800, 7815 |  | Zenith | 8728324 |

| ID | WBS | Task | Duration | Start | Finish | Predecessors | Constraint | Calendar | Unique_Task_ID |
| --- | --- | --- | --- | --- | --- | --- | --- | --- | --- |
| 7817 | 36900.37000.37200.37800.38700.40200.41100.111000 | **35th floor roof** | 355.75d | 2027-09-26 | 2028-10-30 |  | start no earlier than 2027-09-26 | Zenith | 8651284 |
| 7818 | 36900.37000.37200.37800.38700.40200.41100.111000.1724300 | Block Work | 10d | 2027-09-26 | 2027-10-06 | 7267, 7802 |  | Zenith | 8728334 |
| 7819 | 36900.37000.37200.37800.38700.40200.41100.111000.1724400 | Fire sprinkler pipe fixing | 6d | 2027-10-06 | 2027-10-12 | 7803, 7818 |  | Zenith | 8728344 |
| 7820 | 36900.37000.37200.37800.38700.40200.41100.111000.1724500 | Internal Plumbing Works | 10d | 2027-10-06 | 2027-10-16 | 7804, 7818 |  | Zenith | 8728354 |
| 7821 | 36900.37000.37200.37800.38700.40200.41100.111000.1724600 | Waterproofing | 14d | 2028-01-06 | 2028-01-19 | 7805, 7820 |  | Zenith | 8728364 |
| 7822 | 36900.37000.37200.37800.38700.40200.41100.111000.1724700 | Internal Plaster | 14d | 2028-01-11 | 2028-01-24 | 7806, 7820, 7821FF+5d |  | Zenith | 8728374 |
| 7823 | 36900.37000.37200.37800.38700.40200.41100.111000.1724800 | IPS flooring work | 10d | 2028-01-25 | 2028-02-03 | 7807, 7822 |  | Zenith | 8728384 |
| 7824 | 36900.37000.37200.37800.38700.40200.41100.111000.1724900 | Toilet dado work | 10d | 2028-01-25 | 2028-02-03 | 7808, 7821, 7822 |  | Zenith | 8728394 |
| 7825 | 36900.37000.37200.37800.38700.40200.41100.111000.1725000 | Toilet flooring work | 7d | 2028-02-04 | 2028-02-10 | 7809, 7824 |  | Zenith | 8728404 |
| 7826 | 36900.37000.37200.37800.38700.40200.41100.111000.1725100 | False Cieling panel fixing | 10d | 2028-02-11 | 2028-02-20 | 7810, 7825 |  | Zenith | 8728414 |
| 7827 | 36900.37000.37200.37800.38700.40200.41100.111000.1725200 | Living dinning flooring | 16d | 2028-02-21 | 2028-03-07 | 7811, 7825 |  | Zenith | 8728424 |
| 7828 | 36900.37000.37200.37800.38700.40200.41100.111000.1725300 | Putty primer coat | 12d | 2028-04-20 | 2028-05-01 | 7812, 7827 |  | Zenith | 8728434 |
| 7829 | 36900.37000.37200.37800.38700.40200.41100.111000.1725400 | Aluminium door-window fixing | 15d | 2028-05-11 | 2028-05-25 | 7813, 7823, 7827 |  | Zenith | 8728444 |
| 7830 | 36900.37000.37200.37800.38700.40200.41100.111000.1725500 | Door shutter fixing (Pre Hung) | 8d | 2028-05-02 | 2028-05-09 | 7814, 7828 |  | Zenith | 8728454 |
| 7831 | 36900.37000.37200.37800.38700.40200.41100.111000.1725600 | Electrical wiring work | 12d | 2028-06-02 | 2028-06-13 | 7815, 7830 |  | Zenith | 8728464 |
| 7832 | 36900.37000.37200.37800.38700.40200.41100.111000.1725700 | Painting 1st coat | 15d | 2028-10-16 | 2028-10-30 | 7816, 7831 |  | Zenith | 8728474 |
| 7833 | 36900.37000.37200.37800.38700.40200.41100.59600 | **36th Floor** | 405.75d | 2027-10-06 | 2029-02-12 |  | start no earlier than 2027-10-06 | Zenith | 8648334 |
| 7834 | 36900.37000.37200.37800.38700.40200.41100.59600.1725800 | Block Work | 10d | 2027-10-06 | 2027-10-16 | 7268, 7818 |  | Zenith | 8728484 |
| 7835 | 36900.37000.37200.37800.38700.40200.41100.59600.1725900 | Fire sprinkler pipe fixing | 6d | 2027-10-16 | 2027-10-22 | 7819, 7834 |  | Zenith | 8728494 |
| 7836 | 36900.37000.37200.37800.38700.40200.41100.59600.1726000 | Internal Plumbing Works | 10d | 2027-10-16 | 2027-10-26 | 7820, 7834 |  | Zenith | 8728504 |
| 7837 | 36900.37000.37200.37800.38700.40200.41100.59600.1726100 | Waterproofing | 14d | 2028-01-20 | 2028-02-02 | 7821, 7836 |  | Zenith | 8728514 |
| 7838 | 36900.37000.37200.37800.38700.40200.41100.59600.1726200 | Internal Plaster | 14d | 2028-01-25 | 2028-02-07 | 7822, 7836, 7837FF+5d |  | Zenith | 8728524 |
| 7839 | 36900.37000.37200.37800.38700.40200.41100.59600.1726300 | IPS flooring work | 10d | 2028-02-08 | 2028-02-17 | 7823, 7837, 7838 |  | Zenith | 8728534 |
| 7840 | 36900.37000.37200.37800.38700.40200.41100.59600.1726400 | Toilet dado work | 10d | 2028-02-18 | 2028-02-27 | 7824, 7839 |  | Zenith | 8728544 |
| 7841 | 36900.37000.37200.37800.38700.40200.41100.59600.1726500 | Toilet flooring work | 7d | 2028-02-28 | 2028-03-05 | 7825, 7840 |  | Zenith | 8728554 |
| 7842 | 36900.37000.37200.37800.38700.40200.41100.59600.1726600 | False ceiling | 10d | 2028-03-06 | 2028-03-15 | 7826, 7841 |  | Zenith | 8728564 |
| 7843 | 36900.37000.37200.37800.38700.40200.41100.59600.1726700 | Living dinning flooring | 16d | 2028-03-08 | 2028-03-23 | 7827, 7841 |  | Zenith | 8728574 |
| 7844 | 36900.37000.37200.37800.38700.40200.41100.59600.1726800 | Putty Primer coat | 12d | 2028-05-02 | 2028-05-13 | 7828, 7835, 7842, 7843 |  | Zenith | 8728584 |
| 7845 | 36900.37000.37200.37800.38700.40200.41100.59600.1726900 | Aluminium door-window fixing | 15d | 2028-05-26 | 2028-06-09 | 7829, 7839, 7843 |  | Zenith | 8728594 |
| 7846 | 36900.37000.37200.37800.38700.40200.41100.59600.1727000 | Door shutter fixing (Pre Hung) | 8d | 2028-05-14 | 2028-05-21 | 7830, 7844 |  | Zenith | 8728604 |
| 7847 | 36900.37000.37200.37800.38700.40200.41100.59600.1727100 | Electrical wiring work | 12d | 2028-06-14 | 2028-06-25 | 7831, 7846 |  | Zenith | 8728614 |
| 7848 | 36900.37000.37200.37800.38700.40200.41100.59600.1727200 | Painting 1st coat | 15d | 2028-10-31 | 2028-12-29 | 7832, 7847 |  | Zenith | 8728624 |
| 7849 | 36900.37000.37200.37800.38700.40200.41100.59600.1727300 | Misc. Works | 45d | 2028-12-30 | 2029-02-12 | 7848 |  | Zenith | 8728634 |

| ID | WBS | Task | Duration | Start | Finish | Predecessors | Constraint | Calendar | Unique_Task_ID |
| --- | --- | --- | --- | --- | --- | --- | --- | --- | --- |
| 7850 | 36900.37000.37200.37800.38700.40200.223800 | **Terrace Finishing** | 116d | 2027-10-06 | 2028-03-14 |  | start no earlier than 2027-10-06 | Zenith | 8656744 |
| 7851 | 36900.37000.37200.37800.38700.40200.223800.1061700 | Terrace waterproofing | 40d | 2027-10-06 | 2027-12-29 | 7231FS+2d |  | Zenith | 8677844 |
| 7852 | 36900.37000.37200.37800.38700.40200.223800.1061800 | Terrace finishing | 75d | 2027-12-31 | 2028-03-14 | 7851FS+1d |  | Zenith | 8677834 |
| 7853 | 36900.37000.37200.37800.38700.40200.47900 | **Balcony Railing** | 358d | 2027-03-27 | 2028-05-02 |  | start no earlier than 2027-03-27 | Zenith | 8648124 |
| 7854 | 36900.37000.37200.37800.38700.40200.47900.1061900 | 1st Floor | 8d | 2027-03-27 | 2027-04-03 | 7299FF+180d |  | Zenith | 8677824 |
| 7855 | 36900.37000.37200.37800.38700.40200.47900.1062000 | 2nd Floor | 10d | 2027-04-04 | 2027-04-13 | 7854, 7315 |  | Zenith | 8677814 |
| 7856 | 36900.37000.37200.37800.38700.40200.47900.1062100 | 3rd Floor | 10d | 2027-04-14 | 2027-04-23 | 7855, 7331 |  | Zenith | 8677804 |
| 7857 | 36900.37000.37200.37800.38700.40200.47900.1062200 | 4th Floor | 10d | 2027-04-24 | 2027-05-03 | 7856, 7347 |  | Zenith | 8677794 |
| 7858 | 36900.37000.37200.37800.38700.40200.47900.1062300 | 5th Floor | 10d | 2027-05-04 | 2027-05-13 | 7857, 7363 |  | Zenith | 8677784 |
| 7859 | 36900.37000.37200.37800.38700.40200.47900.1062400 | 6th Floor | 10d | 2027-05-14 | 2027-05-23 | 7858, 7379 |  | Zenith | 8677774 |
| 7860 | 36900.37000.37200.37800.38700.40200.47900.1062500 | 7th Floor | 10d | 2027-05-24 | 2027-06-02 | 7859, 7395 |  | Zenith | 8677764 |
| 7861 | 36900.37000.37200.37800.38700.40200.47900.1062600 | 8th Floor | 10d | 2027-06-03 | 2027-06-12 | 7860, 7411 |  | Zenith | 8677754 |
| 7862 | 36900.37000.37200.37800.38700.40200.47900.1062700 | 9th Floor | 10d | 2027-06-13 | 2027-06-22 | 7861, 7427 |  | Zenith | 8677744 |
| 7863 | 36900.37000.37200.37800.38700.40200.47900.1062800 | 10th Floor | 10d | 2027-06-23 | 2027-07-02 | 7862, 7443 |  | Zenith | 8677734 |
| 7864 | 36900.37000.37200.37800.38700.40200.47900.1062900 | 11th Floor | 10d | 2027-07-03 | 2027-07-12 | 7863, 7459 |  | Zenith | 8677724 |
| 7865 | 36900.37000.37200.37800.38700.40200.47900.1063000 | 12th Floor | 10d | 2027-07-13 | 2027-07-22 | 7864, 7475 |  | Zenith | 8677714 |
| 7866 | 36900.37000.37200.37800.38700.40200.47900.1063100 | 13th Floor | 10d | 2027-07-23 | 2027-08-01 | 7865, 7491 |  | Zenith | 8677704 |
| 7867 | 36900.37000.37200.37800.38700.40200.47900.1063200 | 14th Floor | 10d | 2027-08-02 | 2027-08-11 | 7866, 7507 |  | Zenith | 8677694 |
| 7868 | 36900.37000.37200.37800.38700.40200.47900.1063300 | 15th Floor | 10d | 2027-08-12 | 2027-08-21 | 7867, 7523 |  | Zenith | 8677684 |
| 7869 | 36900.37000.37200.37800.38700.40200.47900.1063400 | 16th Floor | 10d | 2027-08-22 | 2027-08-31 | 7868, 7539 |  | Zenith | 8677674 |
| 7870 | 36900.37000.37200.37800.38700.40200.47900.1063500 | 17th Floor | 10d | 2027-09-01 | 2027-09-10 | 7869, 7555 |  | Zenith | 8677664 |
| 7871 | 36900.37000.37200.37800.38700.40200.47900.1063600 | 18th Floor | 10d | 2027-09-11 | 2027-09-20 | 7870, 7571 |  | Zenith | 8677654 |
| 7872 | 36900.37000.37200.37800.38700.40200.47900.1063700 | 19th Floor | 10d | 2027-09-21 | 2027-09-30 | 7871, 7587 |  | Zenith | 8677644 |
| 7873 | 36900.37000.37200.37800.38700.40200.47900.1063800 | 20th Floor | 10d | 2027-10-01 | 2027-10-10 | 7872, 7603 |  | Zenith | 8677634 |
| 7874 | 36900.37000.37200.37800.38700.40200.47900.1063900 | 21st Floor | 10d | 2027-10-11 | 2027-10-20 | 7873, 7619 |  | Zenith | 8677624 |
| 7875 | 36900.37000.37200.37800.38700.40200.47900.1064000 | 22nd Floor | 10d | 2027-10-21 | 2027-10-30 | 7874, 7635 |  | Zenith | 8677614 |
| 7876 | 36900.37000.37200.37800.38700.40200.47900.1064100 | 23rd Floor | 10d | 2027-10-31 | 2027-12-24 | 7875, 7651 |  | Zenith | 8677604 |
| 7877 | 36900.37000.37200.37800.38700.40200.47900.1064200 | 24th Floor | 10d | 2027-12-25 | 2028-01-03 | 7876, 7667 |  | Zenith | 8677594 |
| 7878 | 36900.37000.37200.37800.38700.40200.47900.1064300 | 25th Floor | 10d | 2028-01-04 | 2028-01-13 | 7877, 7683 |  | Zenith | 8677584 |
| 7879 | 36900.37000.37200.37800.38700.40200.47900.1064400 | 26th Floor | 10d | 2028-01-14 | 2028-01-23 | 7878, 7699 |  | Zenith | 8677574 |
| 7880 | 36900.37000.37200.37800.38700.40200.47900.1064500 | 27th Floor | 10d | 2028-01-24 | 2028-02-02 | 7879, 7715 |  | Zenith | 8677564 |
| 7881 | 36900.37000.37200.37800.38700.40200.47900.1064600 | 28th Floor | 10d | 2028-02-03 | 2028-02-12 | 7880, 7731 |  | Zenith | 8677554 |
| 7882 | 36900.37000.37200.37800.38700.40200.47900.1064700 | 29th Floor | 10d | 2028-02-13 | 2028-02-22 | 7881, 7747 |  | Zenith | 8677544 |
| 7883 | 36900.37000.37200.37800.38700.40200.47900.1064800 | 30th Floor | 10d | 2028-02-23 | 2028-03-03 | 7882, 7763 |  | Zenith | 8677534 |
| 7884 | 36900.37000.37200.37800.38700.40200.47900.1064900 | 31st Floor | 10d | 2028-03-04 | 2028-03-13 | 7883, 7779 |  | Zenith | 8677524 |
| 7885 | 36900.37000.37200.37800.38700.40200.47900.1065000 | 32nd Floor | 10d | 2028-03-14 | 2028-03-23 | 7884, 7795 |  | Zenith | 8677514 |
| 7886 | 36900.37000.37200.37800.38700.40200.47900.1065100 | 33rd Floor | 10d | 2028-03-24 | 2028-04-02 | 7885, 7811 |  | Zenith | 8677504 |
| 7887 | 36900.37000.37200.37800.38700.40200.47900.1065200 | 34th Floor | 10d | 2028-04-03 | 2028-04-12 | 7886, 7827 |  | Zenith | 8677494 |
| 7888 | 36900.37000.37200.37800.38700.40200.47900.1065300 | 35th Floor | 10d | 2028-04-13 | 2028-04-22 | 7887, 7843 |  | Zenith | 8677484 |
| 7889 | 36900.37000.37200.37800.38700.40200.47900.1065400 | 36th Floor | 10d | 2028-04-23 | 2028-05-02 | 7888 |  | Zenith | 8677474 |

| ID | WBS | Task | Duration | Start | Finish | Predecessors | Constraint | Calendar | Unique_Task_ID |
| --- | --- | --- | --- | --- | --- | --- | --- | --- | --- |
| 7890 | 36900.37000.37200.37800.38700.40200.120400 | **Common Area Finishing** | 290d | 2027-10-04 | 2028-09-02 |  | start no earlier than 2027-10-04 | Zenith | 8651704 |
| 7891 | 36900.37000.37200.37800.38700.40200.120400.1065500 | Masonary Work | 40d | 2027-10-04 | 2027-12-27 | 7231 |  | Zenith | 8677464 |
| 7892 | 36900.37000.37200.37800.38700.40200.120400.1065600 | Fire sprinkler pipe fixing | 40d | 2027-12-28 | 2028-02-05 | 7891 |  | Zenith | 8677454 |
| 7893 | 36900.37000.37200.37800.38700.40200.120400.1065700 | Corridoor, staircase, shaft Plaster & whitewash | 120d | 2027-12-28 | 2028-04-25 | 7891 |  | Zenith | 8677444 |
| 7894 | 36900.37000.37200.37800.38700.40200.120400.1065800 | Staircase railing fixing | 100d | 2027-12-28 | 2028-04-05 | 7891 |  | Zenith | 8677434 |
| 7895 | 36900.37000.37200.37800.38700.40200.120400.1065900 | Fire staircase flooring | 120d | 2028-01-07 | 2028-05-05 | 7894FF+30d |  | Zenith | 8677424 |
| 7896 | 36900.37000.37200.37800.38700.40200.120400.1066000 | Main staircase flooring | 120d | 2028-01-07 | 2028-05-05 | 7894FF+30d |  | Zenith | 8677414 |
| 7897 | 36900.37000.37200.37800.38700.40200.120400.1066100 | Fire door work | 45d | 2028-05-06 | 2028-06-19 | 7895 |  | Zenith | 8677404 |
| 7898 | 36900.37000.37200.37800.38700.40200.120400.1066200 | Lobby flooring & Corridor | 120d | 2028-02-06 | 2028-06-04 | 7896FF+30d |  | Zenith | 8677394 |
| 7899 | 36900.37000.37200.37800.38700.40200.120400.1066300 | Ceiling & wall putty | 120d | 2028-03-07 | 2028-07-04 | 7897FF+15d, 7898FF+30d, 7844FF+30d |  | Zenith | 8677384 |
| 7900 | 36900.37000.37200.37800.38700.40200.120400.1066400 | Electrical wiring work | 120d | 2028-03-22 | 2028-07-19 | 7899FF+15d |  | Zenith | 8677374 |
| 7901 | 36900.37000.37200.37800.38700.40200.120400.1066500 | Ceiling & wall painting | 120d | 2028-04-11 | 2028-08-08 | 7892FS+20d, 7899SS+20d, 7900FF+20d |  | Zenith | 8677364 |
| 7902 | 36900.37000.37200.37800.38700.40200.120400.1066600 | Light fixture supply & installation | 45d | 2028-07-20 | 2028-09-02 | 7899, 7901FF+25d |  | Zenith | 8677354 |
| 7903 | 36900.37000.37200.37800.120700 | **MEP work** | 260d | 2027-10-04 | 2028-08-03 |  | start no earlier than 2027-10-04 | Zenith | 8651934 |
| 7904 | 36900.37000.37200.37800.120700.124900 | **Electrical work** | 240d | 2027-10-04 | 2028-07-14 |  | start no earlier than 2027-10-04 | Zenith | 8651984 |
| 7905 | 36900.37000.37200.37800.120700.124900.853300 | Cable Tray | 90d | 2027-10-04 | 2028-02-15 | 7231 |  | Zenith | 8721084 |
| 7906 | 36900.37000.37200.37800.120700.124900.853400 | Cable, main & sub main | 60d | 2028-01-02 | 2028-03-01 | 7905SS+45d |  | Zenith | 8721074 |
| 7907 | 36900.37000.37200.37800.120700.124900.853500 | LT panel & DB | 90d | 2028-02-16 | 2028-05-15 | 7905 |  | Zenith | 8721064 |
| 7908 | 36900.37000.37200.37800.120700.124900.853600 | Rising main | 90d | 2028-03-02 | 2028-05-30 | 7905FS+15d |  | Zenith | 8721054 |
| 7909 | 36900.37000.37200.37800.120700.124900.853700 | Earthing Works | 60d | 2028-03-07 | 2028-05-05 | 7905FS+20d |  | Zenith | 8721044 |
| 7910 | 36900.37000.37200.37800.120700.124900.853800 | Energy meter | 60d | 2028-05-16 | 2028-07-14 | 7906, 7909FS+10d |  | Zenith | 8721034 |
| 7911 | 36900.37000.37200.37800.120700.124900.853900 | HVAC & Exhast fan | 120d | 2028-02-11 | 2028-06-09 | 7905FS-5d |  | Zenith | 8721024 |
| 7912 | 36900.37000.37200.37800.120700.124900.854000 | FTTH | 60d | 2028-05-01 | 2028-06-29 | 7907FS-15d |  | Zenith | 8721014 |
| 7913 | 36900.37000.37200.37800.120700.124900.854100 | Security System - FA & PA | 60d | 2028-05-16 | 2028-07-14 | 7907, 7908FF+10d, 7911FF+2d, 7912FF |  | Zenith | 8721004 |

| ID | WBS | Task | Duration | Start | Finish | Predecessors | Constraint | Calendar | Unique_Task_ID |
| --- | --- | --- | --- | --- | --- | --- | --- | --- | --- |
| 7914 | 36900.37000.37200.37800.120700.165000 | **Plumbing work** | 218d | 2027-12-30 | 2028-08-03 |  | start no earlier than 2027-12-30 | Zenith | 8652784 |
| 7915 | 36900.37000.37200.37800.120700.165000.854200 | Terrace looping | 45d | 2027-12-30 | 2028-02-12 | 7851 |  | Zenith | 8720994 |
| 7916 | 36900.37000.37200.37800.120700.165000.854300 | Shaft Plumbing | 70d | 2028-03-27 | 2028-06-04 | 7915, 7893FS-30d |  | Zenith | 8720984 |
| 7917 | 36900.37000.37200.37800.120700.165000.854400 | CP sanitary fixture supply | 45d | 2028-06-05 | 2028-07-19 | 7916 |  | Zenith | 8720974 |
| 7918 | 36900.37000.37200.37800.120700.165000.854500 | Cold & flushing water supply | 45d | 2028-06-05 | 2028-07-19 | 7916 |  | Zenith | 8720964 |
| 7919 | 36900.37000.37200.37800.120700.165000.854600 | Misc work | 30d | 2028-07-05 | 2028-08-03 | 7917FS-15d, 7918FS-15d |  | Zenith | 8720954 |
| 7920 | 36900.37000.37200.37800.120700.210400 | **Fire fighting work** | 121d | 2028-02-11 | 2028-06-10 |  | start no earlier than 2028-02-11 | Zenith | 8655944 |
| 7921 | 36900.37000.37200.37800.120700.210400.854700 | Fire hydrant work | 75d | 2028-02-11 | 2028-04-25 | 7893SS+45d |  | Zenith | 8720944 |
| 7922 | 36900.37000.37200.37800.120700.210400.854800 | Pipe connection & sprinkler installation | 45d | 2028-04-27 | 2028-06-10 | 7921FS+1d, 7924FF+15d |  | Zenith | 8720934 |
| 7923 | 36900.37000.37200.37800.120700.210400.854900 | Shaft Downtake works | 60d | 2028-02-26 | 2028-04-25 | 7851, 7893FS-60d |  | Zenith | 8720924 |
| 7924 | 36900.37000.37200.37800.120700.210400.855000 | Connection to pump room | 30d | 2028-04-26 | 2028-05-25 | 7923 |  | Zenith | 8720914 |
| 7925 | 36900.37000.37200.37800.120700.218800 | **Lift work** | 247.75d | 2027-10-16 | 2028-08-03 |  | start no earlier than 2027-10-16 | Zenith | 8656484 |
| 7926 | 36900.37000.37200.37800.120700.218800.855100 | Lift Shaft/Pit Handover | 40d | 2027-10-16 | 2028-01-09 | 7270FS+5d |  | Zenith | 8720904 |
| 7927 | 36900.37000.37200.37800.120700.218800.855200 | Lift installation work | 60d | 2028-01-09 | 2028-03-09 | 7926 |  | Zenith | 8720894 |
| 7928 | 36900.37000.37200.37800.120700.218800.855300 | Lift testing and commissioning | 60d | 2028-06-05 | 2028-08-03 | 7927, 7898 |  | Zenith | 8720884 |
| 7929 | 36900.37000.37200.37800.226500 | **Basement lobby** | 90d | 2028-01-24 | 2028-04-23 |  | start no earlier than 2028-01-24 | Zenith | 8656914 |
| 7930 | 36900.37000.37200.37800.226500.412200 | Basement lobby | 90d | 2028-01-24 | 2028-04-23 | 7926FS+15d, 7043FS+15d, 7044FS+15d |  | Zenith | 8730784 |
| 7931 | 36900.37000.37200.37800.221800 | **External Paint Works** | 128d | 2028-05-03 | 2028-09-07 |  | start no earlier than 2028-05-03 | Zenith | 8656774 |
| 7932 | 36900.37000.37200.37800.221800.412300 | Surface prepration with Primer | 60d | 2028-05-03 | 2028-07-01 | 7270FS+2d, 7889 |  | Zenith | 8730774 |
| 7933 | 36900.37000.37200.37800.221800.412400 | External Painting (Texture & first coat) | 90d | 2028-06-10 | 2028-09-07 | 7932FF+10d, 7845 |  | Zenith | 8730764 |
| 7934 | 36900.37000.37200.37800.308000 | OC Application/Readiness | 2d | 2029-02-28 | 2029-03-01 | 7933FS+44d, 7922FS+30d, 7919, 7930FS+30d, 7928, 7913, 7910, 7852FS+30d, 7849FS+15d, 7899, 7889, 7845 |  | Zenith | 8735114 |
| 7935 | 36900.37000.37200.37800.308100 | OC Receipt | 60d | 2029-03-02 | 2029-04-30 | 7934 |  | Zenith | 8735104 |
| 7936 | 36900.37000.37200.37800.126700 | **Post OC activities** | 490d | 2028-09-18 | 2030-04-20 |  | start no earlier than 2028-09-18 | Zenith | 8651964 |
| 7937 | 36900.37000.37200.37800.126700.412500 | CP & Sanitaryware | 150d | 2029-05-01 | 2029-09-27 | 7935 |  | Zenith | 8730754 |
| 7938 | 36900.37000.37200.37800.126700.412600 | Electrical Fixtures And Fittings | 150d | 2029-05-01 | 2029-09-27 | 7935 |  | Zenith | 8730744 |
| 7939 | 36900.37000.37200.37800.126700.412700 | Final coat paint external | 100d | 2029-05-01 | 2029-08-08 | 7935 |  | Zenith | 8730734 |
| 7940 | 36900.37000.37200.37800.126700.412800 | Final Coat Paint Internal | 150d | 2029-05-01 | 2029-09-27 | 7935, 7848 |  | Zenith | 8730724 |
| 7941 | 36900.37000.37200.37800.126700.412900 | Balcony Railing Glass Fixing | 120d | 2029-09-28 | 2030-03-11 | 7940, 7889FS+30d |  | Zenith | 8730714 |
| 7942 | 36900.37000.37200.37800.126700.413000 | MEP | 150d | 2028-09-18 | 2029-03-31 | 7902FS+15d |  | Zenith | 8730704 |
| 7943 | 36900.37000.37200.37800.126700.413100 | Wooden Flooring | 180d | 2029-04-16 | 2029-10-12 | 7940FF+15d |  | Zenith | 8730694 |
| 7944 | 36900.37000.37200.37800.126700.413200 | Split AC Units installation | 100d | 2029-10-28 | 2030-03-21 | 7943FS+15d |  | Zenith | 8730684 |
| 7945 | 36900.37000.37200.37800.126700.413300 | Misc. works (Modular Kitchen & Others) | 180d | 2029-09-08 | 2030-04-20 | 7944FF+30d |  | Zenith | 8730674 |
| 7946 | 36900.37000.37200.37800.308200 | Offer To Possession | 182d | 2029-09-30 | 2030-05-14 | 7935FS+152d, 7937FF+20d, 7938FF+20d, 7939FF+20d, 7944FF+10d, 7942FF+30d, 7941FF+15d, 7945FF+15d |  | Zenith | 8735094 |

| ID | WBS | Task | Duration | Start | Finish | Predecessors | Complete | Constraint | Calendar | Unique_Task_ID |
| --- | --- | --- | --- | --- | --- | --- | --- | --- | --- | --- |
| 7947 | 36900.37000.37200.38300 | **Tower 09** | 2227d | 2024-12-06 | 2031-09-17 |  | 1% | start no earlier than 2024-12-06 | Zenith | 8647634 |
| 7948 | 36900.37000.37200.38300.63900 | **Sub-Structure Works** | 578d | 2024-12-06 | 2026-07-31 |  | 40% | start no earlier than 2024-12-06 | Zenith | 8648434 |
| 7949 | 36900.37000.37200.38300.63900.141600 | **Soil Bed Preparation** | 351d | 2024-12-06 | 2025-12-16 |  | 99% | start no earlier than 2024-12-06 | Zenith | 8652684 |
| 7950 | 36900.37000.37200.38300.63900.141600.855400 | Excavation (2 m) | 1d | 2025-12-16 | 2025-12-16 |  |  | start no earlier than 2025-12-16 | Zenith | 8720874 |
| 7951 | 36900.37000.37200.38300.63900.141600.231800 | Soldier Piling shop drawing approval | 52d | 2024-12-06 | 2025-02-08 |  | 100% | start no earlier than 2024-12-06 | Zenith | 8720864 |
| 7952 | 36900.37000.37200.38300.63900.141600.231900 | Mobilization & Soldier Piling with Excavation | 65d | 2025-01-18 | 2025-07-03 | 7951FS-15d | 100% | start no earlier than 2025-01-18 | Zenith | 8720854 |
| 7953 | 36900.37000.37200.38300.63900.141600.232000 | Foundation bulk Excavation | 3d | 2025-05-12 | 2025-05-14 | 7952 | 100% | start no earlier than 2025-05-12 | Zenith | 8720844 |
| 7954 | 36900.37000.37200.38300.63900.141600.232100 | Soil dressing & ATT | 10.41d | 2025-05-14 | 2025-06-15 | 7953 | 100% | start no earlier than 2025-05-14 | Zenith | 8720834 |
| 7955 | 36900.37000.37200.38300.63900.119500 | **Structure Works** | 285d | 2025-05-18 | 2026-03-13 |  | 34% | start no earlier than 2025-05-18 | Zenith | 8651694 |
| 7956 | 36900.37000.37200.38300.63900.119500.142300 | **Raft Foundation** | 130d | 2025-05-18 | 2025-09-24 |  | 100% | start no earlier than 2025-05-18 | Zenith | 8652864 |
| 7957 | 36900.37000.37200.38300.63900.119500.142300.254400 | PCC | 11d | 2025-05-18 | 2025-06-15 | 7954FS-25d | 100% | start no earlier than 2025-05-18 | Zenith | 8677344 |
| 7958 | 36900.37000.37200.38300.63900.119500.142300.254300 | Column/SW layout marking | 6d | 2025-06-16 | 2025-06-21 | 7957 | 100% | start no earlier than 2025-06-16 | Zenith | 8677334 |
| 7959 | 36900.37000.37200.38300.63900.119500.142300.254200 | Reinforcement | 22d | 2025-06-16 | 2025-09-21 | 7958SS+3d | 100% | start no earlier than 2025-06-16 | Zenith | 8677324 |
| 7960 | 36900.37000.37200.38300.63900.119500.142300.254100 | Formwork (Conventional) | 11d | 2025-07-22 | 2025-09-22 | 7959FF+3d | 100% | start no earlier than 2025-07-22 | Zenith | 8677314 |
| 7961 | 36900.37000.37200.38300.63900.119500.142300.254000 | Concreting | 6d | 2025-07-25 | 2025-09-24 | 7960FF+3d | 100% | start no earlier than 2025-07-25 | Zenith | 8677304 |
| 7962 | 36900.37000.37200.38300.63900.119500.142400 | **Basement 03 Roof Slab (Dummy/ Stitch/ tie slab)** | 25d | 2025-11-19 | 2025-12-28 |  |  | start no earlier than 2025-11-19 | Zenith | 8652464 |
| 7963 | 36900.37000.37200.38300.63900.119500.142400.1066700 | Column/SW Reinforcement | 9d | 2025-11-19 | 2025-11-27 | 7961 |  |  | Zenith | 8677294 |
| 7964 | 36900.37000.37200.38300.63900.119500.142400.1066800 | SW Formwork (Conventional) | 9d | 2025-11-23 | 2025-12-16 | 7963SS+4d |  |  | Zenith | 8677284 |
| 7965 | 36900.37000.37200.38300.63900.119500.142400.1066900 | Column/SW Concreting | 9d | 2025-11-27 | 2025-12-20 | 7964SS+4d |  |  | Zenith | 8677274 |
| 7966 | 36900.37000.37200.38300.63900.119500.142400.1067000 | Slab Formwork (Conventional) | 9d | 2025-12-16 | 2025-12-24 | 7965SS+4d |  |  | Zenith | 8677264 |
| 7967 | 36900.37000.37200.38300.63900.119500.142400.1067100 | Slab Reinforcement + Conduting | 3d | 2025-12-25 | 2025-12-27 | 7966 |  |  | Zenith | 8677254 |
| 7968 | 36900.37000.37200.38300.63900.119500.142400.1067200 | Concreting | 1d | 2025-12-28 | 2025-12-28 | 7967 |  |  | Zenith | 8677244 |
| 7969 | 36900.37000.37200.38300.63900.119500.142500 | **Basement 02 Roof Slab** | 136d | 2025-08-25 | 2026-01-22 |  | 39% | start no earlier than 2025-08-25 | Zenith | 8652474 |
| 7970 | 36900.37000.37200.38300.63900.119500.142500.251500 | Column/SW Reinforcement | 13d | 2025-08-25 | 2025-10-19 | 7968FS-54d | 100% | start no earlier than 2025-08-25 | Zenith | 8677234 |
| 7971 | 36900.37000.37200.38300.63900.119500.142500.251400 | SW Formwork (Conventional) | 11d | 2025-09-26 | 2025-12-18 | 7970SS+4d | 81% | start no earlier than 2025-09-26 | Zenith | 8677224 |
| 7972 | 36900.37000.37200.38300.63900.119500.142500.251300 | Column/SW Concreting | 17d | 2025-09-23 | 2025-12-20 | 7971SS-2d | 82% | start no earlier than 2025-09-23 | Zenith | 8677214 |
| 7973 | 36900.37000.37200.38300.63900.119500.142500.1067300 | Slab Formwork (Conventional) | 46d | 2025-11-19 | 2026-01-18 | 7972SS+20d |  |  | Zenith | 8677204 |
| 7974 | 36900.37000.37200.38300.63900.119500.142500.1067400 | Slab Reinforcement + Conduting | 3d | 2026-01-19 | 2026-01-21 | 7973 |  |  | Zenith | 8677194 |
| 7975 | 36900.37000.37200.38300.63900.119500.142500.1067500 | Concreting | 1d | 2026-01-22 | 2026-01-22 | 7974 |  |  | Zenith | 8677184 |

| ID | WBS | Task | Duration | Start | Finish | Predecessors | Constraint | Calendar | Unique_Task_ID |
| --- | --- | --- | --- | --- | --- | --- | --- | --- | --- |
| 7976 | 36900.37000.37200.38300.63900.119500.142600 | **Basement 01 Roof Slab** | 25d | 2026-01-23 | 2026-02-16 |  | start no earlier than 2026-01-23 | Zenith | 8652484 |
| 7977 | 36900.37000.37200.38300.63900.119500.142600.1067600 | Column/SW Reinforcement | 9d | 2026-01-23 | 2026-01-31 | 7975 |  | Zenith | 8677174 |
| 7978 | 36900.37000.37200.38300.63900.119500.142600.1067700 | SW Formwork (Conventional) | 9d | 2026-01-27 | 2026-02-04 | 7977SS+4d |  | Zenith | 8677164 |
| 7979 | 36900.37000.37200.38300.63900.119500.142600.1067800 | Column/SW Concreting | 9d | 2026-01-31 | 2026-02-08 | 7978SS+4d |  | Zenith | 8677154 |
| 7980 | 36900.37000.37200.38300.63900.119500.142600.1067900 | Slab Formwork (Conventional) | 9d | 2026-02-04 | 2026-02-12 | 7979SS+4d |  | Zenith | 8677144 |
| 7981 | 36900.37000.37200.38300.63900.119500.142600.1068000 | Slab Reinforcement + Conduting | 3d | 2026-02-13 | 2026-02-15 | 7980 |  | Zenith | 8677134 |
| 7982 | 36900.37000.37200.38300.63900.119500.142600.1068100 | Concreting | 1d | 2026-02-16 | 2026-02-16 | 7981 |  | Zenith | 8677124 |
| 7983 | 36900.37000.37200.38300.63900.119500.142700 | **Podium Slab/Ground Roof Floor Slab** | 25d | 2026-02-17 | 2026-03-13 |  | start no earlier than 2026-02-17 | Zenith | 8652494 |
| 7984 | 36900.37000.37200.38300.63900.119500.142700.1068200 | Column/SW Reinforcement | 9d | 2026-02-17 | 2026-02-25 | 7982 |  | Zenith | 8677114 |
| 7985 | 36900.37000.37200.38300.63900.119500.142700.1068300 | SW Formwork (Conventional) | 9d | 2026-02-21 | 2026-03-01 | 7984SS+4d |  | Zenith | 8677104 |
| 7986 | 36900.37000.37200.38300.63900.119500.142700.1068400 | Column/SW Concreting | 9d | 2026-02-25 | 2026-03-05 | 7985SS+4d |  | Zenith | 8677094 |
| 7987 | 36900.37000.37200.38300.63900.119500.142700.1068500 | Slab Formwork (Conventional) | 9d | 2026-03-01 | 2026-03-09 | 7986SS+4d |  | Zenith | 8677084 |
| 7988 | 36900.37000.37200.38300.63900.119500.142700.1068600 | Slab Reinforcement + Conduting | 3d | 2026-03-10 | 2026-03-12 | 7987 |  | Zenith | 8677074 |
| 7989 | 36900.37000.37200.38300.63900.119500.142700.1068700 | Concreting | 1d | 2026-03-13 | 2026-03-13 | 7988 |  | Zenith | 8677064 |
| 7990 | 36900.37000.37200.38300.63900.210300 | **Substructure Finishes** | 110d | 2026-04-13 | 2026-07-31 |  | start no earlier than 2026-04-13 | Zenith | 8656264 |
| 7991 | 36900.37000.37200.38300.63900.210300.855500 | Masonary Work | 35d | 2026-04-13 | 2026-05-17 | 7989FS+30d |  | Zenith | 8720824 |
| 7992 | 36900.37000.37200.38300.63900.210300.855600 | Plaster Work | 30d | 2026-05-18 | 2026-06-16 | 7991 |  | Zenith | 8720814 |
| 7993 | 36900.37000.37200.38300.63900.210300.855700 | Structural Steel work | 50d | 2026-05-13 | 2026-07-01 | 7989FS+60d |  | Zenith | 8720804 |
| 7994 | 36900.37000.37200.38300.63900.210300.855800 | White Wash | 35d | 2026-06-27 | 2026-07-31 | 7992FS+10d |  | Zenith | 8720794 |
| 7995 | 36900.37000.37200.38300.39500 | **Superstructure** | 801d | 2026-03-14 | 2028-08-20 |  | start no earlier than 2026-03-14 | Zenith | 8647714 |
| 7996 | 36900.37000.37200.38300.39500.45700 | **RCC structure** | 511d | 2026-03-14 | 2027-09-20 |  | start no earlier than 2026-03-14 | Zenith | 8647994 |
| 7997 | 36900.37000.37200.38300.39500.45700.196000 | **1st Floor Roof slab** | 25d | 2026-03-14 | 2026-04-07 |  | start no earlier than 2026-03-14 | Zenith | 8652924 |
| 7998 | 36900.37000.37200.38300.39500.45700.196000.1068800 | Reinforcement | 20d | 2026-03-14 | 2026-04-02 | 7989 |  | Zenith | 8677054 |
| 7999 | 36900.37000.37200.38300.39500.45700.196000.1068900 | Conduiting | 20d | 2026-03-17 | 2026-04-05 | 7998SS+3d |  | Zenith | 8677044 |
| 8000 | 36900.37000.37200.38300.39500.45700.196000.1069000 | Formwork | 20d | 2026-03-18 | 2026-04-06 | 7998SS+4d |  | Zenith | 8677034 |
| 8001 | 36900.37000.37200.38300.39500.45700.196000.1069100 | Concreting | 1d | 2026-04-07 | 2026-04-07 | 7999FS+1d, 8000 |  | Zenith | 8677024 |

| ID | WBS | Task | Duration | Start | Finish | Predecessors | Constraint | Calendar | Unique_Task_ID |
| --- | --- | --- | --- | --- | --- | --- | --- | --- | --- |
| 8002 | 36900.37000.37200.38300.39500.45700.196100 | **2nd Floor Roof slab** | 25d | 2026-04-08 | 2026-05-02 |  | start no earlier than 2026-04-08 | Zenith | 8652934 |
| 8003 | 36900.37000.37200.38300.39500.45700.196100.1069200 | Reinforcement | 20d | 2026-04-08 | 2026-04-27 | 8001 |  | Zenith | 8677014 |
| 8004 | 36900.37000.37200.38300.39500.45700.196100.1069300 | Conduiting | 20d | 2026-04-11 | 2026-04-30 | 8003SS+3d |  | Zenith | 8677004 |
| 8005 | 36900.37000.37200.38300.39500.45700.196100.1069400 | Formwork | 20d | 2026-04-12 | 2026-05-01 | 8003SS+4d |  | Zenith | 8676994 |
| 8006 | 36900.37000.37200.38300.39500.45700.196100.1069500 | Concreting | 1d | 2026-05-02 | 2026-05-02 | 8004FS+1d, 8005 |  | Zenith | 8676984 |
| 8007 | 36900.37000.37200.38300.39500.45700.196200 | **3rd Floor Roof slab** | 18d | 2026-05-03 | 2026-05-20 |  | start no earlier than 2026-05-03 | Zenith | 8652954 |
| 8008 | 36900.37000.37200.38300.39500.45700.196200.1069600 | Reinforcement | 13d | 2026-05-03 | 2026-05-15 | 8006 |  | Zenith | 8676974 |
| 8009 | 36900.37000.37200.38300.39500.45700.196200.1069700 | Conduiting | 13d | 2026-05-06 | 2026-05-18 | 8008SS+3d |  | Zenith | 8676964 |
| 8010 | 36900.37000.37200.38300.39500.45700.196200.1069800 | Formwork | 13d | 2026-05-07 | 2026-05-19 | 8008SS+4d |  | Zenith | 8676954 |
| 8011 | 36900.37000.37200.38300.39500.45700.196200.1069900 | Concreting | 1d | 2026-05-20 | 2026-05-20 | 8009FS+1d, 8010 |  | Zenith | 8676944 |
| 8012 | 36900.37000.37200.38300.39500.45700.196300 | **4th floor roof slab** | 13d | 2026-05-21 | 2026-06-02 |  | start no earlier than 2026-05-21 | Zenith | 8652964 |
| 8013 | 36900.37000.37200.38300.39500.45700.196300.1070000 | Reinforcement | 10d | 2026-05-21 | 2026-05-30 | 8011 |  | Zenith | 8676934 |
| 8014 | 36900.37000.37200.38300.39500.45700.196300.1070100 | Conduiting | 10d | 2026-05-22 | 2026-05-31 | 8013SS+1d |  | Zenith | 8676924 |
| 8015 | 36900.37000.37200.38300.39500.45700.196300.1070200 | Formwork | 10d | 2026-05-23 | 2026-06-01 | 8013SS+2d |  | Zenith | 8676914 |
| 8016 | 36900.37000.37200.38300.39500.45700.196300.1070300 | Concreting | 1d | 2026-06-02 | 2026-06-02 | 8014FS+1d, 8015 |  | Zenith | 8676904 |
| 8017 | 36900.37000.37200.38300.39500.45700.196400 | **5th floor roof slab** | 13d | 2026-06-03 | 2026-06-15 |  | start no earlier than 2026-06-03 | Zenith | 8652994 |
| 8018 | 36900.37000.37200.38300.39500.45700.196400.1070400 | Reinforcement | 10d | 2026-06-03 | 2026-06-12 | 8016 |  | Zenith | 8676894 |
| 8019 | 36900.37000.37200.38300.39500.45700.196400.1070500 | Conduiting | 10d | 2026-06-04 | 2026-06-13 | 8018SS+1d |  | Zenith | 8676884 |
| 8020 | 36900.37000.37200.38300.39500.45700.196400.1070600 | Formwork | 10d | 2026-06-05 | 2026-06-14 | 8018SS+2d |  | Zenith | 8676874 |
| 8021 | 36900.37000.37200.38300.39500.45700.196400.1070700 | Concreting | 1d | 2026-06-15 | 2026-06-15 | 8019FS+1d, 8020 |  | Zenith | 8676864 |
| 8022 | 36900.37000.37200.38300.39500.45700.196500 | **6th floor roof slab** | 13d | 2026-06-16 | 2026-06-28 |  | start no earlier than 2026-06-16 | Zenith | 8653014 |
| 8023 | 36900.37000.37200.38300.39500.45700.196500.1070800 | Reinforcement | 10d | 2026-06-16 | 2026-06-25 | 8021 |  | Zenith | 8676854 |
| 8024 | 36900.37000.37200.38300.39500.45700.196500.1070900 | Conduiting | 10d | 2026-06-17 | 2026-06-26 | 8023SS+1d |  | Zenith | 8676844 |
| 8025 | 36900.37000.37200.38300.39500.45700.196500.1071000 | Formwork | 10d | 2026-06-18 | 2026-06-27 | 8023SS+2d |  | Zenith | 8676834 |
| 8026 | 36900.37000.37200.38300.39500.45700.196500.1071100 | Concreting | 1d | 2026-06-28 | 2026-06-28 | 8024FS+1d, 8025 |  | Zenith | 8676824 |

| ID | WBS | Task | Duration | Start | Finish | Predecessors | Constraint | Calendar | Unique_Task_ID |
| --- | --- | --- | --- | --- | --- | --- | --- | --- | --- |
| 8027 | 36900.37000.37200.38300.39500.45700.196600 | **7th floor roof slab** | 13d | 2026-06-29 | 2026-07-11 |  | start no earlier than 2026-06-29 | Zenith | 8653024 |
| 8028 | 36900.37000.37200.38300.39500.45700.196600.1071200 | Reinforcement | 10d | 2026-06-29 | 2026-07-08 | 8026 |  | Zenith | 8676814 |
| 8029 | 36900.37000.37200.38300.39500.45700.196600.1071300 | Conduiting | 10d | 2026-06-30 | 2026-07-09 | 8028SS+1d |  | Zenith | 8676804 |
| 8030 | 36900.37000.37200.38300.39500.45700.196600.1071400 | Formwork | 10d | 2026-07-01 | 2026-07-10 | 8028SS+2d |  | Zenith | 8676794 |
| 8031 | 36900.37000.37200.38300.39500.45700.196600.1071500 | Concreting | 1d | 2026-07-11 | 2026-07-11 | 8029FS+1d, 8030 |  | Zenith | 8676784 |
| 8032 | 36900.37000.37200.38300.39500.45700.196700 | **8th floor roof slab** | 13d | 2026-07-12 | 2026-07-24 |  | start no earlier than 2026-07-12 | Zenith | 8653034 |
| 8033 | 36900.37000.37200.38300.39500.45700.196700.1071600 | Reinforcement | 10d | 2026-07-12 | 2026-07-21 | 8031 |  | Zenith | 8676774 |
| 8034 | 36900.37000.37200.38300.39500.45700.196700.1071700 | Conduiting | 10d | 2026-07-13 | 2026-07-22 | 8033SS+1d |  | Zenith | 8676764 |
| 8035 | 36900.37000.37200.38300.39500.45700.196700.1071800 | Formwork | 10d | 2026-07-14 | 2026-07-23 | 8033SS+2d |  | Zenith | 8676754 |
| 8036 | 36900.37000.37200.38300.39500.45700.196700.1071900 | Concreting | 1d | 2026-07-24 | 2026-07-24 | 8034FS+1d, 8035 |  | Zenith | 8676744 |
| 8037 | 36900.37000.37200.38300.39500.45700.196800 | **9th floor roof slab** | 13d | 2026-07-25 | 2026-08-06 |  | start no earlier than 2026-07-25 | Zenith | 8653044 |
| 8038 | 36900.37000.37200.38300.39500.45700.196800.1072000 | Reinforcement | 10d | 2026-07-25 | 2026-08-03 | 8036 |  | Zenith | 8676734 |
| 8039 | 36900.37000.37200.38300.39500.45700.196800.1072100 | Conduiting | 10d | 2026-07-26 | 2026-08-04 | 8038SS+1d |  | Zenith | 8676724 |
| 8040 | 36900.37000.37200.38300.39500.45700.196800.1072200 | Formwork | 10d | 2026-07-27 | 2026-08-05 | 8038SS+2d |  | Zenith | 8676714 |
| 8041 | 36900.37000.37200.38300.39500.45700.196800.1072300 | Concreting | 1d | 2026-08-06 | 2026-08-06 | 8039FS+1d, 8040 |  | Zenith | 8676704 |
| 8042 | 36900.37000.37200.38300.39500.45700.196900 | **10th floor roof slab** | 13d | 2026-08-07 | 2026-08-19 |  | start no earlier than 2026-08-07 | Zenith | 8653054 |
| 8043 | 36900.37000.37200.38300.39500.45700.196900.1072400 | Reinforcement | 10d | 2026-08-07 | 2026-08-16 | 8041 |  | Zenith | 8676694 |
| 8044 | 36900.37000.37200.38300.39500.45700.196900.1072500 | Conduiting | 10d | 2026-08-08 | 2026-08-17 | 8043SS+1d |  | Zenith | 8676684 |
| 8045 | 36900.37000.37200.38300.39500.45700.196900.1072600 | Formwork | 10d | 2026-08-09 | 2026-08-18 | 8043SS+2d |  | Zenith | 8676674 |
| 8046 | 36900.37000.37200.38300.39500.45700.196900.1072700 | Concreting | 1d | 2026-08-19 | 2026-08-19 | 8044FS+1d, 8045 |  | Zenith | 8676664 |
| 8047 | 36900.37000.37200.38300.39500.45700.197000 | **11th floor roof slab** | 13d | 2026-08-20 | 2026-09-01 |  | start no earlier than 2026-08-20 | Zenith | 8653064 |
| 8048 | 36900.37000.37200.38300.39500.45700.197000.1072800 | Reinforcement | 10d | 2026-08-20 | 2026-08-29 | 8046 |  | Zenith | 8676654 |
| 8049 | 36900.37000.37200.38300.39500.45700.197000.1072900 | Conduiting | 10d | 2026-08-21 | 2026-08-30 | 8048SS+1d |  | Zenith | 8676644 |
| 8050 | 36900.37000.37200.38300.39500.45700.197000.1073000 | Formwork | 10d | 2026-08-22 | 2026-08-31 | 8048SS+2d |  | Zenith | 8676634 |
| 8051 | 36900.37000.37200.38300.39500.45700.197000.1073100 | Concreting | 1d | 2026-09-01 | 2026-09-01 | 8049FS+1d, 8050 |  | Zenith | 8676624 |

| ID | WBS | Task | Duration | Start | Finish | Predecessors | Constraint | Calendar | Unique_Task_ID |
| --- | --- | --- | --- | --- | --- | --- | --- | --- | --- |
| 8052 | 36900.37000.37200.38300.39500.45700.197100 | **12th floor roof slab** | 13d | 2026-09-02 | 2026-09-14 |  | start no earlier than 2026-09-02 | Zenith | 8653074 |
| 8053 | 36900.37000.37200.38300.39500.45700.197100.1073200 | Reinforcement | 10d | 2026-09-02 | 2026-09-11 | 8051 |  | Zenith | 8676614 |
| 8054 | 36900.37000.37200.38300.39500.45700.197100.1073300 | Conduiting | 10d | 2026-09-03 | 2026-09-12 | 8053SS+1d |  | Zenith | 8676604 |
| 8055 | 36900.37000.37200.38300.39500.45700.197100.1073400 | Formwork | 10d | 2026-09-04 | 2026-09-13 | 8053SS+2d |  | Zenith | 8676594 |
| 8056 | 36900.37000.37200.38300.39500.45700.197100.1073500 | Concreting | 1d | 2026-09-14 | 2026-09-14 | 8054FS+1d, 8055 |  | Zenith | 8676584 |
| 8057 | 36900.37000.37200.38300.39500.45700.197200 | **13th floor roof slab** | 13d | 2026-09-15 | 2026-09-27 |  | start no earlier than 2026-09-15 | Zenith | 8653104 |
| 8058 | 36900.37000.37200.38300.39500.45700.197200.1073600 | Reinforcement | 10d | 2026-09-15 | 2026-09-24 | 8056 |  | Zenith | 8676574 |
| 8059 | 36900.37000.37200.38300.39500.45700.197200.1073700 | Conduiting | 10d | 2026-09-16 | 2026-09-25 | 8058SS+1d |  | Zenith | 8676564 |
| 8060 | 36900.37000.37200.38300.39500.45700.197200.1073800 | Formwork | 10d | 2026-09-17 | 2026-09-26 | 8058SS+2d |  | Zenith | 8676554 |
| 8061 | 36900.37000.37200.38300.39500.45700.197200.1073900 | Concreting | 1d | 2026-09-27 | 2026-09-27 | 8059FS+1d, 8060 |  | Zenith | 8676544 |
| 8062 | 36900.37000.37200.38300.39500.45700.197300 | **14th floor roof slab** | 13d | 2026-09-28 | 2026-10-10 |  | start no earlier than 2026-09-28 | Zenith | 8653114 |
| 8063 | 36900.37000.37200.38300.39500.45700.197300.1074000 | Reinforcement | 10d | 2026-09-28 | 2026-10-07 | 8061 |  | Zenith | 8676534 |
| 8064 | 36900.37000.37200.38300.39500.45700.197300.1074100 | Conduiting | 10d | 2026-09-29 | 2026-10-08 | 8063SS+1d |  | Zenith | 8676524 |
| 8065 | 36900.37000.37200.38300.39500.45700.197300.1074200 | Formwork | 10d | 2026-09-30 | 2026-10-09 | 8063SS+2d |  | Zenith | 8676514 |
| 8066 | 36900.37000.37200.38300.39500.45700.197300.1074300 | Concreting | 1d | 2026-10-10 | 2026-10-10 | 8064FS+1d, 8065 |  | Zenith | 8676504 |
| 8067 | 36900.37000.37200.38300.39500.45700.197400 | **15th floor roof slab** | 13d | 2026-10-11 | 2026-10-23 |  | start no earlier than 2026-10-11 | Zenith | 8653124 |
| 8068 | 36900.37000.37200.38300.39500.45700.197400.1074400 | Reinforcement | 10d | 2026-10-11 | 2026-10-20 | 8066 |  | Zenith | 8676494 |
| 8069 | 36900.37000.37200.38300.39500.45700.197400.1074500 | Conduiting | 10d | 2026-10-12 | 2026-10-21 | 8068SS+1d |  | Zenith | 8676484 |
| 8070 | 36900.37000.37200.38300.39500.45700.197400.1074600 | Formwork | 10d | 2026-10-13 | 2026-10-22 | 8068SS+2d |  | Zenith | 8676474 |
| 8071 | 36900.37000.37200.38300.39500.45700.197400.1074700 | Concreting | 1d | 2026-10-23 | 2026-10-23 | 8069FS+1d, 8070 |  | Zenith | 8676464 |
| 8072 | 36900.37000.37200.38300.39500.45700.197500 | **16th floor roof slab** | 13d | 2026-10-24 | 2026-12-20 |  | start no earlier than 2026-10-24 | Zenith | 8653134 |
| 8073 | 36900.37000.37200.38300.39500.45700.197500.1074800 | Reinforcement | 10d | 2026-10-24 | 2026-12-17 | 8071 |  | Zenith | 8676454 |
| 8074 | 36900.37000.37200.38300.39500.45700.197500.1074900 | Conduiting | 10d | 2026-10-25 | 2026-12-18 | 8073SS+1d |  | Zenith | 8676444 |
| 8075 | 36900.37000.37200.38300.39500.45700.197500.1075000 | Formwork | 10d | 2026-10-26 | 2026-12-19 | 8073SS+2d |  | Zenith | 8676434 |
| 8076 | 36900.37000.37200.38300.39500.45700.197500.1075100 | Concreting | 1d | 2026-12-20 | 2026-12-20 | 8074, 8075 |  | Zenith | 8676424 |

| ID | WBS | Task | Duration | Start | Finish | Predecessors | Constraint | Calendar | Unique_Task_ID |
| --- | --- | --- | --- | --- | --- | --- | --- | --- | --- |
| 8077 | 36900.37000.37200.38300.39500.45700.197600 | **17th floor roof slab** | 13d | 2026-12-21 | 2027-01-02 |  | start no earlier than 2026-12-21 | Zenith | 8653154 |
| 8078 | 36900.37000.37200.38300.39500.45700.197600.1075200 | Reinforcement | 10d | 2026-12-21 | 2026-12-30 | 8076 |  | Zenith | 8676414 |
| 8079 | 36900.37000.37200.38300.39500.45700.197600.1075300 | Conduiting | 10d | 2026-12-22 | 2026-12-31 | 8078SS+1d |  | Zenith | 8676404 |
| 8080 | 36900.37000.37200.38300.39500.45700.197600.1075400 | Formwork | 10d | 2026-12-23 | 2027-01-01 | 8078SS+2d |  | Zenith | 8676394 |
| 8081 | 36900.37000.37200.38300.39500.45700.197600.1075500 | Concreting | 1d | 2027-01-02 | 2027-01-02 | 8079FS+1d, 8080 |  | Zenith | 8676384 |
| 8082 | 36900.37000.37200.38300.39500.45700.197700 | **18th floor roof slab** | 13d | 2027-01-03 | 2027-01-15 |  | start no earlier than 2027-01-03 | Zenith | 8653164 |
| 8083 | 36900.37000.37200.38300.39500.45700.197700.1075600 | Reinforcement | 10d | 2027-01-03 | 2027-01-12 | 8081 |  | Zenith | 8676374 |
| 8084 | 36900.37000.37200.38300.39500.45700.197700.1075700 | Conduiting | 10d | 2027-01-04 | 2027-01-13 | 8083SS+1d |  | Zenith | 8676364 |
| 8085 | 36900.37000.37200.38300.39500.45700.197700.1075800 | Formwork | 10d | 2027-01-05 | 2027-01-14 | 8083SS+2d |  | Zenith | 8676354 |
| 8086 | 36900.37000.37200.38300.39500.45700.197700.1075900 | Concreting | 1d | 2027-01-15 | 2027-01-15 | 8084FS+1d, 8085 |  | Zenith | 8676344 |
| 8087 | 36900.37000.37200.38300.39500.45700.197800 | **19th floor roof slab** | 13d | 2027-01-16 | 2027-01-28 |  | start no earlier than 2027-01-16 | Zenith | 8653174 |
| 8088 | 36900.37000.37200.38300.39500.45700.197800.1076000 | Reinforcement | 10d | 2027-01-16 | 2027-01-25 | 8086 |  | Zenith | 8676334 |
| 8089 | 36900.37000.37200.38300.39500.45700.197800.1076100 | Conduiting | 10d | 2027-01-17 | 2027-01-26 | 8088SS+1d |  | Zenith | 8676324 |
| 8090 | 36900.37000.37200.38300.39500.45700.197800.1076200 | Formwork | 10d | 2027-01-18 | 2027-01-27 | 8088SS+2d |  | Zenith | 8676314 |
| 8091 | 36900.37000.37200.38300.39500.45700.197800.1076300 | Concreting | 1d | 2027-01-28 | 2027-01-28 | 8089FS+1d, 8090 |  | Zenith | 8676304 |
| 8092 | 36900.37000.37200.38300.39500.45700.197900 | **20th floor roof slab** | 12d | 2027-01-29 | 2027-02-09 |  | start no earlier than 2027-01-29 | Zenith | 8653184 |
| 8093 | 36900.37000.37200.38300.39500.45700.197900.1076400 | Reinforcement | 9d | 2027-01-29 | 2027-02-06 | 8091 |  | Zenith | 8676294 |
| 8094 | 36900.37000.37200.38300.39500.45700.197900.1076500 | Conduiting | 9d | 2027-01-30 | 2027-02-07 | 8093SS+1d |  | Zenith | 8676284 |
| 8095 | 36900.37000.37200.38300.39500.45700.197900.1076600 | Formwork | 9d | 2027-01-31 | 2027-02-08 | 8093SS+2d |  | Zenith | 8676274 |
| 8096 | 36900.37000.37200.38300.39500.45700.197900.1076700 | Concreting | 1d | 2027-02-09 | 2027-02-09 | 8094FS+1d, 8095 |  | Zenith | 8676264 |
| 8097 | 36900.37000.37200.38300.39500.45700.198000 | **21st floor roof slab** | 12d | 2027-02-10 | 2027-02-21 |  | start no earlier than 2027-02-10 | Zenith | 8653204 |
| 8098 | 36900.37000.37200.38300.39500.45700.198000.1076800 | Reinforcement | 9d | 2027-02-10 | 2027-02-18 | 8096 |  | Zenith | 8676254 |
| 8099 | 36900.37000.37200.38300.39500.45700.198000.1076900 | Conduiting | 9d | 2027-02-11 | 2027-02-19 | 8098SS+1d |  | Zenith | 8676244 |
| 8100 | 36900.37000.37200.38300.39500.45700.198000.1077000 | Formwork | 9d | 2027-02-12 | 2027-02-20 | 8098SS+2d |  | Zenith | 8676234 |
| 8101 | 36900.37000.37200.38300.39500.45700.198000.1077100 | Concreting | 1d | 2027-02-21 | 2027-02-21 | 8099FS+1d, 8100 |  | Zenith | 8676224 |

| ID | WBS | Task | Duration | Start | Finish | Predecessors | Constraint | Calendar | Unique_Task_ID |
| --- | --- | --- | --- | --- | --- | --- | --- | --- | --- |
| 8102 | 36900.37000.37200.38300.39500.45700.198100 | **22nd floor roof slab** | 12d | 2027-02-22 | 2027-03-05 |  | start no earlier than 2027-02-22 | Zenith | 8653214 |
| 8103 | 36900.37000.37200.38300.39500.45700.198100.1077200 | Reinforcement | 9d | 2027-02-22 | 2027-03-02 | 8101 |  | Zenith | 8676214 |
| 8104 | 36900.37000.37200.38300.39500.45700.198100.1077300 | Conduiting | 9d | 2027-02-23 | 2027-03-03 | 8103SS+1d |  | Zenith | 8676204 |
| 8105 | 36900.37000.37200.38300.39500.45700.198100.1077400 | Formwork | 9d | 2027-02-24 | 2027-03-04 | 8103SS+2d |  | Zenith | 8676194 |
| 8106 | 36900.37000.37200.38300.39500.45700.198100.1077500 | Concreting | 1d | 2027-03-05 | 2027-03-05 | 8104FS+1d, 8105 |  | Zenith | 8676184 |
| 8107 | 36900.37000.37200.38300.39500.45700.198200 | **23rd floor roof slab** | 12d | 2027-03-06 | 2027-03-17 |  | start no earlier than 2027-03-06 | Zenith | 8653224 |
| 8108 | 36900.37000.37200.38300.39500.45700.198200.1077600 | Reinforcement | 9d | 2027-03-06 | 2027-03-14 | 8106 |  | Zenith | 8676174 |
| 8109 | 36900.37000.37200.38300.39500.45700.198200.1077700 | Conduiting | 9d | 2027-03-07 | 2027-03-15 | 8108SS+1d |  | Zenith | 8676164 |
| 8110 | 36900.37000.37200.38300.39500.45700.198200.1077800 | Formwork | 9d | 2027-03-08 | 2027-03-16 | 8108SS+2d |  | Zenith | 8676154 |
| 8111 | 36900.37000.37200.38300.39500.45700.198200.1077900 | Concreting | 1d | 2027-03-17 | 2027-03-17 | 8109FS+1d, 8110 |  | Zenith | 8676144 |
| 8112 | 36900.37000.37200.38300.39500.45700.198300 | **24th floor roof slab** | 12d | 2027-03-18 | 2027-03-29 |  | start no earlier than 2027-03-18 | Zenith | 8653234 |
| 8113 | 36900.37000.37200.38300.39500.45700.198300.1078000 | Reinforcement | 9d | 2027-03-18 | 2027-03-26 | 8111 |  | Zenith | 8676134 |
| 8114 | 36900.37000.37200.38300.39500.45700.198300.1078100 | Conduiting | 9d | 2027-03-19 | 2027-03-27 | 8113SS+1d |  | Zenith | 8676124 |
| 8115 | 36900.37000.37200.38300.39500.45700.198300.1078200 | Formwork | 9d | 2027-03-20 | 2027-03-28 | 8113SS+2d |  | Zenith | 8676114 |
| 8116 | 36900.37000.37200.38300.39500.45700.198300.1078300 | Concreting | 1d | 2027-03-29 | 2027-03-29 | 8114FS+1d, 8115 |  | Zenith | 8676104 |
| 8117 | 36900.37000.37200.38300.39500.45700.198400 | **25th floor roof slab** | 12d | 2027-03-30 | 2027-04-10 |  | start no earlier than 2027-03-30 | Zenith | 8653244 |
| 8118 | 36900.37000.37200.38300.39500.45700.198400.1078400 | Reinforcement | 9d | 2027-03-30 | 2027-04-07 | 8116 |  | Zenith | 8676094 |
| 8119 | 36900.37000.37200.38300.39500.45700.198400.1078500 | Conduiting | 9d | 2027-03-31 | 2027-04-08 | 8118SS+1d |  | Zenith | 8676084 |
| 8120 | 36900.37000.37200.38300.39500.45700.198400.1078600 | Formwork | 9d | 2027-04-01 | 2027-04-09 | 8118SS+2d |  | Zenith | 8676074 |
| 8121 | 36900.37000.37200.38300.39500.45700.198400.1078700 | Concreting | 1d | 2027-04-10 | 2027-04-10 | 8119FS+1d, 8120 |  | Zenith | 8676064 |
| 8122 | 36900.37000.37200.38300.39500.45700.198500 | **26th floor roof slab** | 12d | 2027-04-11 | 2027-04-22 |  | start no earlier than 2027-04-11 | Zenith | 8653254 |
| 8123 | 36900.37000.37200.38300.39500.45700.198500.1078800 | Reinforcement | 9d | 2027-04-11 | 2027-04-19 | 8121 |  | Zenith | 8676054 |
| 8124 | 36900.37000.37200.38300.39500.45700.198500.1078900 | Conduiting | 9d | 2027-04-12 | 2027-04-20 | 8123SS+1d |  | Zenith | 8676044 |
| 8125 | 36900.37000.37200.38300.39500.45700.198500.1079000 | Formwork | 9d | 2027-04-13 | 2027-04-21 | 8123SS+2d |  | Zenith | 8676034 |
| 8126 | 36900.37000.37200.38300.39500.45700.198500.1079100 | Concreting | 1d | 2027-04-22 | 2027-04-22 | 8124FS+1d, 8125 |  | Zenith | 8676024 |

| ID | WBS | Task | Duration | Start | Finish | Predecessors | Constraint | Calendar | Unique_Task_ID |
| --- | --- | --- | --- | --- | --- | --- | --- | --- | --- |
| 8127 | 36900.37000.37200.38300.39500.45700.198600 | **27th floor roof slab** | 12d | 2027-04-23 | 2027-05-04 |  | start no earlier than 2027-04-23 | Zenith | 8653274 |
| 8128 | 36900.37000.37200.38300.39500.45700.198600.1079200 | Reinforcement | 9d | 2027-04-23 | 2027-05-01 | 8126 |  | Zenith | 8676014 |
| 8129 | 36900.37000.37200.38300.39500.45700.198600.1079300 | Conduiting | 9d | 2027-04-24 | 2027-05-02 | 8128SS+1d |  | Zenith | 8676004 |
| 8130 | 36900.37000.37200.38300.39500.45700.198600.1079400 | Formwork | 9d | 2027-04-25 | 2027-05-03 | 8128SS+2d |  | Zenith | 8675994 |
| 8131 | 36900.37000.37200.38300.39500.45700.198600.1079500 | Concreting | 1d | 2027-05-04 | 2027-05-04 | 8129FS+1d, 8130 |  | Zenith | 8675984 |
| 8132 | 36900.37000.37200.38300.39500.45700.198700 | **28th floor roof slab** | 12d | 2027-05-05 | 2027-05-16 |  | start no earlier than 2027-05-05 | Zenith | 8653284 |
| 8133 | 36900.37000.37200.38300.39500.45700.198700.1079600 | Reinforcement | 9d | 2027-05-05 | 2027-05-13 | 8131 |  | Zenith | 8675974 |
| 8134 | 36900.37000.37200.38300.39500.45700.198700.1079700 | Conduiting | 9d | 2027-05-06 | 2027-05-14 | 8133SS+1d |  | Zenith | 8675964 |
| 8135 | 36900.37000.37200.38300.39500.45700.198700.1079800 | Formwork | 9d | 2027-05-07 | 2027-05-15 | 8133SS+2d |  | Zenith | 8675954 |
| 8136 | 36900.37000.37200.38300.39500.45700.198700.1079900 | Concreting | 1d | 2027-05-16 | 2027-05-16 | 8134FS+1d, 8135 |  | Zenith | 8675944 |
| 8137 | 36900.37000.37200.38300.39500.45700.198800 | **29th floor roof slab** | 12d | 2027-05-17 | 2027-05-28 |  | start no earlier than 2027-05-17 | Zenith | 8653294 |
| 8138 | 36900.37000.37200.38300.39500.45700.198800.1080000 | Reinforcement | 9d | 2027-05-17 | 2027-05-25 | 8136 |  | Zenith | 8675934 |
| 8139 | 36900.37000.37200.38300.39500.45700.198800.1080100 | Conduiting | 9d | 2027-05-18 | 2027-05-26 | 8138SS+1d |  | Zenith | 8675924 |
| 8140 | 36900.37000.37200.38300.39500.45700.198800.1080200 | Formwork | 9d | 2027-05-19 | 2027-05-27 | 8138SS+2d |  | Zenith | 8675914 |
| 8141 | 36900.37000.37200.38300.39500.45700.198800.1080300 | Concreting | 1d | 2027-05-28 | 2027-05-28 | 8139FS+1d, 8140 |  | Zenith | 8675904 |
| 8142 | 36900.37000.37200.38300.39500.45700.198900 | **30th floor roof slab** | 14d | 2027-05-29 | 2027-06-11 |  | start no earlier than 2027-05-29 | Zenith | 8653324 |
| 8143 | 36900.37000.37200.38300.39500.45700.198900.1080400 | Reinforcement | 11d | 2027-05-29 | 2027-06-08 | 8141 |  | Zenith | 8675894 |
| 8144 | 36900.37000.37200.38300.39500.45700.198900.1080500 | Conduiting | 11d | 2027-05-30 | 2027-06-09 | 8143SS+1d |  | Zenith | 8675884 |
| 8145 | 36900.37000.37200.38300.39500.45700.198900.1080600 | Formwork | 11d | 2027-05-31 | 2027-06-10 | 8143SS+2d |  | Zenith | 8675874 |
| 8146 | 36900.37000.37200.38300.39500.45700.198900.1080700 | Concreting | 1d | 2027-06-11 | 2027-06-11 | 8144FS+1d, 8145 |  | Zenith | 8675864 |
| 8147 | 36900.37000.37200.38300.39500.45700.199000 | **31st floor roof slab** | 14d | 2027-06-12 | 2027-06-25 |  | start no earlier than 2027-06-12 | Zenith | 8653364 |
| 8148 | 36900.37000.37200.38300.39500.45700.199000.1080800 | Reinforcement | 11d | 2027-06-12 | 2027-06-22 | 8146 |  | Zenith | 8675854 |
| 8149 | 36900.37000.37200.38300.39500.45700.199000.1080900 | Conduiting | 11d | 2027-06-13 | 2027-06-23 | 8148SS+1d |  | Zenith | 8675844 |
| 8150 | 36900.37000.37200.38300.39500.45700.199000.1081000 | Formwork | 11d | 2027-06-14 | 2027-06-24 | 8148SS+2d |  | Zenith | 8675834 |
| 8151 | 36900.37000.37200.38300.39500.45700.199000.1081100 | Concreting | 1d | 2027-06-25 | 2027-06-25 | 8149FS+1d, 8150 |  | Zenith | 8675824 |

| ID | WBS | Task | Duration | Start | Finish | Predecessors | Constraint | Calendar | Unique_Task_ID |
| --- | --- | --- | --- | --- | --- | --- | --- | --- | --- |
| 8152 | 36900.37000.37200.38300.39500.45700.199100 | **32nd floor roof slab** | 14d | 2027-06-26 | 2027-07-09 |  | start no earlier than 2027-06-26 | Zenith | 8653374 |
| 8153 | 36900.37000.37200.38300.39500.45700.199100.1081200 | Reinforcement | 11d | 2027-06-26 | 2027-07-06 | 8151 |  | Zenith | 8675814 |
| 8154 | 36900.37000.37200.38300.39500.45700.199100.1081300 | Conduiting | 11d | 2027-06-27 | 2027-07-07 | 8153SS+1d |  | Zenith | 8675804 |
| 8155 | 36900.37000.37200.38300.39500.45700.199100.1081400 | Formwork | 11d | 2027-06-28 | 2027-07-08 | 8153SS+2d |  | Zenith | 8675794 |
| 8156 | 36900.37000.37200.38300.39500.45700.199100.1081500 | Concreting | 1d | 2027-07-09 | 2027-07-09 | 8154FS+1d, 8155 |  | Zenith | 8675784 |
| 8157 | 36900.37000.37200.38300.39500.45700.199200 | **33rd floor roof slab** | 14d | 2027-07-10 | 2027-07-23 |  | start no earlier than 2027-07-10 | Zenith | 8653394 |
| 8158 | 36900.37000.37200.38300.39500.45700.199200.1081600 | Reinforcement | 11d | 2027-07-10 | 2027-07-20 | 8156 |  | Zenith | 8675774 |
| 8159 | 36900.37000.37200.38300.39500.45700.199200.1081700 | Conduiting | 11d | 2027-07-11 | 2027-07-21 | 8158SS+1d |  | Zenith | 8675764 |
| 8160 | 36900.37000.37200.38300.39500.45700.199200.1081800 | Formwork | 11d | 2027-07-12 | 2027-07-22 | 8158SS+2d |  | Zenith | 8675754 |
| 8161 | 36900.37000.37200.38300.39500.45700.199200.1081900 | Concreting | 1d | 2027-07-23 | 2027-07-23 | 8159FS+1d, 8160 |  | Zenith | 8675744 |
| 8162 | 36900.37000.37200.38300.39500.45700.199300 | **Terrace floor slab** | 14d | 2027-07-24 | 2027-08-06 |  | start no earlier than 2027-07-24 | Zenith | 8653404 |
| 8163 | 36900.37000.37200.38300.39500.45700.199300.1082000 | Reinforcement | 10d | 2027-07-24 | 2027-08-02 | 8161 |  | Zenith | 8675734 |
| 8164 | 36900.37000.37200.38300.39500.45700.199300.1082100 | Conduiting | 10d | 2027-07-25 | 2027-08-03 | 8163SS+1d |  | Zenith | 8675724 |
| 8165 | 36900.37000.37200.38300.39500.45700.199300.1082200 | Formwork | 10d | 2027-07-26 | 2027-08-04 | 8163SS+2d |  | Zenith | 8675714 |
| 8166 | 36900.37000.37200.38300.39500.45700.199300.1082300 | Concreting | 2d | 2027-08-05 | 2027-08-06 | 8164FS+1d, 8165 |  | Zenith | 8675704 |
| 8167 | 36900.37000.37200.38300.39500.45700.199400 | **OHT, Mumty & Machine Room, Parapet** | 45d | 2027-08-07 | 2027-09-20 |  | start no earlier than 2027-08-07 | Zenith | 8653414 |
| 8168 | 36900.37000.37200.38300.39500.45700.199400.1082400 | Reinforcement | 30d | 2027-08-07 | 2027-09-05 | 8166 |  | Zenith | 8675694 |
| 8169 | 36900.37000.37200.38300.39500.45700.199400.1082500 | Flanges fixing & Conduiting | 20d | 2027-08-08 | 2027-08-27 | 8168SS+1d |  | Zenith | 8675684 |
| 8170 | 36900.37000.37200.38300.39500.45700.199400.1082600 | Formwork | 35d | 2027-08-13 | 2027-09-16 | 8168SS+6d |  | Zenith | 8675674 |
| 8171 | 36900.37000.37200.38300.39500.45700.199400.1082700 | Concreting | 4d | 2027-09-17 | 2027-09-20 | 8169FS+5d, 8170 |  | Zenith | 8675664 |
| 8172 | 36900.37000.37200.38300.39500.47700 | **Post Pour Activities** | 427.25d | 2026-06-03 | 2027-09-18 |  | start no earlier than 2026-06-03 | Zenith | 8648104 |
| 8173 | 36900.37000.37200.38300.39500.47700.855900 | 1st Floor | 7d | 2026-06-03 | 2026-06-09 | 8016 |  | Zenith | 8720784 |
| 8174 | 36900.37000.37200.38300.39500.47700.856000 | 2nd Floor | 7d | 2026-06-16 | 2026-06-23 | 8173FS+0.25d, 8021FS+0.25d |  | Zenith | 8720774 |
| 8175 | 36900.37000.37200.38300.39500.47700.856100 | 3rd Floor | 7d | 2026-06-29 | 2026-07-06 | 8174FS+0.25d, 8026FS+0.25d |  | Zenith | 8720764 |
| 8176 | 36900.37000.37200.38300.39500.47700.856200 | 4th Floor | 7d | 2026-07-12 | 2026-07-19 | 8175FS+0.25d, 8031FS+0.25d |  | Zenith | 8720754 |
| 8177 | 36900.37000.37200.38300.39500.47700.856300 | 5th Floor | 7d | 2026-07-25 | 2026-08-01 | 8176FS+0.25d, 8036FS+0.25d |  | Zenith | 8720744 |
| 8178 | 36900.37000.37200.38300.39500.47700.856400 | 6th Floor | 7d | 2026-08-07 | 2026-08-14 | 8177FS+0.25d, 8041FS+0.25d |  | Zenith | 8720734 |
| 8179 | 36900.37000.37200.38300.39500.47700.856500 | 7th Floor | 7d | 2026-08-20 | 2026-08-27 | 8178FS+0.25d, 8046FS+0.25d |  | Zenith | 8720724 |
| 8180 | 36900.37000.37200.38300.39500.47700.856600 | 8th Floor | 7d | 2026-09-02 | 2026-09-09 | 8179FS+0.25d, 8051FS+0.25d |  | Zenith | 8720714 |
| 8181 | 36900.37000.37200.38300.39500.47700.856700 | 9th Floor | 7d | 2026-09-15 | 2026-09-22 | 8180FS+0.25d, 8056FS+0.25d |  | Zenith | 8720704 |
| 8182 | 36900.37000.37200.38300.39500.47700.856800 | 10th Floor | 7d | 2026-09-28 | 2026-10-05 | 8181FS+0.25d, 8061FS+0.25d |  | Zenith | 8720694 |
| 8183 | 36900.37000.37200.38300.39500.47700.856900 | 11th Floor | 7d | 2026-10-11 | 2026-10-18 | 8182FS+0.25d, 8066FS+0.25d |  | Zenith | 8720684 |
| 8184 | 36900.37000.37200.38300.39500.47700.857000 | 12th Floor | 7d | 2026-10-24 | 2026-10-31 | 8183FS+0.25d, 8071FS+0.25d |  | Zenith | 8720674 |
| 8185 | 36900.37000.37200.38300.39500.47700.857100 | 13th Floor | 7d | 2026-12-21 | 2026-12-28 | 8184FS+0.25d, 8076FS+0.25d |  | Zenith | 8720664 |
| 8186 | 36900.37000.37200.38300.39500.47700.857200 | 14th Floor | 7d | 2027-01-03 | 2027-01-10 | 8185FS+0.25d, 8081FS+0.25d |  | Zenith | 8720654 |
| 8187 | 36900.37000.37200.38300.39500.47700.857300 | 15th Floor | 7d | 2027-01-16 | 2027-01-23 | 8186FS+0.25d, 8086FS+0.25d |  | Zenith | 8720644 |
| 8188 | 36900.37000.37200.38300.39500.47700.857400 | 16th Floor | 7d | 2027-01-29 | 2027-02-05 | 8187FS+0.25d, 8091FS+0.25d |  | Zenith | 8720634 |
| 8189 | 36900.37000.37200.38300.39500.47700.857500 | 17th Floor | 7d | 2027-02-10 | 2027-02-17 | 8188FS+0.25d, 8096FS+0.25d |  | Zenith | 8720624 |
| 8190 | 36900.37000.37200.38300.39500.47700.857600 | 18th Floor | 7d | 2027-02-22 | 2027-03-01 | 8189FS+0.25d, 8101FS+0.25d |  | Zenith | 8720614 |
| 8191 | 36900.37000.37200.38300.39500.47700.857700 | 19th Floor | 7d | 2027-03-06 | 2027-03-13 | 8190FS+0.25d, 8106FS+0.25d |  | Zenith | 8720604 |
| 8192 | 36900.37000.37200.38300.39500.47700.857800 | 20th Floor | 7d | 2027-03-18 | 2027-03-25 | 8191FS+0.25d, 8111FS+0.25d |  | Zenith | 8720594 |
| 8193 | 36900.37000.37200.38300.39500.47700.857900 | 21st Floor | 7d | 2027-03-30 | 2027-04-06 | 8192FS+0.25d, 8116FS+0.25d |  | Zenith | 8720584 |
| 8194 | 36900.37000.37200.38300.39500.47700.858000 | 22nd Floor | 7d | 2027-04-11 | 2027-04-18 | 8193FS+0.25d, 8121FS+0.25d |  | Zenith | 8720574 |
| 8195 | 36900.37000.37200.38300.39500.47700.858100 | 23rd Floor | 7d | 2027-04-23 | 2027-04-30 | 8194FS+0.25d, 8126FS+0.25d |  | Zenith | 8720564 |
| 8196 | 36900.37000.37200.38300.39500.47700.858200 | 24th Floor | 7d | 2027-05-05 | 2027-05-12 | 8195FS+0.25d, 8131FS+0.25d |  | Zenith | 8720554 |
| 8197 | 36900.37000.37200.38300.39500.47700.858300 | 25th Floor | 7d | 2027-05-17 | 2027-05-24 | 8196FS+0.25d, 8136FS+0.25d |  | Zenith | 8720544 |
| 8198 | 36900.37000.37200.38300.39500.47700.858400 | 26th Floor | 7d | 2027-05-29 | 2027-06-05 | 8197FS+0.25d, 8141FS+0.25d |  | Zenith | 8720534 |
| 8199 | 36900.37000.37200.38300.39500.47700.858500 | 27th Floor | 7d | 2027-06-12 | 2027-06-19 | 8198FS+0.25d, 8146FS+0.25d |  | Zenith | 8720524 |
| 8200 | 36900.37000.37200.38300.39500.47700.858600 | 28th Floor | 7d | 2027-06-26 | 2027-07-03 | 8199FS+0.25d, 8151FS+0.25d |  | Zenith | 8720514 |
| 8201 | 36900.37000.37200.38300.39500.47700.858700 | 29th Floor | 7d | 2027-07-10 | 2027-07-17 | 8200FS+0.25d, 8156FS+0.25d |  | Zenith | 8720504 |
| 8202 | 36900.37000.37200.38300.39500.47700.858800 | 30th Floor | 7d | 2027-07-24 | 2027-07-31 | 8201FS+0.25d, 8161FS+0.25d |  | Zenith | 8720494 |
| 8203 | 36900.37000.37200.38300.39500.47700.858900 | 31st Flood | 7d | 2027-08-07 | 2027-08-14 | 8202FS+0.25d, 8166FS+0.25d |  | Zenith | 8720484 |
| 8204 | 36900.37000.37200.38300.39500.47700.859000 | 32nd Floor | 7d | 2027-08-14 | 2027-08-21 | 8203 |  | Zenith | 8720474 |
| 8205 | 36900.37000.37200.38300.39500.47700.859100 | 33rd Floor | 7d | 2027-08-21 | 2027-08-28 | 8204 |  | Zenith | 8720464 |
| 8206 | 36900.37000.37200.38300.39500.47700.859200 | 34th Floor | 7d | 2027-08-28 | 2027-09-04 | 8205 |  | Zenith | 8720454 |
| 8207 | 36900.37000.37200.38300.39500.47700.859300 | Terrace | 7d | 2027-09-04 | 2027-09-11 | 8206 |  | Zenith | 8720444 |
| 8208 | 36900.37000.37200.38300.39500.47700.859400 | Mumty & Machine Room | 7d | 2027-09-11 | 2027-09-18 | 8207 |  | Zenith | 8720434 |

| ID | WBS | Task | Duration | Start | Finish | Predecessors | Constraint | Calendar | Unique_Task_ID |
| --- | --- | --- | --- | --- | --- | --- | --- | --- | --- |
| 8209 | 36900.37000.37200.38300.39500.41300 | **Finishing work** | 713d | 2026-06-10 | 2028-08-20 |  | start no earlier than 2026-06-10 | Zenith | 8647794 |
| 8210 | 36900.37000.37200.38300.39500.41300.42500 | **Flat finishing** | 656d | 2026-06-10 | 2028-06-24 |  | start no earlier than 2026-06-10 | Zenith | 8647904 |
| 8211 | 36900.37000.37200.38300.39500.41300.42500.111100 | **1st Floor roof** | 116d | 2026-06-10 | 2026-10-03 |  | start no earlier than 2026-06-10 | Zenith | 8651294 |
| 8212 | 36900.37000.37200.38300.39500.41300.42500.111100.1727400 | Block Work | 10d | 2026-06-10 | 2026-06-19 | 8173 |  | Zenith | 8728644 |
| 8213 | 36900.37000.37200.38300.39500.41300.42500.111100.1727500 | Fire sprinkler pipe fixing | 6d | 2026-06-20 | 2026-06-25 | 8212 |  | Zenith | 8728654 |
| 8214 | 36900.37000.37200.38300.39500.41300.42500.111100.1727600 | Internal Plumbing Works | 10d | 2026-06-20 | 2026-06-29 | 8212 |  | Zenith | 8728664 |
| 8215 | 36900.37000.37200.38300.39500.41300.42500.111100.1727700 | Waterproofing | 14d | 2026-06-30 | 2026-07-13 | 8214 |  | Zenith | 8728674 |
| 8216 | 36900.37000.37200.38300.39500.41300.42500.111100.1727800 | Internal Plaster | 14d | 2026-07-05 | 2026-07-18 | 8214, 8215FF+5d |  | Zenith | 8728684 |
| 8217 | 36900.37000.37200.38300.39500.41300.42500.111100.1727900 | IPS flooring work | 10d | 2026-07-19 | 2026-07-28 | 8216 |  | Zenith | 8728694 |
| 8218 | 36900.37000.37200.38300.39500.41300.42500.111100.1728000 | Toilet dado work | 10d | 2026-07-19 | 2026-07-28 | 8215, 8216 |  | Zenith | 8728704 |
| 8219 | 36900.37000.37200.38300.39500.41300.42500.111100.1728100 | Toilet flooring work | 7d | 2026-07-29 | 2026-08-04 | 8218 |  | Zenith | 8728714 |
| 8220 | 36900.37000.37200.38300.39500.41300.42500.111100.1728200 | False Cieling panel fixing | 10d | 2026-08-05 | 2026-08-14 | 8219 |  | Zenith | 8728724 |
| 8221 | 36900.37000.37200.38300.39500.41300.42500.111100.1728300 | Living dinning flooring | 13d | 2026-08-05 | 2026-08-17 | 8219 |  | Zenith | 8728734 |
| 8222 | 36900.37000.37200.38300.39500.41300.42500.111100.1728400 | Putty primer coat | 12d | 2026-08-18 | 2026-08-29 | 8221 |  | Zenith | 8728744 |
| 8223 | 36900.37000.37200.38300.39500.41300.42500.111100.1728500 | Aluminium door-window fixing | 15d | 2026-08-18 | 2026-09-01 | 8217, 8221 |  | Zenith | 8728754 |
| 8224 | 36900.37000.37200.38300.39500.41300.42500.111100.1728600 | Door shutter fixing (Pre Hung) | 8d | 2026-08-30 | 2026-09-06 | 8222 |  | Zenith | 8728764 |
| 8225 | 36900.37000.37200.38300.39500.41300.42500.111100.1728700 | Electrical wiring work | 12d | 2026-09-07 | 2026-09-18 | 8224 |  | Zenith | 8728774 |
| 8226 | 36900.37000.37200.38300.39500.41300.42500.111100.1728800 | Painting 1st coat | 15d | 2026-09-19 | 2026-10-03 | 8225 |  | Zenith | 8728784 |
| 8227 | 36900.37000.37200.38300.39500.41300.42500.111200 | **2nd floor roof** | 117.75d | 2026-06-23 | 2026-10-18 |  | start no earlier than 2026-06-23 | Zenith | 8651304 |
| 8228 | 36900.37000.37200.38300.39500.41300.42500.111200.1728900 | Block Work | 10d | 2026-06-23 | 2026-07-03 | 8174, 8212 |  | Zenith | 8728794 |
| 8229 | 36900.37000.37200.38300.39500.41300.42500.111200.1729000 | Fire sprinkler pipe fixing | 6d | 2026-07-03 | 2026-07-09 | 8213, 8228 |  | Zenith | 8728804 |
| 8230 | 36900.37000.37200.38300.39500.41300.42500.111200.1729100 | Internal Plumbing Works | 10d | 2026-07-03 | 2026-07-13 | 8214, 8228 |  | Zenith | 8728814 |
| 8231 | 36900.37000.37200.38300.39500.41300.42500.111200.1729200 | Waterproofing | 14d | 2026-07-14 | 2026-07-27 | 8215, 8230 |  | Zenith | 8728824 |
| 8232 | 36900.37000.37200.38300.39500.41300.42500.111200.1729300 | Internal Plaster | 14d | 2026-07-19 | 2026-08-01 | 8216, 8230, 8231FF+5d |  | Zenith | 8728834 |
| 8233 | 36900.37000.37200.38300.39500.41300.42500.111200.1729400 | IPS flooring work | 10d | 2026-08-02 | 2026-08-11 | 8217, 8232 |  | Zenith | 8728844 |
| 8234 | 36900.37000.37200.38300.39500.41300.42500.111200.1729500 | Toilet dado work | 10d | 2026-08-02 | 2026-08-11 | 8218, 8231, 8232 |  | Zenith | 8728854 |
| 8235 | 36900.37000.37200.38300.39500.41300.42500.111200.1729600 | Toilet flooring work | 7d | 2026-08-12 | 2026-08-18 | 8219, 8234 |  | Zenith | 8728864 |
| 8236 | 36900.37000.37200.38300.39500.41300.42500.111200.1729700 | False Cieling panel fixing | 10d | 2026-08-19 | 2026-08-28 | 8220, 8235 |  | Zenith | 8728874 |
| 8237 | 36900.37000.37200.38300.39500.41300.42500.111200.1729800 | Living dinning flooring | 13d | 2026-08-19 | 2026-08-31 | 8221, 8235 |  | Zenith | 8728884 |
| 8238 | 36900.37000.37200.38300.39500.41300.42500.111200.1729900 | Putty primer coat | 12d | 2026-09-01 | 2026-09-12 | 8222, 8237 |  | Zenith | 8728894 |
| 8239 | 36900.37000.37200.38300.39500.41300.42500.111200.1730000 | Aluminium door-window fixing | 15d | 2026-09-02 | 2026-09-16 | 8223, 8233, 8237 |  | Zenith | 8728904 |
| 8240 | 36900.37000.37200.38300.39500.41300.42500.111200.1730100 | Door shutter fixing (Pre Hung) | 8d | 2026-09-13 | 2026-09-20 | 8224, 8238 |  | Zenith | 8728914 |
| 8241 | 36900.37000.37200.38300.39500.41300.42500.111200.1730200 | Electrical wiring work | 12d | 2026-09-21 | 2026-10-02 | 8225, 8240 |  | Zenith | 8728924 |
| 8242 | 36900.37000.37200.38300.39500.41300.42500.111200.1730300 | Painting 1st coat | 15d | 2026-10-04 | 2026-10-18 | 8226, 8241 |  | Zenith | 8728934 |

| ID | WBS | Task | Duration | Start | Finish | Predecessors | Constraint | Calendar | Unique_Task_ID |
| --- | --- | --- | --- | --- | --- | --- | --- | --- | --- |
| 8243 | 36900.37000.37200.38300.39500.41300.42500.111300 | **3rd floor roof** | 119.75d | 2026-07-06 | 2026-12-17 |  | start no earlier than 2026-07-06 | Zenith | 8651314 |
| 8244 | 36900.37000.37200.38300.39500.41300.42500.111300.1730400 | Block Work | 10d | 2026-07-06 | 2026-07-16 | 8175, 8228 |  | Zenith | 8728944 |
| 8245 | 36900.37000.37200.38300.39500.41300.42500.111300.1730500 | Fire sprinkler pipe fixing | 6d | 2026-07-16 | 2026-07-22 | 8229, 8244 |  | Zenith | 8728954 |
| 8246 | 36900.37000.37200.38300.39500.41300.42500.111300.1730600 | Internal Plumbing Works | 10d | 2026-07-16 | 2026-07-26 | 8230, 8244 |  | Zenith | 8728964 |
| 8247 | 36900.37000.37200.38300.39500.41300.42500.111300.1730700 | Waterproofing | 14d | 2026-07-28 | 2026-08-10 | 8231, 8246 |  | Zenith | 8728974 |
| 8248 | 36900.37000.37200.38300.39500.41300.42500.111300.1730800 | Internal Plaster | 14d | 2026-08-02 | 2026-08-15 | 8232, 8246, 8247FF+5d |  | Zenith | 8728984 |
| 8249 | 36900.37000.37200.38300.39500.41300.42500.111300.1730900 | IPS flooring work | 10d | 2026-08-16 | 2026-08-25 | 8233, 8248 |  | Zenith | 8728994 |
| 8250 | 36900.37000.37200.38300.39500.41300.42500.111300.1731000 | Toilet dado work | 10d | 2026-08-16 | 2026-08-25 | 8234, 8247, 8248 |  | Zenith | 8729004 |
| 8251 | 36900.37000.37200.38300.39500.41300.42500.111300.1731100 | Toilet flooring work | 7d | 2026-08-26 | 2026-09-01 | 8235, 8250 |  | Zenith | 8729014 |
| 8252 | 36900.37000.37200.38300.39500.41300.42500.111300.1731200 | False Cieling panel fixing | 10d | 2026-09-02 | 2026-09-11 | 8236, 8251 |  | Zenith | 8729024 |
| 8253 | 36900.37000.37200.38300.39500.41300.42500.111300.1731300 | Living dinning flooring | 13d | 2026-09-02 | 2026-09-14 | 8237, 8251 |  | Zenith | 8729034 |
| 8254 | 36900.37000.37200.38300.39500.41300.42500.111300.1731400 | Putty primer coat | 12d | 2026-09-15 | 2026-09-26 | 8238, 8253 |  | Zenith | 8729044 |
| 8255 | 36900.37000.37200.38300.39500.41300.42500.111300.1731500 | Aluminium door-window fixing | 15d | 2026-09-17 | 2026-10-01 | 8239, 8249, 8253 |  | Zenith | 8729054 |
| 8256 | 36900.37000.37200.38300.39500.41300.42500.111300.1731600 | Door shutter fixing (Pre Hung) | 8d | 2026-09-27 | 2026-10-04 | 8240, 8254 |  | Zenith | 8729064 |
| 8257 | 36900.37000.37200.38300.39500.41300.42500.111300.1731700 | Electrical wiring work | 12d | 2026-10-05 | 2026-10-16 | 8241, 8256 |  | Zenith | 8729074 |
| 8258 | 36900.37000.37200.38300.39500.41300.42500.111300.1731800 | Painting 1st coat | 15d | 2026-10-19 | 2026-12-17 | 8242, 8257 |  | Zenith | 8729084 |
| 8259 | 36900.37000.37200.38300.39500.41300.42500.111400 | **4th floor roof** | 121.75d | 2026-07-19 | 2027-01-01 |  | start no earlier than 2026-07-19 | Zenith | 8651324 |
| 8260 | 36900.37000.37200.38300.39500.41300.42500.111400.1731900 | Block Work | 10d | 2026-07-19 | 2026-07-29 | 8176, 8244 |  | Zenith | 8729094 |
| 8261 | 36900.37000.37200.38300.39500.41300.42500.111400.1732000 | Fire sprinkler pipe fixing | 6d | 2026-07-29 | 2026-08-04 | 8245, 8260 |  | Zenith | 8729104 |
| 8262 | 36900.37000.37200.38300.39500.41300.42500.111400.1732100 | Internal Plumbing Works | 10d | 2026-07-29 | 2026-08-08 | 8246, 8260 |  | Zenith | 8729114 |
| 8263 | 36900.37000.37200.38300.39500.41300.42500.111400.1732200 | Waterproofing | 14d | 2026-08-11 | 2026-08-24 | 8247, 8262 |  | Zenith | 8729124 |
| 8264 | 36900.37000.37200.38300.39500.41300.42500.111400.1732300 | Internal Plaster | 14d | 2026-08-16 | 2026-08-29 | 8248, 8262, 8263FF+5d |  | Zenith | 8729134 |
| 8265 | 36900.37000.37200.38300.39500.41300.42500.111400.1732400 | IPS flooring work | 10d | 2026-08-30 | 2026-09-08 | 8249, 8264 |  | Zenith | 8729144 |
| 8266 | 36900.37000.37200.38300.39500.41300.42500.111400.1732500 | Toilet dado work | 10d | 2026-08-30 | 2026-09-08 | 8250, 8263, 8264 |  | Zenith | 8729154 |
| 8267 | 36900.37000.37200.38300.39500.41300.42500.111400.1732600 | Toilet flooring work | 7d | 2026-09-09 | 2026-09-15 | 8251, 8266 |  | Zenith | 8729164 |
| 8268 | 36900.37000.37200.38300.39500.41300.42500.111400.1732700 | False Cieling panel fixing | 10d | 2026-09-16 | 2026-09-25 | 8252, 8267 |  | Zenith | 8729174 |
| 8269 | 36900.37000.37200.38300.39500.41300.42500.111400.1732800 | Living dinning flooring | 13d | 2026-09-16 | 2026-09-28 | 8253, 8267 |  | Zenith | 8729184 |
| 8270 | 36900.37000.37200.38300.39500.41300.42500.111400.1732900 | Putty primer coat | 12d | 2026-09-29 | 2026-10-10 | 8254, 8269 |  | Zenith | 8729194 |
| 8271 | 36900.37000.37200.38300.39500.41300.42500.111400.1733000 | Aluminium door-window fixing | 15d | 2026-10-02 | 2026-10-16 | 8255, 8265, 8269 |  | Zenith | 8729204 |
| 8272 | 36900.37000.37200.38300.39500.41300.42500.111400.1733100 | Door shutter fixing (Pre Hung) | 8d | 2026-10-11 | 2026-10-18 | 8256, 8270 |  | Zenith | 8729214 |
| 8273 | 36900.37000.37200.38300.39500.41300.42500.111400.1733200 | Electrical wiring work | 12d | 2026-10-19 | 2026-10-30 | 8257, 8272 |  | Zenith | 8729224 |
| 8274 | 36900.37000.37200.38300.39500.41300.42500.111400.1733300 | Painting 1st coat | 15d | 2026-12-18 | 2027-01-01 | 8258, 8273 |  | Zenith | 8729234 |

| ID | WBS | Task | Duration | Start | Finish | Predecessors | Constraint | Calendar | Unique_Task_ID |
| --- | --- | --- | --- | --- | --- | --- | --- | --- | --- |
| 8275 | 36900.37000.37200.38300.39500.41300.42500.111500 | **5th floor roof** | 123.75d | 2026-08-01 | 2027-01-16 |  | start no earlier than 2026-08-01 | Zenith | 8651334 |
| 8276 | 36900.37000.37200.38300.39500.41300.42500.111500.1733400 | Block Work | 10d | 2026-08-01 | 2026-08-11 | 8177, 8260 |  | Zenith | 8729244 |
| 8277 | 36900.37000.37200.38300.39500.41300.42500.111500.1733500 | Fire sprinkler pipe fixing | 6d | 2026-08-11 | 2026-08-17 | 8261, 8276 |  | Zenith | 8729254 |
| 8278 | 36900.37000.37200.38300.39500.41300.42500.111500.1733600 | Internal Plumbing Works | 10d | 2026-08-11 | 2026-08-21 | 8262, 8276 |  | Zenith | 8729264 |
| 8279 | 36900.37000.37200.38300.39500.41300.42500.111500.1733700 | Waterproofing | 14d | 2026-08-25 | 2026-09-07 | 8263, 8278 |  | Zenith | 8729274 |
| 8280 | 36900.37000.37200.38300.39500.41300.42500.111500.1733800 | Internal Plaster | 14d | 2026-08-30 | 2026-09-12 | 8264, 8278, 8279FF+5d |  | Zenith | 8729284 |
| 8281 | 36900.37000.37200.38300.39500.41300.42500.111500.1733900 | IPS flooring work | 10d | 2026-09-13 | 2026-09-22 | 8265, 8280 |  | Zenith | 8729294 |
| 8282 | 36900.37000.37200.38300.39500.41300.42500.111500.1734000 | Toilet dado work | 10d | 2026-09-13 | 2026-09-22 | 8266, 8279, 8280 |  | Zenith | 8729304 |
| 8283 | 36900.37000.37200.38300.39500.41300.42500.111500.1734100 | Toilet flooring work | 7d | 2026-09-23 | 2026-09-29 | 8267, 8282 |  | Zenith | 8729314 |
| 8284 | 36900.37000.37200.38300.39500.41300.42500.111500.1734200 | False Cieling panel fixing | 10d | 2026-09-30 | 2026-10-09 | 8268, 8283 |  | Zenith | 8729324 |
| 8285 | 36900.37000.37200.38300.39500.41300.42500.111500.1734300 | Living dinning flooring | 13d | 2026-09-30 | 2026-10-12 | 8269, 8283 |  | Zenith | 8729334 |
| 8286 | 36900.37000.37200.38300.39500.41300.42500.111500.1734400 | Putty primer coat | 12d | 2026-10-13 | 2026-10-24 | 8270, 8285 |  | Zenith | 8729344 |
| 8287 | 36900.37000.37200.38300.39500.41300.42500.111500.1734500 | Aluminium door-window fixing | 15d | 2026-10-17 | 2026-10-31 | 8271, 8281, 8285 |  | Zenith | 8729354 |
| 8288 | 36900.37000.37200.38300.39500.41300.42500.111500.1734600 | Door shutter fixing (Pre Hung) | 8d | 2026-10-25 | 2026-12-16 | 8272, 8286 |  | Zenith | 8729364 |
| 8289 | 36900.37000.37200.38300.39500.41300.42500.111500.1734700 | Electrical wiring work | 12d | 2026-12-17 | 2026-12-28 | 8273, 8288 |  | Zenith | 8729374 |
| 8290 | 36900.37000.37200.38300.39500.41300.42500.111500.1734800 | Painting 1st coat | 15d | 2027-01-02 | 2027-01-16 | 8274, 8289 |  | Zenith | 8729384 |
| 8291 | 36900.37000.37200.38300.39500.41300.42500.111600 | **6th floor roof** | 125.75d | 2026-08-14 | 2027-01-31 |  | start no earlier than 2026-08-14 | Zenith | 8651344 |
| 8292 | 36900.37000.37200.38300.39500.41300.42500.111600.1734900 | Block Work | 10d | 2026-08-14 | 2026-08-24 | 8178, 8276 |  | Zenith | 8729394 |
| 8293 | 36900.37000.37200.38300.39500.41300.42500.111600.1735000 | Fire sprinkler pipe fixing | 6d | 2026-08-24 | 2026-08-30 | 8277, 8292 |  | Zenith | 8729404 |
| 8294 | 36900.37000.37200.38300.39500.41300.42500.111600.1735100 | Internal Plumbing Works | 10d | 2026-08-24 | 2026-09-03 | 8278, 8292 |  | Zenith | 8729414 |
| 8295 | 36900.37000.37200.38300.39500.41300.42500.111600.1735200 | Waterproofing | 14d | 2026-09-08 | 2026-09-21 | 8279, 8294 |  | Zenith | 8729424 |
| 8296 | 36900.37000.37200.38300.39500.41300.42500.111600.1735300 | Internal Plaster | 14d | 2026-09-13 | 2026-09-26 | 8280, 8294, 8295FF+5d |  | Zenith | 8729434 |
| 8297 | 36900.37000.37200.38300.39500.41300.42500.111600.1735400 | IPS flooring work | 10d | 2026-09-27 | 2026-10-06 | 8281, 8296 |  | Zenith | 8729444 |
| 8298 | 36900.37000.37200.38300.39500.41300.42500.111600.1735500 | Toilet dado work | 10d | 2026-09-27 | 2026-10-06 | 8282, 8295, 8296 |  | Zenith | 8729454 |
| 8299 | 36900.37000.37200.38300.39500.41300.42500.111600.1735600 | Toilet flooring work | 7d | 2026-10-07 | 2026-10-13 | 8283, 8298 |  | Zenith | 8729464 |
| 8300 | 36900.37000.37200.38300.39500.41300.42500.111600.1735700 | False Cieling panel fixing | 10d | 2026-10-14 | 2026-10-23 | 8284, 8299 |  | Zenith | 8729474 |
| 8301 | 36900.37000.37200.38300.39500.41300.42500.111600.1735800 | Living dinning flooring | 13d | 2026-10-14 | 2026-10-26 | 8285, 8299 |  | Zenith | 8729484 |
| 8302 | 36900.37000.37200.38300.39500.41300.42500.111600.1735900 | Putty primer coat | 12d | 2026-10-27 | 2026-12-22 | 8286, 8301 |  | Zenith | 8729494 |
| 8303 | 36900.37000.37200.38300.39500.41300.42500.111600.1736000 | Aluminium door-window fixing | 15d | 2026-12-16 | 2026-12-30 | 8287, 8297, 8301 |  | Zenith | 8729504 |
| 8304 | 36900.37000.37200.38300.39500.41300.42500.111600.1736100 | Door shutter fixing (Pre Hung) | 8d | 2026-12-23 | 2026-12-30 | 8288, 8302 |  | Zenith | 8729514 |
| 8305 | 36900.37000.37200.38300.39500.41300.42500.111600.1736200 | Electrical wiring work | 12d | 2026-12-31 | 2027-01-11 | 8289, 8304 |  | Zenith | 8729524 |
| 8306 | 36900.37000.37200.38300.39500.41300.42500.111600.1736300 | Painting 1st coat | 15d | 2027-01-17 | 2027-01-31 | 8290, 8305 |  | Zenith | 8729534 |

| ID | WBS | Task | Duration | Start | Finish | Predecessors | Constraint | Calendar | Unique_Task_ID |
| --- | --- | --- | --- | --- | --- | --- | --- | --- | --- |
| 8307 | 36900.37000.37200.38300.39500.41300.42500.111700 | **7th floor roof** | 127.75d | 2026-08-27 | 2027-02-15 |  | start no earlier than 2026-08-27 | Zenith | 8651354 |
| 8308 | 36900.37000.37200.38300.39500.41300.42500.111700.1736400 | Block Work | 10d | 2026-08-27 | 2026-09-06 | 8179, 8292 |  | Zenith | 8729544 |
| 8309 | 36900.37000.37200.38300.39500.41300.42500.111700.1736500 | Fire sprinkler pipe fixing | 6d | 2026-09-06 | 2026-09-12 | 8293, 8308 |  | Zenith | 8729554 |
| 8310 | 36900.37000.37200.38300.39500.41300.42500.111700.1736600 | Internal Plumbing Works | 10d | 2026-09-06 | 2026-09-16 | 8294, 8308 |  | Zenith | 8729564 |
| 8311 | 36900.37000.37200.38300.39500.41300.42500.111700.1736700 | Waterproofing | 14d | 2026-09-22 | 2026-10-05 | 8295, 8310 |  | Zenith | 8729574 |
| 8312 | 36900.37000.37200.38300.39500.41300.42500.111700.1736800 | Internal Plaster | 14d | 2026-09-27 | 2026-10-10 | 8296, 8310, 8311FF+5d |  | Zenith | 8729584 |
| 8313 | 36900.37000.37200.38300.39500.41300.42500.111700.1736900 | IPS flooring work | 10d | 2026-10-11 | 2026-10-20 | 8297, 8312 |  | Zenith | 8729594 |
| 8314 | 36900.37000.37200.38300.39500.41300.42500.111700.1737000 | Toilet dado work | 10d | 2026-10-11 | 2026-10-20 | 8298, 8311, 8312 |  | Zenith | 8729604 |
| 8315 | 36900.37000.37200.38300.39500.41300.42500.111700.1737100 | Toilet flooring work | 7d | 2026-10-21 | 2026-10-27 | 8299, 8314 |  | Zenith | 8729614 |
| 8316 | 36900.37000.37200.38300.39500.41300.42500.111700.1737200 | False Cieling panel fixing | 10d | 2026-10-28 | 2026-12-21 | 8300, 8315 |  | Zenith | 8729624 |
| 8317 | 36900.37000.37200.38300.39500.41300.42500.111700.1737300 | Living dinning flooring | 13d | 2026-10-28 | 2026-12-24 | 8301, 8315 |  | Zenith | 8729634 |
| 8318 | 36900.37000.37200.38300.39500.41300.42500.111700.1737400 | Putty primer coat | 12d | 2026-12-25 | 2027-01-05 | 8302, 8317 |  | Zenith | 8729644 |
| 8319 | 36900.37000.37200.38300.39500.41300.42500.111700.1737500 | Aluminium door-window fixing | 15d | 2026-12-31 | 2027-01-14 | 8303, 8313, 8317 |  | Zenith | 8729654 |
| 8320 | 36900.37000.37200.38300.39500.41300.42500.111700.1737600 | Door shutter fixing (Pre Hung) | 8d | 2027-01-06 | 2027-01-13 | 8304, 8318 |  | Zenith | 8729664 |
| 8321 | 36900.37000.37200.38300.39500.41300.42500.111700.1737700 | Electrical wiring work | 12d | 2027-01-14 | 2027-01-25 | 8305, 8320 |  | Zenith | 8729674 |
| 8322 | 36900.37000.37200.38300.39500.41300.42500.111700.1737800 | Painting 1st coat | 15d | 2027-02-01 | 2027-02-15 | 8306, 8321 |  | Zenith | 8729684 |
| 8323 | 36900.37000.37200.38300.39500.41300.42500.111800 | **8th floor roof** | 129.75d | 2026-09-09 | 2027-03-02 |  | start no earlier than 2026-09-09 | Zenith | 8651364 |
| 8324 | 36900.37000.37200.38300.39500.41300.42500.111800.1737900 | Block Work | 10d | 2026-09-09 | 2026-09-19 | 8180, 8308 |  | Zenith | 8729694 |
| 8325 | 36900.37000.37200.38300.39500.41300.42500.111800.1738000 | Fire sprinkler pipe fixing | 6d | 2026-09-19 | 2026-09-25 | 8309, 8324 |  | Zenith | 8729704 |
| 8326 | 36900.37000.37200.38300.39500.41300.42500.111800.1738100 | Internal Plumbing Works | 10d | 2026-09-19 | 2026-09-29 | 8310, 8324 |  | Zenith | 8729714 |
| 8327 | 36900.37000.37200.38300.39500.41300.42500.111800.1738200 | Waterproofing | 14d | 2026-10-06 | 2026-10-19 | 8311, 8326 |  | Zenith | 8729724 |
| 8328 | 36900.37000.37200.38300.39500.41300.42500.111800.1738300 | Internal Plaster | 14d | 2026-10-11 | 2026-10-24 | 8312, 8326, 8327FF+5d |  | Zenith | 8729734 |
| 8329 | 36900.37000.37200.38300.39500.41300.42500.111800.1738400 | IPS flooring work | 10d | 2026-10-25 | 2026-12-18 | 8313, 8328 |  | Zenith | 8729744 |
| 8330 | 36900.37000.37200.38300.39500.41300.42500.111800.1738500 | Toilet dado work | 10d | 2026-10-25 | 2026-12-18 | 8314, 8327, 8328 |  | Zenith | 8729754 |
| 8331 | 36900.37000.37200.38300.39500.41300.42500.111800.1738600 | Toilet flooring work | 7d | 2026-12-19 | 2026-12-25 | 8315, 8330 |  | Zenith | 8729764 |
| 8332 | 36900.37000.37200.38300.39500.41300.42500.111800.1738700 | False Cieling panel fixing | 10d | 2026-12-26 | 2027-01-04 | 8316, 8331 |  | Zenith | 8729774 |
| 8333 | 36900.37000.37200.38300.39500.41300.42500.111800.1738800 | Living dinning flooring | 13d | 2026-12-26 | 2027-01-07 | 8317, 8331 |  | Zenith | 8729784 |
| 8334 | 36900.37000.37200.38300.39500.41300.42500.111800.1738900 | Putty primer coat | 12d | 2027-01-08 | 2027-01-19 | 8318, 8333 |  | Zenith | 8729794 |
| 8335 | 36900.37000.37200.38300.39500.41300.42500.111800.1739000 | Aluminium door-window fixing | 15d | 2027-01-15 | 2027-01-29 | 8319, 8329, 8333 |  | Zenith | 8729804 |
| 8336 | 36900.37000.37200.38300.39500.41300.42500.111800.1739100 | Door shutter fixing (Pre Hung) | 8d | 2027-01-20 | 2027-01-27 | 8320, 8334 |  | Zenith | 8729814 |
| 8337 | 36900.37000.37200.38300.39500.41300.42500.111800.1739200 | Electrical wiring work | 12d | 2027-01-28 | 2027-02-08 | 8321, 8336 |  | Zenith | 8729824 |
| 8338 | 36900.37000.37200.38300.39500.41300.42500.111800.1739300 | Painting 1st coat | 15d | 2027-02-16 | 2027-03-02 | 8322, 8337 |  | Zenith | 8729834 |

| ID | WBS | Task | Duration | Start | Finish | Predecessors | Constraint | Calendar | Unique_Task_ID |
| --- | --- | --- | --- | --- | --- | --- | --- | --- | --- |
| 8339 | 36900.37000.37200.38300.39500.41300.42500.111900 | **9th floor roof** | 131.75d | 2026-09-22 | 2027-03-17 |  | start no earlier than 2026-09-22 | Zenith | 8651374 |
| 8340 | 36900.37000.37200.38300.39500.41300.42500.111900.1739400 | Block Work | 10d | 2026-09-22 | 2026-10-02 | 8181, 8324 |  | Zenith | 8729844 |
| 8341 | 36900.37000.37200.38300.39500.41300.42500.111900.1739500 | Fire sprinkler pipe fixing | 6d | 2026-10-02 | 2026-10-08 | 8325, 8340 |  | Zenith | 8729854 |
| 8342 | 36900.37000.37200.38300.39500.41300.42500.111900.1739600 | Internal Plumbing Works | 10d | 2026-10-02 | 2026-10-12 | 8326, 8340 |  | Zenith | 8729864 |
| 8343 | 36900.37000.37200.38300.39500.41300.42500.111900.1739700 | Waterproofing | 14d | 2026-10-20 | 2026-12-17 | 8327, 8342 |  | Zenith | 8729874 |
| 8344 | 36900.37000.37200.38300.39500.41300.42500.111900.1739800 | Internal Plaster | 14d | 2026-10-25 | 2026-12-22 | 8328, 8342, 8343FF+5d |  | Zenith | 8729884 |
| 8345 | 36900.37000.37200.38300.39500.41300.42500.111900.1739900 | IPS flooring work | 10d | 2026-12-23 | 2027-01-01 | 8329, 8344 |  | Zenith | 8729894 |
| 8346 | 36900.37000.37200.38300.39500.41300.42500.111900.1740000 | Toilet dado work | 10d | 2026-12-23 | 2027-01-01 | 8330, 8343, 8344 |  | Zenith | 8729904 |
| 8347 | 36900.37000.37200.38300.39500.41300.42500.111900.1740100 | Toilet flooring work | 7d | 2027-01-02 | 2027-01-08 | 8331, 8346 |  | Zenith | 8729914 |
| 8348 | 36900.37000.37200.38300.39500.41300.42500.111900.1740200 | False Cieling panel fixing | 10d | 2027-01-09 | 2027-01-18 | 8332, 8347 |  | Zenith | 8729924 |
| 8349 | 36900.37000.37200.38300.39500.41300.42500.111900.1740300 | Living dinning flooring | 13d | 2027-01-09 | 2027-01-21 | 8333, 8347 |  | Zenith | 8729934 |
| 8350 | 36900.37000.37200.38300.39500.41300.42500.111900.1740400 | Putty primer coat | 12d | 2027-01-22 | 2027-02-02 | 8334, 8349 |  | Zenith | 8729944 |
| 8351 | 36900.37000.37200.38300.39500.41300.42500.111900.1740500 | Aluminium door-window fixing | 15d | 2027-01-30 | 2027-02-13 | 8335, 8345, 8349 |  | Zenith | 8729954 |
| 8352 | 36900.37000.37200.38300.39500.41300.42500.111900.1740600 | Door shutter fixing (Pre Hung) | 8d | 2027-02-03 | 2027-02-10 | 8336, 8350 |  | Zenith | 8729964 |
| 8353 | 36900.37000.37200.38300.39500.41300.42500.111900.1740700 | Electrical wiring work | 12d | 2027-02-11 | 2027-02-22 | 8337, 8352 |  | Zenith | 8729974 |
| 8354 | 36900.37000.37200.38300.39500.41300.42500.111900.1740800 | Painting 1st coat | 15d | 2027-03-03 | 2027-03-17 | 8338, 8353 |  | Zenith | 8729984 |
| 8355 | 36900.37000.37200.38300.39500.41300.42500.112000 | **10th floor roof** | 133.75d | 2026-10-05 | 2027-04-01 |  | start no earlier than 2026-10-05 | Zenith | 8651384 |
| 8356 | 36900.37000.37200.38300.39500.41300.42500.112000.1740900 | Block Work | 10d | 2026-10-05 | 2026-10-15 | 8182, 8340 |  | Zenith | 8729994 |
| 8357 | 36900.37000.37200.38300.39500.41300.42500.112000.1741000 | Fire sprinkler pipe fixing | 6d | 2026-10-15 | 2026-10-21 | 8341, 8356 |  | Zenith | 8730004 |
| 8358 | 36900.37000.37200.38300.39500.41300.42500.112000.1741100 | Internal Plumbing Works | 10d | 2026-10-15 | 2026-10-25 | 8342, 8356 |  | Zenith | 8730014 |
| 8359 | 36900.37000.37200.38300.39500.41300.42500.112000.1741200 | Waterproofing | 14d | 2026-12-18 | 2026-12-31 | 8343, 8358 |  | Zenith | 8730024 |
| 8360 | 36900.37000.37200.38300.39500.41300.42500.112000.1741300 | Internal Plaster | 14d | 2026-12-23 | 2027-01-05 | 8344, 8358, 8359FF+5d |  | Zenith | 8730034 |
| 8361 | 36900.37000.37200.38300.39500.41300.42500.112000.1741400 | IPS flooring work | 10d | 2027-01-06 | 2027-01-15 | 8345, 8360 |  | Zenith | 8730044 |
| 8362 | 36900.37000.37200.38300.39500.41300.42500.112000.1741500 | Toilet dado work | 10d | 2027-01-06 | 2027-01-15 | 8346, 8359, 8360 |  | Zenith | 8730054 |
| 8363 | 36900.37000.37200.38300.39500.41300.42500.112000.1741600 | Toilet flooring work | 7d | 2027-01-16 | 2027-01-22 | 8347, 8362 |  | Zenith | 8730064 |
| 8364 | 36900.37000.37200.38300.39500.41300.42500.112000.1741700 | False Cieling panel fixing | 10d | 2027-01-23 | 2027-02-01 | 8348, 8363 |  | Zenith | 8730074 |
| 8365 | 36900.37000.37200.38300.39500.41300.42500.112000.1741800 | Living dinning flooring | 13d | 2027-01-23 | 2027-02-04 | 8349, 8363 |  | Zenith | 8730084 |
| 8366 | 36900.37000.37200.38300.39500.41300.42500.112000.1741900 | Putty primer coat | 12d | 2027-02-05 | 2027-02-16 | 8350, 8365 |  | Zenith | 8730094 |
| 8367 | 36900.37000.37200.38300.39500.41300.42500.112000.1742000 | Aluminium door-window fixing | 15d | 2027-02-14 | 2027-02-28 | 8351, 8361, 8365 |  | Zenith | 8730104 |
| 8368 | 36900.37000.37200.38300.39500.41300.42500.112000.1742100 | Door shutter fixing (Pre Hung) | 8d | 2027-02-17 | 2027-02-24 | 8352, 8366 |  | Zenith | 8730114 |
| 8369 | 36900.37000.37200.38300.39500.41300.42500.112000.1742200 | Electrical wiring work | 12d | 2027-02-25 | 2027-03-08 | 8353, 8368 |  | Zenith | 8730124 |
| 8370 | 36900.37000.37200.38300.39500.41300.42500.112000.1742300 | Painting 1st coat | 15d | 2027-03-18 | 2027-04-01 | 8354, 8369 |  | Zenith | 8730134 |

| ID | WBS | Task | Duration | Start | Finish | Predecessors | Constraint | Calendar | Unique_Task_ID |
| --- | --- | --- | --- | --- | --- | --- | --- | --- | --- |
| 8371 | 36900.37000.37200.38300.39500.41300.42500.112100 | **11th floor roof** | 135.75d | 2026-10-18 | 2027-04-16 |  | start no earlier than 2026-10-18 | Zenith | 8651394 |
| 8372 | 36900.37000.37200.38300.39500.41300.42500.112100.1742400 | Block Work | 10d | 2026-10-18 | 2026-10-28 | 8183, 8356 |  | Zenith | 8730144 |
| 8373 | 36900.37000.37200.38300.39500.41300.42500.112100.1742500 | Fire sprinkler pipe fixing | 6d | 2026-10-28 | 2026-12-18 | 8357, 8372 |  | Zenith | 8730154 |
| 8374 | 36900.37000.37200.38300.39500.41300.42500.112100.1742600 | Internal Plumbing Works | 10d | 2026-10-28 | 2026-12-22 | 8358, 8372 |  | Zenith | 8730164 |
| 8375 | 36900.37000.37200.38300.39500.41300.42500.112100.1742700 | Waterproofing | 14d | 2027-01-01 | 2027-01-14 | 8359, 8374 |  | Zenith | 8730174 |
| 8376 | 36900.37000.37200.38300.39500.41300.42500.112100.1742800 | Internal Plaster | 14d | 2027-01-06 | 2027-01-19 | 8360, 8374, 8375FF+5d |  | Zenith | 8730184 |
| 8377 | 36900.37000.37200.38300.39500.41300.42500.112100.1742900 | IPS flooring work | 10d | 2027-01-20 | 2027-01-29 | 8361, 8376 |  | Zenith | 8730194 |
| 8378 | 36900.37000.37200.38300.39500.41300.42500.112100.1743000 | Toilet dado work | 10d | 2027-01-20 | 2027-01-29 | 8362, 8375, 8376 |  | Zenith | 8730204 |
| 8379 | 36900.37000.37200.38300.39500.41300.42500.112100.1743100 | Toilet flooring work | 7d | 2027-01-30 | 2027-02-05 | 8363, 8378 |  | Zenith | 8730214 |
| 8380 | 36900.37000.37200.38300.39500.41300.42500.112100.1743200 | False Cieling panel fixing | 10d | 2027-02-06 | 2027-02-15 | 8364, 8379 |  | Zenith | 8730224 |
| 8381 | 36900.37000.37200.38300.39500.41300.42500.112100.1743300 | Living dinning flooring | 13d | 2027-02-06 | 2027-02-18 | 8365, 8379 |  | Zenith | 8730234 |
| 8382 | 36900.37000.37200.38300.39500.41300.42500.112100.1743400 | Putty primer coat | 12d | 2027-02-19 | 2027-03-02 | 8366, 8381 |  | Zenith | 8730244 |
| 8383 | 36900.37000.37200.38300.39500.41300.42500.112100.1743500 | Aluminium door-window fixing | 15d | 2027-03-01 | 2027-03-15 | 8367, 8377, 8381 |  | Zenith | 8730254 |
| 8384 | 36900.37000.37200.38300.39500.41300.42500.112100.1743600 | Door shutter fixing (Pre Hung) | 8d | 2027-03-03 | 2027-03-10 | 8368, 8382 |  | Zenith | 8730264 |
| 8385 | 36900.37000.37200.38300.39500.41300.42500.112100.1743700 | Electrical wiring work | 12d | 2027-03-11 | 2027-03-22 | 8369, 8384 |  | Zenith | 8730274 |
| 8386 | 36900.37000.37200.38300.39500.41300.42500.112100.1743800 | Painting 1st coat | 15d | 2027-04-02 | 2027-04-16 | 8370, 8385 |  | Zenith | 8730284 |
| 8387 | 36900.37000.37200.38300.39500.41300.42500.112200 | **12th floor roof** | 137.75d | 2026-10-31 | 2027-05-01 |  | start no earlier than 2026-10-31 | Zenith | 8651404 |
| 8388 | 36900.37000.37200.38300.39500.41300.42500.112200.1743900 | Block Work | 10d | 2026-10-31 | 2026-12-25 | 8184, 8372 |  | Zenith | 8730294 |
| 8389 | 36900.37000.37200.38300.39500.41300.42500.112200.1744000 | Fire sprinkler pipe fixing | 6d | 2026-12-25 | 2026-12-31 | 8373, 8388 |  | Zenith | 8730304 |
| 8390 | 36900.37000.37200.38300.39500.41300.42500.112200.1744100 | Internal Plumbing Works | 10d | 2026-12-25 | 2027-01-04 | 8374, 8388 |  | Zenith | 8730314 |
| 8391 | 36900.37000.37200.38300.39500.41300.42500.112200.1744200 | Waterproofing | 14d | 2027-01-15 | 2027-01-28 | 8375, 8390 |  | Zenith | 8730324 |
| 8392 | 36900.37000.37200.38300.39500.41300.42500.112200.1744300 | Internal Plaster | 14d | 2027-01-20 | 2027-02-02 | 8376, 8390, 8391FF+5d |  | Zenith | 8730334 |
| 8393 | 36900.37000.37200.38300.39500.41300.42500.112200.1744400 | IPS flooring work | 10d | 2027-02-03 | 2027-02-12 | 8377, 8392 |  | Zenith | 8730344 |
| 8394 | 36900.37000.37200.38300.39500.41300.42500.112200.1744500 | Toilet dado work | 10d | 2027-02-03 | 2027-02-12 | 8378, 8391, 8392 |  | Zenith | 8730354 |
| 8395 | 36900.37000.37200.38300.39500.41300.42500.112200.1744600 | Toilet flooring work | 7d | 2027-02-13 | 2027-02-19 | 8379, 8394 |  | Zenith | 8730364 |
| 8396 | 36900.37000.37200.38300.39500.41300.42500.112200.1744700 | False Cieling panel fixing | 10d | 2027-02-20 | 2027-03-01 | 8380, 8395 |  | Zenith | 8730374 |
| 8397 | 36900.37000.37200.38300.39500.41300.42500.112200.1744800 | Living dinning flooring | 13d | 2027-02-20 | 2027-03-04 | 8381, 8395 |  | Zenith | 8730384 |
| 8398 | 36900.37000.37200.38300.39500.41300.42500.112200.1744900 | Putty primer coat | 12d | 2027-03-05 | 2027-03-16 | 8382, 8397 |  | Zenith | 8730394 |
| 8399 | 36900.37000.37200.38300.39500.41300.42500.112200.1745000 | Aluminium door-window fixing | 15d | 2027-03-16 | 2027-03-30 | 8383, 8393, 8397 |  | Zenith | 8730404 |
| 8400 | 36900.37000.37200.38300.39500.41300.42500.112200.1745100 | Door shutter fixing (Pre Hung) | 8d | 2027-03-17 | 2027-03-24 | 8384, 8398 |  | Zenith | 8730414 |
| 8401 | 36900.37000.37200.38300.39500.41300.42500.112200.1745200 | Electrical wiring work | 12d | 2027-03-25 | 2027-04-05 | 8385, 8400 |  | Zenith | 8730424 |
| 8402 | 36900.37000.37200.38300.39500.41300.42500.112200.1745300 | Painting 1st coat | 15d | 2027-04-17 | 2027-05-01 | 8386, 8401 |  | Zenith | 8730434 |

| ID | WBS | Task | Duration | Start | Finish | Predecessors | Constraint | Calendar | Unique_Task_ID |
| --- | --- | --- | --- | --- | --- | --- | --- | --- | --- |
| 8403 | 36900.37000.37200.38300.39500.41300.42500.112300 | **13th floor roof** | 139.75d | 2026-12-28 | 2027-05-16 |  | start no earlier than 2026-12-28 | Zenith | 8651414 |
| 8404 | 36900.37000.37200.38300.39500.41300.42500.112300.1745400 | Block Work | 10d | 2026-12-28 | 2027-01-07 | 8185, 8388 |  | Zenith | 8730444 |
| 8405 | 36900.37000.37200.38300.39500.41300.42500.112300.1745500 | Fire sprinkler pipe fixing | 6d | 2027-01-07 | 2027-01-13 | 8389, 8404 |  | Zenith | 8730454 |
| 8406 | 36900.37000.37200.38300.39500.41300.42500.112300.1745600 | Internal Plumbing Works | 10d | 2027-01-07 | 2027-01-17 | 8390, 8404 |  | Zenith | 8730464 |
| 8407 | 36900.37000.37200.38300.39500.41300.42500.112300.1745700 | Waterproofing | 14d | 2027-01-29 | 2027-02-11 | 8391, 8406 |  | Zenith | 8730474 |
| 8408 | 36900.37000.37200.38300.39500.41300.42500.112300.1745800 | Internal Plaster | 14d | 2027-02-03 | 2027-02-16 | 8392, 8406, 8407FF+5d |  | Zenith | 8730484 |
| 8409 | 36900.37000.37200.38300.39500.41300.42500.112300.1745900 | IPS flooring work | 10d | 2027-02-17 | 2027-02-26 | 8393, 8408 |  | Zenith | 8730494 |
| 8410 | 36900.37000.37200.38300.39500.41300.42500.112300.1746000 | Toilet dado work | 10d | 2027-02-17 | 2027-02-26 | 8394, 8407, 8408 |  | Zenith | 8730504 |
| 8411 | 36900.37000.37200.38300.39500.41300.42500.112300.1746100 | Toilet flooring work | 7d | 2027-02-27 | 2027-03-05 | 8395, 8410 |  | Zenith | 8730514 |
| 8412 | 36900.37000.37200.38300.39500.41300.42500.112300.1746200 | False Cieling panel fixing | 10d | 2027-03-06 | 2027-03-15 | 8396, 8411 |  | Zenith | 8730524 |
| 8413 | 36900.37000.37200.38300.39500.41300.42500.112300.1746300 | Living dinning flooring | 14d | 2027-03-06 | 2027-03-19 | 8397, 8411 |  | Zenith | 8730534 |
| 8414 | 36900.37000.37200.38300.39500.41300.42500.112300.1746400 | Putty primer coat | 12d | 2027-03-20 | 2027-03-31 | 8398, 8413 |  | Zenith | 8730544 |
| 8415 | 36900.37000.37200.38300.39500.41300.42500.112300.1746500 | Aluminium door-window fixing | 15d | 2027-03-31 | 2027-04-14 | 8399, 8409, 8413 |  | Zenith | 8731964 |
| 8416 | 36900.37000.37200.38300.39500.41300.42500.112300.1746600 | Door shutter fixing (Pre Hung) | 8d | 2027-04-01 | 2027-04-08 | 8400, 8414 |  | Zenith | 8731974 |
| 8417 | 36900.37000.37200.38300.39500.41300.42500.112300.1746700 | Electrical wiring work | 12d | 2027-04-09 | 2027-04-20 | 8401, 8416 |  | Zenith | 8731984 |
| 8418 | 36900.37000.37200.38300.39500.41300.42500.112300.1746800 | Painting 1st coat | 15d | 2027-05-02 | 2027-05-16 | 8402, 8417 |  | Zenith | 8731994 |
| 8419 | 36900.37000.37200.38300.39500.41300.42500.112400 | **14th floor roof** | 141.75d | 2027-01-10 | 2027-05-31 |  | start no earlier than 2027-01-10 | Zenith | 8651424 |
| 8420 | 36900.37000.37200.38300.39500.41300.42500.112400.1746900 | Block Work | 10d | 2027-01-10 | 2027-01-20 | 8186, 8404 |  | Zenith | 8732004 |
| 8421 | 36900.37000.37200.38300.39500.41300.42500.112400.1747000 | Fire sprinkler pipe fixing | 6d | 2027-01-20 | 2027-01-26 | 8405, 8420 |  | Zenith | 8732014 |
| 8422 | 36900.37000.37200.38300.39500.41300.42500.112400.1747100 | Internal Plumbing Works | 10d | 2027-01-20 | 2027-01-30 | 8406, 8420 |  | Zenith | 8732024 |
| 8423 | 36900.37000.37200.38300.39500.41300.42500.112400.1747200 | Waterproofing | 14d | 2027-02-12 | 2027-02-25 | 8407, 8422 |  | Zenith | 8732034 |
| 8424 | 36900.37000.37200.38300.39500.41300.42500.112400.1747300 | Internal Plaster | 14d | 2027-02-17 | 2027-03-02 | 8408, 8422, 8423FF+5d |  | Zenith | 8732044 |
| 8425 | 36900.37000.37200.38300.39500.41300.42500.112400.1747400 | IPS flooring work | 10d | 2027-03-03 | 2027-03-12 | 8409, 8424 |  | Zenith | 8732054 |
| 8426 | 36900.37000.37200.38300.39500.41300.42500.112400.1747500 | Toilet dado work | 10d | 2027-03-03 | 2027-03-12 | 8410, 8423, 8424 |  | Zenith | 8732064 |
| 8427 | 36900.37000.37200.38300.39500.41300.42500.112400.1747600 | Toilet flooring work | 7d | 2027-03-13 | 2027-03-19 | 8411, 8426 |  | Zenith | 8732074 |
| 8428 | 36900.37000.37200.38300.39500.41300.42500.112400.1747700 | False Cieling panel fixing | 10d | 2027-03-20 | 2027-03-29 | 8412, 8427 |  | Zenith | 8732084 |
| 8429 | 36900.37000.37200.38300.39500.41300.42500.112400.1747800 | Living dinning flooring | 13d | 2027-03-20 | 2027-04-01 | 8413, 8427 |  | Zenith | 8732094 |
| 8430 | 36900.37000.37200.38300.39500.41300.42500.112400.1747900 | Putty primer coat | 12d | 2027-04-02 | 2027-04-13 | 8414, 8429 |  | Zenith | 8732104 |
| 8431 | 36900.37000.37200.38300.39500.41300.42500.112400.1748000 | Aluminium door-window fixing | 15d | 2027-04-15 | 2027-04-29 | 8415, 8425, 8429 |  | Zenith | 8732114 |
| 8432 | 36900.37000.37200.38300.39500.41300.42500.112400.1748100 | Door shutter fixing (Pre Hung) | 8d | 2027-04-14 | 2027-04-21 | 8416, 8430 |  | Zenith | 8732124 |
| 8433 | 36900.37000.37200.38300.39500.41300.42500.112400.1748200 | Electrical wiring work | 12d | 2027-04-22 | 2027-05-03 | 8417, 8432 |  | Zenith | 8732134 |
| 8434 | 36900.37000.37200.38300.39500.41300.42500.112400.1748300 | Painting 1st coat | 15d | 2027-05-17 | 2027-05-31 | 8418, 8433 |  | Zenith | 8732144 |

| ID | WBS | Task | Duration | Start | Finish | Predecessors | Constraint | Calendar | Unique_Task_ID |
| --- | --- | --- | --- | --- | --- | --- | --- | --- | --- |
| 8435 | 36900.37000.37200.38300.39500.41300.42500.112500 | **15th floor roof** | 143.75d | 2027-01-23 | 2027-06-15 |  | start no earlier than 2027-01-23 | Zenith | 8651434 |
| 8436 | 36900.37000.37200.38300.39500.41300.42500.112500.1748400 | Block Work | 10d | 2027-01-23 | 2027-02-02 | 8187, 8420 |  | Zenith | 8732154 |
| 8437 | 36900.37000.37200.38300.39500.41300.42500.112500.1748500 | Fire sprinkler pipe fixing | 6d | 2027-02-02 | 2027-02-08 | 8421, 8436 |  | Zenith | 8732164 |
| 8438 | 36900.37000.37200.38300.39500.41300.42500.112500.1748600 | Internal Plumbing Works | 10d | 2027-02-02 | 2027-02-12 | 8422, 8436 |  | Zenith | 8732174 |
| 8439 | 36900.37000.37200.38300.39500.41300.42500.112500.1748700 | Waterproofing | 14d | 2027-02-26 | 2027-03-11 | 8423, 8438 |  | Zenith | 8732184 |
| 8440 | 36900.37000.37200.38300.39500.41300.42500.112500.1748800 | Internal Plaster | 14d | 2027-03-03 | 2027-03-16 | 8424, 8438, 8439FF+5d |  | Zenith | 8732194 |
| 8441 | 36900.37000.37200.38300.39500.41300.42500.112500.1748900 | IPS flooring work | 10d | 2027-03-17 | 2027-03-26 | 8425, 8440 |  | Zenith | 8732204 |
| 8442 | 36900.37000.37200.38300.39500.41300.42500.112500.1749000 | Toilet dado work | 10d | 2027-03-17 | 2027-03-26 | 8426, 8439, 8440 |  | Zenith | 8732214 |
| 8443 | 36900.37000.37200.38300.39500.41300.42500.112500.1749100 | Toilet flooring work | 7d | 2027-03-27 | 2027-04-02 | 8427, 8442 |  | Zenith | 8732224 |
| 8444 | 36900.37000.37200.38300.39500.41300.42500.112500.1749200 | False Cieling panel fixing | 10d | 2027-04-03 | 2027-04-12 | 8428, 8443 |  | Zenith | 8732234 |
| 8445 | 36900.37000.37200.38300.39500.41300.42500.112500.1749300 | Living dinning flooring | 13d | 2027-04-03 | 2027-04-15 | 8429, 8443 |  | Zenith | 8732244 |
| 8446 | 36900.37000.37200.38300.39500.41300.42500.112500.1749400 | Aluminium door-window fixing | 12d | 2027-04-30 | 2027-05-11 | 8431, 8441, 8445 |  | Zenith | 8732254 |
| 8447 | 36900.37000.37200.38300.39500.41300.42500.112500.1749500 | Putty primer coat | 15d | 2027-04-16 | 2027-04-30 | 8430, 8445 |  | Zenith | 8732264 |
| 8448 | 36900.37000.37200.38300.39500.41300.42500.112500.1749600 | Door shutter fixing (Pre Hung) | 8d | 2027-05-01 | 2027-05-08 | 8432, 8447 |  | Zenith | 8732274 |
| 8449 | 36900.37000.37200.38300.39500.41300.42500.112500.1749700 | Electrical wiring work | 12d | 2027-05-09 | 2027-05-20 | 8433, 8448 |  | Zenith | 8732284 |
| 8450 | 36900.37000.37200.38300.39500.41300.42500.112500.1749800 | Painting 1st coat | 15d | 2027-06-01 | 2027-06-15 | 8434, 8449 |  | Zenith | 8732294 |
| 8451 | 36900.37000.37200.38300.39500.41300.42500.112600 | **16th floor roof** | 145.75d | 2027-02-05 | 2027-06-30 |  | start no earlier than 2027-02-05 | Zenith | 8651444 |
| 8452 | 36900.37000.37200.38300.39500.41300.42500.112600.1749900 | Block Work | 10d | 2027-02-05 | 2027-02-15 | 8188, 8436 |  | Zenith | 8732304 |
| 8453 | 36900.37000.37200.38300.39500.41300.42500.112600.1750000 | Fire sprinkler pipe fixing | 6d | 2027-02-15 | 2027-02-21 | 8437, 8452 |  | Zenith | 8732314 |
| 8454 | 36900.37000.37200.38300.39500.41300.42500.112600.1750100 | Internal Plumbing Works | 10d | 2027-02-15 | 2027-02-25 | 8438, 8452 |  | Zenith | 8732324 |
| 8455 | 36900.37000.37200.38300.39500.41300.42500.112600.1750200 | Waterproofing | 14d | 2027-03-12 | 2027-03-25 | 8439, 8454 |  | Zenith | 8732334 |
| 8456 | 36900.37000.37200.38300.39500.41300.42500.112600.1750300 | Internal Plaster | 14d | 2027-03-17 | 2027-03-30 | 8440, 8454, 8455FF+5d |  | Zenith | 8732344 |
| 8457 | 36900.37000.37200.38300.39500.41300.42500.112600.1750400 | IPS flooring work | 10d | 2027-03-31 | 2027-04-09 | 8441, 8456 |  | Zenith | 8732354 |
| 8458 | 36900.37000.37200.38300.39500.41300.42500.112600.1750500 | Toilet dado work | 10d | 2027-03-31 | 2027-04-09 | 8442, 8455, 8456 |  | Zenith | 8732364 |
| 8459 | 36900.37000.37200.38300.39500.41300.42500.112600.1750600 | Toilet flooring work | 7d | 2027-04-10 | 2027-04-16 | 8443, 8458 |  | Zenith | 8732374 |
| 8460 | 36900.37000.37200.38300.39500.41300.42500.112600.1750700 | False Cieling panel fixing | 10d | 2027-04-17 | 2027-04-26 | 8444, 8459 |  | Zenith | 8732384 |
| 8461 | 36900.37000.37200.38300.39500.41300.42500.112600.1750800 | Living dinning flooring | 13d | 2027-04-17 | 2027-04-29 | 8445, 8459 |  | Zenith | 8732394 |
| 8462 | 36900.37000.37200.38300.39500.41300.42500.112600.1750900 | Putty primer coat | 12d | 2027-05-01 | 2027-05-12 | 8447, 8461 |  | Zenith | 8732404 |
| 8463 | 36900.37000.37200.38300.39500.41300.42500.112600.1751000 | Aluminium door-window fixing | 15d | 2027-05-12 | 2027-05-26 | 8446, 8457, 8461 |  | Zenith | 8732414 |
| 8464 | 36900.37000.37200.38300.39500.41300.42500.112600.1751100 | Door shutter fixing (Pre Hung) | 8d | 2027-05-13 | 2027-05-20 | 8448, 8462 |  | Zenith | 8732424 |
| 8465 | 36900.37000.37200.38300.39500.41300.42500.112600.1751200 | Electrical wiring work | 12d | 2027-05-21 | 2027-06-01 | 8449, 8464 |  | Zenith | 8732434 |
| 8466 | 36900.37000.37200.38300.39500.41300.42500.112600.1751300 | Painting 1st coat | 15d | 2027-06-16 | 2027-06-30 | 8450, 8465 |  | Zenith | 8732444 |

| ID | WBS | Task | Duration | Start | Finish | Predecessors | Constraint | Calendar | Unique_Task_ID |
| --- | --- | --- | --- | --- | --- | --- | --- | --- | --- |
| 8467 | 36900.37000.37200.38300.39500.41300.42500.112700 | **17th floor roof** | 148.75d | 2027-02-17 | 2027-07-15 |  | start no earlier than 2027-02-17 | Zenith | 8651454 |
| 8468 | 36900.37000.37200.38300.39500.41300.42500.112700.1751400 | Block Work | 10d | 2027-02-17 | 2027-02-27 | 8189, 8452 |  | Zenith | 8732454 |
| 8469 | 36900.37000.37200.38300.39500.41300.42500.112700.1751500 | Fire sprinkler pipe fixing | 6d | 2027-02-27 | 2027-03-05 | 8453, 8468 |  | Zenith | 8732464 |
| 8470 | 36900.37000.37200.38300.39500.41300.42500.112700.1751600 | Internal Plumbing Works | 10d | 2027-02-27 | 2027-03-09 | 8454, 8468 |  | Zenith | 8732474 |
| 8471 | 36900.37000.37200.38300.39500.41300.42500.112700.1751700 | Waterproofing | 14d | 2027-03-26 | 2027-04-08 | 8455, 8470 |  | Zenith | 8732484 |
| 8472 | 36900.37000.37200.38300.39500.41300.42500.112700.1751800 | Internal Plaster | 14d | 2027-03-31 | 2027-04-13 | 8456, 8470, 8471FF+5d |  | Zenith | 8732494 |
| 8473 | 36900.37000.37200.38300.39500.41300.42500.112700.1751900 | IPS flooring work | 10d | 2027-04-14 | 2027-04-23 | 8457, 8472 |  | Zenith | 8732504 |
| 8474 | 36900.37000.37200.38300.39500.41300.42500.112700.1752000 | Toilet dado work | 10d | 2027-04-14 | 2027-04-23 | 8458, 8471, 8472 |  | Zenith | 8732514 |
| 8475 | 36900.37000.37200.38300.39500.41300.42500.112700.1752100 | Toilet flooring work | 7d | 2027-04-24 | 2027-04-30 | 8459, 8474 |  | Zenith | 8732524 |
| 8476 | 36900.37000.37200.38300.39500.41300.42500.112700.1752200 | False Cieling panel fixing | 10d | 2027-05-01 | 2027-05-10 | 8460, 8475 |  | Zenith | 8732534 |
| 8477 | 36900.37000.37200.38300.39500.41300.42500.112700.1752300 | Living dinning flooring | 13d | 2027-05-01 | 2027-05-13 | 8461, 8475 |  | Zenith | 8732544 |
| 8478 | 36900.37000.37200.38300.39500.41300.42500.112700.1752400 | Putty primer coat | 12d | 2027-05-14 | 2027-05-25 | 8462, 8477 |  | Zenith | 8732554 |
| 8479 | 36900.37000.37200.38300.39500.41300.42500.112700.1752500 | Aluminium door-window fixing | 15d | 2027-05-27 | 2027-06-10 | 8463, 8473, 8477 |  | Zenith | 8732564 |
| 8480 | 36900.37000.37200.38300.39500.41300.42500.112700.1752600 | Door shutter fixing (Pre Hung) | 8d | 2027-05-26 | 2027-06-02 | 8464, 8478 |  | Zenith | 8732574 |
| 8481 | 36900.37000.37200.38300.39500.41300.42500.112700.1752700 | Electrical wiring work | 12d | 2027-06-03 | 2027-06-14 | 8465, 8480 |  | Zenith | 8732584 |
| 8482 | 36900.37000.37200.38300.39500.41300.42500.112700.1752800 | Painting 1st coat | 15d | 2027-07-01 | 2027-07-15 | 8466, 8481 |  | Zenith | 8732594 |
| 8483 | 36900.37000.37200.38300.39500.41300.42500.112800 | **18th floor roof** | 151.75d | 2027-03-01 | 2027-07-30 |  | start no earlier than 2027-03-01 | Zenith | 8651464 |
| 8484 | 36900.37000.37200.38300.39500.41300.42500.112800.1752900 | Block Work | 10d | 2027-03-01 | 2027-03-11 | 8190, 8468 |  | Zenith | 8732604 |
| 8485 | 36900.37000.37200.38300.39500.41300.42500.112800.1753000 | Fire sprinkler pipe fixing | 6d | 2027-03-11 | 2027-03-17 | 8469, 8484 |  | Zenith | 8732614 |
| 8486 | 36900.37000.37200.38300.39500.41300.42500.112800.1753100 | Internal Plumbing Works | 10d | 2027-03-11 | 2027-03-21 | 8470, 8484 |  | Zenith | 8732624 |
| 8487 | 36900.37000.37200.38300.39500.41300.42500.112800.1753200 | Waterproofing | 14d | 2027-04-09 | 2027-04-22 | 8471, 8486 |  | Zenith | 8732634 |
| 8488 | 36900.37000.37200.38300.39500.41300.42500.112800.1753300 | Internal Plaster | 14d | 2027-04-14 | 2027-04-27 | 8472, 8486, 8487FF+5d |  | Zenith | 8732644 |
| 8489 | 36900.37000.37200.38300.39500.41300.42500.112800.1753400 | IPS flooring work | 10d | 2027-04-28 | 2027-05-07 | 8473, 8488 |  | Zenith | 8732654 |
| 8490 | 36900.37000.37200.38300.39500.41300.42500.112800.1753500 | Toilet dado work | 10d | 2027-04-28 | 2027-05-07 | 8474, 8487, 8488 |  | Zenith | 8732664 |
| 8491 | 36900.37000.37200.38300.39500.41300.42500.112800.1753600 | Toilet flooring work | 7d | 2027-05-08 | 2027-05-14 | 8475, 8490 |  | Zenith | 8732674 |
| 8492 | 36900.37000.37200.38300.39500.41300.42500.112800.1753700 | False Cieling panel fixing | 10d | 2027-05-15 | 2027-05-24 | 8476, 8491 |  | Zenith | 8732684 |
| 8493 | 36900.37000.37200.38300.39500.41300.42500.112800.1753800 | Living dinning flooring | 14d | 2027-05-15 | 2027-05-28 | 8477, 8491 |  | Zenith | 8732694 |
| 8494 | 36900.37000.37200.38300.39500.41300.42500.112800.1753900 | Putty primer coat | 12d | 2027-05-29 | 2027-06-09 | 8478, 8493 |  | Zenith | 8732704 |
| 8495 | 36900.37000.37200.38300.39500.41300.42500.112800.1754000 | Aluminium door-window fixing | 15d | 2027-06-11 | 2027-06-25 | 8479, 8489, 8493 |  | Zenith | 8732714 |
| 8496 | 36900.37000.37200.38300.39500.41300.42500.112800.1754100 | Door shutter fixing (Pre Hung) | 8d | 2027-06-10 | 2027-06-17 | 8480, 8494 |  | Zenith | 8732724 |
| 8497 | 36900.37000.37200.38300.39500.41300.42500.112800.1754200 | Electrical wiring work | 12d | 2027-06-18 | 2027-06-29 | 8481, 8496 |  | Zenith | 8732734 |
| 8498 | 36900.37000.37200.38300.39500.41300.42500.112800.1754300 | Painting 1st coat | 15d | 2027-07-16 | 2027-07-30 | 8482, 8497 |  | Zenith | 8732744 |

| ID | WBS | Task | Duration | Start | Finish | Predecessors | Constraint | Calendar | Unique_Task_ID |
| --- | --- | --- | --- | --- | --- | --- | --- | --- | --- |
| 8499 | 36900.37000.37200.38300.39500.41300.42500.112900 | **19th floor roof** | 154.75d | 2027-03-13 | 2027-08-14 |  | start no earlier than 2027-03-13 | Zenith | 8651474 |
| 8500 | 36900.37000.37200.38300.39500.41300.42500.112900.1754400 | Block Work | 10d | 2027-03-13 | 2027-03-23 | 8191, 8484 |  | Zenith | 8732754 |
| 8501 | 36900.37000.37200.38300.39500.41300.42500.112900.1754500 | Fire sprinkler pipe fixing | 6d | 2027-03-23 | 2027-03-29 | 8485, 8500 |  | Zenith | 8732764 |
| 8502 | 36900.37000.37200.38300.39500.41300.42500.112900.1754600 | Internal Plumbing Works | 10d | 2027-03-23 | 2027-04-02 | 8486, 8500 |  | Zenith | 8732774 |
| 8503 | 36900.37000.37200.38300.39500.41300.42500.112900.1754700 | Waterproofing | 14d | 2027-04-23 | 2027-05-06 | 8487, 8502 |  | Zenith | 8732784 |
| 8504 | 36900.37000.37200.38300.39500.41300.42500.112900.1754800 | Internal Plaster | 14d | 2027-04-28 | 2027-05-11 | 8488, 8502, 8503FF+5d |  | Zenith | 8732794 |
| 8505 | 36900.37000.37200.38300.39500.41300.42500.112900.1754900 | IPS flooring work | 10d | 2027-05-12 | 2027-05-21 | 8489, 8504 |  | Zenith | 8732804 |
| 8506 | 36900.37000.37200.38300.39500.41300.42500.112900.1755000 | Toilet dado work | 10d | 2027-05-12 | 2027-05-21 | 8490, 8503, 8504 |  | Zenith | 8732814 |
| 8507 | 36900.37000.37200.38300.39500.41300.42500.112900.1755100 | Toilet flooring work | 7d | 2027-05-22 | 2027-05-28 | 8491, 8506 |  | Zenith | 8732824 |
| 8508 | 36900.37000.37200.38300.39500.41300.42500.112900.1755200 | False Cieling panel fixing | 10d | 2027-05-29 | 2027-06-07 | 8492, 8507 |  | Zenith | 8732834 |
| 8509 | 36900.37000.37200.38300.39500.41300.42500.112900.1755300 | Living dinning flooring | 14d | 2027-05-29 | 2027-06-11 | 8493, 8507 |  | Zenith | 8732844 |
| 8510 | 36900.37000.37200.38300.39500.41300.42500.112900.1755400 | Putty primer coat | 12d | 2027-06-12 | 2027-06-23 | 8494, 8509 |  | Zenith | 8732854 |
| 8511 | 36900.37000.37200.38300.39500.41300.42500.112900.1755500 | Aluminium door-window fixing | 15d | 2027-06-26 | 2027-07-10 | 8495, 8505, 8509 |  | Zenith | 8732864 |
| 8512 | 36900.37000.37200.38300.39500.41300.42500.112900.1755600 | Door shutter fixing (Pre Hung) | 8d | 2027-06-24 | 2027-07-01 | 8496, 8510 |  | Zenith | 8732874 |
| 8513 | 36900.37000.37200.38300.39500.41300.42500.112900.1755700 | Electrical wiring work | 12d | 2027-07-02 | 2027-07-13 | 8497, 8512 |  | Zenith | 8732884 |
| 8514 | 36900.37000.37200.38300.39500.41300.42500.112900.1755800 | Painting 1st coat | 15d | 2027-07-31 | 2027-08-14 | 8498, 8513 |  | Zenith | 8732894 |
| 8515 | 36900.37000.37200.38300.39500.41300.42500.113000 | **20th floor roof** | 157.75d | 2027-03-25 | 2027-08-29 |  | start no earlier than 2027-03-25 | Zenith | 8651484 |
| 8516 | 36900.37000.37200.38300.39500.41300.42500.113000.1755900 | Block Work | 10d | 2027-03-25 | 2027-04-04 | 8192, 8500 |  | Zenith | 8732904 |
| 8517 | 36900.37000.37200.38300.39500.41300.42500.113000.1756000 | Fire sprinkler pipe fixing | 6d | 2027-04-04 | 2027-04-10 | 8501, 8516 |  | Zenith | 8732914 |
| 8518 | 36900.37000.37200.38300.39500.41300.42500.113000.1756100 | Internal Plumbing Works | 10d | 2027-04-04 | 2027-04-14 | 8502, 8516 |  | Zenith | 8732924 |
| 8519 | 36900.37000.37200.38300.39500.41300.42500.113000.1756200 | Waterproofing | 14d | 2027-05-07 | 2027-05-20 | 8503, 8518 |  | Zenith | 8732934 |
| 8520 | 36900.37000.37200.38300.39500.41300.42500.113000.1756300 | Internal Plaster | 14d | 2027-05-12 | 2027-05-25 | 8504, 8518, 8519FF+5d |  | Zenith | 8732944 |
| 8521 | 36900.37000.37200.38300.39500.41300.42500.113000.1756400 | IPS flooring work | 10d | 2027-05-26 | 2027-06-04 | 8505, 8520 |  | Zenith | 8732954 |
| 8522 | 36900.37000.37200.38300.39500.41300.42500.113000.1756500 | Toilet dado work | 10d | 2027-05-26 | 2027-06-04 | 8506, 8519, 8520 |  | Zenith | 8732964 |
| 8523 | 36900.37000.37200.38300.39500.41300.42500.113000.1756600 | Toilet flooring work | 7d | 2027-06-05 | 2027-06-11 | 8507, 8522 |  | Zenith | 8732974 |
| 8524 | 36900.37000.37200.38300.39500.41300.42500.113000.1756700 | False Cieling panel fixing | 10d | 2027-06-12 | 2027-06-21 | 8508, 8523 |  | Zenith | 8732984 |
| 8525 | 36900.37000.37200.38300.39500.41300.42500.113000.1756800 | Living dinning flooring | 13d | 2027-06-12 | 2027-06-24 | 8509, 8523 |  | Zenith | 8732994 |
| 8526 | 36900.37000.37200.38300.39500.41300.42500.113000.1756900 | Putty primer coat | 12d | 2027-06-25 | 2027-07-06 | 8510, 8525 |  | Zenith | 8733004 |
| 8527 | 36900.37000.37200.38300.39500.41300.42500.113000.1757000 | Aluminium door-window fixing | 15d | 2027-07-11 | 2027-07-25 | 8511, 8521, 8525 |  | Zenith | 8733014 |
| 8528 | 36900.37000.37200.38300.39500.41300.42500.113000.1757100 | Door shutter fixing (Pre Hung) | 8d | 2027-07-07 | 2027-07-14 | 8512, 8526 |  | Zenith | 8733024 |
| 8529 | 36900.37000.37200.38300.39500.41300.42500.113000.1757200 | Electrical wiring work | 12d | 2027-07-15 | 2027-07-26 | 8513, 8528 |  | Zenith | 8733034 |
| 8530 | 36900.37000.37200.38300.39500.41300.42500.113000.1757300 | Painting 1st coat | 15d | 2027-08-15 | 2027-08-29 | 8514, 8529 |  | Zenith | 8733044 |

| ID | WBS | Task | Duration | Start | Finish | Predecessors | Constraint | Calendar | Unique_Task_ID |
| --- | --- | --- | --- | --- | --- | --- | --- | --- | --- |
| 8531 | 36900.37000.37200.38300.39500.41300.42500.113100 | **21st floor roof** | 160.75d | 2027-04-06 | 2027-09-13 |  | start no earlier than 2027-04-06 | Zenith | 8651494 |
| 8532 | 36900.37000.37200.38300.39500.41300.42500.113100.1757400 | Block Work | 10d | 2027-04-06 | 2027-04-16 | 8193, 8516 |  | Zenith | 8733054 |
| 8533 | 36900.37000.37200.38300.39500.41300.42500.113100.1757500 | Fire sprinkler pipe fixing | 6d | 2027-04-16 | 2027-04-22 | 8517, 8532 |  | Zenith | 8733064 |
| 8534 | 36900.37000.37200.38300.39500.41300.42500.113100.1757600 | Internal Plumbing Works | 10d | 2027-04-16 | 2027-04-26 | 8518, 8532 |  | Zenith | 8733074 |
| 8535 | 36900.37000.37200.38300.39500.41300.42500.113100.1757700 | Waterproofing | 14d | 2027-05-21 | 2027-06-03 | 8519, 8534 |  | Zenith | 8733084 |
| 8536 | 36900.37000.37200.38300.39500.41300.42500.113100.1757800 | Internal Plaster | 14d | 2027-05-26 | 2027-06-08 | 8520, 8534, 8535FF+5d |  | Zenith | 8733094 |
| 8537 | 36900.37000.37200.38300.39500.41300.42500.113100.1757900 | IPS flooring work | 10d | 2027-06-09 | 2027-06-18 | 8521, 8536 |  | Zenith | 8733104 |
| 8538 | 36900.37000.37200.38300.39500.41300.42500.113100.1758000 | Toilet dado work | 10d | 2027-06-09 | 2027-06-18 | 8522, 8535, 8536 |  | Zenith | 8733114 |
| 8539 | 36900.37000.37200.38300.39500.41300.42500.113100.1758100 | Toilet flooring work | 7d | 2027-06-19 | 2027-06-25 | 8523, 8538 |  | Zenith | 8733124 |
| 8540 | 36900.37000.37200.38300.39500.41300.42500.113100.1758200 | False Cieling panel fixing | 10d | 2027-06-26 | 2027-07-05 | 8524, 8539 |  | Zenith | 8733134 |
| 8541 | 36900.37000.37200.38300.39500.41300.42500.113100.1758300 | Living dinning flooring | 13d | 2027-06-26 | 2027-07-08 | 8525, 8539 |  | Zenith | 8733144 |
| 8542 | 36900.37000.37200.38300.39500.41300.42500.113100.1758400 | Putty primer coat | 12d | 2027-07-09 | 2027-07-20 | 8526, 8541 |  | Zenith | 8733154 |
| 8543 | 36900.37000.37200.38300.39500.41300.42500.113100.1758500 | Aluminium door-window fixing | 15d | 2027-07-26 | 2027-08-09 | 8527, 8537, 8541 |  | Zenith | 8733164 |
| 8544 | 36900.37000.37200.38300.39500.41300.42500.113100.1758600 | Door shutter fixing (Pre Hung) | 8d | 2027-07-21 | 2027-07-28 | 8528, 8542 |  | Zenith | 8733174 |
| 8545 | 36900.37000.37200.38300.39500.41300.42500.113100.1758700 | Electrical wiring work | 12d | 2027-07-29 | 2027-08-09 | 8529, 8544 |  | Zenith | 8733184 |
| 8546 | 36900.37000.37200.38300.39500.41300.42500.113100.1758800 | Painting 1st coat | 15d | 2027-08-30 | 2027-09-13 | 8530, 8545 |  | Zenith | 8733194 |
| 8547 | 36900.37000.37200.38300.39500.41300.42500.113200 | **22nd floor roof** | 163.75d | 2027-04-18 | 2027-09-28 |  | start no earlier than 2027-04-18 | Zenith | 8651504 |
| 8548 | 36900.37000.37200.38300.39500.41300.42500.113200.1758900 | Block Work | 10d | 2027-04-18 | 2027-04-28 | 8194, 8532 |  | Zenith | 8733204 |
| 8549 | 36900.37000.37200.38300.39500.41300.42500.113200.1759000 | Fire sprinkler pipe fixing | 6d | 2027-04-28 | 2027-05-04 | 8533, 8548 |  | Zenith | 8733214 |
| 8550 | 36900.37000.37200.38300.39500.41300.42500.113200.1759100 | Internal Plumbing Works | 10d | 2027-04-28 | 2027-05-08 | 8534, 8548 |  | Zenith | 8733224 |
| 8551 | 36900.37000.37200.38300.39500.41300.42500.113200.1759200 | Waterproofing | 14d | 2027-06-04 | 2027-06-17 | 8535, 8550 |  | Zenith | 8733234 |
| 8552 | 36900.37000.37200.38300.39500.41300.42500.113200.1759300 | Internal Plaster | 14d | 2027-06-09 | 2027-06-22 | 8536, 8550, 8551FF+5d |  | Zenith | 8733244 |
| 8553 | 36900.37000.37200.38300.39500.41300.42500.113200.1759400 | IPS flooring work | 10d | 2027-06-23 | 2027-07-02 | 8537, 8552 |  | Zenith | 8733254 |
| 8554 | 36900.37000.37200.38300.39500.41300.42500.113200.1759500 | Toilet dado work | 10d | 2027-06-23 | 2027-07-02 | 8538, 8551, 8552 |  | Zenith | 8733264 |
| 8555 | 36900.37000.37200.38300.39500.41300.42500.113200.1759600 | Toilet flooring work | 7d | 2027-07-03 | 2027-07-09 | 8539, 8554 |  | Zenith | 8733274 |
| 8556 | 36900.37000.37200.38300.39500.41300.42500.113200.1759700 | False Cieling panel fixing | 10d | 2027-07-10 | 2027-07-19 | 8540, 8555 |  | Zenith | 8733284 |
| 8557 | 36900.37000.37200.38300.39500.41300.42500.113200.1759800 | Living dinning flooring | 13d | 2027-07-10 | 2027-07-22 | 8541, 8555 |  | Zenith | 8733294 |
| 8558 | 36900.37000.37200.38300.39500.41300.42500.113200.1759900 | Putty primer coat | 12d | 2027-07-23 | 2027-08-03 | 8542, 8557 |  | Zenith | 8733304 |
| 8559 | 36900.37000.37200.38300.39500.41300.42500.113200.1760000 | Aluminium door-window fixing | 15d | 2027-08-10 | 2027-08-24 | 8543, 8553, 8557 |  | Zenith | 8733314 |
| 8560 | 36900.37000.37200.38300.39500.41300.42500.113200.1760100 | Door shutter fixing (Pre Hung) | 8d | 2027-08-04 | 2027-08-11 | 8544, 8558 |  | Zenith | 8733324 |
| 8561 | 36900.37000.37200.38300.39500.41300.42500.113200.1760200 | Electrical wiring work | 12d | 2027-08-12 | 2027-08-23 | 8545, 8560 |  | Zenith | 8733334 |
| 8562 | 36900.37000.37200.38300.39500.41300.42500.113200.1760300 | Painting 1st coat | 15d | 2027-09-14 | 2027-09-28 | 8546, 8561 |  | Zenith | 8733344 |

| ID | WBS | Task | Duration | Start | Finish | Predecessors | Constraint | Calendar | Unique_Task_ID |
| --- | --- | --- | --- | --- | --- | --- | --- | --- | --- |
| 8563 | 36900.37000.37200.38300.39500.41300.42500.113300 | **23rd floor roof** | 166.75d | 2027-04-30 | 2027-10-13 |  | start no earlier than 2027-04-30 | Zenith | 8651514 |
| 8564 | 36900.37000.37200.38300.39500.41300.42500.113300.1760400 | Block Work | 10d | 2027-04-30 | 2027-05-10 | 8195, 8548 |  | Zenith | 8733354 |
| 8565 | 36900.37000.37200.38300.39500.41300.42500.113300.1760500 | Fire sprinkler pipe fixing | 6d | 2027-05-10 | 2027-05-16 | 8549, 8564 |  | Zenith | 8733364 |
| 8566 | 36900.37000.37200.38300.39500.41300.42500.113300.1760600 | Internal Plumbing Works | 10d | 2027-05-10 | 2027-05-20 | 8550, 8564 |  | Zenith | 8733374 |
| 8567 | 36900.37000.37200.38300.39500.41300.42500.113300.1760700 | Waterproofing | 14d | 2027-06-18 | 2027-07-01 | 8551, 8566 |  | Zenith | 8733384 |
| 8568 | 36900.37000.37200.38300.39500.41300.42500.113300.1760800 | Internal Plaster | 14d | 2027-06-23 | 2027-07-06 | 8552, 8566, 8567FF+5d |  | Zenith | 8733394 |
| 8569 | 36900.37000.37200.38300.39500.41300.42500.113300.1760900 | IPS flooring work | 10d | 2027-07-07 | 2027-07-16 | 8553, 8568 |  | Zenith | 8733404 |
| 8570 | 36900.37000.37200.38300.39500.41300.42500.113300.1761000 | Toilet dado work | 10d | 2027-07-07 | 2027-07-16 | 8554, 8567, 8568 |  | Zenith | 8733414 |
| 8571 | 36900.37000.37200.38300.39500.41300.42500.113300.1761100 | Toilet flooring work | 7d | 2027-07-17 | 2027-07-23 | 8555, 8570 |  | Zenith | 8733424 |
| 8572 | 36900.37000.37200.38300.39500.41300.42500.113300.1761200 | False Cieling panel fixing | 10d | 2027-07-24 | 2027-08-02 | 8556, 8571 |  | Zenith | 8733434 |
| 8573 | 36900.37000.37200.38300.39500.41300.42500.113300.1761300 | Living dinning flooring | 13d | 2027-07-24 | 2027-08-05 | 8557, 8571 |  | Zenith | 8733444 |
| 8574 | 36900.37000.37200.38300.39500.41300.42500.113300.1761400 | Putty primer coat | 12d | 2027-08-06 | 2027-08-17 | 8558, 8573 |  | Zenith | 8733454 |
| 8575 | 36900.37000.37200.38300.39500.41300.42500.113300.1761500 | Aluminium door-window fixing | 15d | 2027-08-25 | 2027-09-08 | 8559, 8569, 8573 |  | Zenith | 8733464 |
| 8576 | 36900.37000.37200.38300.39500.41300.42500.113300.1761600 | Door shutter fixing (Pre Hung) | 8d | 2027-08-18 | 2027-08-25 | 8560, 8574 |  | Zenith | 8733474 |
| 8577 | 36900.37000.37200.38300.39500.41300.42500.113300.1761700 | Electrical wiring work | 12d | 2027-08-26 | 2027-09-06 | 8561, 8576 |  | Zenith | 8733484 |
| 8578 | 36900.37000.37200.38300.39500.41300.42500.113300.1761800 | Painting 1st coat | 15d | 2027-09-29 | 2027-10-13 | 8562, 8577 |  | Zenith | 8733494 |
| 8579 | 36900.37000.37200.38300.39500.41300.42500.113400 | **24th floor roof** | 169.75d | 2027-05-12 | 2027-10-28 |  | start no earlier than 2027-05-12 | Zenith | 8651524 |
| 8580 | 36900.37000.37200.38300.39500.41300.42500.113400.1761900 | Block Work | 10d | 2027-05-12 | 2027-05-22 | 8196, 8564 |  | Zenith | 8733504 |
| 8581 | 36900.37000.37200.38300.39500.41300.42500.113400.1762000 | Fire sprinkler pipe fixing | 6d | 2027-05-22 | 2027-05-28 | 8565, 8580 |  | Zenith | 8733514 |
| 8582 | 36900.37000.37200.38300.39500.41300.42500.113400.1762100 | Internal Plumbing Works | 10d | 2027-05-22 | 2027-06-01 | 8566, 8580 |  | Zenith | 8733524 |
| 8583 | 36900.37000.37200.38300.39500.41300.42500.113400.1762200 | Waterproofing | 14d | 2027-07-02 | 2027-07-15 | 8567, 8582 |  | Zenith | 8733534 |
| 8584 | 36900.37000.37200.38300.39500.41300.42500.113400.1762300 | Internal Plaster | 14d | 2027-07-07 | 2027-07-20 | 8568, 8582, 8583FF+5d |  | Zenith | 8733544 |
| 8585 | 36900.37000.37200.38300.39500.41300.42500.113400.1762400 | IPS flooring work | 10d | 2027-07-21 | 2027-07-30 | 8569, 8584 |  | Zenith | 8733554 |
| 8586 | 36900.37000.37200.38300.39500.41300.42500.113400.1762500 | Toilet dado work | 10d | 2027-07-21 | 2027-07-30 | 8570, 8583, 8584 |  | Zenith | 8733564 |
| 8587 | 36900.37000.37200.38300.39500.41300.42500.113400.1762600 | Toilet flooring work | 7d | 2027-07-31 | 2027-08-06 | 8571, 8586 |  | Zenith | 8733574 |
| 8588 | 36900.37000.37200.38300.39500.41300.42500.113400.1762700 | False Cieling panel fixing | 10d | 2027-08-07 | 2027-08-16 | 8572, 8587 |  | Zenith | 8733584 |
| 8589 | 36900.37000.37200.38300.39500.41300.42500.113400.1762800 | Living dinning flooring | 13d | 2027-08-07 | 2027-08-19 | 8573, 8587 |  | Zenith | 8733594 |
| 8590 | 36900.37000.37200.38300.39500.41300.42500.113400.1762900 | Putty primer coat | 12d | 2027-08-20 | 2027-08-31 | 8574, 8589 |  | Zenith | 8733604 |
| 8591 | 36900.37000.37200.38300.39500.41300.42500.113400.1763000 | Aluminium door-window fixing | 15d | 2027-09-09 | 2027-09-23 | 8575, 8585, 8589 |  | Zenith | 8733614 |
| 8592 | 36900.37000.37200.38300.39500.41300.42500.113400.1763100 | Door shutter fixing (Pre Hung) | 8d | 2027-09-01 | 2027-09-08 | 8576, 8590 |  | Zenith | 8733624 |
| 8593 | 36900.37000.37200.38300.39500.41300.42500.113400.1763200 | Electrical wiring work | 12d | 2027-09-09 | 2027-09-20 | 8577, 8592 |  | Zenith | 8733634 |
| 8594 | 36900.37000.37200.38300.39500.41300.42500.113400.1763300 | Painting 1st coat | 15d | 2027-10-14 | 2027-10-28 | 8578, 8593 |  | Zenith | 8733644 |

| ID | WBS | Task | Duration | Start | Finish | Predecessors | Constraint | Calendar | Unique_Task_ID |
| --- | --- | --- | --- | --- | --- | --- | --- | --- | --- |
| 8595 | 36900.37000.37200.38300.39500.41300.42500.113500 | **25th floor roof** | 172.75d | 2027-05-24 | 2027-12-27 |  | start no earlier than 2027-05-24 | Zenith | 8651534 |
| 8596 | 36900.37000.37200.38300.39500.41300.42500.113500.1763400 | Block Work | 10d | 2027-05-24 | 2027-06-03 | 8197, 8580 |  | Zenith | 8733654 |
| 8597 | 36900.37000.37200.38300.39500.41300.42500.113500.1763500 | Fire sprinkler pipe fixing | 6d | 2027-06-03 | 2027-06-09 | 8581, 8596 |  | Zenith | 8733664 |
| 8598 | 36900.37000.37200.38300.39500.41300.42500.113500.1763600 | Internal Plumbing Works | 10d | 2027-06-03 | 2027-06-13 | 8582, 8596 |  | Zenith | 8733674 |
| 8599 | 36900.37000.37200.38300.39500.41300.42500.113500.1763700 | Waterproofing | 14d | 2027-07-16 | 2027-07-29 | 8583, 8598 |  | Zenith | 8733684 |
| 8600 | 36900.37000.37200.38300.39500.41300.42500.113500.1763800 | Internal Plaster | 14d | 2027-07-21 | 2027-08-03 | 8584, 8598, 8599FF+5d |  | Zenith | 8733694 |
| 8601 | 36900.37000.37200.38300.39500.41300.42500.113500.1763900 | IPS flooring work | 10d | 2027-08-04 | 2027-08-13 | 8585, 8600 |  | Zenith | 8733704 |
| 8602 | 36900.37000.37200.38300.39500.41300.42500.113500.1764000 | Toilet dado work | 10d | 2027-08-04 | 2027-08-13 | 8586, 8599, 8600 |  | Zenith | 8733714 |
| 8603 | 36900.37000.37200.38300.39500.41300.42500.113500.1764100 | Toilet flooring work | 7d | 2027-08-14 | 2027-08-20 | 8587, 8602 |  | Zenith | 8733724 |
| 8604 | 36900.37000.37200.38300.39500.41300.42500.113500.1764200 | False Cieling panel fixing | 10d | 2027-08-21 | 2027-08-30 | 8588, 8603 |  | Zenith | 8733734 |
| 8605 | 36900.37000.37200.38300.39500.41300.42500.113500.1764300 | Living dinning flooring | 13d | 2027-08-21 | 2027-09-02 | 8589, 8603 |  | Zenith | 8733744 |
| 8606 | 36900.37000.37200.38300.39500.41300.42500.113500.1764400 | Putty primer coat | 12d | 2027-09-03 | 2027-09-14 | 8590, 8605 |  | Zenith | 8733754 |
| 8607 | 36900.37000.37200.38300.39500.41300.42500.113500.1764500 | Aluminium door-window fixing | 15d | 2027-09-24 | 2027-10-08 | 8591, 8601, 8605 |  | Zenith | 8733764 |
| 8608 | 36900.37000.37200.38300.39500.41300.42500.113500.1764600 | Door shutter fixing (Pre Hung) | 8d | 2027-09-15 | 2027-09-22 | 8592, 8606 |  | Zenith | 8733774 |
| 8609 | 36900.37000.37200.38300.39500.41300.42500.113500.1764700 | Electrical wiring work | 12d | 2027-09-23 | 2027-10-04 | 8593, 8608 |  | Zenith | 8733784 |
| 8610 | 36900.37000.37200.38300.39500.41300.42500.113500.1764800 | Painting 1st coat | 15d | 2027-10-29 | 2027-12-27 | 8594, 8609 |  | Zenith | 8733794 |
| 8611 | 36900.37000.37200.38300.39500.41300.42500.113600 | **26th floor roof** | 175.75d | 2027-06-05 | 2028-01-11 |  | start no earlier than 2027-06-05 | Zenith | 8651544 |
| 8612 | 36900.37000.37200.38300.39500.41300.42500.113600.1764900 | Block Work | 10d | 2027-06-05 | 2027-06-15 | 8198, 8596 |  | Zenith | 8733804 |
| 8613 | 36900.37000.37200.38300.39500.41300.42500.113600.1765000 | Fire sprinkler pipe fixing | 6d | 2027-06-15 | 2027-06-21 | 8597, 8612 |  | Zenith | 8733814 |
| 8614 | 36900.37000.37200.38300.39500.41300.42500.113600.1765100 | Internal Plumbing Works | 10d | 2027-06-15 | 2027-06-25 | 8598, 8612 |  | Zenith | 8733824 |
| 8615 | 36900.37000.37200.38300.39500.41300.42500.113600.1765200 | Waterproofing | 14d | 2027-07-30 | 2027-08-12 | 8599, 8614 |  | Zenith | 8733834 |
| 8616 | 36900.37000.37200.38300.39500.41300.42500.113600.1765300 | Internal Plaster | 14d | 2027-08-04 | 2027-08-17 | 8600, 8614, 8615FF+5d |  | Zenith | 8733844 |
| 8617 | 36900.37000.37200.38300.39500.41300.42500.113600.1765400 | IPS flooring work | 10d | 2027-08-18 | 2027-08-27 | 8601, 8616 |  | Zenith | 8733854 |
| 8618 | 36900.37000.37200.38300.39500.41300.42500.113600.1765500 | Toilet dado work | 10d | 2027-08-18 | 2027-08-27 | 8602, 8615, 8616 |  | Zenith | 8733864 |
| 8619 | 36900.37000.37200.38300.39500.41300.42500.113600.1765600 | Toilet flooring work | 7d | 2027-08-28 | 2027-09-03 | 8603, 8618 |  | Zenith | 8733874 |
| 8620 | 36900.37000.37200.38300.39500.41300.42500.113600.1765700 | False Cieling panel fixing | 10d | 2027-09-04 | 2027-09-13 | 8604, 8619 |  | Zenith | 8733884 |
| 8621 | 36900.37000.37200.38300.39500.41300.42500.113600.1765800 | Living dinning flooring | 13d | 2027-09-04 | 2027-09-16 | 8605, 8619 |  | Zenith | 8733894 |
| 8622 | 36900.37000.37200.38300.39500.41300.42500.113600.1765900 | Putty primer coat | 12d | 2027-09-17 | 2027-09-28 | 8606, 8621 |  | Zenith | 8733904 |
| 8623 | 36900.37000.37200.38300.39500.41300.42500.113600.1766000 | Aluminium door-window fixing | 15d | 2027-10-09 | 2027-10-23 | 8607, 8617, 8621 |  | Zenith | 8733914 |
| 8624 | 36900.37000.37200.38300.39500.41300.42500.113600.1766100 | Door shutter fixing (Pre Hung) | 8d | 2027-09-29 | 2027-10-06 | 8608, 8622 |  | Zenith | 8733924 |
| 8625 | 36900.37000.37200.38300.39500.41300.42500.113600.1766200 | Electrical wiring work | 12d | 2027-10-07 | 2027-10-18 | 8609, 8624 |  | Zenith | 8733934 |
| 8626 | 36900.37000.37200.38300.39500.41300.42500.113600.1766300 | Painting 1st coat | 15d | 2027-12-28 | 2028-01-11 | 8610, 8625 |  | Zenith | 8733944 |

| ID | WBS | Task | Duration | Start | Finish | Predecessors | Constraint | Calendar | Unique_Task_ID |
| --- | --- | --- | --- | --- | --- | --- | --- | --- | --- |
| 8627 | 36900.37000.37200.38300.39500.41300.42500.113700 | **27th floor roof** | 176.75d | 2027-06-19 | 2028-01-26 |  | start no earlier than 2027-06-19 | Zenith | 8651554 |
| 8628 | 36900.37000.37200.38300.39500.41300.42500.113700.1766400 | Block Work | 10d | 2027-06-19 | 2027-06-29 | 8199, 8612 |  | Zenith | 8733954 |
| 8629 | 36900.37000.37200.38300.39500.41300.42500.113700.1766500 | Fire sprinkler pipe fixing | 6d | 2027-06-29 | 2027-07-05 | 8613, 8628 |  | Zenith | 8733964 |
| 8630 | 36900.37000.37200.38300.39500.41300.42500.113700.1766600 | Internal Plumbing Works | 10d | 2027-06-29 | 2027-07-09 | 8614, 8628 |  | Zenith | 8733974 |
| 8631 | 36900.37000.37200.38300.39500.41300.42500.113700.1766700 | Waterproofing | 14d | 2027-08-13 | 2027-08-26 | 8615, 8630 |  | Zenith | 8733984 |
| 8632 | 36900.37000.37200.38300.39500.41300.42500.113700.1766800 | Internal Plaster | 14d | 2027-08-18 | 2027-08-31 | 8616, 8630, 8631FF+5d |  | Zenith | 8733994 |
| 8633 | 36900.37000.37200.38300.39500.41300.42500.113700.1766900 | IPS flooring work | 10d | 2027-09-01 | 2027-09-10 | 8617, 8632 |  | Zenith | 8734004 |
| 8634 | 36900.37000.37200.38300.39500.41300.42500.113700.1767000 | Toilet dado work | 10d | 2027-09-01 | 2027-09-10 | 8618, 8631, 8632 |  | Zenith | 8734014 |
| 8635 | 36900.37000.37200.38300.39500.41300.42500.113700.1767100 | Toilet flooring work | 7d | 2027-09-11 | 2027-09-17 | 8619, 8634 |  | Zenith | 8734024 |
| 8636 | 36900.37000.37200.38300.39500.41300.42500.113700.1767200 | False Cieling panel fixing | 10d | 2027-09-18 | 2027-09-27 | 8620, 8635 |  | Zenith | 8734034 |
| 8637 | 36900.37000.37200.38300.39500.41300.42500.113700.1767300 | Living dinning flooring | 13d | 2027-09-18 | 2027-09-30 | 8621, 8635 |  | Zenith | 8734044 |
| 8638 | 36900.37000.37200.38300.39500.41300.42500.113700.1767400 | Putty primer coat | 12d | 2027-10-01 | 2027-10-12 | 8622, 8637 |  | Zenith | 8734054 |
| 8639 | 36900.37000.37200.38300.39500.41300.42500.113700.1767500 | Aluminium door-window fixing | 15d | 2027-10-24 | 2027-12-22 | 8623, 8633, 8637 |  | Zenith | 8734064 |
| 8640 | 36900.37000.37200.38300.39500.41300.42500.113700.1767600 | Door shutter fixing (Pre Hung) | 8d | 2027-10-13 | 2027-10-20 | 8624, 8638 |  | Zenith | 8734074 |
| 8641 | 36900.37000.37200.38300.39500.41300.42500.113700.1767700 | Electrical wiring work | 12d | 2027-10-21 | 2027-12-16 | 8625, 8640 |  | Zenith | 8734084 |
| 8642 | 36900.37000.37200.38300.39500.41300.42500.113700.1767800 | Painting 1st coat | 15d | 2028-01-12 | 2028-01-26 | 8626, 8641 |  | Zenith | 8734094 |
| 8643 | 36900.37000.37200.38300.39500.41300.42500.113800 | **28th floor roof** | 177.75d | 2027-07-03 | 2028-02-10 |  | start no earlier than 2027-07-03 | Zenith | 8651564 |
| 8644 | 36900.37000.37200.38300.39500.41300.42500.113800.1767900 | Block Work | 10d | 2027-07-03 | 2027-07-13 | 8200, 8628 |  | Zenith | 8734104 |
| 8645 | 36900.37000.37200.38300.39500.41300.42500.113800.1768000 | Fire sprinkler pipe fixing | 6d | 2027-07-13 | 2027-07-19 | 8629, 8644 |  | Zenith | 8734114 |
| 8646 | 36900.37000.37200.38300.39500.41300.42500.113800.1768100 | Internal Plumbing Works | 10d | 2027-07-13 | 2027-07-23 | 8630, 8644 |  | Zenith | 8734124 |
| 8647 | 36900.37000.37200.38300.39500.41300.42500.113800.1768200 | Waterproofing | 14d | 2027-08-27 | 2027-09-09 | 8631, 8646 |  | Zenith | 8734134 |
| 8648 | 36900.37000.37200.38300.39500.41300.42500.113800.1768300 | Internal Plaster | 14d | 2027-09-01 | 2027-09-14 | 8632, 8646, 8647FF+5d |  | Zenith | 8734144 |
| 8649 | 36900.37000.37200.38300.39500.41300.42500.113800.1768400 | IPS flooring work | 10d | 2027-09-15 | 2027-09-24 | 8633, 8648 |  | Zenith | 8734154 |
| 8650 | 36900.37000.37200.38300.39500.41300.42500.113800.1768500 | Toilet dado work | 10d | 2027-09-15 | 2027-09-24 | 8634, 8647, 8648 |  | Zenith | 8734164 |
| 8651 | 36900.37000.37200.38300.39500.41300.42500.113800.1768600 | Toilet flooring work | 7d | 2027-09-25 | 2027-10-01 | 8635, 8650 |  | Zenith | 8734174 |
| 8652 | 36900.37000.37200.38300.39500.41300.42500.113800.1768700 | False Cieling panel fixing | 10d | 2027-10-02 | 2027-10-11 | 8636, 8651 |  | Zenith | 8734184 |
| 8653 | 36900.37000.37200.38300.39500.41300.42500.113800.1768800 | Living dinning flooring | 13d | 2027-10-02 | 2027-10-14 | 8637, 8651 |  | Zenith | 8734194 |
| 8654 | 36900.37000.37200.38300.39500.41300.42500.113800.1768900 | Putty primer coat | 12d | 2027-10-15 | 2027-10-26 | 8638, 8653 |  | Zenith | 8734204 |
| 8655 | 36900.37000.37200.38300.39500.41300.42500.113800.1769000 | Aluminium door-window fixing | 15d | 2027-12-23 | 2028-01-06 | 8639, 8649, 8653 |  | Zenith | 8734214 |
| 8656 | 36900.37000.37200.38300.39500.41300.42500.113800.1769100 | Door shutter fixing (Pre Hung) | 8d | 2027-10-27 | 2027-12-18 | 8640, 8654 |  | Zenith | 8734224 |
| 8657 | 36900.37000.37200.38300.39500.41300.42500.113800.1769200 | Electrical wiring work | 12d | 2027-12-19 | 2027-12-30 | 8641, 8656 |  | Zenith | 8734234 |
| 8658 | 36900.37000.37200.38300.39500.41300.42500.113800.1769300 | Painting 1st coat | 15d | 2028-01-27 | 2028-02-10 | 8642, 8657 |  | Zenith | 8734244 |

| ID | WBS | Task | Duration | Start | Finish | Predecessors | Constraint | Calendar | Unique_Task_ID |
| --- | --- | --- | --- | --- | --- | --- | --- | --- | --- |
| 8659 | 36900.37000.37200.38300.39500.41300.42500.113900 | **29th floor roof** | 178.75d | 2027-07-17 | 2028-02-25 |  | start no earlier than 2027-07-17 | Zenith | 8651574 |
| 8660 | 36900.37000.37200.38300.39500.41300.42500.113900.1769400 | Block Work | 10d | 2027-07-17 | 2027-07-27 | 8201, 8644 |  | Zenith | 8734254 |
| 8661 | 36900.37000.37200.38300.39500.41300.42500.113900.1769500 | Fire sprinkler pipe fixing | 6d | 2027-07-27 | 2027-08-02 | 8645, 8660 |  | Zenith | 8734264 |
| 8662 | 36900.37000.37200.38300.39500.41300.42500.113900.1769600 | Internal Plumbing Works | 10d | 2027-07-27 | 2027-08-06 | 8646, 8660 |  | Zenith | 8734274 |
| 8663 | 36900.37000.37200.38300.39500.41300.42500.113900.1769700 | Waterproofing | 14d | 2027-09-10 | 2027-09-23 | 8647, 8662 |  | Zenith | 8734284 |
| 8664 | 36900.37000.37200.38300.39500.41300.42500.113900.1769800 | Internal Plaster | 14d | 2027-09-15 | 2027-09-28 | 8648, 8662, 8663FF+5d |  | Zenith | 8734294 |
| 8665 | 36900.37000.37200.38300.39500.41300.42500.113900.1769900 | IPS flooring work | 10d | 2027-09-29 | 2027-10-08 | 8649, 8664 |  | Zenith | 8734304 |
| 8666 | 36900.37000.37200.38300.39500.41300.42500.113900.1770000 | Toilet dado work | 10d | 2027-09-29 | 2027-10-08 | 8650, 8663, 8664 |  | Zenith | 8734314 |
| 8667 | 36900.37000.37200.38300.39500.41300.42500.113900.1770100 | Toilet flooring work | 7d | 2027-10-09 | 2027-10-15 | 8651, 8666 |  | Zenith | 8734324 |
| 8668 | 36900.37000.37200.38300.39500.41300.42500.113900.1770200 | False Cieling panel fixing | 10d | 2027-10-16 | 2027-10-25 | 8652, 8667 |  | Zenith | 8734334 |
| 8669 | 36900.37000.37200.38300.39500.41300.42500.113900.1770300 | Living dinning flooring | 13d | 2027-10-16 | 2027-10-28 | 8653, 8667 |  | Zenith | 8734344 |
| 8670 | 36900.37000.37200.38300.39500.41300.42500.113900.1770400 | Putty primer coat | 12d | 2027-10-29 | 2027-12-24 | 8654, 8669 |  | Zenith | 8734354 |
| 8671 | 36900.37000.37200.38300.39500.41300.42500.113900.1770500 | Aluminium door-window fixing | 15d | 2028-01-07 | 2028-01-21 | 8655, 8665, 8669 |  | Zenith | 8734364 |
| 8672 | 36900.37000.37200.38300.39500.41300.42500.113900.1770600 | Door shutter fixing (Pre Hung) | 8d | 2027-12-25 | 2028-01-01 | 8656, 8670 |  | Zenith | 8734374 |
| 8673 | 36900.37000.37200.38300.39500.41300.42500.113900.1770700 | Electrical wiring work | 12d | 2028-01-02 | 2028-01-13 | 8657, 8672 |  | Zenith | 8734384 |
| 8674 | 36900.37000.37200.38300.39500.41300.42500.113900.1770800 | Painting 1st coat | 15d | 2028-02-11 | 2028-02-25 | 8658, 8673 |  | Zenith | 8734394 |
| 8675 | 36900.37000.37200.38300.39500.41300.42500.114000 | **30th floor roof** | 179.75d | 2027-07-31 | 2028-03-11 |  | start no earlier than 2027-07-31 | Zenith | 8651584 |
| 8676 | 36900.37000.37200.38300.39500.41300.42500.114000.1770900 | Block Work | 10d | 2027-07-31 | 2027-08-10 | 8202, 8660 |  | Zenith | 8734404 |
| 8677 | 36900.37000.37200.38300.39500.41300.42500.114000.1771000 | Fire sprinkler pipe fixing | 6d | 2027-08-10 | 2027-08-16 | 8661, 8676 |  | Zenith | 8734414 |
| 8678 | 36900.37000.37200.38300.39500.41300.42500.114000.1771100 | Internal Plumbing Works | 10d | 2027-08-10 | 2027-08-20 | 8662, 8676 |  | Zenith | 8734424 |
| 8679 | 36900.37000.37200.38300.39500.41300.42500.114000.1771200 | Waterproofing | 14d | 2027-09-24 | 2027-10-07 | 8663, 8678 |  | Zenith | 8734434 |
| 8680 | 36900.37000.37200.38300.39500.41300.42500.114000.1771300 | Internal Plaster | 14d | 2027-09-29 | 2027-10-12 | 8664, 8678, 8679FF+5d |  | Zenith | 8734444 |
| 8681 | 36900.37000.37200.38300.39500.41300.42500.114000.1771400 | IPS flooring work | 10d | 2027-10-13 | 2027-10-22 | 8665, 8680 |  | Zenith | 8734454 |
| 8682 | 36900.37000.37200.38300.39500.41300.42500.114000.1771500 | Toilet dado work | 10d | 2027-10-13 | 2027-10-22 | 8666, 8679, 8680 |  | Zenith | 8734464 |
| 8683 | 36900.37000.37200.38300.39500.41300.42500.114000.1771600 | Toilet flooring work | 7d | 2027-10-23 | 2027-10-29 | 8667, 8682 |  | Zenith | 8734474 |
| 8684 | 36900.37000.37200.38300.39500.41300.42500.114000.1771700 | False Cieling panel fixing | 10d | 2027-10-30 | 2027-12-23 | 8668, 8683 |  | Zenith | 8734484 |
| 8685 | 36900.37000.37200.38300.39500.41300.42500.114000.1771800 | Living dinning flooring | 13d | 2027-10-30 | 2027-12-26 | 8669, 8683 |  | Zenith | 8734494 |
| 8686 | 36900.37000.37200.38300.39500.41300.42500.114000.1771900 | Putty primer coat | 12d | 2027-12-27 | 2028-01-07 | 8670, 8685 |  | Zenith | 8734504 |
| 8687 | 36900.37000.37200.38300.39500.41300.42500.114000.1772000 | Aluminium door-window fixing | 15d | 2028-01-22 | 2028-02-05 | 8671, 8681, 8685 |  | Zenith | 8734514 |
| 8688 | 36900.37000.37200.38300.39500.41300.42500.114000.1772100 | Door shutter fixing (Pre Hung) | 8d | 2028-01-08 | 2028-01-15 | 8672, 8686 |  | Zenith | 8734524 |
| 8689 | 36900.37000.37200.38300.39500.41300.42500.114000.1772200 | Electrical wiring work | 12d | 2028-01-16 | 2028-01-27 | 8673, 8688 |  | Zenith | 8734534 |
| 8690 | 36900.37000.37200.38300.39500.41300.42500.114000.1772300 | Painting 1st coat | 15d | 2028-02-26 | 2028-03-11 | 8674, 8689 |  | Zenith | 8734544 |

| ID | WBS | Task | Duration | Start | Finish | Predecessors | Constraint | Calendar | Unique_Task_ID |
| --- | --- | --- | --- | --- | --- | --- | --- | --- | --- |
| 8691 | 36900.37000.37200.38300.39500.41300.42500.114100 | **31st floor roof** | 180.75d | 2027-08-14 | 2028-03-26 |  | start no earlier than 2027-08-14 | Zenith | 8651594 |
| 8692 | 36900.37000.37200.38300.39500.41300.42500.114100.1772400 | Block Work | 10d | 2027-08-14 | 2027-08-24 | 8203, 8676 |  | Zenith | 8734554 |
| 8693 | 36900.37000.37200.38300.39500.41300.42500.114100.1772500 | Fire sprinkler pipe fixing | 6d | 2027-08-24 | 2027-08-30 | 8677, 8692 |  | Zenith | 8734564 |
| 8694 | 36900.37000.37200.38300.39500.41300.42500.114100.1772600 | Internal Plumbing Works | 10d | 2027-08-24 | 2027-09-03 | 8678, 8692 |  | Zenith | 8734574 |
| 8695 | 36900.37000.37200.38300.39500.41300.42500.114100.1772700 | Waterproofing | 14d | 2027-10-08 | 2027-10-21 | 8679, 8694 |  | Zenith | 8734584 |
| 8696 | 36900.37000.37200.38300.39500.41300.42500.114100.1772800 | Internal Plaster | 14d | 2027-10-13 | 2027-10-26 | 8680, 8694, 8695FF+5d |  | Zenith | 8734594 |
| 8697 | 36900.37000.37200.38300.39500.41300.42500.114100.1772900 | IPS flooring work | 10d | 2027-10-27 | 2027-12-20 | 8681, 8696 |  | Zenith | 8734604 |
| 8698 | 36900.37000.37200.38300.39500.41300.42500.114100.1773000 | Toilet dado work | 10d | 2027-10-27 | 2027-12-20 | 8682, 8695, 8696 |  | Zenith | 8734614 |
| 8699 | 36900.37000.37200.38300.39500.41300.42500.114100.1773100 | Toilet flooring work | 7d | 2027-12-21 | 2027-12-27 | 8683, 8698 |  | Zenith | 8734624 |
| 8700 | 36900.37000.37200.38300.39500.41300.42500.114100.1773200 | False Cieling panel fixing | 10d | 2027-12-28 | 2028-01-06 | 8684, 8699 |  | Zenith | 8734634 |
| 8701 | 36900.37000.37200.38300.39500.41300.42500.114100.1773300 | Living dinning flooring | 13d | 2027-12-28 | 2028-01-09 | 8685, 8699 |  | Zenith | 8734644 |
| 8702 | 36900.37000.37200.38300.39500.41300.42500.114100.1773400 | Putty primer coat | 12d | 2028-01-10 | 2028-01-21 | 8686, 8701 |  | Zenith | 8734654 |
| 8703 | 36900.37000.37200.38300.39500.41300.42500.114100.1773500 | Aluminium door-window fixing | 15d | 2028-02-06 | 2028-02-20 | 8687, 8697, 8701 |  | Zenith | 8734664 |
| 8704 | 36900.37000.37200.38300.39500.41300.42500.114100.1773600 | Door shutter fixing (Pre Hung) | 8d | 2028-01-22 | 2028-01-29 | 8688, 8702 |  | Zenith | 8734674 |
| 8705 | 36900.37000.37200.38300.39500.41300.42500.114100.1773700 | Electrical wiring work | 12d | 2028-01-30 | 2028-02-10 | 8689, 8704 |  | Zenith | 8734684 |
| 8706 | 36900.37000.37200.38300.39500.41300.42500.114100.1773800 | Painting 1st coat | 15d | 2028-03-12 | 2028-03-26 | 8690, 8705 |  | Zenith | 8734694 |
| 8707 | 36900.37000.37200.38300.39500.41300.42500.114200 | **32nd floor roof** | 185.75d | 2027-08-24 | 2028-04-10 |  | start no earlier than 2027-08-24 | Zenith | 8651604 |
| 8708 | 36900.37000.37200.38300.39500.41300.42500.114200.1773900 | Block Work | 10d | 2027-08-24 | 2027-09-03 | 8204, 8692 |  | Zenith | 8734704 |
| 8709 | 36900.37000.37200.38300.39500.41300.42500.114200.1774000 | Fire sprinkler pipe fixing | 6d | 2027-09-03 | 2027-09-09 | 8693, 8708 |  | Zenith | 8734714 |
| 8710 | 36900.37000.37200.38300.39500.41300.42500.114200.1774100 | Internal Plumbing Works | 10d | 2027-09-03 | 2027-09-13 | 8694, 8708 |  | Zenith | 8734724 |
| 8711 | 36900.37000.37200.38300.39500.41300.42500.114200.1774200 | Waterproofing | 14d | 2027-10-22 | 2027-12-19 | 8695, 8710 |  | Zenith | 8734734 |
| 8712 | 36900.37000.37200.38300.39500.41300.42500.114200.1774300 | Internal Plaster | 14d | 2027-10-27 | 2027-12-24 | 8696, 8710, 8711FF+5d |  | Zenith | 8734744 |
| 8713 | 36900.37000.37200.38300.39500.41300.42500.114200.1774400 | IPS flooring work | 10d | 2027-12-25 | 2028-01-03 | 8697, 8712 |  | Zenith | 8734754 |
| 8714 | 36900.37000.37200.38300.39500.41300.42500.114200.1774500 | Toilet dado work | 10d | 2027-12-25 | 2028-01-03 | 8698, 8711, 8712 |  | Zenith | 8734764 |
| 8715 | 36900.37000.37200.38300.39500.41300.42500.114200.1774600 | Toilet flooring work | 7d | 2028-01-04 | 2028-01-10 | 8699, 8714 |  | Zenith | 8734774 |
| 8716 | 36900.37000.37200.38300.39500.41300.42500.114200.1774700 | False Cieling panel fixing | 10d | 2028-01-11 | 2028-01-20 | 8700, 8715 |  | Zenith | 8734784 |
| 8717 | 36900.37000.37200.38300.39500.41300.42500.114200.1774800 | Living dinning flooring | 13d | 2028-01-11 | 2028-01-23 | 8701, 8715 |  | Zenith | 8734794 |
| 8718 | 36900.37000.37200.38300.39500.41300.42500.114200.1774900 | Putty primer coat | 12d | 2028-01-24 | 2028-02-04 | 8702, 8717 |  | Zenith | 8734804 |
| 8719 | 36900.37000.37200.38300.39500.41300.42500.114200.1775000 | Aluminium door-window fixing | 15d | 2028-02-21 | 2028-03-06 | 8703, 8713, 8717 |  | Zenith | 8734814 |
| 8720 | 36900.37000.37200.38300.39500.41300.42500.114200.1775100 | Door shutter fixing (Pre Hung) | 8d | 2028-02-05 | 2028-02-12 | 8704, 8718 |  | Zenith | 8734824 |
| 8721 | 36900.37000.37200.38300.39500.41300.42500.114200.1775200 | Electrical wiring work | 12d | 2028-02-13 | 2028-02-24 | 8705, 8720 |  | Zenith | 8734834 |
| 8722 | 36900.37000.37200.38300.39500.41300.42500.114200.1775300 | Painting 1st coat | 15d | 2028-03-27 | 2028-04-10 | 8706, 8721 |  | Zenith | 8734844 |

| ID | WBS | Task | Duration | Start | Finish | Predecessors | Constraint | Calendar | Unique_Task_ID |
| --- | --- | --- | --- | --- | --- | --- | --- | --- | --- |
| 8723 | 36900.37000.37200.38300.39500.41300.42500.114300 | **33rd floor roof** | 190.75d | 2027-09-03 | 2028-04-25 |  | start no earlier than 2027-09-03 | Zenith | 8651614 |
| 8724 | 36900.37000.37200.38300.39500.41300.42500.114300.1775400 | Block Work | 10d | 2027-09-03 | 2027-09-13 | 8205, 8708 |  | Zenith | 8734854 |
| 8725 | 36900.37000.37200.38300.39500.41300.42500.114300.1775500 | Fire sprinkler pipe fixing | 6d | 2027-09-13 | 2027-09-19 | 8709, 8724 |  | Zenith | 8734864 |
| 8726 | 36900.37000.37200.38300.39500.41300.42500.114300.1775600 | Internal Plumbing Works | 10d | 2027-09-13 | 2027-09-23 | 8710, 8724 |  | Zenith | 8734874 |
| 8727 | 36900.37000.37200.38300.39500.41300.42500.114300.1775700 | Waterproofing | 14d | 2027-12-20 | 2028-01-02 | 8711, 8726 |  | Zenith | 8734884 |
| 8728 | 36900.37000.37200.38300.39500.41300.42500.114300.1775800 | Internal Plaster | 14d | 2027-12-25 | 2028-01-07 | 8712, 8726, 8727FF+5d |  | Zenith | 8734894 |
| 8729 | 36900.37000.37200.38300.39500.41300.42500.114300.1775900 | IPS flooring work | 10d | 2028-01-08 | 2028-01-17 | 8713, 8728 |  | Zenith | 8734904 |
| 8730 | 36900.37000.37200.38300.39500.41300.42500.114300.1776000 | Toilet dado work | 10d | 2028-01-08 | 2028-01-17 | 8714, 8727, 8728 |  | Zenith | 8734914 |
| 8731 | 36900.37000.37200.38300.39500.41300.42500.114300.1776100 | Toilet flooring work | 7d | 2028-01-18 | 2028-01-24 | 8715, 8730 |  | Zenith | 8734924 |
| 8732 | 36900.37000.37200.38300.39500.41300.42500.114300.1776200 | False Cieling panel fixing | 10d | 2028-01-25 | 2028-02-03 | 8716, 8731 |  | Zenith | 8734934 |
| 8733 | 36900.37000.37200.38300.39500.41300.42500.114300.1776300 | Living dinning flooring | 13d | 2028-01-25 | 2028-02-06 | 8717, 8731 |  | Zenith | 8734944 |
| 8734 | 36900.37000.37200.38300.39500.41300.42500.114300.1776400 | Putty primer coat | 12d | 2028-02-07 | 2028-02-18 | 8718, 8733 |  | Zenith | 8734954 |
| 8735 | 36900.37000.37200.38300.39500.41300.42500.114300.1776500 | Aluminium door-window fixing | 15d | 2028-03-07 | 2028-03-21 | 8719, 8729, 8733 |  | Zenith | 8734964 |
| 8736 | 36900.37000.37200.38300.39500.41300.42500.114300.1776600 | Door shutter fixing (Pre Hung) | 8d | 2028-02-19 | 2028-02-26 | 8720, 8734 |  | Zenith | 8734974 |
| 8737 | 36900.37000.37200.38300.39500.41300.42500.114300.1776700 | Electrical wiring work | 12d | 2028-02-27 | 2028-03-09 | 8721, 8736 |  | Zenith | 8734984 |
| 8738 | 36900.37000.37200.38300.39500.41300.42500.114300.1776800 | Painting 1st coat | 15d | 2028-04-11 | 2028-04-25 | 8722, 8737 |  | Zenith | 8734994 |
| 8739 | 36900.37000.37200.38300.39500.41300.42500.57800 | **34th Floor** | 240.75d | 2027-09-13 | 2028-06-24 |  | start no earlier than 2027-09-13 | Zenith | 8648344 |
| 8740 | 36900.37000.37200.38300.39500.41300.42500.57800.1776900 | Block Work | 10d | 2027-09-13 | 2027-09-23 | 8206, 8724 |  | Zenith | 8735004 |
| 8741 | 36900.37000.37200.38300.39500.41300.42500.57800.1777000 | Fire sprinkler pipe fixing | 6d | 2027-09-23 | 2027-09-29 | 8725, 8740 |  | Zenith | 8735484 |
| 8742 | 36900.37000.37200.38300.39500.41300.42500.57800.1777100 | Internal Plumbing Works | 10d | 2027-09-23 | 2027-10-03 | 8726, 8740 |  | Zenith | 8735494 |
| 8743 | 36900.37000.37200.38300.39500.41300.42500.57800.1777200 | Waterproofing | 14d | 2028-01-03 | 2028-01-16 | 8727, 8742 |  | Zenith | 8735504 |
| 8744 | 36900.37000.37200.38300.39500.41300.42500.57800.1777300 | Internal Plaster | 14d | 2028-01-08 | 2028-01-21 | 8728, 8742, 8743FF+5d |  | Zenith | 8735514 |
| 8745 | 36900.37000.37200.38300.39500.41300.42500.57800.1777400 | IPS flooring work | 10d | 2028-01-22 | 2028-01-31 | 8729, 8743, 8744 |  | Zenith | 8735524 |
| 8746 | 36900.37000.37200.38300.39500.41300.42500.57800.1777500 | Toilet dado work | 10d | 2028-02-01 | 2028-02-10 | 8730, 8745 |  | Zenith | 8735534 |
| 8747 | 36900.37000.37200.38300.39500.41300.42500.57800.1777600 | Toilet flooring work | 7d | 2028-02-11 | 2028-02-17 | 8731, 8746 |  | Zenith | 8735544 |
| 8748 | 36900.37000.37200.38300.39500.41300.42500.57800.1777700 | False ceiling | 10d | 2028-02-18 | 2028-02-27 | 8732, 8747 |  | Zenith | 8735554 |
| 8749 | 36900.37000.37200.38300.39500.41300.42500.57800.1777800 | Living dinning flooring | 13d | 2028-02-18 | 2028-03-01 | 8733, 8747 |  | Zenith | 8735564 |
| 8750 | 36900.37000.37200.38300.39500.41300.42500.57800.1777900 | Putty Primer coat | 12d | 2028-03-02 | 2028-03-13 | 8734, 8741, 8748, 8749 |  | Zenith | 8735574 |
| 8751 | 36900.37000.37200.38300.39500.41300.42500.57800.1778000 | Aluminium door-window fixing | 15d | 2028-03-22 | 2028-04-05 | 8735, 8745, 8749 |  | Zenith | 8735584 |
| 8752 | 36900.37000.37200.38300.39500.41300.42500.57800.1778100 | Door shutter fixing (Pre Hung) | 8d | 2028-03-14 | 2028-03-21 | 8736, 8750 |  | Zenith | 8735594 |
| 8753 | 36900.37000.37200.38300.39500.41300.42500.57800.1778200 | Electrical wiring work | 12d | 2028-03-22 | 2028-04-02 | 8737, 8752 |  | Zenith | 8735604 |
| 8754 | 36900.37000.37200.38300.39500.41300.42500.57800.1778300 | Painting 1st coat | 15d | 2028-04-26 | 2028-05-10 | 8738, 8753 |  | Zenith | 8735614 |
| 8755 | 36900.37000.37200.38300.39500.41300.42500.57800.1778400 | Misc. Works | 45d | 2028-05-11 | 2028-06-24 | 8754 |  | Zenith | 8735624 |

| ID | WBS | Task | Duration | Start | Finish | Predecessors | Constraint | Calendar | Unique_Task_ID |
| --- | --- | --- | --- | --- | --- | --- | --- | --- | --- |
| 8756 | 36900.37000.37200.38300.39500.41300.223700 | **Terrace Finishing** | 116d | 2027-09-23 | 2028-03-01 |  | start no earlier than 2027-09-23 | Zenith | 8656684 |
| 8757 | 36900.37000.37200.38300.39500.41300.223700.1082800 | Terrace waterproofing | 40d | 2027-09-23 | 2027-12-16 | 8171FS+2d |  | Zenith | 8675654 |
| 8758 | 36900.37000.37200.38300.39500.41300.223700.1082900 | Terrace finishing | 75d | 2027-12-18 | 2028-03-01 | 8757FS+1d |  | Zenith | 8675644 |
| 8759 | 36900.37000.37200.38300.39500.41300.48900 | **Balcony Railing** | 340d | 2027-04-04 | 2028-04-22 |  | start no earlier than 2027-04-04 | Zenith | 8648194 |
| 8760 | 36900.37000.37200.38300.39500.41300.48900.1083000 | 1st Floor | 10d | 2027-04-04 | 2027-04-13 | 8237FF+180d |  | Zenith | 8675634 |
| 8761 | 36900.37000.37200.38300.39500.41300.48900.1083100 | 2nd Floor | 10d | 2027-04-14 | 2027-04-23 | 8760, 8253 |  | Zenith | 8675624 |
| 8762 | 36900.37000.37200.38300.39500.41300.48900.1083200 | 3rd Floor | 10d | 2027-04-24 | 2027-05-03 | 8761, 8269 |  | Zenith | 8675614 |
| 8763 | 36900.37000.37200.38300.39500.41300.48900.1083300 | 4th Floor | 10d | 2027-05-04 | 2027-05-13 | 8762, 8285 |  | Zenith | 8675604 |
| 8764 | 36900.37000.37200.38300.39500.41300.48900.1083400 | 5th Floor | 10d | 2027-05-14 | 2027-05-23 | 8763, 8301 |  | Zenith | 8675594 |
| 8765 | 36900.37000.37200.38300.39500.41300.48900.1083500 | 6th Floor | 10d | 2027-05-24 | 2027-06-02 | 8764, 8317 |  | Zenith | 8675584 |
| 8766 | 36900.37000.37200.38300.39500.41300.48900.1083600 | 7th Floor | 10d | 2027-06-03 | 2027-06-12 | 8765, 8333 |  | Zenith | 8675574 |
| 8767 | 36900.37000.37200.38300.39500.41300.48900.1083700 | 8th Floor | 10d | 2027-06-13 | 2027-06-22 | 8766, 8349 |  | Zenith | 8675564 |
| 8768 | 36900.37000.37200.38300.39500.41300.48900.1083800 | 9th Floor | 10d | 2027-06-23 | 2027-07-02 | 8767, 8365 |  | Zenith | 8675554 |
| 8769 | 36900.37000.37200.38300.39500.41300.48900.1083900 | 10th Floor | 10d | 2027-07-03 | 2027-07-12 | 8768, 8381 |  | Zenith | 8675544 |
| 8770 | 36900.37000.37200.38300.39500.41300.48900.1084000 | 11th Floor | 10d | 2027-07-13 | 2027-07-22 | 8769, 8397 |  | Zenith | 8675534 |
| 8771 | 36900.37000.37200.38300.39500.41300.48900.1084100 | 12th Floor | 10d | 2027-07-23 | 2027-08-01 | 8770, 8413 |  | Zenith | 8675524 |
| 8772 | 36900.37000.37200.38300.39500.41300.48900.1084200 | 13th Floor | 10d | 2027-08-02 | 2027-08-11 | 8771, 8429 |  | Zenith | 8675514 |
| 8773 | 36900.37000.37200.38300.39500.41300.48900.1084300 | 14th Floor | 10d | 2027-08-12 | 2027-08-21 | 8772, 8445 |  | Zenith | 8675504 |
| 8774 | 36900.37000.37200.38300.39500.41300.48900.1084400 | 15th Floor | 10d | 2027-08-22 | 2027-08-31 | 8773, 8461 |  | Zenith | 8675494 |
| 8775 | 36900.37000.37200.38300.39500.41300.48900.1084500 | 16th Floor | 10d | 2027-09-01 | 2027-09-10 | 8774, 8477 |  | Zenith | 8675484 |
| 8776 | 36900.37000.37200.38300.39500.41300.48900.1084600 | 17th Floor | 10d | 2027-09-11 | 2027-09-20 | 8775, 8493 |  | Zenith | 8675474 |
| 8777 | 36900.37000.37200.38300.39500.41300.48900.1084700 | 18th Floor | 10d | 2027-09-21 | 2027-09-30 | 8776, 8509 |  | Zenith | 8675464 |
| 8778 | 36900.37000.37200.38300.39500.41300.48900.1084800 | 19th Floor | 10d | 2027-10-01 | 2027-10-10 | 8777, 8525 |  | Zenith | 8675454 |
| 8779 | 36900.37000.37200.38300.39500.41300.48900.1084900 | 20th Floor | 10d | 2027-10-11 | 2027-10-20 | 8778, 8541 |  | Zenith | 8675444 |
| 8780 | 36900.37000.37200.38300.39500.41300.48900.1085000 | 21st Floor | 10d | 2027-10-21 | 2027-10-30 | 8779, 8557 |  | Zenith | 8675434 |
| 8781 | 36900.37000.37200.38300.39500.41300.48900.1085100 | 22nd Floor | 10d | 2027-10-31 | 2027-12-24 | 8780, 8573 |  | Zenith | 8675424 |
| 8782 | 36900.37000.37200.38300.39500.41300.48900.1085200 | 23rd Floor | 10d | 2027-12-25 | 2028-01-03 | 8781, 8589 |  | Zenith | 8675414 |
| 8783 | 36900.37000.37200.38300.39500.41300.48900.1085300 | 24th Floor | 10d | 2028-01-04 | 2028-01-13 | 8782, 8605 |  | Zenith | 8675404 |
| 8784 | 36900.37000.37200.38300.39500.41300.48900.1085400 | 25th Floor | 10d | 2028-01-14 | 2028-01-23 | 8783, 8621 |  | Zenith | 8675394 |
| 8785 | 36900.37000.37200.38300.39500.41300.48900.1085500 | 26th Floor | 10d | 2028-01-24 | 2028-02-02 | 8784, 8637 |  | Zenith | 8675384 |
| 8786 | 36900.37000.37200.38300.39500.41300.48900.1085600 | 27th Floor | 10d | 2028-02-03 | 2028-02-12 | 8785, 8653 |  | Zenith | 8675374 |
| 8787 | 36900.37000.37200.38300.39500.41300.48900.1085700 | 28th Floor | 10d | 2028-02-13 | 2028-02-22 | 8786, 8669 |  | Zenith | 8675364 |
| 8788 | 36900.37000.37200.38300.39500.41300.48900.1085800 | 29th Floor | 10d | 2028-02-23 | 2028-03-03 | 8787, 8685 |  | Zenith | 8675354 |
| 8789 | 36900.37000.37200.38300.39500.41300.48900.1085900 | 30th Floor | 10d | 2028-03-04 | 2028-03-13 | 8788, 8701 |  | Zenith | 8675344 |
| 8790 | 36900.37000.37200.38300.39500.41300.48900.1086000 | 31st Floor | 10d | 2028-03-14 | 2028-03-23 | 8789, 8717 |  | Zenith | 8675334 |
| 8791 | 36900.37000.37200.38300.39500.41300.48900.1086100 | 32nd Floor | 10d | 2028-03-24 | 2028-04-02 | 8790, 8733 |  | Zenith | 8675324 |
| 8792 | 36900.37000.37200.38300.39500.41300.48900.1086200 | 33rd Floor | 10d | 2028-04-03 | 2028-04-12 | 8791, 8749 |  | Zenith | 8675314 |
| 8793 | 36900.37000.37200.38300.39500.41300.48900.1086300 | 34th Floor | 10d | 2028-04-13 | 2028-04-22 | 8792 |  | Zenith | 8675304 |

| ID | WBS | Task | Duration | Start | Finish | Predecessors | Constraint | Calendar | Unique_Task_ID |
| --- | --- | --- | --- | --- | --- | --- | --- | --- | --- |
| 8794 | 36900.37000.37200.38300.39500.41300.120500 | **Common Area Finishing** | 290d | 2027-09-21 | 2028-08-20 |  | start no earlier than 2027-09-21 | Zenith | 8651774 |
| 8795 | 36900.37000.37200.38300.39500.41300.120500.1086400 | Masonary Work | 40d | 2027-09-21 | 2027-10-30 | 8171 |  | Zenith | 8675294 |
| 8796 | 36900.37000.37200.38300.39500.41300.120500.1086500 | Fire sprinkler pipe fixing | 40d | 2027-10-31 | 2028-01-23 | 8795 |  | Zenith | 8675284 |
| 8797 | 36900.37000.37200.38300.39500.41300.120500.1086600 | Corridoor, staircase, shaft Plaster & whitewash | 120d | 2027-10-31 | 2028-04-12 | 8795 |  | Zenith | 8675274 |
| 8798 | 36900.37000.37200.38300.39500.41300.120500.1086700 | Staircase railing fixing | 100d | 2027-10-31 | 2028-03-23 | 8795 |  | Zenith | 8675264 |
| 8799 | 36900.37000.37200.38300.39500.41300.120500.1086800 | Fire staircase flooring | 120d | 2027-12-25 | 2028-04-22 | 8798FF+30d |  | Zenith | 8675254 |
| 8800 | 36900.37000.37200.38300.39500.41300.120500.1086900 | Main staircase flooring | 120d | 2027-12-25 | 2028-04-22 | 8798FF+30d |  | Zenith | 8675244 |
| 8801 | 36900.37000.37200.38300.39500.41300.120500.1087000 | Fire door work | 45d | 2028-04-23 | 2028-06-06 | 8799 |  | Zenith | 8675234 |
| 8802 | 36900.37000.37200.38300.39500.41300.120500.1087100 | Lobby flooring & Corridor | 120d | 2028-01-24 | 2028-05-22 | 8800FF+30d |  | Zenith | 8675224 |
| 8803 | 36900.37000.37200.38300.39500.41300.120500.1087200 | Ceiling & wall putty | 120d | 2028-02-23 | 2028-06-21 | 8801FF+15d, 8802FF+30d, 8750FF+30d |  | Zenith | 8675214 |
| 8804 | 36900.37000.37200.38300.39500.41300.120500.1087300 | Electrical wiring work | 120d | 2028-03-09 | 2028-07-06 | 8803FF+15d |  | Zenith | 8675204 |
| 8805 | 36900.37000.37200.38300.39500.41300.120500.1087400 | Ceiling & wall painting | 120d | 2028-03-29 | 2028-07-26 | 8796FS+20d, 8803SS+20d, 8804FF+20d |  | Zenith | 8675194 |
| 8806 | 36900.37000.37200.38300.39500.41300.120500.1087500 | Light fixture supply & installation | 45d | 2028-07-07 | 2028-08-20 | 8803, 8805FF+25d |  | Zenith | 8675184 |
| 8807 | 36900.37000.37200.38300.120600 | **MEP work** | 260d | 2027-09-21 | 2028-07-21 |  | start no earlier than 2027-09-21 | Zenith | 8651924 |
| 8808 | 36900.37000.37200.38300.120600.124800 | **Electrical work** | 240d | 2027-09-21 | 2028-07-01 |  | start no earlier than 2027-09-21 | Zenith | 8651974 |
| 8809 | 36900.37000.37200.38300.120600.124800.859500 | Cable Tray | 90d | 2027-09-21 | 2028-02-02 | 8171 |  | Zenith | 8720424 |
| 8810 | 36900.37000.37200.38300.120600.124800.859600 | Cable, main & sub main | 60d | 2027-12-20 | 2028-02-17 | 8809SS+45d |  | Zenith | 8720414 |
| 8811 | 36900.37000.37200.38300.120600.124800.859700 | LT panel & DB | 90d | 2028-02-03 | 2028-05-02 | 8809 |  | Zenith | 8720404 |
| 8812 | 36900.37000.37200.38300.120600.124800.859800 | Rising main | 90d | 2028-02-18 | 2028-05-17 | 8809FS+15d |  | Zenith | 8720394 |
| 8813 | 36900.37000.37200.38300.120600.124800.859900 | Earthing Works | 60d | 2028-02-23 | 2028-04-22 | 8809FS+20d |  | Zenith | 8720384 |
| 8814 | 36900.37000.37200.38300.120600.124800.860000 | Energy meter | 60d | 2028-05-03 | 2028-07-01 | 8810, 8813FS+10d |  | Zenith | 8720374 |
| 8815 | 36900.37000.37200.38300.120600.124800.860100 | HVAC & Exhast fan | 120d | 2028-01-29 | 2028-05-27 | 8809FS-5d |  | Zenith | 8720364 |
| 8816 | 36900.37000.37200.38300.120600.124800.860200 | FTTH | 60d | 2028-04-18 | 2028-06-16 | 8811FS-15d |  | Zenith | 8720354 |
| 8817 | 36900.37000.37200.38300.120600.124800.860300 | Security System - FA & PA | 60d | 2028-05-03 | 2028-07-01 | 8811, 8812FF+10d, 8815FF+2d, 8816FF |  | Zenith | 8720344 |

| ID | WBS | Task | Duration | Start | Finish | Predecessors | Constraint | Calendar | Unique_Task_ID |
| --- | --- | --- | --- | --- | --- | --- | --- | --- | --- |
| 8818 | 36900.37000.37200.38300.120600.165100 | **Plumbing work** | 218d | 2027-12-17 | 2028-07-21 |  | start no earlier than 2027-12-17 | Zenith | 8652744 |
| 8819 | 36900.37000.37200.38300.120600.165100.860400 | Terrace looping | 45d | 2027-12-17 | 2028-01-30 | 8757 |  | Zenith | 8720334 |
| 8820 | 36900.37000.37200.38300.120600.165100.860500 | Shaft Plumbing | 70d | 2028-03-14 | 2028-05-22 | 8819, 8797FS-30d |  | Zenith | 8720324 |
| 8821 | 36900.37000.37200.38300.120600.165100.860600 | CP sanitary fixture supply | 45d | 2028-05-23 | 2028-07-06 | 8820 |  | Zenith | 8720314 |
| 8822 | 36900.37000.37200.38300.120600.165100.860700 | Cold & flushing water supply | 45d | 2028-05-23 | 2028-07-06 | 8820 |  | Zenith | 8720304 |
| 8823 | 36900.37000.37200.38300.120600.165100.860800 | Misc work | 30d | 2028-06-22 | 2028-07-21 | 8821FS-15d, 8822FS-15d |  | Zenith | 8720294 |
| 8824 | 36900.37000.37200.38300.120600.210200 | **Fire fighting work** | 121d | 2028-01-29 | 2028-05-28 |  | start no earlier than 2028-01-29 | Zenith | 8655894 |
| 8825 | 36900.37000.37200.38300.120600.210200.860900 | Fire hydrant work | 75d | 2028-01-29 | 2028-04-12 | 8797SS+45d |  | Zenith | 8720284 |
| 8826 | 36900.37000.37200.38300.120600.210200.861000 | Pipe connection & sprinkler installation | 45d | 2028-04-14 | 2028-05-28 | 8825FS+1d, 8828FF+15d |  | Zenith | 8720274 |
| 8827 | 36900.37000.37200.38300.120600.210200.861100 | Shaft Downtake works | 60d | 2028-02-13 | 2028-04-12 | 8757, 8797FS-60d |  | Zenith | 8720264 |
| 8828 | 36900.37000.37200.38300.120600.210200.861200 | Connection to pump room | 30d | 2028-04-13 | 2028-05-12 | 8827 |  | Zenith | 8720254 |
| 8829 | 36900.37000.37200.38300.120600.218700 | **Lift work** | 257.75d | 2027-09-23 | 2028-07-21 |  | start no earlier than 2027-09-23 | Zenith | 8656524 |
| 8830 | 36900.37000.37200.38300.120600.218700.861300 | Lift Shaft/Pit Handover | 40d | 2027-09-23 | 2027-12-17 | 8208FS+5d |  | Zenith | 8720244 |
| 8831 | 36900.37000.37200.38300.120600.218700.861400 | Lift installation work | 60d | 2027-12-17 | 2028-02-15 | 8830 |  | Zenith | 8720234 |
| 8832 | 36900.37000.37200.38300.120600.218700.861500 | Lift testing and commissioning | 60d | 2028-05-23 | 2028-07-21 | 8831, 8802 |  | Zenith | 8720224 |
| 8833 | 36900.37000.37200.38300.226600 | **Basement lobby** | 90d | 2028-01-01 | 2028-03-31 |  | start no earlier than 2028-01-01 | Zenith | 8656924 |
| 8834 | 36900.37000.37200.38300.226600.413400 | Basement lobby | 90d | 2028-01-01 | 2028-03-31 | 8830FS+15d, 7993FS+15d, 7994FS+15d |  | Zenith | 8730664 |
| 8835 | 36900.37000.37200.38300.221700 | **External Paint Works** | 90d | 2028-04-06 | 2028-07-04 |  | start no earlier than 2028-04-06 | Zenith | 8656784 |
| 8836 | 36900.37000.37200.38300.221700.413500 | Surface prepration with Primer | 60d | 2028-04-23 | 2028-06-21 | 8208FS+2d, 8793 |  | Zenith | 8730654 |
| 8837 | 36900.37000.37200.38300.221700.413600 | External Painting (Texture & first coat) | 90d | 2028-04-06 | 2028-07-04 | 8836FF+10d, 8751 |  | Zenith | 8730644 |
| 8838 | 36900.37000.37200.38300.308300 | OC Application/Readiness | 2d | 2030-07-04 | 2030-07-05 | 8166FF+349d, 8837FF+45d, 8826FF+30d, 8823FF, 8834FF+30d, 8832FF, 8817FF, 8814FF, 8758FF+30d, 8755FS+15d, 8803FF+0.25d, 8793FF, 8751FF+0.25d, 8855FF+30d, 8857FF+30d |  | Zenith | 8735084 |
| 8839 | 36900.37000.37200.38300.308400 | OC Receipt | 60d | 2030-07-06 | 2030-09-03 | 8838 |  | Zenith | 8735074 |
| 8840 | 36900.37000.37200.38300.126800 | **Post OC activities** | 949d | 2028-09-05 | 2031-08-24 |  | start no earlier than 2028-09-05 | Zenith | 8652004 |
| 8841 | 36900.37000.37200.38300.126800.413700 | CP & Sanitaryware | 150d | 2030-09-04 | 2031-03-17 | 8839 |  | Zenith | 8730634 |
| 8842 | 36900.37000.37200.38300.126800.413800 | Electrical Fixtures And Fittings | 150d | 2030-09-04 | 2031-03-17 | 8839 |  | Zenith | 8730624 |
| 8843 | 36900.37000.37200.38300.126800.413900 | Final coat paint external | 100d | 2030-09-04 | 2031-01-26 | 8839 |  | Zenith | 8730614 |
| 8844 | 36900.37000.37200.38300.126800.414000 | Final Coat Paint Internal | 150d | 2030-09-04 | 2031-03-17 | 8839, 8754 |  | Zenith | 8730604 |
| 8845 | 36900.37000.37200.38300.126800.414100 | Balcony Railing Glass Fixing | 120d | 2031-03-18 | 2031-07-15 | 8844, 8793FS+30d |  | Zenith | 8730594 |
| 8846 | 36900.37000.37200.38300.126800.414200 | MEP | 150d | 2028-09-05 | 2029-03-18 | 8806FS+15d |  | Zenith | 8730584 |
| 8847 | 36900.37000.37200.38300.126800.414300 | Wooden Flooring | 180d | 2030-08-20 | 2031-04-01 | 8844FF+15d |  | Zenith | 8730574 |
| 8848 | 36900.37000.37200.38300.126800.414400 | Split AC Units installation | 100d | 2031-04-17 | 2031-07-25 | 8847FS+15d |  | Zenith | 8730564 |
| 8849 | 36900.37000.37200.38300.126800.414500 | Misc. works (Modular Kitchen & Others) | 180d | 2031-02-26 | 2031-08-24 | 8848FF+30d |  | Zenith | 8730554 |
| 8850 | 36900.37000.37200.38300.308500 | Offer To Possession | 182d | 2031-03-20 | 2031-09-17 | 8839FS+152d, 8841FF+20d, 8842FF+20d, 8843FF+20d, 8848FF+10d, 8846FS+30d, 8845FF+15d, 8849FF+15d |  | Zenith | 8735064 |

| ID | WBS | Task | Type | Duration | Start | Finish | Predecessors | Complete | Constraint | Calendar | Unique_Task_ID |
| --- | --- | --- | --- | --- | --- | --- | --- | --- | --- | --- | --- |
| 8851 | 36900.37000.37200.143400 | **Non Tower Area** |  | 1465d | 2025-11-19 | 2030-06-05 |  |  | start no earlier than 2025-11-19 | Zenith | 8652614 |
| 8852 | 36900.37000.37200.143400.308600 | NTA core & shell- Area 01 |  | 740d | 2025-11-19 | 2028-03-12 | 7968SS-90d |  |  | Zenith | 8735054 |
| 8853 | 36900.37000.37200.143400.308700 | NTA MEP - AR 01 |  | 350d | 2027-03-29 | 2028-04-26 | 8852FF+45d |  |  | Zenith | 269050 |
| 8854 | 36900.37000.37200.143400.308800 | NTA Finishes, External Development & Misc.- Ar 01 |  | 450d | 2028-06-16 | 2029-10-23 | 8852FF+500d, 8853FF+500d |  |  | Zenith | 8735044 |
| 8855 | 36900.37000.37200.143400.308900 | NTA core & shell- Area 02 |  | 670d | 2025-11-19 | 2028-01-02 | 8852FF-90d |  |  | Zenith | 8735034 |
| 8856 | 36900.37000.37200.143400.309000 | NTA MEP - AR 02 |  | 350d | 2027-01-18 | 2028-02-16 | 8855FF+45d |  |  | Zenith | 8735024 |
| 8857 | 36900.37000.37200.143400.309100 | NTA Finishes & External Development - Ar 02 |  | 550d | 2028-09-04 | 2030-06-05 | 8854FF+180d, 8855FF+75d, 8856FF+30d |  |  | Zenith | 8735014 |
| 8858 | 36900.37000.51400 | **ECRM Milestones** |  | 2078d | 2025-01-22 | 2031-09-11 |  | 76% | start no earlier than 2025-01-22 | Indian Calendar | 8647545 |
| 8859 | 36900.37000.51400.121900 | **Tower 01** |  | 1575d | 2025-02-12 | 2030-02-22 |  | 15% | start no earlier than 2025-02-12 | Indian Calendar | 10032569 |
| 8860 | 36900.37000.51400.121900.245400 | On Completion of Tower Raft |  | 1d | 2025-02-12 | 2025-02-12 | 1879 | 100% | start no earlier than 2025-02-12 | Indian Calendar | 10032570 |
| 8861 | 36900.37000.51400.121900.949300 | On Completion of Tower Ground Floor Slab | milestone | 0d | 2025-07-18 A | 2025-07-18 A | 1900 | 100% |  | Indian Calendar | 10032571 |
| 8862 | 36900.37000.51400.121900.309200 | On Completion of 10th Floor Roof |  | 0.12d | 2026-03-30 | 2026-03-30 | 1964 |  |  | Indian Calendar | 10032572 |
| 8863 | 36900.37000.51400.121900.309300 | On Completion of 15th Floor Roof |  | 0.12d | 2026-05-28 | 2026-05-28 | 1989 |  |  | Indian Calendar | 10032573 |
| 8864 | 36900.37000.51400.121900.309400 | On Completion of 20th Floor Roof |  | 0.12d | 2026-07-22 | 2026-07-22 | 2014 |  |  | Indian Calendar | 10032574 |
| 8865 | 36900.37000.51400.121900.309500 | On Completion of Terrace slab |  | 1d | 2027-02-24 | 2027-02-24 | 2089FS-1d |  |  | Indian Calendar | 10032575 |
| 8866 | 36900.37000.51400.121900.309600 | On Completion of Unit Internal plaster |  | 1d | 2027-08-12 | 2027-08-12 | 2684FS-1d |  |  | Indian Calendar | 10032576 |
| 8867 | 36900.37000.51400.121900.309700 | On Completion of Unit Flooring (Excluding wooden flooring) |  | 1d | 2027-09-21 | 2027-09-21 | 2689FS-1d |  |  | Indian Calendar | 10032577 |
| 8869 | 36900.37000.51400.121900.309800 | On Application of OC |  | 1d | 2028-10-30 | 2028-10-30 | 2779FS-1d |  |  | Indian Calendar | 10032578 |
| 8870 | 36900.37000.51400.121900.309900 | On Intimation of Possession |  | 1d | 2030-02-22 | 2030-02-22 | 2791FS-1d |  |  | Indian Calendar | 10032588 |
| 8871 | 36900.37000.51400.122100 | **Tower 02** |  | 1292d | 2025-02-28 | 2029-04-14 |  | 90% | start no earlier than 2025-02-28 | Indian Calendar | 10032579 |
| 8872 | 36900.37000.51400.122100.245500 | On Completion of Tower Raft |  | 1d | 2025-02-28 | 2025-02-28 | 952FS-1d | 100% | start no earlier than 2025-02-28 | Indian Calendar | 10032580 |
| 8873 | 36900.37000.51400.122100.245600 | On Completion of Tower Ground Floor Slab |  | 77d | 2025-07-01 | 2025-09-28 | 973 | 100% | start no earlier than 2025-07-01 | Indian Calendar | 10032581 |
| 8874 | 36900.37000.51400.122100.310000 | On Completion of 10th Floor Roof |  | 1d | 2026-04-04 | 2026-04-04 | 1037FS-1d |  |  | Indian Calendar | 10032582 |
| 8875 | 36900.37000.51400.122100.310100 | On Completion of 15th Floor Roof |  | 1d | 2026-06-02 | 2026-06-02 | 1062FS-1d |  |  | Indian Calendar | 10032583 |
| 8876 | 36900.37000.51400.122100.310200 | On Completion of 20th Floor Roof |  | 1d | 2026-07-27 | 2026-07-27 | 1087FS-1d |  |  | Indian Calendar | 10032584 |
| 8877 | 36900.37000.51400.122100.310300 | On Completion of Terrace slab |  | 1d | 2027-03-02 | 2027-03-02 | 1162FS-1d |  |  | Indian Calendar | 10032585 |
| 8878 | 36900.37000.51400.122100.310400 | On Completion of Unit Internal plaster |  | 1d | 2027-06-30 | 2027-06-30 | 1757FS-1d |  |  | Indian Calendar | 10032586 |
| 8879 | 36900.37000.51400.122100.310500 | On Completion of Unit Flooring (Excluding wooden flooring) |  | 1d | 2027-08-18 | 2027-08-18 | 1762FS-1d |  |  | Indian Calendar | 10032587 |
| 8881 | 36900.37000.51400.122100.310600 | On Application of OC |  | 1d | 2028-01-31 | 2028-01-31 | 1852FS-1d |  |  | Indian Calendar | 10032597 |
| 8882 | 36900.37000.51400.122100.310700 | On Intimation of Possession |  | 1d | 2029-04-14 | 2029-04-14 | 1864FS-1d |  |  | Indian Calendar | 10032607 |

| ID | WBS | Task | Duration | Start | Finish | Predecessors | Complete | Constraint | Calendar | Unique_Task_ID |
| --- | --- | --- | --- | --- | --- | --- | --- | --- | --- | --- |
| 8883 | 36900.37000.51400.122300 | **Tower 03** | 1348d | 2025-01-22 | 2029-05-12 |  | 20% | start no earlier than 2025-01-22 | Indian Calendar | 10032589 |
| 8884 | 36900.37000.51400.122300.245700 | On Completion of Tower Raft | 1d | 2025-01-22 | 2025-01-22 | 2806FS-1d | 100% | start no earlier than 2025-01-22 | Indian Calendar | 10032590 |
| 8885 | 36900.37000.51400.122300.245800 | On Completion of Tower Ground Floor Slab | 1d | 2025-07-16 | 2025-07-16 | 2827 | 100% | start no earlier than 2025-07-16 | Indian Calendar | 10032591 |
| 8886 | 36900.37000.51400.122300.310800 | On Completion of 10th Floor Roof | 1d | 2026-03-23 | 2026-03-23 | 2891FS-1d |  |  | Indian Calendar | 10032592 |
| 8887 | 36900.37000.51400.122300.310900 | On Completion of 15th Floor Roof | 1d | 2026-05-21 | 2026-05-21 | 2916FS-1d |  |  | Indian Calendar | 10032593 |
| 8888 | 36900.37000.51400.122300.311000 | On Completion of 20th Floor Roof | 1d | 2026-07-15 | 2026-07-15 | 2941FS-1d |  |  | Indian Calendar | 10032594 |
| 8889 | 36900.37000.51400.122300.311100 | On Completion of Terrace slab | 1d | 2027-02-08 | 2027-02-08 | 3011FS-1d |  |  | Indian Calendar | 10032595 |
| 8890 | 36900.37000.51400.122300.311200 | On Completion of Unit Internal plaster | 1d | 2027-05-07 | 2027-05-08 | 3589FS-1d |  |  | Indian Calendar | 10032596 |
| 8891 | 36900.37000.51400.122300.311300 | On Completion of Unit Flooring (Excluding wooden flooring) | 1d | 2027-06-16 | 2027-06-17 | 3594FS-1d |  |  | Indian Calendar | 10032606 |
| 8893 | 36900.37000.51400.122300.311400 | On Application of OC | 1d | 2028-03-08 | 2028-03-08 | 3683FS-1d |  |  | Indian Calendar | 10032616 |
| 8894 | 36900.37000.51400.122300.311500 | On Intimation of Possession | 1d | 2029-05-12 | 2029-05-12 | 3695FS-1d |  |  | Indian Calendar | 10032626 |
| 8895 | 36900.37000.51400.122400 | **Tower 04** | 1320.25d | 2025-01-25 | 2029-04-14 |  | 20% | start no earlier than 2025-01-25 | Indian Calendar | 10032599 |
| 8896 | 36900.37000.51400.122400.245900 | On Completion of Tower Raft | 1d | 2025-01-25 | 2025-01-25 | 25FS-1d | 100% | start no earlier than 2025-01-25 | Indian Calendar | 10032600 |
| 8897 | 36900.37000.51400.122400.246000 | On Completion of Tower Ground Floor Slab | 1d | 2025-06-16 | 2025-06-16 | 46FF-1d | 100% | start no earlier than 2025-06-16 | Indian Calendar | 10032601 |
| 8898 | 36900.37000.51400.122400.311600 | On Completion of 10th Floor Roof | 1d | 2026-03-23 | 2026-03-23 | 110FS-0.25d |  |  | Indian Calendar | 10032602 |
| 8899 | 36900.37000.51400.122400.311700 | On Completion of 15th Floor Roof | 1d | 2026-05-20 | 2026-05-21 | 135FS-1d |  |  | Indian Calendar | 10032603 |
| 8900 | 36900.37000.51400.122400.311800 | On Completion of 20th Floor Roof | 1d | 2026-07-14 | 2026-07-15 | 160FS-1d |  |  | Indian Calendar | 10032604 |
| 8901 | 36900.37000.51400.122400.311900 | On Completion of Terrace slab | 1d | 2027-02-17 | 2027-02-18 | 235FS-1d |  |  | Indian Calendar | 10032605 |
| 8902 | 36900.37000.51400.122400.312000 | On Completion of Unit Internal plaster | 1d | 2027-06-18 | 2027-06-18 | 830FS-1d |  |  | Indian Calendar | 10032615 |
| 8903 | 36900.37000.51400.122400.312100 | On Completion of Unit Flooring (Excluding wooden flooring) | 1d | 2027-08-02 | 2027-08-02 | 835 |  |  | Indian Calendar | 10032625 |
| 8905 | 36900.37000.51400.122400.312200 | On Application of OC | 1d | 2028-01-31 | 2028-01-31 | 925FS-0.25d |  |  | Indian Calendar | 10032635 |
| 8906 | 36900.37000.51400.122400.312300 | On Intimation of Possession | 1d | 2029-04-13 | 2029-04-14 | 937FS-1d |  |  | Indian Calendar | 10032645 |
| 8907 | 36900.37000.51400.122700 | **Tower 05** | 1340d | 2025-02-15 | 2029-05-28 |  | 63% | start no earlier than 2025-02-15 | Indian Calendar | 10032609 |
| 8908 | 36900.37000.51400.122700.246100 | On Completion of Tower Raft | 1d | 2025-02-15 | 2025-02-15 | 3710FS-1d | 100% | start no earlier than 2025-02-15 | Indian Calendar | 10032610 |
| 8909 | 36900.37000.51400.122700.246200 | On Completion of Tower Ground Floor Slab | 13d | 2025-06-14 | 2025-06-28 | 3731FS-1d | 100% | start no earlier than 2025-06-14 | Indian Calendar | 10032611 |
| 8910 | 36900.37000.51400.122700.312400 | On Completion of 10th Floor Roof | 1d | 2026-03-30 | 2026-03-30 | 3795 |  |  | Indian Calendar | 10032612 |
| 8911 | 36900.37000.51400.122700.312500 | On Completion of 15th Floor Roof | 1d | 2026-05-27 | 2026-05-27 | 3820FS-1d |  |  | Indian Calendar | 10032613 |
| 8912 | 36900.37000.51400.122700.312600 | On Completion of 20th Floor Roof | 1d | 2026-07-21 | 2026-07-21 | 3845FS-1d |  |  | Indian Calendar | 10032614 |
| 8913 | 36900.37000.51400.122700.312700 | On Completion of Terrace slab | 1d | 2027-02-24 | 2027-02-24 | 3920FS-1d |  |  | Indian Calendar | 10032624 |
| 8914 | 36900.37000.51400.122700.312800 | On Completion of Unit Internal plaster | 1d | 2027-05-25 | 2027-05-26 | 4515FS-1d |  |  | Indian Calendar | 10032634 |
| 8915 | 36900.37000.51400.122700.312900 | On Completion of Unit Flooring (Excluding wooden flooring) | 1d | 2027-07-05 | 2027-07-05 | 4520FS-0.25d |  |  | Indian Calendar | 10032644 |
| 8917 | 36900.37000.51400.122700.313000 | On Application of OC | 1d | 2028-03-23 | 2028-03-23 | 4610FS-1d |  |  | Indian Calendar | 10032654 |
| 8918 | 36900.37000.51400.122700.313100 | On Intimation of Possession | 1d | 2029-05-28 | 2029-05-28 | 4622 |  |  | Indian Calendar | 10032664 |

| ID | WBS | Task | Duration | Start | Finish | Predecessors | Complete | Constraint | Calendar | Unique_Task_ID |
| --- | --- | --- | --- | --- | --- | --- | --- | --- | --- | --- |
| 8919 | 36900.37000.51400.122800 | **Tower 06** | 1565.25d | 2025-03-08 | 2030-03-08 |  | 20% | start no earlier than 2025-03-08 | Indian Calendar | 10032619 |
| 8920 | 36900.37000.51400.122800.246300 | On Completion of Tower Raft | 1d | 2025-03-08 | 2025-03-08 | 4637FS-1d | 100% | start no earlier than 2025-03-08 | Indian Calendar | 10032620 |
| 8921 | 36900.37000.51400.122800.246400 | On Completion of Tower Ground Floor Slab | 1d | 2025-11-01 | 2025-11-01 | 4658FS-6d | 100% | start no earlier than 2025-11-01 | Indian Calendar | 10032621 |
| 8922 | 36900.37000.51400.122800.313200 | On Completion of 10th Floor Roof | 1d | 2026-04-29 | 2026-04-29 | 4722FS-1d |  |  | Indian Calendar | 10032622 |
| 8923 | 36900.37000.51400.122800.313300 | On Completion of 15th Floor Roof | 1d | 2026-06-27 | 2026-06-27 | 4747FS-1d |  |  | Indian Calendar | 10032623 |
| 8924 | 36900.37000.51400.122800.313400 | On Completion of 20th Floor Roof | 1d | 2026-08-21 | 2026-08-21 | 4772FS-1d |  |  | Indian Calendar | 10032633 |
| 8925 | 36900.37000.51400.122800.313500 | On Completion of Terrace slab | 1d | 2027-04-07 | 2027-04-07 | 4852FS-1d |  |  | Indian Calendar | 10032643 |
| 8926 | 36900.37000.51400.122800.313600 | On Completion of Unit Internal plaster | 1d | 2027-07-09 | 2027-07-10 | 5464FS-1d |  |  | Indian Calendar | 10032653 |
| 8927 | 36900.37000.51400.122800.313700 | On Completion of Unit Flooring (Excluding wooden flooring) | 1d | 2027-08-18 | 2027-08-19 | 5469FS-1d |  |  | Indian Calendar | 10032663 |
| 8929 | 36900.37000.51400.122800.313800 | On Application of OC | 1d | 2028-12-25 | 2028-12-25 | 5560FS-0.25d |  |  | Indian Calendar | 10032673 |
| 8930 | 36900.37000.51400.122800.313900 | On Intimation of Possession | 1d | 2030-03-07 | 2030-03-08 | 5572 |  |  | Indian Calendar | 10032683 |
| 8931 | 36900.37000.51400.123000 | **Commercial** | 1035d | 2026-05-22 | 2029-09-10 |  |  | start no earlier than 2026-05-22 | Indian Calendar | 10032629 |
| 8934 | 36900.37000.51400.123000.314000 | On Completion of 6th Floor Roof | 1d | 2026-05-22 | 2026-05-22 | 5713FS-1d |  |  | Indian Calendar | 10032630 |
| 8937 | 36900.37000.51400.123000.314100 | On Completion of Terrace slab | 1d | 2027-10-29 | 2027-10-30 | 5986FS-1d |  |  | Indian Calendar | 10032631 |
| 8938 | 36900.37000.51400.123000.314200 | On Completion of Unit Internal plaster | 1d | 2028-01-12 | 2028-01-13 | 5990FS-1d |  |  | Indian Calendar | 10032632 |
| 8941 | 36900.37000.51400.123000.314300 | On Application of OC | 1d | 2028-05-02 | 2028-05-02 | 6060FS-1d |  |  | Indian Calendar | 10032642 |
| 8942 | 36900.37000.51400.123000.314400 | On Intimation of Possession | 1d | 2029-09-10 | 2029-09-10 | 6075 |  |  | Indian Calendar | 10032652 |
| 8943 | 36900.37000.51400.123100 | **Tower 07** | 1378d | 2025-10-04 | 2030-02-27 |  | 10% | start no earlier than 2025-10-04 | Indian Calendar | 10032639 |
| 8944 | 36900.37000.51400.123100.246500 | On Completion of Tower Raft | 1d | 2025-10-04 | 2025-10-04 | 6108FS-1d | 100% | start no earlier than 2025-10-04 | Indian Calendar | 10032640 |
| 8945 | 36900.37000.51400.123100.314500 | On Completion of Tower Ground Floor Slab | 1d | 2026-03-02 | 2026-03-02 | 6129FS-1d |  |  | Indian Calendar | 10032641 |
| 8946 | 36900.37000.51400.123100.314600 | On Completion of 10th Floor Roof | 1d | 2026-09-09 | 2026-09-09 | 6193FS-1d |  |  | Indian Calendar | 10032651 |
| 8947 | 36900.37000.51400.123100.314700 | On Completion of 15th Floor Roof | 1d | 2027-01-02 | 2027-01-02 | 6218FS-1d |  |  | Indian Calendar | 10032661 |
| 8948 | 36900.37000.51400.123100.314800 | On Completion of 20th Floor Roof | 1d | 2027-03-09 | 2027-03-09 | 6243FS-1d |  |  | Indian Calendar | 10032671 |
| 8949 | 36900.37000.51400.123100.314900 | On Completion of Terrace slab | 1d | 2027-09-17 | 2027-09-17 | 6313FS-1d |  |  | Indian Calendar | 10032681 |
| 8950 | 36900.37000.51400.123100.315000 | On Completion of Unit Internal plaster | 1d | 2028-03-22 | 2028-03-23 | 6891FS-1d |  |  | Indian Calendar | 10032691 |
| 8951 | 36900.37000.51400.123100.315100 | On Completion of Unit Flooring (Excluding wooden flooring) | 1d | 2028-05-02 | 2028-05-03 | 6896FS-1d |  |  | Indian Calendar | 10032701 |
| 8953 | 36900.37000.51400.123100.315200 | On Application of OC | 1d | 2028-12-19 | 2028-12-19 | 6985FS-1d |  |  | Indian Calendar | 10032711 |
| 8954 | 36900.37000.51400.123100.315300 | On Intimation of Possession | 1d | 2030-02-27 | 2030-02-27 | 6997FS-1d |  |  | Indian Calendar | 10032721 |

| ID | WBS | Task | Duration | Start | Finish | Predecessors | Complete | Constraint | Calendar | Unique_Task_ID |
| --- | --- | --- | --- | --- | --- | --- | --- | --- | --- | --- |
| 8955 | 36900.37000.51400.123200 | **Tower 08** | 1508d | 2025-07-21 | 2030-05-14 |  | 83% | start no earlier than 2025-07-21 | Indian Calendar | 10032649 |
| 8956 | 36900.37000.51400.123200.246600 | On Completion of Tower Raft | 46d | 2025-07-21 | 2025-09-11 | 7011FS-1d | 100% | start no earlier than 2025-07-21 | Indian Calendar | 10032650 |
| 8957 | 36900.37000.51400.123200.315400 | On Completion of Tower Ground Floor Slab | 1d | 2026-02-03 | 2026-02-03 | 7032FS-1d |  |  | Indian Calendar | 10032660 |
| 8958 | 36900.37000.51400.123200.315500 | On Completion of 10th Floor Roof | 1d | 2026-08-06 | 2026-08-06 | 7096FS-1d |  |  | Indian Calendar | 10032670 |
| 8959 | 36900.37000.51400.123200.315600 | On Completion of 15th Floor Roof | 1d | 2026-10-10 | 2026-10-10 | 7121FS-1d |  |  | Indian Calendar | 10032680 |
| 8960 | 36900.37000.51400.123200.315700 | On Completion of 20th Floor Roof | 1d | 2027-01-26 | 2027-01-26 | 7146FS-1d |  |  | Indian Calendar | 10032690 |
| 8961 | 36900.37000.51400.123200.315800 | On Completion of Terrace slab | 1d | 2027-08-30 | 2027-08-30 | 7226 |  |  | Indian Calendar | 10032700 |
| 8962 | 36900.37000.51400.123200.315900 | On Completion of Unit Internal plaster | 1d | 2028-02-07 | 2028-02-07 | 7838FS-1d |  |  | Indian Calendar | 10032710 |
| 8963 | 36900.37000.51400.123200.316000 | On Completion of Unit Flooring (Excluding wooden flooring) | 1d | 2028-03-23 | 2028-03-23 | 7843FS-1d |  |  | Indian Calendar | 10032720 |
| 8965 | 36900.37000.51400.123200.316100 | On Application of OC | 1d | 2029-03-01 | 2029-03-01 | 7934FS-1d |  |  | Indian Calendar | 10032730 |
| 8966 | 36900.37000.51400.123200.316200 | On Intimation of Possession | 1d | 2030-05-14 | 2030-05-14 | 7946FS-1d |  |  | Indian Calendar | 10032740 |
| 8967 | 36900.37000.51400.123300 | **Tower 09** | 1978d | 2025-05-19 | 2031-09-11 |  | 92% | start no earlier than 2025-05-19 | Indian Calendar | 10032659 |
| 8968 | 36900.37000.51400.123300.246700 | On Completion of Tower Raft | 111d | 2025-05-19 | 2025-09-24 | 7961FS-33d | 100% | start no earlier than 2025-05-19 | Indian Calendar | 10032829 |
| 8969 | 36900.37000.51400.123300.316300 | On Completion of Tower Ground Floor Slab | 1d | 2026-02-16 | 2026-02-16 | 7982FS-1d |  |  | Indian Calendar | 10032839 |
| 8970 | 36900.37000.51400.123300.316400 | On Completion of 10th Floor Roof | 1d | 2026-08-19 | 2026-08-19 | 8046FS-1d |  |  | Indian Calendar | 10032849 |
| 8971 | 36900.37000.51400.123300.316500 | On Completion of 15th Floor Roof | 1d | 2026-10-23 | 2026-10-23 | 8071FS-1d |  |  | Indian Calendar | 10032859 |
| 8972 | 36900.37000.51400.123300.316600 | On Completion of 20th Floor Roof | 1d | 2027-02-09 | 2027-02-09 | 8096FS-1d |  |  | Indian Calendar | 10032869 |
| 8973 | 36900.37000.51400.123300.316700 | On Completion of Terrace slab | 1d | 2027-08-06 | 2027-08-06 | 8166FS-1d |  |  | Indian Calendar | 10032879 |
| 8974 | 36900.37000.51400.123300.316800 | On Completion of Unit Internal plaster | 1d | 2028-01-21 | 2028-01-21 | 8744FS-1d |  |  | Indian Calendar | 10032889 |
| 8975 | 36900.37000.51400.123300.316900 | On Completion of Unit Flooring (Excluding wooden flooring) | 1d | 2028-03-01 | 2028-03-01 | 8749FS-1d |  |  | Indian Calendar | 10032899 |
| 8977 | 36900.37000.51400.123300.317000 | On Application of OC | 1d | 2030-06-29 | 2030-06-29 | 8838FS-1d |  |  | Indian Calendar | 10032909 |
| 8978 | 36900.37000.51400.123300.317100 | On Intimation of Possession | 1d | 2031-09-11 | 2031-09-11 | 8850FS-1d |  |  | Indian Calendar | 10032919 |
