Schedule from MS Project XML, 2024-06-24 to 2028-03-10, A marks actual dates.

## Calendars

- Standard: Mon-Fri 08:00-12:00, 13:00-17:00; Sat-Sun off. Exceptions (off unless hours are given): 2024-08-26, 2024-12-23 to 2025-01-05, 2025-04-18 to 2025-04-21, 2025-05-05, 2025-05-26, 2025-08-25, 2025-12-22 to 2026-01-04, 2026-03-27 to 2026-03-30, 2026-05-04, 2026-05-23 to 2026-05-25, 2026-08-29 to 2026-08-31, 2026-12-21 to 2027-01-03, 2027-04-16 to 2027-04-19, 2027-05-01 to 2027-05-03, 2027-05-29 to 2027-05-31, 2027-08-30, 2027-12-25 to 2028-01-09.
- Yashwantpur Finshing: Mon-Fri 08:00-12:00, 13:00-17:00; Sat-Sun off.
- 7 Days Work: Mon-Sun 08:00-12:00, 13:00-17:00.

## Resources

| Resource | Group | Unit |
| --- | --- | --- |
| Fitters | Services Engineers |  |
| Crane |  |  |
| BL Saha |  |  |
| Roofers | Site Resources |  |
| Landscape Architects | Design Resources |  |
| Sarah Williams (e-on-act) | Structural Engineers |  |
| Architects | Design Resources |  |
| Plumbers | Services Engineers |  |
| Steel Fitters | Site Resources |  |
| Site Resources |  |  |
| Bricks |  | No |
| Wai Lim | Structural Engineers |  |
| Ductworkers | Services Engineers |  |
| Services Engineers | Design Resources |  |
| Services Engineers |  |  |
| Hamed Ahmed (e-on-alloc) | Structural Engineers |  |
| Design Resources |  |  |
| Structural Engineers | Design Resources |  |
| Carpenters | Site Resources |  |
| Bricklayers | Site Resources |  |
| Electricians | Services Engineers |  |
| Jim Smith (e-on-act) | Structural Engineers |  |

## Schedule

| ID | WBS | Task | Duration | Start | Finish | Predecessors | Constraint | Calendar | Unique_Task_ID |
| --- | --- | --- | --- | --- | --- | --- | --- | --- | --- |
| 1 | 36900 | **BL Saha** | 969.05d | 2024-06-24 | 2028-03-10 |  | start no earlier than 2024-06-24 | Yashwantpur Finshing | 9042554 |
| 2 | 36900.37000 | **BL Saha** | 1355.05d | 2024-06-24 | 2028-03-10 |  | start no earlier than 2024-06-24 | 7 Days Work | 9042564 |
| 3 | 36900.37000.68100 | **Pre Construction** | 120d | 2025-04-01 | 2025-07-29 |  | start no earlier than 2025-04-01 | 7 Days Work | 9042674 |
| 4 | 36900.37000.68100.83800 | Statutory Approval | 5d | 2025-04-01 | 2025-04-05 |  | start no earlier than 2025-04-01 | 7 Days Work | 9042754 |
| 5 | 36900.37000.68100.81900 | **Drawing** | 30d | 2025-04-01 | 2025-04-30 |  | start no earlier than 2025-04-01 | 7 Days Work | 9042714 |
| 6 | 36900.37000.68100.81900.85000 | Pilling | 15d | 2025-04-01 | 2025-04-15 | 13SF |  | 7 Days Work | 9042764 |
| 7 | 36900.37000.68100.81900.85100 | Aluform | 30d | 2025-04-01 | 2025-04-30 | 14SF |  | 7 Days Work | 9042774 |
| 8 | 36900.37000.68100.81900.85200 | Core & Shell | 10d | 2025-04-01 | 2025-04-10 | 15SF |  | 7 Days Work | 9042784 |
| 9 | 36900.37000.68100.81900.85300 | Boundary Wall | 10d | 2025-04-01 | 2025-04-10 |  | start no earlier than 2025-04-01 | 7 Days Work | 9042794 |
| 10 | 36900.37000.68100.81900.85400 | External Services | 10d | 2025-04-01 | 2025-04-10 |  | start no earlier than 2025-04-01 | 7 Days Work | 9042804 |
| 11 | 36900.37000.68100.81900.85500 | Area Development | 10d | 2025-04-01 | 2025-04-10 |  | start no earlier than 2025-04-01 | 7 Days Work | 9042814 |
| 12 | 36900.37000.68100.82000 | **BOQ** | 20d | 2025-04-01 | 2025-04-20 |  | start no earlier than 2025-04-01 | 7 Days Work | 9042704 |
| 13 | 36900.37000.68100.82000.85600 | Pilling | 20d | 2025-04-01 | 2025-04-20 | 20SF |  | 7 Days Work | 9042824 |
| 14 | 36900.37000.68100.82000.85700 | Aluform | 20d | 2025-04-01 | 2025-04-20 | 21SF |  | 7 Days Work | 9042834 |
| 15 | 36900.37000.68100.82000.85800 | Core & Shell | 20d | 2025-04-01 | 2025-04-20 | 22SF |  | 7 Days Work | 9042844 |
| 16 | 36900.37000.68100.82000.85900 | Boundary Wall | 10d | 2025-04-11 | 2025-04-20 | 9 |  | 7 Days Work | 9042854 |
| 17 | 36900.37000.68100.82000.86000 | External Services | 10d | 2025-04-11 | 2025-04-20 | 10 |  | 7 Days Work | 9042864 |
| 18 | 36900.37000.68100.82000.86100 | Area Development | 10d | 2025-04-11 | 2025-04-20 | 11 |  | 7 Days Work | 9042874 |
| 19 | 36900.37000.68100.82100 | **Contract** | 120d | 2025-04-01 | 2025-07-29 |  | start no earlier than 2025-04-01 | 7 Days Work | 9042694 |
| 20 | 36900.37000.68100.82100.86200 | Pilling | 120d | 2025-04-01 | 2025-07-29 | 28SF-30d |  | 7 Days Work | 9042884 |
| 21 | 36900.37000.68100.82100.86300 | Aluform | 120d | 2025-04-01 | 2025-07-29 | 34SF-210d |  | 7 Days Work | 9042894 |
| 22 | 36900.37000.68100.82100.86400 | Core & Shell | 120d | 2025-04-01 | 2025-07-29 | 30SF-30d |  | 7 Days Work | 9042904 |
| 23 | 36900.37000.68100.82100.86500 | Boundary Wall | 10d | 2025-04-21 | 2025-04-30 | 16 |  | 7 Days Work | 9042914 |
| 24 | 36900.37000.68100.82100.86600 | External Services | 10d | 2025-04-21 | 2025-04-30 | 17 |  | 7 Days Work | 9042924 |
| 25 | 36900.37000.68100.82100.86700 | Area Development | 10d | 2025-04-21 | 2025-04-30 | 18 |  | 7 Days Work | 5404 |

| ID | WBS | Task | Duration | Start | Finish | Predecessors | Complete | Constraint | Calendar | Unique_Task_ID |
| --- | --- | --- | --- | --- | --- | --- | --- | --- | --- | --- |
| 26 | 36900.37000.37100 | **Construction** | 1204.8d | 2024-06-24 | 2027-10-12 |  |  | start no earlier than 2024-06-24 | 7 Days Work | 9042574 |
| 27 | 36900.37000.37100.37700 | **Tower-1** | 895.25d | 2025-03-08 | 2027-08-20 |  |  | start no earlier than 2025-03-08 | 7 Days Work | 9042604 |
| 28 | 36900.37000.37100.37700.83700 | Pilling | 124d | 2025-03-08 | 2025-07-19 | 8412SS+5d | 11% | start no earlier than 2025-03-08 | 7 Days Work | 9043044 |
| 29 | 36900.37000.37100.37700.86800 | Excavation & Pile Breaking | 37d | 2025-07-20 | 2025-08-25 | 28 |  |  | 7 Days Work | 9043045 |
| 30 | 36900.37000.37100.37700.86900 | Pilecap | 26d | 2025-08-26 | 2025-09-21 | 29FS+0.25d |  |  | 7 Days Work | 9043054 |
| 31 | 36900.37000.37100.37700.87000 | up to PL | 22d | 2025-09-21 | 2025-10-13 | 30 |  |  | 7 Days Work | 9043064 |
| 32 | 36900.37000.37100.37700.87100 | 1st Floor Slab RCC | 25d | 2025-10-13 | 2025-11-07 | 31 |  |  | 7 Days Work | 9043074 |
| 33 | 36900.37000.37100.37700.87200 | 2nd Floor Slab RCC | 25d | 2025-11-07 | 2025-12-02 | 32 |  |  | 7 Days Work | 9043084 |
| 34 | 36900.37000.37100.37700.87300 | 3rd Floor Slab RCC | 25d | 2025-12-02 | 2025-12-27 | 33 |  |  | 7 Days Work | 9043094 |
| 35 | 36900.37000.37100.37700.87400 | 4th Floor Slab RCC | 21d | 2025-12-27 | 2026-01-17 | 34 |  |  | 7 Days Work | 9043104 |
| 36 | 36900.37000.37100.37700.87500 | 5th Floor Slab RCC | 15d | 2026-01-17 | 2026-02-01 | 35 |  |  | 7 Days Work | 9043114 |
| 37 | 36900.37000.37100.37700.87600 | 6th Floor Slab RCC | 9d | 2026-02-01 | 2026-02-10 | 36 |  |  | 7 Days Work | 9043124 |
| 38 | 36900.37000.37100.37700.87700 | 7th Floor Slab RCC | 12d | 2026-02-10 | 2026-02-22 | 37 |  |  | 7 Days Work | 9043134 |
| 39 | 36900.37000.37100.37700.87800 | 8th Floor Slab RCC | 9d | 2026-02-22 | 2026-03-03 | 38 |  |  | 7 Days Work | 9043144 |
| 40 | 36900.37000.37100.37700.87900 | 9th Floor Slab RCC | 9d | 2026-03-03 | 2026-03-12 | 39 |  |  | 7 Days Work | 9043154 |
| 41 | 36900.37000.37100.37700.88000 | 10th Floor Slab RCC | 9d | 2026-03-12 | 2026-03-21 | 40 |  |  | 7 Days Work | 9043164 |
| 42 | 36900.37000.37100.37700.88100 | 11th Floor Slab RCC | 12d | 2026-03-21 | 2026-04-02 | 41 |  |  | 7 Days Work | 9043174 |
| 43 | 36900.37000.37100.37700.88200 | 12th Floor Slab RCC | 9d | 2026-04-02 | 2026-04-11 | 42 |  |  | 7 Days Work | 9043184 |
| 44 | 36900.37000.37100.37700.88300 | 13th Floor Slab RCC | 9d | 2026-04-11 | 2026-04-20 | 43 |  |  | 7 Days Work | 9043194 |
| 45 | 36900.37000.37100.37700.88400 | 14th Floor Slab RCC | 9d | 2026-04-20 | 2026-04-29 | 44 |  |  | 7 Days Work | 9043204 |
| 46 | 36900.37000.37100.37700.88500 | 15th Floor Slab RCC | 12d | 2026-04-29 | 2026-05-11 | 45 |  |  | 7 Days Work | 9043214 |
| 47 | 36900.37000.37100.37700.88600 | 16th Floor Slab RCC | 9d | 2026-05-11 | 2026-05-20 | 46 |  |  | 7 Days Work | 9043224 |
| 48 | 36900.37000.37100.37700.88700 | 17th Floor Slab RCC | 9d | 2026-05-20 | 2026-05-29 | 47 |  |  | 7 Days Work | 9043234 |
| 49 | 36900.37000.37100.37700.88800 | 18th Floor Slab RCC | 9d | 2026-05-29 | 2026-06-07 | 48 |  |  | 7 Days Work | 9043244 |
| 50 | 36900.37000.37100.37700.88900 | 19th Floor Slab RCC | 12d | 2026-06-07 | 2026-06-19 | 49 |  |  | 7 Days Work | 9043254 |
| 51 | 36900.37000.37100.37700.89000 | 20th Floor Slab RCC | 9d | 2026-06-19 | 2026-06-28 | 50 |  |  | 7 Days Work | 9043264 |
| 52 | 36900.37000.37100.37700.89100 | 21st Floor Slab RCC | 9d | 2026-06-28 | 2026-07-07 | 51 |  |  | 7 Days Work | 9043274 |
| 53 | 36900.37000.37100.37700.89200 | Terrace | 12d | 2026-07-07 | 2026-07-19 | 52 |  |  | 7 Days Work | 9043284 |
| 54 | 36900.37000.37100.37700.89300 | Above Terrace | 35d | 2026-07-19 | 2026-08-23 | 53 |  |  | 7 Days Work | 9043285 |

| ID | WBS | Task | Duration | Start | Finish | Predecessors | Constraint | Calendar | Unique_Task_ID |
| --- | --- | --- | --- | --- | --- | --- | --- | --- | --- |
| 55 | 36900.37000.37100.37700.38300 | **Flat Finishing** | 428d | 2026-02-01 | 2027-04-05 |  | start no earlier than 2026-02-01 | 7 Days Work | 9043296 |
| 56 | 36900.37000.37100.37700.38300.38600 | **1st Habitable/3rd Floor** | 245d | 2026-02-01 | 2026-10-04 |  | start no earlier than 2026-02-01 | 7 Days Work | 9043315 |
| 57 | 36900.37000.37100.37700.38300.38600.125400 | Post Pour | 7d | 2026-02-01 | 2026-02-08 | 35FS+15d |  | 7 Days Work | 9043286 |
| 58 | 36900.37000.37100.37700.38300.38600.125500 | MEP Clearance -1 | 5d | 2026-02-08 | 2026-02-13 | 57 |  | 7 Days Work | 9043287 |
| 59 | 36900.37000.37100.37700.38300.38600.125600 | Benchmark | 1d | 2026-02-13 | 2026-02-14 | 58 |  | 7 Days Work | 9043288 |
| 60 | 36900.37000.37100.37700.38300.38600.125700 | Temporary Railing | 3d | 2026-02-14 | 2026-02-17 | 59 |  | 7 Days Work | 9043289 |
| 61 | 36900.37000.37100.37700.38300.38600.125800 | Blockwork | 10d | 2026-02-17 | 2026-02-27 | 60 |  | 7 Days Work | 9043290 |
| 62 | 36900.37000.37100.37700.38300.38600.125900 | MEP Clearance -2 | 10d | 2026-02-27 | 2026-03-09 | 61 |  | 7 Days Work | 9043291 |
| 63 | 36900.37000.37100.37700.38300.38600.126000 | Gypsum Plaster | 14d | 2026-03-09 | 2026-03-23 | 62 |  | 7 Days Work | 9043292 |
| 64 | 36900.37000.37100.37700.38300.38600.126100 | Kitchen Platform | 3d | 2026-03-23 | 2026-03-26 | 63 |  | 7 Days Work | 9043293 |
| 65 | 36900.37000.37100.37700.38300.38600.126200 | Kitchen dado | 7d | 2026-03-26 | 2026-04-02 | 64 |  | 7 Days Work | 9043303 |
| 66 | 36900.37000.37100.37700.38300.38600.126300 | Fire Fighting | 5d | 2026-04-02 | 2026-04-07 | 65 |  | 7 Days Work | 9043313 |
| 67 | 36900.37000.37100.37700.38300.38600.126400 | Anticapilary | 5d | 2026-04-07 | 2026-04-12 | 66 |  | 7 Days Work | 9043323 |
| 68 | 36900.37000.37100.37700.38300.38600.126500 | Stone Laying | 10d | 2026-05-15 | 2026-05-25 | 108 |  | 7 Days Work | 9043333 |
| 69 | 36900.37000.37100.37700.38300.38600.126600 | Tiles Laying | 7d | 2026-05-15 | 2026-05-22 | 108 |  | 7 Days Work | 9043343 |
| 70 | 36900.37000.37100.37700.38300.38600.126700 | 1st cutting/polishing of stone flooring | 7d | 2026-05-22 | 2026-05-29 | 69 |  | 7 Days Work | 9043353 |
| 71 | 36900.37000.37100.37700.38300.38600.126800 | Tiles/Stone skirting | 5d | 2026-05-29 | 2026-06-03 | 70 |  | 7 Days Work | 9043363 |
| 72 | 36900.37000.37100.37700.38300.38600.126900 | Protechtion sheet | 1d | 2026-06-03 | 2026-06-04 | 71 |  | 7 Days Work | 9043373 |
| 73 | 36900.37000.37100.37700.38300.38600.127000 | Installation of Temporary Door | 1d | 2026-06-04 | 2026-06-05 | 72 |  | 7 Days Work | 9043383 |
| 74 | 36900.37000.37100.37700.38300.38600.127100 | Fixing of window tracks | 5d | 2026-06-05 | 2026-06-10 | 73 |  | 7 Days Work | 9043393 |
| 75 | 36900.37000.37100.37700.38300.38600.127200 | Wire Pulling | 7d | 2026-06-10 | 2026-06-17 | 74 |  | 7 Days Work | 9043403 |
| 76 | 36900.37000.37100.37700.38300.38600.127300 | Gypsum Remaining | 5d | 2026-06-17 | 2026-06-22 | 75 |  | 7 Days Work | 9043413 |
| 77 | 36900.37000.37100.37700.38300.38600.127400 | Fixing of windoow shutter | 5d | 2026-06-22 | 2026-06-27 | 76 |  | 7 Days Work | 9043423 |
| 78 | 36900.37000.37100.37700.38300.38600.127500 | Putty Works - walls & ceiling | 15d | 2026-06-27 | 2026-07-12 | 77 |  | 7 Days Work | 9043433 |
| 79 | 36900.37000.37100.37700.38300.38600.127600 | False Ceiling- Framing | 10d | 2026-07-12 | 2026-07-22 | 78 |  | 7 Days Work | 9043443 |
| 80 | 36900.37000.37100.37700.38300.38600.127700 | Pre Hung Door | 3d | 2026-07-22 | 2026-07-25 | 79 |  | 7 Days Work | 9043453 |
| 81 | 36900.37000.37100.37700.38300.38600.127800 | Protechtion sheet | 2d | 2026-07-25 | 2026-07-27 | 80 |  | 7 Days Work | 9043463 |
| 82 | 36900.37000.37100.37700.38300.38600.127900 | Skirting near door | 2d | 2026-07-27 | 2026-07-29 | 81 |  | 7 Days Work | 9043473 |
| 83 | 36900.37000.37100.37700.38300.38600.128000 | Electrical Switch box fixing | 14d | 2026-07-29 | 2026-08-12 | 82 |  | 7 Days Work | 9043483 |
| 84 | 36900.37000.37100.37700.38300.38600.128100 | Fire Fighting painting | 5d | 2026-08-12 | 2026-08-17 | 83 |  | 7 Days Work | 9043493 |
| 85 | 36900.37000.37100.37700.38300.38600.128200 | Protection of all flooring, door & window hardware | 5d | 2026-08-17 | 2026-08-22 | 84 |  | 7 Days Work | 9043503 |
| 86 | 36900.37000.37100.37700.38300.38600.128300 | 1st coat primer- ceiling 1st & walls | 14d | 2026-08-22 | 2026-09-05 | 85 |  | 7 Days Work | 9043513 |
| 87 | 36900.37000.37100.37700.38300.38600.128400 | Wooden Flooring | 5d | 2026-09-05 | 2026-09-10 | 86 |  | 7 Days Work | 9043523 |
| 88 | 36900.37000.37100.37700.38300.38600.128500 | Removing of Temporary Railing & installation of Glass Railing | 5d | 2026-09-05 | 2026-09-10 | 86 |  | 7 Days Work | 9152924 |
| 89 | 36900.37000.37100.37700.38300.38600.128600 | Tile Grouting | 7d | 2026-09-05 | 2026-09-12 | 86 |  | 7 Days Work | 9043533 |
| 90 | 36900.37000.37100.37700.38300.38600.128700 | False Ceiling | 5d | 2026-09-12 | 2026-09-17 | 89 |  | 7 Days Work | 9043543 |
| 91 | 36900.37000.37100.37700.38300.38600.128800 | 2nd coat of primer | 10d | 2026-09-17 | 2026-09-27 | 90 |  | 7 Days Work | 9043553 |
| 92 | 36900.37000.37100.37700.38300.38600.128900 | Final cutting/polishing of stone flooring | 7d | 2026-09-27 | 2026-10-04 | 91 |  | 7 Days Work | 9043563 |

| ID | WBS | Task | Duration | Start | Finish | Predecessors | Constraint | Calendar | Unique_Task_ID |
| --- | --- | --- | --- | --- | --- | --- | --- | --- | --- |
| 93 | 36900.37000.37100.37700.38300.38600.54500 | **Toilet** | 237d | 2026-02-08 | 2026-10-03 |  | start no earlier than 2026-02-08 | 7 Days Work | 9043573 |
| 94 | 36900.37000.37100.37700.38300.38600.54500.737600 | Toilet_MEP Clearance -1 | 7d | 2026-02-08 | 2026-02-15 | 57 |  | 7 Days Work | 9043583 |
| 95 | 36900.37000.37100.37700.38300.38600.54500.737700 | Toilet_Level Marking | 1d | 2026-02-15 | 2026-02-16 | 94 |  | 7 Days Work | 9043593 |
| 96 | 36900.37000.37100.37700.38300.38600.54500.737800 | Toilet_Chasing work for Electrical conduit & concealed plumbing | 5d | 2026-02-16 | 2026-02-21 | 95 |  | 7 Days Work | 9043603 |
| 97 | 36900.37000.37100.37700.38300.38600.54500.737900 | Toilet_Plumbing work 1st fix | 5d | 2026-02-21 | 2026-02-26 | 96 |  | 7 Days Work | 9043613 |
| 98 | 36900.37000.37100.37700.38300.38600.54500.738000 | Toilet_Sleeve/Bore Packing | 5d | 2026-02-26 | 2026-03-03 | 97 |  | 7 Days Work | 9043623 |
| 99 | 36900.37000.37100.37700.38300.38600.54500.738100 | Toilet_Waterproofing | 10d | 2026-03-03 | 2026-03-13 | 98 |  | 7 Days Work | 9043633 |
| 100 | 36900.37000.37100.37700.38300.38600.54500.738200 | Toilet_Screed | 1d | 2026-03-13 | 2026-03-14 | 99 |  | 7 Days Work | 9043643 |
| 101 | 36900.37000.37100.37700.38300.38600.54500.738300 | Toilet_Plumbing 2nd fix | 5d | 2026-03-14 | 2026-03-19 | 100 |  | 7 Days Work | 9043653 |
| 102 | 36900.37000.37100.37700.38300.38600.54500.738400 | Toilet_Ledge wall | 5d | 2026-03-19 | 2026-03-24 | 101 |  | 7 Days Work | 9043663 |
| 103 | 36900.37000.37100.37700.38300.38600.54500.738500 | Toilet_Cement Plaster | 5d | 2026-03-24 | 2026-03-29 | 102 |  | 7 Days Work | 9043673 |
| 104 | 36900.37000.37100.37700.38300.38600.54500.738600 | Toilet_Door Frame | 1d | 2026-03-29 | 2026-03-30 | 103 |  | 7 Days Work | 9043683 |
| 105 | 36900.37000.37100.37700.38300.38600.54500.738700 | Toilet_Wash basin & Couter | 3d | 2026-03-30 | 2026-04-02 | 104 |  | 7 Days Work | 9043693 |
| 106 | 36900.37000.37100.37700.38300.38600.54500.738800 | Toilet_Wall dado | 20d | 2026-04-02 | 2026-04-22 | 105 |  | 7 Days Work | 9043703 |
| 107 | 36900.37000.37100.37700.38300.38600.54500.738900 | Toilet_Granite Work-Ledge wall top | 3d | 2026-04-22 | 2026-04-25 | 106 |  | 7 Days Work | 9043713 |
| 108 | 36900.37000.37100.37700.38300.38600.54500.739000 | Toilet_Floor Tilling work | 20d | 2026-04-25 | 2026-05-15 | 107 |  | 7 Days Work | 9043723 |
| 109 | 36900.37000.37100.37700.38300.38600.54500.739100 | Toilet_1st row of dado | 5d | 2026-05-15 | 2026-05-20 | 108 |  | 7 Days Work | 9043733 |
| 110 | 36900.37000.37100.37700.38300.38600.54500.739200 | Toilet_Window Fixing | 14d | 2026-05-20 | 2026-06-03 | 109 |  | 7 Days Work | 9043743 |
| 111 | 36900.37000.37100.37700.38300.38600.54500.739300 | Toilet_Services above False ceiling | 21d | 2026-06-03 | 2026-06-24 | 110 |  | 7 Days Work | 9043753 |
| 112 | 36900.37000.37100.37700.38300.38600.54500.739400 | Toilet_False Ceiling framing | 12d | 2026-06-24 | 2026-07-06 | 111 |  | 7 Days Work | 9043763 |
| 113 | 36900.37000.37100.37700.38300.38600.54500.739500 | Toilet_Door Frame | 5d | 2026-07-06 | 2026-07-11 | 112 |  | 7 Days Work | 9043773 |
| 114 | 36900.37000.37100.37700.38300.38600.54500.739600 | Toilet_Epoxy Tile Grouting | 7d | 2026-09-05 | 2026-09-12 | 89SS |  | 7 Days Work | 9043783 |
| 115 | 36900.37000.37100.37700.38300.38600.54500.739700 | Toilet_False ceiling board fixing, CP Sanitary Fixture, Electric Fixture | 21d | 2026-09-12 | 2026-10-03 | 114 |  | 7 Days Work | 9043793 |
| 116 | 36900.37000.37100.37700.38300.38700 | **2nd Habitable/4th Floor** | 245d | 2026-02-16 | 2026-10-19 |  | start no earlier than 2026-02-16 | 7 Days Work | 9153104 |
| 117 | 36900.37000.37100.37700.38300.38700.129000 | Post Pour | 7d | 2026-02-16 | 2026-02-23 | 36FS+15d |  | 7 Days Work | 9153124 |
| 118 | 36900.37000.37100.37700.38300.38700.129100 | MEP Clearance -1 | 5d | 2026-02-23 | 2026-02-28 | 117 |  | 7 Days Work | 9153134 |
| 119 | 36900.37000.37100.37700.38300.38700.129200 | Benchmark | 1d | 2026-02-28 | 2026-03-01 | 118 |  | 7 Days Work | 9153144 |
| 120 | 36900.37000.37100.37700.38300.38700.129300 | Temporary Railing | 3d | 2026-03-01 | 2026-03-04 | 119 |  | 7 Days Work | 9153154 |
| 121 | 36900.37000.37100.37700.38300.38700.129400 | Blockwork | 10d | 2026-03-04 | 2026-03-14 | 120 |  | 7 Days Work | 9153164 |
| 122 | 36900.37000.37100.37700.38300.38700.129500 | MEP Clearance -2 | 10d | 2026-03-14 | 2026-03-24 | 121 |  | 7 Days Work | 9153174 |
| 123 | 36900.37000.37100.37700.38300.38700.129600 | Gypsum Plaster | 14d | 2026-03-24 | 2026-04-07 | 122 |  | 7 Days Work | 9153184 |
| 124 | 36900.37000.37100.37700.38300.38700.129700 | Kitchen Platform | 3d | 2026-04-07 | 2026-04-10 | 123 |  | 7 Days Work | 9153194 |
| 125 | 36900.37000.37100.37700.38300.38700.129800 | Kitchen dado | 7d | 2026-04-10 | 2026-04-17 | 124 |  | 7 Days Work | 9153204 |
| 126 | 36900.37000.37100.37700.38300.38700.129900 | Fire Fighting | 5d | 2026-04-17 | 2026-04-22 | 125 |  | 7 Days Work | 9153214 |
| 127 | 36900.37000.37100.37700.38300.38700.130000 | Anticapilary | 5d | 2026-04-22 | 2026-04-27 | 126 |  | 7 Days Work | 9153224 |
| 128 | 36900.37000.37100.37700.38300.38700.130100 | Stone Laying | 10d | 2026-05-30 | 2026-06-09 | 168 |  | 7 Days Work | 9153234 |
| 129 | 36900.37000.37100.37700.38300.38700.130200 | Tiles Laying | 7d | 2026-05-30 | 2026-06-06 | 168 |  | 7 Days Work | 9153244 |
| 130 | 36900.37000.37100.37700.38300.38700.130300 | 1st cutting/polishing of stone flooring | 7d | 2026-06-06 | 2026-06-13 | 129 |  | 7 Days Work | 9153254 |
| 131 | 36900.37000.37100.37700.38300.38700.130400 | Tiles/Stone skirting | 5d | 2026-06-13 | 2026-06-18 | 130 |  | 7 Days Work | 9153264 |
| 132 | 36900.37000.37100.37700.38300.38700.130500 | Protechtion sheet | 1d | 2026-06-18 | 2026-06-19 | 131 |  | 7 Days Work | 9153274 |
| 133 | 36900.37000.37100.37700.38300.38700.130600 | Installation of Temporary Door | 1d | 2026-06-19 | 2026-06-20 | 132 |  | 7 Days Work | 9153284 |
| 134 | 36900.37000.37100.37700.38300.38700.130700 | Fixing of window tracks | 5d | 2026-06-20 | 2026-06-25 | 133 |  | 7 Days Work | 9153294 |
| 135 | 36900.37000.37100.37700.38300.38700.130800 | Wire Pulling | 7d | 2026-06-25 | 2026-07-02 | 134 |  | 7 Days Work | 9153304 |
| 136 | 36900.37000.37100.37700.38300.38700.130900 | Gypsum Remaining | 5d | 2026-07-02 | 2026-07-07 | 135 |  | 7 Days Work | 9153314 |
| 137 | 36900.37000.37100.37700.38300.38700.131000 | Fixing of windoow shutter | 5d | 2026-07-07 | 2026-07-12 | 136 |  | 7 Days Work | 9153324 |
| 138 | 36900.37000.37100.37700.38300.38700.131100 | Putty Works - walls & ceiling | 15d | 2026-07-12 | 2026-07-27 | 137 |  | 7 Days Work | 9153334 |
| 139 | 36900.37000.37100.37700.38300.38700.131200 | False Ceiling- Framing | 10d | 2026-07-27 | 2026-08-06 | 138 |  | 7 Days Work | 9153344 |
| 140 | 36900.37000.37100.37700.38300.38700.131300 | Pre Hung Door | 3d | 2026-08-06 | 2026-08-09 | 139 |  | 7 Days Work | 9153354 |
| 141 | 36900.37000.37100.37700.38300.38700.131400 | Protechtion sheet | 2d | 2026-08-09 | 2026-08-11 | 140 |  | 7 Days Work | 9153364 |
| 142 | 36900.37000.37100.37700.38300.38700.131500 | Skirting near door | 2d | 2026-08-11 | 2026-08-13 | 141 |  | 7 Days Work | 9153374 |
| 143 | 36900.37000.37100.37700.38300.38700.131600 | Electrical Switch box fixing | 14d | 2026-08-13 | 2026-08-27 | 142 |  | 7 Days Work | 9153384 |
| 144 | 36900.37000.37100.37700.38300.38700.131700 | Fire Fighting painting | 5d | 2026-08-27 | 2026-09-01 | 143 |  | 7 Days Work | 9153394 |
| 145 | 36900.37000.37100.37700.38300.38700.131800 | Protection of all flooring, door & window hardware | 5d | 2026-09-01 | 2026-09-06 | 144 |  | 7 Days Work | 9153404 |
| 146 | 36900.37000.37100.37700.38300.38700.131900 | 1st coat primer- ceiling 1st & walls | 14d | 2026-09-06 | 2026-09-20 | 145 |  | 7 Days Work | 9153414 |
| 147 | 36900.37000.37100.37700.38300.38700.132000 | Wooden Flooring | 5d | 2026-09-20 | 2026-09-25 | 146 |  | 7 Days Work | 9153424 |
| 148 | 36900.37000.37100.37700.38300.38700.132100 | Removing of Temporary Railing & installation of Glass Railing | 5d | 2026-09-20 | 2026-09-25 | 146 |  | 7 Days Work | 9153434 |
| 149 | 36900.37000.37100.37700.38300.38700.132200 | Tile Grouting | 7d | 2026-09-20 | 2026-09-27 | 146 |  | 7 Days Work | 9153444 |
| 150 | 36900.37000.37100.37700.38300.38700.132300 | False Ceiling | 5d | 2026-09-27 | 2026-10-02 | 149 |  | 7 Days Work | 9153454 |
| 151 | 36900.37000.37100.37700.38300.38700.132400 | 2nd coat of primer | 10d | 2026-10-02 | 2026-10-12 | 150 |  | 7 Days Work | 9153464 |
| 152 | 36900.37000.37100.37700.38300.38700.132500 | Final cutting/polishing of stone flooring | 7d | 2026-10-12 | 2026-10-19 | 151 |  | 7 Days Work | 9153474 |

| ID | WBS | Task | Duration | Start | Finish | Predecessors | Constraint | Calendar | Unique_Task_ID |
| --- | --- | --- | --- | --- | --- | --- | --- | --- | --- |
| 153 | 36900.37000.37100.37700.38300.38700.54600 | **Toilet** | 237d | 2026-02-23 | 2026-10-18 |  | start no earlier than 2026-02-23 | 7 Days Work | 9153114 |
| 154 | 36900.37000.37100.37700.38300.38700.54600.739800 | Toilet_MEP Clearance -1 | 7d | 2026-02-23 | 2026-03-02 | 117 |  | 7 Days Work | 9153484 |
| 155 | 36900.37000.37100.37700.38300.38700.54600.739900 | Toilet_Level Marking | 1d | 2026-03-02 | 2026-03-03 | 154 |  | 7 Days Work | 9153494 |
| 156 | 36900.37000.37100.37700.38300.38700.54600.740000 | Toilet_Chasing work for Electrical conduit & concealed plumbing | 5d | 2026-03-03 | 2026-03-08 | 155 |  | 7 Days Work | 9153504 |
| 157 | 36900.37000.37100.37700.38300.38700.54600.740100 | Toilet_Plumbing work 1st fix | 5d | 2026-03-08 | 2026-03-13 | 156 |  | 7 Days Work | 9153514 |
| 158 | 36900.37000.37100.37700.38300.38700.54600.740200 | Toilet_Sleeve/Bore Packing | 5d | 2026-03-13 | 2026-03-18 | 157 |  | 7 Days Work | 9153524 |
| 159 | 36900.37000.37100.37700.38300.38700.54600.740300 | Toilet_Waterproofing | 10d | 2026-03-18 | 2026-03-28 | 158 |  | 7 Days Work | 9153534 |
| 160 | 36900.37000.37100.37700.38300.38700.54600.740400 | Toilet_Screed | 1d | 2026-03-28 | 2026-03-29 | 159 |  | 7 Days Work | 9153544 |
| 161 | 36900.37000.37100.37700.38300.38700.54600.740500 | Toilet_Plumbing 2nd fix | 5d | 2026-03-29 | 2026-04-03 | 160 |  | 7 Days Work | 9153554 |
| 162 | 36900.37000.37100.37700.38300.38700.54600.740600 | Toilet_Ledge wall | 5d | 2026-04-03 | 2026-04-08 | 161 |  | 7 Days Work | 9153564 |
| 163 | 36900.37000.37100.37700.38300.38700.54600.740700 | Toilet_Cement Plaster | 5d | 2026-04-08 | 2026-04-13 | 162 |  | 7 Days Work | 9153574 |
| 164 | 36900.37000.37100.37700.38300.38700.54600.740800 | Toilet_Door Frame | 1d | 2026-04-13 | 2026-04-14 | 163 |  | 7 Days Work | 9153584 |
| 165 | 36900.37000.37100.37700.38300.38700.54600.740900 | Toilet_Wash basin & Couter | 3d | 2026-04-14 | 2026-04-17 | 164 |  | 7 Days Work | 9153594 |
| 166 | 36900.37000.37100.37700.38300.38700.54600.741000 | Toilet_Wall dado | 20d | 2026-04-17 | 2026-05-07 | 165 |  | 7 Days Work | 9153604 |
| 167 | 36900.37000.37100.37700.38300.38700.54600.741100 | Toilet_Granite Work-Ledge wall top | 3d | 2026-05-07 | 2026-05-10 | 166 |  | 7 Days Work | 9153614 |
| 168 | 36900.37000.37100.37700.38300.38700.54600.741200 | Toilet_Floor Tilling work | 20d | 2026-05-10 | 2026-05-30 | 167 |  | 7 Days Work | 9153624 |
| 169 | 36900.37000.37100.37700.38300.38700.54600.741300 | Toilet_1st row of dado | 5d | 2026-05-30 | 2026-06-04 | 168 |  | 7 Days Work | 9153634 |
| 170 | 36900.37000.37100.37700.38300.38700.54600.741400 | Toilet_Window Fixing | 14d | 2026-06-04 | 2026-06-18 | 169 |  | 7 Days Work | 9153644 |
| 171 | 36900.37000.37100.37700.38300.38700.54600.741500 | Toilet_Services above False ceiling | 21d | 2026-06-18 | 2026-07-09 | 170 |  | 7 Days Work | 9153654 |
| 172 | 36900.37000.37100.37700.38300.38700.54600.741600 | Toilet_False Ceiling framing | 12d | 2026-07-09 | 2026-07-21 | 171 |  | 7 Days Work | 9153664 |
| 173 | 36900.37000.37100.37700.38300.38700.54600.741700 | Toilet_Door Frame | 5d | 2026-07-21 | 2026-07-26 | 172 |  | 7 Days Work | 9153674 |
| 174 | 36900.37000.37100.37700.38300.38700.54600.741800 | Toilet_Epoxy Tile Grouting | 7d | 2026-09-20 | 2026-09-27 | 149SS |  | 7 Days Work | 9153684 |
| 175 | 36900.37000.37100.37700.38300.38700.54600.741900 | Toilet_False ceiling board fixing, CP Sanitary Fixture, Electric Fixture | 21d | 2026-09-27 | 2026-10-18 | 174 |  | 7 Days Work | 9153694 |
| 176 | 36900.37000.37100.37700.38300.38800 | **3rd Habitable/5th Floor** | 245d | 2026-02-25 | 2026-10-28 |  | start no earlier than 2026-02-25 | 7 Days Work | 9153704 |
| 177 | 36900.37000.37100.37700.38300.38800.132600 | Post Pour | 7d | 2026-02-25 | 2026-03-04 | 37FS+15d |  | 7 Days Work | 9153744 |
| 178 | 36900.37000.37100.37700.38300.38800.132700 | MEP Clearance -1 | 5d | 2026-03-04 | 2026-03-09 | 177 |  | 7 Days Work | 9153754 |
| 179 | 36900.37000.37100.37700.38300.38800.132800 | Benchmark | 1d | 2026-03-09 | 2026-03-10 | 178 |  | 7 Days Work | 9153764 |
| 180 | 36900.37000.37100.37700.38300.38800.132900 | Temporary Railing | 3d | 2026-03-10 | 2026-03-13 | 179 |  | 7 Days Work | 9153774 |
| 181 | 36900.37000.37100.37700.38300.38800.133000 | Blockwork | 10d | 2026-03-13 | 2026-03-23 | 180 |  | 7 Days Work | 9153784 |
| 182 | 36900.37000.37100.37700.38300.38800.133100 | MEP Clearance -2 | 10d | 2026-03-23 | 2026-04-02 | 181 |  | 7 Days Work | 9153794 |
| 183 | 36900.37000.37100.37700.38300.38800.133200 | Gypsum Plaster | 14d | 2026-04-02 | 2026-04-16 | 182 |  | 7 Days Work | 9153804 |
| 184 | 36900.37000.37100.37700.38300.38800.133300 | Kitchen Platform | 3d | 2026-04-16 | 2026-04-19 | 183 |  | 7 Days Work | 9153814 |
| 185 | 36900.37000.37100.37700.38300.38800.133400 | Kitchen dado | 7d | 2026-04-19 | 2026-04-26 | 184 |  | 7 Days Work | 9153824 |
| 186 | 36900.37000.37100.37700.38300.38800.133500 | Fire Fighting | 5d | 2026-04-26 | 2026-05-01 | 185 |  | 7 Days Work | 9153834 |
| 187 | 36900.37000.37100.37700.38300.38800.133600 | Anticapilary | 5d | 2026-05-01 | 2026-05-06 | 186 |  | 7 Days Work | 9153844 |
| 188 | 36900.37000.37100.37700.38300.38800.133700 | Stone Laying | 10d | 2026-06-08 | 2026-06-18 | 228 |  | 7 Days Work | 9153854 |
| 189 | 36900.37000.37100.37700.38300.38800.133800 | Tiles Laying | 7d | 2026-06-08 | 2026-06-15 | 228 |  | 7 Days Work | 9153864 |
| 190 | 36900.37000.37100.37700.38300.38800.133900 | 1st cutting/polishing of stone flooring | 7d | 2026-06-15 | 2026-06-22 | 189 |  | 7 Days Work | 9153874 |
| 191 | 36900.37000.37100.37700.38300.38800.134000 | Tiles/Stone skirting | 5d | 2026-06-22 | 2026-06-27 | 190 |  | 7 Days Work | 9153884 |
| 192 | 36900.37000.37100.37700.38300.38800.134100 | Protechtion sheet | 1d | 2026-06-27 | 2026-06-28 | 191 |  | 7 Days Work | 9153894 |
| 193 | 36900.37000.37100.37700.38300.38800.134200 | Installation of Temporary Door | 1d | 2026-06-28 | 2026-06-29 | 192 |  | 7 Days Work | 9153904 |
| 194 | 36900.37000.37100.37700.38300.38800.134300 | Fixing of window tracks | 5d | 2026-06-29 | 2026-07-04 | 193 |  | 7 Days Work | 9153914 |
| 195 | 36900.37000.37100.37700.38300.38800.134400 | Wire Pulling | 7d | 2026-07-04 | 2026-07-11 | 194 |  | 7 Days Work | 9153924 |
| 196 | 36900.37000.37100.37700.38300.38800.134500 | Gypsum Remaining | 5d | 2026-07-11 | 2026-07-16 | 195 |  | 7 Days Work | 9153934 |
| 197 | 36900.37000.37100.37700.38300.38800.134600 | Fixing of windoow shutter | 5d | 2026-07-16 | 2026-07-21 | 196 |  | 7 Days Work | 9153944 |
| 198 | 36900.37000.37100.37700.38300.38800.134700 | Putty Works - walls & ceiling | 15d | 2026-07-21 | 2026-08-05 | 197 |  | 7 Days Work | 9153954 |
| 199 | 36900.37000.37100.37700.38300.38800.134800 | False Ceiling- Framing | 10d | 2026-08-05 | 2026-08-15 | 198 |  | 7 Days Work | 9153964 |
| 200 | 36900.37000.37100.37700.38300.38800.134900 | Pre Hung Door | 3d | 2026-08-15 | 2026-08-18 | 199 |  | 7 Days Work | 9153974 |
| 201 | 36900.37000.37100.37700.38300.38800.135000 | Protechtion sheet | 2d | 2026-08-18 | 2026-08-20 | 200 |  | 7 Days Work | 9153984 |
| 202 | 36900.37000.37100.37700.38300.38800.135100 | Skirting near door | 2d | 2026-08-20 | 2026-08-22 | 201 |  | 7 Days Work | 9153994 |
| 203 | 36900.37000.37100.37700.38300.38800.135200 | Electrical Switch box fixing | 14d | 2026-08-22 | 2026-09-05 | 202 |  | 7 Days Work | 9154004 |
| 204 | 36900.37000.37100.37700.38300.38800.135300 | Fire Fighting painting | 5d | 2026-09-05 | 2026-09-10 | 203 |  | 7 Days Work | 9154014 |
| 205 | 36900.37000.37100.37700.38300.38800.135400 | Protection of all flooring, door & window hardware | 5d | 2026-09-10 | 2026-09-15 | 204 |  | 7 Days Work | 9154024 |
| 206 | 36900.37000.37100.37700.38300.38800.135500 | 1st coat primer- ceiling 1st & walls | 14d | 2026-09-15 | 2026-09-29 | 205 |  | 7 Days Work | 9154034 |
| 207 | 36900.37000.37100.37700.38300.38800.135600 | Wooden Flooring | 5d | 2026-09-29 | 2026-10-04 | 206 |  | 7 Days Work | 9154044 |
| 208 | 36900.37000.37100.37700.38300.38800.135700 | Removing of Temporary Railing & installation of Glass Railing | 5d | 2026-09-29 | 2026-10-04 | 206 |  | 7 Days Work | 9154054 |
| 209 | 36900.37000.37100.37700.38300.38800.135800 | Tile Grouting | 7d | 2026-09-29 | 2026-10-06 | 206 |  | 7 Days Work | 9154064 |
| 210 | 36900.37000.37100.37700.38300.38800.135900 | False Ceiling | 5d | 2026-10-06 | 2026-10-11 | 209 |  | 7 Days Work | 9154074 |
| 211 | 36900.37000.37100.37700.38300.38800.136000 | 2nd coat of primer | 10d | 2026-10-11 | 2026-10-21 | 210 |  | 7 Days Work | 9154084 |
| 212 | 36900.37000.37100.37700.38300.38800.136100 | Final cutting/polishing of stone flooring | 7d | 2026-10-21 | 2026-10-28 | 211 |  | 7 Days Work | 9154094 |

| ID | WBS | Task | Duration | Start | Finish | Predecessors | Constraint | Calendar | Unique_Task_ID |
| --- | --- | --- | --- | --- | --- | --- | --- | --- | --- |
| 213 | 36900.37000.37100.37700.38300.38800.54700 | **Toilet** | 237d | 2026-03-04 | 2026-10-27 |  | start no earlier than 2026-03-04 | 7 Days Work | 9153724 |
| 214 | 36900.37000.37100.37700.38300.38800.54700.742000 | Toilet_MEP Clearance -1 | 7d | 2026-03-04 | 2026-03-11 | 177 |  | 7 Days Work | 9154464 |
| 215 | 36900.37000.37100.37700.38300.38800.54700.742100 | Toilet_Level Marking | 1d | 2026-03-11 | 2026-03-12 | 214 |  | 7 Days Work | 9154474 |
| 216 | 36900.37000.37100.37700.38300.38800.54700.742200 | Toilet_Chasing work for Electrical conduit & concealed plumbing | 5d | 2026-03-12 | 2026-03-17 | 215 |  | 7 Days Work | 9154484 |
| 217 | 36900.37000.37100.37700.38300.38800.54700.742300 | Toilet_Plumbing work 1st fix | 5d | 2026-03-17 | 2026-03-22 | 216 |  | 7 Days Work | 9154494 |
| 218 | 36900.37000.37100.37700.38300.38800.54700.742400 | Toilet_Sleeve/Bore Packing | 5d | 2026-03-22 | 2026-03-27 | 217 |  | 7 Days Work | 9154504 |
| 219 | 36900.37000.37100.37700.38300.38800.54700.742500 | Toilet_Waterproofing | 10d | 2026-03-27 | 2026-04-06 | 218 |  | 7 Days Work | 9154514 |
| 220 | 36900.37000.37100.37700.38300.38800.54700.742600 | Toilet_Screed | 1d | 2026-04-06 | 2026-04-07 | 219 |  | 7 Days Work | 9154524 |
| 221 | 36900.37000.37100.37700.38300.38800.54700.742700 | Toilet_Plumbing 2nd fix | 5d | 2026-04-07 | 2026-04-12 | 220 |  | 7 Days Work | 9154534 |
| 222 | 36900.37000.37100.37700.38300.38800.54700.742800 | Toilet_Ledge wall | 5d | 2026-04-12 | 2026-04-17 | 221 |  | 7 Days Work | 9154544 |
| 223 | 36900.37000.37100.37700.38300.38800.54700.742900 | Toilet_Cement Plaster | 5d | 2026-04-17 | 2026-04-22 | 222 |  | 7 Days Work | 9154554 |
| 224 | 36900.37000.37100.37700.38300.38800.54700.743000 | Toilet_Door Frame | 1d | 2026-04-22 | 2026-04-23 | 223 |  | 7 Days Work | 9154564 |
| 225 | 36900.37000.37100.37700.38300.38800.54700.743100 | Toilet_Wash basin & Couter | 3d | 2026-04-23 | 2026-04-26 | 224 |  | 7 Days Work | 9154574 |
| 226 | 36900.37000.37100.37700.38300.38800.54700.743200 | Toilet_Wall dado | 20d | 2026-04-26 | 2026-05-16 | 225 |  | 7 Days Work | 9154584 |
| 227 | 36900.37000.37100.37700.38300.38800.54700.743300 | Toilet_Granite Work-Ledge wall top | 3d | 2026-05-16 | 2026-05-19 | 226 |  | 7 Days Work | 9154594 |
| 228 | 36900.37000.37100.37700.38300.38800.54700.743400 | Toilet_Floor Tilling work | 20d | 2026-05-19 | 2026-06-08 | 227 |  | 7 Days Work | 9154604 |
| 229 | 36900.37000.37100.37700.38300.38800.54700.743500 | Toilet_1st row of dado | 5d | 2026-06-08 | 2026-06-13 | 228 |  | 7 Days Work | 9154614 |
| 230 | 36900.37000.37100.37700.38300.38800.54700.743600 | Toilet_Window Fixing | 14d | 2026-06-13 | 2026-06-27 | 229 |  | 7 Days Work | 9154624 |
| 231 | 36900.37000.37100.37700.38300.38800.54700.743700 | Toilet_Services above False ceiling | 21d | 2026-06-27 | 2026-07-18 | 230 |  | 7 Days Work | 9154634 |
| 232 | 36900.37000.37100.37700.38300.38800.54700.743800 | Toilet_False Ceiling framing | 12d | 2026-07-18 | 2026-07-30 | 231 |  | 7 Days Work | 9154644 |
| 233 | 36900.37000.37100.37700.38300.38800.54700.743900 | Toilet_Door Frame | 5d | 2026-07-30 | 2026-08-04 | 232 |  | 7 Days Work | 9154654 |
| 234 | 36900.37000.37100.37700.38300.38800.54700.744000 | Toilet_Epoxy Tile Grouting | 7d | 2026-09-29 | 2026-10-06 | 209SS |  | 7 Days Work | 9154664 |
| 235 | 36900.37000.37100.37700.38300.38800.54700.744100 | Toilet_False ceiling board fixing, CP Sanitary Fixture, Electric Fixture | 21d | 2026-10-06 | 2026-10-27 | 234 |  | 7 Days Work | 9154674 |
| 236 | 36900.37000.37100.37700.38300.38900 | **4th Habitable/6th Floor** | 245d | 2026-03-09 | 2026-11-09 |  | start no earlier than 2026-03-09 | 7 Days Work | 9153714 |
| 237 | 36900.37000.37100.37700.38300.38900.136200 | Post Pour | 7d | 2026-03-09 | 2026-03-16 | 38FS+15d |  | 7 Days Work | 9154104 |
| 238 | 36900.37000.37100.37700.38300.38900.136300 | MEP Clearance -1 | 5d | 2026-03-16 | 2026-03-21 | 237 |  | 7 Days Work | 9154114 |
| 239 | 36900.37000.37100.37700.38300.38900.136400 | Benchmark | 1d | 2026-03-21 | 2026-03-22 | 238 |  | 7 Days Work | 9154124 |
| 240 | 36900.37000.37100.37700.38300.38900.136500 | Temporary Railing | 3d | 2026-03-22 | 2026-03-25 | 239 |  | 7 Days Work | 9154134 |
| 241 | 36900.37000.37100.37700.38300.38900.136600 | Blockwork | 10d | 2026-03-25 | 2026-04-04 | 240 |  | 7 Days Work | 9154144 |
| 242 | 36900.37000.37100.37700.38300.38900.136700 | MEP Clearance -2 | 10d | 2026-04-04 | 2026-04-14 | 241 |  | 7 Days Work | 9154154 |
| 243 | 36900.37000.37100.37700.38300.38900.136800 | Gypsum Plaster | 14d | 2026-04-14 | 2026-04-28 | 242 |  | 7 Days Work | 9154164 |
| 244 | 36900.37000.37100.37700.38300.38900.136900 | Kitchen Platform | 3d | 2026-04-28 | 2026-05-01 | 243 |  | 7 Days Work | 9154174 |
| 245 | 36900.37000.37100.37700.38300.38900.137000 | Kitchen dado | 7d | 2026-05-01 | 2026-05-08 | 244 |  | 7 Days Work | 9154184 |
| 246 | 36900.37000.37100.37700.38300.38900.137100 | Fire Fighting | 5d | 2026-05-08 | 2026-05-13 | 245 |  | 7 Days Work | 9154194 |
| 247 | 36900.37000.37100.37700.38300.38900.137200 | Anticapilary | 5d | 2026-05-13 | 2026-05-18 | 246 |  | 7 Days Work | 9154204 |
| 248 | 36900.37000.37100.37700.38300.38900.137300 | Stone Laying | 10d | 2026-06-20 | 2026-06-30 | 288 |  | 7 Days Work | 9154214 |
| 249 | 36900.37000.37100.37700.38300.38900.137400 | Tiles Laying | 7d | 2026-06-20 | 2026-06-27 | 288 |  | 7 Days Work | 9154224 |
| 250 | 36900.37000.37100.37700.38300.38900.137500 | 1st cutting/polishing of stone flooring | 7d | 2026-06-27 | 2026-07-04 | 249 |  | 7 Days Work | 9154234 |
| 251 | 36900.37000.37100.37700.38300.38900.137600 | Tiles/Stone skirting | 5d | 2026-07-04 | 2026-07-09 | 250 |  | 7 Days Work | 9154244 |
| 252 | 36900.37000.37100.37700.38300.38900.137700 | Protechtion sheet | 1d | 2026-07-09 | 2026-07-10 | 251 |  | 7 Days Work | 9154254 |
| 253 | 36900.37000.37100.37700.38300.38900.137800 | Installation of Temporary Door | 1d | 2026-07-10 | 2026-07-11 | 252 |  | 7 Days Work | 9154264 |
| 254 | 36900.37000.37100.37700.38300.38900.137900 | Fixing of window tracks | 5d | 2026-07-11 | 2026-07-16 | 253 |  | 7 Days Work | 9154274 |
| 255 | 36900.37000.37100.37700.38300.38900.138000 | Wire Pulling | 7d | 2026-07-16 | 2026-07-23 | 254 |  | 7 Days Work | 9154284 |
| 256 | 36900.37000.37100.37700.38300.38900.138100 | Gypsum Remaining | 5d | 2026-07-23 | 2026-07-28 | 255 |  | 7 Days Work | 9154294 |
| 257 | 36900.37000.37100.37700.38300.38900.138200 | Fixing of windoow shutter | 5d | 2026-07-28 | 2026-08-02 | 256 |  | 7 Days Work | 9154304 |
| 258 | 36900.37000.37100.37700.38300.38900.138300 | Putty Works - walls & ceiling | 15d | 2026-08-02 | 2026-08-17 | 257 |  | 7 Days Work | 9154314 |
| 259 | 36900.37000.37100.37700.38300.38900.138400 | False Ceiling- Framing | 10d | 2026-08-17 | 2026-08-27 | 258 |  | 7 Days Work | 9154324 |
| 260 | 36900.37000.37100.37700.38300.38900.138500 | Pre Hung Door | 3d | 2026-08-27 | 2026-08-30 | 259 |  | 7 Days Work | 9154334 |
| 261 | 36900.37000.37100.37700.38300.38900.138600 | Protechtion sheet | 2d | 2026-08-30 | 2026-09-01 | 260 |  | 7 Days Work | 9154344 |
| 262 | 36900.37000.37100.37700.38300.38900.138700 | Skirting near door | 2d | 2026-09-01 | 2026-09-03 | 261 |  | 7 Days Work | 9154354 |
| 263 | 36900.37000.37100.37700.38300.38900.138800 | Electrical Switch box fixing | 14d | 2026-09-03 | 2026-09-17 | 262 |  | 7 Days Work | 9154364 |
| 264 | 36900.37000.37100.37700.38300.38900.138900 | Fire Fighting painting | 5d | 2026-09-17 | 2026-09-22 | 263 |  | 7 Days Work | 9154374 |
| 265 | 36900.37000.37100.37700.38300.38900.139000 | Protection of all flooring, door & window hardware | 5d | 2026-09-22 | 2026-09-27 | 264 |  | 7 Days Work | 9154384 |
| 266 | 36900.37000.37100.37700.38300.38900.139100 | 1st coat primer- ceiling 1st & walls | 14d | 2026-09-27 | 2026-10-11 | 265 |  | 7 Days Work | 9154394 |
| 267 | 36900.37000.37100.37700.38300.38900.139200 | Wooden Flooring | 5d | 2026-10-11 | 2026-10-16 | 266 |  | 7 Days Work | 9154404 |
| 268 | 36900.37000.37100.37700.38300.38900.139300 | Removing of Temporary Railing & installation of Glass Railing | 5d | 2026-10-11 | 2026-10-16 | 266 |  | 7 Days Work | 9154414 |
| 269 | 36900.37000.37100.37700.38300.38900.139400 | Tile Grouting | 7d | 2026-10-11 | 2026-10-18 | 266 |  | 7 Days Work | 9154424 |
| 270 | 36900.37000.37100.37700.38300.38900.139500 | False Ceiling | 5d | 2026-10-18 | 2026-10-23 | 269 |  | 7 Days Work | 9154434 |
| 271 | 36900.37000.37100.37700.38300.38900.139600 | 2nd coat of primer | 10d | 2026-10-23 | 2026-11-02 | 270 |  | 7 Days Work | 9154444 |
| 272 | 36900.37000.37100.37700.38300.38900.139700 | Final cutting/polishing of stone flooring | 7d | 2026-11-02 | 2026-11-09 | 271 |  | 7 Days Work | 9154454 |

| ID | WBS | Task | Duration | Start | Finish | Predecessors | Constraint | Calendar | Unique_Task_ID |
| --- | --- | --- | --- | --- | --- | --- | --- | --- | --- |
| 273 | 36900.37000.37100.37700.38300.38900.54800 | **Toilet** | 237d | 2026-03-16 | 2026-11-08 |  | start no earlier than 2026-03-16 | 7 Days Work | 9153734 |
| 274 | 36900.37000.37100.37700.38300.38900.54800.744200 | Toilet_MEP Clearance -1 | 7d | 2026-03-16 | 2026-03-23 | 237 |  | 7 Days Work | 9154684 |
| 275 | 36900.37000.37100.37700.38300.38900.54800.744300 | Toilet_Level Marking | 1d | 2026-03-23 | 2026-03-24 | 274 |  | 7 Days Work | 9154694 |
| 276 | 36900.37000.37100.37700.38300.38900.54800.744400 | Toilet_Chasing work for Electrical conduit & concealed plumbing | 5d | 2026-03-24 | 2026-03-29 | 275 |  | 7 Days Work | 9154704 |
| 277 | 36900.37000.37100.37700.38300.38900.54800.744500 | Toilet_Plumbing work 1st fix | 5d | 2026-03-29 | 2026-04-03 | 276 |  | 7 Days Work | 9154714 |
| 278 | 36900.37000.37100.37700.38300.38900.54800.744600 | Toilet_Sleeve/Bore Packing | 5d | 2026-04-03 | 2026-04-08 | 277 |  | 7 Days Work | 9154724 |
| 279 | 36900.37000.37100.37700.38300.38900.54800.744700 | Toilet_Waterproofing | 10d | 2026-04-08 | 2026-04-18 | 278 |  | 7 Days Work | 9154734 |
| 280 | 36900.37000.37100.37700.38300.38900.54800.744800 | Toilet_Screed | 1d | 2026-04-18 | 2026-04-19 | 279 |  | 7 Days Work | 9154744 |
| 281 | 36900.37000.37100.37700.38300.38900.54800.744900 | Toilet_Plumbing 2nd fix | 5d | 2026-04-19 | 2026-04-24 | 280 |  | 7 Days Work | 9154754 |
| 282 | 36900.37000.37100.37700.38300.38900.54800.745000 | Toilet_Ledge wall | 5d | 2026-04-24 | 2026-04-29 | 281 |  | 7 Days Work | 9154764 |
| 283 | 36900.37000.37100.37700.38300.38900.54800.745100 | Toilet_Cement Plaster | 5d | 2026-04-29 | 2026-05-04 | 282 |  | 7 Days Work | 9154774 |
| 284 | 36900.37000.37100.37700.38300.38900.54800.745200 | Toilet_Door Frame | 1d | 2026-05-04 | 2026-05-05 | 283 |  | 7 Days Work | 9154784 |
| 285 | 36900.37000.37100.37700.38300.38900.54800.745300 | Toilet_Wash basin & Couter | 3d | 2026-05-05 | 2026-05-08 | 284 |  | 7 Days Work | 9154794 |
| 286 | 36900.37000.37100.37700.38300.38900.54800.745400 | Toilet_Wall dado | 20d | 2026-05-08 | 2026-05-28 | 285 |  | 7 Days Work | 9154804 |
| 287 | 36900.37000.37100.37700.38300.38900.54800.745500 | Toilet_Granite Work-Ledge wall top | 3d | 2026-05-28 | 2026-05-31 | 286 |  | 7 Days Work | 9154814 |
| 288 | 36900.37000.37100.37700.38300.38900.54800.745600 | Toilet_Floor Tilling work | 20d | 2026-05-31 | 2026-06-20 | 287 |  | 7 Days Work | 9154824 |
| 289 | 36900.37000.37100.37700.38300.38900.54800.745700 | Toilet_1st row of dado | 5d | 2026-06-20 | 2026-06-25 | 288 |  | 7 Days Work | 9154834 |
| 290 | 36900.37000.37100.37700.38300.38900.54800.745800 | Toilet_Window Fixing | 14d | 2026-06-25 | 2026-07-09 | 289 |  | 7 Days Work | 9154844 |
| 291 | 36900.37000.37100.37700.38300.38900.54800.745900 | Toilet_Services above False ceiling | 21d | 2026-07-09 | 2026-07-30 | 290 |  | 7 Days Work | 9154854 |
| 292 | 36900.37000.37100.37700.38300.38900.54800.746000 | Toilet_False Ceiling framing | 12d | 2026-07-30 | 2026-08-11 | 291 |  | 7 Days Work | 9154864 |
| 293 | 36900.37000.37100.37700.38300.38900.54800.746100 | Toilet_Door Frame | 5d | 2026-08-11 | 2026-08-16 | 292 |  | 7 Days Work | 9154874 |
| 294 | 36900.37000.37100.37700.38300.38900.54800.746200 | Toilet_Epoxy Tile Grouting | 7d | 2026-10-11 | 2026-10-18 | 269SS |  | 7 Days Work | 9154884 |
| 295 | 36900.37000.37100.37700.38300.38900.54800.746300 | Toilet_False ceiling board fixing, CP Sanitary Fixture, Electric Fixture | 21d | 2026-10-18 | 2026-11-08 | 294 |  | 7 Days Work | 9154894 |
| 296 | 36900.37000.37100.37700.38300.39000 | **5th Habitable/7th Floor** | 245d | 2026-03-18 | 2026-11-18 |  | start no earlier than 2026-03-18 | 7 Days Work | 9154904 |
| 297 | 36900.37000.37100.37700.38300.39000.139800 | Post Pour | 7d | 2026-03-18 | 2026-03-25 | 39FS+15d |  | 7 Days Work | 9154984 |
| 298 | 36900.37000.37100.37700.38300.39000.139900 | MEP Clearance -1 | 5d | 2026-03-25 | 2026-03-30 | 297 |  | 7 Days Work | 9154994 |
| 299 | 36900.37000.37100.37700.38300.39000.140000 | Benchmark | 1d | 2026-03-30 | 2026-03-31 | 298 |  | 7 Days Work | 9155004 |
| 300 | 36900.37000.37100.37700.38300.39000.140100 | Temporary Railing | 3d | 2026-03-31 | 2026-04-03 | 299 |  | 7 Days Work | 9155014 |
| 301 | 36900.37000.37100.37700.38300.39000.140200 | Blockwork | 10d | 2026-04-03 | 2026-04-13 | 300 |  | 7 Days Work | 9155024 |
| 302 | 36900.37000.37100.37700.38300.39000.140300 | MEP Clearance -2 | 10d | 2026-04-13 | 2026-04-23 | 301 |  | 7 Days Work | 9155034 |
| 303 | 36900.37000.37100.37700.38300.39000.140400 | Gypsum Plaster | 14d | 2026-04-23 | 2026-05-07 | 302 |  | 7 Days Work | 9155044 |
| 304 | 36900.37000.37100.37700.38300.39000.140500 | Kitchen Platform | 3d | 2026-05-07 | 2026-05-10 | 303 |  | 7 Days Work | 9155054 |
| 305 | 36900.37000.37100.37700.38300.39000.140600 | Kitchen dado | 7d | 2026-05-10 | 2026-05-17 | 304 |  | 7 Days Work | 9155064 |
| 306 | 36900.37000.37100.37700.38300.39000.140700 | Fire Fighting | 5d | 2026-05-17 | 2026-05-22 | 305 |  | 7 Days Work | 9155074 |
| 307 | 36900.37000.37100.37700.38300.39000.140800 | Anticapilary | 5d | 2026-05-22 | 2026-05-27 | 306 |  | 7 Days Work | 9155084 |
| 308 | 36900.37000.37100.37700.38300.39000.140900 | Stone Laying | 10d | 2026-06-29 | 2026-07-09 | 348 |  | 7 Days Work | 9155094 |
| 309 | 36900.37000.37100.37700.38300.39000.141000 | Tiles Laying | 7d | 2026-06-29 | 2026-07-06 | 348 |  | 7 Days Work | 9155104 |
| 310 | 36900.37000.37100.37700.38300.39000.141100 | 1st cutting/polishing of stone flooring | 7d | 2026-07-06 | 2026-07-13 | 309 |  | 7 Days Work | 9155114 |
| 311 | 36900.37000.37100.37700.38300.39000.141200 | Tiles/Stone skirting | 5d | 2026-07-13 | 2026-07-18 | 310 |  | 7 Days Work | 9155124 |
| 312 | 36900.37000.37100.37700.38300.39000.141300 | Protechtion sheet | 1d | 2026-07-18 | 2026-07-19 | 311 |  | 7 Days Work | 9155134 |
| 313 | 36900.37000.37100.37700.38300.39000.141400 | Installation of Temporary Door | 1d | 2026-07-19 | 2026-07-20 | 312 |  | 7 Days Work | 9155144 |
| 314 | 36900.37000.37100.37700.38300.39000.141500 | Fixing of window tracks | 5d | 2026-07-20 | 2026-07-25 | 313 |  | 7 Days Work | 9155154 |
| 315 | 36900.37000.37100.37700.38300.39000.141600 | Wire Pulling | 7d | 2026-07-25 | 2026-08-01 | 314 |  | 7 Days Work | 9155164 |
| 316 | 36900.37000.37100.37700.38300.39000.141700 | Gypsum Remaining | 5d | 2026-08-01 | 2026-08-06 | 315 |  | 7 Days Work | 9155174 |
| 317 | 36900.37000.37100.37700.38300.39000.141800 | Fixing of windoow shutter | 5d | 2026-08-06 | 2026-08-11 | 316 |  | 7 Days Work | 9155184 |
| 318 | 36900.37000.37100.37700.38300.39000.141900 | Putty Works - walls & ceiling | 15d | 2026-08-11 | 2026-08-26 | 317 |  | 7 Days Work | 9155194 |
| 319 | 36900.37000.37100.37700.38300.39000.142000 | False Ceiling- Framing | 10d | 2026-08-26 | 2026-09-05 | 318 |  | 7 Days Work | 9155204 |
| 320 | 36900.37000.37100.37700.38300.39000.142100 | Pre Hung Door | 3d | 2026-09-05 | 2026-09-08 | 319 |  | 7 Days Work | 9155214 |
| 321 | 36900.37000.37100.37700.38300.39000.142200 | Protechtion sheet | 2d | 2026-09-08 | 2026-09-10 | 320 |  | 7 Days Work | 9155224 |
| 322 | 36900.37000.37100.37700.38300.39000.142300 | Skirting near door | 2d | 2026-09-10 | 2026-09-12 | 321 |  | 7 Days Work | 9155234 |
| 323 | 36900.37000.37100.37700.38300.39000.142400 | Electrical Switch box fixing | 14d | 2026-09-12 | 2026-09-26 | 322 |  | 7 Days Work | 9155244 |
| 324 | 36900.37000.37100.37700.38300.39000.142500 | Fire Fighting painting | 5d | 2026-09-26 | 2026-10-01 | 323 |  | 7 Days Work | 9155254 |
| 325 | 36900.37000.37100.37700.38300.39000.142600 | Protection of all flooring, door & window hardware | 5d | 2026-10-01 | 2026-10-06 | 324 |  | 7 Days Work | 9155264 |
| 326 | 36900.37000.37100.37700.38300.39000.142700 | 1st coat primer- ceiling 1st & walls | 14d | 2026-10-06 | 2026-10-20 | 325 |  | 7 Days Work | 9155274 |
| 327 | 36900.37000.37100.37700.38300.39000.142800 | Wooden Flooring | 5d | 2026-10-20 | 2026-10-25 | 326 |  | 7 Days Work | 9155284 |
| 328 | 36900.37000.37100.37700.38300.39000.142900 | Removing of Temporary Railing & installation of Glass Railing | 5d | 2026-10-20 | 2026-10-25 | 326 |  | 7 Days Work | 9155294 |
| 329 | 36900.37000.37100.37700.38300.39000.143000 | Tile Grouting | 7d | 2026-10-20 | 2026-10-27 | 326 |  | 7 Days Work | 9155304 |
| 330 | 36900.37000.37100.37700.38300.39000.143100 | False Ceiling | 5d | 2026-10-27 | 2026-11-01 | 329 |  | 7 Days Work | 9155314 |
| 331 | 36900.37000.37100.37700.38300.39000.143200 | 2nd coat of primer | 10d | 2026-11-01 | 2026-11-11 | 330 |  | 7 Days Work | 9155324 |
| 332 | 36900.37000.37100.37700.38300.39000.143300 | Final cutting/polishing of stone flooring | 7d | 2026-11-11 | 2026-11-18 | 331 |  | 7 Days Work | 9155334 |

| ID | WBS | Task | Duration | Start | Finish | Predecessors | Constraint | Calendar | Unique_Task_ID |
| --- | --- | --- | --- | --- | --- | --- | --- | --- | --- |
| 333 | 36900.37000.37100.37700.38300.39000.54900 | **Toilet** | 237d | 2026-03-25 | 2026-11-17 |  | start no earlier than 2026-03-25 | 7 Days Work | 9154944 |
| 334 | 36900.37000.37100.37700.38300.39000.54900.746400 | Toilet_MEP Clearance -1 | 7d | 2026-03-25 | 2026-04-01 | 297 |  | 7 Days Work | 9156424 |
| 335 | 36900.37000.37100.37700.38300.39000.54900.746500 | Toilet_Level Marking | 1d | 2026-04-01 | 2026-04-02 | 334 |  | 7 Days Work | 9156434 |
| 336 | 36900.37000.37100.37700.38300.39000.54900.746600 | Toilet_Chasing work for Electrical conduit & concealed plumbing | 5d | 2026-04-02 | 2026-04-07 | 335 |  | 7 Days Work | 9156444 |
| 337 | 36900.37000.37100.37700.38300.39000.54900.746700 | Toilet_Plumbing work 1st fix | 5d | 2026-04-07 | 2026-04-12 | 336 |  | 7 Days Work | 9156454 |
| 338 | 36900.37000.37100.37700.38300.39000.54900.746800 | Toilet_Sleeve/Bore Packing | 5d | 2026-04-12 | 2026-04-17 | 337 |  | 7 Days Work | 9156464 |
| 339 | 36900.37000.37100.37700.38300.39000.54900.746900 | Toilet_Waterproofing | 10d | 2026-04-17 | 2026-04-27 | 338 |  | 7 Days Work | 9156474 |
| 340 | 36900.37000.37100.37700.38300.39000.54900.747000 | Toilet_Screed | 1d | 2026-04-27 | 2026-04-28 | 339 |  | 7 Days Work | 9156484 |
| 341 | 36900.37000.37100.37700.38300.39000.54900.747100 | Toilet_Plumbing 2nd fix | 5d | 2026-04-28 | 2026-05-03 | 340 |  | 7 Days Work | 9156494 |
| 342 | 36900.37000.37100.37700.38300.39000.54900.747200 | Toilet_Ledge wall | 5d | 2026-05-03 | 2026-05-08 | 341 |  | 7 Days Work | 9156504 |
| 343 | 36900.37000.37100.37700.38300.39000.54900.747300 | Toilet_Cement Plaster | 5d | 2026-05-08 | 2026-05-13 | 342 |  | 7 Days Work | 9156514 |
| 344 | 36900.37000.37100.37700.38300.39000.54900.747400 | Toilet_Door Frame | 1d | 2026-05-13 | 2026-05-14 | 343 |  | 7 Days Work | 9156524 |
| 345 | 36900.37000.37100.37700.38300.39000.54900.747500 | Toilet_Wash basin & Couter | 3d | 2026-05-14 | 2026-05-17 | 344 |  | 7 Days Work | 9156534 |
| 346 | 36900.37000.37100.37700.38300.39000.54900.747600 | Toilet_Wall dado | 20d | 2026-05-17 | 2026-06-06 | 345 |  | 7 Days Work | 9156544 |
| 347 | 36900.37000.37100.37700.38300.39000.54900.747700 | Toilet_Granite Work-Ledge wall top | 3d | 2026-06-06 | 2026-06-09 | 346 |  | 7 Days Work | 9156554 |
| 348 | 36900.37000.37100.37700.38300.39000.54900.747800 | Toilet_Floor Tilling work | 20d | 2026-06-09 | 2026-06-29 | 347 |  | 7 Days Work | 9156564 |
| 349 | 36900.37000.37100.37700.38300.39000.54900.747900 | Toilet_1st row of dado | 5d | 2026-06-29 | 2026-07-04 | 348 |  | 7 Days Work | 9156574 |
| 350 | 36900.37000.37100.37700.38300.39000.54900.748000 | Toilet_Window Fixing | 14d | 2026-07-04 | 2026-07-18 | 349 |  | 7 Days Work | 9156584 |
| 351 | 36900.37000.37100.37700.38300.39000.54900.748100 | Toilet_Services above False ceiling | 21d | 2026-07-18 | 2026-08-08 | 350 |  | 7 Days Work | 9156594 |
| 352 | 36900.37000.37100.37700.38300.39000.54900.748200 | Toilet_False Ceiling framing | 12d | 2026-08-08 | 2026-08-20 | 351 |  | 7 Days Work | 9156604 |
| 353 | 36900.37000.37100.37700.38300.39000.54900.748300 | Toilet_Door Frame | 5d | 2026-08-20 | 2026-08-25 | 352 |  | 7 Days Work | 9156614 |
| 354 | 36900.37000.37100.37700.38300.39000.54900.748400 | Toilet_Epoxy Tile Grouting | 7d | 2026-10-20 | 2026-10-27 | 329SS |  | 7 Days Work | 9156624 |
| 355 | 36900.37000.37100.37700.38300.39000.54900.748500 | Toilet_False ceiling board fixing, CP Sanitary Fixture, Electric Fixture | 21d | 2026-10-27 | 2026-11-17 | 354 |  | 7 Days Work | 9156634 |
| 356 | 36900.37000.37100.37700.38300.39100 | **6th Habitable/8th Floor** | 245d | 2026-03-27 | 2026-11-27 |  | start no earlier than 2026-03-27 | 7 Days Work | 9154914 |
| 357 | 36900.37000.37100.37700.38300.39100.143400 | Post Pour | 7d | 2026-03-27 | 2026-04-03 | 40FS+15d |  | 7 Days Work | 9155344 |
| 358 | 36900.37000.37100.37700.38300.39100.143500 | MEP Clearance -1 | 5d | 2026-04-03 | 2026-04-08 | 357 |  | 7 Days Work | 9155354 |
| 359 | 36900.37000.37100.37700.38300.39100.143600 | Benchmark | 1d | 2026-04-08 | 2026-04-09 | 358 |  | 7 Days Work | 9155364 |
| 360 | 36900.37000.37100.37700.38300.39100.143700 | Temporary Railing | 3d | 2026-04-09 | 2026-04-12 | 359 |  | 7 Days Work | 9155374 |
| 361 | 36900.37000.37100.37700.38300.39100.143800 | Blockwork | 10d | 2026-04-12 | 2026-04-22 | 360 |  | 7 Days Work | 9155384 |
| 362 | 36900.37000.37100.37700.38300.39100.143900 | MEP Clearance -2 | 10d | 2026-04-22 | 2026-05-02 | 361 |  | 7 Days Work | 9155394 |
| 363 | 36900.37000.37100.37700.38300.39100.144000 | Gypsum Plaster | 14d | 2026-05-02 | 2026-05-16 | 362 |  | 7 Days Work | 9155404 |
| 364 | 36900.37000.37100.37700.38300.39100.144100 | Kitchen Platform | 3d | 2026-05-16 | 2026-05-19 | 363 |  | 7 Days Work | 9155414 |
| 365 | 36900.37000.37100.37700.38300.39100.144200 | Kitchen dado | 7d | 2026-05-19 | 2026-05-26 | 364 |  | 7 Days Work | 9155424 |
| 366 | 36900.37000.37100.37700.38300.39100.144300 | Fire Fighting | 5d | 2026-05-26 | 2026-05-31 | 365 |  | 7 Days Work | 9155434 |
| 367 | 36900.37000.37100.37700.38300.39100.144400 | Anticapilary | 5d | 2026-05-31 | 2026-06-05 | 366 |  | 7 Days Work | 9155444 |
| 368 | 36900.37000.37100.37700.38300.39100.144500 | Stone Laying | 10d | 2026-07-08 | 2026-07-18 | 408 |  | 7 Days Work | 9155454 |
| 369 | 36900.37000.37100.37700.38300.39100.144600 | Tiles Laying | 7d | 2026-07-08 | 2026-07-15 | 408 |  | 7 Days Work | 9155464 |
| 370 | 36900.37000.37100.37700.38300.39100.144700 | 1st cutting/polishing of stone flooring | 7d | 2026-07-15 | 2026-07-22 | 369 |  | 7 Days Work | 9155474 |
| 371 | 36900.37000.37100.37700.38300.39100.144800 | Tiles/Stone skirting | 5d | 2026-07-22 | 2026-07-27 | 370 |  | 7 Days Work | 9155484 |
| 372 | 36900.37000.37100.37700.38300.39100.144900 | Protechtion sheet | 1d | 2026-07-27 | 2026-07-28 | 371 |  | 7 Days Work | 9155494 |
| 373 | 36900.37000.37100.37700.38300.39100.145000 | Installation of Temporary Door | 1d | 2026-07-28 | 2026-07-29 | 372 |  | 7 Days Work | 9155504 |
| 374 | 36900.37000.37100.37700.38300.39100.145100 | Fixing of window tracks | 5d | 2026-07-29 | 2026-08-03 | 373 |  | 7 Days Work | 9155514 |
| 375 | 36900.37000.37100.37700.38300.39100.145200 | Wire Pulling | 7d | 2026-08-03 | 2026-08-10 | 374 |  | 7 Days Work | 9155524 |
| 376 | 36900.37000.37100.37700.38300.39100.145300 | Gypsum Remaining | 5d | 2026-08-10 | 2026-08-15 | 375 |  | 7 Days Work | 9155534 |
| 377 | 36900.37000.37100.37700.38300.39100.145400 | Fixing of windoow shutter | 5d | 2026-08-15 | 2026-08-20 | 376 |  | 7 Days Work | 9155544 |
| 378 | 36900.37000.37100.37700.38300.39100.145500 | Putty Works - walls & ceiling | 15d | 2026-08-20 | 2026-09-04 | 377 |  | 7 Days Work | 9155554 |
| 379 | 36900.37000.37100.37700.38300.39100.145600 | False Ceiling- Framing | 10d | 2026-09-04 | 2026-09-14 | 378 |  | 7 Days Work | 9155564 |
| 380 | 36900.37000.37100.37700.38300.39100.145700 | Pre Hung Door | 3d | 2026-09-14 | 2026-09-17 | 379 |  | 7 Days Work | 9155574 |
| 381 | 36900.37000.37100.37700.38300.39100.145800 | Protechtion sheet | 2d | 2026-09-17 | 2026-09-19 | 380 |  | 7 Days Work | 9155584 |
| 382 | 36900.37000.37100.37700.38300.39100.145900 | Skirting near door | 2d | 2026-09-19 | 2026-09-21 | 381 |  | 7 Days Work | 9155594 |
| 383 | 36900.37000.37100.37700.38300.39100.146000 | Electrical Switch box fixing | 14d | 2026-09-21 | 2026-10-05 | 382 |  | 7 Days Work | 9155604 |
| 384 | 36900.37000.37100.37700.38300.39100.146100 | Fire Fighting painting | 5d | 2026-10-05 | 2026-10-10 | 383 |  | 7 Days Work | 9155614 |
| 385 | 36900.37000.37100.37700.38300.39100.146200 | Protection of all flooring, door & window hardware | 5d | 2026-10-10 | 2026-10-15 | 384 |  | 7 Days Work | 9155624 |
| 386 | 36900.37000.37100.37700.38300.39100.146300 | 1st coat primer- ceiling 1st & walls | 14d | 2026-10-15 | 2026-10-29 | 385 |  | 7 Days Work | 9155634 |
| 387 | 36900.37000.37100.37700.38300.39100.146400 | Wooden Flooring | 5d | 2026-10-29 | 2026-11-03 | 386 |  | 7 Days Work | 9155644 |
| 388 | 36900.37000.37100.37700.38300.39100.146500 | Removing of Temporary Railing & installation of Glass Railing | 5d | 2026-10-29 | 2026-11-03 | 386 |  | 7 Days Work | 9155654 |
| 389 | 36900.37000.37100.37700.38300.39100.146600 | Tile Grouting | 7d | 2026-10-29 | 2026-11-05 | 386 |  | 7 Days Work | 9155664 |
| 390 | 36900.37000.37100.37700.38300.39100.146700 | False Ceiling | 5d | 2026-11-05 | 2026-11-10 | 389 |  | 7 Days Work | 9155674 |
| 391 | 36900.37000.37100.37700.38300.39100.146800 | 2nd coat of primer | 10d | 2026-11-10 | 2026-11-20 | 390 |  | 7 Days Work | 9155684 |
| 392 | 36900.37000.37100.37700.38300.39100.146900 | Final cutting/polishing of stone flooring | 7d | 2026-11-20 | 2026-11-27 | 391 |  | 7 Days Work | 9155694 |

| ID | WBS | Task | Duration | Start | Finish | Predecessors | Constraint | Calendar | Unique_Task_ID |
| --- | --- | --- | --- | --- | --- | --- | --- | --- | --- |
| 393 | 36900.37000.37100.37700.38300.39100.55000 | **Toilet** | 237d | 2026-04-03 | 2026-11-26 |  | start no earlier than 2026-04-03 | 7 Days Work | 9154954 |
| 394 | 36900.37000.37100.37700.38300.39100.55000.748600 | Toilet_MEP Clearance -1 | 7d | 2026-04-03 | 2026-04-10 | 357 |  | 7 Days Work | 9156644 |
| 395 | 36900.37000.37100.37700.38300.39100.55000.748700 | Toilet_Level Marking | 1d | 2026-04-10 | 2026-04-11 | 394 |  | 7 Days Work | 9156654 |
| 396 | 36900.37000.37100.37700.38300.39100.55000.748800 | Toilet_Chasing work for Electrical conduit & concealed plumbing | 5d | 2026-04-11 | 2026-04-16 | 395 |  | 7 Days Work | 9156664 |
| 397 | 36900.37000.37100.37700.38300.39100.55000.748900 | Toilet_Plumbing work 1st fix | 5d | 2026-04-16 | 2026-04-21 | 396 |  | 7 Days Work | 9156674 |
| 398 | 36900.37000.37100.37700.38300.39100.55000.749000 | Toilet_Sleeve/Bore Packing | 5d | 2026-04-21 | 2026-04-26 | 397 |  | 7 Days Work | 9156684 |
| 399 | 36900.37000.37100.37700.38300.39100.55000.749100 | Toilet_Waterproofing | 10d | 2026-04-26 | 2026-05-06 | 398 |  | 7 Days Work | 9156694 |
| 400 | 36900.37000.37100.37700.38300.39100.55000.749200 | Toilet_Screed | 1d | 2026-05-06 | 2026-05-07 | 399 |  | 7 Days Work | 9156704 |
| 401 | 36900.37000.37100.37700.38300.39100.55000.749300 | Toilet_Plumbing 2nd fix | 5d | 2026-05-07 | 2026-05-12 | 400 |  | 7 Days Work | 9156714 |
| 402 | 36900.37000.37100.37700.38300.39100.55000.749400 | Toilet_Ledge wall | 5d | 2026-05-12 | 2026-05-17 | 401 |  | 7 Days Work | 9156724 |
| 403 | 36900.37000.37100.37700.38300.39100.55000.749500 | Toilet_Cement Plaster | 5d | 2026-05-17 | 2026-05-22 | 402 |  | 7 Days Work | 9156734 |
| 404 | 36900.37000.37100.37700.38300.39100.55000.749600 | Toilet_Door Frame | 1d | 2026-05-22 | 2026-05-23 | 403 |  | 7 Days Work | 9156744 |
| 405 | 36900.37000.37100.37700.38300.39100.55000.749700 | Toilet_Wash basin & Couter | 3d | 2026-05-23 | 2026-05-26 | 404 |  | 7 Days Work | 9156754 |
| 406 | 36900.37000.37100.37700.38300.39100.55000.749800 | Toilet_Wall dado | 20d | 2026-05-26 | 2026-06-15 | 405 |  | 7 Days Work | 9156764 |
| 407 | 36900.37000.37100.37700.38300.39100.55000.749900 | Toilet_Granite Work-Ledge wall top | 3d | 2026-06-15 | 2026-06-18 | 406 |  | 7 Days Work | 9156774 |
| 408 | 36900.37000.37100.37700.38300.39100.55000.750000 | Toilet_Floor Tilling work | 20d | 2026-06-18 | 2026-07-08 | 407 |  | 7 Days Work | 9156784 |
| 409 | 36900.37000.37100.37700.38300.39100.55000.750100 | Toilet_1st row of dado | 5d | 2026-07-08 | 2026-07-13 | 408 |  | 7 Days Work | 9156794 |
| 410 | 36900.37000.37100.37700.38300.39100.55000.750200 | Toilet_Window Fixing | 14d | 2026-07-13 | 2026-07-27 | 409 |  | 7 Days Work | 9156804 |
| 411 | 36900.37000.37100.37700.38300.39100.55000.750300 | Toilet_Services above False ceiling | 21d | 2026-07-27 | 2026-08-17 | 410 |  | 7 Days Work | 9156814 |
| 412 | 36900.37000.37100.37700.38300.39100.55000.750400 | Toilet_False Ceiling framing | 12d | 2026-08-17 | 2026-08-29 | 411 |  | 7 Days Work | 9156824 |
| 413 | 36900.37000.37100.37700.38300.39100.55000.750500 | Toilet_Door Frame | 5d | 2026-08-29 | 2026-09-03 | 412 |  | 7 Days Work | 9156834 |
| 414 | 36900.37000.37100.37700.38300.39100.55000.750600 | Toilet_Epoxy Tile Grouting | 7d | 2026-10-29 | 2026-11-05 | 389SS |  | 7 Days Work | 9156844 |
| 415 | 36900.37000.37100.37700.38300.39100.55000.750700 | Toilet_False ceiling board fixing, CP Sanitary Fixture, Electric Fixture | 21d | 2026-11-05 | 2026-11-26 | 414 |  | 7 Days Work | 9156854 |
| 416 | 36900.37000.37100.37700.38300.39200 | **7th Habitable/9th Floor** | 245d | 2026-04-05 | 2026-12-06 |  | start no earlier than 2026-04-05 | 7 Days Work | 9154924 |
| 417 | 36900.37000.37100.37700.38300.39200.147000 | Post Pour | 7d | 2026-04-05 | 2026-04-12 | 41FS+15d |  | 7 Days Work | 9155704 |
| 418 | 36900.37000.37100.37700.38300.39200.147100 | MEP Clearance -1 | 5d | 2026-04-12 | 2026-04-17 | 417 |  | 7 Days Work | 9155714 |
| 419 | 36900.37000.37100.37700.38300.39200.147200 | Benchmark | 1d | 2026-04-17 | 2026-04-18 | 418 |  | 7 Days Work | 9155724 |
| 420 | 36900.37000.37100.37700.38300.39200.147300 | Temporary Railing | 3d | 2026-04-18 | 2026-04-21 | 419 |  | 7 Days Work | 9155734 |
| 421 | 36900.37000.37100.37700.38300.39200.147400 | Blockwork | 10d | 2026-04-21 | 2026-05-01 | 420 |  | 7 Days Work | 9155744 |
| 422 | 36900.37000.37100.37700.38300.39200.147500 | MEP Clearance -2 | 10d | 2026-05-01 | 2026-05-11 | 421 |  | 7 Days Work | 9155754 |
| 423 | 36900.37000.37100.37700.38300.39200.147600 | Gypsum Plaster | 14d | 2026-05-11 | 2026-05-25 | 422 |  | 7 Days Work | 9155764 |
| 424 | 36900.37000.37100.37700.38300.39200.147700 | Kitchen Platform | 3d | 2026-05-25 | 2026-05-28 | 423 |  | 7 Days Work | 9155774 |
| 425 | 36900.37000.37100.37700.38300.39200.147800 | Kitchen dado | 7d | 2026-05-28 | 2026-06-04 | 424 |  | 7 Days Work | 9155784 |
| 426 | 36900.37000.37100.37700.38300.39200.147900 | Fire Fighting | 5d | 2026-06-04 | 2026-06-09 | 425 |  | 7 Days Work | 9155794 |
| 427 | 36900.37000.37100.37700.38300.39200.148000 | Anticapilary | 5d | 2026-06-09 | 2026-06-14 | 426 |  | 7 Days Work | 9155804 |
| 428 | 36900.37000.37100.37700.38300.39200.148100 | Stone Laying | 10d | 2026-07-17 | 2026-07-27 | 468 |  | 7 Days Work | 9155814 |
| 429 | 36900.37000.37100.37700.38300.39200.148200 | Tiles Laying | 7d | 2026-07-17 | 2026-07-24 | 468 |  | 7 Days Work | 9155824 |
| 430 | 36900.37000.37100.37700.38300.39200.148300 | 1st cutting/polishing of stone flooring | 7d | 2026-07-24 | 2026-07-31 | 429 |  | 7 Days Work | 9155834 |
| 431 | 36900.37000.37100.37700.38300.39200.148400 | Tiles/Stone skirting | 5d | 2026-07-31 | 2026-08-05 | 430 |  | 7 Days Work | 9155844 |
| 432 | 36900.37000.37100.37700.38300.39200.148500 | Protechtion sheet | 1d | 2026-08-05 | 2026-08-06 | 431 |  | 7 Days Work | 9155854 |
| 433 | 36900.37000.37100.37700.38300.39200.148600 | Installation of Temporary Door | 1d | 2026-08-06 | 2026-08-07 | 432 |  | 7 Days Work | 9155864 |
| 434 | 36900.37000.37100.37700.38300.39200.148700 | Fixing of window tracks | 5d | 2026-08-07 | 2026-08-12 | 433 |  | 7 Days Work | 9155874 |
| 435 | 36900.37000.37100.37700.38300.39200.148800 | Wire Pulling | 7d | 2026-08-12 | 2026-08-19 | 434 |  | 7 Days Work | 9155884 |
| 436 | 36900.37000.37100.37700.38300.39200.148900 | Gypsum Remaining | 5d | 2026-08-19 | 2026-08-24 | 435 |  | 7 Days Work | 9155894 |
| 437 | 36900.37000.37100.37700.38300.39200.149000 | Fixing of windoow shutter | 5d | 2026-08-24 | 2026-08-29 | 436 |  | 7 Days Work | 9155904 |
| 438 | 36900.37000.37100.37700.38300.39200.149100 | Putty Works - walls & ceiling | 15d | 2026-08-29 | 2026-09-13 | 437 |  | 7 Days Work | 9155914 |
| 439 | 36900.37000.37100.37700.38300.39200.149200 | False Ceiling- Framing | 10d | 2026-09-13 | 2026-09-23 | 438 |  | 7 Days Work | 9155924 |
| 440 | 36900.37000.37100.37700.38300.39200.149300 | Pre Hung Door | 3d | 2026-09-23 | 2026-09-26 | 439 |  | 7 Days Work | 9155934 |
| 441 | 36900.37000.37100.37700.38300.39200.149400 | Protechtion sheet | 2d | 2026-09-26 | 2026-09-28 | 440 |  | 7 Days Work | 9155944 |
| 442 | 36900.37000.37100.37700.38300.39200.149500 | Skirting near door | 2d | 2026-09-28 | 2026-09-30 | 441 |  | 7 Days Work | 9155954 |
| 443 | 36900.37000.37100.37700.38300.39200.149600 | Electrical Switch box fixing | 14d | 2026-09-30 | 2026-10-14 | 442 |  | 7 Days Work | 9155964 |
| 444 | 36900.37000.37100.37700.38300.39200.149700 | Fire Fighting painting | 5d | 2026-10-14 | 2026-10-19 | 443 |  | 7 Days Work | 9155974 |
| 445 | 36900.37000.37100.37700.38300.39200.149800 | Protection of all flooring, door & window hardware | 5d | 2026-10-19 | 2026-10-24 | 444 |  | 7 Days Work | 9155984 |
| 446 | 36900.37000.37100.37700.38300.39200.149900 | 1st coat primer- ceiling 1st & walls | 14d | 2026-10-24 | 2026-11-07 | 445 |  | 7 Days Work | 9155994 |
| 447 | 36900.37000.37100.37700.38300.39200.150000 | Wooden Flooring | 5d | 2026-11-07 | 2026-11-12 | 446 |  | 7 Days Work | 9156004 |
| 448 | 36900.37000.37100.37700.38300.39200.150100 | Removing of Temporary Railing & installation of Glass Railing | 5d | 2026-11-07 | 2026-11-12 | 446 |  | 7 Days Work | 9156014 |
| 449 | 36900.37000.37100.37700.38300.39200.150200 | Tile Grouting | 7d | 2026-11-07 | 2026-11-14 | 446 |  | 7 Days Work | 9156024 |
| 450 | 36900.37000.37100.37700.38300.39200.150300 | False Ceiling | 5d | 2026-11-14 | 2026-11-19 | 449 |  | 7 Days Work | 9156034 |
| 451 | 36900.37000.37100.37700.38300.39200.150400 | 2nd coat of primer | 10d | 2026-11-19 | 2026-11-29 | 450 |  | 7 Days Work | 9156044 |
| 452 | 36900.37000.37100.37700.38300.39200.150500 | Final cutting/polishing of stone flooring | 7d | 2026-11-29 | 2026-12-06 | 451 |  | 7 Days Work | 9156054 |

| ID | WBS | Task | Duration | Start | Finish | Predecessors | Constraint | Calendar | Unique_Task_ID |
| --- | --- | --- | --- | --- | --- | --- | --- | --- | --- |
| 453 | 36900.37000.37100.37700.38300.39200.55100 | **Toilet** | 237d | 2026-04-12 | 2026-12-05 |  | start no earlier than 2026-04-12 | 7 Days Work | 9154964 |
| 454 | 36900.37000.37100.37700.38300.39200.55100.750800 | Toilet_MEP Clearance -1 | 7d | 2026-04-12 | 2026-04-19 | 417 |  | 7 Days Work | 9156864 |
| 455 | 36900.37000.37100.37700.38300.39200.55100.750900 | Toilet_Level Marking | 1d | 2026-04-19 | 2026-04-20 | 454 |  | 7 Days Work | 9156874 |
| 456 | 36900.37000.37100.37700.38300.39200.55100.751000 | Toilet_Chasing work for Electrical conduit & concealed plumbing | 5d | 2026-04-20 | 2026-04-25 | 455 |  | 7 Days Work | 9156884 |
| 457 | 36900.37000.37100.37700.38300.39200.55100.751100 | Toilet_Plumbing work 1st fix | 5d | 2026-04-25 | 2026-04-30 | 456 |  | 7 Days Work | 9156894 |
| 458 | 36900.37000.37100.37700.38300.39200.55100.751200 | Toilet_Sleeve/Bore Packing | 5d | 2026-04-30 | 2026-05-05 | 457 |  | 7 Days Work | 9156904 |
| 459 | 36900.37000.37100.37700.38300.39200.55100.751300 | Toilet_Waterproofing | 10d | 2026-05-05 | 2026-05-15 | 458 |  | 7 Days Work | 9156914 |
| 460 | 36900.37000.37100.37700.38300.39200.55100.751400 | Toilet_Screed | 1d | 2026-05-15 | 2026-05-16 | 459 |  | 7 Days Work | 9156924 |
| 461 | 36900.37000.37100.37700.38300.39200.55100.751500 | Toilet_Plumbing 2nd fix | 5d | 2026-05-16 | 2026-05-21 | 460 |  | 7 Days Work | 9156934 |
| 462 | 36900.37000.37100.37700.38300.39200.55100.751600 | Toilet_Ledge wall | 5d | 2026-05-21 | 2026-05-26 | 461 |  | 7 Days Work | 9156944 |
| 463 | 36900.37000.37100.37700.38300.39200.55100.751700 | Toilet_Cement Plaster | 5d | 2026-05-26 | 2026-05-31 | 462 |  | 7 Days Work | 9156954 |
| 464 | 36900.37000.37100.37700.38300.39200.55100.751800 | Toilet_Door Frame | 1d | 2026-05-31 | 2026-06-01 | 463 |  | 7 Days Work | 9156964 |
| 465 | 36900.37000.37100.37700.38300.39200.55100.751900 | Toilet_Wash basin & Couter | 3d | 2026-06-01 | 2026-06-04 | 464 |  | 7 Days Work | 9156974 |
| 466 | 36900.37000.37100.37700.38300.39200.55100.752000 | Toilet_Wall dado | 20d | 2026-06-04 | 2026-06-24 | 465 |  | 7 Days Work | 9156984 |
| 467 | 36900.37000.37100.37700.38300.39200.55100.752100 | Toilet_Granite Work-Ledge wall top | 3d | 2026-06-24 | 2026-06-27 | 466 |  | 7 Days Work | 9156994 |
| 468 | 36900.37000.37100.37700.38300.39200.55100.752200 | Toilet_Floor Tilling work | 20d | 2026-06-27 | 2026-07-17 | 467 |  | 7 Days Work | 9157004 |
| 469 | 36900.37000.37100.37700.38300.39200.55100.752300 | Toilet_1st row of dado | 5d | 2026-07-17 | 2026-07-22 | 468 |  | 7 Days Work | 9157014 |
| 470 | 36900.37000.37100.37700.38300.39200.55100.752400 | Toilet_Window Fixing | 14d | 2026-07-22 | 2026-08-05 | 469 |  | 7 Days Work | 9157024 |
| 471 | 36900.37000.37100.37700.38300.39200.55100.752500 | Toilet_Services above False ceiling | 21d | 2026-08-05 | 2026-08-26 | 470 |  | 7 Days Work | 9157034 |
| 472 | 36900.37000.37100.37700.38300.39200.55100.752600 | Toilet_False Ceiling framing | 12d | 2026-08-26 | 2026-09-07 | 471 |  | 7 Days Work | 9157044 |
| 473 | 36900.37000.37100.37700.38300.39200.55100.752700 | Toilet_Door Frame | 5d | 2026-09-07 | 2026-09-12 | 472 |  | 7 Days Work | 9157054 |
| 474 | 36900.37000.37100.37700.38300.39200.55100.752800 | Toilet_Epoxy Tile Grouting | 7d | 2026-11-07 | 2026-11-14 | 449SS |  | 7 Days Work | 9157064 |
| 475 | 36900.37000.37100.37700.38300.39200.55100.752900 | Toilet_False ceiling board fixing, CP Sanitary Fixture, Electric Fixture | 21d | 2026-11-14 | 2026-12-05 | 474 |  | 7 Days Work | 9157074 |
| 476 | 36900.37000.37100.37700.38300.39300 | **8th Habitable/10th Floor** | 245d | 2026-04-17 | 2026-12-18 |  | start no earlier than 2026-04-17 | 7 Days Work | 9154934 |
| 477 | 36900.37000.37100.37700.38300.39300.150600 | Post Pour | 7d | 2026-04-17 | 2026-04-24 | 42FS+15d |  | 7 Days Work | 9156064 |
| 478 | 36900.37000.37100.37700.38300.39300.150700 | MEP Clearance -1 | 5d | 2026-04-24 | 2026-04-29 | 477 |  | 7 Days Work | 9156074 |
| 479 | 36900.37000.37100.37700.38300.39300.150800 | Benchmark | 1d | 2026-04-29 | 2026-04-30 | 478 |  | 7 Days Work | 9156084 |
| 480 | 36900.37000.37100.37700.38300.39300.150900 | Temporary Railing | 3d | 2026-04-30 | 2026-05-03 | 479 |  | 7 Days Work | 9156094 |
| 481 | 36900.37000.37100.37700.38300.39300.151000 | Blockwork | 10d | 2026-05-03 | 2026-05-13 | 480 |  | 7 Days Work | 9156104 |
| 482 | 36900.37000.37100.37700.38300.39300.151100 | MEP Clearance -2 | 10d | 2026-05-13 | 2026-05-23 | 481 |  | 7 Days Work | 9156114 |
| 483 | 36900.37000.37100.37700.38300.39300.151200 | Gypsum Plaster | 14d | 2026-05-23 | 2026-06-06 | 482 |  | 7 Days Work | 9156124 |
| 484 | 36900.37000.37100.37700.38300.39300.151300 | Kitchen Platform | 3d | 2026-06-06 | 2026-06-09 | 483 |  | 7 Days Work | 9156134 |
| 485 | 36900.37000.37100.37700.38300.39300.151400 | Kitchen dado | 7d | 2026-06-09 | 2026-06-16 | 484 |  | 7 Days Work | 9156144 |
| 486 | 36900.37000.37100.37700.38300.39300.151500 | Fire Fighting | 5d | 2026-06-16 | 2026-06-21 | 485 |  | 7 Days Work | 9156154 |
| 487 | 36900.37000.37100.37700.38300.39300.151600 | Anticapilary | 5d | 2026-06-21 | 2026-06-26 | 486 |  | 7 Days Work | 9156164 |
| 488 | 36900.37000.37100.37700.38300.39300.151700 | Stone Laying | 10d | 2026-07-29 | 2026-08-08 | 528 |  | 7 Days Work | 9156174 |
| 489 | 36900.37000.37100.37700.38300.39300.151800 | Tiles Laying | 7d | 2026-07-29 | 2026-08-05 | 528 |  | 7 Days Work | 9156184 |
| 490 | 36900.37000.37100.37700.38300.39300.151900 | 1st cutting/polishing of stone flooring | 7d | 2026-08-05 | 2026-08-12 | 489 |  | 7 Days Work | 9156194 |
| 491 | 36900.37000.37100.37700.38300.39300.152000 | Tiles/Stone skirting | 5d | 2026-08-12 | 2026-08-17 | 490 |  | 7 Days Work | 9156204 |
| 492 | 36900.37000.37100.37700.38300.39300.152100 | Protechtion sheet | 1d | 2026-08-17 | 2026-08-18 | 491 |  | 7 Days Work | 9156214 |
| 493 | 36900.37000.37100.37700.38300.39300.152200 | Installation of Temporary Door | 1d | 2026-08-18 | 2026-08-19 | 492 |  | 7 Days Work | 9156224 |
| 494 | 36900.37000.37100.37700.38300.39300.152300 | Fixing of window tracks | 5d | 2026-08-19 | 2026-08-24 | 493 |  | 7 Days Work | 9156234 |
| 495 | 36900.37000.37100.37700.38300.39300.152400 | Wire Pulling | 7d | 2026-08-24 | 2026-08-31 | 494 |  | 7 Days Work | 9156244 |
| 496 | 36900.37000.37100.37700.38300.39300.152500 | Gypsum Remaining | 5d | 2026-08-31 | 2026-09-05 | 495 |  | 7 Days Work | 9156254 |
| 497 | 36900.37000.37100.37700.38300.39300.152600 | Fixing of windoow shutter | 5d | 2026-09-05 | 2026-09-10 | 496 |  | 7 Days Work | 9156264 |
| 498 | 36900.37000.37100.37700.38300.39300.152700 | Putty Works - walls & ceiling | 15d | 2026-09-10 | 2026-09-25 | 497 |  | 7 Days Work | 9156274 |
| 499 | 36900.37000.37100.37700.38300.39300.152800 | False Ceiling- Framing | 10d | 2026-09-25 | 2026-10-05 | 498 |  | 7 Days Work | 9156284 |
| 500 | 36900.37000.37100.37700.38300.39300.152900 | Pre Hung Door | 3d | 2026-10-05 | 2026-10-08 | 499 |  | 7 Days Work | 9156294 |
| 501 | 36900.37000.37100.37700.38300.39300.153000 | Protechtion sheet | 2d | 2026-10-08 | 2026-10-10 | 500 |  | 7 Days Work | 9156304 |
| 502 | 36900.37000.37100.37700.38300.39300.153100 | Skirting near door | 2d | 2026-10-10 | 2026-10-12 | 501 |  | 7 Days Work | 9156314 |
| 503 | 36900.37000.37100.37700.38300.39300.153200 | Electrical Switch box fixing | 14d | 2026-10-12 | 2026-10-26 | 502 |  | 7 Days Work | 9156324 |
| 504 | 36900.37000.37100.37700.38300.39300.153300 | Fire Fighting painting | 5d | 2026-10-26 | 2026-10-31 | 503 |  | 7 Days Work | 9156334 |
| 505 | 36900.37000.37100.37700.38300.39300.153400 | Protection of all flooring, door & window hardware | 5d | 2026-10-31 | 2026-11-05 | 504 |  | 7 Days Work | 9156344 |
| 506 | 36900.37000.37100.37700.38300.39300.153500 | 1st coat primer- ceiling 1st & walls | 14d | 2026-11-05 | 2026-11-19 | 505 |  | 7 Days Work | 9156354 |
| 507 | 36900.37000.37100.37700.38300.39300.153600 | Wooden Flooring | 5d | 2026-11-19 | 2026-11-24 | 506 |  | 7 Days Work | 9156364 |
| 508 | 36900.37000.37100.37700.38300.39300.153700 | Removing of Temporary Railing & installation of Glass Railing | 5d | 2026-11-19 | 2026-11-24 | 506 |  | 7 Days Work | 9156374 |
| 509 | 36900.37000.37100.37700.38300.39300.153800 | Tile Grouting | 7d | 2026-11-19 | 2026-11-26 | 506 |  | 7 Days Work | 9156384 |
| 510 | 36900.37000.37100.37700.38300.39300.153900 | False Ceiling | 5d | 2026-11-26 | 2026-12-01 | 509 |  | 7 Days Work | 9156394 |
| 511 | 36900.37000.37100.37700.38300.39300.154000 | 2nd coat of primer | 10d | 2026-12-01 | 2026-12-11 | 510 |  | 7 Days Work | 9156404 |
| 512 | 36900.37000.37100.37700.38300.39300.154100 | Final cutting/polishing of stone flooring | 7d | 2026-12-11 | 2026-12-18 | 511 |  | 7 Days Work | 9156414 |

| ID | WBS | Task | Duration | Start | Finish | Predecessors | Constraint | Calendar | Unique_Task_ID |
| --- | --- | --- | --- | --- | --- | --- | --- | --- | --- |
| 513 | 36900.37000.37100.37700.38300.39300.55200 | **Toilet** | 237d | 2026-04-24 | 2026-12-17 |  | start no earlier than 2026-04-24 | 7 Days Work | 9154974 |
| 514 | 36900.37000.37100.37700.38300.39300.55200.753000 | Toilet_MEP Clearance -1 | 7d | 2026-04-24 | 2026-05-01 | 477 |  | 7 Days Work | 9157084 |
| 515 | 36900.37000.37100.37700.38300.39300.55200.753100 | Toilet_Level Marking | 1d | 2026-05-01 | 2026-05-02 | 514 |  | 7 Days Work | 9157094 |
| 516 | 36900.37000.37100.37700.38300.39300.55200.753200 | Toilet_Chasing work for Electrical conduit & concealed plumbing | 5d | 2026-05-02 | 2026-05-07 | 515 |  | 7 Days Work | 9157104 |
| 517 | 36900.37000.37100.37700.38300.39300.55200.753300 | Toilet_Plumbing work 1st fix | 5d | 2026-05-07 | 2026-05-12 | 516 |  | 7 Days Work | 9157114 |
| 518 | 36900.37000.37100.37700.38300.39300.55200.753400 | Toilet_Sleeve/Bore Packing | 5d | 2026-05-12 | 2026-05-17 | 517 |  | 7 Days Work | 9157124 |
| 519 | 36900.37000.37100.37700.38300.39300.55200.753500 | Toilet_Waterproofing | 10d | 2026-05-17 | 2026-05-27 | 518 |  | 7 Days Work | 9157134 |
| 520 | 36900.37000.37100.37700.38300.39300.55200.753600 | Toilet_Screed | 1d | 2026-05-27 | 2026-05-28 | 519 |  | 7 Days Work | 9157144 |
| 521 | 36900.37000.37100.37700.38300.39300.55200.753700 | Toilet_Plumbing 2nd fix | 5d | 2026-05-28 | 2026-06-02 | 520 |  | 7 Days Work | 9157154 |
| 522 | 36900.37000.37100.37700.38300.39300.55200.753800 | Toilet_Ledge wall | 5d | 2026-06-02 | 2026-06-07 | 521 |  | 7 Days Work | 9157164 |
| 523 | 36900.37000.37100.37700.38300.39300.55200.753900 | Toilet_Cement Plaster | 5d | 2026-06-07 | 2026-06-12 | 522 |  | 7 Days Work | 9157174 |
| 524 | 36900.37000.37100.37700.38300.39300.55200.754000 | Toilet_Door Frame | 1d | 2026-06-12 | 2026-06-13 | 523 |  | 7 Days Work | 9157184 |
| 525 | 36900.37000.37100.37700.38300.39300.55200.754100 | Toilet_Wash basin & Couter | 3d | 2026-06-13 | 2026-06-16 | 524 |  | 7 Days Work | 9157194 |
| 526 | 36900.37000.37100.37700.38300.39300.55200.754200 | Toilet_Wall dado | 20d | 2026-06-16 | 2026-07-06 | 525 |  | 7 Days Work | 9157204 |
| 527 | 36900.37000.37100.37700.38300.39300.55200.754300 | Toilet_Granite Work-Ledge wall top | 3d | 2026-07-06 | 2026-07-09 | 526 |  | 7 Days Work | 9157214 |
| 528 | 36900.37000.37100.37700.38300.39300.55200.754400 | Toilet_Floor Tilling work | 20d | 2026-07-09 | 2026-07-29 | 527 |  | 7 Days Work | 9157224 |
| 529 | 36900.37000.37100.37700.38300.39300.55200.754500 | Toilet_1st row of dado | 5d | 2026-07-29 | 2026-08-03 | 528 |  | 7 Days Work | 9157234 |
| 530 | 36900.37000.37100.37700.38300.39300.55200.754600 | Toilet_Window Fixing | 14d | 2026-08-03 | 2026-08-17 | 529 |  | 7 Days Work | 9157244 |
| 531 | 36900.37000.37100.37700.38300.39300.55200.754700 | Toilet_Services above False ceiling | 21d | 2026-08-17 | 2026-09-07 | 530 |  | 7 Days Work | 9157254 |
| 532 | 36900.37000.37100.37700.38300.39300.55200.754800 | Toilet_False Ceiling framing | 12d | 2026-09-07 | 2026-09-19 | 531 |  | 7 Days Work | 9157264 |
| 533 | 36900.37000.37100.37700.38300.39300.55200.754900 | Toilet_Door Frame | 5d | 2026-09-19 | 2026-09-24 | 532 |  | 7 Days Work | 9157274 |
| 534 | 36900.37000.37100.37700.38300.39300.55200.755000 | Toilet_Epoxy Tile Grouting | 7d | 2026-11-19 | 2026-11-26 | 509SS |  | 7 Days Work | 9157284 |
| 535 | 36900.37000.37100.37700.38300.39300.55200.755100 | Toilet_False ceiling board fixing, CP Sanitary Fixture, Electric Fixture | 21d | 2026-11-26 | 2026-12-17 | 534 |  | 7 Days Work | 9157294 |
| 536 | 36900.37000.37100.37700.38300.39400 | **9th Habitable/11th Floor** | 245d | 2026-04-26 | 2026-12-27 |  | start no earlier than 2026-04-26 | 7 Days Work | 9157304 |
| 537 | 36900.37000.37100.37700.38300.39400.154200 | Post Pour | 7d | 2026-04-26 | 2026-05-03 | 43FS+15d |  | 7 Days Work | 9157464 |
| 538 | 36900.37000.37100.37700.38300.39400.154300 | MEP Clearance -1 | 5d | 2026-05-03 | 2026-05-08 | 537 |  | 7 Days Work | 9157474 |
| 539 | 36900.37000.37100.37700.38300.39400.154400 | Benchmark | 1d | 2026-05-08 | 2026-05-09 | 538 |  | 7 Days Work | 9157484 |
| 540 | 36900.37000.37100.37700.38300.39400.154500 | Temporary Railing | 3d | 2026-05-09 | 2026-05-12 | 539 |  | 7 Days Work | 9157494 |
| 541 | 36900.37000.37100.37700.38300.39400.154600 | Blockwork | 10d | 2026-05-12 | 2026-05-22 | 540 |  | 7 Days Work | 9157504 |
| 542 | 36900.37000.37100.37700.38300.39400.154700 | MEP Clearance -2 | 10d | 2026-05-22 | 2026-06-01 | 541 |  | 7 Days Work | 9157514 |
| 543 | 36900.37000.37100.37700.38300.39400.154800 | Gypsum Plaster | 14d | 2026-06-01 | 2026-06-15 | 542 |  | 7 Days Work | 9157524 |
| 544 | 36900.37000.37100.37700.38300.39400.154900 | Kitchen Platform | 3d | 2026-06-15 | 2026-06-18 | 543 |  | 7 Days Work | 9157534 |
| 545 | 36900.37000.37100.37700.38300.39400.155000 | Kitchen dado | 7d | 2026-06-18 | 2026-06-25 | 544 |  | 7 Days Work | 9157544 |
| 546 | 36900.37000.37100.37700.38300.39400.155100 | Fire Fighting | 5d | 2026-06-25 | 2026-06-30 | 545 |  | 7 Days Work | 9157554 |
| 547 | 36900.37000.37100.37700.38300.39400.155200 | Anticapilary | 5d | 2026-06-30 | 2026-07-05 | 546 |  | 7 Days Work | 9157564 |
| 548 | 36900.37000.37100.37700.38300.39400.155300 | Stone Laying | 10d | 2026-08-07 | 2026-08-17 | 588 |  | 7 Days Work | 9157574 |
| 549 | 36900.37000.37100.37700.38300.39400.155400 | Tiles Laying | 7d | 2026-08-07 | 2026-08-14 | 588 |  | 7 Days Work | 9157584 |
| 550 | 36900.37000.37100.37700.38300.39400.155500 | 1st cutting/polishing of stone flooring | 7d | 2026-08-14 | 2026-08-21 | 549 |  | 7 Days Work | 9157594 |
| 551 | 36900.37000.37100.37700.38300.39400.155600 | Tiles/Stone skirting | 5d | 2026-08-21 | 2026-08-26 | 550 |  | 7 Days Work | 9157604 |
| 552 | 36900.37000.37100.37700.38300.39400.155700 | Protechtion sheet | 1d | 2026-08-26 | 2026-08-27 | 551 |  | 7 Days Work | 9157614 |
| 553 | 36900.37000.37100.37700.38300.39400.155800 | Installation of Temporary Door | 1d | 2026-08-27 | 2026-08-28 | 552 |  | 7 Days Work | 9157624 |
| 554 | 36900.37000.37100.37700.38300.39400.155900 | Fixing of window tracks | 5d | 2026-08-28 | 2026-09-02 | 553 |  | 7 Days Work | 9157634 |
| 555 | 36900.37000.37100.37700.38300.39400.156000 | Wire Pulling | 7d | 2026-09-02 | 2026-09-09 | 554 |  | 7 Days Work | 9157644 |
| 556 | 36900.37000.37100.37700.38300.39400.156100 | Gypsum Remaining | 5d | 2026-09-09 | 2026-09-14 | 555 |  | 7 Days Work | 9157654 |
| 557 | 36900.37000.37100.37700.38300.39400.156200 | Fixing of windoow shutter | 5d | 2026-09-14 | 2026-09-19 | 556 |  | 7 Days Work | 9157664 |
| 558 | 36900.37000.37100.37700.38300.39400.156300 | Putty Works - walls & ceiling | 15d | 2026-09-19 | 2026-10-04 | 557 |  | 7 Days Work | 9157674 |
| 559 | 36900.37000.37100.37700.38300.39400.156400 | False Ceiling- Framing | 10d | 2026-10-04 | 2026-10-14 | 558 |  | 7 Days Work | 9157684 |
| 560 | 36900.37000.37100.37700.38300.39400.156500 | Pre Hung Door | 3d | 2026-10-14 | 2026-10-17 | 559 |  | 7 Days Work | 9157694 |
| 561 | 36900.37000.37100.37700.38300.39400.156600 | Protechtion sheet | 2d | 2026-10-17 | 2026-10-19 | 560 |  | 7 Days Work | 9157704 |
| 562 | 36900.37000.37100.37700.38300.39400.156700 | Skirting near door | 2d | 2026-10-19 | 2026-10-21 | 561 |  | 7 Days Work | 9157714 |
| 563 | 36900.37000.37100.37700.38300.39400.156800 | Electrical Switch box fixing | 14d | 2026-10-21 | 2026-11-04 | 562 |  | 7 Days Work | 9157724 |
| 564 | 36900.37000.37100.37700.38300.39400.156900 | Fire Fighting painting | 5d | 2026-11-04 | 2026-11-09 | 563 |  | 7 Days Work | 9157734 |
| 565 | 36900.37000.37100.37700.38300.39400.157000 | Protection of all flooring, door & window hardware | 5d | 2026-11-09 | 2026-11-14 | 564 |  | 7 Days Work | 9157744 |
| 566 | 36900.37000.37100.37700.38300.39400.157100 | 1st coat primer- ceiling 1st & walls | 14d | 2026-11-14 | 2026-11-28 | 565 |  | 7 Days Work | 9157754 |
| 567 | 36900.37000.37100.37700.38300.39400.157200 | Wooden Flooring | 5d | 2026-11-28 | 2026-12-03 | 566 |  | 7 Days Work | 9157764 |
| 568 | 36900.37000.37100.37700.38300.39400.157300 | Removing of Temporary Railing & installation of Glass Railing | 5d | 2026-11-28 | 2026-12-03 | 566 |  | 7 Days Work | 9157774 |
| 569 | 36900.37000.37100.37700.38300.39400.157400 | Tile Grouting | 7d | 2026-11-28 | 2026-12-05 | 566 |  | 7 Days Work | 9157784 |
| 570 | 36900.37000.37100.37700.38300.39400.157500 | False Ceiling | 5d | 2026-12-05 | 2026-12-10 | 569 |  | 7 Days Work | 9157794 |
| 571 | 36900.37000.37100.37700.38300.39400.157600 | 2nd coat of primer | 10d | 2026-12-10 | 2026-12-20 | 570 |  | 7 Days Work | 9157804 |
| 572 | 36900.37000.37100.37700.38300.39400.157700 | Final cutting/polishing of stone flooring | 7d | 2026-12-20 | 2026-12-27 | 571 |  | 7 Days Work | 9157814 |

| ID | WBS | Task | Duration | Start | Finish | Predecessors | Constraint | Calendar | Unique_Task_ID |
| --- | --- | --- | --- | --- | --- | --- | --- | --- | --- |
| 573 | 36900.37000.37100.37700.38300.39400.55300 | **Toilet** | 237d | 2026-05-03 | 2026-12-26 |  | start no earlier than 2026-05-03 | 7 Days Work | 9157384 |
| 574 | 36900.37000.37100.37700.38300.39400.55300.755200 | Toilet_MEP Clearance -1 | 7d | 2026-05-03 | 2026-05-10 | 537 |  | 7 Days Work | 9160344 |
| 575 | 36900.37000.37100.37700.38300.39400.55300.755300 | Toilet_Level Marking | 1d | 2026-05-10 | 2026-05-11 | 574 |  | 7 Days Work | 9160354 |
| 576 | 36900.37000.37100.37700.38300.39400.55300.755400 | Toilet_Chasing work for Electrical conduit & concealed plumbing | 5d | 2026-05-11 | 2026-05-16 | 575 |  | 7 Days Work | 9160364 |
| 577 | 36900.37000.37100.37700.38300.39400.55300.755500 | Toilet_Plumbing work 1st fix | 5d | 2026-05-16 | 2026-05-21 | 576 |  | 7 Days Work | 9160374 |
| 578 | 36900.37000.37100.37700.38300.39400.55300.755600 | Toilet_Sleeve/Bore Packing | 5d | 2026-05-21 | 2026-05-26 | 577 |  | 7 Days Work | 9160384 |
| 579 | 36900.37000.37100.37700.38300.39400.55300.755700 | Toilet_Waterproofing | 10d | 2026-05-26 | 2026-06-05 | 578 |  | 7 Days Work | 9160394 |
| 580 | 36900.37000.37100.37700.38300.39400.55300.755800 | Toilet_Screed | 1d | 2026-06-05 | 2026-06-06 | 579 |  | 7 Days Work | 9160404 |
| 581 | 36900.37000.37100.37700.38300.39400.55300.755900 | Toilet_Plumbing 2nd fix | 5d | 2026-06-06 | 2026-06-11 | 580 |  | 7 Days Work | 9160414 |
| 582 | 36900.37000.37100.37700.38300.39400.55300.756000 | Toilet_Ledge wall | 5d | 2026-06-11 | 2026-06-16 | 581 |  | 7 Days Work | 9160424 |
| 583 | 36900.37000.37100.37700.38300.39400.55300.756100 | Toilet_Cement Plaster | 5d | 2026-06-16 | 2026-06-21 | 582 |  | 7 Days Work | 9160434 |
| 584 | 36900.37000.37100.37700.38300.39400.55300.756200 | Toilet_Door Frame | 1d | 2026-06-21 | 2026-06-22 | 583 |  | 7 Days Work | 9160444 |
| 585 | 36900.37000.37100.37700.38300.39400.55300.756300 | Toilet_Wash basin & Couter | 3d | 2026-06-22 | 2026-06-25 | 584 |  | 7 Days Work | 9160454 |
| 586 | 36900.37000.37100.37700.38300.39400.55300.756400 | Toilet_Wall dado | 20d | 2026-06-25 | 2026-07-15 | 585 |  | 7 Days Work | 9160464 |
| 587 | 36900.37000.37100.37700.38300.39400.55300.756500 | Toilet_Granite Work-Ledge wall top | 3d | 2026-07-15 | 2026-07-18 | 586 |  | 7 Days Work | 9160474 |
| 588 | 36900.37000.37100.37700.38300.39400.55300.756600 | Toilet_Floor Tilling work | 20d | 2026-07-18 | 2026-08-07 | 587 |  | 7 Days Work | 9160484 |
| 589 | 36900.37000.37100.37700.38300.39400.55300.756700 | Toilet_1st row of dado | 5d | 2026-08-07 | 2026-08-12 | 588 |  | 7 Days Work | 9160494 |
| 590 | 36900.37000.37100.37700.38300.39400.55300.756800 | Toilet_Window Fixing | 14d | 2026-08-12 | 2026-08-26 | 589 |  | 7 Days Work | 9160504 |
| 591 | 36900.37000.37100.37700.38300.39400.55300.756900 | Toilet_Services above False ceiling | 21d | 2026-08-26 | 2026-09-16 | 590 |  | 7 Days Work | 9160514 |
| 592 | 36900.37000.37100.37700.38300.39400.55300.757000 | Toilet_False Ceiling framing | 12d | 2026-09-16 | 2026-09-28 | 591 |  | 7 Days Work | 9160524 |
| 593 | 36900.37000.37100.37700.38300.39400.55300.757100 | Toilet_Door Frame | 5d | 2026-09-28 | 2026-10-03 | 592 |  | 7 Days Work | 9160534 |
| 594 | 36900.37000.37100.37700.38300.39400.55300.757200 | Toilet_Epoxy Tile Grouting | 7d | 2026-11-28 | 2026-12-05 | 569SS |  | 7 Days Work | 9160544 |
| 595 | 36900.37000.37100.37700.38300.39400.55300.757300 | Toilet_False ceiling board fixing, CP Sanitary Fixture, Electric Fixture | 21d | 2026-12-05 | 2026-12-26 | 594 |  | 7 Days Work | 9160554 |
| 596 | 36900.37000.37100.37700.38300.39500 | **10th Habitable/12th Floor** | 245d | 2026-05-05 | 2027-01-05 |  | start no earlier than 2026-05-05 | 7 Days Work | 9162104 |
| 597 | 36900.37000.37100.37700.38300.39500.157800 | Post Pour | 7d | 2026-05-05 | 2026-05-12 | 44FS+15d |  | 7 Days Work | 9162284 |
| 598 | 36900.37000.37100.37700.38300.39500.157900 | MEP Clearance -1 | 5d | 2026-05-12 | 2026-05-17 | 597 |  | 7 Days Work | 9162294 |
| 599 | 36900.37000.37100.37700.38300.39500.158000 | Benchmark | 1d | 2026-05-17 | 2026-05-18 | 598 |  | 7 Days Work | 9162304 |
| 600 | 36900.37000.37100.37700.38300.39500.158100 | Temporary Railing | 3d | 2026-05-18 | 2026-05-21 | 599 |  | 7 Days Work | 9162314 |
| 601 | 36900.37000.37100.37700.38300.39500.158200 | Blockwork | 10d | 2026-05-21 | 2026-05-31 | 600 |  | 7 Days Work | 9162324 |
| 602 | 36900.37000.37100.37700.38300.39500.158300 | MEP Clearance -2 | 10d | 2026-05-31 | 2026-06-10 | 601 |  | 7 Days Work | 9162334 |
| 603 | 36900.37000.37100.37700.38300.39500.158400 | Gypsum Plaster | 14d | 2026-06-10 | 2026-06-24 | 602 |  | 7 Days Work | 9162344 |
| 604 | 36900.37000.37100.37700.38300.39500.158500 | Kitchen Platform | 3d | 2026-06-24 | 2026-06-27 | 603 |  | 7 Days Work | 9162354 |
| 605 | 36900.37000.37100.37700.38300.39500.158600 | Kitchen dado | 7d | 2026-06-27 | 2026-07-04 | 604 |  | 7 Days Work | 9162364 |
| 606 | 36900.37000.37100.37700.38300.39500.158700 | Fire Fighting | 5d | 2026-07-04 | 2026-07-09 | 605 |  | 7 Days Work | 9162374 |
| 607 | 36900.37000.37100.37700.38300.39500.158800 | Anticapilary | 5d | 2026-07-09 | 2026-07-14 | 606 |  | 7 Days Work | 9162384 |
| 608 | 36900.37000.37100.37700.38300.39500.158900 | Stone Laying | 10d | 2026-08-16 | 2026-08-26 | 648 |  | 7 Days Work | 9162394 |
| 609 | 36900.37000.37100.37700.38300.39500.159000 | Tiles Laying | 7d | 2026-08-16 | 2026-08-23 | 648 |  | 7 Days Work | 9162404 |
| 610 | 36900.37000.37100.37700.38300.39500.159100 | 1st cutting/polishing of stone flooring | 7d | 2026-08-23 | 2026-08-30 | 609 |  | 7 Days Work | 9162414 |
| 611 | 36900.37000.37100.37700.38300.39500.159200 | Tiles/Stone skirting | 5d | 2026-08-30 | 2026-09-04 | 610 |  | 7 Days Work | 9162424 |
| 612 | 36900.37000.37100.37700.38300.39500.159300 | Protechtion sheet | 1d | 2026-09-04 | 2026-09-05 | 611 |  | 7 Days Work | 9162434 |
| 613 | 36900.37000.37100.37700.38300.39500.159400 | Installation of Temporary Door | 1d | 2026-09-05 | 2026-09-06 | 612 |  | 7 Days Work | 9162444 |
| 614 | 36900.37000.37100.37700.38300.39500.159500 | Fixing of window tracks | 5d | 2026-09-06 | 2026-09-11 | 613 |  | 7 Days Work | 9162454 |
| 615 | 36900.37000.37100.37700.38300.39500.159600 | Wire Pulling | 7d | 2026-09-11 | 2026-09-18 | 614 |  | 7 Days Work | 9162464 |
| 616 | 36900.37000.37100.37700.38300.39500.159700 | Gypsum Remaining | 5d | 2026-09-18 | 2026-09-23 | 615 |  | 7 Days Work | 9162474 |
| 617 | 36900.37000.37100.37700.38300.39500.159800 | Fixing of windoow shutter | 5d | 2026-09-23 | 2026-09-28 | 616 |  | 7 Days Work | 9162484 |
| 618 | 36900.37000.37100.37700.38300.39500.159900 | Putty Works - walls & ceiling | 15d | 2026-09-28 | 2026-10-13 | 617 |  | 7 Days Work | 9162494 |
| 619 | 36900.37000.37100.37700.38300.39500.160000 | False Ceiling- Framing | 10d | 2026-10-13 | 2026-10-23 | 618 |  | 7 Days Work | 9162504 |
| 620 | 36900.37000.37100.37700.38300.39500.160100 | Pre Hung Door | 3d | 2026-10-23 | 2026-10-26 | 619 |  | 7 Days Work | 9162514 |
| 621 | 36900.37000.37100.37700.38300.39500.160200 | Protechtion sheet | 2d | 2026-10-26 | 2026-10-28 | 620 |  | 7 Days Work | 9162524 |
| 622 | 36900.37000.37100.37700.38300.39500.160300 | Skirting near door | 2d | 2026-10-28 | 2026-10-30 | 621 |  | 7 Days Work | 9162534 |
| 623 | 36900.37000.37100.37700.38300.39500.160400 | Electrical Switch box fixing | 14d | 2026-10-30 | 2026-11-13 | 622 |  | 7 Days Work | 9162544 |
| 624 | 36900.37000.37100.37700.38300.39500.160500 | Fire Fighting painting | 5d | 2026-11-13 | 2026-11-18 | 623 |  | 7 Days Work | 9162554 |
| 625 | 36900.37000.37100.37700.38300.39500.160600 | Protection of all flooring, door & window hardware | 5d | 2026-11-18 | 2026-11-23 | 624 |  | 7 Days Work | 9162564 |
| 626 | 36900.37000.37100.37700.38300.39500.160700 | 1st coat primer- ceiling 1st & walls | 14d | 2026-11-23 | 2026-12-07 | 625 |  | 7 Days Work | 9162574 |
| 627 | 36900.37000.37100.37700.38300.39500.160800 | Wooden Flooring | 5d | 2026-12-07 | 2026-12-12 | 626 |  | 7 Days Work | 9162584 |
| 628 | 36900.37000.37100.37700.38300.39500.160900 | Removing of Temporary Railing & installation of Glass Railing | 5d | 2026-12-07 | 2026-12-12 | 626 |  | 7 Days Work | 9162594 |
| 629 | 36900.37000.37100.37700.38300.39500.161000 | Tile Grouting | 7d | 2026-12-07 | 2026-12-14 | 626 |  | 7 Days Work | 9162604 |
| 630 | 36900.37000.37100.37700.38300.39500.161100 | False Ceiling | 5d | 2026-12-14 | 2026-12-19 | 629 |  | 7 Days Work | 9162614 |
| 631 | 36900.37000.37100.37700.38300.39500.161200 | 2nd coat of primer | 10d | 2026-12-19 | 2026-12-29 | 630 |  | 7 Days Work | 9162624 |
| 632 | 36900.37000.37100.37700.38300.39500.161300 | Final cutting/polishing of stone flooring | 7d | 2026-12-29 | 2027-01-05 | 631 |  | 7 Days Work | 9162634 |

| ID | WBS | Task | Duration | Start | Finish | Predecessors | Constraint | Calendar | Unique_Task_ID |
| --- | --- | --- | --- | --- | --- | --- | --- | --- | --- |
| 633 | 36900.37000.37100.37700.38300.39500.55400 | **Toilet** | 237d | 2026-05-12 | 2027-01-04 |  | start no earlier than 2026-05-12 | 7 Days Work | 9162194 |
| 634 | 36900.37000.37100.37700.38300.39500.55400.757400 | Toilet_MEP Clearance -1 | 7d | 2026-05-12 | 2026-05-19 | 597 |  | 7 Days Work | 9165524 |
| 635 | 36900.37000.37100.37700.38300.39500.55400.757500 | Toilet_Level Marking | 1d | 2026-05-19 | 2026-05-20 | 634 |  | 7 Days Work | 9165534 |
| 636 | 36900.37000.37100.37700.38300.39500.55400.757600 | Toilet_Chasing work for Electrical conduit & concealed plumbing | 5d | 2026-05-20 | 2026-05-25 | 635 |  | 7 Days Work | 9165544 |
| 637 | 36900.37000.37100.37700.38300.39500.55400.757700 | Toilet_Plumbing work 1st fix | 5d | 2026-05-25 | 2026-05-30 | 636 |  | 7 Days Work | 9165554 |
| 638 | 36900.37000.37100.37700.38300.39500.55400.757800 | Toilet_Sleeve/Bore Packing | 5d | 2026-05-30 | 2026-06-04 | 637 |  | 7 Days Work | 9165564 |
| 639 | 36900.37000.37100.37700.38300.39500.55400.757900 | Toilet_Waterproofing | 10d | 2026-06-04 | 2026-06-14 | 638 |  | 7 Days Work | 9165574 |
| 640 | 36900.37000.37100.37700.38300.39500.55400.758000 | Toilet_Screed | 1d | 2026-06-14 | 2026-06-15 | 639 |  | 7 Days Work | 9165584 |
| 641 | 36900.37000.37100.37700.38300.39500.55400.758100 | Toilet_Plumbing 2nd fix | 5d | 2026-06-15 | 2026-06-20 | 640 |  | 7 Days Work | 9165594 |
| 642 | 36900.37000.37100.37700.38300.39500.55400.758200 | Toilet_Ledge wall | 5d | 2026-06-20 | 2026-06-25 | 641 |  | 7 Days Work | 9165604 |
| 643 | 36900.37000.37100.37700.38300.39500.55400.758300 | Toilet_Cement Plaster | 5d | 2026-06-25 | 2026-06-30 | 642 |  | 7 Days Work | 9165614 |
| 644 | 36900.37000.37100.37700.38300.39500.55400.758400 | Toilet_Door Frame | 1d | 2026-06-30 | 2026-07-01 | 643 |  | 7 Days Work | 9165624 |
| 645 | 36900.37000.37100.37700.38300.39500.55400.758500 | Toilet_Wash basin & Couter | 3d | 2026-07-01 | 2026-07-04 | 644 |  | 7 Days Work | 9165634 |
| 646 | 36900.37000.37100.37700.38300.39500.55400.758600 | Toilet_Wall dado | 20d | 2026-07-04 | 2026-07-24 | 645 |  | 7 Days Work | 9165644 |
| 647 | 36900.37000.37100.37700.38300.39500.55400.758700 | Toilet_Granite Work-Ledge wall top | 3d | 2026-07-24 | 2026-07-27 | 646 |  | 7 Days Work | 9165654 |
| 648 | 36900.37000.37100.37700.38300.39500.55400.758800 | Toilet_Floor Tilling work | 20d | 2026-07-27 | 2026-08-16 | 647 |  | 7 Days Work | 9165664 |
| 649 | 36900.37000.37100.37700.38300.39500.55400.758900 | Toilet_1st row of dado | 5d | 2026-08-16 | 2026-08-21 | 648 |  | 7 Days Work | 9165674 |
| 650 | 36900.37000.37100.37700.38300.39500.55400.759000 | Toilet_Window Fixing | 14d | 2026-08-21 | 2026-09-04 | 649 |  | 7 Days Work | 9165684 |
| 651 | 36900.37000.37100.37700.38300.39500.55400.759100 | Toilet_Services above False ceiling | 21d | 2026-09-04 | 2026-09-25 | 650 |  | 7 Days Work | 9165694 |
| 652 | 36900.37000.37100.37700.38300.39500.55400.759200 | Toilet_False Ceiling framing | 12d | 2026-09-25 | 2026-10-07 | 651 |  | 7 Days Work | 9165704 |
| 653 | 36900.37000.37100.37700.38300.39500.55400.759300 | Toilet_Door Frame | 5d | 2026-10-07 | 2026-10-12 | 652 |  | 7 Days Work | 9165714 |
| 654 | 36900.37000.37100.37700.38300.39500.55400.759400 | Toilet_Epoxy Tile Grouting | 7d | 2026-12-07 | 2026-12-14 | 629SS |  | 7 Days Work | 9165724 |
| 655 | 36900.37000.37100.37700.38300.39500.55400.759500 | Toilet_False ceiling board fixing, CP Sanitary Fixture, Electric Fixture | 21d | 2026-12-14 | 2027-01-04 | 654 |  | 7 Days Work | 9165734 |
| 656 | 36900.37000.37100.37700.38300.39600 | **11th Habitable/13th Floor** | 245d | 2026-05-14 | 2027-01-14 |  | start no earlier than 2026-05-14 | 7 Days Work | 9162114 |
| 657 | 36900.37000.37100.37700.38300.39600.161400 | Post Pour | 7d | 2026-05-14 | 2026-05-21 | 45FS+15d |  | 7 Days Work | 9162644 |
| 658 | 36900.37000.37100.37700.38300.39600.161500 | MEP Clearance -1 | 5d | 2026-05-21 | 2026-05-26 | 657 |  | 7 Days Work | 9162654 |
| 659 | 36900.37000.37100.37700.38300.39600.161600 | Benchmark | 1d | 2026-05-26 | 2026-05-27 | 658 |  | 7 Days Work | 9162664 |
| 660 | 36900.37000.37100.37700.38300.39600.161700 | Temporary Railing | 3d | 2026-05-27 | 2026-05-30 | 659 |  | 7 Days Work | 9162674 |
| 661 | 36900.37000.37100.37700.38300.39600.161800 | Blockwork | 10d | 2026-05-30 | 2026-06-09 | 660 |  | 7 Days Work | 9162684 |
| 662 | 36900.37000.37100.37700.38300.39600.161900 | MEP Clearance -2 | 10d | 2026-06-09 | 2026-06-19 | 661 |  | 7 Days Work | 9162694 |
| 663 | 36900.37000.37100.37700.38300.39600.162000 | Gypsum Plaster | 14d | 2026-06-19 | 2026-07-03 | 662 |  | 7 Days Work | 9162704 |
| 664 | 36900.37000.37100.37700.38300.39600.162100 | Kitchen Platform | 3d | 2026-07-03 | 2026-07-06 | 663 |  | 7 Days Work | 9162714 |
| 665 | 36900.37000.37100.37700.38300.39600.162200 | Kitchen dado | 7d | 2026-07-06 | 2026-07-13 | 664 |  | 7 Days Work | 9162724 |
| 666 | 36900.37000.37100.37700.38300.39600.162300 | Fire Fighting | 5d | 2026-07-13 | 2026-07-18 | 665 |  | 7 Days Work | 9162734 |
| 667 | 36900.37000.37100.37700.38300.39600.162400 | Anticapilary | 5d | 2026-07-18 | 2026-07-23 | 666 |  | 7 Days Work | 9162744 |
| 668 | 36900.37000.37100.37700.38300.39600.162500 | Stone Laying | 10d | 2026-08-25 | 2026-09-04 | 708 |  | 7 Days Work | 9162754 |
| 669 | 36900.37000.37100.37700.38300.39600.162600 | Tiles Laying | 7d | 2026-08-25 | 2026-09-01 | 708 |  | 7 Days Work | 9162764 |
| 670 | 36900.37000.37100.37700.38300.39600.162700 | 1st cutting/polishing of stone flooring | 7d | 2026-09-01 | 2026-09-08 | 669 |  | 7 Days Work | 9162774 |
| 671 | 36900.37000.37100.37700.38300.39600.162800 | Tiles/Stone skirting | 5d | 2026-09-08 | 2026-09-13 | 670 |  | 7 Days Work | 9162784 |
| 672 | 36900.37000.37100.37700.38300.39600.162900 | Protechtion sheet | 1d | 2026-09-13 | 2026-09-14 | 671 |  | 7 Days Work | 9162794 |
| 673 | 36900.37000.37100.37700.38300.39600.163000 | Installation of Temporary Door | 1d | 2026-09-14 | 2026-09-15 | 672 |  | 7 Days Work | 9162804 |
| 674 | 36900.37000.37100.37700.38300.39600.163100 | Fixing of window tracks | 5d | 2026-09-15 | 2026-09-20 | 673 |  | 7 Days Work | 9162814 |
| 675 | 36900.37000.37100.37700.38300.39600.163200 | Wire Pulling | 7d | 2026-09-20 | 2026-09-27 | 674 |  | 7 Days Work | 9162824 |
| 676 | 36900.37000.37100.37700.38300.39600.163300 | Gypsum Remaining | 5d | 2026-09-27 | 2026-10-02 | 675 |  | 7 Days Work | 9162834 |
| 677 | 36900.37000.37100.37700.38300.39600.163400 | Fixing of windoow shutter | 5d | 2026-10-02 | 2026-10-07 | 676 |  | 7 Days Work | 9162844 |
| 678 | 36900.37000.37100.37700.38300.39600.163500 | Putty Works - walls & ceiling | 15d | 2026-10-07 | 2026-10-22 | 677 |  | 7 Days Work | 9162854 |
| 679 | 36900.37000.37100.37700.38300.39600.163600 | False Ceiling- Framing | 10d | 2026-10-22 | 2026-11-01 | 678 |  | 7 Days Work | 9162864 |
| 680 | 36900.37000.37100.37700.38300.39600.163700 | Pre Hung Door | 3d | 2026-11-01 | 2026-11-04 | 679 |  | 7 Days Work | 9162874 |
| 681 | 36900.37000.37100.37700.38300.39600.163800 | Protechtion sheet | 2d | 2026-11-04 | 2026-11-06 | 680 |  | 7 Days Work | 9162884 |
| 682 | 36900.37000.37100.37700.38300.39600.163900 | Skirting near door | 2d | 2026-11-06 | 2026-11-08 | 681 |  | 7 Days Work | 9162894 |
| 683 | 36900.37000.37100.37700.38300.39600.164000 | Electrical Switch box fixing | 14d | 2026-11-08 | 2026-11-22 | 682 |  | 7 Days Work | 9162904 |
| 684 | 36900.37000.37100.37700.38300.39600.164100 | Fire Fighting painting | 5d | 2026-11-22 | 2026-11-27 | 683 |  | 7 Days Work | 9162914 |
| 685 | 36900.37000.37100.37700.38300.39600.164200 | Protection of all flooring, door & window hardware | 5d | 2026-11-27 | 2026-12-02 | 684 |  | 7 Days Work | 9162924 |
| 686 | 36900.37000.37100.37700.38300.39600.164300 | 1st coat primer- ceiling 1st & walls | 14d | 2026-12-02 | 2026-12-16 | 685 |  | 7 Days Work | 9162934 |
| 687 | 36900.37000.37100.37700.38300.39600.164400 | Wooden Flooring | 5d | 2026-12-16 | 2026-12-21 | 686 |  | 7 Days Work | 9162944 |
| 688 | 36900.37000.37100.37700.38300.39600.164500 | Removing of Temporary Railing & installation of Glass Railing | 5d | 2026-12-16 | 2026-12-21 | 686 |  | 7 Days Work | 9162954 |
| 689 | 36900.37000.37100.37700.38300.39600.164600 | Tile Grouting | 7d | 2026-12-16 | 2026-12-23 | 686 |  | 7 Days Work | 9162964 |
| 690 | 36900.37000.37100.37700.38300.39600.164700 | False Ceiling | 5d | 2026-12-23 | 2026-12-28 | 689 |  | 7 Days Work | 9162974 |
| 691 | 36900.37000.37100.37700.38300.39600.164800 | 2nd coat of primer | 10d | 2026-12-28 | 2027-01-07 | 690 |  | 7 Days Work | 9162984 |
| 692 | 36900.37000.37100.37700.38300.39600.164900 | Final cutting/polishing of stone flooring | 7d | 2027-01-07 | 2027-01-14 | 691 |  | 7 Days Work | 9162994 |

| ID | WBS | Task | Duration | Start | Finish | Predecessors | Constraint | Calendar | Unique_Task_ID |
| --- | --- | --- | --- | --- | --- | --- | --- | --- | --- |
| 693 | 36900.37000.37100.37700.38300.39600.55500 | **Toilet** | 237d | 2026-05-21 | 2027-01-13 |  | start no earlier than 2026-05-21 | 7 Days Work | 9162204 |
| 694 | 36900.37000.37100.37700.38300.39600.55500.759600 | Toilet_MEP Clearance -1 | 7d | 2026-05-21 | 2026-05-28 | 657 |  | 7 Days Work | 9165744 |
| 695 | 36900.37000.37100.37700.38300.39600.55500.759700 | Toilet_Level Marking | 1d | 2026-05-28 | 2026-05-29 | 694 |  | 7 Days Work | 9165754 |
| 696 | 36900.37000.37100.37700.38300.39600.55500.759800 | Toilet_Chasing work for Electrical conduit & concealed plumbing | 5d | 2026-05-29 | 2026-06-03 | 695 |  | 7 Days Work | 9165764 |
| 697 | 36900.37000.37100.37700.38300.39600.55500.759900 | Toilet_Plumbing work 1st fix | 5d | 2026-06-03 | 2026-06-08 | 696 |  | 7 Days Work | 9165774 |
| 698 | 36900.37000.37100.37700.38300.39600.55500.760000 | Toilet_Sleeve/Bore Packing | 5d | 2026-06-08 | 2026-06-13 | 697 |  | 7 Days Work | 9165784 |
| 699 | 36900.37000.37100.37700.38300.39600.55500.760100 | Toilet_Waterproofing | 10d | 2026-06-13 | 2026-06-23 | 698 |  | 7 Days Work | 9165794 |
| 700 | 36900.37000.37100.37700.38300.39600.55500.760200 | Toilet_Screed | 1d | 2026-06-23 | 2026-06-24 | 699 |  | 7 Days Work | 9165804 |
| 701 | 36900.37000.37100.37700.38300.39600.55500.760300 | Toilet_Plumbing 2nd fix | 5d | 2026-06-24 | 2026-06-29 | 700 |  | 7 Days Work | 9165814 |
| 702 | 36900.37000.37100.37700.38300.39600.55500.760400 | Toilet_Ledge wall | 5d | 2026-06-29 | 2026-07-04 | 701 |  | 7 Days Work | 9165824 |
| 703 | 36900.37000.37100.37700.38300.39600.55500.760500 | Toilet_Cement Plaster | 5d | 2026-07-04 | 2026-07-09 | 702 |  | 7 Days Work | 9165834 |
| 704 | 36900.37000.37100.37700.38300.39600.55500.760600 | Toilet_Door Frame | 1d | 2026-07-09 | 2026-07-10 | 703 |  | 7 Days Work | 9165844 |
| 705 | 36900.37000.37100.37700.38300.39600.55500.760700 | Toilet_Wash basin & Couter | 3d | 2026-07-10 | 2026-07-13 | 704 |  | 7 Days Work | 9165854 |
| 706 | 36900.37000.37100.37700.38300.39600.55500.760800 | Toilet_Wall dado | 20d | 2026-07-13 | 2026-08-02 | 705 |  | 7 Days Work | 9165864 |
| 707 | 36900.37000.37100.37700.38300.39600.55500.760900 | Toilet_Granite Work-Ledge wall top | 3d | 2026-08-02 | 2026-08-05 | 706 |  | 7 Days Work | 9165874 |
| 708 | 36900.37000.37100.37700.38300.39600.55500.761000 | Toilet_Floor Tilling work | 20d | 2026-08-05 | 2026-08-25 | 707 |  | 7 Days Work | 9165884 |
| 709 | 36900.37000.37100.37700.38300.39600.55500.761100 | Toilet_1st row of dado | 5d | 2026-08-25 | 2026-08-30 | 708 |  | 7 Days Work | 9165894 |
| 710 | 36900.37000.37100.37700.38300.39600.55500.761200 | Toilet_Window Fixing | 14d | 2026-08-30 | 2026-09-13 | 709 |  | 7 Days Work | 9165904 |
| 711 | 36900.37000.37100.37700.38300.39600.55500.761300 | Toilet_Services above False ceiling | 21d | 2026-09-13 | 2026-10-04 | 710 |  | 7 Days Work | 9165914 |
| 712 | 36900.37000.37100.37700.38300.39600.55500.761400 | Toilet_False Ceiling framing | 12d | 2026-10-04 | 2026-10-16 | 711 |  | 7 Days Work | 9165924 |
| 713 | 36900.37000.37100.37700.38300.39600.55500.761500 | Toilet_Door Frame | 5d | 2026-10-16 | 2026-10-21 | 712 |  | 7 Days Work | 9165934 |
| 714 | 36900.37000.37100.37700.38300.39600.55500.761600 | Toilet_Epoxy Tile Grouting | 7d | 2026-12-16 | 2026-12-23 | 689SS |  | 7 Days Work | 9165944 |
| 715 | 36900.37000.37100.37700.38300.39600.55500.761700 | Toilet_False ceiling board fixing, CP Sanitary Fixture, Electric Fixture | 21d | 2026-12-23 | 2027-01-13 | 714 |  | 7 Days Work | 9165954 |
| 716 | 36900.37000.37100.37700.38300.39700 | **12th Habitable/14th Floor** | 245d | 2026-05-26 | 2027-01-26 |  | start no earlier than 2026-05-26 | 7 Days Work | 9162124 |
| 717 | 36900.37000.37100.37700.38300.39700.165000 | Post Pour | 7d | 2026-05-26 | 2026-06-02 | 46FS+15d |  | 7 Days Work | 9163004 |
| 718 | 36900.37000.37100.37700.38300.39700.165100 | MEP Clearance -1 | 5d | 2026-06-02 | 2026-06-07 | 717 |  | 7 Days Work | 9163014 |
| 719 | 36900.37000.37100.37700.38300.39700.165200 | Benchmark | 1d | 2026-06-07 | 2026-06-08 | 718 |  | 7 Days Work | 9163024 |
| 720 | 36900.37000.37100.37700.38300.39700.165300 | Temporary Railing | 3d | 2026-06-08 | 2026-06-11 | 719 |  | 7 Days Work | 9163034 |
| 721 | 36900.37000.37100.37700.38300.39700.165400 | Blockwork | 10d | 2026-06-11 | 2026-06-21 | 720 |  | 7 Days Work | 9163044 |
| 722 | 36900.37000.37100.37700.38300.39700.165500 | MEP Clearance -2 | 10d | 2026-06-21 | 2026-07-01 | 721 |  | 7 Days Work | 9163054 |
| 723 | 36900.37000.37100.37700.38300.39700.165600 | Gypsum Plaster | 14d | 2026-07-01 | 2026-07-15 | 722 |  | 7 Days Work | 9163064 |
| 724 | 36900.37000.37100.37700.38300.39700.165700 | Kitchen Platform | 3d | 2026-07-15 | 2026-07-18 | 723 |  | 7 Days Work | 9163074 |
| 725 | 36900.37000.37100.37700.38300.39700.165800 | Kitchen dado | 7d | 2026-07-18 | 2026-07-25 | 724 |  | 7 Days Work | 9163084 |
| 726 | 36900.37000.37100.37700.38300.39700.165900 | Fire Fighting | 5d | 2026-07-25 | 2026-07-30 | 725 |  | 7 Days Work | 9163094 |
| 727 | 36900.37000.37100.37700.38300.39700.166000 | Anticapilary | 5d | 2026-07-30 | 2026-08-04 | 726 |  | 7 Days Work | 9163104 |
| 728 | 36900.37000.37100.37700.38300.39700.166100 | Stone Laying | 10d | 2026-09-06 | 2026-09-16 | 768 |  | 7 Days Work | 9163114 |
| 729 | 36900.37000.37100.37700.38300.39700.166200 | Tiles Laying | 7d | 2026-09-06 | 2026-09-13 | 768 |  | 7 Days Work | 9163124 |
| 730 | 36900.37000.37100.37700.38300.39700.166300 | 1st cutting/polishing of stone flooring | 7d | 2026-09-13 | 2026-09-20 | 729 |  | 7 Days Work | 9163134 |
| 731 | 36900.37000.37100.37700.38300.39700.166400 | Tiles/Stone skirting | 5d | 2026-09-20 | 2026-09-25 | 730 |  | 7 Days Work | 9163144 |
| 732 | 36900.37000.37100.37700.38300.39700.166500 | Protechtion sheet | 1d | 2026-09-25 | 2026-09-26 | 731 |  | 7 Days Work | 9163154 |
| 733 | 36900.37000.37100.37700.38300.39700.166600 | Installation of Temporary Door | 1d | 2026-09-26 | 2026-09-27 | 732 |  | 7 Days Work | 9163164 |
| 734 | 36900.37000.37100.37700.38300.39700.166700 | Fixing of window tracks | 5d | 2026-09-27 | 2026-10-02 | 733 |  | 7 Days Work | 9163174 |
| 735 | 36900.37000.37100.37700.38300.39700.166800 | Wire Pulling | 7d | 2026-10-02 | 2026-10-09 | 734 |  | 7 Days Work | 9163184 |
| 736 | 36900.37000.37100.37700.38300.39700.166900 | Gypsum Remaining | 5d | 2026-10-09 | 2026-10-14 | 735 |  | 7 Days Work | 9163194 |
| 737 | 36900.37000.37100.37700.38300.39700.167000 | Fixing of windoow shutter | 5d | 2026-10-14 | 2026-10-19 | 736 |  | 7 Days Work | 9163204 |
| 738 | 36900.37000.37100.37700.38300.39700.167100 | Putty Works - walls & ceiling | 15d | 2026-10-19 | 2026-11-03 | 737 |  | 7 Days Work | 9163214 |
| 739 | 36900.37000.37100.37700.38300.39700.167200 | False Ceiling- Framing | 10d | 2026-11-03 | 2026-11-13 | 738 |  | 7 Days Work | 9163224 |
| 740 | 36900.37000.37100.37700.38300.39700.167300 | Pre Hung Door | 3d | 2026-11-13 | 2026-11-16 | 739 |  | 7 Days Work | 9163234 |
| 741 | 36900.37000.37100.37700.38300.39700.167400 | Protechtion sheet | 2d | 2026-11-16 | 2026-11-18 | 740 |  | 7 Days Work | 9163244 |
| 742 | 36900.37000.37100.37700.38300.39700.167500 | Skirting near door | 2d | 2026-11-18 | 2026-11-20 | 741 |  | 7 Days Work | 9163254 |
| 743 | 36900.37000.37100.37700.38300.39700.167600 | Electrical Switch box fixing | 14d | 2026-11-20 | 2026-12-04 | 742 |  | 7 Days Work | 9163264 |
| 744 | 36900.37000.37100.37700.38300.39700.167700 | Fire Fighting painting | 5d | 2026-12-04 | 2026-12-09 | 743 |  | 7 Days Work | 9163274 |
| 745 | 36900.37000.37100.37700.38300.39700.167800 | Protection of all flooring, door & window hardware | 5d | 2026-12-09 | 2026-12-14 | 744 |  | 7 Days Work | 9163284 |
| 746 | 36900.37000.37100.37700.38300.39700.167900 | 1st coat primer- ceiling 1st & walls | 14d | 2026-12-14 | 2026-12-28 | 745 |  | 7 Days Work | 9163294 |
| 747 | 36900.37000.37100.37700.38300.39700.168000 | Wooden Flooring | 5d | 2026-12-28 | 2027-01-02 | 746 |  | 7 Days Work | 9163304 |
| 748 | 36900.37000.37100.37700.38300.39700.168100 | Removing of Temporary Railing & installation of Glass Railing | 5d | 2026-12-28 | 2027-01-02 | 746 |  | 7 Days Work | 9163314 |
| 749 | 36900.37000.37100.37700.38300.39700.168200 | Tile Grouting | 7d | 2026-12-28 | 2027-01-04 | 746 |  | 7 Days Work | 9163324 |
| 750 | 36900.37000.37100.37700.38300.39700.168300 | False Ceiling | 5d | 2027-01-04 | 2027-01-09 | 749 |  | 7 Days Work | 9163334 |
| 751 | 36900.37000.37100.37700.38300.39700.168400 | 2nd coat of primer | 10d | 2027-01-09 | 2027-01-19 | 750 |  | 7 Days Work | 9163344 |
| 752 | 36900.37000.37100.37700.38300.39700.168500 | Final cutting/polishing of stone flooring | 7d | 2027-01-19 | 2027-01-26 | 751 |  | 7 Days Work | 9163354 |

| ID | WBS | Task | Duration | Start | Finish | Predecessors | Constraint | Calendar | Unique_Task_ID |
| --- | --- | --- | --- | --- | --- | --- | --- | --- | --- |
| 753 | 36900.37000.37100.37700.38300.39700.57000 | **Toilet** | 237d | 2026-06-02 | 2027-01-25 |  | start no earlier than 2026-06-02 | 7 Days Work | 9162214 |
| 754 | 36900.37000.37100.37700.38300.39700.57000.761800 | Toilet_MEP Clearance -1 | 7d | 2026-06-02 | 2026-06-09 | 717 |  | 7 Days Work | 9165964 |
| 755 | 36900.37000.37100.37700.38300.39700.57000.761900 | Toilet_Level Marking | 1d | 2026-06-09 | 2026-06-10 | 754 |  | 7 Days Work | 9165974 |
| 756 | 36900.37000.37100.37700.38300.39700.57000.762000 | Toilet_Chasing work for Electrical conduit & concealed plumbing | 5d | 2026-06-10 | 2026-06-15 | 755 |  | 7 Days Work | 9165984 |
| 757 | 36900.37000.37100.37700.38300.39700.57000.762100 | Toilet_Plumbing work 1st fix | 5d | 2026-06-15 | 2026-06-20 | 756 |  | 7 Days Work | 9165994 |
| 758 | 36900.37000.37100.37700.38300.39700.57000.762200 | Toilet_Sleeve/Bore Packing | 5d | 2026-06-20 | 2026-06-25 | 757 |  | 7 Days Work | 9166004 |
| 759 | 36900.37000.37100.37700.38300.39700.57000.762300 | Toilet_Waterproofing | 10d | 2026-06-25 | 2026-07-05 | 758 |  | 7 Days Work | 9166014 |
| 760 | 36900.37000.37100.37700.38300.39700.57000.762400 | Toilet_Screed | 1d | 2026-07-05 | 2026-07-06 | 759 |  | 7 Days Work | 9166024 |
| 761 | 36900.37000.37100.37700.38300.39700.57000.762500 | Toilet_Plumbing 2nd fix | 5d | 2026-07-06 | 2026-07-11 | 760 |  | 7 Days Work | 9166034 |
| 762 | 36900.37000.37100.37700.38300.39700.57000.762600 | Toilet_Ledge wall | 5d | 2026-07-11 | 2026-07-16 | 761 |  | 7 Days Work | 9166044 |
| 763 | 36900.37000.37100.37700.38300.39700.57000.762700 | Toilet_Cement Plaster | 5d | 2026-07-16 | 2026-07-21 | 762 |  | 7 Days Work | 9166054 |
| 764 | 36900.37000.37100.37700.38300.39700.57000.762800 | Toilet_Door Frame | 1d | 2026-07-21 | 2026-07-22 | 763 |  | 7 Days Work | 9166064 |
| 765 | 36900.37000.37100.37700.38300.39700.57000.762900 | Toilet_Wash basin & Couter | 3d | 2026-07-22 | 2026-07-25 | 764 |  | 7 Days Work | 9166074 |
| 766 | 36900.37000.37100.37700.38300.39700.57000.763000 | Toilet_Wall dado | 20d | 2026-07-25 | 2026-08-14 | 765 |  | 7 Days Work | 9166084 |
| 767 | 36900.37000.37100.37700.38300.39700.57000.763100 | Toilet_Granite Work-Ledge wall top | 3d | 2026-08-14 | 2026-08-17 | 766 |  | 7 Days Work | 9166094 |
| 768 | 36900.37000.37100.37700.38300.39700.57000.763200 | Toilet_Floor Tilling work | 20d | 2026-08-17 | 2026-09-06 | 767 |  | 7 Days Work | 9166104 |
| 769 | 36900.37000.37100.37700.38300.39700.57000.763300 | Toilet_1st row of dado | 5d | 2026-09-06 | 2026-09-11 | 768 |  | 7 Days Work | 9166114 |
| 770 | 36900.37000.37100.37700.38300.39700.57000.763400 | Toilet_Window Fixing | 14d | 2026-09-11 | 2026-09-25 | 769 |  | 7 Days Work | 9166124 |
| 771 | 36900.37000.37100.37700.38300.39700.57000.763500 | Toilet_Services above False ceiling | 21d | 2026-09-25 | 2026-10-16 | 770 |  | 7 Days Work | 9166134 |
| 772 | 36900.37000.37100.37700.38300.39700.57000.763600 | Toilet_False Ceiling framing | 12d | 2026-10-16 | 2026-10-28 | 771 |  | 7 Days Work | 9166144 |
| 773 | 36900.37000.37100.37700.38300.39700.57000.763700 | Toilet_Door Frame | 5d | 2026-10-28 | 2026-11-02 | 772 |  | 7 Days Work | 9166154 |
| 774 | 36900.37000.37100.37700.38300.39700.57000.763800 | Toilet_Epoxy Tile Grouting | 7d | 2026-12-28 | 2027-01-04 | 749SS |  | 7 Days Work | 9166164 |
| 775 | 36900.37000.37100.37700.38300.39700.57000.763900 | Toilet_False ceiling board fixing, CP Sanitary Fixture, Electric Fixture | 21d | 2027-01-04 | 2027-01-25 | 774 |  | 7 Days Work | 9166174 |
| 776 | 36900.37000.37100.37700.38300.39800 | **13th Habitable/15th Floor** | 245d | 2026-06-04 | 2027-02-04 |  | start no earlier than 2026-06-04 | 7 Days Work | 9162134 |
| 777 | 36900.37000.37100.37700.38300.39800.168600 | Post Pour | 7d | 2026-06-04 | 2026-06-11 | 47FS+15d |  | 7 Days Work | 9163364 |
| 778 | 36900.37000.37100.37700.38300.39800.168700 | MEP Clearance -1 | 5d | 2026-06-11 | 2026-06-16 | 777 |  | 7 Days Work | 9163374 |
| 779 | 36900.37000.37100.37700.38300.39800.168800 | Benchmark | 1d | 2026-06-16 | 2026-06-17 | 778 |  | 7 Days Work | 9163384 |
| 780 | 36900.37000.37100.37700.38300.39800.168900 | Temporary Railing | 3d | 2026-06-17 | 2026-06-20 | 779 |  | 7 Days Work | 9163394 |
| 781 | 36900.37000.37100.37700.38300.39800.169000 | Blockwork | 10d | 2026-06-20 | 2026-06-30 | 780 |  | 7 Days Work | 9163404 |
| 782 | 36900.37000.37100.37700.38300.39800.169100 | MEP Clearance -2 | 10d | 2026-06-30 | 2026-07-10 | 781 |  | 7 Days Work | 9163414 |
| 783 | 36900.37000.37100.37700.38300.39800.169200 | Gypsum Plaster | 14d | 2026-07-10 | 2026-07-24 | 782 |  | 7 Days Work | 9163424 |
| 784 | 36900.37000.37100.37700.38300.39800.169300 | Kitchen Platform | 3d | 2026-07-24 | 2026-07-27 | 783 |  | 7 Days Work | 9163434 |
| 785 | 36900.37000.37100.37700.38300.39800.169400 | Kitchen dado | 7d | 2026-07-27 | 2026-08-03 | 784 |  | 7 Days Work | 9163444 |
| 786 | 36900.37000.37100.37700.38300.39800.169500 | Fire Fighting | 5d | 2026-08-03 | 2026-08-08 | 785 |  | 7 Days Work | 9163454 |
| 787 | 36900.37000.37100.37700.38300.39800.169600 | Anticapilary | 5d | 2026-08-08 | 2026-08-13 | 786 |  | 7 Days Work | 9163464 |
| 788 | 36900.37000.37100.37700.38300.39800.169700 | Stone Laying | 10d | 2026-09-15 | 2026-09-25 | 828 |  | 7 Days Work | 9163474 |
| 789 | 36900.37000.37100.37700.38300.39800.169800 | Tiles Laying | 7d | 2026-09-15 | 2026-09-22 | 828 |  | 7 Days Work | 9163484 |
| 790 | 36900.37000.37100.37700.38300.39800.169900 | 1st cutting/polishing of stone flooring | 7d | 2026-09-22 | 2026-09-29 | 789 |  | 7 Days Work | 9163494 |
| 791 | 36900.37000.37100.37700.38300.39800.170000 | Tiles/Stone skirting | 5d | 2026-09-29 | 2026-10-04 | 790 |  | 7 Days Work | 9163504 |
| 792 | 36900.37000.37100.37700.38300.39800.170100 | Protechtion sheet | 1d | 2026-10-04 | 2026-10-05 | 791 |  | 7 Days Work | 9163514 |
| 793 | 36900.37000.37100.37700.38300.39800.170200 | Installation of Temporary Door | 1d | 2026-10-05 | 2026-10-06 | 792 |  | 7 Days Work | 9163524 |
| 794 | 36900.37000.37100.37700.38300.39800.170300 | Fixing of window tracks | 5d | 2026-10-06 | 2026-10-11 | 793 |  | 7 Days Work | 9163534 |
| 795 | 36900.37000.37100.37700.38300.39800.170400 | Wire Pulling | 7d | 2026-10-11 | 2026-10-18 | 794 |  | 7 Days Work | 9163544 |
| 796 | 36900.37000.37100.37700.38300.39800.170500 | Gypsum Remaining | 5d | 2026-10-18 | 2026-10-23 | 795 |  | 7 Days Work | 9163554 |
| 797 | 36900.37000.37100.37700.38300.39800.170600 | Fixing of windoow shutter | 5d | 2026-10-23 | 2026-10-28 | 796 |  | 7 Days Work | 9163564 |
| 798 | 36900.37000.37100.37700.38300.39800.170700 | Putty Works - walls & ceiling | 15d | 2026-10-28 | 2026-11-12 | 797 |  | 7 Days Work | 9163574 |
| 799 | 36900.37000.37100.37700.38300.39800.170800 | False Ceiling- Framing | 10d | 2026-11-12 | 2026-11-22 | 798 |  | 7 Days Work | 9163584 |
| 800 | 36900.37000.37100.37700.38300.39800.170900 | Pre Hung Door | 3d | 2026-11-22 | 2026-11-25 | 799 |  | 7 Days Work | 9163594 |
| 801 | 36900.37000.37100.37700.38300.39800.171000 | Protechtion sheet | 2d | 2026-11-25 | 2026-11-27 | 800 |  | 7 Days Work | 9163604 |
| 802 | 36900.37000.37100.37700.38300.39800.171100 | Skirting near door | 2d | 2026-11-27 | 2026-11-29 | 801 |  | 7 Days Work | 9163614 |
| 803 | 36900.37000.37100.37700.38300.39800.171200 | Electrical Switch box fixing | 14d | 2026-11-29 | 2026-12-13 | 802 |  | 7 Days Work | 9163624 |
| 804 | 36900.37000.37100.37700.38300.39800.171300 | Fire Fighting painting | 5d | 2026-12-13 | 2026-12-18 | 803 |  | 7 Days Work | 9163634 |
| 805 | 36900.37000.37100.37700.38300.39800.171400 | Protection of all flooring, door & window hardware | 5d | 2026-12-18 | 2026-12-23 | 804 |  | 7 Days Work | 9163644 |
| 806 | 36900.37000.37100.37700.38300.39800.171500 | 1st coat primer- ceiling 1st & walls | 14d | 2026-12-23 | 2027-01-06 | 805 |  | 7 Days Work | 9163654 |
| 807 | 36900.37000.37100.37700.38300.39800.171600 | Wooden Flooring | 5d | 2027-01-06 | 2027-01-11 | 806 |  | 7 Days Work | 9163664 |
| 808 | 36900.37000.37100.37700.38300.39800.171700 | Removing of Temporary Railing & installation of Glass Railing | 5d | 2027-01-06 | 2027-01-11 | 806 |  | 7 Days Work | 9163674 |
| 809 | 36900.37000.37100.37700.38300.39800.171800 | Tile Grouting | 7d | 2027-01-06 | 2027-01-13 | 806 |  | 7 Days Work | 9163684 |
| 810 | 36900.37000.37100.37700.38300.39800.171900 | False Ceiling | 5d | 2027-01-13 | 2027-01-18 | 809 |  | 7 Days Work | 9163694 |
| 811 | 36900.37000.37100.37700.38300.39800.172000 | 2nd coat of primer | 10d | 2027-01-18 | 2027-01-28 | 810 |  | 7 Days Work | 9163704 |
| 812 | 36900.37000.37100.37700.38300.39800.172100 | Final cutting/polishing of stone flooring | 7d | 2027-01-28 | 2027-02-04 | 811 |  | 7 Days Work | 9163714 |

| ID | WBS | Task | Duration | Start | Finish | Predecessors | Constraint | Calendar | Unique_Task_ID |
| --- | --- | --- | --- | --- | --- | --- | --- | --- | --- |
| 813 | 36900.37000.37100.37700.38300.39800.57100 | **Toilet** | 237d | 2026-06-11 | 2027-02-03 |  | start no earlier than 2026-06-11 | 7 Days Work | 9162224 |
| 814 | 36900.37000.37100.37700.38300.39800.57100.764000 | Toilet_MEP Clearance -1 | 7d | 2026-06-11 | 2026-06-18 | 777 |  | 7 Days Work | 9166184 |
| 815 | 36900.37000.37100.37700.38300.39800.57100.764100 | Toilet_Level Marking | 1d | 2026-06-18 | 2026-06-19 | 814 |  | 7 Days Work | 9166194 |
| 816 | 36900.37000.37100.37700.38300.39800.57100.764200 | Toilet_Chasing work for Electrical conduit & concealed plumbing | 5d | 2026-06-19 | 2026-06-24 | 815 |  | 7 Days Work | 9166204 |
| 817 | 36900.37000.37100.37700.38300.39800.57100.764300 | Toilet_Plumbing work 1st fix | 5d | 2026-06-24 | 2026-06-29 | 816 |  | 7 Days Work | 9166214 |
| 818 | 36900.37000.37100.37700.38300.39800.57100.764400 | Toilet_Sleeve/Bore Packing | 5d | 2026-06-29 | 2026-07-04 | 817 |  | 7 Days Work | 9166224 |
| 819 | 36900.37000.37100.37700.38300.39800.57100.764500 | Toilet_Waterproofing | 10d | 2026-07-04 | 2026-07-14 | 818 |  | 7 Days Work | 9166234 |
| 820 | 36900.37000.37100.37700.38300.39800.57100.764600 | Toilet_Screed | 1d | 2026-07-14 | 2026-07-15 | 819 |  | 7 Days Work | 9166244 |
| 821 | 36900.37000.37100.37700.38300.39800.57100.764700 | Toilet_Plumbing 2nd fix | 5d | 2026-07-15 | 2026-07-20 | 820 |  | 7 Days Work | 9166254 |
| 822 | 36900.37000.37100.37700.38300.39800.57100.764800 | Toilet_Ledge wall | 5d | 2026-07-20 | 2026-07-25 | 821 |  | 7 Days Work | 9166264 |
| 823 | 36900.37000.37100.37700.38300.39800.57100.764900 | Toilet_Cement Plaster | 5d | 2026-07-25 | 2026-07-30 | 822 |  | 7 Days Work | 9166274 |
| 824 | 36900.37000.37100.37700.38300.39800.57100.765000 | Toilet_Door Frame | 1d | 2026-07-30 | 2026-07-31 | 823 |  | 7 Days Work | 9166284 |
| 825 | 36900.37000.37100.37700.38300.39800.57100.765100 | Toilet_Wash basin & Couter | 3d | 2026-07-31 | 2026-08-03 | 824 |  | 7 Days Work | 9166294 |
| 826 | 36900.37000.37100.37700.38300.39800.57100.765200 | Toilet_Wall dado | 20d | 2026-08-03 | 2026-08-23 | 825 |  | 7 Days Work | 9166304 |
| 827 | 36900.37000.37100.37700.38300.39800.57100.765300 | Toilet_Granite Work-Ledge wall top | 3d | 2026-08-23 | 2026-08-26 | 826 |  | 7 Days Work | 9166314 |
| 828 | 36900.37000.37100.37700.38300.39800.57100.765400 | Toilet_Floor Tilling work | 20d | 2026-08-26 | 2026-09-15 | 827 |  | 7 Days Work | 9166324 |
| 829 | 36900.37000.37100.37700.38300.39800.57100.765500 | Toilet_1st row of dado | 5d | 2026-09-15 | 2026-09-20 | 828 |  | 7 Days Work | 9166334 |
| 830 | 36900.37000.37100.37700.38300.39800.57100.765600 | Toilet_Window Fixing | 14d | 2026-09-20 | 2026-10-04 | 829 |  | 7 Days Work | 9166344 |
| 831 | 36900.37000.37100.37700.38300.39800.57100.765700 | Toilet_Services above False ceiling | 21d | 2026-10-04 | 2026-10-25 | 830 |  | 7 Days Work | 9166354 |
| 832 | 36900.37000.37100.37700.38300.39800.57100.765800 | Toilet_False Ceiling framing | 12d | 2026-10-25 | 2026-11-06 | 831 |  | 7 Days Work | 9166364 |
| 833 | 36900.37000.37100.37700.38300.39800.57100.765900 | Toilet_Door Frame | 5d | 2026-11-06 | 2026-11-11 | 832 |  | 7 Days Work | 9166374 |
| 834 | 36900.37000.37100.37700.38300.39800.57100.766000 | Toilet_Epoxy Tile Grouting | 7d | 2027-01-06 | 2027-01-13 | 809SS |  | 7 Days Work | 9166384 |
| 835 | 36900.37000.37100.37700.38300.39800.57100.766100 | Toilet_False ceiling board fixing, CP Sanitary Fixture, Electric Fixture | 21d | 2027-01-13 | 2027-02-03 | 834 |  | 7 Days Work | 9166394 |
| 836 | 36900.37000.37100.37700.38300.39900 | **14th Habitable/16th Floor** | 245d | 2026-06-13 | 2027-02-13 |  | start no earlier than 2026-06-13 | 7 Days Work | 9162144 |
| 837 | 36900.37000.37100.37700.38300.39900.172200 | Post Pour | 7d | 2026-06-13 | 2026-06-20 | 48FS+15d |  | 7 Days Work | 9163724 |
| 838 | 36900.37000.37100.37700.38300.39900.172300 | MEP Clearance -1 | 5d | 2026-06-20 | 2026-06-25 | 837 |  | 7 Days Work | 9163734 |
| 839 | 36900.37000.37100.37700.38300.39900.172400 | Benchmark | 1d | 2026-06-25 | 2026-06-26 | 838 |  | 7 Days Work | 9163744 |
| 840 | 36900.37000.37100.37700.38300.39900.172500 | Temporary Railing | 3d | 2026-06-26 | 2026-06-29 | 839 |  | 7 Days Work | 9163754 |
| 841 | 36900.37000.37100.37700.38300.39900.172600 | Blockwork | 10d | 2026-06-29 | 2026-07-09 | 840 |  | 7 Days Work | 9163764 |
| 842 | 36900.37000.37100.37700.38300.39900.172700 | MEP Clearance -2 | 10d | 2026-07-09 | 2026-07-19 | 841 |  | 7 Days Work | 9163774 |
| 843 | 36900.37000.37100.37700.38300.39900.172800 | Gypsum Plaster | 14d | 2026-07-19 | 2026-08-02 | 842 |  | 7 Days Work | 9163784 |
| 844 | 36900.37000.37100.37700.38300.39900.172900 | Kitchen Platform | 3d | 2026-08-02 | 2026-08-05 | 843 |  | 7 Days Work | 9163794 |
| 845 | 36900.37000.37100.37700.38300.39900.173000 | Kitchen dado | 7d | 2026-08-05 | 2026-08-12 | 844 |  | 7 Days Work | 9163804 |
| 846 | 36900.37000.37100.37700.38300.39900.173100 | Fire Fighting | 5d | 2026-08-12 | 2026-08-17 | 845 |  | 7 Days Work | 9163814 |
| 847 | 36900.37000.37100.37700.38300.39900.173200 | Anticapilary | 5d | 2026-08-17 | 2026-08-22 | 846 |  | 7 Days Work | 9163824 |
| 848 | 36900.37000.37100.37700.38300.39900.173300 | Stone Laying | 10d | 2026-09-24 | 2026-10-04 | 888 |  | 7 Days Work | 9163834 |
| 849 | 36900.37000.37100.37700.38300.39900.173400 | Tiles Laying | 7d | 2026-09-24 | 2026-10-01 | 888 |  | 7 Days Work | 9163844 |
| 850 | 36900.37000.37100.37700.38300.39900.173500 | 1st cutting/polishing of stone flooring | 7d | 2026-10-01 | 2026-10-08 | 849 |  | 7 Days Work | 9163854 |
| 851 | 36900.37000.37100.37700.38300.39900.173600 | Tiles/Stone skirting | 5d | 2026-10-08 | 2026-10-13 | 850 |  | 7 Days Work | 9163864 |
| 852 | 36900.37000.37100.37700.38300.39900.173700 | Protechtion sheet | 1d | 2026-10-13 | 2026-10-14 | 851 |  | 7 Days Work | 9163874 |
| 853 | 36900.37000.37100.37700.38300.39900.173800 | Installation of Temporary Door | 1d | 2026-10-14 | 2026-10-15 | 852 |  | 7 Days Work | 9163884 |
| 854 | 36900.37000.37100.37700.38300.39900.173900 | Fixing of window tracks | 5d | 2026-10-15 | 2026-10-20 | 853 |  | 7 Days Work | 9163894 |
| 855 | 36900.37000.37100.37700.38300.39900.174000 | Wire Pulling | 7d | 2026-10-20 | 2026-10-27 | 854 |  | 7 Days Work | 9163904 |
| 856 | 36900.37000.37100.37700.38300.39900.174100 | Gypsum Remaining | 5d | 2026-10-27 | 2026-11-01 | 855 |  | 7 Days Work | 9163914 |
| 857 | 36900.37000.37100.37700.38300.39900.174200 | Fixing of windoow shutter | 5d | 2026-11-01 | 2026-11-06 | 856 |  | 7 Days Work | 9163924 |
| 858 | 36900.37000.37100.37700.38300.39900.174300 | Putty Works - walls & ceiling | 15d | 2026-11-06 | 2026-11-21 | 857 |  | 7 Days Work | 9163934 |
| 859 | 36900.37000.37100.37700.38300.39900.174400 | False Ceiling- Framing | 10d | 2026-11-21 | 2026-12-01 | 858 |  | 7 Days Work | 9163944 |
| 860 | 36900.37000.37100.37700.38300.39900.174500 | Pre Hung Door | 3d | 2026-12-01 | 2026-12-04 | 859 |  | 7 Days Work | 9163954 |
| 861 | 36900.37000.37100.37700.38300.39900.174600 | Protechtion sheet | 2d | 2026-12-04 | 2026-12-06 | 860 |  | 7 Days Work | 9163964 |
| 862 | 36900.37000.37100.37700.38300.39900.174700 | Skirting near door | 2d | 2026-12-06 | 2026-12-08 | 861 |  | 7 Days Work | 9163974 |
| 863 | 36900.37000.37100.37700.38300.39900.174800 | Electrical Switch box fixing | 14d | 2026-12-08 | 2026-12-22 | 862 |  | 7 Days Work | 9163984 |
| 864 | 36900.37000.37100.37700.38300.39900.174900 | Fire Fighting painting | 5d | 2026-12-22 | 2026-12-27 | 863 |  | 7 Days Work | 9163994 |
| 865 | 36900.37000.37100.37700.38300.39900.175000 | Protection of all flooring, door & window hardware | 5d | 2026-12-27 | 2027-01-01 | 864 |  | 7 Days Work | 9164004 |
| 866 | 36900.37000.37100.37700.38300.39900.175100 | 1st coat primer- ceiling 1st & walls | 14d | 2027-01-01 | 2027-01-15 | 865 |  | 7 Days Work | 9164014 |
| 867 | 36900.37000.37100.37700.38300.39900.175200 | Wooden Flooring | 5d | 2027-01-15 | 2027-01-20 | 866 |  | 7 Days Work | 9164024 |
| 868 | 36900.37000.37100.37700.38300.39900.175300 | Removing of Temporary Railing & installation of Glass Railing | 5d | 2027-01-15 | 2027-01-20 | 866 |  | 7 Days Work | 9164034 |
| 869 | 36900.37000.37100.37700.38300.39900.175400 | Tile Grouting | 7d | 2027-01-15 | 2027-01-22 | 866 |  | 7 Days Work | 9164044 |
| 870 | 36900.37000.37100.37700.38300.39900.175500 | False Ceiling | 5d | 2027-01-22 | 2027-01-27 | 869 |  | 7 Days Work | 9164054 |
| 871 | 36900.37000.37100.37700.38300.39900.175600 | 2nd coat of primer | 10d | 2027-01-27 | 2027-02-06 | 870 |  | 7 Days Work | 9164064 |
| 872 | 36900.37000.37100.37700.38300.39900.175700 | Final cutting/polishing of stone flooring | 7d | 2027-02-06 | 2027-02-13 | 871 |  | 7 Days Work | 9164074 |

| ID | WBS | Task | Duration | Start | Finish | Predecessors | Constraint | Calendar | Unique_Task_ID |
| --- | --- | --- | --- | --- | --- | --- | --- | --- | --- |
| 873 | 36900.37000.37100.37700.38300.39900.57200 | **Toilet** | 237d | 2026-06-20 | 2027-02-12 |  | start no earlier than 2026-06-20 | 7 Days Work | 9162234 |
| 874 | 36900.37000.37100.37700.38300.39900.57200.766200 | Toilet_MEP Clearance -1 | 7d | 2026-06-20 | 2026-06-27 | 837 |  | 7 Days Work | 9166404 |
| 875 | 36900.37000.37100.37700.38300.39900.57200.766300 | Toilet_Level Marking | 1d | 2026-06-27 | 2026-06-28 | 874 |  | 7 Days Work | 9166414 |
| 876 | 36900.37000.37100.37700.38300.39900.57200.766400 | Toilet_Chasing work for Electrical conduit & concealed plumbing | 5d | 2026-06-28 | 2026-07-03 | 875 |  | 7 Days Work | 9166424 |
| 877 | 36900.37000.37100.37700.38300.39900.57200.766500 | Toilet_Plumbing work 1st fix | 5d | 2026-07-03 | 2026-07-08 | 876 |  | 7 Days Work | 9166434 |
| 878 | 36900.37000.37100.37700.38300.39900.57200.766600 | Toilet_Sleeve/Bore Packing | 5d | 2026-07-08 | 2026-07-13 | 877 |  | 7 Days Work | 9166444 |
| 879 | 36900.37000.37100.37700.38300.39900.57200.766700 | Toilet_Waterproofing | 10d | 2026-07-13 | 2026-07-23 | 878 |  | 7 Days Work | 9166454 |
| 880 | 36900.37000.37100.37700.38300.39900.57200.766800 | Toilet_Screed | 1d | 2026-07-23 | 2026-07-24 | 879 |  | 7 Days Work | 9166464 |
| 881 | 36900.37000.37100.37700.38300.39900.57200.766900 | Toilet_Plumbing 2nd fix | 5d | 2026-07-24 | 2026-07-29 | 880 |  | 7 Days Work | 9166474 |
| 882 | 36900.37000.37100.37700.38300.39900.57200.767000 | Toilet_Ledge wall | 5d | 2026-07-29 | 2026-08-03 | 881 |  | 7 Days Work | 9166484 |
| 883 | 36900.37000.37100.37700.38300.39900.57200.767100 | Toilet_Cement Plaster | 5d | 2026-08-03 | 2026-08-08 | 882 |  | 7 Days Work | 9166494 |
| 884 | 36900.37000.37100.37700.38300.39900.57200.767200 | Toilet_Door Frame | 1d | 2026-08-08 | 2026-08-09 | 883 |  | 7 Days Work | 9166504 |
| 885 | 36900.37000.37100.37700.38300.39900.57200.767300 | Toilet_Wash basin & Couter | 3d | 2026-08-09 | 2026-08-12 | 884 |  | 7 Days Work | 9166514 |
| 886 | 36900.37000.37100.37700.38300.39900.57200.767400 | Toilet_Wall dado | 20d | 2026-08-12 | 2026-09-01 | 885 |  | 7 Days Work | 9166524 |
| 887 | 36900.37000.37100.37700.38300.39900.57200.767500 | Toilet_Granite Work-Ledge wall top | 3d | 2026-09-01 | 2026-09-04 | 886 |  | 7 Days Work | 9166534 |
| 888 | 36900.37000.37100.37700.38300.39900.57200.767600 | Toilet_Floor Tilling work | 20d | 2026-09-04 | 2026-09-24 | 887 |  | 7 Days Work | 9166544 |
| 889 | 36900.37000.37100.37700.38300.39900.57200.767700 | Toilet_1st row of dado | 5d | 2026-09-24 | 2026-09-29 | 888 |  | 7 Days Work | 9166554 |
| 890 | 36900.37000.37100.37700.38300.39900.57200.767800 | Toilet_Window Fixing | 14d | 2026-09-29 | 2026-10-13 | 889 |  | 7 Days Work | 9166564 |
| 891 | 36900.37000.37100.37700.38300.39900.57200.767900 | Toilet_Services above False ceiling | 21d | 2026-10-13 | 2026-11-03 | 890 |  | 7 Days Work | 9166574 |
| 892 | 36900.37000.37100.37700.38300.39900.57200.768000 | Toilet_False Ceiling framing | 12d | 2026-11-03 | 2026-11-15 | 891 |  | 7 Days Work | 9166584 |
| 893 | 36900.37000.37100.37700.38300.39900.57200.768100 | Toilet_Door Frame | 5d | 2026-11-15 | 2026-11-20 | 892 |  | 7 Days Work | 9166594 |
| 894 | 36900.37000.37100.37700.38300.39900.57200.768200 | Toilet_Epoxy Tile Grouting | 7d | 2027-01-15 | 2027-01-22 | 869SS |  | 7 Days Work | 9166604 |
| 895 | 36900.37000.37100.37700.38300.39900.57200.768300 | Toilet_False ceiling board fixing, CP Sanitary Fixture, Electric Fixture | 21d | 2027-01-22 | 2027-02-12 | 894 |  | 7 Days Work | 9166614 |
| 896 | 36900.37000.37100.37700.38300.40000 | **15th Habitable/17th Floor** | 245d | 2026-06-22 | 2027-02-22 |  | start no earlier than 2026-06-22 | 7 Days Work | 9162154 |
| 897 | 36900.37000.37100.37700.38300.40000.175800 | Post Pour | 7d | 2026-06-22 | 2026-06-29 | 49FS+15d |  | 7 Days Work | 9164084 |
| 898 | 36900.37000.37100.37700.38300.40000.175900 | MEP Clearance -1 | 5d | 2026-06-29 | 2026-07-04 | 897 |  | 7 Days Work | 9164094 |
| 899 | 36900.37000.37100.37700.38300.40000.176000 | Benchmark | 1d | 2026-07-04 | 2026-07-05 | 898 |  | 7 Days Work | 9164104 |
| 900 | 36900.37000.37100.37700.38300.40000.176100 | Temporary Railing | 3d | 2026-07-05 | 2026-07-08 | 899 |  | 7 Days Work | 9164114 |
| 901 | 36900.37000.37100.37700.38300.40000.176200 | Blockwork | 10d | 2026-07-08 | 2026-07-18 | 900 |  | 7 Days Work | 9164124 |
| 902 | 36900.37000.37100.37700.38300.40000.176300 | MEP Clearance -2 | 10d | 2026-07-18 | 2026-07-28 | 901 |  | 7 Days Work | 9164134 |
| 903 | 36900.37000.37100.37700.38300.40000.176400 | Gypsum Plaster | 14d | 2026-07-28 | 2026-08-11 | 902 |  | 7 Days Work | 9164144 |
| 904 | 36900.37000.37100.37700.38300.40000.176500 | Kitchen Platform | 3d | 2026-08-11 | 2026-08-14 | 903 |  | 7 Days Work | 9164154 |
| 905 | 36900.37000.37100.37700.38300.40000.176600 | Kitchen dado | 7d | 2026-08-14 | 2026-08-21 | 904 |  | 7 Days Work | 9164164 |
| 906 | 36900.37000.37100.37700.38300.40000.176700 | Fire Fighting | 5d | 2026-08-21 | 2026-08-26 | 905 |  | 7 Days Work | 9164174 |
| 907 | 36900.37000.37100.37700.38300.40000.176800 | Anticapilary | 5d | 2026-08-26 | 2026-08-31 | 906 |  | 7 Days Work | 9164184 |
| 908 | 36900.37000.37100.37700.38300.40000.176900 | Stone Laying | 10d | 2026-10-03 | 2026-10-13 | 948 |  | 7 Days Work | 9164194 |
| 909 | 36900.37000.37100.37700.38300.40000.177000 | Tiles Laying | 7d | 2026-10-03 | 2026-10-10 | 948 |  | 7 Days Work | 9164204 |
| 910 | 36900.37000.37100.37700.38300.40000.177100 | 1st cutting/polishing of stone flooring | 7d | 2026-10-10 | 2026-10-17 | 909 |  | 7 Days Work | 9164214 |
| 911 | 36900.37000.37100.37700.38300.40000.177200 | Tiles/Stone skirting | 5d | 2026-10-17 | 2026-10-22 | 910 |  | 7 Days Work | 9164224 |
| 912 | 36900.37000.37100.37700.38300.40000.177300 | Protechtion sheet | 1d | 2026-10-22 | 2026-10-23 | 911 |  | 7 Days Work | 9164234 |
| 913 | 36900.37000.37100.37700.38300.40000.177400 | Installation of Temporary Door | 1d | 2026-10-23 | 2026-10-24 | 912 |  | 7 Days Work | 9164244 |
| 914 | 36900.37000.37100.37700.38300.40000.177500 | Fixing of window tracks | 5d | 2026-10-24 | 2026-10-29 | 913 |  | 7 Days Work | 9164254 |
| 915 | 36900.37000.37100.37700.38300.40000.177600 | Wire Pulling | 7d | 2026-10-29 | 2026-11-05 | 914 |  | 7 Days Work | 9164264 |
| 916 | 36900.37000.37100.37700.38300.40000.177700 | Gypsum Remaining | 5d | 2026-11-05 | 2026-11-10 | 915 |  | 7 Days Work | 9164274 |
| 917 | 36900.37000.37100.37700.38300.40000.177800 | Fixing of windoow shutter | 5d | 2026-11-10 | 2026-11-15 | 916 |  | 7 Days Work | 9164284 |
| 918 | 36900.37000.37100.37700.38300.40000.177900 | Putty Works - walls & ceiling | 15d | 2026-11-15 | 2026-11-30 | 917 |  | 7 Days Work | 9164294 |
| 919 | 36900.37000.37100.37700.38300.40000.178000 | False Ceiling- Framing | 10d | 2026-11-30 | 2026-12-10 | 918 |  | 7 Days Work | 9164304 |
| 920 | 36900.37000.37100.37700.38300.40000.178100 | Pre Hung Door | 3d | 2026-12-10 | 2026-12-13 | 919 |  | 7 Days Work | 9164314 |
| 921 | 36900.37000.37100.37700.38300.40000.178200 | Protechtion sheet | 2d | 2026-12-13 | 2026-12-15 | 920 |  | 7 Days Work | 9164324 |
| 922 | 36900.37000.37100.37700.38300.40000.178300 | Skirting near door | 2d | 2026-12-15 | 2026-12-17 | 921 |  | 7 Days Work | 9164334 |
| 923 | 36900.37000.37100.37700.38300.40000.178400 | Electrical Switch box fixing | 14d | 2026-12-17 | 2026-12-31 | 922 |  | 7 Days Work | 9164344 |
| 924 | 36900.37000.37100.37700.38300.40000.178500 | Fire Fighting painting | 5d | 2026-12-31 | 2027-01-05 | 923 |  | 7 Days Work | 9164354 |
| 925 | 36900.37000.37100.37700.38300.40000.178600 | Protection of all flooring, door & window hardware | 5d | 2027-01-05 | 2027-01-10 | 924 |  | 7 Days Work | 9164364 |
| 926 | 36900.37000.37100.37700.38300.40000.178700 | 1st coat primer- ceiling 1st & walls | 14d | 2027-01-10 | 2027-01-24 | 925 |  | 7 Days Work | 9164374 |
| 927 | 36900.37000.37100.37700.38300.40000.178800 | Wooden Flooring | 5d | 2027-01-24 | 2027-01-29 | 926 |  | 7 Days Work | 9164384 |
| 928 | 36900.37000.37100.37700.38300.40000.178900 | Removing of Temporary Railing & installation of Glass Railing | 5d | 2027-01-24 | 2027-01-29 | 926 |  | 7 Days Work | 9164394 |
| 929 | 36900.37000.37100.37700.38300.40000.179000 | Tile Grouting | 7d | 2027-01-24 | 2027-01-31 | 926 |  | 7 Days Work | 9164404 |
| 930 | 36900.37000.37100.37700.38300.40000.179100 | False Ceiling | 5d | 2027-01-31 | 2027-02-05 | 929 |  | 7 Days Work | 9164414 |
| 931 | 36900.37000.37100.37700.38300.40000.179200 | 2nd coat of primer | 10d | 2027-02-05 | 2027-02-15 | 930 |  | 7 Days Work | 9164424 |
| 932 | 36900.37000.37100.37700.38300.40000.179300 | Final cutting/polishing of stone flooring | 7d | 2027-02-15 | 2027-02-22 | 931 |  | 7 Days Work | 9164434 |

| ID | WBS | Task | Duration | Start | Finish | Predecessors | Constraint | Calendar | Unique_Task_ID |
| --- | --- | --- | --- | --- | --- | --- | --- | --- | --- |
| 933 | 36900.37000.37100.37700.38300.40000.57300 | **Toilet** | 237d | 2026-06-29 | 2027-02-21 |  | start no earlier than 2026-06-29 | 7 Days Work | 9162244 |
| 934 | 36900.37000.37100.37700.38300.40000.57300.768400 | Toilet_MEP Clearance -1 | 7d | 2026-06-29 | 2026-07-06 | 897 |  | 7 Days Work | 9166624 |
| 935 | 36900.37000.37100.37700.38300.40000.57300.768500 | Toilet_Level Marking | 1d | 2026-07-06 | 2026-07-07 | 934 |  | 7 Days Work | 9166634 |
| 936 | 36900.37000.37100.37700.38300.40000.57300.768600 | Toilet_Chasing work for Electrical conduit & concealed plumbing | 5d | 2026-07-07 | 2026-07-12 | 935 |  | 7 Days Work | 9166644 |
| 937 | 36900.37000.37100.37700.38300.40000.57300.768700 | Toilet_Plumbing work 1st fix | 5d | 2026-07-12 | 2026-07-17 | 936 |  | 7 Days Work | 9166654 |
| 938 | 36900.37000.37100.37700.38300.40000.57300.768800 | Toilet_Sleeve/Bore Packing | 5d | 2026-07-17 | 2026-07-22 | 937 |  | 7 Days Work | 9166664 |
| 939 | 36900.37000.37100.37700.38300.40000.57300.768900 | Toilet_Waterproofing | 10d | 2026-07-22 | 2026-08-01 | 938 |  | 7 Days Work | 9166674 |
| 940 | 36900.37000.37100.37700.38300.40000.57300.769000 | Toilet_Screed | 1d | 2026-08-01 | 2026-08-02 | 939 |  | 7 Days Work | 9166684 |
| 941 | 36900.37000.37100.37700.38300.40000.57300.769100 | Toilet_Plumbing 2nd fix | 5d | 2026-08-02 | 2026-08-07 | 940 |  | 7 Days Work | 9166694 |
| 942 | 36900.37000.37100.37700.38300.40000.57300.769200 | Toilet_Ledge wall | 5d | 2026-08-07 | 2026-08-12 | 941 |  | 7 Days Work | 9166704 |
| 943 | 36900.37000.37100.37700.38300.40000.57300.769300 | Toilet_Cement Plaster | 5d | 2026-08-12 | 2026-08-17 | 942 |  | 7 Days Work | 9166714 |
| 944 | 36900.37000.37100.37700.38300.40000.57300.769400 | Toilet_Door Frame | 1d | 2026-08-17 | 2026-08-18 | 943 |  | 7 Days Work | 9166724 |
| 945 | 36900.37000.37100.37700.38300.40000.57300.769500 | Toilet_Wash basin & Couter | 3d | 2026-08-18 | 2026-08-21 | 944 |  | 7 Days Work | 9166734 |
| 946 | 36900.37000.37100.37700.38300.40000.57300.769600 | Toilet_Wall dado | 20d | 2026-08-21 | 2026-09-10 | 945 |  | 7 Days Work | 9166744 |
| 947 | 36900.37000.37100.37700.38300.40000.57300.769700 | Toilet_Granite Work-Ledge wall top | 3d | 2026-09-10 | 2026-09-13 | 946 |  | 7 Days Work | 9166754 |
| 948 | 36900.37000.37100.37700.38300.40000.57300.769800 | Toilet_Floor Tilling work | 20d | 2026-09-13 | 2026-10-03 | 947 |  | 7 Days Work | 9166764 |
| 949 | 36900.37000.37100.37700.38300.40000.57300.769900 | Toilet_1st row of dado | 5d | 2026-10-03 | 2026-10-08 | 948 |  | 7 Days Work | 9166774 |
| 950 | 36900.37000.37100.37700.38300.40000.57300.770000 | Toilet_Window Fixing | 14d | 2026-10-08 | 2026-10-22 | 949 |  | 7 Days Work | 9166784 |
| 951 | 36900.37000.37100.37700.38300.40000.57300.770100 | Toilet_Services above False ceiling | 21d | 2026-10-22 | 2026-11-12 | 950 |  | 7 Days Work | 9166794 |
| 952 | 36900.37000.37100.37700.38300.40000.57300.770200 | Toilet_False Ceiling framing | 12d | 2026-11-12 | 2026-11-24 | 951 |  | 7 Days Work | 9166804 |
| 953 | 36900.37000.37100.37700.38300.40000.57300.770300 | Toilet_Door Frame | 5d | 2026-11-24 | 2026-11-29 | 952 |  | 7 Days Work | 9166814 |
| 954 | 36900.37000.37100.37700.38300.40000.57300.770400 | Toilet_Epoxy Tile Grouting | 7d | 2027-01-24 | 2027-01-31 | 929SS |  | 7 Days Work | 9166824 |
| 955 | 36900.37000.37100.37700.38300.40000.57300.770500 | Toilet_False ceiling board fixing, CP Sanitary Fixture, Electric Fixture | 21d | 2027-01-31 | 2027-02-21 | 954 |  | 7 Days Work | 9166834 |
| 956 | 36900.37000.37100.37700.38300.40100 | **16th Habitable/18th Floor** | 245d | 2026-07-04 | 2027-03-06 |  | start no earlier than 2026-07-04 | 7 Days Work | 9162164 |
| 957 | 36900.37000.37100.37700.38300.40100.179400 | Post Pour | 7d | 2026-07-04 | 2026-07-11 | 50FS+15d |  | 7 Days Work | 9164444 |
| 958 | 36900.37000.37100.37700.38300.40100.179500 | MEP Clearance -1 | 5d | 2026-07-11 | 2026-07-16 | 957 |  | 7 Days Work | 9164454 |
| 959 | 36900.37000.37100.37700.38300.40100.179600 | Benchmark | 1d | 2026-07-16 | 2026-07-17 | 958 |  | 7 Days Work | 9164464 |
| 960 | 36900.37000.37100.37700.38300.40100.179700 | Temporary Railing | 3d | 2026-07-17 | 2026-07-20 | 959 |  | 7 Days Work | 9164474 |
| 961 | 36900.37000.37100.37700.38300.40100.179800 | Blockwork | 10d | 2026-07-20 | 2026-07-30 | 960 |  | 7 Days Work | 9164484 |
| 962 | 36900.37000.37100.37700.38300.40100.179900 | MEP Clearance -2 | 10d | 2026-07-30 | 2026-08-09 | 961 |  | 7 Days Work | 9164494 |
| 963 | 36900.37000.37100.37700.38300.40100.180000 | Gypsum Plaster | 14d | 2026-08-09 | 2026-08-23 | 962 |  | 7 Days Work | 9164504 |
| 964 | 36900.37000.37100.37700.38300.40100.180100 | Kitchen Platform | 3d | 2026-08-23 | 2026-08-26 | 963 |  | 7 Days Work | 9164514 |
| 965 | 36900.37000.37100.37700.38300.40100.180200 | Kitchen dado | 7d | 2026-08-26 | 2026-09-02 | 964 |  | 7 Days Work | 9164524 |
| 966 | 36900.37000.37100.37700.38300.40100.180300 | Fire Fighting | 5d | 2026-09-02 | 2026-09-07 | 965 |  | 7 Days Work | 9164534 |
| 967 | 36900.37000.37100.37700.38300.40100.180400 | Anticapilary | 5d | 2026-09-07 | 2026-09-12 | 966 |  | 7 Days Work | 9164544 |
| 968 | 36900.37000.37100.37700.38300.40100.180500 | Stone Laying | 10d | 2026-10-15 | 2026-10-25 | 1008 |  | 7 Days Work | 9164554 |
| 969 | 36900.37000.37100.37700.38300.40100.180600 | Tiles Laying | 7d | 2026-10-15 | 2026-10-22 | 1008 |  | 7 Days Work | 9164564 |
| 970 | 36900.37000.37100.37700.38300.40100.180700 | 1st cutting/polishing of stone flooring | 7d | 2026-10-22 | 2026-10-29 | 969 |  | 7 Days Work | 9164574 |
| 971 | 36900.37000.37100.37700.38300.40100.180800 | Tiles/Stone skirting | 5d | 2026-10-29 | 2026-11-03 | 970 |  | 7 Days Work | 9164584 |
| 972 | 36900.37000.37100.37700.38300.40100.180900 | Protechtion sheet | 1d | 2026-11-03 | 2026-11-04 | 971 |  | 7 Days Work | 9164594 |
| 973 | 36900.37000.37100.37700.38300.40100.181000 | Installation of Temporary Door | 1d | 2026-11-04 | 2026-11-05 | 972 |  | 7 Days Work | 9164604 |
| 974 | 36900.37000.37100.37700.38300.40100.181100 | Fixing of window tracks | 5d | 2026-11-05 | 2026-11-10 | 973 |  | 7 Days Work | 9164614 |
| 975 | 36900.37000.37100.37700.38300.40100.181200 | Wire Pulling | 7d | 2026-11-10 | 2026-11-17 | 974 |  | 7 Days Work | 9164624 |
| 976 | 36900.37000.37100.37700.38300.40100.181300 | Gypsum Remaining | 5d | 2026-11-17 | 2026-11-22 | 975 |  | 7 Days Work | 9164634 |
| 977 | 36900.37000.37100.37700.38300.40100.181400 | Fixing of windoow shutter | 5d | 2026-11-22 | 2026-11-27 | 976 |  | 7 Days Work | 9164644 |
| 978 | 36900.37000.37100.37700.38300.40100.181500 | Putty Works - walls & ceiling | 15d | 2026-11-27 | 2026-12-12 | 977 |  | 7 Days Work | 9164654 |
| 979 | 36900.37000.37100.37700.38300.40100.181600 | False Ceiling- Framing | 10d | 2026-12-12 | 2026-12-22 | 978 |  | 7 Days Work | 9164664 |
| 980 | 36900.37000.37100.37700.38300.40100.181700 | Pre Hung Door | 3d | 2026-12-22 | 2026-12-25 | 979 |  | 7 Days Work | 9164674 |
| 981 | 36900.37000.37100.37700.38300.40100.181800 | Protechtion sheet | 2d | 2026-12-25 | 2026-12-27 | 980 |  | 7 Days Work | 9164684 |
| 982 | 36900.37000.37100.37700.38300.40100.181900 | Skirting near door | 2d | 2026-12-27 | 2026-12-29 | 981 |  | 7 Days Work | 9164694 |
| 983 | 36900.37000.37100.37700.38300.40100.182000 | Electrical Switch box fixing | 14d | 2026-12-29 | 2027-01-12 | 982 |  | 7 Days Work | 9164704 |
| 984 | 36900.37000.37100.37700.38300.40100.182100 | Fire Fighting painting | 5d | 2027-01-12 | 2027-01-17 | 983 |  | 7 Days Work | 9164714 |
| 985 | 36900.37000.37100.37700.38300.40100.182200 | Protection of all flooring, door & window hardware | 5d | 2027-01-17 | 2027-01-22 | 984 |  | 7 Days Work | 9164724 |
| 986 | 36900.37000.37100.37700.38300.40100.182300 | 1st coat primer- ceiling 1st & walls | 14d | 2027-01-22 | 2027-02-05 | 985 |  | 7 Days Work | 9164734 |
| 987 | 36900.37000.37100.37700.38300.40100.182400 | Wooden Flooring | 5d | 2027-02-05 | 2027-02-10 | 986 |  | 7 Days Work | 9164744 |
| 988 | 36900.37000.37100.37700.38300.40100.182500 | Removing of Temporary Railing & installation of Glass Railing | 5d | 2027-02-05 | 2027-02-10 | 986 |  | 7 Days Work | 9164754 |
| 989 | 36900.37000.37100.37700.38300.40100.182600 | Tile Grouting | 7d | 2027-02-05 | 2027-02-12 | 986 |  | 7 Days Work | 9164764 |
| 990 | 36900.37000.37100.37700.38300.40100.182700 | False Ceiling | 5d | 2027-02-12 | 2027-02-17 | 989 |  | 7 Days Work | 9164774 |
| 991 | 36900.37000.37100.37700.38300.40100.182800 | 2nd coat of primer | 10d | 2027-02-17 | 2027-02-27 | 990 |  | 7 Days Work | 9164784 |
| 992 | 36900.37000.37100.37700.38300.40100.182900 | Final cutting/polishing of stone flooring | 7d | 2027-02-27 | 2027-03-06 | 991 |  | 7 Days Work | 9164794 |

| ID | WBS | Task | Duration | Start | Finish | Predecessors | Constraint | Calendar | Unique_Task_ID |
| --- | --- | --- | --- | --- | --- | --- | --- | --- | --- |
| 993 | 36900.37000.37100.37700.38300.40100.57400 | **Toilet** | 237d | 2026-07-11 | 2027-03-05 |  | start no earlier than 2026-07-11 | 7 Days Work | 9162254 |
| 994 | 36900.37000.37100.37700.38300.40100.57400.770600 | Toilet_MEP Clearance -1 | 7d | 2026-07-11 | 2026-07-18 | 957 |  | 7 Days Work | 9166844 |
| 995 | 36900.37000.37100.37700.38300.40100.57400.770700 | Toilet_Level Marking | 1d | 2026-07-18 | 2026-07-19 | 994 |  | 7 Days Work | 9166854 |
| 996 | 36900.37000.37100.37700.38300.40100.57400.770800 | Toilet_Chasing work for Electrical conduit & concealed plumbing | 5d | 2026-07-19 | 2026-07-24 | 995 |  | 7 Days Work | 9166864 |
| 997 | 36900.37000.37100.37700.38300.40100.57400.770900 | Toilet_Plumbing work 1st fix | 5d | 2026-07-24 | 2026-07-29 | 996 |  | 7 Days Work | 9166874 |
| 998 | 36900.37000.37100.37700.38300.40100.57400.771000 | Toilet_Sleeve/Bore Packing | 5d | 2026-07-29 | 2026-08-03 | 997 |  | 7 Days Work | 9166884 |
| 999 | 36900.37000.37100.37700.38300.40100.57400.771100 | Toilet_Waterproofing | 10d | 2026-08-03 | 2026-08-13 | 998 |  | 7 Days Work | 9166894 |
| 1000 | 36900.37000.37100.37700.38300.40100.57400.771200 | Toilet_Screed | 1d | 2026-08-13 | 2026-08-14 | 999 |  | 7 Days Work | 9166904 |
| 1001 | 36900.37000.37100.37700.38300.40100.57400.771300 | Toilet_Plumbing 2nd fix | 5d | 2026-08-14 | 2026-08-19 | 1000 |  | 7 Days Work | 9166914 |
| 1002 | 36900.37000.37100.37700.38300.40100.57400.771400 | Toilet_Ledge wall | 5d | 2026-08-19 | 2026-08-24 | 1001 |  | 7 Days Work | 9166924 |
| 1003 | 36900.37000.37100.37700.38300.40100.57400.771500 | Toilet_Cement Plaster | 5d | 2026-08-24 | 2026-08-29 | 1002 |  | 7 Days Work | 9166934 |
| 1004 | 36900.37000.37100.37700.38300.40100.57400.771600 | Toilet_Door Frame | 1d | 2026-08-29 | 2026-08-30 | 1003 |  | 7 Days Work | 9166944 |
| 1005 | 36900.37000.37100.37700.38300.40100.57400.771700 | Toilet_Wash basin & Couter | 3d | 2026-08-30 | 2026-09-02 | 1004 |  | 7 Days Work | 9166954 |
| 1006 | 36900.37000.37100.37700.38300.40100.57400.771800 | Toilet_Wall dado | 20d | 2026-09-02 | 2026-09-22 | 1005 |  | 7 Days Work | 9166964 |
| 1007 | 36900.37000.37100.37700.38300.40100.57400.771900 | Toilet_Granite Work-Ledge wall top | 3d | 2026-09-22 | 2026-09-25 | 1006 |  | 7 Days Work | 9166974 |
| 1008 | 36900.37000.37100.37700.38300.40100.57400.772000 | Toilet_Floor Tilling work | 20d | 2026-09-25 | 2026-10-15 | 1007 |  | 7 Days Work | 9166984 |
| 1009 | 36900.37000.37100.37700.38300.40100.57400.772100 | Toilet_1st row of dado | 5d | 2026-10-15 | 2026-10-20 | 1008 |  | 7 Days Work | 9166994 |
| 1010 | 36900.37000.37100.37700.38300.40100.57400.772200 | Toilet_Window Fixing | 14d | 2026-10-20 | 2026-11-03 | 1009 |  | 7 Days Work | 9167004 |
| 1011 | 36900.37000.37100.37700.38300.40100.57400.772300 | Toilet_Services above False ceiling | 21d | 2026-11-03 | 2026-11-24 | 1010 |  | 7 Days Work | 9167014 |
| 1012 | 36900.37000.37100.37700.38300.40100.57400.772400 | Toilet_False Ceiling framing | 12d | 2026-11-24 | 2026-12-06 | 1011 |  | 7 Days Work | 9167024 |
| 1013 | 36900.37000.37100.37700.38300.40100.57400.772500 | Toilet_Door Frame | 5d | 2026-12-06 | 2026-12-11 | 1012 |  | 7 Days Work | 9167034 |
| 1014 | 36900.37000.37100.37700.38300.40100.57400.772600 | Toilet_Epoxy Tile Grouting | 7d | 2027-02-05 | 2027-02-12 | 989SS |  | 7 Days Work | 9167044 |
| 1015 | 36900.37000.37100.37700.38300.40100.57400.772700 | Toilet_False ceiling board fixing, CP Sanitary Fixture, Electric Fixture | 21d | 2027-02-12 | 2027-03-05 | 1014 |  | 7 Days Work | 9167054 |
| 1016 | 36900.37000.37100.37700.38300.40200 | **17th Habitable/19th Floor** | 245d | 2026-07-13 | 2027-03-15 |  | start no earlier than 2026-07-13 | 7 Days Work | 9162174 |
| 1017 | 36900.37000.37100.37700.38300.40200.183000 | Post Pour | 7d | 2026-07-13 | 2026-07-20 | 51FS+15d |  | 7 Days Work | 9164804 |
| 1018 | 36900.37000.37100.37700.38300.40200.183100 | MEP Clearance -1 | 5d | 2026-07-20 | 2026-07-25 | 1017 |  | 7 Days Work | 9164814 |
| 1019 | 36900.37000.37100.37700.38300.40200.183200 | Benchmark | 1d | 2026-07-25 | 2026-07-26 | 1018 |  | 7 Days Work | 9164824 |
| 1020 | 36900.37000.37100.37700.38300.40200.183300 | Temporary Railing | 3d | 2026-07-26 | 2026-07-29 | 1019 |  | 7 Days Work | 9164834 |
| 1021 | 36900.37000.37100.37700.38300.40200.183400 | Blockwork | 10d | 2026-07-29 | 2026-08-08 | 1020 |  | 7 Days Work | 9164844 |
| 1022 | 36900.37000.37100.37700.38300.40200.183500 | MEP Clearance -2 | 10d | 2026-08-08 | 2026-08-18 | 1021 |  | 7 Days Work | 9164854 |
| 1023 | 36900.37000.37100.37700.38300.40200.183600 | Gypsum Plaster | 14d | 2026-08-18 | 2026-09-01 | 1022 |  | 7 Days Work | 9164864 |
| 1024 | 36900.37000.37100.37700.38300.40200.183700 | Kitchen Platform | 3d | 2026-09-01 | 2026-09-04 | 1023 |  | 7 Days Work | 9164874 |
| 1025 | 36900.37000.37100.37700.38300.40200.183800 | Kitchen dado | 7d | 2026-09-04 | 2026-09-11 | 1024 |  | 7 Days Work | 9164884 |
| 1026 | 36900.37000.37100.37700.38300.40200.183900 | Fire Fighting | 5d | 2026-09-11 | 2026-09-16 | 1025 |  | 7 Days Work | 9164894 |
| 1027 | 36900.37000.37100.37700.38300.40200.184000 | Anticapilary | 5d | 2026-09-16 | 2026-09-21 | 1026 |  | 7 Days Work | 9164904 |
| 1028 | 36900.37000.37100.37700.38300.40200.184100 | Stone Laying | 10d | 2026-10-24 | 2026-11-03 | 1068 |  | 7 Days Work | 9164914 |
| 1029 | 36900.37000.37100.37700.38300.40200.184200 | Tiles Laying | 7d | 2026-10-24 | 2026-10-31 | 1068 |  | 7 Days Work | 9164924 |
| 1030 | 36900.37000.37100.37700.38300.40200.184300 | 1st cutting/polishing of stone flooring | 7d | 2026-10-31 | 2026-11-07 | 1029 |  | 7 Days Work | 9164934 |
| 1031 | 36900.37000.37100.37700.38300.40200.184400 | Tiles/Stone skirting | 5d | 2026-11-07 | 2026-11-12 | 1030 |  | 7 Days Work | 9164944 |
| 1032 | 36900.37000.37100.37700.38300.40200.184500 | Protechtion sheet | 1d | 2026-11-12 | 2026-11-13 | 1031 |  | 7 Days Work | 9164954 |
| 1033 | 36900.37000.37100.37700.38300.40200.184600 | Installation of Temporary Door | 1d | 2026-11-13 | 2026-11-14 | 1032 |  | 7 Days Work | 9164964 |
| 1034 | 36900.37000.37100.37700.38300.40200.184700 | Fixing of window tracks | 5d | 2026-11-14 | 2026-11-19 | 1033 |  | 7 Days Work | 9164974 |
| 1035 | 36900.37000.37100.37700.38300.40200.184800 | Wire Pulling | 7d | 2026-11-19 | 2026-11-26 | 1034 |  | 7 Days Work | 9164984 |
| 1036 | 36900.37000.37100.37700.38300.40200.184900 | Gypsum Remaining | 5d | 2026-11-26 | 2026-12-01 | 1035 |  | 7 Days Work | 9164994 |
| 1037 | 36900.37000.37100.37700.38300.40200.185000 | Fixing of windoow shutter | 5d | 2026-12-01 | 2026-12-06 | 1036 |  | 7 Days Work | 9165004 |
| 1038 | 36900.37000.37100.37700.38300.40200.185100 | Putty Works - walls & ceiling | 15d | 2026-12-06 | 2026-12-21 | 1037 |  | 7 Days Work | 9165014 |
| 1039 | 36900.37000.37100.37700.38300.40200.185200 | False Ceiling- Framing | 10d | 2026-12-21 | 2026-12-31 | 1038 |  | 7 Days Work | 9165024 |
| 1040 | 36900.37000.37100.37700.38300.40200.185300 | Pre Hung Door | 3d | 2026-12-31 | 2027-01-03 | 1039 |  | 7 Days Work | 9165034 |
| 1041 | 36900.37000.37100.37700.38300.40200.185400 | Protechtion sheet | 2d | 2027-01-03 | 2027-01-05 | 1040 |  | 7 Days Work | 9165044 |
| 1042 | 36900.37000.37100.37700.38300.40200.185500 | Skirting near door | 2d | 2027-01-05 | 2027-01-07 | 1041 |  | 7 Days Work | 9165054 |
| 1043 | 36900.37000.37100.37700.38300.40200.185600 | Electrical Switch box fixing | 14d | 2027-01-07 | 2027-01-21 | 1042 |  | 7 Days Work | 9165064 |
| 1044 | 36900.37000.37100.37700.38300.40200.185700 | Fire Fighting painting | 5d | 2027-01-21 | 2027-01-26 | 1043 |  | 7 Days Work | 9165074 |
| 1045 | 36900.37000.37100.37700.38300.40200.185800 | Protection of all flooring, door & window hardware | 5d | 2027-01-26 | 2027-01-31 | 1044 |  | 7 Days Work | 9165084 |
| 1046 | 36900.37000.37100.37700.38300.40200.185900 | 1st coat primer- ceiling 1st & walls | 14d | 2027-01-31 | 2027-02-14 | 1045 |  | 7 Days Work | 9165094 |
| 1047 | 36900.37000.37100.37700.38300.40200.186000 | Wooden Flooring | 5d | 2027-02-14 | 2027-02-19 | 1046 |  | 7 Days Work | 9165104 |
| 1048 | 36900.37000.37100.37700.38300.40200.186100 | Removing of Temporary Railing & installation of Glass Railing | 5d | 2027-02-14 | 2027-02-19 | 1046 |  | 7 Days Work | 9165114 |
| 1049 | 36900.37000.37100.37700.38300.40200.186200 | Tile Grouting | 7d | 2027-02-14 | 2027-02-21 | 1046 |  | 7 Days Work | 9165124 |
| 1050 | 36900.37000.37100.37700.38300.40200.186300 | False Ceiling | 5d | 2027-02-21 | 2027-02-26 | 1049 |  | 7 Days Work | 9165134 |
| 1051 | 36900.37000.37100.37700.38300.40200.186400 | 2nd coat of primer | 10d | 2027-02-26 | 2027-03-08 | 1050 |  | 7 Days Work | 9165144 |
| 1052 | 36900.37000.37100.37700.38300.40200.186500 | Final cutting/polishing of stone flooring | 7d | 2027-03-08 | 2027-03-15 | 1051 |  | 7 Days Work | 9165154 |

| ID | WBS | Task | Duration | Start | Finish | Predecessors | Constraint | Calendar | Unique_Task_ID |
| --- | --- | --- | --- | --- | --- | --- | --- | --- | --- |
| 1053 | 36900.37000.37100.37700.38300.40200.57500 | **Toilet** | 237d | 2026-07-20 | 2027-03-14 |  | start no earlier than 2026-07-20 | 7 Days Work | 9162264 |
| 1054 | 36900.37000.37100.37700.38300.40200.57500.772800 | Toilet_MEP Clearance -1 | 7d | 2026-07-20 | 2026-07-27 | 1017 |  | 7 Days Work | 9167064 |
| 1055 | 36900.37000.37100.37700.38300.40200.57500.772900 | Toilet_Level Marking | 1d | 2026-07-27 | 2026-07-28 | 1054 |  | 7 Days Work | 9167074 |
| 1056 | 36900.37000.37100.37700.38300.40200.57500.773000 | Toilet_Chasing work for Electrical conduit & concealed plumbing | 5d | 2026-07-28 | 2026-08-02 | 1055 |  | 7 Days Work | 9167084 |
| 1057 | 36900.37000.37100.37700.38300.40200.57500.773100 | Toilet_Plumbing work 1st fix | 5d | 2026-08-02 | 2026-08-07 | 1056 |  | 7 Days Work | 9167094 |
| 1058 | 36900.37000.37100.37700.38300.40200.57500.773200 | Toilet_Sleeve/Bore Packing | 5d | 2026-08-07 | 2026-08-12 | 1057 |  | 7 Days Work | 9167104 |
| 1059 | 36900.37000.37100.37700.38300.40200.57500.773300 | Toilet_Waterproofing | 10d | 2026-08-12 | 2026-08-22 | 1058 |  | 7 Days Work | 9167114 |
| 1060 | 36900.37000.37100.37700.38300.40200.57500.773400 | Toilet_Screed | 1d | 2026-08-22 | 2026-08-23 | 1059 |  | 7 Days Work | 9167124 |
| 1061 | 36900.37000.37100.37700.38300.40200.57500.773500 | Toilet_Plumbing 2nd fix | 5d | 2026-08-23 | 2026-08-28 | 1060 |  | 7 Days Work | 9167134 |
| 1062 | 36900.37000.37100.37700.38300.40200.57500.773600 | Toilet_Ledge wall | 5d | 2026-08-28 | 2026-09-02 | 1061 |  | 7 Days Work | 9167144 |
| 1063 | 36900.37000.37100.37700.38300.40200.57500.773700 | Toilet_Cement Plaster | 5d | 2026-09-02 | 2026-09-07 | 1062 |  | 7 Days Work | 9167154 |
| 1064 | 36900.37000.37100.37700.38300.40200.57500.773800 | Toilet_Door Frame | 1d | 2026-09-07 | 2026-09-08 | 1063 |  | 7 Days Work | 9167164 |
| 1065 | 36900.37000.37100.37700.38300.40200.57500.773900 | Toilet_Wash basin & Couter | 3d | 2026-09-08 | 2026-09-11 | 1064 |  | 7 Days Work | 9167174 |
| 1066 | 36900.37000.37100.37700.38300.40200.57500.774000 | Toilet_Wall dado | 20d | 2026-09-11 | 2026-10-01 | 1065 |  | 7 Days Work | 9167184 |
| 1067 | 36900.37000.37100.37700.38300.40200.57500.774100 | Toilet_Granite Work-Ledge wall top | 3d | 2026-10-01 | 2026-10-04 | 1066 |  | 7 Days Work | 9167194 |
| 1068 | 36900.37000.37100.37700.38300.40200.57500.774200 | Toilet_Floor Tilling work | 20d | 2026-10-04 | 2026-10-24 | 1067 |  | 7 Days Work | 9167204 |
| 1069 | 36900.37000.37100.37700.38300.40200.57500.774300 | Toilet_1st row of dado | 5d | 2026-10-24 | 2026-10-29 | 1068 |  | 7 Days Work | 9167214 |
| 1070 | 36900.37000.37100.37700.38300.40200.57500.774400 | Toilet_Window Fixing | 14d | 2026-10-29 | 2026-11-12 | 1069 |  | 7 Days Work | 9167224 |
| 1071 | 36900.37000.37100.37700.38300.40200.57500.774500 | Toilet_Services above False ceiling | 21d | 2026-11-12 | 2026-12-03 | 1070 |  | 7 Days Work | 9167234 |
| 1072 | 36900.37000.37100.37700.38300.40200.57500.774600 | Toilet_False Ceiling framing | 12d | 2026-12-03 | 2026-12-15 | 1071 |  | 7 Days Work | 9167244 |
| 1073 | 36900.37000.37100.37700.38300.40200.57500.774700 | Toilet_Door Frame | 5d | 2026-12-15 | 2026-12-20 | 1072 |  | 7 Days Work | 9167254 |
| 1074 | 36900.37000.37100.37700.38300.40200.57500.774800 | Toilet_Epoxy Tile Grouting | 7d | 2027-02-14 | 2027-02-21 | 1049SS |  | 7 Days Work | 9167264 |
| 1075 | 36900.37000.37100.37700.38300.40200.57500.774900 | Toilet_False ceiling board fixing, CP Sanitary Fixture, Electric Fixture | 21d | 2027-02-21 | 2027-03-14 | 1074 |  | 7 Days Work | 9167274 |
| 1076 | 36900.37000.37100.37700.38300.40300 | **18th Habitable/20th Floor** | 245d | 2026-07-22 | 2027-03-24 |  | start no earlier than 2026-07-22 | 7 Days Work | 9162184 |
| 1077 | 36900.37000.37100.37700.38300.40300.186600 | Post Pour | 7d | 2026-07-22 | 2026-07-29 | 52FS+15d |  | 7 Days Work | 9165164 |
| 1078 | 36900.37000.37100.37700.38300.40300.186700 | MEP Clearance -1 | 5d | 2026-07-29 | 2026-08-03 | 1077 |  | 7 Days Work | 9165174 |
| 1079 | 36900.37000.37100.37700.38300.40300.186800 | Benchmark | 1d | 2026-08-03 | 2026-08-04 | 1078 |  | 7 Days Work | 9165184 |
| 1080 | 36900.37000.37100.37700.38300.40300.186900 | Temporary Railing | 3d | 2026-08-04 | 2026-08-07 | 1079 |  | 7 Days Work | 9165194 |
| 1081 | 36900.37000.37100.37700.38300.40300.187000 | Blockwork | 10d | 2026-08-07 | 2026-08-17 | 1080 |  | 7 Days Work | 9165204 |
| 1082 | 36900.37000.37100.37700.38300.40300.187100 | MEP Clearance -2 | 10d | 2026-08-17 | 2026-08-27 | 1081 |  | 7 Days Work | 9165214 |
| 1083 | 36900.37000.37100.37700.38300.40300.187200 | Gypsum Plaster | 14d | 2026-08-27 | 2026-09-10 | 1082 |  | 7 Days Work | 9165224 |
| 1084 | 36900.37000.37100.37700.38300.40300.187300 | Kitchen Platform | 3d | 2026-09-10 | 2026-09-13 | 1083 |  | 7 Days Work | 9165234 |
| 1085 | 36900.37000.37100.37700.38300.40300.187400 | Kitchen dado | 7d | 2026-09-13 | 2026-09-20 | 1084 |  | 7 Days Work | 9165244 |
| 1086 | 36900.37000.37100.37700.38300.40300.187500 | Fire Fighting | 5d | 2026-09-20 | 2026-09-25 | 1085 |  | 7 Days Work | 9165254 |
| 1087 | 36900.37000.37100.37700.38300.40300.187600 | Anticapilary | 5d | 2026-09-25 | 2026-09-30 | 1086 |  | 7 Days Work | 9165264 |
| 1088 | 36900.37000.37100.37700.38300.40300.187700 | Stone Laying | 10d | 2026-11-02 | 2026-11-12 | 1128 |  | 7 Days Work | 9165274 |
| 1089 | 36900.37000.37100.37700.38300.40300.187800 | Tiles Laying | 7d | 2026-11-02 | 2026-11-09 | 1128 |  | 7 Days Work | 9165284 |
| 1090 | 36900.37000.37100.37700.38300.40300.187900 | 1st cutting/polishing of stone flooring | 7d | 2026-11-09 | 2026-11-16 | 1089 |  | 7 Days Work | 9165294 |
| 1091 | 36900.37000.37100.37700.38300.40300.188000 | Tiles/Stone skirting | 5d | 2026-11-16 | 2026-11-21 | 1090 |  | 7 Days Work | 9165304 |
| 1092 | 36900.37000.37100.37700.38300.40300.188100 | Protechtion sheet | 1d | 2026-11-21 | 2026-11-22 | 1091 |  | 7 Days Work | 9165314 |
| 1093 | 36900.37000.37100.37700.38300.40300.188200 | Installation of Temporary Door | 1d | 2026-11-22 | 2026-11-23 | 1092 |  | 7 Days Work | 9165324 |
| 1094 | 36900.37000.37100.37700.38300.40300.188300 | Fixing of window tracks | 5d | 2026-11-23 | 2026-11-28 | 1093 |  | 7 Days Work | 9165334 |
| 1095 | 36900.37000.37100.37700.38300.40300.188400 | Wire Pulling | 7d | 2026-11-28 | 2026-12-05 | 1094 |  | 7 Days Work | 9165344 |
| 1096 | 36900.37000.37100.37700.38300.40300.188500 | Gypsum Remaining | 5d | 2026-12-05 | 2026-12-10 | 1095 |  | 7 Days Work | 9165354 |
| 1097 | 36900.37000.37100.37700.38300.40300.188600 | Fixing of windoow shutter | 5d | 2026-12-10 | 2026-12-15 | 1096 |  | 7 Days Work | 9165364 |
| 1098 | 36900.37000.37100.37700.38300.40300.188700 | Putty Works - walls & ceiling | 15d | 2026-12-15 | 2026-12-30 | 1097 |  | 7 Days Work | 9165374 |
| 1099 | 36900.37000.37100.37700.38300.40300.188800 | False Ceiling- Framing | 10d | 2026-12-30 | 2027-01-09 | 1098 |  | 7 Days Work | 9165384 |
| 1100 | 36900.37000.37100.37700.38300.40300.188900 | Pre Hung Door | 3d | 2027-01-09 | 2027-01-12 | 1099 |  | 7 Days Work | 9165394 |
| 1101 | 36900.37000.37100.37700.38300.40300.189000 | Protechtion sheet | 2d | 2027-01-12 | 2027-01-14 | 1100 |  | 7 Days Work | 9165404 |
| 1102 | 36900.37000.37100.37700.38300.40300.189100 | Skirting near door | 2d | 2027-01-14 | 2027-01-16 | 1101 |  | 7 Days Work | 9165414 |
| 1103 | 36900.37000.37100.37700.38300.40300.189200 | Electrical Switch box fixing | 14d | 2027-01-16 | 2027-01-30 | 1102 |  | 7 Days Work | 9165424 |
| 1104 | 36900.37000.37100.37700.38300.40300.189300 | Fire Fighting painting | 5d | 2027-01-30 | 2027-02-04 | 1103 |  | 7 Days Work | 9165434 |
| 1105 | 36900.37000.37100.37700.38300.40300.189400 | Protection of all flooring, door & window hardware | 5d | 2027-02-04 | 2027-02-09 | 1104 |  | 7 Days Work | 9165444 |
| 1106 | 36900.37000.37100.37700.38300.40300.189500 | 1st coat primer- ceiling 1st & walls | 14d | 2027-02-09 | 2027-02-23 | 1105 |  | 7 Days Work | 9165454 |
| 1107 | 36900.37000.37100.37700.38300.40300.189600 | Wooden Flooring | 5d | 2027-02-23 | 2027-02-28 | 1106 |  | 7 Days Work | 9165464 |
| 1108 | 36900.37000.37100.37700.38300.40300.189700 | Removing of Temporary Railing & installation of Glass Railing | 5d | 2027-02-23 | 2027-02-28 | 1106 |  | 7 Days Work | 9165474 |
| 1109 | 36900.37000.37100.37700.38300.40300.189800 | Tile Grouting | 7d | 2027-02-23 | 2027-03-02 | 1106 |  | 7 Days Work | 9165484 |
| 1110 | 36900.37000.37100.37700.38300.40300.189900 | False Ceiling | 5d | 2027-03-02 | 2027-03-07 | 1109 |  | 7 Days Work | 9165494 |
| 1111 | 36900.37000.37100.37700.38300.40300.190000 | 2nd coat of primer | 10d | 2027-03-07 | 2027-03-17 | 1110 |  | 7 Days Work | 9165504 |
| 1112 | 36900.37000.37100.37700.38300.40300.190100 | Final cutting/polishing of stone flooring | 7d | 2027-03-17 | 2027-03-24 | 1111 |  | 7 Days Work | 9165514 |

| ID | WBS | Task | Duration | Start | Finish | Predecessors | Constraint | Calendar | Unique_Task_ID |
| --- | --- | --- | --- | --- | --- | --- | --- | --- | --- |
| 1113 | 36900.37000.37100.37700.38300.40300.57600 | **Toilet** | 237d | 2026-07-29 | 2027-03-23 |  | start no earlier than 2026-07-29 | 7 Days Work | 9162274 |
| 1114 | 36900.37000.37100.37700.38300.40300.57600.775000 | Toilet_MEP Clearance -1 | 7d | 2026-07-29 | 2026-08-05 | 1077 |  | 7 Days Work | 9167284 |
| 1115 | 36900.37000.37100.37700.38300.40300.57600.775100 | Toilet_Level Marking | 1d | 2026-08-05 | 2026-08-06 | 1114 |  | 7 Days Work | 9167294 |
| 1116 | 36900.37000.37100.37700.38300.40300.57600.775200 | Toilet_Chasing work for Electrical conduit & concealed plumbing | 5d | 2026-08-06 | 2026-08-11 | 1115 |  | 7 Days Work | 9167304 |
| 1117 | 36900.37000.37100.37700.38300.40300.57600.775300 | Toilet_Plumbing work 1st fix | 5d | 2026-08-11 | 2026-08-16 | 1116 |  | 7 Days Work | 9167314 |
| 1118 | 36900.37000.37100.37700.38300.40300.57600.775400 | Toilet_Sleeve/Bore Packing | 5d | 2026-08-16 | 2026-08-21 | 1117 |  | 7 Days Work | 9167324 |
| 1119 | 36900.37000.37100.37700.38300.40300.57600.775500 | Toilet_Waterproofing | 10d | 2026-08-21 | 2026-08-31 | 1118 |  | 7 Days Work | 9167334 |
| 1120 | 36900.37000.37100.37700.38300.40300.57600.775600 | Toilet_Screed | 1d | 2026-08-31 | 2026-09-01 | 1119 |  | 7 Days Work | 9167344 |
| 1121 | 36900.37000.37100.37700.38300.40300.57600.775700 | Toilet_Plumbing 2nd fix | 5d | 2026-09-01 | 2026-09-06 | 1120 |  | 7 Days Work | 9167354 |
| 1122 | 36900.37000.37100.37700.38300.40300.57600.775800 | Toilet_Ledge wall | 5d | 2026-09-06 | 2026-09-11 | 1121 |  | 7 Days Work | 9167364 |
| 1123 | 36900.37000.37100.37700.38300.40300.57600.775900 | Toilet_Cement Plaster | 5d | 2026-09-11 | 2026-09-16 | 1122 |  | 7 Days Work | 9167374 |
| 1124 | 36900.37000.37100.37700.38300.40300.57600.776000 | Toilet_Door Frame | 1d | 2026-09-16 | 2026-09-17 | 1123 |  | 7 Days Work | 9167384 |
| 1125 | 36900.37000.37100.37700.38300.40300.57600.776100 | Toilet_Wash basin & Couter | 3d | 2026-09-17 | 2026-09-20 | 1124 |  | 7 Days Work | 9167394 |
| 1126 | 36900.37000.37100.37700.38300.40300.57600.776200 | Toilet_Wall dado | 20d | 2026-09-20 | 2026-10-10 | 1125 |  | 7 Days Work | 9167404 |
| 1127 | 36900.37000.37100.37700.38300.40300.57600.776300 | Toilet_Granite Work-Ledge wall top | 3d | 2026-10-10 | 2026-10-13 | 1126 |  | 7 Days Work | 9167414 |
| 1128 | 36900.37000.37100.37700.38300.40300.57600.776400 | Toilet_Floor Tilling work | 20d | 2026-10-13 | 2026-11-02 | 1127 |  | 7 Days Work | 9167424 |
| 1129 | 36900.37000.37100.37700.38300.40300.57600.776500 | Toilet_1st row of dado | 5d | 2026-11-02 | 2026-11-07 | 1128 |  | 7 Days Work | 9167434 |
| 1130 | 36900.37000.37100.37700.38300.40300.57600.776600 | Toilet_Window Fixing | 14d | 2026-11-07 | 2026-11-21 | 1129 |  | 7 Days Work | 9167444 |
| 1131 | 36900.37000.37100.37700.38300.40300.57600.776700 | Toilet_Services above False ceiling | 21d | 2026-11-21 | 2026-12-12 | 1130 |  | 7 Days Work | 9167454 |
| 1132 | 36900.37000.37100.37700.38300.40300.57600.776800 | Toilet_False Ceiling framing | 12d | 2026-12-12 | 2026-12-24 | 1131 |  | 7 Days Work | 9167464 |
| 1133 | 36900.37000.37100.37700.38300.40300.57600.776900 | Toilet_Door Frame | 5d | 2026-12-24 | 2026-12-29 | 1132 |  | 7 Days Work | 9167474 |
| 1134 | 36900.37000.37100.37700.38300.40300.57600.777000 | Toilet_Epoxy Tile Grouting | 7d | 2027-02-23 | 2027-03-02 | 1109SS |  | 7 Days Work | 9167484 |
| 1135 | 36900.37000.37100.37700.38300.40300.57600.777100 | Toilet_False ceiling board fixing, CP Sanitary Fixture, Electric Fixture | 21d | 2027-03-02 | 2027-03-23 | 1134 |  | 7 Days Work | 9167494 |
| 1136 | 36900.37000.37100.37700.38300.40400 | **19th Habitable/21th Floor** | 245d | 2026-08-03 | 2027-04-05 |  | start no earlier than 2026-08-03 | 7 Days Work | 9167504 |
| 1137 | 36900.37000.37100.37700.38300.40400.190200 | Post Pour | 7d | 2026-08-03 | 2026-08-10 | 53FS+15d |  | 7 Days Work | 9167524 |
| 1138 | 36900.37000.37100.37700.38300.40400.190300 | MEP Clearance -1 | 5d | 2026-08-10 | 2026-08-15 | 1137 |  | 7 Days Work | 9167534 |
| 1139 | 36900.37000.37100.37700.38300.40400.190400 | Benchmark | 1d | 2026-08-15 | 2026-08-16 | 1138 |  | 7 Days Work | 9167544 |
| 1140 | 36900.37000.37100.37700.38300.40400.190500 | Temporary Railing | 3d | 2026-08-16 | 2026-08-19 | 1139 |  | 7 Days Work | 9167554 |
| 1141 | 36900.37000.37100.37700.38300.40400.190600 | Blockwork | 10d | 2026-08-19 | 2026-08-29 | 1140 |  | 7 Days Work | 9167564 |
| 1142 | 36900.37000.37100.37700.38300.40400.190700 | MEP Clearance -2 | 10d | 2026-08-29 | 2026-09-08 | 1141 |  | 7 Days Work | 9167574 |
| 1143 | 36900.37000.37100.37700.38300.40400.190800 | Gypsum Plaster | 14d | 2026-09-08 | 2026-09-22 | 1142 |  | 7 Days Work | 9043294 |
| 1144 | 36900.37000.37100.37700.38300.40400.190900 | Kitchen Platform | 3d | 2026-09-22 | 2026-09-25 | 1143 |  | 7 Days Work | 9167594 |
| 1145 | 36900.37000.37100.37700.38300.40400.191000 | Kitchen dado | 7d | 2026-09-25 | 2026-10-02 | 1144 |  | 7 Days Work | 9167604 |
| 1146 | 36900.37000.37100.37700.38300.40400.191100 | Fire Fighting | 5d | 2026-10-02 | 2026-10-07 | 1145 |  | 7 Days Work | 9167614 |
| 1147 | 36900.37000.37100.37700.38300.40400.191200 | Anticapilary | 5d | 2026-10-07 | 2026-10-12 | 1146 |  | 7 Days Work | 9167624 |
| 1148 | 36900.37000.37100.37700.38300.40400.191300 | Stone Laying | 10d | 2026-11-14 | 2026-11-24 | 1188 |  | 7 Days Work | 9167634 |
| 1149 | 36900.37000.37100.37700.38300.40400.191400 | Tiles Laying | 7d | 2026-11-14 | 2026-11-21 | 1188 |  | 7 Days Work | 9043304 |
| 1150 | 36900.37000.37100.37700.38300.40400.191500 | 1st cutting/polishing of stone flooring | 7d | 2026-11-21 | 2026-11-28 | 1149 |  | 7 Days Work | 9167654 |
| 1151 | 36900.37000.37100.37700.38300.40400.191600 | Tiles/Stone skirting | 5d | 2026-11-28 | 2026-12-03 | 1150 |  | 7 Days Work | 9167664 |
| 1152 | 36900.37000.37100.37700.38300.40400.191700 | Protechtion sheet | 1d | 2026-12-03 | 2026-12-04 | 1151 |  | 7 Days Work | 9167674 |
| 1153 | 36900.37000.37100.37700.38300.40400.191800 | Installation of Temporary Door | 1d | 2026-12-04 | 2026-12-05 | 1152 |  | 7 Days Work | 9167684 |
| 1154 | 36900.37000.37100.37700.38300.40400.191900 | Fixing of window tracks | 5d | 2026-12-05 | 2026-12-10 | 1153 |  | 7 Days Work | 9167694 |
| 1155 | 36900.37000.37100.37700.38300.40400.192000 | Wire Pulling | 7d | 2026-12-10 | 2026-12-17 | 1154 |  | 7 Days Work | 9167704 |
| 1156 | 36900.37000.37100.37700.38300.40400.192100 | Gypsum Remaining | 5d | 2026-12-17 | 2026-12-22 | 1155 |  | 7 Days Work | 9167714 |
| 1157 | 36900.37000.37100.37700.38300.40400.192200 | Fixing of windoow shutter | 5d | 2026-12-22 | 2026-12-27 | 1156 |  | 7 Days Work | 9167724 |
| 1158 | 36900.37000.37100.37700.38300.40400.192300 | Putty Works - walls & ceiling | 15d | 2026-12-27 | 2027-01-11 | 1157 |  | 7 Days Work | 9167734 |
| 1159 | 36900.37000.37100.37700.38300.40400.192400 | False Ceiling- Framing | 10d | 2027-01-11 | 2027-01-21 | 1158 |  | 7 Days Work | 9167744 |
| 1160 | 36900.37000.37100.37700.38300.40400.192500 | Pre Hung Door | 3d | 2027-01-21 | 2027-01-24 | 1159 |  | 7 Days Work | 9167754 |
| 1161 | 36900.37000.37100.37700.38300.40400.192600 | Protechtion sheet | 2d | 2027-01-24 | 2027-01-26 | 1160 |  | 7 Days Work | 9167764 |
| 1162 | 36900.37000.37100.37700.38300.40400.192700 | Skirting near door | 2d | 2027-01-26 | 2027-01-28 | 1161 |  | 7 Days Work | 9167774 |
| 1163 | 36900.37000.37100.37700.38300.40400.192800 | Electrical Switch box fixing | 14d | 2027-01-28 | 2027-02-11 | 1162 |  | 7 Days Work | 9167784 |
| 1164 | 36900.37000.37100.37700.38300.40400.192900 | Fire Fighting painting | 5d | 2027-02-11 | 2027-02-16 | 1163 |  | 7 Days Work | 9167794 |
| 1165 | 36900.37000.37100.37700.38300.40400.193000 | Protection of all flooring, door & window hardware | 5d | 2027-02-16 | 2027-02-21 | 1164 |  | 7 Days Work | 9167804 |
| 1166 | 36900.37000.37100.37700.38300.40400.193100 | 1st coat primer- ceiling 1st & walls | 14d | 2027-02-21 | 2027-03-07 | 1165 |  | 7 Days Work | 9167814 |
| 1167 | 36900.37000.37100.37700.38300.40400.193200 | Wooden Flooring | 5d | 2027-03-07 | 2027-03-12 | 1166 |  | 7 Days Work | 9167824 |
| 1168 | 36900.37000.37100.37700.38300.40400.193300 | Removing of Temporary Railing & installation of Glass Railing | 5d | 2027-03-07 | 2027-03-12 | 1166 |  | 7 Days Work | 9167834 |
| 1169 | 36900.37000.37100.37700.38300.40400.193400 | Tile Grouting | 7d | 2027-03-07 | 2027-03-14 | 1166 |  | 7 Days Work | 9167844 |
| 1170 | 36900.37000.37100.37700.38300.40400.193500 | False Ceiling | 5d | 2027-03-14 | 2027-03-19 | 1169 |  | 7 Days Work | 9167854 |
| 1171 | 36900.37000.37100.37700.38300.40400.193600 | 2nd coat of primer | 10d | 2027-03-19 | 2027-03-29 | 1170 |  | 7 Days Work | 9167864 |
| 1172 | 36900.37000.37100.37700.38300.40400.193700 | Final cutting/polishing of stone flooring | 7d | 2027-03-29 | 2027-04-05 | 1171 |  | 7 Days Work | 9167874 |

| ID | WBS | Task | Duration | Start | Finish | Predecessors | Constraint | Calendar | Unique_Task_ID |
| --- | --- | --- | --- | --- | --- | --- | --- | --- | --- |
| 1173 | 36900.37000.37100.37700.38300.40400.57700 | **Toilet** | 237d | 2026-08-10 | 2027-04-04 |  | start no earlier than 2026-08-10 | 7 Days Work | 9167514 |
| 1174 | 36900.37000.37100.37700.38300.40400.57700.777200 | Toilet_MEP Clearance -1 | 7d | 2026-08-10 | 2026-08-17 | 1137 |  | 7 Days Work | 9167884 |
| 1175 | 36900.37000.37100.37700.38300.40400.57700.777300 | Toilet_Level Marking | 1d | 2026-08-17 | 2026-08-18 | 1174 |  | 7 Days Work | 9167894 |
| 1176 | 36900.37000.37100.37700.38300.40400.57700.777400 | Toilet_Chasing work for Electrical conduit & concealed plumbing | 5d | 2026-08-18 | 2026-08-23 | 1175 |  | 7 Days Work | 9167904 |
| 1177 | 36900.37000.37100.37700.38300.40400.57700.777500 | Toilet_Plumbing work 1st fix | 5d | 2026-08-23 | 2026-08-28 | 1176 |  | 7 Days Work | 9167914 |
| 1178 | 36900.37000.37100.37700.38300.40400.57700.777600 | Toilet_Sleeve/Bore Packing | 5d | 2026-08-28 | 2026-09-02 | 1177 |  | 7 Days Work | 9167924 |
| 1179 | 36900.37000.37100.37700.38300.40400.57700.777700 | Toilet_Waterproofing | 10d | 2026-09-02 | 2026-09-12 | 1178 |  | 7 Days Work | 9167934 |
| 1180 | 36900.37000.37100.37700.38300.40400.57700.777800 | Toilet_Screed | 1d | 2026-09-12 | 2026-09-13 | 1179 |  | 7 Days Work | 9167944 |
| 1181 | 36900.37000.37100.37700.38300.40400.57700.777900 | Toilet_Plumbing 2nd fix | 5d | 2026-09-13 | 2026-09-18 | 1180 |  | 7 Days Work | 9167954 |
| 1182 | 36900.37000.37100.37700.38300.40400.57700.778000 | Toilet_Ledge wall | 5d | 2026-09-18 | 2026-09-23 | 1181 |  | 7 Days Work | 9167964 |
| 1183 | 36900.37000.37100.37700.38300.40400.57700.778100 | Toilet_Cement Plaster | 5d | 2026-09-23 | 2026-09-28 | 1182 |  | 7 Days Work | 9167974 |
| 1184 | 36900.37000.37100.37700.38300.40400.57700.778200 | Toilet_Door Frame | 1d | 2026-09-28 | 2026-09-29 | 1183 |  | 7 Days Work | 9167984 |
| 1185 | 36900.37000.37100.37700.38300.40400.57700.778300 | Toilet_Wash basin & Couter | 3d | 2026-09-29 | 2026-10-02 | 1184 |  | 7 Days Work | 9167994 |
| 1186 | 36900.37000.37100.37700.38300.40400.57700.778400 | Toilet_Wall dado | 20d | 2026-10-02 | 2026-10-22 | 1185 |  | 7 Days Work | 9168004 |
| 1187 | 36900.37000.37100.37700.38300.40400.57700.778500 | Toilet_Granite Work-Ledge wall top | 3d | 2026-10-22 | 2026-10-25 | 1186 |  | 7 Days Work | 9168014 |
| 1188 | 36900.37000.37100.37700.38300.40400.57700.778600 | Toilet_Floor Tilling work | 20d | 2026-10-25 | 2026-11-14 | 1187 |  | 7 Days Work | 9168024 |
| 1189 | 36900.37000.37100.37700.38300.40400.57700.778700 | Toilet_1st row of dado | 5d | 2026-11-14 | 2026-11-19 | 1188 |  | 7 Days Work | 9168034 |
| 1190 | 36900.37000.37100.37700.38300.40400.57700.778800 | Toilet_Window Fixing | 14d | 2026-11-19 | 2026-12-03 | 1189 |  | 7 Days Work | 9168044 |
| 1191 | 36900.37000.37100.37700.38300.40400.57700.778900 | Toilet_Services above False ceiling | 21d | 2026-12-03 | 2026-12-24 | 1190 |  | 7 Days Work | 9168054 |
| 1192 | 36900.37000.37100.37700.38300.40400.57700.779000 | Toilet_False Ceiling framing | 12d | 2026-12-24 | 2027-01-05 | 1191 |  | 7 Days Work | 9168064 |
| 1193 | 36900.37000.37100.37700.38300.40400.57700.779100 | Toilet_Door Frame | 5d | 2027-01-05 | 2027-01-10 | 1192 |  | 7 Days Work | 9168074 |
| 1194 | 36900.37000.37100.37700.38300.40400.57700.779200 | Toilet_Epoxy Tile Grouting | 7d | 2027-03-07 | 2027-03-14 | 1169SS |  | 7 Days Work | 9168084 |
| 1195 | 36900.37000.37100.37700.38300.40400.57700.779300 | Toilet_False ceiling board fixing, CP Sanitary Fixture, Electric Fixture | 21d | 2027-03-14 | 2027-04-04 | 1194 |  | 7 Days Work | 9168094 |
| 1196 | 36900.37000.37100.37700.52700 | **Common area Finishing** | 320d | 2026-10-04 | 2027-08-20 |  | start no earlier than 2026-10-04 | 7 Days Work | 9043297 |
| 1197 | 36900.37000.37100.37700.52700.78100 | **1st Habitable/3rd Floor** | 158d | 2026-10-04 | 2027-03-11 |  | start no earlier than 2026-10-04 | 7 Days Work | 9043306 |
| 1198 | 36900.37000.37100.37700.52700.78100.193800 | Side blockwork for lift shafts | 9d | 2026-10-04 | 2026-10-13 | 1393 |  | 7 Days Work | 9043346 |
| 1199 | 36900.37000.37100.37700.52700.78100.193900 | Door Threshold for lifts | 6d | 2026-10-13 | 2026-10-19 | 1198 |  | 7 Days Work | 9043356 |
| 1200 | 36900.37000.37100.37700.52700.78100.194000 | Granite Cladding | 10d | 2026-10-19 | 2026-10-29 | 1199 |  | 7 Days Work | 9043366 |
| 1201 | 36900.37000.37100.37700.52700.78100.194100 | MEP Services | 60d | 2026-10-29 | 2026-12-28 | 1200 |  | 7 Days Work | 9043376 |
| 1202 | 36900.37000.37100.37700.52700.78100.194200 | Flooring+Skirting | 20d | 2026-12-28 | 2027-01-17 | 1201 |  | 7 Days Work | 9043386 |
| 1203 | 36900.37000.37100.37700.52700.78100.194300 | Wall finishes | 21d | 2027-01-17 | 2027-02-07 | 1202 |  | 7 Days Work | 9043396 |
| 1204 | 36900.37000.37100.37700.52700.78100.194400 | False Ceiling | 10d | 2027-02-07 | 2027-02-17 | 1203 |  | 7 Days Work | 9043406 |
| 1205 | 36900.37000.37100.37700.52700.78100.194500 | Staircase | 15d | 2027-02-17 | 2027-03-04 | 1204 |  | 7 Days Work | 9043416 |
| 1206 | 36900.37000.37100.37700.52700.78100.194600 | Deep Cleaning | 7d | 2027-03-04 | 2027-03-11 | 1205 |  | 7 Days Work | 9043426 |

| ID | WBS | Task | Duration | Start | Finish | Predecessors | Constraint | Calendar | Unique_Task_ID |
| --- | --- | --- | --- | --- | --- | --- | --- | --- | --- |
| 1207 | 36900.37000.37100.37700.52700.78200 | **2nd Habitable/4th Floor** | 158d | 2026-10-13 | 2027-03-20 |  | start no earlier than 2026-10-13 | 7 Days Work | 9168104 |
| 1208 | 36900.37000.37100.37700.52700.78200.194700 | Side blockwork for lift shafts | 9d | 2026-10-13 | 2026-10-22 | 1198 |  | 7 Days Work | 9168114 |
| 1209 | 36900.37000.37100.37700.52700.78200.194800 | Door Threshold for lifts | 6d | 2026-10-22 | 2026-10-28 | 1208 |  | 7 Days Work | 9168124 |
| 1210 | 36900.37000.37100.37700.52700.78200.194900 | Granite Cladding | 10d | 2026-10-28 | 2026-11-07 | 1209 |  | 7 Days Work | 9168134 |
| 1211 | 36900.37000.37100.37700.52700.78200.195000 | MEP Services | 60d | 2026-11-07 | 2027-01-06 | 1210 |  | 7 Days Work | 9168144 |
| 1212 | 36900.37000.37100.37700.52700.78200.195100 | Flooring+Skirting | 20d | 2027-01-06 | 2027-01-26 | 1211 |  | 7 Days Work | 9168154 |
| 1213 | 36900.37000.37100.37700.52700.78200.195200 | Wall finishes | 21d | 2027-01-26 | 2027-02-16 | 1212 |  | 7 Days Work | 9168164 |
| 1214 | 36900.37000.37100.37700.52700.78200.195300 | False Ceiling | 10d | 2027-02-16 | 2027-02-26 | 1213 |  | 7 Days Work | 9168174 |
| 1215 | 36900.37000.37100.37700.52700.78200.195400 | Staircase | 15d | 2027-02-26 | 2027-03-13 | 1214 |  | 7 Days Work | 9168184 |
| 1216 | 36900.37000.37100.37700.52700.78200.195500 | Deep Cleaning | 7d | 2027-03-13 | 2027-03-20 | 1215 |  | 7 Days Work | 9168194 |
| 1217 | 36900.37000.37100.37700.52700.78700 | **3rd Habitable/5th Floor** | 158d | 2026-10-22 | 2027-03-29 |  | start no earlier than 2026-10-22 | 7 Days Work | 9168204 |
| 1218 | 36900.37000.37100.37700.52700.78700.195600 | Side blockwork for lift shafts | 9d | 2026-10-22 | 2026-10-31 | 1208 |  | 7 Days Work | 9168214 |
| 1219 | 36900.37000.37100.37700.52700.78700.195700 | Door Threshold for lifts | 6d | 2026-10-31 | 2026-11-06 | 1218 |  | 7 Days Work | 9168224 |
| 1220 | 36900.37000.37100.37700.52700.78700.195800 | Granite Cladding | 10d | 2026-11-06 | 2026-11-16 | 1219 |  | 7 Days Work | 9168234 |
| 1221 | 36900.37000.37100.37700.52700.78700.195900 | MEP Services | 60d | 2026-11-16 | 2027-01-15 | 1220 |  | 7 Days Work | 9168244 |
| 1222 | 36900.37000.37100.37700.52700.78700.196000 | Flooring+Skirting | 20d | 2027-01-15 | 2027-02-04 | 1221 |  | 7 Days Work | 9168254 |
| 1223 | 36900.37000.37100.37700.52700.78700.196100 | Wall finishes | 21d | 2027-02-04 | 2027-02-25 | 1222 |  | 7 Days Work | 9168264 |
| 1224 | 36900.37000.37100.37700.52700.78700.196200 | False Ceiling | 10d | 2027-02-25 | 2027-03-07 | 1223 |  | 7 Days Work | 9168274 |
| 1225 | 36900.37000.37100.37700.52700.78700.196300 | Staircase | 15d | 2027-03-07 | 2027-03-22 | 1224 |  | 7 Days Work | 9168284 |
| 1226 | 36900.37000.37100.37700.52700.78700.196400 | Deep Cleaning | 7d | 2027-03-22 | 2027-03-29 | 1225 |  | 7 Days Work | 9168294 |
| 1227 | 36900.37000.37100.37700.52700.78800 | **4th Habitable/6th Floor** | 158d | 2026-10-31 | 2027-04-07 |  | start no earlier than 2026-10-31 | 7 Days Work | 9168304 |
| 1228 | 36900.37000.37100.37700.52700.78800.196500 | Side blockwork for lift shafts | 9d | 2026-10-31 | 2026-11-09 | 1218 |  | 7 Days Work | 9168334 |
| 1229 | 36900.37000.37100.37700.52700.78800.196600 | Door Threshold for lifts | 6d | 2026-11-09 | 2026-11-15 | 1228 |  | 7 Days Work | 9168344 |
| 1230 | 36900.37000.37100.37700.52700.78800.196700 | Granite Cladding | 10d | 2026-11-15 | 2026-11-25 | 1229 |  | 7 Days Work | 9168354 |
| 1231 | 36900.37000.37100.37700.52700.78800.196800 | MEP Services | 60d | 2026-11-25 | 2027-01-24 | 1230 |  | 7 Days Work | 9168364 |
| 1232 | 36900.37000.37100.37700.52700.78800.196900 | Flooring+Skirting | 20d | 2027-01-24 | 2027-02-13 | 1231 |  | 7 Days Work | 9168374 |
| 1233 | 36900.37000.37100.37700.52700.78800.197000 | Wall finishes | 21d | 2027-02-13 | 2027-03-06 | 1232 |  | 7 Days Work | 9168384 |
| 1234 | 36900.37000.37100.37700.52700.78800.197100 | False Ceiling | 10d | 2027-03-06 | 2027-03-16 | 1233 |  | 7 Days Work | 9168394 |
| 1235 | 36900.37000.37100.37700.52700.78800.197200 | Staircase | 15d | 2027-03-16 | 2027-03-31 | 1234 |  | 7 Days Work | 9168404 |
| 1236 | 36900.37000.37100.37700.52700.78800.197300 | Deep Cleaning | 7d | 2027-03-31 | 2027-04-07 | 1235 |  | 7 Days Work | 9168414 |

| ID | WBS | Task | Duration | Start | Finish | Predecessors | Constraint | Calendar | Unique_Task_ID |
| --- | --- | --- | --- | --- | --- | --- | --- | --- | --- |
| 1237 | 36900.37000.37100.37700.52700.79200 | **5th Habitable/7th Floor** | 158d | 2026-11-09 | 2027-04-16 |  | start no earlier than 2026-11-09 | 7 Days Work | 9168314 |
| 1238 | 36900.37000.37100.37700.52700.79200.197400 | Side blockwork for lift shafts | 9d | 2026-11-09 | 2026-11-18 | 1228 |  | 7 Days Work | 9168424 |
| 1239 | 36900.37000.37100.37700.52700.79200.197500 | Door Threshold for lifts | 6d | 2026-11-18 | 2026-11-24 | 1238 |  | 7 Days Work | 9168434 |
| 1240 | 36900.37000.37100.37700.52700.79200.197600 | Granite Cladding | 10d | 2026-11-24 | 2026-12-04 | 1239 |  | 7 Days Work | 9168444 |
| 1241 | 36900.37000.37100.37700.52700.79200.197700 | MEP Services | 60d | 2026-12-04 | 2027-02-02 | 1240 |  | 7 Days Work | 9168454 |
| 1242 | 36900.37000.37100.37700.52700.79200.197800 | Flooring+Skirting | 20d | 2027-02-02 | 2027-02-22 | 1241 |  | 7 Days Work | 9168464 |
| 1243 | 36900.37000.37100.37700.52700.79200.197900 | Wall finishes | 21d | 2027-02-22 | 2027-03-15 | 1242 |  | 7 Days Work | 9168474 |
| 1244 | 36900.37000.37100.37700.52700.79200.198000 | False Ceiling | 10d | 2027-03-15 | 2027-03-25 | 1243 |  | 7 Days Work | 9168484 |
| 1245 | 36900.37000.37100.37700.52700.79200.198100 | Staircase | 15d | 2027-03-25 | 2027-04-09 | 1244 |  | 7 Days Work | 9168494 |
| 1246 | 36900.37000.37100.37700.52700.79200.198200 | Deep Cleaning | 7d | 2027-04-09 | 2027-04-16 | 1245 |  | 7 Days Work | 9168504 |
| 1247 | 36900.37000.37100.37700.52700.80400 | **6th Habitable/8th Floor** | 158d | 2026-11-18 | 2027-04-25 |  | start no earlier than 2026-11-18 | 7 Days Work | 9168324 |
| 1248 | 36900.37000.37100.37700.52700.80400.198300 | Side blockwork for lift shafts | 9d | 2026-11-18 | 2026-11-27 | 1238 |  | 7 Days Work | 9168514 |
| 1249 | 36900.37000.37100.37700.52700.80400.198400 | Door Threshold for lifts | 6d | 2026-11-27 | 2026-12-03 | 1248 |  | 7 Days Work | 9168524 |
| 1250 | 36900.37000.37100.37700.52700.80400.198500 | Granite Cladding | 10d | 2026-12-03 | 2026-12-13 | 1249 |  | 7 Days Work | 9168534 |
| 1251 | 36900.37000.37100.37700.52700.80400.198600 | MEP Services | 60d | 2026-12-13 | 2027-02-11 | 1250 |  | 7 Days Work | 9168544 |
| 1252 | 36900.37000.37100.37700.52700.80400.198700 | Flooring+Skirting | 20d | 2027-02-11 | 2027-03-03 | 1251 |  | 7 Days Work | 9168554 |
| 1253 | 36900.37000.37100.37700.52700.80400.198800 | Wall finishes | 21d | 2027-03-03 | 2027-03-24 | 1252 |  | 7 Days Work | 9168564 |
| 1254 | 36900.37000.37100.37700.52700.80400.198900 | False Ceiling | 10d | 2027-03-24 | 2027-04-03 | 1253 |  | 7 Days Work | 9168574 |
| 1255 | 36900.37000.37100.37700.52700.80400.199000 | Staircase | 15d | 2027-04-03 | 2027-04-18 | 1254 |  | 7 Days Work | 9168584 |
| 1256 | 36900.37000.37100.37700.52700.80400.199100 | Deep Cleaning | 7d | 2027-04-18 | 2027-04-25 | 1255 |  | 7 Days Work | 9168594 |
| 1257 | 36900.37000.37100.37700.52700.80500 | **7th Habitable/9th Floor** | 158d | 2026-11-27 | 2027-05-04 |  | start no earlier than 2026-11-27 | 7 Days Work | 9168604 |
| 1258 | 36900.37000.37100.37700.52700.80500.199200 | Side blockwork for lift shafts | 9d | 2026-11-27 | 2026-12-06 | 1248 |  | 7 Days Work | 9168664 |
| 1259 | 36900.37000.37100.37700.52700.80500.199300 | Door Threshold for lifts | 6d | 2026-12-06 | 2026-12-12 | 1258 |  | 7 Days Work | 9168674 |
| 1260 | 36900.37000.37100.37700.52700.80500.199400 | Granite Cladding | 10d | 2026-12-12 | 2026-12-22 | 1259 |  | 7 Days Work | 9168684 |
| 1261 | 36900.37000.37100.37700.52700.80500.199500 | MEP Services | 60d | 2026-12-22 | 2027-02-20 | 1260 |  | 7 Days Work | 9168694 |
| 1262 | 36900.37000.37100.37700.52700.80500.199600 | Flooring+Skirting | 20d | 2027-02-20 | 2027-03-12 | 1261 |  | 7 Days Work | 9168704 |
| 1263 | 36900.37000.37100.37700.52700.80500.199700 | Wall finishes | 21d | 2027-03-12 | 2027-04-02 | 1262 |  | 7 Days Work | 9168714 |
| 1264 | 36900.37000.37100.37700.52700.80500.199800 | False Ceiling | 10d | 2027-04-02 | 2027-04-12 | 1263 |  | 7 Days Work | 9168724 |
| 1265 | 36900.37000.37100.37700.52700.80500.199900 | Staircase | 15d | 2027-04-12 | 2027-04-27 | 1264 |  | 7 Days Work | 9168734 |
| 1266 | 36900.37000.37100.37700.52700.80500.200000 | Deep Cleaning | 7d | 2027-04-27 | 2027-05-04 | 1265 |  | 7 Days Work | 9168744 |

| ID | WBS | Task | Duration | Start | Finish | Predecessors | Constraint | Calendar | Unique_Task_ID |
| --- | --- | --- | --- | --- | --- | --- | --- | --- | --- |
| 1267 | 36900.37000.37100.37700.52700.80600 | **8th Habitable/10th Floor** | 158d | 2026-12-06 | 2027-05-13 |  | start no earlier than 2026-12-06 | 7 Days Work | 9168614 |
| 1268 | 36900.37000.37100.37700.52700.80600.200100 | Side blockwork for lift shafts | 9d | 2026-12-06 | 2026-12-15 | 1258 |  | 7 Days Work | 9168754 |
| 1269 | 36900.37000.37100.37700.52700.80600.200200 | Door Threshold for lifts | 6d | 2026-12-15 | 2026-12-21 | 1268 |  | 7 Days Work | 9168764 |
| 1270 | 36900.37000.37100.37700.52700.80600.200300 | Granite Cladding | 10d | 2026-12-21 | 2026-12-31 | 1269 |  | 7 Days Work | 9168774 |
| 1271 | 36900.37000.37100.37700.52700.80600.200400 | MEP Services | 60d | 2026-12-31 | 2027-03-01 | 1270 |  | 7 Days Work | 9168784 |
| 1272 | 36900.37000.37100.37700.52700.80600.200500 | Flooring+Skirting | 20d | 2027-03-01 | 2027-03-21 | 1271 |  | 7 Days Work | 9168794 |
| 1273 | 36900.37000.37100.37700.52700.80600.200600 | Wall finishes | 21d | 2027-03-21 | 2027-04-11 | 1272 |  | 7 Days Work | 9168804 |
| 1274 | 36900.37000.37100.37700.52700.80600.200700 | False Ceiling | 10d | 2027-04-11 | 2027-04-21 | 1273 |  | 7 Days Work | 9168814 |
| 1275 | 36900.37000.37100.37700.52700.80600.200800 | Staircase | 15d | 2027-04-21 | 2027-05-06 | 1274 |  | 7 Days Work | 9168824 |
| 1276 | 36900.37000.37100.37700.52700.80600.200900 | Deep Cleaning | 7d | 2027-05-06 | 2027-05-13 | 1275 |  | 7 Days Work | 9168834 |
| 1277 | 36900.37000.37100.37700.52700.80700 | **9th Habitable/11th Floor** | 158d | 2026-12-15 | 2027-05-22 |  | start no earlier than 2026-12-15 | 7 Days Work | 9168624 |
| 1278 | 36900.37000.37100.37700.52700.80700.201000 | Side blockwork for lift shafts | 9d | 2026-12-15 | 2026-12-24 | 1268 |  | 7 Days Work | 9168844 |
| 1279 | 36900.37000.37100.37700.52700.80700.201100 | Door Threshold for lifts | 6d | 2026-12-24 | 2026-12-30 | 1278 |  | 7 Days Work | 9168854 |
| 1280 | 36900.37000.37100.37700.52700.80700.201200 | Granite Cladding | 10d | 2026-12-30 | 2027-01-09 | 1279 |  | 7 Days Work | 9168864 |
| 1281 | 36900.37000.37100.37700.52700.80700.201300 | MEP Services | 60d | 2027-01-09 | 2027-03-10 | 1280 |  | 7 Days Work | 9168874 |
| 1282 | 36900.37000.37100.37700.52700.80700.201400 | Flooring+Skirting | 20d | 2027-03-10 | 2027-03-30 | 1281 |  | 7 Days Work | 9168884 |
| 1283 | 36900.37000.37100.37700.52700.80700.201500 | Wall finishes | 21d | 2027-03-30 | 2027-04-20 | 1282 |  | 7 Days Work | 9168894 |
| 1284 | 36900.37000.37100.37700.52700.80700.201600 | False Ceiling | 10d | 2027-04-20 | 2027-04-30 | 1283 |  | 7 Days Work | 9168904 |
| 1285 | 36900.37000.37100.37700.52700.80700.201700 | Staircase | 15d | 2027-04-30 | 2027-05-15 | 1284 |  | 7 Days Work | 9168914 |
| 1286 | 36900.37000.37100.37700.52700.80700.201800 | Deep Cleaning | 7d | 2027-05-15 | 2027-05-22 | 1285 |  | 7 Days Work | 9168924 |
| 1287 | 36900.37000.37100.37700.52700.80800 | **10th Habitable/12th Floor** | 158d | 2026-12-24 | 2027-05-31 |  | start no earlier than 2026-12-24 | 7 Days Work | 9168634 |
| 1288 | 36900.37000.37100.37700.52700.80800.201900 | Side blockwork for lift shafts | 9d | 2026-12-24 | 2027-01-02 | 1278 |  | 7 Days Work | 9168934 |
| 1289 | 36900.37000.37100.37700.52700.80800.202000 | Door Threshold for lifts | 6d | 2027-01-02 | 2027-01-08 | 1288 |  | 7 Days Work | 9168944 |
| 1290 | 36900.37000.37100.37700.52700.80800.202100 | Granite Cladding | 10d | 2027-01-08 | 2027-01-18 | 1289 |  | 7 Days Work | 9168954 |
| 1291 | 36900.37000.37100.37700.52700.80800.202200 | MEP Services | 60d | 2027-01-18 | 2027-03-19 | 1290 |  | 7 Days Work | 9168964 |
| 1292 | 36900.37000.37100.37700.52700.80800.202300 | Flooring+Skirting | 20d | 2027-03-19 | 2027-04-08 | 1291 |  | 7 Days Work | 9168974 |
| 1293 | 36900.37000.37100.37700.52700.80800.202400 | Wall finishes | 21d | 2027-04-08 | 2027-04-29 | 1292 |  | 7 Days Work | 9168984 |
| 1294 | 36900.37000.37100.37700.52700.80800.202500 | False Ceiling | 10d | 2027-04-29 | 2027-05-09 | 1293 |  | 7 Days Work | 9168994 |
| 1295 | 36900.37000.37100.37700.52700.80800.202600 | Staircase | 15d | 2027-05-09 | 2027-05-24 | 1294 |  | 7 Days Work | 9169004 |
| 1296 | 36900.37000.37100.37700.52700.80800.202700 | Deep Cleaning | 7d | 2027-05-24 | 2027-05-31 | 1295 |  | 7 Days Work | 9169014 |

| ID | WBS | Task | Duration | Start | Finish | Predecessors | Constraint | Calendar | Unique_Task_ID |
| --- | --- | --- | --- | --- | --- | --- | --- | --- | --- |
| 1297 | 36900.37000.37100.37700.52700.80900 | **11th Habitable/13th Floor** | 158d | 2027-01-02 | 2027-06-09 |  | start no earlier than 2027-01-02 | 7 Days Work | 9168644 |
| 1298 | 36900.37000.37100.37700.52700.80900.202800 | Side blockwork for lift shafts | 9d | 2027-01-02 | 2027-01-11 | 1288 |  | 7 Days Work | 9169024 |
| 1299 | 36900.37000.37100.37700.52700.80900.202900 | Door Threshold for lifts | 6d | 2027-01-11 | 2027-01-17 | 1298 |  | 7 Days Work | 9169034 |
| 1300 | 36900.37000.37100.37700.52700.80900.203000 | Granite Cladding | 10d | 2027-01-17 | 2027-01-27 | 1299 |  | 7 Days Work | 9169044 |
| 1301 | 36900.37000.37100.37700.52700.80900.203100 | MEP Services | 60d | 2027-01-27 | 2027-03-28 | 1300 |  | 7 Days Work | 9169054 |
| 1302 | 36900.37000.37100.37700.52700.80900.203200 | Flooring+Skirting | 20d | 2027-03-28 | 2027-04-17 | 1301 |  | 7 Days Work | 9169064 |
| 1303 | 36900.37000.37100.37700.52700.80900.203300 | Wall finishes | 21d | 2027-04-17 | 2027-05-08 | 1302 |  | 7 Days Work | 9169074 |
| 1304 | 36900.37000.37100.37700.52700.80900.203400 | False Ceiling | 10d | 2027-05-08 | 2027-05-18 | 1303 |  | 7 Days Work | 9169084 |
| 1305 | 36900.37000.37100.37700.52700.80900.203500 | Staircase | 15d | 2027-05-18 | 2027-06-02 | 1304 |  | 7 Days Work | 9169094 |
| 1306 | 36900.37000.37100.37700.52700.80900.203600 | Deep Cleaning | 7d | 2027-06-02 | 2027-06-09 | 1305 |  | 7 Days Work | 9169104 |
| 1307 | 36900.37000.37100.37700.52700.81700 | **12th Habitable/14th Floor** | 158d | 2027-01-11 | 2027-06-18 |  | start no earlier than 2027-01-11 | 7 Days Work | 9168654 |
| 1308 | 36900.37000.37100.37700.52700.81700.203700 | Side blockwork for lift shafts | 9d | 2027-01-11 | 2027-01-20 | 1298 |  | 7 Days Work | 9169114 |
| 1309 | 36900.37000.37100.37700.52700.81700.203800 | Door Threshold for lifts | 6d | 2027-01-20 | 2027-01-26 | 1308 |  | 7 Days Work | 9169124 |
| 1310 | 36900.37000.37100.37700.52700.81700.203900 | Granite Cladding | 10d | 2027-01-26 | 2027-02-05 | 1309 |  | 7 Days Work | 9169134 |
| 1311 | 36900.37000.37100.37700.52700.81700.204000 | MEP Services | 60d | 2027-02-05 | 2027-04-06 | 1310 |  | 7 Days Work | 9169144 |
| 1312 | 36900.37000.37100.37700.52700.81700.204100 | Flooring+Skirting | 20d | 2027-04-06 | 2027-04-26 | 1311 |  | 7 Days Work | 9169154 |
| 1313 | 36900.37000.37100.37700.52700.81700.204200 | Wall finishes | 21d | 2027-04-26 | 2027-05-17 | 1312 |  | 7 Days Work | 9169164 |
| 1314 | 36900.37000.37100.37700.52700.81700.204300 | False Ceiling | 10d | 2027-05-17 | 2027-05-27 | 1313 |  | 7 Days Work | 9169174 |
| 1315 | 36900.37000.37100.37700.52700.81700.204400 | Staircase | 15d | 2027-05-27 | 2027-06-11 | 1314 |  | 7 Days Work | 9169184 |
| 1316 | 36900.37000.37100.37700.52700.81700.204500 | Deep Cleaning | 7d | 2027-06-11 | 2027-06-18 | 1315 |  | 7 Days Work | 9169194 |
| 1317 | 36900.37000.37100.37700.52700.81600 | **13th Habitable/15th Floor** | 158d | 2027-01-20 | 2027-06-27 |  | start no earlier than 2027-01-20 | 7 Days Work | 9169204 |
| 1318 | 36900.37000.37100.37700.52700.81600.204600 | Side blockwork for lift shafts | 9d | 2027-01-20 | 2027-01-29 | 1308 |  | 7 Days Work | 9169274 |
| 1319 | 36900.37000.37100.37700.52700.81600.204700 | Door Threshold for lifts | 6d | 2027-01-29 | 2027-02-04 | 1318 |  | 7 Days Work | 9169284 |
| 1320 | 36900.37000.37100.37700.52700.81600.204800 | Granite Cladding | 10d | 2027-02-04 | 2027-02-14 | 1319 |  | 7 Days Work | 9169294 |
| 1321 | 36900.37000.37100.37700.52700.81600.204900 | MEP Services | 60d | 2027-02-14 | 2027-04-15 | 1320 |  | 7 Days Work | 9169304 |
| 1322 | 36900.37000.37100.37700.52700.81600.205000 | Flooring+Skirting | 20d | 2027-04-15 | 2027-05-05 | 1321 |  | 7 Days Work | 9169314 |
| 1323 | 36900.37000.37100.37700.52700.81600.205100 | Wall finishes | 21d | 2027-05-05 | 2027-05-26 | 1322 |  | 7 Days Work | 9169324 |
| 1324 | 36900.37000.37100.37700.52700.81600.205200 | False Ceiling | 10d | 2027-05-26 | 2027-06-05 | 1323 |  | 7 Days Work | 9169334 |
| 1325 | 36900.37000.37100.37700.52700.81600.205300 | Staircase | 15d | 2027-06-05 | 2027-06-20 | 1324 |  | 7 Days Work | 9169344 |
| 1326 | 36900.37000.37100.37700.52700.81600.205400 | Deep Cleaning | 7d | 2027-06-20 | 2027-06-27 | 1325 |  | 7 Days Work | 9169354 |

| ID | WBS | Task | Duration | Start | Finish | Predecessors | Constraint | Calendar | Unique_Task_ID |
| --- | --- | --- | --- | --- | --- | --- | --- | --- | --- |
| 1327 | 36900.37000.37100.37700.52700.81500 | **14th Habitable/16th Floor** | 158d | 2027-01-29 | 2027-07-06 |  | start no earlier than 2027-01-29 | 7 Days Work | 9169214 |
| 1328 | 36900.37000.37100.37700.52700.81500.205500 | Side blockwork for lift shafts | 9d | 2027-01-29 | 2027-02-07 | 1318 |  | 7 Days Work | 9169364 |
| 1329 | 36900.37000.37100.37700.52700.81500.205600 | Door Threshold for lifts | 6d | 2027-02-07 | 2027-02-13 | 1328 |  | 7 Days Work | 9169374 |
| 1330 | 36900.37000.37100.37700.52700.81500.205700 | Granite Cladding | 10d | 2027-02-13 | 2027-02-23 | 1329 |  | 7 Days Work | 9169384 |
| 1331 | 36900.37000.37100.37700.52700.81500.205800 | MEP Services | 60d | 2027-02-23 | 2027-04-24 | 1330 |  | 7 Days Work | 9169394 |
| 1332 | 36900.37000.37100.37700.52700.81500.205900 | Flooring+Skirting | 20d | 2027-04-24 | 2027-05-14 | 1331 |  | 7 Days Work | 9169404 |
| 1333 | 36900.37000.37100.37700.52700.81500.206000 | Wall finishes | 21d | 2027-05-14 | 2027-06-04 | 1332 |  | 7 Days Work | 9169414 |
| 1334 | 36900.37000.37100.37700.52700.81500.206100 | False Ceiling | 10d | 2027-06-04 | 2027-06-14 | 1333 |  | 7 Days Work | 9169424 |
| 1335 | 36900.37000.37100.37700.52700.81500.206200 | Staircase | 15d | 2027-06-14 | 2027-06-29 | 1334 |  | 7 Days Work | 9169434 |
| 1336 | 36900.37000.37100.37700.52700.81500.206300 | Deep Cleaning | 7d | 2027-06-29 | 2027-07-06 | 1335 |  | 7 Days Work | 9169444 |
| 1337 | 36900.37000.37100.37700.52700.81400 | **15th Habitable/17th Floor** | 158d | 2027-02-07 | 2027-07-15 |  | start no earlier than 2027-02-07 | 7 Days Work | 9169224 |
| 1338 | 36900.37000.37100.37700.52700.81400.206400 | Side blockwork for lift shafts | 9d | 2027-02-07 | 2027-02-16 | 1328 |  | 7 Days Work | 9169454 |
| 1339 | 36900.37000.37100.37700.52700.81400.206500 | Door Threshold for lifts | 6d | 2027-02-16 | 2027-02-22 | 1338 |  | 7 Days Work | 9169464 |
| 1340 | 36900.37000.37100.37700.52700.81400.206600 | Granite Cladding | 10d | 2027-02-22 | 2027-03-04 | 1339 |  | 7 Days Work | 9169474 |
| 1341 | 36900.37000.37100.37700.52700.81400.206700 | MEP Services | 60d | 2027-03-04 | 2027-05-03 | 1340 |  | 7 Days Work | 9169484 |
| 1342 | 36900.37000.37100.37700.52700.81400.206800 | Flooring+Skirting | 20d | 2027-05-03 | 2027-05-23 | 1341 |  | 7 Days Work | 9169494 |
| 1343 | 36900.37000.37100.37700.52700.81400.206900 | Wall finishes | 21d | 2027-05-23 | 2027-06-13 | 1342 |  | 7 Days Work | 9169504 |
| 1344 | 36900.37000.37100.37700.52700.81400.207000 | False Ceiling | 10d | 2027-06-13 | 2027-06-23 | 1343 |  | 7 Days Work | 9169514 |
| 1345 | 36900.37000.37100.37700.52700.81400.207100 | Staircase | 15d | 2027-06-23 | 2027-07-08 | 1344 |  | 7 Days Work | 9169524 |
| 1346 | 36900.37000.37100.37700.52700.81400.207200 | Deep Cleaning | 7d | 2027-07-08 | 2027-07-15 | 1345 |  | 7 Days Work | 9169534 |
| 1347 | 36900.37000.37100.37700.52700.81300 | **16th Habitable/18th Floor** | 158d | 2027-02-16 | 2027-07-24 |  | start no earlier than 2027-02-16 | 7 Days Work | 9169234 |
| 1348 | 36900.37000.37100.37700.52700.81300.207300 | Side blockwork for lift shafts | 9d | 2027-02-16 | 2027-02-25 | 1338 |  | 7 Days Work | 9169544 |
| 1349 | 36900.37000.37100.37700.52700.81300.207400 | Door Threshold for lifts | 6d | 2027-02-25 | 2027-03-03 | 1348 |  | 7 Days Work | 9169554 |
| 1350 | 36900.37000.37100.37700.52700.81300.207500 | Granite Cladding | 10d | 2027-03-03 | 2027-03-13 | 1349 |  | 7 Days Work | 9169564 |
| 1351 | 36900.37000.37100.37700.52700.81300.207600 | MEP Services | 60d | 2027-03-13 | 2027-05-12 | 1350 |  | 7 Days Work | 9169574 |
| 1352 | 36900.37000.37100.37700.52700.81300.207700 | Flooring+Skirting | 20d | 2027-05-12 | 2027-06-01 | 1351 |  | 7 Days Work | 9169584 |
| 1353 | 36900.37000.37100.37700.52700.81300.207800 | Wall finishes | 21d | 2027-06-01 | 2027-06-22 | 1352 |  | 7 Days Work | 9169594 |
| 1354 | 36900.37000.37100.37700.52700.81300.207900 | False Ceiling | 10d | 2027-06-22 | 2027-07-02 | 1353 |  | 7 Days Work | 9169604 |
| 1355 | 36900.37000.37100.37700.52700.81300.208000 | Staircase | 15d | 2027-07-02 | 2027-07-17 | 1354 |  | 7 Days Work | 9169614 |
| 1356 | 36900.37000.37100.37700.52700.81300.208100 | Deep Cleaning | 7d | 2027-07-17 | 2027-07-24 | 1355 |  | 7 Days Work | 9169624 |

| ID | WBS | Task | Duration | Start | Finish | Predecessors | Constraint | Calendar | Unique_Task_ID |
| --- | --- | --- | --- | --- | --- | --- | --- | --- | --- |
| 1357 | 36900.37000.37100.37700.52700.81200 | **17th Habitable/19th Floor** | 158d | 2027-02-25 | 2027-08-02 |  | start no earlier than 2027-02-25 | 7 Days Work | 9169244 |
| 1358 | 36900.37000.37100.37700.52700.81200.208200 | Side blockwork for lift shafts | 9d | 2027-02-25 | 2027-03-06 | 1348 |  | 7 Days Work | 9169634 |
| 1359 | 36900.37000.37100.37700.52700.81200.208300 | Door Threshold for lifts | 6d | 2027-03-06 | 2027-03-12 | 1358 |  | 7 Days Work | 9169644 |
| 1360 | 36900.37000.37100.37700.52700.81200.208400 | Granite Cladding | 10d | 2027-03-12 | 2027-03-22 | 1359 |  | 7 Days Work | 9169654 |
| 1361 | 36900.37000.37100.37700.52700.81200.208500 | MEP Services | 60d | 2027-03-22 | 2027-05-21 | 1360 |  | 7 Days Work | 9169664 |
| 1362 | 36900.37000.37100.37700.52700.81200.208600 | Flooring+Skirting | 20d | 2027-05-21 | 2027-06-10 | 1361 |  | 7 Days Work | 9169674 |
| 1363 | 36900.37000.37100.37700.52700.81200.208700 | Wall finishes | 21d | 2027-06-10 | 2027-07-01 | 1362 |  | 7 Days Work | 9169684 |
| 1364 | 36900.37000.37100.37700.52700.81200.208800 | False Ceiling | 10d | 2027-07-01 | 2027-07-11 | 1363 |  | 7 Days Work | 9169694 |
| 1365 | 36900.37000.37100.37700.52700.81200.208900 | Staircase | 15d | 2027-07-11 | 2027-07-26 | 1364 |  | 7 Days Work | 9169704 |
| 1366 | 36900.37000.37100.37700.52700.81200.209000 | Deep Cleaning | 7d | 2027-07-26 | 2027-08-02 | 1365 |  | 7 Days Work | 9169714 |
| 1367 | 36900.37000.37100.37700.52700.81100 | **18th Habitable/20th Floor** | 158d | 2027-03-06 | 2027-08-11 |  | start no earlier than 2027-03-06 | 7 Days Work | 9169254 |
| 1368 | 36900.37000.37100.37700.52700.81100.209100 | Side blockwork for lift shafts | 9d | 2027-03-06 | 2027-03-15 | 1358 |  | 7 Days Work | 9169724 |
| 1369 | 36900.37000.37100.37700.52700.81100.209200 | Door Threshold for lifts | 6d | 2027-03-15 | 2027-03-21 | 1368 |  | 7 Days Work | 9169734 |
| 1370 | 36900.37000.37100.37700.52700.81100.209300 | Granite Cladding | 10d | 2027-03-21 | 2027-03-31 | 1369 |  | 7 Days Work | 9169744 |
| 1371 | 36900.37000.37100.37700.52700.81100.209400 | MEP Services | 60d | 2027-03-31 | 2027-05-30 | 1370 |  | 7 Days Work | 9169754 |
| 1372 | 36900.37000.37100.37700.52700.81100.209500 | Flooring+Skirting | 20d | 2027-05-30 | 2027-06-19 | 1371 |  | 7 Days Work | 9169764 |
| 1373 | 36900.37000.37100.37700.52700.81100.209600 | Wall finishes | 21d | 2027-06-19 | 2027-07-10 | 1372 |  | 7 Days Work | 9169774 |
| 1374 | 36900.37000.37100.37700.52700.81100.209700 | False Ceiling | 10d | 2027-07-10 | 2027-07-20 | 1373 |  | 7 Days Work | 9169784 |
| 1375 | 36900.37000.37100.37700.52700.81100.209800 | Staircase | 15d | 2027-07-20 | 2027-08-04 | 1374 |  | 7 Days Work | 9169794 |
| 1376 | 36900.37000.37100.37700.52700.81100.209900 | Deep Cleaning | 7d | 2027-08-04 | 2027-08-11 | 1375 |  | 7 Days Work | 9169804 |
| 1377 | 36900.37000.37100.37700.52700.81000 | **19th Habitable/21st Floor** | 158d | 2027-03-15 | 2027-08-20 |  | start no earlier than 2027-03-15 | 7 Days Work | 9169264 |
| 1378 | 36900.37000.37100.37700.52700.81000.210000 | Side blockwork for lift shafts | 9d | 2027-03-15 | 2027-03-24 | 1368 |  | 7 Days Work | 9169814 |
| 1379 | 36900.37000.37100.37700.52700.81000.210100 | Door Threshold for lifts | 6d | 2027-03-24 | 2027-03-30 | 1378 |  | 7 Days Work | 9169824 |
| 1380 | 36900.37000.37100.37700.52700.81000.210200 | Granite Cladding | 10d | 2027-03-30 | 2027-04-09 | 1379 |  | 7 Days Work | 9169834 |
| 1381 | 36900.37000.37100.37700.52700.81000.210300 | MEP Services | 60d | 2027-04-09 | 2027-06-08 | 1380 |  | 7 Days Work | 9169844 |
| 1382 | 36900.37000.37100.37700.52700.81000.210400 | Flooring+Skirting | 20d | 2027-06-08 | 2027-06-28 | 1381 |  | 7 Days Work | 9169854 |
| 1383 | 36900.37000.37100.37700.52700.81000.210500 | Wall finishes | 21d | 2027-06-28 | 2027-07-19 | 1382 |  | 7 Days Work | 9169864 |
| 1384 | 36900.37000.37100.37700.52700.81000.210600 | False Ceiling | 10d | 2027-07-19 | 2027-07-29 | 1383 |  | 7 Days Work | 9169874 |
| 1385 | 36900.37000.37100.37700.52700.81000.210700 | Staircase | 15d | 2027-07-29 | 2027-08-13 | 1384 |  | 7 Days Work | 9169884 |
| 1386 | 36900.37000.37100.37700.52700.81000.210800 | Deep Cleaning | 7d | 2027-08-13 | 2027-08-20 | 1385 |  | 7 Days Work | 049 |

| ID | WBS | Task | Duration | Start | Finish | Predecessors | Constraint | Calendar | Unique_Task_ID |
| --- | --- | --- | --- | --- | --- | --- | --- | --- | --- |
| 1387 | 36900.37000.37100.37700.67800 | **Lift** | 332d | 2025-12-21 | 2026-11-18 |  | start no earlier than 2025-12-21 | 7 Days Work | 9043436 |
| 1388 | 36900.37000.37100.37700.67800.117000 | Order Issue | 104d | 2025-12-21 | 2026-04-04 | 44FS-120d |  | 7 Days Work | 9043437 |
| 1389 | 36900.37000.37100.37700.67800.117100 | Shop drawing approval | 30d | 2026-04-04 | 2026-05-04 | 1388 |  | 7 Days Work | 9043438 |
| 1390 | 36900.37000.37100.37700.67800.117200 | Material recipt | 90d | 2026-05-04 | 2026-08-02 | 1389 |  | 7 Days Work | 9043439 |
| 1391 | 36900.37000.37100.37700.67800.117300 | Lift Shaft Handover | 30d | 2026-08-23 | 2026-09-22 | 54 |  | 7 Days Work | 9043446 |
| 1392 | 36900.37000.37100.37700.67800.117400 | Template fixing by lift contractor | 7d | 2026-09-22 | 2026-09-29 | 1391 |  | 7 Days Work | 9043456 |
| 1393 | 36900.37000.37100.37700.67800.117500 | Centre line marking for lift shafts | 5d | 2026-09-29 | 2026-10-04 | 1392 |  | 7 Days Work | 9043466 |
| 1394 | 36900.37000.37100.37700.67800.117600 | Rail & Bracket Fixing | 5d | 2026-10-04 | 2026-10-09 | 1393 |  | 7 Days Work | 9043476 |
| 1395 | 36900.37000.37100.37700.67800.117700 | Cage Installation | 5d | 2026-10-09 | 2026-10-14 | 1394 |  | 7 Days Work | 9043486 |
| 1396 | 36900.37000.37100.37700.67800.117800 | Slow Speed | 20d | 2026-10-14 | 2026-11-03 | 1395 |  | 7 Days Work | 9043496 |
| 1397 | 36900.37000.37100.37700.67800.117900 | High Spped | 5d | 2026-11-03 | 2026-11-08 | 1396 |  | 7 Days Work | 9043506 |
| 1398 | 36900.37000.37100.37700.67800.118000 | Commisioning | 7d | 2026-11-08 | 2026-11-15 | 1397 |  | 7 Days Work | 9043516 |
| 1399 | 36900.37000.37100.37700.67800.118100 | Handover | 3d | 2026-11-15 | 2026-11-18 | 1398 |  | 7 Days Work | 9043314 |
| 1400 | 36900.37000.37100.37700.89400 | External Paint | 90d | 2026-12-01 | 2027-03-01 | 53FS+135d |  | 7 Days Work | 0050 |
| 1401 | 36900.37000.37100.37800 | **Tower-2** | 857.5d | 2025-06-07 | 2027-10-12 |  | start no earlier than 2025-06-07 | 7 Days Work | 9042614 |
| 1402 | 36900.37000.37100.37800.89500 | Pilling | 114d | 2025-06-07 | 2025-09-28 | 28SS+91d |  | 7 Days Work | 9043324 |
| 1403 | 36900.37000.37100.37800.89600 | Excavation & Pile Breaking | 37d | 2025-09-29 | 2025-11-04 | 1402 |  | 7 Days Work | 9043325 |
| 1404 | 36900.37000.37100.37800.89700 | Pilecap | 26d | 2025-11-05 | 2025-12-01 | 1403FS+0.25d |  | 7 Days Work | 9043334 |
| 1405 | 36900.37000.37100.37800.89800 | up to PL | 22d | 2025-12-01 | 2025-12-23 | 1404 |  | 7 Days Work | 9043344 |
| 1406 | 36900.37000.37100.37800.89900 | 1st Floor Slab RCC | 25d | 2025-12-23 | 2026-01-17 | 1405 |  | 7 Days Work | 9043354 |
| 1407 | 36900.37000.37100.37800.90000 | 2nd Floor Slab RCC | 25d | 2026-01-17 | 2026-02-11 | 1406 |  | 7 Days Work | 9043364 |
| 1408 | 36900.37000.37100.37800.90100 | 3rd Floor Slab RCC | 25d | 2026-02-11 | 2026-03-08 | 1407 |  | 7 Days Work | 9043374 |
| 1409 | 36900.37000.37100.37800.90200 | 4th Floor Slab RCC | 21d | 2026-03-08 | 2026-03-29 | 1408 |  | 7 Days Work | 9043384 |
| 1410 | 36900.37000.37100.37800.90300 | 5th Floor Slab RCC | 15d | 2026-03-29 | 2026-04-13 | 1409 |  | 7 Days Work | 9043394 |
| 1411 | 36900.37000.37100.37800.90400 | 6th Floor Slab RCC | 9d | 2026-04-13 | 2026-04-22 | 1410 |  | 7 Days Work | 9043404 |
| 1412 | 36900.37000.37100.37800.90500 | 7th Floor Slab RCC | 12d | 2026-04-22 | 2026-05-04 | 1411 |  | 7 Days Work | 9043414 |
| 1413 | 36900.37000.37100.37800.90600 | 8th Floor Slab RCC | 9d | 2026-05-04 | 2026-05-13 | 1412 |  | 7 Days Work | 9043424 |
| 1414 | 36900.37000.37100.37800.90700 | 9th Floor Slab RCC | 9d | 2026-05-13 | 2026-05-22 | 1413 |  | 7 Days Work | 9043434 |
| 1415 | 36900.37000.37100.37800.90800 | 10th Floor Slab RCC | 9d | 2026-05-22 | 2026-05-31 | 1414 |  | 7 Days Work | 9043444 |
| 1416 | 36900.37000.37100.37800.90900 | 11th Floor Slab RCC | 12d | 2026-05-31 | 2026-06-12 | 1415 |  | 7 Days Work | 9043454 |
| 1417 | 36900.37000.37100.37800.91000 | 12th Floor Slab RCC | 9d | 2026-06-12 | 2026-06-21 | 1416 |  | 7 Days Work | 9043464 |
| 1418 | 36900.37000.37100.37800.91100 | 13th Floor Slab RCC | 9d | 2026-06-21 | 2026-06-30 | 1417 |  | 7 Days Work | 9043474 |
| 1419 | 36900.37000.37100.37800.91200 | 14th Floor Slab RCC | 9d | 2026-06-30 | 2026-07-09 | 1418 |  | 7 Days Work | 9043484 |
| 1420 | 36900.37000.37100.37800.91300 | 15th Floor Slab RCC | 12d | 2026-07-09 | 2026-07-21 | 1419 |  | 7 Days Work | 9043494 |
| 1421 | 36900.37000.37100.37800.91400 | 16th Floor Slab RCC | 9d | 2026-07-21 | 2026-07-30 | 1420 |  | 7 Days Work | 9043504 |
| 1422 | 36900.37000.37100.37800.91500 | 17th Floor Slab RCC | 9d | 2026-07-30 | 2026-08-08 | 1421 |  | 7 Days Work | 9043514 |
| 1423 | 36900.37000.37100.37800.91600 | 18th Floor Slab RCC | 9d | 2026-08-08 | 2026-08-17 | 1422 |  | 7 Days Work | 9043524 |
| 1424 | 36900.37000.37100.37800.91700 | 19th Floor Slab RCC | 12d | 2026-08-17 | 2026-08-29 | 1423 |  | 7 Days Work | 9043534 |
| 1425 | 36900.37000.37100.37800.91800 | 20th Floor Slab RCC | 9d | 2026-08-29 | 2026-09-07 | 1424 |  | 7 Days Work | 9043544 |
| 1426 | 36900.37000.37100.37800.91900 | Terrace | 12d | 2026-09-07 | 2026-09-19 | 1425 |  | 7 Days Work | 9043554 |
| 1427 | 36900.37000.37100.37800.92000 | Above Terrace | 35d | 2026-09-19 | 2026-10-24 | 1426FS+0.25d |  | 7 Days Work | 9043564 |

| ID | WBS | Task | Duration | Start | Finish | Predecessors | Constraint | Calendar | Unique_Task_ID |
| --- | --- | --- | --- | --- | --- | --- | --- | --- | --- |
| 1428 | 36900.37000.37100.37800.38500 | **Flat Finishing** | 419d | 2026-04-13 | 2027-06-06 |  | start no earlier than 2026-04-13 | 7 Days Work | 9169914 |
| 1429 | 36900.37000.37100.37800.38500.40500 | **1st Habitable/3rd Floor** | 245d | 2026-04-13 | 2026-12-14 |  | start no earlier than 2026-04-13 | 7 Days Work | 9169924 |
| 1430 | 36900.37000.37100.37800.38500.40500.210900 | Post Pour | 7d | 2026-04-13 | 2026-04-20 | 1409FS+15d |  | 7 Days Work | 9170634 |
| 1431 | 36900.37000.37100.37800.38500.40500.211000 | MEP Clearance -1 | 5d | 2026-04-20 | 2026-04-25 | 1430 |  | 7 Days Work | 9170644 |
| 1432 | 36900.37000.37100.37800.38500.40500.211100 | Benchmark | 1d | 2026-04-25 | 2026-04-26 | 1431 |  | 7 Days Work | 9170654 |
| 1433 | 36900.37000.37100.37800.38500.40500.211200 | Temporary Railing | 3d | 2026-04-26 | 2026-04-29 | 1432 |  | 7 Days Work | 9170664 |
| 1434 | 36900.37000.37100.37800.38500.40500.211300 | Blockwork | 10d | 2026-04-29 | 2026-05-09 | 1433 |  | 7 Days Work | 9170674 |
| 1435 | 36900.37000.37100.37800.38500.40500.211400 | MEP Clearance -2 | 10d | 2026-05-09 | 2026-05-19 | 1434 |  | 7 Days Work | 9170684 |
| 1436 | 36900.37000.37100.37800.38500.40500.211500 | Gypsum Plaster | 14d | 2026-05-19 | 2026-06-02 | 1435 |  | 7 Days Work | 9170694 |
| 1437 | 36900.37000.37100.37800.38500.40500.211600 | Kitchen Platform | 3d | 2026-06-02 | 2026-06-05 | 1436 |  | 7 Days Work | 9170704 |
| 1438 | 36900.37000.37100.37800.38500.40500.211700 | Kitchen dado | 7d | 2026-06-05 | 2026-06-12 | 1437 |  | 7 Days Work | 9170714 |
| 1439 | 36900.37000.37100.37800.38500.40500.211800 | Fire Fighting | 5d | 2026-06-12 | 2026-06-17 | 1438 |  | 7 Days Work | 9170724 |
| 1440 | 36900.37000.37100.37800.38500.40500.211900 | Anticapilary | 5d | 2026-06-17 | 2026-06-22 | 1439 |  | 7 Days Work | 9170734 |
| 1441 | 36900.37000.37100.37800.38500.40500.212000 | Stone Laying | 10d | 2026-07-25 | 2026-08-04 | 1481 |  | 7 Days Work | 9170744 |
| 1442 | 36900.37000.37100.37800.38500.40500.212100 | Tiles Laying | 7d | 2026-07-25 | 2026-08-01 | 1481 |  | 7 Days Work | 9170754 |
| 1443 | 36900.37000.37100.37800.38500.40500.212200 | 1st cutting/polishing of stone flooring | 7d | 2026-08-01 | 2026-08-08 | 1442 |  | 7 Days Work | 9170764 |
| 1444 | 36900.37000.37100.37800.38500.40500.212300 | Tiles/Stone skirting | 5d | 2026-08-08 | 2026-08-13 | 1443 |  | 7 Days Work | 9170774 |
| 1445 | 36900.37000.37100.37800.38500.40500.212400 | Protechtion sheet | 1d | 2026-08-13 | 2026-08-14 | 1444 |  | 7 Days Work | 9170784 |
| 1446 | 36900.37000.37100.37800.38500.40500.212500 | Installation of Temporary Door | 1d | 2026-08-14 | 2026-08-15 | 1445 |  | 7 Days Work | 9170794 |
| 1447 | 36900.37000.37100.37800.38500.40500.212600 | Fixing of window tracks | 5d | 2026-08-15 | 2026-08-20 | 1446 |  | 7 Days Work | 9170804 |
| 1448 | 36900.37000.37100.37800.38500.40500.212700 | Wire Pulling | 7d | 2026-08-20 | 2026-08-27 | 1447 |  | 7 Days Work | 9170814 |
| 1449 | 36900.37000.37100.37800.38500.40500.212800 | Gypsum Remaining | 5d | 2026-08-27 | 2026-09-01 | 1448 |  | 7 Days Work | 9170824 |
| 1450 | 36900.37000.37100.37800.38500.40500.212900 | Fixing of windoow shutter | 5d | 2026-09-01 | 2026-09-06 | 1449 |  | 7 Days Work | 9170834 |
| 1451 | 36900.37000.37100.37800.38500.40500.213000 | Putty Works - walls & ceiling | 15d | 2026-09-06 | 2026-09-21 | 1450 |  | 7 Days Work | 9170844 |
| 1452 | 36900.37000.37100.37800.38500.40500.213100 | False Ceiling- Framing | 10d | 2026-09-21 | 2026-10-01 | 1451 |  | 7 Days Work | 9170854 |
| 1453 | 36900.37000.37100.37800.38500.40500.213200 | Pre Hung Door | 3d | 2026-10-01 | 2026-10-04 | 1452 |  | 7 Days Work | 9170864 |
| 1454 | 36900.37000.37100.37800.38500.40500.213300 | Protechtion sheet | 2d | 2026-10-04 | 2026-10-06 | 1453 |  | 7 Days Work | 9170874 |
| 1455 | 36900.37000.37100.37800.38500.40500.213400 | Skirting near door | 2d | 2026-10-06 | 2026-10-08 | 1454 |  | 7 Days Work | 9170884 |
| 1456 | 36900.37000.37100.37800.38500.40500.213500 | Electrical Switch box fixing | 14d | 2026-10-08 | 2026-10-22 | 1455 |  | 7 Days Work | 9170894 |
| 1457 | 36900.37000.37100.37800.38500.40500.213600 | Fire Fighting painting | 5d | 2026-10-22 | 2026-10-27 | 1456 |  | 7 Days Work | 9170904 |
| 1458 | 36900.37000.37100.37800.38500.40500.213700 | Protection of all flooring, door & window hardware | 5d | 2026-10-27 | 2026-11-01 | 1457 |  | 7 Days Work | 9170914 |
| 1459 | 36900.37000.37100.37800.38500.40500.213800 | 1st coat primer- ceiling 1st & walls | 14d | 2026-11-01 | 2026-11-15 | 1458 |  | 7 Days Work | 9170924 |
| 1460 | 36900.37000.37100.37800.38500.40500.213900 | Wooden Flooring | 5d | 2026-11-15 | 2026-11-20 | 1459 |  | 7 Days Work | 9170934 |
| 1461 | 36900.37000.37100.37800.38500.40500.214000 | Removing of Temporary Railing & installation of Glass Railing | 5d | 2026-11-15 | 2026-11-20 | 1459 |  | 7 Days Work | 9170944 |
| 1462 | 36900.37000.37100.37800.38500.40500.214100 | Tile Grouting | 7d | 2026-11-15 | 2026-11-22 | 1459 |  | 7 Days Work | 9170954 |
| 1463 | 36900.37000.37100.37800.38500.40500.214200 | False Ceiling | 5d | 2026-11-22 | 2026-11-27 | 1462 |  | 7 Days Work | 9170964 |
| 1464 | 36900.37000.37100.37800.38500.40500.214300 | 2nd coat of primer | 10d | 2026-11-27 | 2026-12-07 | 1463 |  | 7 Days Work | 9170974 |
| 1465 | 36900.37000.37100.37800.38500.40500.214400 | Final cutting/polishing of stone flooring | 7d | 2026-12-07 | 2026-12-14 | 1464 |  | 7 Days Work | 9170984 |

| ID | WBS | Task | Duration | Start | Finish | Predecessors | Constraint | Calendar | Unique_Task_ID |
| --- | --- | --- | --- | --- | --- | --- | --- | --- | --- |
| 1466 | 36900.37000.37100.37800.38500.40500.57800 | **Toilet** | 237d | 2026-04-20 | 2026-12-13 |  | start no earlier than 2026-04-20 | 7 Days Work | 9170124 |
| 1467 | 36900.37000.37100.37800.38500.40500.57800.779400 | Toilet_MEP Clearance -1 | 7d | 2026-04-20 | 2026-04-27 | 1430 |  | 7 Days Work | 9179184 |
| 1468 | 36900.37000.37100.37800.38500.40500.57800.779500 | Toilet_Level Marking | 1d | 2026-04-27 | 2026-04-28 | 1467 |  | 7 Days Work | 9179194 |
| 1469 | 36900.37000.37100.37800.38500.40500.57800.779600 | Toilet_Chasing work for Electrical conduit & concealed plumbing | 5d | 2026-04-28 | 2026-05-03 | 1468 |  | 7 Days Work | 9179204 |
| 1470 | 36900.37000.37100.37800.38500.40500.57800.779700 | Toilet_Plumbing work 1st fix | 5d | 2026-05-03 | 2026-05-08 | 1469 |  | 7 Days Work | 9179214 |
| 1471 | 36900.37000.37100.37800.38500.40500.57800.779800 | Toilet_Sleeve/Bore Packing | 5d | 2026-05-08 | 2026-05-13 | 1470 |  | 7 Days Work | 9179224 |
| 1472 | 36900.37000.37100.37800.38500.40500.57800.779900 | Toilet_Waterproofing | 10d | 2026-05-13 | 2026-05-23 | 1471 |  | 7 Days Work | 9179234 |
| 1473 | 36900.37000.37100.37800.38500.40500.57800.780000 | Toilet_Screed | 1d | 2026-05-23 | 2026-05-24 | 1472 |  | 7 Days Work | 9179244 |
| 1474 | 36900.37000.37100.37800.38500.40500.57800.780100 | Toilet_Plumbing 2nd fix | 5d | 2026-05-24 | 2026-05-29 | 1473 |  | 7 Days Work | 9179254 |
| 1475 | 36900.37000.37100.37800.38500.40500.57800.780200 | Toilet_Ledge wall | 5d | 2026-05-29 | 2026-06-03 | 1474 |  | 7 Days Work | 9179264 |
| 1476 | 36900.37000.37100.37800.38500.40500.57800.780300 | Toilet_Cement Plaster | 5d | 2026-06-03 | 2026-06-08 | 1475 |  | 7 Days Work | 9179274 |
| 1477 | 36900.37000.37100.37800.38500.40500.57800.780400 | Toilet_Door Frame | 1d | 2026-06-08 | 2026-06-09 | 1476 |  | 7 Days Work | 9179284 |
| 1478 | 36900.37000.37100.37800.38500.40500.57800.780500 | Toilet_Wash basin & Couter | 3d | 2026-06-09 | 2026-06-12 | 1477 |  | 7 Days Work | 9179294 |
| 1479 | 36900.37000.37100.37800.38500.40500.57800.780600 | Toilet_Wall dado | 20d | 2026-06-12 | 2026-07-02 | 1478 |  | 7 Days Work | 9179304 |
| 1480 | 36900.37000.37100.37800.38500.40500.57800.780700 | Toilet_Granite Work-Ledge wall top | 3d | 2026-07-02 | 2026-07-05 | 1479 |  | 7 Days Work | 9179314 |
| 1481 | 36900.37000.37100.37800.38500.40500.57800.780800 | Toilet_Floor Tilling work | 20d | 2026-07-05 | 2026-07-25 | 1480 |  | 7 Days Work | 9179324 |
| 1482 | 36900.37000.37100.37800.38500.40500.57800.780900 | Toilet_1st row of dado | 5d | 2026-07-25 | 2026-07-30 | 1481 |  | 7 Days Work | 9179334 |
| 1483 | 36900.37000.37100.37800.38500.40500.57800.781000 | Toilet_Window Fixing | 14d | 2026-07-30 | 2026-08-13 | 1482 |  | 7 Days Work | 9179344 |
| 1484 | 36900.37000.37100.37800.38500.40500.57800.781100 | Toilet_Services above False ceiling | 21d | 2026-08-13 | 2026-09-03 | 1483 |  | 7 Days Work | 9179354 |
| 1485 | 36900.37000.37100.37800.38500.40500.57800.781200 | Toilet_False Ceiling framing | 12d | 2026-09-03 | 2026-09-15 | 1484 |  | 7 Days Work | 9179364 |
| 1486 | 36900.37000.37100.37800.38500.40500.57800.781300 | Toilet_Door Frame | 5d | 2026-09-15 | 2026-09-20 | 1485 |  | 7 Days Work | 9179374 |
| 1487 | 36900.37000.37100.37800.38500.40500.57800.781400 | Toilet_Epoxy Tile Grouting | 7d | 2026-11-15 | 2026-11-22 | 1462SS |  | 7 Days Work | 9179384 |
| 1488 | 36900.37000.37100.37800.38500.40500.57800.781500 | Toilet_False ceiling board fixing, CP Sanitary Fixture, Electric Fixture | 21d | 2026-11-22 | 2026-12-13 | 1487 |  | 7 Days Work | 9179394 |
| 1489 | 36900.37000.37100.37800.38500.40600 | **2nd Habitable/4th Floor** | 245d | 2026-04-28 | 2026-12-29 |  | start no earlier than 2026-04-28 | 7 Days Work | 9169934 |
| 1490 | 36900.37000.37100.37800.38500.40600.214500 | Post Pour | 7d | 2026-04-28 | 2026-05-05 | 1410FS+15d |  | 7 Days Work | 9170994 |
| 1491 | 36900.37000.37100.37800.38500.40600.214600 | MEP Clearance -1 | 5d | 2026-05-05 | 2026-05-10 | 1490 |  | 7 Days Work | 9171004 |
| 1492 | 36900.37000.37100.37800.38500.40600.214700 | Benchmark | 1d | 2026-05-10 | 2026-05-11 | 1491 |  | 7 Days Work | 9171014 |
| 1493 | 36900.37000.37100.37800.38500.40600.214800 | Temporary Railing | 3d | 2026-05-11 | 2026-05-14 | 1492 |  | 7 Days Work | 9171024 |
| 1494 | 36900.37000.37100.37800.38500.40600.214900 | Blockwork | 10d | 2026-05-14 | 2026-05-24 | 1493 |  | 7 Days Work | 9171034 |
| 1495 | 36900.37000.37100.37800.38500.40600.215000 | MEP Clearance -2 | 10d | 2026-05-24 | 2026-06-03 | 1494 |  | 7 Days Work | 9171044 |
| 1496 | 36900.37000.37100.37800.38500.40600.215100 | Gypsum Plaster | 14d | 2026-06-03 | 2026-06-17 | 1495 |  | 7 Days Work | 9171054 |
| 1497 | 36900.37000.37100.37800.38500.40600.215200 | Kitchen Platform | 3d | 2026-06-17 | 2026-06-20 | 1496 |  | 7 Days Work | 9171064 |
| 1498 | 36900.37000.37100.37800.38500.40600.215300 | Kitchen dado | 7d | 2026-06-20 | 2026-06-27 | 1497 |  | 7 Days Work | 9171074 |
| 1499 | 36900.37000.37100.37800.38500.40600.215400 | Fire Fighting | 5d | 2026-06-27 | 2026-07-02 | 1498 |  | 7 Days Work | 9171084 |
| 1500 | 36900.37000.37100.37800.38500.40600.215500 | Anticapilary | 5d | 2026-07-02 | 2026-07-07 | 1499 |  | 7 Days Work | 9171094 |
| 1501 | 36900.37000.37100.37800.38500.40600.215600 | Stone Laying | 10d | 2026-08-09 | 2026-08-19 | 1541 |  | 7 Days Work | 9171104 |
| 1502 | 36900.37000.37100.37800.38500.40600.215700 | Tiles Laying | 7d | 2026-08-09 | 2026-08-16 | 1541 |  | 7 Days Work | 9171114 |
| 1503 | 36900.37000.37100.37800.38500.40600.215800 | 1st cutting/polishing of stone flooring | 7d | 2026-08-16 | 2026-08-23 | 1502 |  | 7 Days Work | 9171124 |
| 1504 | 36900.37000.37100.37800.38500.40600.215900 | Tiles/Stone skirting | 5d | 2026-08-23 | 2026-08-28 | 1503 |  | 7 Days Work | 9171134 |
| 1505 | 36900.37000.37100.37800.38500.40600.216000 | Protechtion sheet | 1d | 2026-08-28 | 2026-08-29 | 1504 |  | 7 Days Work | 9171144 |
| 1506 | 36900.37000.37100.37800.38500.40600.216100 | Installation of Temporary Door | 1d | 2026-08-29 | 2026-08-30 | 1505 |  | 7 Days Work | 9171154 |
| 1507 | 36900.37000.37100.37800.38500.40600.216200 | Fixing of window tracks | 5d | 2026-08-30 | 2026-09-04 | 1506 |  | 7 Days Work | 9171164 |
| 1508 | 36900.37000.37100.37800.38500.40600.216300 | Wire Pulling | 7d | 2026-09-04 | 2026-09-11 | 1507 |  | 7 Days Work | 9171174 |
| 1509 | 36900.37000.37100.37800.38500.40600.216400 | Gypsum Remaining | 5d | 2026-09-11 | 2026-09-16 | 1508 |  | 7 Days Work | 9171184 |
| 1510 | 36900.37000.37100.37800.38500.40600.216500 | Fixing of windoow shutter | 5d | 2026-09-16 | 2026-09-21 | 1509 |  | 7 Days Work | 9171194 |
| 1511 | 36900.37000.37100.37800.38500.40600.216600 | Putty Works - walls & ceiling | 15d | 2026-09-21 | 2026-10-06 | 1510 |  | 7 Days Work | 9171204 |
| 1512 | 36900.37000.37100.37800.38500.40600.216700 | False Ceiling- Framing | 10d | 2026-10-06 | 2026-10-16 | 1511 |  | 7 Days Work | 9171214 |
| 1513 | 36900.37000.37100.37800.38500.40600.216800 | Pre Hung Door | 3d | 2026-10-16 | 2026-10-19 | 1512 |  | 7 Days Work | 9171224 |
| 1514 | 36900.37000.37100.37800.38500.40600.216900 | Protechtion sheet | 2d | 2026-10-19 | 2026-10-21 | 1513 |  | 7 Days Work | 9171234 |
| 1515 | 36900.37000.37100.37800.38500.40600.217000 | Skirting near door | 2d | 2026-10-21 | 2026-10-23 | 1514 |  | 7 Days Work | 9171244 |
| 1516 | 36900.37000.37100.37800.38500.40600.217100 | Electrical Switch box fixing | 14d | 2026-10-23 | 2026-11-06 | 1515 |  | 7 Days Work | 9171254 |
| 1517 | 36900.37000.37100.37800.38500.40600.217200 | Fire Fighting painting | 5d | 2026-11-06 | 2026-11-11 | 1516 |  | 7 Days Work | 9171264 |
| 1518 | 36900.37000.37100.37800.38500.40600.217300 | Protection of all flooring, door & window hardware | 5d | 2026-11-11 | 2026-11-16 | 1517 |  | 7 Days Work | 9171274 |
| 1519 | 36900.37000.37100.37800.38500.40600.217400 | 1st coat primer- ceiling 1st & walls | 14d | 2026-11-16 | 2026-11-30 | 1518 |  | 7 Days Work | 9171284 |
| 1520 | 36900.37000.37100.37800.38500.40600.217500 | Wooden Flooring | 5d | 2026-11-30 | 2026-12-05 | 1519 |  | 7 Days Work | 9171294 |
| 1521 | 36900.37000.37100.37800.38500.40600.217600 | Removing of Temporary Railing & installation of Glass Railing | 5d | 2026-11-30 | 2026-12-05 | 1519 |  | 7 Days Work | 9171304 |
| 1522 | 36900.37000.37100.37800.38500.40600.217700 | Tile Grouting | 7d | 2026-11-30 | 2026-12-07 | 1519 |  | 7 Days Work | 9171314 |
| 1523 | 36900.37000.37100.37800.38500.40600.217800 | False Ceiling | 5d | 2026-12-07 | 2026-12-12 | 1522 |  | 7 Days Work | 9171324 |
| 1524 | 36900.37000.37100.37800.38500.40600.217900 | 2nd coat of primer | 10d | 2026-12-12 | 2026-12-22 | 1523 |  | 7 Days Work | 9171334 |
| 1525 | 36900.37000.37100.37800.38500.40600.218000 | Final cutting/polishing of stone flooring | 7d | 2026-12-22 | 2026-12-29 | 1524 |  | 7 Days Work | 9171344 |

| ID | WBS | Task | Duration | Start | Finish | Predecessors | Constraint | Calendar | Unique_Task_ID |
| --- | --- | --- | --- | --- | --- | --- | --- | --- | --- |
| 1526 | 36900.37000.37100.37800.38500.40600.57900 | **Toilet** | 237d | 2026-05-05 | 2026-12-28 |  | start no earlier than 2026-05-05 | 7 Days Work | 9170134 |
| 1527 | 36900.37000.37100.37800.38500.40600.57900.781600 | Toilet_MEP Clearance -1 | 7d | 2026-05-05 | 2026-05-12 | 1490 |  | 7 Days Work | 9179404 |
| 1528 | 36900.37000.37100.37800.38500.40600.57900.781700 | Toilet_Level Marking | 1d | 2026-05-12 | 2026-05-13 | 1527 |  | 7 Days Work | 9179414 |
| 1529 | 36900.37000.37100.37800.38500.40600.57900.781800 | Toilet_Chasing work for Electrical conduit & concealed plumbing | 5d | 2026-05-13 | 2026-05-18 | 1528 |  | 7 Days Work | 9179424 |
| 1530 | 36900.37000.37100.37800.38500.40600.57900.781900 | Toilet_Plumbing work 1st fix | 5d | 2026-05-18 | 2026-05-23 | 1529 |  | 7 Days Work | 9179434 |
| 1531 | 36900.37000.37100.37800.38500.40600.57900.782000 | Toilet_Sleeve/Bore Packing | 5d | 2026-05-23 | 2026-05-28 | 1530 |  | 7 Days Work | 9179444 |
| 1532 | 36900.37000.37100.37800.38500.40600.57900.782100 | Toilet_Waterproofing | 10d | 2026-05-28 | 2026-06-07 | 1531 |  | 7 Days Work | 9179454 |
| 1533 | 36900.37000.37100.37800.38500.40600.57900.782200 | Toilet_Screed | 1d | 2026-06-07 | 2026-06-08 | 1532 |  | 7 Days Work | 9179464 |
| 1534 | 36900.37000.37100.37800.38500.40600.57900.782300 | Toilet_Plumbing 2nd fix | 5d | 2026-06-08 | 2026-06-13 | 1533 |  | 7 Days Work | 9179474 |
| 1535 | 36900.37000.37100.37800.38500.40600.57900.782400 | Toilet_Ledge wall | 5d | 2026-06-13 | 2026-06-18 | 1534 |  | 7 Days Work | 9179484 |
| 1536 | 36900.37000.37100.37800.38500.40600.57900.782500 | Toilet_Cement Plaster | 5d | 2026-06-18 | 2026-06-23 | 1535 |  | 7 Days Work | 9179494 |
| 1537 | 36900.37000.37100.37800.38500.40600.57900.782600 | Toilet_Door Frame | 1d | 2026-06-23 | 2026-06-24 | 1536 |  | 7 Days Work | 9179504 |
| 1538 | 36900.37000.37100.37800.38500.40600.57900.782700 | Toilet_Wash basin & Couter | 3d | 2026-06-24 | 2026-06-27 | 1537 |  | 7 Days Work | 9179514 |
| 1539 | 36900.37000.37100.37800.38500.40600.57900.782800 | Toilet_Wall dado | 20d | 2026-06-27 | 2026-07-17 | 1538 |  | 7 Days Work | 9179524 |
| 1540 | 36900.37000.37100.37800.38500.40600.57900.782900 | Toilet_Granite Work-Ledge wall top | 3d | 2026-07-17 | 2026-07-20 | 1539 |  | 7 Days Work | 9179534 |
| 1541 | 36900.37000.37100.37800.38500.40600.57900.783000 | Toilet_Floor Tilling work | 20d | 2026-07-20 | 2026-08-09 | 1540 |  | 7 Days Work | 9179544 |
| 1542 | 36900.37000.37100.37800.38500.40600.57900.783100 | Toilet_1st row of dado | 5d | 2026-08-09 | 2026-08-14 | 1541 |  | 7 Days Work | 9179554 |
| 1543 | 36900.37000.37100.37800.38500.40600.57900.783200 | Toilet_Window Fixing | 14d | 2026-08-14 | 2026-08-28 | 1542 |  | 7 Days Work | 9179564 |
| 1544 | 36900.37000.37100.37800.38500.40600.57900.783300 | Toilet_Services above False ceiling | 21d | 2026-08-28 | 2026-09-18 | 1543 |  | 7 Days Work | 9179574 |
| 1545 | 36900.37000.37100.37800.38500.40600.57900.783400 | Toilet_False Ceiling framing | 12d | 2026-09-18 | 2026-09-30 | 1544 |  | 7 Days Work | 9179584 |
| 1546 | 36900.37000.37100.37800.38500.40600.57900.783500 | Toilet_Door Frame | 5d | 2026-09-30 | 2026-10-05 | 1545 |  | 7 Days Work | 9179594 |
| 1547 | 36900.37000.37100.37800.38500.40600.57900.783600 | Toilet_Epoxy Tile Grouting | 7d | 2026-11-30 | 2026-12-07 | 1522SS |  | 7 Days Work | 9179604 |
| 1548 | 36900.37000.37100.37800.38500.40600.57900.783700 | Toilet_False ceiling board fixing, CP Sanitary Fixture, Electric Fixture | 21d | 2026-12-07 | 2026-12-28 | 1547 |  | 7 Days Work | 9179614 |
| 1549 | 36900.37000.37100.37800.38500.40700 | **3rd Habitable/5th Floor** | 245d | 2026-05-07 | 2027-01-07 |  | start no earlier than 2026-05-07 | 7 Days Work | 9169944 |
| 1550 | 36900.37000.37100.37800.38500.40700.218100 | Post Pour | 7d | 2026-05-07 | 2026-05-14 | 1411FS+15d |  | 7 Days Work | 9171354 |
| 1551 | 36900.37000.37100.37800.38500.40700.218200 | MEP Clearance -1 | 5d | 2026-05-14 | 2026-05-19 | 1550 |  | 7 Days Work | 9171364 |
| 1552 | 36900.37000.37100.37800.38500.40700.218300 | Benchmark | 1d | 2026-05-19 | 2026-05-20 | 1551 |  | 7 Days Work | 9171374 |
| 1553 | 36900.37000.37100.37800.38500.40700.218400 | Temporary Railing | 3d | 2026-05-20 | 2026-05-23 | 1552 |  | 7 Days Work | 9171384 |
| 1554 | 36900.37000.37100.37800.38500.40700.218500 | Blockwork | 10d | 2026-05-23 | 2026-06-02 | 1553 |  | 7 Days Work | 9171394 |
| 1555 | 36900.37000.37100.37800.38500.40700.218600 | MEP Clearance -2 | 10d | 2026-06-02 | 2026-06-12 | 1554 |  | 7 Days Work | 9171404 |
| 1556 | 36900.37000.37100.37800.38500.40700.218700 | Gypsum Plaster | 14d | 2026-06-12 | 2026-06-26 | 1555 |  | 7 Days Work | 9171414 |
| 1557 | 36900.37000.37100.37800.38500.40700.218800 | Kitchen Platform | 3d | 2026-06-26 | 2026-06-29 | 1556 |  | 7 Days Work | 9171424 |
| 1558 | 36900.37000.37100.37800.38500.40700.218900 | Kitchen dado | 7d | 2026-06-29 | 2026-07-06 | 1557 |  | 7 Days Work | 9171434 |
| 1559 | 36900.37000.37100.37800.38500.40700.219000 | Fire Fighting | 5d | 2026-07-06 | 2026-07-11 | 1558 |  | 7 Days Work | 9171444 |
| 1560 | 36900.37000.37100.37800.38500.40700.219100 | Anticapilary | 5d | 2026-07-11 | 2026-07-16 | 1559 |  | 7 Days Work | 9171454 |
| 1561 | 36900.37000.37100.37800.38500.40700.219200 | Stone Laying | 10d | 2026-08-18 | 2026-08-28 | 1601 |  | 7 Days Work | 9171464 |
| 1562 | 36900.37000.37100.37800.38500.40700.219300 | Tiles Laying | 7d | 2026-08-18 | 2026-08-25 | 1601 |  | 7 Days Work | 9171474 |
| 1563 | 36900.37000.37100.37800.38500.40700.219400 | 1st cutting/polishing of stone flooring | 7d | 2026-08-25 | 2026-09-01 | 1562 |  | 7 Days Work | 9171484 |
| 1564 | 36900.37000.37100.37800.38500.40700.219500 | Tiles/Stone skirting | 5d | 2026-09-01 | 2026-09-06 | 1563 |  | 7 Days Work | 9171494 |
| 1565 | 36900.37000.37100.37800.38500.40700.219600 | Protechtion sheet | 1d | 2026-09-06 | 2026-09-07 | 1564 |  | 7 Days Work | 9171504 |
| 1566 | 36900.37000.37100.37800.38500.40700.219700 | Installation of Temporary Door | 1d | 2026-09-07 | 2026-09-08 | 1565 |  | 7 Days Work | 9171514 |
| 1567 | 36900.37000.37100.37800.38500.40700.219800 | Fixing of window tracks | 5d | 2026-09-08 | 2026-09-13 | 1566 |  | 7 Days Work | 9171524 |
| 1568 | 36900.37000.37100.37800.38500.40700.219900 | Wire Pulling | 7d | 2026-09-13 | 2026-09-20 | 1567 |  | 7 Days Work | 9171534 |
| 1569 | 36900.37000.37100.37800.38500.40700.220000 | Gypsum Remaining | 5d | 2026-09-20 | 2026-09-25 | 1568 |  | 7 Days Work | 9171544 |
| 1570 | 36900.37000.37100.37800.38500.40700.220100 | Fixing of windoow shutter | 5d | 2026-09-25 | 2026-09-30 | 1569 |  | 7 Days Work | 9171554 |
| 1571 | 36900.37000.37100.37800.38500.40700.220200 | Putty Works - walls & ceiling | 15d | 2026-09-30 | 2026-10-15 | 1570 |  | 7 Days Work | 9171564 |
| 1572 | 36900.37000.37100.37800.38500.40700.220300 | False Ceiling- Framing | 10d | 2026-10-15 | 2026-10-25 | 1571 |  | 7 Days Work | 9171574 |
| 1573 | 36900.37000.37100.37800.38500.40700.220400 | Pre Hung Door | 3d | 2026-10-25 | 2026-10-28 | 1572 |  | 7 Days Work | 9171584 |
| 1574 | 36900.37000.37100.37800.38500.40700.220500 | Protechtion sheet | 2d | 2026-10-28 | 2026-10-30 | 1573 |  | 7 Days Work | 9171594 |
| 1575 | 36900.37000.37100.37800.38500.40700.220600 | Skirting near door | 2d | 2026-10-30 | 2026-11-01 | 1574 |  | 7 Days Work | 9171604 |
| 1576 | 36900.37000.37100.37800.38500.40700.220700 | Electrical Switch box fixing | 14d | 2026-11-01 | 2026-11-15 | 1575 |  | 7 Days Work | 9171614 |
| 1577 | 36900.37000.37100.37800.38500.40700.220800 | Fire Fighting painting | 5d | 2026-11-15 | 2026-11-20 | 1576 |  | 7 Days Work | 9171624 |
| 1578 | 36900.37000.37100.37800.38500.40700.220900 | Protection of all flooring, door & window hardware | 5d | 2026-11-20 | 2026-11-25 | 1577 |  | 7 Days Work | 9171634 |
| 1579 | 36900.37000.37100.37800.38500.40700.221000 | 1st coat primer- ceiling 1st & walls | 14d | 2026-11-25 | 2026-12-09 | 1578 |  | 7 Days Work | 9171644 |
| 1580 | 36900.37000.37100.37800.38500.40700.221100 | Wooden Flooring | 5d | 2026-12-09 | 2026-12-14 | 1579 |  | 7 Days Work | 9171654 |
| 1581 | 36900.37000.37100.37800.38500.40700.221200 | Removing of Temporary Railing & installation of Glass Railing | 5d | 2026-12-09 | 2026-12-14 | 1579 |  | 7 Days Work | 9171664 |
| 1582 | 36900.37000.37100.37800.38500.40700.221300 | Tile Grouting | 7d | 2026-12-09 | 2026-12-16 | 1579 |  | 7 Days Work | 9171674 |
| 1583 | 36900.37000.37100.37800.38500.40700.221400 | False Ceiling | 5d | 2026-12-16 | 2026-12-21 | 1582 |  | 7 Days Work | 9171684 |
| 1584 | 36900.37000.37100.37800.38500.40700.221500 | 2nd coat of primer | 10d | 2026-12-21 | 2026-12-31 | 1583 |  | 7 Days Work | 9171694 |
| 1585 | 36900.37000.37100.37800.38500.40700.221600 | Final cutting/polishing of stone flooring | 7d | 2026-12-31 | 2027-01-07 | 1584 |  | 7 Days Work | 9171704 |

| ID | WBS | Task | Duration | Start | Finish | Predecessors | Constraint | Calendar | Unique_Task_ID |
| --- | --- | --- | --- | --- | --- | --- | --- | --- | --- |
| 1586 | 36900.37000.37100.37800.38500.40700.58000 | **Toilet** | 237d | 2026-05-14 | 2027-01-06 |  | start no earlier than 2026-05-14 | 7 Days Work | 9170144 |
| 1587 | 36900.37000.37100.37800.38500.40700.58000.783800 | Toilet_MEP Clearance -1 | 7d | 2026-05-14 | 2026-05-21 | 1550 |  | 7 Days Work | 9179624 |
| 1588 | 36900.37000.37100.37800.38500.40700.58000.783900 | Toilet_Level Marking | 1d | 2026-05-21 | 2026-05-22 | 1587 |  | 7 Days Work | 9179634 |
| 1589 | 36900.37000.37100.37800.38500.40700.58000.784000 | Toilet_Chasing work for Electrical conduit & concealed plumbing | 5d | 2026-05-22 | 2026-05-27 | 1588 |  | 7 Days Work | 9179644 |
| 1590 | 36900.37000.37100.37800.38500.40700.58000.784100 | Toilet_Plumbing work 1st fix | 5d | 2026-05-27 | 2026-06-01 | 1589 |  | 7 Days Work | 9179654 |
| 1591 | 36900.37000.37100.37800.38500.40700.58000.784200 | Toilet_Sleeve/Bore Packing | 5d | 2026-06-01 | 2026-06-06 | 1590 |  | 7 Days Work | 9179664 |
| 1592 | 36900.37000.37100.37800.38500.40700.58000.784300 | Toilet_Waterproofing | 10d | 2026-06-06 | 2026-06-16 | 1591 |  | 7 Days Work | 9179674 |
| 1593 | 36900.37000.37100.37800.38500.40700.58000.784400 | Toilet_Screed | 1d | 2026-06-16 | 2026-06-17 | 1592 |  | 7 Days Work | 9179684 |
| 1594 | 36900.37000.37100.37800.38500.40700.58000.784500 | Toilet_Plumbing 2nd fix | 5d | 2026-06-17 | 2026-06-22 | 1593 |  | 7 Days Work | 9179694 |
| 1595 | 36900.37000.37100.37800.38500.40700.58000.784600 | Toilet_Ledge wall | 5d | 2026-06-22 | 2026-06-27 | 1594 |  | 7 Days Work | 9179704 |
| 1596 | 36900.37000.37100.37800.38500.40700.58000.784700 | Toilet_Cement Plaster | 5d | 2026-06-27 | 2026-07-02 | 1595 |  | 7 Days Work | 9179714 |
| 1597 | 36900.37000.37100.37800.38500.40700.58000.784800 | Toilet_Door Frame | 1d | 2026-07-02 | 2026-07-03 | 1596 |  | 7 Days Work | 9179724 |
| 1598 | 36900.37000.37100.37800.38500.40700.58000.784900 | Toilet_Wash basin & Couter | 3d | 2026-07-03 | 2026-07-06 | 1597 |  | 7 Days Work | 9179734 |
| 1599 | 36900.37000.37100.37800.38500.40700.58000.785000 | Toilet_Wall dado | 20d | 2026-07-06 | 2026-07-26 | 1598 |  | 7 Days Work | 9179744 |
| 1600 | 36900.37000.37100.37800.38500.40700.58000.785100 | Toilet_Granite Work-Ledge wall top | 3d | 2026-07-26 | 2026-07-29 | 1599 |  | 7 Days Work | 9179754 |
| 1601 | 36900.37000.37100.37800.38500.40700.58000.785200 | Toilet_Floor Tilling work | 20d | 2026-07-29 | 2026-08-18 | 1600 |  | 7 Days Work | 9179764 |
| 1602 | 36900.37000.37100.37800.38500.40700.58000.785300 | Toilet_1st row of dado | 5d | 2026-08-18 | 2026-08-23 | 1601 |  | 7 Days Work | 9179774 |
| 1603 | 36900.37000.37100.37800.38500.40700.58000.785400 | Toilet_Window Fixing | 14d | 2026-08-23 | 2026-09-06 | 1602 |  | 7 Days Work | 9179784 |
| 1604 | 36900.37000.37100.37800.38500.40700.58000.785500 | Toilet_Services above False ceiling | 21d | 2026-09-06 | 2026-09-27 | 1603 |  | 7 Days Work | 9179794 |
| 1605 | 36900.37000.37100.37800.38500.40700.58000.785600 | Toilet_False Ceiling framing | 12d | 2026-09-27 | 2026-10-09 | 1604 |  | 7 Days Work | 9179804 |
| 1606 | 36900.37000.37100.37800.38500.40700.58000.785700 | Toilet_Door Frame | 5d | 2026-10-09 | 2026-10-14 | 1605 |  | 7 Days Work | 9179814 |
| 1607 | 36900.37000.37100.37800.38500.40700.58000.785800 | Toilet_Epoxy Tile Grouting | 7d | 2026-12-09 | 2026-12-16 | 1582SS |  | 7 Days Work | 9179824 |
| 1608 | 36900.37000.37100.37800.38500.40700.58000.785900 | Toilet_False ceiling board fixing, CP Sanitary Fixture, Electric Fixture | 21d | 2026-12-16 | 2027-01-06 | 1607 |  | 7 Days Work | 9179834 |
| 1609 | 36900.37000.37100.37800.38500.40800 | **4th Habitable/6th Floor** | 245d | 2026-05-19 | 2027-01-19 |  | start no earlier than 2026-05-19 | 7 Days Work | 9169954 |
| 1610 | 36900.37000.37100.37800.38500.40800.221700 | Post Pour | 7d | 2026-05-19 | 2026-05-26 | 1412FS+15d |  | 7 Days Work | 9171714 |
| 1611 | 36900.37000.37100.37800.38500.40800.221800 | MEP Clearance -1 | 5d | 2026-05-26 | 2026-05-31 | 1610 |  | 7 Days Work | 9171724 |
| 1612 | 36900.37000.37100.37800.38500.40800.221900 | Benchmark | 1d | 2026-05-31 | 2026-06-01 | 1611 |  | 7 Days Work | 9171734 |
| 1613 | 36900.37000.37100.37800.38500.40800.222000 | Temporary Railing | 3d | 2026-06-01 | 2026-06-04 | 1612 |  | 7 Days Work | 9171744 |
| 1614 | 36900.37000.37100.37800.38500.40800.222100 | Blockwork | 10d | 2026-06-04 | 2026-06-14 | 1613 |  | 7 Days Work | 9171754 |
| 1615 | 36900.37000.37100.37800.38500.40800.222200 | MEP Clearance -2 | 10d | 2026-06-14 | 2026-06-24 | 1614 |  | 7 Days Work | 9171764 |
| 1616 | 36900.37000.37100.37800.38500.40800.222300 | Gypsum Plaster | 14d | 2026-06-24 | 2026-07-08 | 1615 |  | 7 Days Work | 9171774 |
| 1617 | 36900.37000.37100.37800.38500.40800.222400 | Kitchen Platform | 3d | 2026-07-08 | 2026-07-11 | 1616 |  | 7 Days Work | 9171784 |
| 1618 | 36900.37000.37100.37800.38500.40800.222500 | Kitchen dado | 7d | 2026-07-11 | 2026-07-18 | 1617 |  | 7 Days Work | 9171794 |
| 1619 | 36900.37000.37100.37800.38500.40800.222600 | Fire Fighting | 5d | 2026-07-18 | 2026-07-23 | 1618 |  | 7 Days Work | 9171804 |
| 1620 | 36900.37000.37100.37800.38500.40800.222700 | Anticapilary | 5d | 2026-07-23 | 2026-07-28 | 1619 |  | 7 Days Work | 9171814 |
| 1621 | 36900.37000.37100.37800.38500.40800.222800 | Stone Laying | 10d | 2026-08-30 | 2026-09-09 | 1661 |  | 7 Days Work | 9171824 |
| 1622 | 36900.37000.37100.37800.38500.40800.222900 | Tiles Laying | 7d | 2026-08-30 | 2026-09-06 | 1661 |  | 7 Days Work | 9171834 |
| 1623 | 36900.37000.37100.37800.38500.40800.223000 | 1st cutting/polishing of stone flooring | 7d | 2026-09-06 | 2026-09-13 | 1622 |  | 7 Days Work | 9171844 |
| 1624 | 36900.37000.37100.37800.38500.40800.223100 | Tiles/Stone skirting | 5d | 2026-09-13 | 2026-09-18 | 1623 |  | 7 Days Work | 9171854 |
| 1625 | 36900.37000.37100.37800.38500.40800.223200 | Protechtion sheet | 1d | 2026-09-18 | 2026-09-19 | 1624 |  | 7 Days Work | 9171864 |
| 1626 | 36900.37000.37100.37800.38500.40800.223300 | Installation of Temporary Door | 1d | 2026-09-19 | 2026-09-20 | 1625 |  | 7 Days Work | 9171874 |
| 1627 | 36900.37000.37100.37800.38500.40800.223400 | Fixing of window tracks | 5d | 2026-09-20 | 2026-09-25 | 1626 |  | 7 Days Work | 9171884 |
| 1628 | 36900.37000.37100.37800.38500.40800.223500 | Wire Pulling | 7d | 2026-09-25 | 2026-10-02 | 1627 |  | 7 Days Work | 9171894 |
| 1629 | 36900.37000.37100.37800.38500.40800.223600 | Gypsum Remaining | 5d | 2026-10-02 | 2026-10-07 | 1628 |  | 7 Days Work | 9171904 |
| 1630 | 36900.37000.37100.37800.38500.40800.223700 | Fixing of windoow shutter | 5d | 2026-10-07 | 2026-10-12 | 1629 |  | 7 Days Work | 9171914 |
| 1631 | 36900.37000.37100.37800.38500.40800.223800 | Putty Works - walls & ceiling | 15d | 2026-10-12 | 2026-10-27 | 1630 |  | 7 Days Work | 9171924 |
| 1632 | 36900.37000.37100.37800.38500.40800.223900 | False Ceiling- Framing | 10d | 2026-10-27 | 2026-11-06 | 1631 |  | 7 Days Work | 9171934 |
| 1633 | 36900.37000.37100.37800.38500.40800.224000 | Pre Hung Door | 3d | 2026-11-06 | 2026-11-09 | 1632 |  | 7 Days Work | 9171944 |
| 1634 | 36900.37000.37100.37800.38500.40800.224100 | Protechtion sheet | 2d | 2026-11-09 | 2026-11-11 | 1633 |  | 7 Days Work | 9171954 |
| 1635 | 36900.37000.37100.37800.38500.40800.224200 | Skirting near door | 2d | 2026-11-11 | 2026-11-13 | 1634 |  | 7 Days Work | 9171964 |
| 1636 | 36900.37000.37100.37800.38500.40800.224300 | Electrical Switch box fixing | 14d | 2026-11-13 | 2026-11-27 | 1635 |  | 7 Days Work | 9171974 |
| 1637 | 36900.37000.37100.37800.38500.40800.224400 | Fire Fighting painting | 5d | 2026-11-27 | 2026-12-02 | 1636 |  | 7 Days Work | 9171984 |
| 1638 | 36900.37000.37100.37800.38500.40800.224500 | Protection of all flooring, door & window hardware | 5d | 2026-12-02 | 2026-12-07 | 1637 |  | 7 Days Work | 9171994 |
| 1639 | 36900.37000.37100.37800.38500.40800.224600 | 1st coat primer- ceiling 1st & walls | 14d | 2026-12-07 | 2026-12-21 | 1638 |  | 7 Days Work | 9172004 |
| 1640 | 36900.37000.37100.37800.38500.40800.224700 | Wooden Flooring | 5d | 2026-12-21 | 2026-12-26 | 1639 |  | 7 Days Work | 9172014 |
| 1641 | 36900.37000.37100.37800.38500.40800.224800 | Removing of Temporary Railing & installation of Glass Railing | 5d | 2026-12-21 | 2026-12-26 | 1639 |  | 7 Days Work | 9172024 |
| 1642 | 36900.37000.37100.37800.38500.40800.224900 | Tile Grouting | 7d | 2026-12-21 | 2026-12-28 | 1639 |  | 7 Days Work | 9172034 |
| 1643 | 36900.37000.37100.37800.38500.40800.225000 | False Ceiling | 5d | 2026-12-28 | 2027-01-02 | 1642 |  | 7 Days Work | 9172044 |
| 1644 | 36900.37000.37100.37800.38500.40800.225100 | 2nd coat of primer | 10d | 2027-01-02 | 2027-01-12 | 1643 |  | 7 Days Work | 9172054 |
| 1645 | 36900.37000.37100.37800.38500.40800.225200 | Final cutting/polishing of stone flooring | 7d | 2027-01-12 | 2027-01-19 | 1644 |  | 7 Days Work | 9172064 |

| ID | WBS | Task | Duration | Start | Finish | Predecessors | Constraint | Calendar | Unique_Task_ID |
| --- | --- | --- | --- | --- | --- | --- | --- | --- | --- |
| 1646 | 36900.37000.37100.37800.38500.40800.58100 | **Toilet** | 237d | 2026-05-26 | 2027-01-18 |  | start no earlier than 2026-05-26 | 7 Days Work | 9170154 |
| 1647 | 36900.37000.37100.37800.38500.40800.58100.786000 | Toilet_MEP Clearance -1 | 7d | 2026-05-26 | 2026-06-02 | 1610 |  | 7 Days Work | 9179844 |
| 1648 | 36900.37000.37100.37800.38500.40800.58100.786100 | Toilet_Level Marking | 1d | 2026-06-02 | 2026-06-03 | 1647 |  | 7 Days Work | 9179854 |
| 1649 | 36900.37000.37100.37800.38500.40800.58100.786200 | Toilet_Chasing work for Electrical conduit & concealed plumbing | 5d | 2026-06-03 | 2026-06-08 | 1648 |  | 7 Days Work | 9179864 |
| 1650 | 36900.37000.37100.37800.38500.40800.58100.786300 | Toilet_Plumbing work 1st fix | 5d | 2026-06-08 | 2026-06-13 | 1649 |  | 7 Days Work | 9179874 |
| 1651 | 36900.37000.37100.37800.38500.40800.58100.786400 | Toilet_Sleeve/Bore Packing | 5d | 2026-06-13 | 2026-06-18 | 1650 |  | 7 Days Work | 9179884 |
| 1652 | 36900.37000.37100.37800.38500.40800.58100.786500 | Toilet_Waterproofing | 10d | 2026-06-18 | 2026-06-28 | 1651 |  | 7 Days Work | 9179894 |
| 1653 | 36900.37000.37100.37800.38500.40800.58100.786600 | Toilet_Screed | 1d | 2026-06-28 | 2026-06-29 | 1652 |  | 7 Days Work | 9179904 |
| 1654 | 36900.37000.37100.37800.38500.40800.58100.786700 | Toilet_Plumbing 2nd fix | 5d | 2026-06-29 | 2026-07-04 | 1653 |  | 7 Days Work | 9179914 |
| 1655 | 36900.37000.37100.37800.38500.40800.58100.786800 | Toilet_Ledge wall | 5d | 2026-07-04 | 2026-07-09 | 1654 |  | 7 Days Work | 9179924 |
| 1656 | 36900.37000.37100.37800.38500.40800.58100.786900 | Toilet_Cement Plaster | 5d | 2026-07-09 | 2026-07-14 | 1655 |  | 7 Days Work | 9179934 |
| 1657 | 36900.37000.37100.37800.38500.40800.58100.787000 | Toilet_Door Frame | 1d | 2026-07-14 | 2026-07-15 | 1656 |  | 7 Days Work | 9179944 |
| 1658 | 36900.37000.37100.37800.38500.40800.58100.787100 | Toilet_Wash basin & Couter | 3d | 2026-07-15 | 2026-07-18 | 1657 |  | 7 Days Work | 9179954 |
| 1659 | 36900.37000.37100.37800.38500.40800.58100.787200 | Toilet_Wall dado | 20d | 2026-07-18 | 2026-08-07 | 1658 |  | 7 Days Work | 9179964 |
| 1660 | 36900.37000.37100.37800.38500.40800.58100.787300 | Toilet_Granite Work-Ledge wall top | 3d | 2026-08-07 | 2026-08-10 | 1659 |  | 7 Days Work | 9179974 |
| 1661 | 36900.37000.37100.37800.38500.40800.58100.787400 | Toilet_Floor Tilling work | 20d | 2026-08-10 | 2026-08-30 | 1660 |  | 7 Days Work | 9179984 |
| 1662 | 36900.37000.37100.37800.38500.40800.58100.787500 | Toilet_1st row of dado | 5d | 2026-08-30 | 2026-09-04 | 1661 |  | 7 Days Work | 9179994 |
| 1663 | 36900.37000.37100.37800.38500.40800.58100.787600 | Toilet_Window Fixing | 14d | 2026-09-04 | 2026-09-18 | 1662 |  | 7 Days Work | 9180004 |
| 1664 | 36900.37000.37100.37800.38500.40800.58100.787700 | Toilet_Services above False ceiling | 21d | 2026-09-18 | 2026-10-09 | 1663 |  | 7 Days Work | 9180014 |
| 1665 | 36900.37000.37100.37800.38500.40800.58100.787800 | Toilet_False Ceiling framing | 12d | 2026-10-09 | 2026-10-21 | 1664 |  | 7 Days Work | 9180024 |
| 1666 | 36900.37000.37100.37800.38500.40800.58100.787900 | Toilet_Door Frame | 5d | 2026-10-21 | 2026-10-26 | 1665 |  | 7 Days Work | 9180034 |
| 1667 | 36900.37000.37100.37800.38500.40800.58100.788000 | Toilet_Epoxy Tile Grouting | 7d | 2026-12-21 | 2026-12-28 | 1642SS |  | 7 Days Work | 9180044 |
| 1668 | 36900.37000.37100.37800.38500.40800.58100.788100 | Toilet_False ceiling board fixing, CP Sanitary Fixture, Electric Fixture | 21d | 2026-12-28 | 2027-01-18 | 1667 |  | 7 Days Work | 9180054 |
| 1669 | 36900.37000.37100.37800.38500.40900 | **5th Habitable/7th Floor** | 245d | 2026-05-28 | 2027-01-28 |  | start no earlier than 2026-05-28 | 7 Days Work | 9169964 |
| 1670 | 36900.37000.37100.37800.38500.40900.225300 | Post Pour | 7d | 2026-05-28 | 2026-06-04 | 1413FS+15d |  | 7 Days Work | 9172074 |
| 1671 | 36900.37000.37100.37800.38500.40900.225400 | MEP Clearance -1 | 5d | 2026-06-04 | 2026-06-09 | 1670 |  | 7 Days Work | 9172084 |
| 1672 | 36900.37000.37100.37800.38500.40900.225500 | Benchmark | 1d | 2026-06-09 | 2026-06-10 | 1671 |  | 7 Days Work | 9172094 |
| 1673 | 36900.37000.37100.37800.38500.40900.225600 | Temporary Railing | 3d | 2026-06-10 | 2026-06-13 | 1672 |  | 7 Days Work | 9172104 |
| 1674 | 36900.37000.37100.37800.38500.40900.225700 | Blockwork | 10d | 2026-06-13 | 2026-06-23 | 1673 |  | 7 Days Work | 9172114 |
| 1675 | 36900.37000.37100.37800.38500.40900.225800 | MEP Clearance -2 | 10d | 2026-06-23 | 2026-07-03 | 1674 |  | 7 Days Work | 9172124 |
| 1676 | 36900.37000.37100.37800.38500.40900.225900 | Gypsum Plaster | 14d | 2026-07-03 | 2026-07-17 | 1675 |  | 7 Days Work | 9172134 |
| 1677 | 36900.37000.37100.37800.38500.40900.226000 | Kitchen Platform | 3d | 2026-07-17 | 2026-07-20 | 1676 |  | 7 Days Work | 9172144 |
| 1678 | 36900.37000.37100.37800.38500.40900.226100 | Kitchen dado | 7d | 2026-07-20 | 2026-07-27 | 1677 |  | 7 Days Work | 9172154 |
| 1679 | 36900.37000.37100.37800.38500.40900.226200 | Fire Fighting | 5d | 2026-07-27 | 2026-08-01 | 1678 |  | 7 Days Work | 9172164 |
| 1680 | 36900.37000.37100.37800.38500.40900.226300 | Anticapilary | 5d | 2026-08-01 | 2026-08-06 | 1679 |  | 7 Days Work | 9172174 |
| 1681 | 36900.37000.37100.37800.38500.40900.226400 | Stone Laying | 10d | 2026-09-08 | 2026-09-18 | 1721 |  | 7 Days Work | 9172184 |
| 1682 | 36900.37000.37100.37800.38500.40900.226500 | Tiles Laying | 7d | 2026-09-08 | 2026-09-15 | 1721 |  | 7 Days Work | 9172194 |
| 1683 | 36900.37000.37100.37800.38500.40900.226600 | 1st cutting/polishing of stone flooring | 7d | 2026-09-15 | 2026-09-22 | 1682 |  | 7 Days Work | 9172204 |
| 1684 | 36900.37000.37100.37800.38500.40900.226700 | Tiles/Stone skirting | 5d | 2026-09-22 | 2026-09-27 | 1683 |  | 7 Days Work | 9172214 |
| 1685 | 36900.37000.37100.37800.38500.40900.226800 | Protechtion sheet | 1d | 2026-09-27 | 2026-09-28 | 1684 |  | 7 Days Work | 9172224 |
| 1686 | 36900.37000.37100.37800.38500.40900.226900 | Installation of Temporary Door | 1d | 2026-09-28 | 2026-09-29 | 1685 |  | 7 Days Work | 9172234 |
| 1687 | 36900.37000.37100.37800.38500.40900.227000 | Fixing of window tracks | 5d | 2026-09-29 | 2026-10-04 | 1686 |  | 7 Days Work | 9172244 |
| 1688 | 36900.37000.37100.37800.38500.40900.227100 | Wire Pulling | 7d | 2026-10-04 | 2026-10-11 | 1687 |  | 7 Days Work | 9172254 |
| 1689 | 36900.37000.37100.37800.38500.40900.227200 | Gypsum Remaining | 5d | 2026-10-11 | 2026-10-16 | 1688 |  | 7 Days Work | 9172264 |
| 1690 | 36900.37000.37100.37800.38500.40900.227300 | Fixing of windoow shutter | 5d | 2026-10-16 | 2026-10-21 | 1689 |  | 7 Days Work | 9172274 |
| 1691 | 36900.37000.37100.37800.38500.40900.227400 | Putty Works - walls & ceiling | 15d | 2026-10-21 | 2026-11-05 | 1690 |  | 7 Days Work | 9172284 |
| 1692 | 36900.37000.37100.37800.38500.40900.227500 | False Ceiling- Framing | 10d | 2026-11-05 | 2026-11-15 | 1691 |  | 7 Days Work | 9172294 |
| 1693 | 36900.37000.37100.37800.38500.40900.227600 | Pre Hung Door | 3d | 2026-11-15 | 2026-11-18 | 1692 |  | 7 Days Work | 9172304 |
| 1694 | 36900.37000.37100.37800.38500.40900.227700 | Protechtion sheet | 2d | 2026-11-18 | 2026-11-20 | 1693 |  | 7 Days Work | 9172314 |
| 1695 | 36900.37000.37100.37800.38500.40900.227800 | Skirting near door | 2d | 2026-11-20 | 2026-11-22 | 1694 |  | 7 Days Work | 9172324 |
| 1696 | 36900.37000.37100.37800.38500.40900.227900 | Electrical Switch box fixing | 14d | 2026-11-22 | 2026-12-06 | 1695 |  | 7 Days Work | 9172334 |
| 1697 | 36900.37000.37100.37800.38500.40900.228000 | Fire Fighting painting | 5d | 2026-12-06 | 2026-12-11 | 1696 |  | 7 Days Work | 9172344 |
| 1698 | 36900.37000.37100.37800.38500.40900.228100 | Protection of all flooring, door & window hardware | 5d | 2026-12-11 | 2026-12-16 | 1697 |  | 7 Days Work | 9172354 |
| 1699 | 36900.37000.37100.37800.38500.40900.228200 | 1st coat primer- ceiling 1st & walls | 14d | 2026-12-16 | 2026-12-30 | 1698 |  | 7 Days Work | 9172364 |
| 1700 | 36900.37000.37100.37800.38500.40900.228300 | Wooden Flooring | 5d | 2026-12-30 | 2027-01-04 | 1699 |  | 7 Days Work | 9172374 |
| 1701 | 36900.37000.37100.37800.38500.40900.228400 | Removing of Temporary Railing & installation of Glass Railing | 5d | 2026-12-30 | 2027-01-04 | 1699 |  | 7 Days Work | 9172384 |
| 1702 | 36900.37000.37100.37800.38500.40900.228500 | Tile Grouting | 7d | 2026-12-30 | 2027-01-06 | 1699 |  | 7 Days Work | 9172394 |
| 1703 | 36900.37000.37100.37800.38500.40900.228600 | False Ceiling | 5d | 2027-01-06 | 2027-01-11 | 1702 |  | 7 Days Work | 9172404 |
| 1704 | 36900.37000.37100.37800.38500.40900.228700 | 2nd coat of primer | 10d | 2027-01-11 | 2027-01-21 | 1703 |  | 7 Days Work | 9172414 |
| 1705 | 36900.37000.37100.37800.38500.40900.228800 | Final cutting/polishing of stone flooring | 7d | 2027-01-21 | 2027-01-28 | 1704 |  | 7 Days Work | 9172424 |

| ID | WBS | Task | Duration | Start | Finish | Predecessors | Constraint | Calendar | Unique_Task_ID |
| --- | --- | --- | --- | --- | --- | --- | --- | --- | --- |
| 1706 | 36900.37000.37100.37800.38500.40900.58200 | **Toilet** | 237d | 2026-06-04 | 2027-01-27 |  | start no earlier than 2026-06-04 | 7 Days Work | 9170164 |
| 1707 | 36900.37000.37100.37800.38500.40900.58200.788200 | Toilet_MEP Clearance -1 | 7d | 2026-06-04 | 2026-06-11 | 1670 |  | 7 Days Work | 9180064 |
| 1708 | 36900.37000.37100.37800.38500.40900.58200.788300 | Toilet_Level Marking | 1d | 2026-06-11 | 2026-06-12 | 1707 |  | 7 Days Work | 9180074 |
| 1709 | 36900.37000.37100.37800.38500.40900.58200.788400 | Toilet_Chasing work for Electrical conduit & concealed plumbing | 5d | 2026-06-12 | 2026-06-17 | 1708 |  | 7 Days Work | 9180084 |
| 1710 | 36900.37000.37100.37800.38500.40900.58200.788500 | Toilet_Plumbing work 1st fix | 5d | 2026-06-17 | 2026-06-22 | 1709 |  | 7 Days Work | 9180094 |
| 1711 | 36900.37000.37100.37800.38500.40900.58200.788600 | Toilet_Sleeve/Bore Packing | 5d | 2026-06-22 | 2026-06-27 | 1710 |  | 7 Days Work | 9180104 |
| 1712 | 36900.37000.37100.37800.38500.40900.58200.788700 | Toilet_Waterproofing | 10d | 2026-06-27 | 2026-07-07 | 1711 |  | 7 Days Work | 9180114 |
| 1713 | 36900.37000.37100.37800.38500.40900.58200.788800 | Toilet_Screed | 1d | 2026-07-07 | 2026-07-08 | 1712 |  | 7 Days Work | 9180124 |
| 1714 | 36900.37000.37100.37800.38500.40900.58200.788900 | Toilet_Plumbing 2nd fix | 5d | 2026-07-08 | 2026-07-13 | 1713 |  | 7 Days Work | 9180134 |
| 1715 | 36900.37000.37100.37800.38500.40900.58200.789000 | Toilet_Ledge wall | 5d | 2026-07-13 | 2026-07-18 | 1714 |  | 7 Days Work | 9180144 |
| 1716 | 36900.37000.37100.37800.38500.40900.58200.789100 | Toilet_Cement Plaster | 5d | 2026-07-18 | 2026-07-23 | 1715 |  | 7 Days Work | 9180154 |
| 1717 | 36900.37000.37100.37800.38500.40900.58200.789200 | Toilet_Door Frame | 1d | 2026-07-23 | 2026-07-24 | 1716 |  | 7 Days Work | 9180164 |
| 1718 | 36900.37000.37100.37800.38500.40900.58200.789300 | Toilet_Wash basin & Couter | 3d | 2026-07-24 | 2026-07-27 | 1717 |  | 7 Days Work | 9180174 |
| 1719 | 36900.37000.37100.37800.38500.40900.58200.789400 | Toilet_Wall dado | 20d | 2026-07-27 | 2026-08-16 | 1718 |  | 7 Days Work | 9180184 |
| 1720 | 36900.37000.37100.37800.38500.40900.58200.789500 | Toilet_Granite Work-Ledge wall top | 3d | 2026-08-16 | 2026-08-19 | 1719 |  | 7 Days Work | 9180194 |
| 1721 | 36900.37000.37100.37800.38500.40900.58200.789600 | Toilet_Floor Tilling work | 20d | 2026-08-19 | 2026-09-08 | 1720 |  | 7 Days Work | 9180204 |
| 1722 | 36900.37000.37100.37800.38500.40900.58200.789700 | Toilet_1st row of dado | 5d | 2026-09-08 | 2026-09-13 | 1721 |  | 7 Days Work | 9180214 |
| 1723 | 36900.37000.37100.37800.38500.40900.58200.789800 | Toilet_Window Fixing | 14d | 2026-09-13 | 2026-09-27 | 1722 |  | 7 Days Work | 9180224 |
| 1724 | 36900.37000.37100.37800.38500.40900.58200.789900 | Toilet_Services above False ceiling | 21d | 2026-09-27 | 2026-10-18 | 1723 |  | 7 Days Work | 9180234 |
| 1725 | 36900.37000.37100.37800.38500.40900.58200.790000 | Toilet_False Ceiling framing | 12d | 2026-10-18 | 2026-10-30 | 1724 |  | 7 Days Work | 9180244 |
| 1726 | 36900.37000.37100.37800.38500.40900.58200.790100 | Toilet_Door Frame | 5d | 2026-10-30 | 2026-11-04 | 1725 |  | 7 Days Work | 9180254 |
| 1727 | 36900.37000.37100.37800.38500.40900.58200.790200 | Toilet_Epoxy Tile Grouting | 7d | 2026-12-30 | 2027-01-06 | 1702SS |  | 7 Days Work | 9180264 |
| 1728 | 36900.37000.37100.37800.38500.40900.58200.790300 | Toilet_False ceiling board fixing, CP Sanitary Fixture, Electric Fixture | 21d | 2027-01-06 | 2027-01-27 | 1727 |  | 7 Days Work | 9180274 |
| 1729 | 36900.37000.37100.37800.38500.41000 | **6th Habitable/8th Floor** | 245d | 2026-06-06 | 2027-02-06 |  | start no earlier than 2026-06-06 | 7 Days Work | 9169974 |
| 1730 | 36900.37000.37100.37800.38500.41000.228900 | Post Pour | 7d | 2026-06-06 | 2026-06-13 | 1414FS+15d |  | 7 Days Work | 9172434 |
| 1731 | 36900.37000.37100.37800.38500.41000.229000 | MEP Clearance -1 | 5d | 2026-06-13 | 2026-06-18 | 1730 |  | 7 Days Work | 9172444 |
| 1732 | 36900.37000.37100.37800.38500.41000.229100 | Benchmark | 1d | 2026-06-18 | 2026-06-19 | 1731 |  | 7 Days Work | 9172454 |
| 1733 | 36900.37000.37100.37800.38500.41000.229200 | Temporary Railing | 3d | 2026-06-19 | 2026-06-22 | 1732 |  | 7 Days Work | 9172464 |
| 1734 | 36900.37000.37100.37800.38500.41000.229300 | Blockwork | 10d | 2026-06-22 | 2026-07-02 | 1733 |  | 7 Days Work | 9172474 |
| 1735 | 36900.37000.37100.37800.38500.41000.229400 | MEP Clearance -2 | 10d | 2026-07-02 | 2026-07-12 | 1734 |  | 7 Days Work | 9172484 |
| 1736 | 36900.37000.37100.37800.38500.41000.229500 | Gypsum Plaster | 14d | 2026-07-12 | 2026-07-26 | 1735 |  | 7 Days Work | 9172494 |
| 1737 | 36900.37000.37100.37800.38500.41000.229600 | Kitchen Platform | 3d | 2026-07-26 | 2026-07-29 | 1736 |  | 7 Days Work | 9172504 |
| 1738 | 36900.37000.37100.37800.38500.41000.229700 | Kitchen dado | 7d | 2026-07-29 | 2026-08-05 | 1737 |  | 7 Days Work | 9172514 |
| 1739 | 36900.37000.37100.37800.38500.41000.229800 | Fire Fighting | 5d | 2026-08-05 | 2026-08-10 | 1738 |  | 7 Days Work | 9172524 |
| 1740 | 36900.37000.37100.37800.38500.41000.229900 | Anticapilary | 5d | 2026-08-10 | 2026-08-15 | 1739 |  | 7 Days Work | 9172534 |
| 1741 | 36900.37000.37100.37800.38500.41000.230000 | Stone Laying | 10d | 2026-09-17 | 2026-09-27 | 1781 |  | 7 Days Work | 9172544 |
| 1742 | 36900.37000.37100.37800.38500.41000.230100 | Tiles Laying | 7d | 2026-09-17 | 2026-09-24 | 1781 |  | 7 Days Work | 9172554 |
| 1743 | 36900.37000.37100.37800.38500.41000.230200 | 1st cutting/polishing of stone flooring | 7d | 2026-09-24 | 2026-10-01 | 1742 |  | 7 Days Work | 9172564 |
| 1744 | 36900.37000.37100.37800.38500.41000.230300 | Tiles/Stone skirting | 5d | 2026-10-01 | 2026-10-06 | 1743 |  | 7 Days Work | 9172574 |
| 1745 | 36900.37000.37100.37800.38500.41000.230400 | Protechtion sheet | 1d | 2026-10-06 | 2026-10-07 | 1744 |  | 7 Days Work | 9172584 |
| 1746 | 36900.37000.37100.37800.38500.41000.230500 | Installation of Temporary Door | 1d | 2026-10-07 | 2026-10-08 | 1745 |  | 7 Days Work | 9172594 |
| 1747 | 36900.37000.37100.37800.38500.41000.230600 | Fixing of window tracks | 5d | 2026-10-08 | 2026-10-13 | 1746 |  | 7 Days Work | 9172604 |
| 1748 | 36900.37000.37100.37800.38500.41000.230700 | Wire Pulling | 7d | 2026-10-13 | 2026-10-20 | 1747 |  | 7 Days Work | 9172614 |
| 1749 | 36900.37000.37100.37800.38500.41000.230800 | Gypsum Remaining | 5d | 2026-10-20 | 2026-10-25 | 1748 |  | 7 Days Work | 9172624 |
| 1750 | 36900.37000.37100.37800.38500.41000.230900 | Fixing of windoow shutter | 5d | 2026-10-25 | 2026-10-30 | 1749 |  | 7 Days Work | 9172634 |
| 1751 | 36900.37000.37100.37800.38500.41000.231000 | Putty Works - walls & ceiling | 15d | 2026-10-30 | 2026-11-14 | 1750 |  | 7 Days Work | 9172644 |
| 1752 | 36900.37000.37100.37800.38500.41000.231100 | False Ceiling- Framing | 10d | 2026-11-14 | 2026-11-24 | 1751 |  | 7 Days Work | 9172654 |
| 1753 | 36900.37000.37100.37800.38500.41000.231200 | Pre Hung Door | 3d | 2026-11-24 | 2026-11-27 | 1752 |  | 7 Days Work | 9172664 |
| 1754 | 36900.37000.37100.37800.38500.41000.231300 | Protechtion sheet | 2d | 2026-11-27 | 2026-11-29 | 1753 |  | 7 Days Work | 9172674 |
| 1755 | 36900.37000.37100.37800.38500.41000.231400 | Skirting near door | 2d | 2026-11-29 | 2026-12-01 | 1754 |  | 7 Days Work | 9172684 |
| 1756 | 36900.37000.37100.37800.38500.41000.231500 | Electrical Switch box fixing | 14d | 2026-12-01 | 2026-12-15 | 1755 |  | 7 Days Work | 9172694 |
| 1757 | 36900.37000.37100.37800.38500.41000.231600 | Fire Fighting painting | 5d | 2026-12-15 | 2026-12-20 | 1756 |  | 7 Days Work | 9172704 |
| 1758 | 36900.37000.37100.37800.38500.41000.231700 | Protection of all flooring, door & window hardware | 5d | 2026-12-20 | 2026-12-25 | 1757 |  | 7 Days Work | 9172714 |
| 1759 | 36900.37000.37100.37800.38500.41000.231800 | 1st coat primer- ceiling 1st & walls | 14d | 2026-12-25 | 2027-01-08 | 1758 |  | 7 Days Work | 9172724 |
| 1760 | 36900.37000.37100.37800.38500.41000.231900 | Wooden Flooring | 5d | 2027-01-08 | 2027-01-13 | 1759 |  | 7 Days Work | 9172734 |
| 1761 | 36900.37000.37100.37800.38500.41000.232000 | Removing of Temporary Railing & installation of Glass Railing | 5d | 2027-01-08 | 2027-01-13 | 1759 |  | 7 Days Work | 9172744 |
| 1762 | 36900.37000.37100.37800.38500.41000.232100 | Tile Grouting | 7d | 2027-01-08 | 2027-01-15 | 1759 |  | 7 Days Work | 9172754 |
| 1763 | 36900.37000.37100.37800.38500.41000.232200 | False Ceiling | 5d | 2027-01-15 | 2027-01-20 | 1762 |  | 7 Days Work | 9172764 |
| 1764 | 36900.37000.37100.37800.38500.41000.232300 | 2nd coat of primer | 10d | 2027-01-20 | 2027-01-30 | 1763 |  | 7 Days Work | 9172774 |
| 1765 | 36900.37000.37100.37800.38500.41000.232400 | Final cutting/polishing of stone flooring | 7d | 2027-01-30 | 2027-02-06 | 1764 |  | 7 Days Work | 9172784 |

| ID | WBS | Task | Duration | Start | Finish | Predecessors | Constraint | Calendar | Unique_Task_ID |
| --- | --- | --- | --- | --- | --- | --- | --- | --- | --- |
| 1766 | 36900.37000.37100.37800.38500.41000.58300 | **Toilet** | 237d | 2026-06-13 | 2027-02-05 |  | start no earlier than 2026-06-13 | 7 Days Work | 9170174 |
| 1767 | 36900.37000.37100.37800.38500.41000.58300.790400 | Toilet_MEP Clearance -1 | 7d | 2026-06-13 | 2026-06-20 | 1730 |  | 7 Days Work | 9180284 |
| 1768 | 36900.37000.37100.37800.38500.41000.58300.790500 | Toilet_Level Marking | 1d | 2026-06-20 | 2026-06-21 | 1767 |  | 7 Days Work | 9180294 |
| 1769 | 36900.37000.37100.37800.38500.41000.58300.790600 | Toilet_Chasing work for Electrical conduit & concealed plumbing | 5d | 2026-06-21 | 2026-06-26 | 1768 |  | 7 Days Work | 9180304 |
| 1770 | 36900.37000.37100.37800.38500.41000.58300.790700 | Toilet_Plumbing work 1st fix | 5d | 2026-06-26 | 2026-07-01 | 1769 |  | 7 Days Work | 9180314 |
| 1771 | 36900.37000.37100.37800.38500.41000.58300.790800 | Toilet_Sleeve/Bore Packing | 5d | 2026-07-01 | 2026-07-06 | 1770 |  | 7 Days Work | 9180324 |
| 1772 | 36900.37000.37100.37800.38500.41000.58300.790900 | Toilet_Waterproofing | 10d | 2026-07-06 | 2026-07-16 | 1771 |  | 7 Days Work | 9180334 |
| 1773 | 36900.37000.37100.37800.38500.41000.58300.791000 | Toilet_Screed | 1d | 2026-07-16 | 2026-07-17 | 1772 |  | 7 Days Work | 9180344 |
| 1774 | 36900.37000.37100.37800.38500.41000.58300.791100 | Toilet_Plumbing 2nd fix | 5d | 2026-07-17 | 2026-07-22 | 1773 |  | 7 Days Work | 9180354 |
| 1775 | 36900.37000.37100.37800.38500.41000.58300.791200 | Toilet_Ledge wall | 5d | 2026-07-22 | 2026-07-27 | 1774 |  | 7 Days Work | 9180364 |
| 1776 | 36900.37000.37100.37800.38500.41000.58300.791300 | Toilet_Cement Plaster | 5d | 2026-07-27 | 2026-08-01 | 1775 |  | 7 Days Work | 9180374 |
| 1777 | 36900.37000.37100.37800.38500.41000.58300.791400 | Toilet_Door Frame | 1d | 2026-08-01 | 2026-08-02 | 1776 |  | 7 Days Work | 9180384 |
| 1778 | 36900.37000.37100.37800.38500.41000.58300.791500 | Toilet_Wash basin & Couter | 3d | 2026-08-02 | 2026-08-05 | 1777 |  | 7 Days Work | 9180394 |
| 1779 | 36900.37000.37100.37800.38500.41000.58300.791600 | Toilet_Wall dado | 20d | 2026-08-05 | 2026-08-25 | 1778 |  | 7 Days Work | 9180404 |
| 1780 | 36900.37000.37100.37800.38500.41000.58300.791700 | Toilet_Granite Work-Ledge wall top | 3d | 2026-08-25 | 2026-08-28 | 1779 |  | 7 Days Work | 9180414 |
| 1781 | 36900.37000.37100.37800.38500.41000.58300.791800 | Toilet_Floor Tilling work | 20d | 2026-08-28 | 2026-09-17 | 1780 |  | 7 Days Work | 9180424 |
| 1782 | 36900.37000.37100.37800.38500.41000.58300.791900 | Toilet_1st row of dado | 5d | 2026-09-17 | 2026-09-22 | 1781 |  | 7 Days Work | 9180434 |
| 1783 | 36900.37000.37100.37800.38500.41000.58300.792000 | Toilet_Window Fixing | 14d | 2026-09-22 | 2026-10-06 | 1782 |  | 7 Days Work | 9180444 |
| 1784 | 36900.37000.37100.37800.38500.41000.58300.792100 | Toilet_Services above False ceiling | 21d | 2026-10-06 | 2026-10-27 | 1783 |  | 7 Days Work | 9180454 |
| 1785 | 36900.37000.37100.37800.38500.41000.58300.792200 | Toilet_False Ceiling framing | 12d | 2026-10-27 | 2026-11-08 | 1784 |  | 7 Days Work | 9180464 |
| 1786 | 36900.37000.37100.37800.38500.41000.58300.792300 | Toilet_Door Frame | 5d | 2026-11-08 | 2026-11-13 | 1785 |  | 7 Days Work | 9180474 |
| 1787 | 36900.37000.37100.37800.38500.41000.58300.792400 | Toilet_Epoxy Tile Grouting | 7d | 2027-01-08 | 2027-01-15 | 1762SS |  | 7 Days Work | 9180484 |
| 1788 | 36900.37000.37100.37800.38500.41000.58300.792500 | Toilet_False ceiling board fixing, CP Sanitary Fixture, Electric Fixture | 21d | 2027-01-15 | 2027-02-05 | 1787 |  | 7 Days Work | 9180494 |
| 1789 | 36900.37000.37100.37800.38500.41100 | **7th Habitable/9th Floor** | 245d | 2026-06-15 | 2027-02-15 |  | start no earlier than 2026-06-15 | 7 Days Work | 9169984 |
| 1790 | 36900.37000.37100.37800.38500.41100.232500 | Post Pour | 7d | 2026-06-15 | 2026-06-22 | 1415FS+15d |  | 7 Days Work | 9172794 |
| 1791 | 36900.37000.37100.37800.38500.41100.232600 | MEP Clearance -1 | 5d | 2026-06-22 | 2026-06-27 | 1790 |  | 7 Days Work | 9172804 |
| 1792 | 36900.37000.37100.37800.38500.41100.232700 | Benchmark | 1d | 2026-06-27 | 2026-06-28 | 1791 |  | 7 Days Work | 9172814 |
| 1793 | 36900.37000.37100.37800.38500.41100.232800 | Temporary Railing | 3d | 2026-06-28 | 2026-07-01 | 1792 |  | 7 Days Work | 9172824 |
| 1794 | 36900.37000.37100.37800.38500.41100.232900 | Blockwork | 10d | 2026-07-01 | 2026-07-11 | 1793 |  | 7 Days Work | 9172834 |
| 1795 | 36900.37000.37100.37800.38500.41100.233000 | MEP Clearance -2 | 10d | 2026-07-11 | 2026-07-21 | 1794 |  | 7 Days Work | 9172844 |
| 1796 | 36900.37000.37100.37800.38500.41100.233100 | Gypsum Plaster | 14d | 2026-07-21 | 2026-08-04 | 1795 |  | 7 Days Work | 9172854 |
| 1797 | 36900.37000.37100.37800.38500.41100.233200 | Kitchen Platform | 3d | 2026-08-04 | 2026-08-07 | 1796 |  | 7 Days Work | 9172864 |
| 1798 | 36900.37000.37100.37800.38500.41100.233300 | Kitchen dado | 7d | 2026-08-07 | 2026-08-14 | 1797 |  | 7 Days Work | 9172874 |
| 1799 | 36900.37000.37100.37800.38500.41100.233400 | Fire Fighting | 5d | 2026-08-14 | 2026-08-19 | 1798 |  | 7 Days Work | 9172884 |
| 1800 | 36900.37000.37100.37800.38500.41100.233500 | Anticapilary | 5d | 2026-08-19 | 2026-08-24 | 1799 |  | 7 Days Work | 9172894 |
| 1801 | 36900.37000.37100.37800.38500.41100.233600 | Stone Laying | 10d | 2026-09-26 | 2026-10-06 | 1841 |  | 7 Days Work | 9172904 |
| 1802 | 36900.37000.37100.37800.38500.41100.233700 | Tiles Laying | 7d | 2026-09-26 | 2026-10-03 | 1841 |  | 7 Days Work | 9172914 |
| 1803 | 36900.37000.37100.37800.38500.41100.233800 | 1st cutting/polishing of stone flooring | 7d | 2026-10-03 | 2026-10-10 | 1802 |  | 7 Days Work | 9172924 |
| 1804 | 36900.37000.37100.37800.38500.41100.233900 | Tiles/Stone skirting | 5d | 2026-10-10 | 2026-10-15 | 1803 |  | 7 Days Work | 9172934 |
| 1805 | 36900.37000.37100.37800.38500.41100.234000 | Protechtion sheet | 1d | 2026-10-15 | 2026-10-16 | 1804 |  | 7 Days Work | 9172944 |
| 1806 | 36900.37000.37100.37800.38500.41100.234100 | Installation of Temporary Door | 1d | 2026-10-16 | 2026-10-17 | 1805 |  | 7 Days Work | 9172954 |
| 1807 | 36900.37000.37100.37800.38500.41100.234200 | Fixing of window tracks | 5d | 2026-10-17 | 2026-10-22 | 1806 |  | 7 Days Work | 9172964 |
| 1808 | 36900.37000.37100.37800.38500.41100.234300 | Wire Pulling | 7d | 2026-10-22 | 2026-10-29 | 1807 |  | 7 Days Work | 9172974 |
| 1809 | 36900.37000.37100.37800.38500.41100.234400 | Gypsum Remaining | 5d | 2026-10-29 | 2026-11-03 | 1808 |  | 7 Days Work | 9172984 |
| 1810 | 36900.37000.37100.37800.38500.41100.234500 | Fixing of windoow shutter | 5d | 2026-11-03 | 2026-11-08 | 1809 |  | 7 Days Work | 9172994 |
| 1811 | 36900.37000.37100.37800.38500.41100.234600 | Putty Works - walls & ceiling | 15d | 2026-11-08 | 2026-11-23 | 1810 |  | 7 Days Work | 9173004 |
| 1812 | 36900.37000.37100.37800.38500.41100.234700 | False Ceiling- Framing | 10d | 2026-11-23 | 2026-12-03 | 1811 |  | 7 Days Work | 9173014 |
| 1813 | 36900.37000.37100.37800.38500.41100.234800 | Pre Hung Door | 3d | 2026-12-03 | 2026-12-06 | 1812 |  | 7 Days Work | 9173024 |
| 1814 | 36900.37000.37100.37800.38500.41100.234900 | Protechtion sheet | 2d | 2026-12-06 | 2026-12-08 | 1813 |  | 7 Days Work | 9173034 |
| 1815 | 36900.37000.37100.37800.38500.41100.235000 | Skirting near door | 2d | 2026-12-08 | 2026-12-10 | 1814 |  | 7 Days Work | 9173044 |
| 1816 | 36900.37000.37100.37800.38500.41100.235100 | Electrical Switch box fixing | 14d | 2026-12-10 | 2026-12-24 | 1815 |  | 7 Days Work | 9173054 |
| 1817 | 36900.37000.37100.37800.38500.41100.235200 | Fire Fighting painting | 5d | 2026-12-24 | 2026-12-29 | 1816 |  | 7 Days Work | 9173064 |
| 1818 | 36900.37000.37100.37800.38500.41100.235300 | Protection of all flooring, door & window hardware | 5d | 2026-12-29 | 2027-01-03 | 1817 |  | 7 Days Work | 9173074 |
| 1819 | 36900.37000.37100.37800.38500.41100.235400 | 1st coat primer- ceiling 1st & walls | 14d | 2027-01-03 | 2027-01-17 | 1818 |  | 7 Days Work | 9173084 |
| 1820 | 36900.37000.37100.37800.38500.41100.235500 | Wooden Flooring | 5d | 2027-01-17 | 2027-01-22 | 1819 |  | 7 Days Work | 9173094 |
| 1821 | 36900.37000.37100.37800.38500.41100.235600 | Removing of Temporary Railing & installation of Glass Railing | 5d | 2027-01-17 | 2027-01-22 | 1819 |  | 7 Days Work | 9173104 |
| 1822 | 36900.37000.37100.37800.38500.41100.235700 | Tile Grouting | 7d | 2027-01-17 | 2027-01-24 | 1819 |  | 7 Days Work | 9173114 |
| 1823 | 36900.37000.37100.37800.38500.41100.235800 | False Ceiling | 5d | 2027-01-24 | 2027-01-29 | 1822 |  | 7 Days Work | 9173124 |
| 1824 | 36900.37000.37100.37800.38500.41100.235900 | 2nd coat of primer | 10d | 2027-01-29 | 2027-02-08 | 1823 |  | 7 Days Work | 9173134 |
| 1825 | 36900.37000.37100.37800.38500.41100.236000 | Final cutting/polishing of stone flooring | 7d | 2027-02-08 | 2027-02-15 | 1824 |  | 7 Days Work | 9173144 |

| ID | WBS | Task | Duration | Start | Finish | Predecessors | Constraint | Calendar | Unique_Task_ID |
| --- | --- | --- | --- | --- | --- | --- | --- | --- | --- |
| 1826 | 36900.37000.37100.37800.38500.41100.58400 | **Toilet** | 237d | 2026-06-22 | 2027-02-14 |  | start no earlier than 2026-06-22 | 7 Days Work | 9170184 |
| 1827 | 36900.37000.37100.37800.38500.41100.58400.792600 | Toilet_MEP Clearance -1 | 7d | 2026-06-22 | 2026-06-29 | 1790 |  | 7 Days Work | 9180504 |
| 1828 | 36900.37000.37100.37800.38500.41100.58400.792700 | Toilet_Level Marking | 1d | 2026-06-29 | 2026-06-30 | 1827 |  | 7 Days Work | 9180514 |
| 1829 | 36900.37000.37100.37800.38500.41100.58400.792800 | Toilet_Chasing work for Electrical conduit & concealed plumbing | 5d | 2026-06-30 | 2026-07-05 | 1828 |  | 7 Days Work | 9180524 |
| 1830 | 36900.37000.37100.37800.38500.41100.58400.792900 | Toilet_Plumbing work 1st fix | 5d | 2026-07-05 | 2026-07-10 | 1829 |  | 7 Days Work | 9180534 |
| 1831 | 36900.37000.37100.37800.38500.41100.58400.793000 | Toilet_Sleeve/Bore Packing | 5d | 2026-07-10 | 2026-07-15 | 1830 |  | 7 Days Work | 9180544 |
| 1832 | 36900.37000.37100.37800.38500.41100.58400.793100 | Toilet_Waterproofing | 10d | 2026-07-15 | 2026-07-25 | 1831 |  | 7 Days Work | 9180554 |
| 1833 | 36900.37000.37100.37800.38500.41100.58400.793200 | Toilet_Screed | 1d | 2026-07-25 | 2026-07-26 | 1832 |  | 7 Days Work | 9180564 |
| 1834 | 36900.37000.37100.37800.38500.41100.58400.793300 | Toilet_Plumbing 2nd fix | 5d | 2026-07-26 | 2026-07-31 | 1833 |  | 7 Days Work | 9180574 |
| 1835 | 36900.37000.37100.37800.38500.41100.58400.793400 | Toilet_Ledge wall | 5d | 2026-07-31 | 2026-08-05 | 1834 |  | 7 Days Work | 9180584 |
| 1836 | 36900.37000.37100.37800.38500.41100.58400.793500 | Toilet_Cement Plaster | 5d | 2026-08-05 | 2026-08-10 | 1835 |  | 7 Days Work | 9180594 |
| 1837 | 36900.37000.37100.37800.38500.41100.58400.793600 | Toilet_Door Frame | 1d | 2026-08-10 | 2026-08-11 | 1836 |  | 7 Days Work | 9180604 |
| 1838 | 36900.37000.37100.37800.38500.41100.58400.793700 | Toilet_Wash basin & Couter | 3d | 2026-08-11 | 2026-08-14 | 1837 |  | 7 Days Work | 9180614 |
| 1839 | 36900.37000.37100.37800.38500.41100.58400.793800 | Toilet_Wall dado | 20d | 2026-08-14 | 2026-09-03 | 1838 |  | 7 Days Work | 9180624 |
| 1840 | 36900.37000.37100.37800.38500.41100.58400.793900 | Toilet_Granite Work-Ledge wall top | 3d | 2026-09-03 | 2026-09-06 | 1839 |  | 7 Days Work | 9180634 |
| 1841 | 36900.37000.37100.37800.38500.41100.58400.794000 | Toilet_Floor Tilling work | 20d | 2026-09-06 | 2026-09-26 | 1840 |  | 7 Days Work | 9180644 |
| 1842 | 36900.37000.37100.37800.38500.41100.58400.794100 | Toilet_1st row of dado | 5d | 2026-09-26 | 2026-10-01 | 1841 |  | 7 Days Work | 9180654 |
| 1843 | 36900.37000.37100.37800.38500.41100.58400.794200 | Toilet_Window Fixing | 14d | 2026-10-01 | 2026-10-15 | 1842 |  | 7 Days Work | 9180664 |
| 1844 | 36900.37000.37100.37800.38500.41100.58400.794300 | Toilet_Services above False ceiling | 21d | 2026-10-15 | 2026-11-05 | 1843 |  | 7 Days Work | 9180674 |
| 1845 | 36900.37000.37100.37800.38500.41100.58400.794400 | Toilet_False Ceiling framing | 12d | 2026-11-05 | 2026-11-17 | 1844 |  | 7 Days Work | 9180684 |
| 1846 | 36900.37000.37100.37800.38500.41100.58400.794500 | Toilet_Door Frame | 5d | 2026-11-17 | 2026-11-22 | 1845 |  | 7 Days Work | 9180694 |
| 1847 | 36900.37000.37100.37800.38500.41100.58400.794600 | Toilet_Epoxy Tile Grouting | 7d | 2027-01-17 | 2027-01-24 | 1822SS |  | 7 Days Work | 9180704 |
| 1848 | 36900.37000.37100.37800.38500.41100.58400.794700 | Toilet_False ceiling board fixing, CP Sanitary Fixture, Electric Fixture | 21d | 2027-01-24 | 2027-02-14 | 1847 |  | 7 Days Work | 9180714 |
| 1849 | 36900.37000.37100.37800.38500.41200 | **8th Habitable/10th Floor** | 245d | 2026-06-27 | 2027-02-27 |  | start no earlier than 2026-06-27 | 7 Days Work | 9169994 |
| 1850 | 36900.37000.37100.37800.38500.41200.236100 | Post Pour | 7d | 2026-06-27 | 2026-07-04 | 1416FS+15d |  | 7 Days Work | 9173154 |
| 1851 | 36900.37000.37100.37800.38500.41200.236200 | MEP Clearance -1 | 5d | 2026-07-04 | 2026-07-09 | 1850 |  | 7 Days Work | 9173164 |
| 1852 | 36900.37000.37100.37800.38500.41200.236300 | Benchmark | 1d | 2026-07-09 | 2026-07-10 | 1851 |  | 7 Days Work | 9173174 |
| 1853 | 36900.37000.37100.37800.38500.41200.236400 | Temporary Railing | 3d | 2026-07-10 | 2026-07-13 | 1852 |  | 7 Days Work | 9173184 |
| 1854 | 36900.37000.37100.37800.38500.41200.236500 | Blockwork | 10d | 2026-07-13 | 2026-07-23 | 1853 |  | 7 Days Work | 9173194 |
| 1855 | 36900.37000.37100.37800.38500.41200.236600 | MEP Clearance -2 | 10d | 2026-07-23 | 2026-08-02 | 1854 |  | 7 Days Work | 9173204 |
| 1856 | 36900.37000.37100.37800.38500.41200.236700 | Gypsum Plaster | 14d | 2026-08-02 | 2026-08-16 | 1855 |  | 7 Days Work | 9173214 |
| 1857 | 36900.37000.37100.37800.38500.41200.236800 | Kitchen Platform | 3d | 2026-08-16 | 2026-08-19 | 1856 |  | 7 Days Work | 9173224 |
| 1858 | 36900.37000.37100.37800.38500.41200.236900 | Kitchen dado | 7d | 2026-08-19 | 2026-08-26 | 1857 |  | 7 Days Work | 9173234 |
| 1859 | 36900.37000.37100.37800.38500.41200.237000 | Fire Fighting | 5d | 2026-08-26 | 2026-08-31 | 1858 |  | 7 Days Work | 9173244 |
| 1860 | 36900.37000.37100.37800.38500.41200.237100 | Anticapilary | 5d | 2026-08-31 | 2026-09-05 | 1859 |  | 7 Days Work | 9173254 |
| 1861 | 36900.37000.37100.37800.38500.41200.237200 | Stone Laying | 10d | 2026-10-08 | 2026-10-18 | 1901 |  | 7 Days Work | 9173264 |
| 1862 | 36900.37000.37100.37800.38500.41200.237300 | Tiles Laying | 7d | 2026-10-08 | 2026-10-15 | 1901 |  | 7 Days Work | 9173274 |
| 1863 | 36900.37000.37100.37800.38500.41200.237400 | 1st cutting/polishing of stone flooring | 7d | 2026-10-15 | 2026-10-22 | 1862 |  | 7 Days Work | 9173284 |
| 1864 | 36900.37000.37100.37800.38500.41200.237500 | Tiles/Stone skirting | 5d | 2026-10-22 | 2026-10-27 | 1863 |  | 7 Days Work | 9173294 |
| 1865 | 36900.37000.37100.37800.38500.41200.237600 | Protechtion sheet | 1d | 2026-10-27 | 2026-10-28 | 1864 |  | 7 Days Work | 9173304 |
| 1866 | 36900.37000.37100.37800.38500.41200.237700 | Installation of Temporary Door | 1d | 2026-10-28 | 2026-10-29 | 1865 |  | 7 Days Work | 9173314 |
| 1867 | 36900.37000.37100.37800.38500.41200.237800 | Fixing of window tracks | 5d | 2026-10-29 | 2026-11-03 | 1866 |  | 7 Days Work | 9173324 |
| 1868 | 36900.37000.37100.37800.38500.41200.237900 | Wire Pulling | 7d | 2026-11-03 | 2026-11-10 | 1867 |  | 7 Days Work | 9173334 |
| 1869 | 36900.37000.37100.37800.38500.41200.238000 | Gypsum Remaining | 5d | 2026-11-10 | 2026-11-15 | 1868 |  | 7 Days Work | 9173344 |
| 1870 | 36900.37000.37100.37800.38500.41200.238100 | Fixing of windoow shutter | 5d | 2026-11-15 | 2026-11-20 | 1869 |  | 7 Days Work | 9173354 |
| 1871 | 36900.37000.37100.37800.38500.41200.238200 | Putty Works - walls & ceiling | 15d | 2026-11-20 | 2026-12-05 | 1870 |  | 7 Days Work | 9173364 |
| 1872 | 36900.37000.37100.37800.38500.41200.238300 | False Ceiling- Framing | 10d | 2026-12-05 | 2026-12-15 | 1871 |  | 7 Days Work | 9173374 |
| 1873 | 36900.37000.37100.37800.38500.41200.238400 | Pre Hung Door | 3d | 2026-12-15 | 2026-12-18 | 1872 |  | 7 Days Work | 9173384 |
| 1874 | 36900.37000.37100.37800.38500.41200.238500 | Protechtion sheet | 2d | 2026-12-18 | 2026-12-20 | 1873 |  | 7 Days Work | 9173394 |
| 1875 | 36900.37000.37100.37800.38500.41200.238600 | Skirting near door | 2d | 2026-12-20 | 2026-12-22 | 1874 |  | 7 Days Work | 9173404 |
| 1876 | 36900.37000.37100.37800.38500.41200.238700 | Electrical Switch box fixing | 14d | 2026-12-22 | 2027-01-05 | 1875 |  | 7 Days Work | 9173414 |
| 1877 | 36900.37000.37100.37800.38500.41200.238800 | Fire Fighting painting | 5d | 2027-01-05 | 2027-01-10 | 1876 |  | 7 Days Work | 9173424 |
| 1878 | 36900.37000.37100.37800.38500.41200.238900 | Protection of all flooring, door & window hardware | 5d | 2027-01-10 | 2027-01-15 | 1877 |  | 7 Days Work | 9173434 |
| 1879 | 36900.37000.37100.37800.38500.41200.239000 | 1st coat primer- ceiling 1st & walls | 14d | 2027-01-15 | 2027-01-29 | 1878 |  | 7 Days Work | 9173444 |
| 1880 | 36900.37000.37100.37800.38500.41200.239100 | Wooden Flooring | 5d | 2027-01-29 | 2027-02-03 | 1879 |  | 7 Days Work | 9173454 |
| 1881 | 36900.37000.37100.37800.38500.41200.239200 | Removing of Temporary Railing & installation of Glass Railing | 5d | 2027-01-29 | 2027-02-03 | 1879 |  | 7 Days Work | 9173464 |
| 1882 | 36900.37000.37100.37800.38500.41200.239300 | Tile Grouting | 7d | 2027-01-29 | 2027-02-05 | 1879 |  | 7 Days Work | 9173474 |
| 1883 | 36900.37000.37100.37800.38500.41200.239400 | False Ceiling | 5d | 2027-02-05 | 2027-02-10 | 1882 |  | 7 Days Work | 9173484 |
| 1884 | 36900.37000.37100.37800.38500.41200.239500 | 2nd coat of primer | 10d | 2027-02-10 | 2027-02-20 | 1883 |  | 7 Days Work | 9173494 |
| 1885 | 36900.37000.37100.37800.38500.41200.239600 | Final cutting/polishing of stone flooring | 7d | 2027-02-20 | 2027-02-27 | 1884 |  | 7 Days Work | 9173504 |

| ID | WBS | Task | Duration | Start | Finish | Predecessors | Constraint | Calendar | Unique_Task_ID |
| --- | --- | --- | --- | --- | --- | --- | --- | --- | --- |
| 1886 | 36900.37000.37100.37800.38500.41200.58500 | **Toilet** | 237d | 2026-07-04 | 2027-02-26 |  | start no earlier than 2026-07-04 | 7 Days Work | 9170194 |
| 1887 | 36900.37000.37100.37800.38500.41200.58500.794800 | Toilet_MEP Clearance -1 | 7d | 2026-07-04 | 2026-07-11 | 1850 |  | 7 Days Work | 9180724 |
| 1888 | 36900.37000.37100.37800.38500.41200.58500.794900 | Toilet_Level Marking | 1d | 2026-07-11 | 2026-07-12 | 1887 |  | 7 Days Work | 9180734 |
| 1889 | 36900.37000.37100.37800.38500.41200.58500.795000 | Toilet_Chasing work for Electrical conduit & concealed plumbing | 5d | 2026-07-12 | 2026-07-17 | 1888 |  | 7 Days Work | 9180744 |
| 1890 | 36900.37000.37100.37800.38500.41200.58500.795100 | Toilet_Plumbing work 1st fix | 5d | 2026-07-17 | 2026-07-22 | 1889 |  | 7 Days Work | 9180754 |
| 1891 | 36900.37000.37100.37800.38500.41200.58500.795200 | Toilet_Sleeve/Bore Packing | 5d | 2026-07-22 | 2026-07-27 | 1890 |  | 7 Days Work | 9180764 |
| 1892 | 36900.37000.37100.37800.38500.41200.58500.795300 | Toilet_Waterproofing | 10d | 2026-07-27 | 2026-08-06 | 1891 |  | 7 Days Work | 9180774 |
| 1893 | 36900.37000.37100.37800.38500.41200.58500.795400 | Toilet_Screed | 1d | 2026-08-06 | 2026-08-07 | 1892 |  | 7 Days Work | 9180784 |
| 1894 | 36900.37000.37100.37800.38500.41200.58500.795500 | Toilet_Plumbing 2nd fix | 5d | 2026-08-07 | 2026-08-12 | 1893 |  | 7 Days Work | 9180794 |
| 1895 | 36900.37000.37100.37800.38500.41200.58500.795600 | Toilet_Ledge wall | 5d | 2026-08-12 | 2026-08-17 | 1894 |  | 7 Days Work | 9180804 |
| 1896 | 36900.37000.37100.37800.38500.41200.58500.795700 | Toilet_Cement Plaster | 5d | 2026-08-17 | 2026-08-22 | 1895 |  | 7 Days Work | 9180814 |
| 1897 | 36900.37000.37100.37800.38500.41200.58500.795800 | Toilet_Door Frame | 1d | 2026-08-22 | 2026-08-23 | 1896 |  | 7 Days Work | 9180824 |
| 1898 | 36900.37000.37100.37800.38500.41200.58500.795900 | Toilet_Wash basin & Couter | 3d | 2026-08-23 | 2026-08-26 | 1897 |  | 7 Days Work | 9180834 |
| 1899 | 36900.37000.37100.37800.38500.41200.58500.796000 | Toilet_Wall dado | 20d | 2026-08-26 | 2026-09-15 | 1898 |  | 7 Days Work | 9180844 |
| 1900 | 36900.37000.37100.37800.38500.41200.58500.796100 | Toilet_Granite Work-Ledge wall top | 3d | 2026-09-15 | 2026-09-18 | 1899 |  | 7 Days Work | 9180854 |
| 1901 | 36900.37000.37100.37800.38500.41200.58500.796200 | Toilet_Floor Tilling work | 20d | 2026-09-18 | 2026-10-08 | 1900 |  | 7 Days Work | 9180864 |
| 1902 | 36900.37000.37100.37800.38500.41200.58500.796300 | Toilet_1st row of dado | 5d | 2026-10-08 | 2026-10-13 | 1901 |  | 7 Days Work | 9180874 |
| 1903 | 36900.37000.37100.37800.38500.41200.58500.796400 | Toilet_Window Fixing | 14d | 2026-10-13 | 2026-10-27 | 1902 |  | 7 Days Work | 9180884 |
| 1904 | 36900.37000.37100.37800.38500.41200.58500.796500 | Toilet_Services above False ceiling | 21d | 2026-10-27 | 2026-11-17 | 1903 |  | 7 Days Work | 9180894 |
| 1905 | 36900.37000.37100.37800.38500.41200.58500.796600 | Toilet_False Ceiling framing | 12d | 2026-11-17 | 2026-11-29 | 1904 |  | 7 Days Work | 9180904 |
| 1906 | 36900.37000.37100.37800.38500.41200.58500.796700 | Toilet_Door Frame | 5d | 2026-11-29 | 2026-12-04 | 1905 |  | 7 Days Work | 9180914 |
| 1907 | 36900.37000.37100.37800.38500.41200.58500.796800 | Toilet_Epoxy Tile Grouting | 7d | 2027-01-29 | 2027-02-05 | 1882SS |  | 7 Days Work | 9180924 |
| 1908 | 36900.37000.37100.37800.38500.41200.58500.796900 | Toilet_False ceiling board fixing, CP Sanitary Fixture, Electric Fixture | 21d | 2027-02-05 | 2027-02-26 | 1907 |  | 7 Days Work | 9180934 |
| 1909 | 36900.37000.37100.37800.38500.41300 | **9th Habitable/11th Floor** | 245d | 2026-07-06 | 2027-03-08 |  | start no earlier than 2026-07-06 | 7 Days Work | 9170004 |
| 1910 | 36900.37000.37100.37800.38500.41300.239700 | Post Pour | 7d | 2026-07-06 | 2026-07-13 | 1417FS+15d |  | 7 Days Work | 9173514 |
| 1911 | 36900.37000.37100.37800.38500.41300.239800 | MEP Clearance -1 | 5d | 2026-07-13 | 2026-07-18 | 1910 |  | 7 Days Work | 9173524 |
| 1912 | 36900.37000.37100.37800.38500.41300.239900 | Benchmark | 1d | 2026-07-18 | 2026-07-19 | 1911 |  | 7 Days Work | 9173534 |
| 1913 | 36900.37000.37100.37800.38500.41300.240000 | Temporary Railing | 3d | 2026-07-19 | 2026-07-22 | 1912 |  | 7 Days Work | 9173544 |
| 1914 | 36900.37000.37100.37800.38500.41300.240100 | Blockwork | 10d | 2026-07-22 | 2026-08-01 | 1913 |  | 7 Days Work | 9173554 |
| 1915 | 36900.37000.37100.37800.38500.41300.240200 | MEP Clearance -2 | 10d | 2026-08-01 | 2026-08-11 | 1914 |  | 7 Days Work | 9173564 |
| 1916 | 36900.37000.37100.37800.38500.41300.240300 | Gypsum Plaster | 14d | 2026-08-11 | 2026-08-25 | 1915 |  | 7 Days Work | 9173574 |
| 1917 | 36900.37000.37100.37800.38500.41300.240400 | Kitchen Platform | 3d | 2026-08-25 | 2026-08-28 | 1916 |  | 7 Days Work | 9173584 |
| 1918 | 36900.37000.37100.37800.38500.41300.240500 | Kitchen dado | 7d | 2026-08-28 | 2026-09-04 | 1917 |  | 7 Days Work | 9173594 |
| 1919 | 36900.37000.37100.37800.38500.41300.240600 | Fire Fighting | 5d | 2026-09-04 | 2026-09-09 | 1918 |  | 7 Days Work | 9173604 |
| 1920 | 36900.37000.37100.37800.38500.41300.240700 | Anticapilary | 5d | 2026-09-09 | 2026-09-14 | 1919 |  | 7 Days Work | 9173614 |
| 1921 | 36900.37000.37100.37800.38500.41300.240800 | Stone Laying | 10d | 2026-10-17 | 2026-10-27 | 1961 |  | 7 Days Work | 9173624 |
| 1922 | 36900.37000.37100.37800.38500.41300.240900 | Tiles Laying | 7d | 2026-10-17 | 2026-10-24 | 1961 |  | 7 Days Work | 9173634 |
| 1923 | 36900.37000.37100.37800.38500.41300.241000 | 1st cutting/polishing of stone flooring | 7d | 2026-10-24 | 2026-10-31 | 1922 |  | 7 Days Work | 9173644 |
| 1924 | 36900.37000.37100.37800.38500.41300.241100 | Tiles/Stone skirting | 5d | 2026-10-31 | 2026-11-05 | 1923 |  | 7 Days Work | 9173654 |
| 1925 | 36900.37000.37100.37800.38500.41300.241200 | Protechtion sheet | 1d | 2026-11-05 | 2026-11-06 | 1924 |  | 7 Days Work | 9173664 |
| 1926 | 36900.37000.37100.37800.38500.41300.241300 | Installation of Temporary Door | 1d | 2026-11-06 | 2026-11-07 | 1925 |  | 7 Days Work | 9173674 |
| 1927 | 36900.37000.37100.37800.38500.41300.241400 | Fixing of window tracks | 5d | 2026-11-07 | 2026-11-12 | 1926 |  | 7 Days Work | 9173684 |
| 1928 | 36900.37000.37100.37800.38500.41300.241500 | Wire Pulling | 7d | 2026-11-12 | 2026-11-19 | 1927 |  | 7 Days Work | 9173694 |
| 1929 | 36900.37000.37100.37800.38500.41300.241600 | Gypsum Remaining | 5d | 2026-11-19 | 2026-11-24 | 1928 |  | 7 Days Work | 9173704 |
| 1930 | 36900.37000.37100.37800.38500.41300.241700 | Fixing of windoow shutter | 5d | 2026-11-24 | 2026-11-29 | 1929 |  | 7 Days Work | 9173714 |
| 1931 | 36900.37000.37100.37800.38500.41300.241800 | Putty Works - walls & ceiling | 15d | 2026-11-29 | 2026-12-14 | 1930 |  | 7 Days Work | 9173724 |
| 1932 | 36900.37000.37100.37800.38500.41300.241900 | False Ceiling- Framing | 10d | 2026-12-14 | 2026-12-24 | 1931 |  | 7 Days Work | 9173734 |
| 1933 | 36900.37000.37100.37800.38500.41300.242000 | Pre Hung Door | 3d | 2026-12-24 | 2026-12-27 | 1932 |  | 7 Days Work | 9173744 |
| 1934 | 36900.37000.37100.37800.38500.41300.242100 | Protechtion sheet | 2d | 2026-12-27 | 2026-12-29 | 1933 |  | 7 Days Work | 9173754 |
| 1935 | 36900.37000.37100.37800.38500.41300.242200 | Skirting near door | 2d | 2026-12-29 | 2026-12-31 | 1934 |  | 7 Days Work | 9173764 |
| 1936 | 36900.37000.37100.37800.38500.41300.242300 | Electrical Switch box fixing | 14d | 2026-12-31 | 2027-01-14 | 1935 |  | 7 Days Work | 9173774 |
| 1937 | 36900.37000.37100.37800.38500.41300.242400 | Fire Fighting painting | 5d | 2027-01-14 | 2027-01-19 | 1936 |  | 7 Days Work | 9173784 |
| 1938 | 36900.37000.37100.37800.38500.41300.242500 | Protection of all flooring, door & window hardware | 5d | 2027-01-19 | 2027-01-24 | 1937 |  | 7 Days Work | 9173794 |
| 1939 | 36900.37000.37100.37800.38500.41300.242600 | 1st coat primer- ceiling 1st & walls | 14d | 2027-01-24 | 2027-02-07 | 1938 |  | 7 Days Work | 9173804 |
| 1940 | 36900.37000.37100.37800.38500.41300.242700 | Wooden Flooring | 5d | 2027-02-07 | 2027-02-12 | 1939 |  | 7 Days Work | 9173814 |
| 1941 | 36900.37000.37100.37800.38500.41300.242800 | Removing of Temporary Railing & installation of Glass Railing | 5d | 2027-02-07 | 2027-02-12 | 1939 |  | 7 Days Work | 9173824 |
| 1942 | 36900.37000.37100.37800.38500.41300.242900 | Tile Grouting | 7d | 2027-02-07 | 2027-02-14 | 1939 |  | 7 Days Work | 9173834 |
| 1943 | 36900.37000.37100.37800.38500.41300.243000 | False Ceiling | 5d | 2027-02-14 | 2027-02-19 | 1942 |  | 7 Days Work | 9173844 |
| 1944 | 36900.37000.37100.37800.38500.41300.243100 | 2nd coat of primer | 10d | 2027-02-19 | 2027-03-01 | 1943 |  | 7 Days Work | 9173854 |
| 1945 | 36900.37000.37100.37800.38500.41300.243200 | Final cutting/polishing of stone flooring | 7d | 2027-03-01 | 2027-03-08 | 1944 |  | 7 Days Work | 9173864 |

| ID | WBS | Task | Duration | Start | Finish | Predecessors | Constraint | Calendar | Unique_Task_ID |
| --- | --- | --- | --- | --- | --- | --- | --- | --- | --- |
| 1946 | 36900.37000.37100.37800.38500.41300.58600 | **Toilet** | 237d | 2026-07-13 | 2027-03-07 |  | start no earlier than 2026-07-13 | 7 Days Work | 9170204 |
| 1947 | 36900.37000.37100.37800.38500.41300.58600.797000 | Toilet_MEP Clearance -1 | 7d | 2026-07-13 | 2026-07-20 | 1910 |  | 7 Days Work | 9180944 |
| 1948 | 36900.37000.37100.37800.38500.41300.58600.797100 | Toilet_Level Marking | 1d | 2026-07-20 | 2026-07-21 | 1947 |  | 7 Days Work | 9180954 |
| 1949 | 36900.37000.37100.37800.38500.41300.58600.797200 | Toilet_Chasing work for Electrical conduit & concealed plumbing | 5d | 2026-07-21 | 2026-07-26 | 1948 |  | 7 Days Work | 9180964 |
| 1950 | 36900.37000.37100.37800.38500.41300.58600.797300 | Toilet_Plumbing work 1st fix | 5d | 2026-07-26 | 2026-07-31 | 1949 |  | 7 Days Work | 9180974 |
| 1951 | 36900.37000.37100.37800.38500.41300.58600.797400 | Toilet_Sleeve/Bore Packing | 5d | 2026-07-31 | 2026-08-05 | 1950 |  | 7 Days Work | 9180984 |
| 1952 | 36900.37000.37100.37800.38500.41300.58600.797500 | Toilet_Waterproofing | 10d | 2026-08-05 | 2026-08-15 | 1951 |  | 7 Days Work | 9180994 |
| 1953 | 36900.37000.37100.37800.38500.41300.58600.797600 | Toilet_Screed | 1d | 2026-08-15 | 2026-08-16 | 1952 |  | 7 Days Work | 9181004 |
| 1954 | 36900.37000.37100.37800.38500.41300.58600.797700 | Toilet_Plumbing 2nd fix | 5d | 2026-08-16 | 2026-08-21 | 1953 |  | 7 Days Work | 9181014 |
| 1955 | 36900.37000.37100.37800.38500.41300.58600.797800 | Toilet_Ledge wall | 5d | 2026-08-21 | 2026-08-26 | 1954 |  | 7 Days Work | 9181024 |
| 1956 | 36900.37000.37100.37800.38500.41300.58600.797900 | Toilet_Cement Plaster | 5d | 2026-08-26 | 2026-08-31 | 1955 |  | 7 Days Work | 9181034 |
| 1957 | 36900.37000.37100.37800.38500.41300.58600.798000 | Toilet_Door Frame | 1d | 2026-08-31 | 2026-09-01 | 1956 |  | 7 Days Work | 9181044 |
| 1958 | 36900.37000.37100.37800.38500.41300.58600.798100 | Toilet_Wash basin & Couter | 3d | 2026-09-01 | 2026-09-04 | 1957 |  | 7 Days Work | 9181054 |
| 1959 | 36900.37000.37100.37800.38500.41300.58600.798200 | Toilet_Wall dado | 20d | 2026-09-04 | 2026-09-24 | 1958 |  | 7 Days Work | 9181064 |
| 1960 | 36900.37000.37100.37800.38500.41300.58600.798300 | Toilet_Granite Work-Ledge wall top | 3d | 2026-09-24 | 2026-09-27 | 1959 |  | 7 Days Work | 9181074 |
| 1961 | 36900.37000.37100.37800.38500.41300.58600.798400 | Toilet_Floor Tilling work | 20d | 2026-09-27 | 2026-10-17 | 1960 |  | 7 Days Work | 9181084 |
| 1962 | 36900.37000.37100.37800.38500.41300.58600.798500 | Toilet_1st row of dado | 5d | 2026-10-17 | 2026-10-22 | 1961 |  | 7 Days Work | 9181094 |
| 1963 | 36900.37000.37100.37800.38500.41300.58600.798600 | Toilet_Window Fixing | 14d | 2026-10-22 | 2026-11-05 | 1962 |  | 7 Days Work | 9181104 |
| 1964 | 36900.37000.37100.37800.38500.41300.58600.798700 | Toilet_Services above False ceiling | 21d | 2026-11-05 | 2026-11-26 | 1963 |  | 7 Days Work | 9181114 |
| 1965 | 36900.37000.37100.37800.38500.41300.58600.798800 | Toilet_False Ceiling framing | 12d | 2026-11-26 | 2026-12-08 | 1964 |  | 7 Days Work | 9181124 |
| 1966 | 36900.37000.37100.37800.38500.41300.58600.798900 | Toilet_Door Frame | 5d | 2026-12-08 | 2026-12-13 | 1965 |  | 7 Days Work | 9181134 |
| 1967 | 36900.37000.37100.37800.38500.41300.58600.799000 | Toilet_Epoxy Tile Grouting | 7d | 2027-02-07 | 2027-02-14 | 1942SS |  | 7 Days Work | 9181144 |
| 1968 | 36900.37000.37100.37800.38500.41300.58600.799100 | Toilet_False ceiling board fixing, CP Sanitary Fixture, Electric Fixture | 21d | 2027-02-14 | 2027-03-07 | 1967 |  | 7 Days Work | 9181154 |
| 1969 | 36900.37000.37100.37800.38500.41400 | **10th Habitable/12th Floor** | 245d | 2026-07-15 | 2027-03-17 |  | start no earlier than 2026-07-15 | 7 Days Work | 9170014 |
| 1970 | 36900.37000.37100.37800.38500.41400.243300 | Post Pour | 7d | 2026-07-15 | 2026-07-22 | 1418FS+15d |  | 7 Days Work | 9173874 |
| 1971 | 36900.37000.37100.37800.38500.41400.243400 | MEP Clearance -1 | 5d | 2026-07-22 | 2026-07-27 | 1970 |  | 7 Days Work | 9173884 |
| 1972 | 36900.37000.37100.37800.38500.41400.243500 | Benchmark | 1d | 2026-07-27 | 2026-07-28 | 1971 |  | 7 Days Work | 9173894 |
| 1973 | 36900.37000.37100.37800.38500.41400.243600 | Temporary Railing | 3d | 2026-07-28 | 2026-07-31 | 1972 |  | 7 Days Work | 9173904 |
| 1974 | 36900.37000.37100.37800.38500.41400.243700 | Blockwork | 10d | 2026-07-31 | 2026-08-10 | 1973 |  | 7 Days Work | 9173914 |
| 1975 | 36900.37000.37100.37800.38500.41400.243800 | MEP Clearance -2 | 10d | 2026-08-10 | 2026-08-20 | 1974 |  | 7 Days Work | 9173924 |
| 1976 | 36900.37000.37100.37800.38500.41400.243900 | Gypsum Plaster | 14d | 2026-08-20 | 2026-09-03 | 1975 |  | 7 Days Work | 9173934 |
| 1977 | 36900.37000.37100.37800.38500.41400.244000 | Kitchen Platform | 3d | 2026-09-03 | 2026-09-06 | 1976 |  | 7 Days Work | 9173944 |
| 1978 | 36900.37000.37100.37800.38500.41400.244100 | Kitchen dado | 7d | 2026-09-06 | 2026-09-13 | 1977 |  | 7 Days Work | 9173954 |
| 1979 | 36900.37000.37100.37800.38500.41400.244200 | Fire Fighting | 5d | 2026-09-13 | 2026-09-18 | 1978 |  | 7 Days Work | 9173964 |
| 1980 | 36900.37000.37100.37800.38500.41400.244300 | Anticapilary | 5d | 2026-09-18 | 2026-09-23 | 1979 |  | 7 Days Work | 9173974 |
| 1981 | 36900.37000.37100.37800.38500.41400.244400 | Stone Laying | 10d | 2026-10-26 | 2026-11-05 | 2021 |  | 7 Days Work | 9173984 |
| 1982 | 36900.37000.37100.37800.38500.41400.244500 | Tiles Laying | 7d | 2026-10-26 | 2026-11-02 | 2021 |  | 7 Days Work | 9173994 |
| 1983 | 36900.37000.37100.37800.38500.41400.244600 | 1st cutting/polishing of stone flooring | 7d | 2026-11-02 | 2026-11-09 | 1982 |  | 7 Days Work | 9174004 |
| 1984 | 36900.37000.37100.37800.38500.41400.244700 | Tiles/Stone skirting | 5d | 2026-11-09 | 2026-11-14 | 1983 |  | 7 Days Work | 9174014 |
| 1985 | 36900.37000.37100.37800.38500.41400.244800 | Protechtion sheet | 1d | 2026-11-14 | 2026-11-15 | 1984 |  | 7 Days Work | 9174024 |
| 1986 | 36900.37000.37100.37800.38500.41400.244900 | Installation of Temporary Door | 1d | 2026-11-15 | 2026-11-16 | 1985 |  | 7 Days Work | 9174034 |
| 1987 | 36900.37000.37100.37800.38500.41400.245000 | Fixing of window tracks | 5d | 2026-11-16 | 2026-11-21 | 1986 |  | 7 Days Work | 9174044 |
| 1988 | 36900.37000.37100.37800.38500.41400.245100 | Wire Pulling | 7d | 2026-11-21 | 2026-11-28 | 1987 |  | 7 Days Work | 9174054 |
| 1989 | 36900.37000.37100.37800.38500.41400.245200 | Gypsum Remaining | 5d | 2026-11-28 | 2026-12-03 | 1988 |  | 7 Days Work | 9174064 |
| 1990 | 36900.37000.37100.37800.38500.41400.245300 | Fixing of windoow shutter | 5d | 2026-12-03 | 2026-12-08 | 1989 |  | 7 Days Work | 9174074 |
| 1991 | 36900.37000.37100.37800.38500.41400.245400 | Putty Works - walls & ceiling | 15d | 2026-12-08 | 2026-12-23 | 1990 |  | 7 Days Work | 9174084 |
| 1992 | 36900.37000.37100.37800.38500.41400.245500 | False Ceiling- Framing | 10d | 2026-12-23 | 2027-01-02 | 1991 |  | 7 Days Work | 9174094 |
| 1993 | 36900.37000.37100.37800.38500.41400.245600 | Pre Hung Door | 3d | 2027-01-02 | 2027-01-05 | 1992 |  | 7 Days Work | 9174104 |
| 1994 | 36900.37000.37100.37800.38500.41400.245700 | Protechtion sheet | 2d | 2027-01-05 | 2027-01-07 | 1993 |  | 7 Days Work | 9174114 |
| 1995 | 36900.37000.37100.37800.38500.41400.245800 | Skirting near door | 2d | 2027-01-07 | 2027-01-09 | 1994 |  | 7 Days Work | 9174124 |
| 1996 | 36900.37000.37100.37800.38500.41400.245900 | Electrical Switch box fixing | 14d | 2027-01-09 | 2027-01-23 | 1995 |  | 7 Days Work | 9174134 |
| 1997 | 36900.37000.37100.37800.38500.41400.246000 | Fire Fighting painting | 5d | 2027-01-23 | 2027-01-28 | 1996 |  | 7 Days Work | 9174144 |
| 1998 | 36900.37000.37100.37800.38500.41400.246100 | Protection of all flooring, door & window hardware | 5d | 2027-01-28 | 2027-02-02 | 1997 |  | 7 Days Work | 9174154 |
| 1999 | 36900.37000.37100.37800.38500.41400.246200 | 1st coat primer- ceiling 1st & walls | 14d | 2027-02-02 | 2027-02-16 | 1998 |  | 7 Days Work | 9174164 |
| 2000 | 36900.37000.37100.37800.38500.41400.246300 | Wooden Flooring | 5d | 2027-02-16 | 2027-02-21 | 1999 |  | 7 Days Work | 9174174 |
| 2001 | 36900.37000.37100.37800.38500.41400.246400 | Removing of Temporary Railing & installation of Glass Railing | 5d | 2027-02-16 | 2027-02-21 | 1999 |  | 7 Days Work | 9174184 |
| 2002 | 36900.37000.37100.37800.38500.41400.246500 | Tile Grouting | 7d | 2027-02-16 | 2027-02-23 | 1999 |  | 7 Days Work | 9174194 |
| 2003 | 36900.37000.37100.37800.38500.41400.246600 | False Ceiling | 5d | 2027-02-23 | 2027-02-28 | 2002 |  | 7 Days Work | 9174204 |
| 2004 | 36900.37000.37100.37800.38500.41400.246700 | 2nd coat of primer | 10d | 2027-02-28 | 2027-03-10 | 2003 |  | 7 Days Work | 9174214 |
| 2005 | 36900.37000.37100.37800.38500.41400.246800 | Final cutting/polishing of stone flooring | 7d | 2027-03-10 | 2027-03-17 | 2004 |  | 7 Days Work | 9174224 |

| ID | WBS | Task | Duration | Start | Finish | Predecessors | Constraint | Calendar | Unique_Task_ID |
| --- | --- | --- | --- | --- | --- | --- | --- | --- | --- |
| 2006 | 36900.37000.37100.37800.38500.41400.58800 | **Toilet** | 237d | 2026-07-22 | 2027-03-16 |  | start no earlier than 2026-07-22 | 7 Days Work | 9170214 |
| 2007 | 36900.37000.37100.37800.38500.41400.58800.799200 | Toilet_MEP Clearance -1 | 7d | 2026-07-22 | 2026-07-29 | 1970 |  | 7 Days Work | 9181164 |
| 2008 | 36900.37000.37100.37800.38500.41400.58800.799300 | Toilet_Level Marking | 1d | 2026-07-29 | 2026-07-30 | 2007 |  | 7 Days Work | 9181174 |
| 2009 | 36900.37000.37100.37800.38500.41400.58800.799400 | Toilet_Chasing work for Electrical conduit & concealed plumbing | 5d | 2026-07-30 | 2026-08-04 | 2008 |  | 7 Days Work | 9181184 |
| 2010 | 36900.37000.37100.37800.38500.41400.58800.799500 | Toilet_Plumbing work 1st fix | 5d | 2026-08-04 | 2026-08-09 | 2009 |  | 7 Days Work | 9181194 |
| 2011 | 36900.37000.37100.37800.38500.41400.58800.799600 | Toilet_Sleeve/Bore Packing | 5d | 2026-08-09 | 2026-08-14 | 2010 |  | 7 Days Work | 9181204 |
| 2012 | 36900.37000.37100.37800.38500.41400.58800.799700 | Toilet_Waterproofing | 10d | 2026-08-14 | 2026-08-24 | 2011 |  | 7 Days Work | 9181214 |
| 2013 | 36900.37000.37100.37800.38500.41400.58800.799800 | Toilet_Screed | 1d | 2026-08-24 | 2026-08-25 | 2012 |  | 7 Days Work | 9181224 |
| 2014 | 36900.37000.37100.37800.38500.41400.58800.799900 | Toilet_Plumbing 2nd fix | 5d | 2026-08-25 | 2026-08-30 | 2013 |  | 7 Days Work | 9181234 |
| 2015 | 36900.37000.37100.37800.38500.41400.58800.800000 | Toilet_Ledge wall | 5d | 2026-08-30 | 2026-09-04 | 2014 |  | 7 Days Work | 9181244 |
| 2016 | 36900.37000.37100.37800.38500.41400.58800.800100 | Toilet_Cement Plaster | 5d | 2026-09-04 | 2026-09-09 | 2015 |  | 7 Days Work | 9181254 |
| 2017 | 36900.37000.37100.37800.38500.41400.58800.800200 | Toilet_Door Frame | 1d | 2026-09-09 | 2026-09-10 | 2016 |  | 7 Days Work | 9181264 |
| 2018 | 36900.37000.37100.37800.38500.41400.58800.800300 | Toilet_Wash basin & Couter | 3d | 2026-09-10 | 2026-09-13 | 2017 |  | 7 Days Work | 9181274 |
| 2019 | 36900.37000.37100.37800.38500.41400.58800.800400 | Toilet_Wall dado | 20d | 2026-09-13 | 2026-10-03 | 2018 |  | 7 Days Work | 9181284 |
| 2020 | 36900.37000.37100.37800.38500.41400.58800.800500 | Toilet_Granite Work-Ledge wall top | 3d | 2026-10-03 | 2026-10-06 | 2019 |  | 7 Days Work | 9181294 |
| 2021 | 36900.37000.37100.37800.38500.41400.58800.800600 | Toilet_Floor Tilling work | 20d | 2026-10-06 | 2026-10-26 | 2020 |  | 7 Days Work | 9181304 |
| 2022 | 36900.37000.37100.37800.38500.41400.58800.800700 | Toilet_1st row of dado | 5d | 2026-10-26 | 2026-10-31 | 2021 |  | 7 Days Work | 9181314 |
| 2023 | 36900.37000.37100.37800.38500.41400.58800.800800 | Toilet_Window Fixing | 14d | 2026-10-31 | 2026-11-14 | 2022 |  | 7 Days Work | 9181324 |
| 2024 | 36900.37000.37100.37800.38500.41400.58800.800900 | Toilet_Services above False ceiling | 21d | 2026-11-14 | 2026-12-05 | 2023 |  | 7 Days Work | 9181334 |
| 2025 | 36900.37000.37100.37800.38500.41400.58800.801000 | Toilet_False Ceiling framing | 12d | 2026-12-05 | 2026-12-17 | 2024 |  | 7 Days Work | 9181344 |
| 2026 | 36900.37000.37100.37800.38500.41400.58800.801100 | Toilet_Door Frame | 5d | 2026-12-17 | 2026-12-22 | 2025 |  | 7 Days Work | 9181354 |
| 2027 | 36900.37000.37100.37800.38500.41400.58800.801200 | Toilet_Epoxy Tile Grouting | 7d | 2027-02-16 | 2027-02-23 | 2002SS |  | 7 Days Work | 9181364 |
| 2028 | 36900.37000.37100.37800.38500.41400.58800.801300 | Toilet_False ceiling board fixing, CP Sanitary Fixture, Electric Fixture | 21d | 2027-02-23 | 2027-03-16 | 2027 |  | 7 Days Work | 9181374 |
| 2029 | 36900.37000.37100.37800.38500.41500 | **11th Habitable/13th Floor** | 245d | 2026-07-24 | 2027-03-26 |  | start no earlier than 2026-07-24 | 7 Days Work | 9170024 |
| 2030 | 36900.37000.37100.37800.38500.41500.246900 | Post Pour | 7d | 2026-07-24 | 2026-07-31 | 1419FS+15d |  | 7 Days Work | 9174234 |
| 2031 | 36900.37000.37100.37800.38500.41500.247000 | MEP Clearance -1 | 5d | 2026-07-31 | 2026-08-05 | 2030 |  | 7 Days Work | 9174244 |
| 2032 | 36900.37000.37100.37800.38500.41500.247100 | Benchmark | 1d | 2026-08-05 | 2026-08-06 | 2031 |  | 7 Days Work | 9174254 |
| 2033 | 36900.37000.37100.37800.38500.41500.247200 | Temporary Railing | 3d | 2026-08-06 | 2026-08-09 | 2032 |  | 7 Days Work | 9174264 |
| 2034 | 36900.37000.37100.37800.38500.41500.247300 | Blockwork | 10d | 2026-08-09 | 2026-08-19 | 2033 |  | 7 Days Work | 9174274 |
| 2035 | 36900.37000.37100.37800.38500.41500.247400 | MEP Clearance -2 | 10d | 2026-08-19 | 2026-08-29 | 2034 |  | 7 Days Work | 9174284 |
| 2036 | 36900.37000.37100.37800.38500.41500.247500 | Gypsum Plaster | 14d | 2026-08-29 | 2026-09-12 | 2035 |  | 7 Days Work | 9174294 |
| 2037 | 36900.37000.37100.37800.38500.41500.247600 | Kitchen Platform | 3d | 2026-09-12 | 2026-09-15 | 2036 |  | 7 Days Work | 9174304 |
| 2038 | 36900.37000.37100.37800.38500.41500.247700 | Kitchen dado | 7d | 2026-09-15 | 2026-09-22 | 2037 |  | 7 Days Work | 9174314 |
| 2039 | 36900.37000.37100.37800.38500.41500.247800 | Fire Fighting | 5d | 2026-09-22 | 2026-09-27 | 2038 |  | 7 Days Work | 9174324 |
| 2040 | 36900.37000.37100.37800.38500.41500.247900 | Anticapilary | 5d | 2026-09-27 | 2026-10-02 | 2039 |  | 7 Days Work | 9174334 |
| 2041 | 36900.37000.37100.37800.38500.41500.248000 | Stone Laying | 10d | 2026-11-04 | 2026-11-14 | 2081 |  | 7 Days Work | 9174344 |
| 2042 | 36900.37000.37100.37800.38500.41500.248100 | Tiles Laying | 7d | 2026-11-04 | 2026-11-11 | 2081 |  | 7 Days Work | 9174354 |
| 2043 | 36900.37000.37100.37800.38500.41500.248200 | 1st cutting/polishing of stone flooring | 7d | 2026-11-11 | 2026-11-18 | 2042 |  | 7 Days Work | 9174364 |
| 2044 | 36900.37000.37100.37800.38500.41500.248300 | Tiles/Stone skirting | 5d | 2026-11-18 | 2026-11-23 | 2043 |  | 7 Days Work | 9174374 |
| 2045 | 36900.37000.37100.37800.38500.41500.248400 | Protechtion sheet | 1d | 2026-11-23 | 2026-11-24 | 2044 |  | 7 Days Work | 9174384 |
| 2046 | 36900.37000.37100.37800.38500.41500.248500 | Installation of Temporary Door | 1d | 2026-11-24 | 2026-11-25 | 2045 |  | 7 Days Work | 9174394 |
| 2047 | 36900.37000.37100.37800.38500.41500.248600 | Fixing of window tracks | 5d | 2026-11-25 | 2026-11-30 | 2046 |  | 7 Days Work | 9174404 |
| 2048 | 36900.37000.37100.37800.38500.41500.248700 | Wire Pulling | 7d | 2026-11-30 | 2026-12-07 | 2047 |  | 7 Days Work | 9174414 |
| 2049 | 36900.37000.37100.37800.38500.41500.248800 | Gypsum Remaining | 5d | 2026-12-07 | 2026-12-12 | 2048 |  | 7 Days Work | 9174424 |
| 2050 | 36900.37000.37100.37800.38500.41500.248900 | Fixing of windoow shutter | 5d | 2026-12-12 | 2026-12-17 | 2049 |  | 7 Days Work | 9174434 |
| 2051 | 36900.37000.37100.37800.38500.41500.249000 | Putty Works - walls & ceiling | 15d | 2026-12-17 | 2027-01-01 | 2050 |  | 7 Days Work | 9174444 |
| 2052 | 36900.37000.37100.37800.38500.41500.249100 | False Ceiling- Framing | 10d | 2027-01-01 | 2027-01-11 | 2051 |  | 7 Days Work | 9174454 |
| 2053 | 36900.37000.37100.37800.38500.41500.249200 | Pre Hung Door | 3d | 2027-01-11 | 2027-01-14 | 2052 |  | 7 Days Work | 9174464 |
| 2054 | 36900.37000.37100.37800.38500.41500.249300 | Protechtion sheet | 2d | 2027-01-14 | 2027-01-16 | 2053 |  | 7 Days Work | 9174474 |
| 2055 | 36900.37000.37100.37800.38500.41500.249400 | Skirting near door | 2d | 2027-01-16 | 2027-01-18 | 2054 |  | 7 Days Work | 9174484 |
| 2056 | 36900.37000.37100.37800.38500.41500.249500 | Electrical Switch box fixing | 14d | 2027-01-18 | 2027-02-01 | 2055 |  | 7 Days Work | 9174494 |
| 2057 | 36900.37000.37100.37800.38500.41500.249600 | Fire Fighting painting | 5d | 2027-02-01 | 2027-02-06 | 2056 |  | 7 Days Work | 9174504 |
| 2058 | 36900.37000.37100.37800.38500.41500.249700 | Protection of all flooring, door & window hardware | 5d | 2027-02-06 | 2027-02-11 | 2057 |  | 7 Days Work | 9174514 |
| 2059 | 36900.37000.37100.37800.38500.41500.249800 | 1st coat primer- ceiling 1st & walls | 14d | 2027-02-11 | 2027-02-25 | 2058 |  | 7 Days Work | 9174524 |
| 2060 | 36900.37000.37100.37800.38500.41500.249900 | Wooden Flooring | 5d | 2027-02-25 | 2027-03-02 | 2059 |  | 7 Days Work | 9174534 |
| 2061 | 36900.37000.37100.37800.38500.41500.250000 | Removing of Temporary Railing & installation of Glass Railing | 5d | 2027-02-25 | 2027-03-02 | 2059 |  | 7 Days Work | 9174544 |
| 2062 | 36900.37000.37100.37800.38500.41500.250100 | Tile Grouting | 7d | 2027-02-25 | 2027-03-04 | 2059 |  | 7 Days Work | 9174554 |
| 2063 | 36900.37000.37100.37800.38500.41500.250200 | False Ceiling | 5d | 2027-03-04 | 2027-03-09 | 2062 |  | 7 Days Work | 9174564 |
| 2064 | 36900.37000.37100.37800.38500.41500.250300 | 2nd coat of primer | 10d | 2027-03-09 | 2027-03-19 | 2063 |  | 7 Days Work | 9174574 |
| 2065 | 36900.37000.37100.37800.38500.41500.250400 | Final cutting/polishing of stone flooring | 7d | 2027-03-19 | 2027-03-26 | 2064 |  | 7 Days Work | 9174584 |

| ID | WBS | Task | Duration | Start | Finish | Predecessors | Constraint | Calendar | Unique_Task_ID |
| --- | --- | --- | --- | --- | --- | --- | --- | --- | --- |
| 2066 | 36900.37000.37100.37800.38500.41500.58900 | **Toilet** | 237d | 2026-07-31 | 2027-03-25 |  | start no earlier than 2026-07-31 | 7 Days Work | 9170224 |
| 2067 | 36900.37000.37100.37800.38500.41500.58900.801400 | Toilet_MEP Clearance -1 | 7d | 2026-07-31 | 2026-08-07 | 2030 |  | 7 Days Work | 9181384 |
| 2068 | 36900.37000.37100.37800.38500.41500.58900.801500 | Toilet_Level Marking | 1d | 2026-08-07 | 2026-08-08 | 2067 |  | 7 Days Work | 9181394 |
| 2069 | 36900.37000.37100.37800.38500.41500.58900.801600 | Toilet_Chasing work for Electrical conduit & concealed plumbing | 5d | 2026-08-08 | 2026-08-13 | 2068 |  | 7 Days Work | 9181404 |
| 2070 | 36900.37000.37100.37800.38500.41500.58900.801700 | Toilet_Plumbing work 1st fix | 5d | 2026-08-13 | 2026-08-18 | 2069 |  | 7 Days Work | 9181414 |
| 2071 | 36900.37000.37100.37800.38500.41500.58900.801800 | Toilet_Sleeve/Bore Packing | 5d | 2026-08-18 | 2026-08-23 | 2070 |  | 7 Days Work | 9181424 |
| 2072 | 36900.37000.37100.37800.38500.41500.58900.801900 | Toilet_Waterproofing | 10d | 2026-08-23 | 2026-09-02 | 2071 |  | 7 Days Work | 9181434 |
| 2073 | 36900.37000.37100.37800.38500.41500.58900.802000 | Toilet_Screed | 1d | 2026-09-02 | 2026-09-03 | 2072 |  | 7 Days Work | 9181444 |
| 2074 | 36900.37000.37100.37800.38500.41500.58900.802100 | Toilet_Plumbing 2nd fix | 5d | 2026-09-03 | 2026-09-08 | 2073 |  | 7 Days Work | 9181454 |
| 2075 | 36900.37000.37100.37800.38500.41500.58900.802200 | Toilet_Ledge wall | 5d | 2026-09-08 | 2026-09-13 | 2074 |  | 7 Days Work | 9181464 |
| 2076 | 36900.37000.37100.37800.38500.41500.58900.802300 | Toilet_Cement Plaster | 5d | 2026-09-13 | 2026-09-18 | 2075 |  | 7 Days Work | 9181474 |
| 2077 | 36900.37000.37100.37800.38500.41500.58900.802400 | Toilet_Door Frame | 1d | 2026-09-18 | 2026-09-19 | 2076 |  | 7 Days Work | 9181484 |
| 2078 | 36900.37000.37100.37800.38500.41500.58900.802500 | Toilet_Wash basin & Couter | 3d | 2026-09-19 | 2026-09-22 | 2077 |  | 7 Days Work | 9181494 |
| 2079 | 36900.37000.37100.37800.38500.41500.58900.802600 | Toilet_Wall dado | 20d | 2026-09-22 | 2026-10-12 | 2078 |  | 7 Days Work | 9181504 |
| 2080 | 36900.37000.37100.37800.38500.41500.58900.802700 | Toilet_Granite Work-Ledge wall top | 3d | 2026-10-12 | 2026-10-15 | 2079 |  | 7 Days Work | 9181514 |
| 2081 | 36900.37000.37100.37800.38500.41500.58900.802800 | Toilet_Floor Tilling work | 20d | 2026-10-15 | 2026-11-04 | 2080 |  | 7 Days Work | 9181524 |
| 2082 | 36900.37000.37100.37800.38500.41500.58900.802900 | Toilet_1st row of dado | 5d | 2026-11-04 | 2026-11-09 | 2081 |  | 7 Days Work | 9181534 |
| 2083 | 36900.37000.37100.37800.38500.41500.58900.803000 | Toilet_Window Fixing | 14d | 2026-11-09 | 2026-11-23 | 2082 |  | 7 Days Work | 9181544 |
| 2084 | 36900.37000.37100.37800.38500.41500.58900.803100 | Toilet_Services above False ceiling | 21d | 2026-11-23 | 2026-12-14 | 2083 |  | 7 Days Work | 9181554 |
| 2085 | 36900.37000.37100.37800.38500.41500.58900.803200 | Toilet_False Ceiling framing | 12d | 2026-12-14 | 2026-12-26 | 2084 |  | 7 Days Work | 9181564 |
| 2086 | 36900.37000.37100.37800.38500.41500.58900.803300 | Toilet_Door Frame | 5d | 2026-12-26 | 2026-12-31 | 2085 |  | 7 Days Work | 9181574 |
| 2087 | 36900.37000.37100.37800.38500.41500.58900.803400 | Toilet_Epoxy Tile Grouting | 7d | 2027-02-25 | 2027-03-04 | 2062SS |  | 7 Days Work | 9181584 |
| 2088 | 36900.37000.37100.37800.38500.41500.58900.803500 | Toilet_False ceiling board fixing, CP Sanitary Fixture, Electric Fixture | 21d | 2027-03-04 | 2027-03-25 | 2087 |  | 7 Days Work | 9181594 |
| 2089 | 36900.37000.37100.37800.38500.41600 | **12th Habitable/14th Floor** | 245d | 2026-08-05 | 2027-04-07 |  | start no earlier than 2026-08-05 | 7 Days Work | 9170034 |
| 2090 | 36900.37000.37100.37800.38500.41600.250500 | Post Pour | 7d | 2026-08-05 | 2026-08-12 | 1420FS+15d |  | 7 Days Work | 9174594 |
| 2091 | 36900.37000.37100.37800.38500.41600.250600 | MEP Clearance -1 | 5d | 2026-08-12 | 2026-08-17 | 2090 |  | 7 Days Work | 9174604 |
| 2092 | 36900.37000.37100.37800.38500.41600.250700 | Benchmark | 1d | 2026-08-17 | 2026-08-18 | 2091 |  | 7 Days Work | 9174614 |
| 2093 | 36900.37000.37100.37800.38500.41600.250800 | Temporary Railing | 3d | 2026-08-18 | 2026-08-21 | 2092 |  | 7 Days Work | 9174624 |
| 2094 | 36900.37000.37100.37800.38500.41600.250900 | Blockwork | 10d | 2026-08-21 | 2026-08-31 | 2093 |  | 7 Days Work | 9174634 |
| 2095 | 36900.37000.37100.37800.38500.41600.251000 | MEP Clearance -2 | 10d | 2026-08-31 | 2026-09-10 | 2094 |  | 7 Days Work | 9174644 |
| 2096 | 36900.37000.37100.37800.38500.41600.251100 | Gypsum Plaster | 14d | 2026-09-10 | 2026-09-24 | 2095 |  | 7 Days Work | 9174654 |
| 2097 | 36900.37000.37100.37800.38500.41600.251200 | Kitchen Platform | 3d | 2026-09-24 | 2026-09-27 | 2096 |  | 7 Days Work | 9174664 |
| 2098 | 36900.37000.37100.37800.38500.41600.251300 | Kitchen dado | 7d | 2026-09-27 | 2026-10-04 | 2097 |  | 7 Days Work | 9174674 |
| 2099 | 36900.37000.37100.37800.38500.41600.251400 | Fire Fighting | 5d | 2026-10-04 | 2026-10-09 | 2098 |  | 7 Days Work | 9174684 |
| 2100 | 36900.37000.37100.37800.38500.41600.251500 | Anticapilary | 5d | 2026-10-09 | 2026-10-14 | 2099 |  | 7 Days Work | 9174694 |
| 2101 | 36900.37000.37100.37800.38500.41600.251600 | Stone Laying | 10d | 2026-11-16 | 2026-11-26 | 2141 |  | 7 Days Work | 9174704 |
| 2102 | 36900.37000.37100.37800.38500.41600.251700 | Tiles Laying | 7d | 2026-11-16 | 2026-11-23 | 2141 |  | 7 Days Work | 9174714 |
| 2103 | 36900.37000.37100.37800.38500.41600.251800 | 1st cutting/polishing of stone flooring | 7d | 2026-11-23 | 2026-11-30 | 2102 |  | 7 Days Work | 9174724 |
| 2104 | 36900.37000.37100.37800.38500.41600.251900 | Tiles/Stone skirting | 5d | 2026-11-30 | 2026-12-05 | 2103 |  | 7 Days Work | 9174734 |
| 2105 | 36900.37000.37100.37800.38500.41600.252000 | Protechtion sheet | 1d | 2026-12-05 | 2026-12-06 | 2104 |  | 7 Days Work | 9174744 |
| 2106 | 36900.37000.37100.37800.38500.41600.252100 | Installation of Temporary Door | 1d | 2026-12-06 | 2026-12-07 | 2105 |  | 7 Days Work | 9174754 |
| 2107 | 36900.37000.37100.37800.38500.41600.252200 | Fixing of window tracks | 5d | 2026-12-07 | 2026-12-12 | 2106 |  | 7 Days Work | 9174764 |
| 2108 | 36900.37000.37100.37800.38500.41600.252300 | Wire Pulling | 7d | 2026-12-12 | 2026-12-19 | 2107 |  | 7 Days Work | 9174774 |
| 2109 | 36900.37000.37100.37800.38500.41600.252400 | Gypsum Remaining | 5d | 2026-12-19 | 2026-12-24 | 2108 |  | 7 Days Work | 9174784 |
| 2110 | 36900.37000.37100.37800.38500.41600.252500 | Fixing of windoow shutter | 5d | 2026-12-24 | 2026-12-29 | 2109 |  | 7 Days Work | 9174794 |
| 2111 | 36900.37000.37100.37800.38500.41600.252600 | Putty Works - walls & ceiling | 15d | 2026-12-29 | 2027-01-13 | 2110 |  | 7 Days Work | 9174804 |
| 2112 | 36900.37000.37100.37800.38500.41600.252700 | False Ceiling- Framing | 10d | 2027-01-13 | 2027-01-23 | 2111 |  | 7 Days Work | 9174814 |
| 2113 | 36900.37000.37100.37800.38500.41600.252800 | Pre Hung Door | 3d | 2027-01-23 | 2027-01-26 | 2112 |  | 7 Days Work | 9174824 |
| 2114 | 36900.37000.37100.37800.38500.41600.252900 | Protechtion sheet | 2d | 2027-01-26 | 2027-01-28 | 2113 |  | 7 Days Work | 9174834 |
| 2115 | 36900.37000.37100.37800.38500.41600.253000 | Skirting near door | 2d | 2027-01-28 | 2027-01-30 | 2114 |  | 7 Days Work | 9174844 |
| 2116 | 36900.37000.37100.37800.38500.41600.253100 | Electrical Switch box fixing | 14d | 2027-01-30 | 2027-02-13 | 2115 |  | 7 Days Work | 9174854 |
| 2117 | 36900.37000.37100.37800.38500.41600.253200 | Fire Fighting painting | 5d | 2027-02-13 | 2027-02-18 | 2116 |  | 7 Days Work | 9174864 |
| 2118 | 36900.37000.37100.37800.38500.41600.253300 | Protection of all flooring, door & window hardware | 5d | 2027-02-18 | 2027-02-23 | 2117 |  | 7 Days Work | 9174874 |
| 2119 | 36900.37000.37100.37800.38500.41600.253400 | 1st coat primer- ceiling 1st & walls | 14d | 2027-02-23 | 2027-03-09 | 2118 |  | 7 Days Work | 9174884 |
| 2120 | 36900.37000.37100.37800.38500.41600.253500 | Wooden Flooring | 5d | 2027-03-09 | 2027-03-14 | 2119 |  | 7 Days Work | 9174894 |
| 2121 | 36900.37000.37100.37800.38500.41600.253600 | Removing of Temporary Railing & installation of Glass Railing | 5d | 2027-03-09 | 2027-03-14 | 2119 |  | 7 Days Work | 9174904 |
| 2122 | 36900.37000.37100.37800.38500.41600.253700 | Tile Grouting | 7d | 2027-03-09 | 2027-03-16 | 2119 |  | 7 Days Work | 9174914 |
| 2123 | 36900.37000.37100.37800.38500.41600.253800 | False Ceiling | 5d | 2027-03-16 | 2027-03-21 | 2122 |  | 7 Days Work | 9174924 |
| 2124 | 36900.37000.37100.37800.38500.41600.253900 | 2nd coat of primer | 10d | 2027-03-21 | 2027-03-31 | 2123 |  | 7 Days Work | 9174934 |
| 2125 | 36900.37000.37100.37800.38500.41600.254000 | Final cutting/polishing of stone flooring | 7d | 2027-03-31 | 2027-04-07 | 2124 |  | 7 Days Work | 9174944 |

| ID | WBS | Task | Duration | Start | Finish | Predecessors | Constraint | Calendar | Unique_Task_ID |
| --- | --- | --- | --- | --- | --- | --- | --- | --- | --- |
| 2126 | 36900.37000.37100.37800.38500.41600.59000 | **Toilet** | 237d | 2026-08-12 | 2027-04-06 |  | start no earlier than 2026-08-12 | 7 Days Work | 9170234 |
| 2127 | 36900.37000.37100.37800.38500.41600.59000.803600 | Toilet_MEP Clearance -1 | 7d | 2026-08-12 | 2026-08-19 | 2090 |  | 7 Days Work | 9181604 |
| 2128 | 36900.37000.37100.37800.38500.41600.59000.803700 | Toilet_Level Marking | 1d | 2026-08-19 | 2026-08-20 | 2127 |  | 7 Days Work | 9181614 |
| 2129 | 36900.37000.37100.37800.38500.41600.59000.803800 | Toilet_Chasing work for Electrical conduit & concealed plumbing | 5d | 2026-08-20 | 2026-08-25 | 2128 |  | 7 Days Work | 9181624 |
| 2130 | 36900.37000.37100.37800.38500.41600.59000.803900 | Toilet_Plumbing work 1st fix | 5d | 2026-08-25 | 2026-08-30 | 2129 |  | 7 Days Work | 9181634 |
| 2131 | 36900.37000.37100.37800.38500.41600.59000.804000 | Toilet_Sleeve/Bore Packing | 5d | 2026-08-30 | 2026-09-04 | 2130 |  | 7 Days Work | 9181644 |
| 2132 | 36900.37000.37100.37800.38500.41600.59000.804100 | Toilet_Waterproofing | 10d | 2026-09-04 | 2026-09-14 | 2131 |  | 7 Days Work | 9181654 |
| 2133 | 36900.37000.37100.37800.38500.41600.59000.804200 | Toilet_Screed | 1d | 2026-09-14 | 2026-09-15 | 2132 |  | 7 Days Work | 9181664 |
| 2134 | 36900.37000.37100.37800.38500.41600.59000.804300 | Toilet_Plumbing 2nd fix | 5d | 2026-09-15 | 2026-09-20 | 2133 |  | 7 Days Work | 9181674 |
| 2135 | 36900.37000.37100.37800.38500.41600.59000.804400 | Toilet_Ledge wall | 5d | 2026-09-20 | 2026-09-25 | 2134 |  | 7 Days Work | 9181684 |
| 2136 | 36900.37000.37100.37800.38500.41600.59000.804500 | Toilet_Cement Plaster | 5d | 2026-09-25 | 2026-09-30 | 2135 |  | 7 Days Work | 9181694 |
| 2137 | 36900.37000.37100.37800.38500.41600.59000.804600 | Toilet_Door Frame | 1d | 2026-09-30 | 2026-10-01 | 2136 |  | 7 Days Work | 9181704 |
| 2138 | 36900.37000.37100.37800.38500.41600.59000.804700 | Toilet_Wash basin & Couter | 3d | 2026-10-01 | 2026-10-04 | 2137 |  | 7 Days Work | 9181714 |
| 2139 | 36900.37000.37100.37800.38500.41600.59000.804800 | Toilet_Wall dado | 20d | 2026-10-04 | 2026-10-24 | 2138 |  | 7 Days Work | 9181724 |
| 2140 | 36900.37000.37100.37800.38500.41600.59000.804900 | Toilet_Granite Work-Ledge wall top | 3d | 2026-10-24 | 2026-10-27 | 2139 |  | 7 Days Work | 9181734 |
| 2141 | 36900.37000.37100.37800.38500.41600.59000.805000 | Toilet_Floor Tilling work | 20d | 2026-10-27 | 2026-11-16 | 2140 |  | 7 Days Work | 9181744 |
| 2142 | 36900.37000.37100.37800.38500.41600.59000.805100 | Toilet_1st row of dado | 5d | 2026-11-16 | 2026-11-21 | 2141 |  | 7 Days Work | 9181754 |
| 2143 | 36900.37000.37100.37800.38500.41600.59000.805200 | Toilet_Window Fixing | 14d | 2026-11-21 | 2026-12-05 | 2142 |  | 7 Days Work | 9181764 |
| 2144 | 36900.37000.37100.37800.38500.41600.59000.805300 | Toilet_Services above False ceiling | 21d | 2026-12-05 | 2026-12-26 | 2143 |  | 7 Days Work | 9181774 |
| 2145 | 36900.37000.37100.37800.38500.41600.59000.805400 | Toilet_False Ceiling framing | 12d | 2026-12-26 | 2027-01-07 | 2144 |  | 7 Days Work | 9181784 |
| 2146 | 36900.37000.37100.37800.38500.41600.59000.805500 | Toilet_Door Frame | 5d | 2027-01-07 | 2027-01-12 | 2145 |  | 7 Days Work | 9181794 |
| 2147 | 36900.37000.37100.37800.38500.41600.59000.805600 | Toilet_Epoxy Tile Grouting | 7d | 2027-03-09 | 2027-03-16 | 2122SS |  | 7 Days Work | 9181804 |
| 2148 | 36900.37000.37100.37800.38500.41600.59000.805700 | Toilet_False ceiling board fixing, CP Sanitary Fixture, Electric Fixture | 21d | 2027-03-16 | 2027-04-06 | 2147 |  | 7 Days Work | 9181814 |
| 2149 | 36900.37000.37100.37800.38500.41700 | **13th Habitable/15th Floor** | 245d | 2026-08-14 | 2027-04-16 |  | start no earlier than 2026-08-14 | 7 Days Work | 9170044 |
| 2150 | 36900.37000.37100.37800.38500.41700.254100 | Post Pour | 7d | 2026-08-14 | 2026-08-21 | 1421FS+15d |  | 7 Days Work | 9174954 |
| 2151 | 36900.37000.37100.37800.38500.41700.254200 | MEP Clearance -1 | 5d | 2026-08-21 | 2026-08-26 | 2150 |  | 7 Days Work | 9174964 |
| 2152 | 36900.37000.37100.37800.38500.41700.254300 | Benchmark | 1d | 2026-08-26 | 2026-08-27 | 2151 |  | 7 Days Work | 9174974 |
| 2153 | 36900.37000.37100.37800.38500.41700.254400 | Temporary Railing | 3d | 2026-08-27 | 2026-08-30 | 2152 |  | 7 Days Work | 9174984 |
| 2154 | 36900.37000.37100.37800.38500.41700.254500 | Blockwork | 10d | 2026-08-30 | 2026-09-09 | 2153 |  | 7 Days Work | 9174994 |
| 2155 | 36900.37000.37100.37800.38500.41700.254600 | MEP Clearance -2 | 10d | 2026-09-09 | 2026-09-19 | 2154 |  | 7 Days Work | 9175004 |
| 2156 | 36900.37000.37100.37800.38500.41700.254700 | Gypsum Plaster | 14d | 2026-09-19 | 2026-10-03 | 2155 |  | 7 Days Work | 9175014 |
| 2157 | 36900.37000.37100.37800.38500.41700.254800 | Kitchen Platform | 3d | 2026-10-03 | 2026-10-06 | 2156 |  | 7 Days Work | 9175024 |
| 2158 | 36900.37000.37100.37800.38500.41700.254900 | Kitchen dado | 7d | 2026-10-06 | 2026-10-13 | 2157 |  | 7 Days Work | 9175034 |
| 2159 | 36900.37000.37100.37800.38500.41700.255000 | Fire Fighting | 5d | 2026-10-13 | 2026-10-18 | 2158 |  | 7 Days Work | 9175044 |
| 2160 | 36900.37000.37100.37800.38500.41700.255100 | Anticapilary | 5d | 2026-10-18 | 2026-10-23 | 2159 |  | 7 Days Work | 9175054 |
| 2161 | 36900.37000.37100.37800.38500.41700.255200 | Stone Laying | 10d | 2026-11-25 | 2026-12-05 | 2201 |  | 7 Days Work | 9175064 |
| 2162 | 36900.37000.37100.37800.38500.41700.255300 | Tiles Laying | 7d | 2026-11-25 | 2026-12-02 | 2201 |  | 7 Days Work | 9175074 |
| 2163 | 36900.37000.37100.37800.38500.41700.255400 | 1st cutting/polishing of stone flooring | 7d | 2026-12-02 | 2026-12-09 | 2162 |  | 7 Days Work | 9175084 |
| 2164 | 36900.37000.37100.37800.38500.41700.255500 | Tiles/Stone skirting | 5d | 2026-12-09 | 2026-12-14 | 2163 |  | 7 Days Work | 9175094 |
| 2165 | 36900.37000.37100.37800.38500.41700.255600 | Protechtion sheet | 1d | 2026-12-14 | 2026-12-15 | 2164 |  | 7 Days Work | 9175104 |
| 2166 | 36900.37000.37100.37800.38500.41700.255700 | Installation of Temporary Door | 1d | 2026-12-15 | 2026-12-16 | 2165 |  | 7 Days Work | 9175114 |
| 2167 | 36900.37000.37100.37800.38500.41700.255800 | Fixing of window tracks | 5d | 2026-12-16 | 2026-12-21 | 2166 |  | 7 Days Work | 9175124 |
| 2168 | 36900.37000.37100.37800.38500.41700.255900 | Wire Pulling | 7d | 2026-12-21 | 2026-12-28 | 2167 |  | 7 Days Work | 9175134 |
| 2169 | 36900.37000.37100.37800.38500.41700.256000 | Gypsum Remaining | 5d | 2026-12-28 | 2027-01-02 | 2168 |  | 7 Days Work | 9175144 |
| 2170 | 36900.37000.37100.37800.38500.41700.256100 | Fixing of windoow shutter | 5d | 2027-01-02 | 2027-01-07 | 2169 |  | 7 Days Work | 9175154 |
| 2171 | 36900.37000.37100.37800.38500.41700.256200 | Putty Works - walls & ceiling | 15d | 2027-01-07 | 2027-01-22 | 2170 |  | 7 Days Work | 9175164 |
| 2172 | 36900.37000.37100.37800.38500.41700.256300 | False Ceiling- Framing | 10d | 2027-01-22 | 2027-02-01 | 2171 |  | 7 Days Work | 9175174 |
| 2173 | 36900.37000.37100.37800.38500.41700.256400 | Pre Hung Door | 3d | 2027-02-01 | 2027-02-04 | 2172 |  | 7 Days Work | 9175184 |
| 2174 | 36900.37000.37100.37800.38500.41700.256500 | Protechtion sheet | 2d | 2027-02-04 | 2027-02-06 | 2173 |  | 7 Days Work | 9175194 |
| 2175 | 36900.37000.37100.37800.38500.41700.256600 | Skirting near door | 2d | 2027-02-06 | 2027-02-08 | 2174 |  | 7 Days Work | 9175204 |
| 2176 | 36900.37000.37100.37800.38500.41700.256700 | Electrical Switch box fixing | 14d | 2027-02-08 | 2027-02-22 | 2175 |  | 7 Days Work | 9175214 |
| 2177 | 36900.37000.37100.37800.38500.41700.256800 | Fire Fighting painting | 5d | 2027-02-22 | 2027-02-27 | 2176 |  | 7 Days Work | 9175224 |
| 2178 | 36900.37000.37100.37800.38500.41700.256900 | Protection of all flooring, door & window hardware | 5d | 2027-02-27 | 2027-03-04 | 2177 |  | 7 Days Work | 9175234 |
| 2179 | 36900.37000.37100.37800.38500.41700.257000 | 1st coat primer- ceiling 1st & walls | 14d | 2027-03-04 | 2027-03-18 | 2178 |  | 7 Days Work | 9175244 |
| 2180 | 36900.37000.37100.37800.38500.41700.257100 | Wooden Flooring | 5d | 2027-03-18 | 2027-03-23 | 2179 |  | 7 Days Work | 9175254 |
| 2181 | 36900.37000.37100.37800.38500.41700.257200 | Removing of Temporary Railing & installation of Glass Railing | 5d | 2027-03-18 | 2027-03-23 | 2179 |  | 7 Days Work | 9175264 |
| 2182 | 36900.37000.37100.37800.38500.41700.257300 | Tile Grouting | 7d | 2027-03-18 | 2027-03-25 | 2179 |  | 7 Days Work | 9175274 |
| 2183 | 36900.37000.37100.37800.38500.41700.257400 | False Ceiling | 5d | 2027-03-25 | 2027-03-30 | 2182 |  | 7 Days Work | 9175284 |
| 2184 | 36900.37000.37100.37800.38500.41700.257500 | 2nd coat of primer | 10d | 2027-03-30 | 2027-04-09 | 2183 |  | 7 Days Work | 9175294 |
| 2185 | 36900.37000.37100.37800.38500.41700.257600 | Final cutting/polishing of stone flooring | 7d | 2027-04-09 | 2027-04-16 | 2184 |  | 7 Days Work | 9175304 |

| ID | WBS | Task | Duration | Start | Finish | Predecessors | Constraint | Calendar | Unique_Task_ID |
| --- | --- | --- | --- | --- | --- | --- | --- | --- | --- |
| 2186 | 36900.37000.37100.37800.38500.41700.59100 | **Toilet** | 237d | 2026-08-21 | 2027-04-15 |  | start no earlier than 2026-08-21 | 7 Days Work | 9170244 |
| 2187 | 36900.37000.37100.37800.38500.41700.59100.805800 | Toilet_MEP Clearance -1 | 7d | 2026-08-21 | 2026-08-28 | 2150 |  | 7 Days Work | 9181824 |
| 2188 | 36900.37000.37100.37800.38500.41700.59100.805900 | Toilet_Level Marking | 1d | 2026-08-28 | 2026-08-29 | 2187 |  | 7 Days Work | 9181834 |
| 2189 | 36900.37000.37100.37800.38500.41700.59100.806000 | Toilet_Chasing work for Electrical conduit & concealed plumbing | 5d | 2026-08-29 | 2026-09-03 | 2188 |  | 7 Days Work | 9181844 |
| 2190 | 36900.37000.37100.37800.38500.41700.59100.806100 | Toilet_Plumbing work 1st fix | 5d | 2026-09-03 | 2026-09-08 | 2189 |  | 7 Days Work | 9181854 |
| 2191 | 36900.37000.37100.37800.38500.41700.59100.806200 | Toilet_Sleeve/Bore Packing | 5d | 2026-09-08 | 2026-09-13 | 2190 |  | 7 Days Work | 9181864 |
| 2192 | 36900.37000.37100.37800.38500.41700.59100.806300 | Toilet_Waterproofing | 10d | 2026-09-13 | 2026-09-23 | 2191 |  | 7 Days Work | 9181874 |
| 2193 | 36900.37000.37100.37800.38500.41700.59100.806400 | Toilet_Screed | 1d | 2026-09-23 | 2026-09-24 | 2192 |  | 7 Days Work | 9181884 |
| 2194 | 36900.37000.37100.37800.38500.41700.59100.806500 | Toilet_Plumbing 2nd fix | 5d | 2026-09-24 | 2026-09-29 | 2193 |  | 7 Days Work | 9181894 |
| 2195 | 36900.37000.37100.37800.38500.41700.59100.806600 | Toilet_Ledge wall | 5d | 2026-09-29 | 2026-10-04 | 2194 |  | 7 Days Work | 9181904 |
| 2196 | 36900.37000.37100.37800.38500.41700.59100.806700 | Toilet_Cement Plaster | 5d | 2026-10-04 | 2026-10-09 | 2195 |  | 7 Days Work | 9181914 |
| 2197 | 36900.37000.37100.37800.38500.41700.59100.806800 | Toilet_Door Frame | 1d | 2026-10-09 | 2026-10-10 | 2196 |  | 7 Days Work | 9181924 |
| 2198 | 36900.37000.37100.37800.38500.41700.59100.806900 | Toilet_Wash basin & Couter | 3d | 2026-10-10 | 2026-10-13 | 2197 |  | 7 Days Work | 9181934 |
| 2199 | 36900.37000.37100.37800.38500.41700.59100.807000 | Toilet_Wall dado | 20d | 2026-10-13 | 2026-11-02 | 2198 |  | 7 Days Work | 9181944 |
| 2200 | 36900.37000.37100.37800.38500.41700.59100.807100 | Toilet_Granite Work-Ledge wall top | 3d | 2026-11-02 | 2026-11-05 | 2199 |  | 7 Days Work | 9181954 |
| 2201 | 36900.37000.37100.37800.38500.41700.59100.807200 | Toilet_Floor Tilling work | 20d | 2026-11-05 | 2026-11-25 | 2200 |  | 7 Days Work | 9181964 |
| 2202 | 36900.37000.37100.37800.38500.41700.59100.807300 | Toilet_1st row of dado | 5d | 2026-11-25 | 2026-11-30 | 2201 |  | 7 Days Work | 9181974 |
| 2203 | 36900.37000.37100.37800.38500.41700.59100.807400 | Toilet_Window Fixing | 14d | 2026-11-30 | 2026-12-14 | 2202 |  | 7 Days Work | 9181984 |
| 2204 | 36900.37000.37100.37800.38500.41700.59100.807500 | Toilet_Services above False ceiling | 21d | 2026-12-14 | 2027-01-04 | 2203 |  | 7 Days Work | 9181994 |
| 2205 | 36900.37000.37100.37800.38500.41700.59100.807600 | Toilet_False Ceiling framing | 12d | 2027-01-04 | 2027-01-16 | 2204 |  | 7 Days Work | 9182004 |
| 2206 | 36900.37000.37100.37800.38500.41700.59100.807700 | Toilet_Door Frame | 5d | 2027-01-16 | 2027-01-21 | 2205 |  | 7 Days Work | 9182014 |
| 2207 | 36900.37000.37100.37800.38500.41700.59100.807800 | Toilet_Epoxy Tile Grouting | 7d | 2027-03-18 | 2027-03-25 | 2182SS |  | 7 Days Work | 9182024 |
| 2208 | 36900.37000.37100.37800.38500.41700.59100.807900 | Toilet_False ceiling board fixing, CP Sanitary Fixture, Electric Fixture | 21d | 2027-03-25 | 2027-04-15 | 2207 |  | 7 Days Work | 9182034 |
| 2209 | 36900.37000.37100.37800.38500.41800 | **14th Habitable/16th Floor** | 245d | 2026-08-23 | 2027-04-25 |  | start no earlier than 2026-08-23 | 7 Days Work | 9170054 |
| 2210 | 36900.37000.37100.37800.38500.41800.257700 | Post Pour | 7d | 2026-08-23 | 2026-08-30 | 1422FS+15d |  | 7 Days Work | 9175314 |
| 2211 | 36900.37000.37100.37800.38500.41800.257800 | MEP Clearance -1 | 5d | 2026-08-30 | 2026-09-04 | 2210 |  | 7 Days Work | 9175324 |
| 2212 | 36900.37000.37100.37800.38500.41800.257900 | Benchmark | 1d | 2026-09-04 | 2026-09-05 | 2211 |  | 7 Days Work | 9175334 |
| 2213 | 36900.37000.37100.37800.38500.41800.258000 | Temporary Railing | 3d | 2026-09-05 | 2026-09-08 | 2212 |  | 7 Days Work | 9175344 |
| 2214 | 36900.37000.37100.37800.38500.41800.258100 | Blockwork | 10d | 2026-09-08 | 2026-09-18 | 2213 |  | 7 Days Work | 9175354 |
| 2215 | 36900.37000.37100.37800.38500.41800.258200 | MEP Clearance -2 | 10d | 2026-09-18 | 2026-09-28 | 2214 |  | 7 Days Work | 9175364 |
| 2216 | 36900.37000.37100.37800.38500.41800.258300 | Gypsum Plaster | 14d | 2026-09-28 | 2026-10-12 | 2215 |  | 7 Days Work | 9175374 |
| 2217 | 36900.37000.37100.37800.38500.41800.258400 | Kitchen Platform | 3d | 2026-10-12 | 2026-10-15 | 2216 |  | 7 Days Work | 9175384 |
| 2218 | 36900.37000.37100.37800.38500.41800.258500 | Kitchen dado | 7d | 2026-10-15 | 2026-10-22 | 2217 |  | 7 Days Work | 9175394 |
| 2219 | 36900.37000.37100.37800.38500.41800.258600 | Fire Fighting | 5d | 2026-10-22 | 2026-10-27 | 2218 |  | 7 Days Work | 9175404 |
| 2220 | 36900.37000.37100.37800.38500.41800.258700 | Anticapilary | 5d | 2026-10-27 | 2026-11-01 | 2219 |  | 7 Days Work | 9175414 |
| 2221 | 36900.37000.37100.37800.38500.41800.258800 | Stone Laying | 10d | 2026-12-04 | 2026-12-14 | 2261 |  | 7 Days Work | 9175424 |
| 2222 | 36900.37000.37100.37800.38500.41800.258900 | Tiles Laying | 7d | 2026-12-04 | 2026-12-11 | 2261 |  | 7 Days Work | 9175434 |
| 2223 | 36900.37000.37100.37800.38500.41800.259000 | 1st cutting/polishing of stone flooring | 7d | 2026-12-11 | 2026-12-18 | 2222 |  | 7 Days Work | 9175444 |
| 2224 | 36900.37000.37100.37800.38500.41800.259100 | Tiles/Stone skirting | 5d | 2026-12-18 | 2026-12-23 | 2223 |  | 7 Days Work | 9175454 |
| 2225 | 36900.37000.37100.37800.38500.41800.259200 | Protechtion sheet | 1d | 2026-12-23 | 2026-12-24 | 2224 |  | 7 Days Work | 9175464 |
| 2226 | 36900.37000.37100.37800.38500.41800.259300 | Installation of Temporary Door | 1d | 2026-12-24 | 2026-12-25 | 2225 |  | 7 Days Work | 9175474 |
| 2227 | 36900.37000.37100.37800.38500.41800.259400 | Fixing of window tracks | 5d | 2026-12-25 | 2026-12-30 | 2226 |  | 7 Days Work | 9175484 |
| 2228 | 36900.37000.37100.37800.38500.41800.259500 | Wire Pulling | 7d | 2026-12-30 | 2027-01-06 | 2227 |  | 7 Days Work | 9175494 |
| 2229 | 36900.37000.37100.37800.38500.41800.259600 | Gypsum Remaining | 5d | 2027-01-06 | 2027-01-11 | 2228 |  | 7 Days Work | 9175504 |
| 2230 | 36900.37000.37100.37800.38500.41800.259700 | Fixing of windoow shutter | 5d | 2027-01-11 | 2027-01-16 | 2229 |  | 7 Days Work | 9175514 |
| 2231 | 36900.37000.37100.37800.38500.41800.259800 | Putty Works - walls & ceiling | 15d | 2027-01-16 | 2027-01-31 | 2230 |  | 7 Days Work | 9175524 |
| 2232 | 36900.37000.37100.37800.38500.41800.259900 | False Ceiling- Framing | 10d | 2027-01-31 | 2027-02-10 | 2231 |  | 7 Days Work | 9175534 |
| 2233 | 36900.37000.37100.37800.38500.41800.260000 | Pre Hung Door | 3d | 2027-02-10 | 2027-02-13 | 2232 |  | 7 Days Work | 9175544 |
| 2234 | 36900.37000.37100.37800.38500.41800.260100 | Protechtion sheet | 2d | 2027-02-13 | 2027-02-15 | 2233 |  | 7 Days Work | 9175554 |
| 2235 | 36900.37000.37100.37800.38500.41800.260200 | Skirting near door | 2d | 2027-02-15 | 2027-02-17 | 2234 |  | 7 Days Work | 9175564 |
| 2236 | 36900.37000.37100.37800.38500.41800.260300 | Electrical Switch box fixing | 14d | 2027-02-17 | 2027-03-03 | 2235 |  | 7 Days Work | 9175574 |
| 2237 | 36900.37000.37100.37800.38500.41800.260400 | Fire Fighting painting | 5d | 2027-03-03 | 2027-03-08 | 2236 |  | 7 Days Work | 9175584 |
| 2238 | 36900.37000.37100.37800.38500.41800.260500 | Protection of all flooring, door & window hardware | 5d | 2027-03-08 | 2027-03-13 | 2237 |  | 7 Days Work | 9175594 |
| 2239 | 36900.37000.37100.37800.38500.41800.260600 | 1st coat primer- ceiling 1st & walls | 14d | 2027-03-13 | 2027-03-27 | 2238 |  | 7 Days Work | 9175604 |
| 2240 | 36900.37000.37100.37800.38500.41800.260700 | Wooden Flooring | 5d | 2027-03-27 | 2027-04-01 | 2239 |  | 7 Days Work | 9175614 |
| 2241 | 36900.37000.37100.37800.38500.41800.260800 | Removing of Temporary Railing & installation of Glass Railing | 5d | 2027-03-27 | 2027-04-01 | 2239 |  | 7 Days Work | 9175624 |
| 2242 | 36900.37000.37100.37800.38500.41800.260900 | Tile Grouting | 7d | 2027-03-27 | 2027-04-03 | 2239 |  | 7 Days Work | 9175634 |
| 2243 | 36900.37000.37100.37800.38500.41800.261000 | False Ceiling | 5d | 2027-04-03 | 2027-04-08 | 2242 |  | 7 Days Work | 9175644 |
| 2244 | 36900.37000.37100.37800.38500.41800.261100 | 2nd coat of primer | 10d | 2027-04-08 | 2027-04-18 | 2243 |  | 7 Days Work | 9175654 |
| 2245 | 36900.37000.37100.37800.38500.41800.261200 | Final cutting/polishing of stone flooring | 7d | 2027-04-18 | 2027-04-25 | 2244 |  | 7 Days Work | 9175664 |

| ID | WBS | Task | Duration | Start | Finish | Predecessors | Constraint | Calendar | Unique_Task_ID |
| --- | --- | --- | --- | --- | --- | --- | --- | --- | --- |
| 2246 | 36900.37000.37100.37800.38500.41800.59200 | **Toilet** | 237d | 2026-08-30 | 2027-04-24 |  | start no earlier than 2026-08-30 | 7 Days Work | 9170254 |
| 2247 | 36900.37000.37100.37800.38500.41800.59200.808000 | Toilet_MEP Clearance -1 | 7d | 2026-08-30 | 2026-09-06 | 2210 |  | 7 Days Work | 9182044 |
| 2248 | 36900.37000.37100.37800.38500.41800.59200.808100 | Toilet_Level Marking | 1d | 2026-09-06 | 2026-09-07 | 2247 |  | 7 Days Work | 9182054 |
| 2249 | 36900.37000.37100.37800.38500.41800.59200.808200 | Toilet_Chasing work for Electrical conduit & concealed plumbing | 5d | 2026-09-07 | 2026-09-12 | 2248 |  | 7 Days Work | 9182064 |
| 2250 | 36900.37000.37100.37800.38500.41800.59200.808300 | Toilet_Plumbing work 1st fix | 5d | 2026-09-12 | 2026-09-17 | 2249 |  | 7 Days Work | 9182074 |
| 2251 | 36900.37000.37100.37800.38500.41800.59200.808400 | Toilet_Sleeve/Bore Packing | 5d | 2026-09-17 | 2026-09-22 | 2250 |  | 7 Days Work | 9182084 |
| 2252 | 36900.37000.37100.37800.38500.41800.59200.808500 | Toilet_Waterproofing | 10d | 2026-09-22 | 2026-10-02 | 2251 |  | 7 Days Work | 9182094 |
| 2253 | 36900.37000.37100.37800.38500.41800.59200.808600 | Toilet_Screed | 1d | 2026-10-02 | 2026-10-03 | 2252 |  | 7 Days Work | 9182104 |
| 2254 | 36900.37000.37100.37800.38500.41800.59200.808700 | Toilet_Plumbing 2nd fix | 5d | 2026-10-03 | 2026-10-08 | 2253 |  | 7 Days Work | 9182114 |
| 2255 | 36900.37000.37100.37800.38500.41800.59200.808800 | Toilet_Ledge wall | 5d | 2026-10-08 | 2026-10-13 | 2254 |  | 7 Days Work | 9182124 |
| 2256 | 36900.37000.37100.37800.38500.41800.59200.808900 | Toilet_Cement Plaster | 5d | 2026-10-13 | 2026-10-18 | 2255 |  | 7 Days Work | 9182134 |
| 2257 | 36900.37000.37100.37800.38500.41800.59200.809000 | Toilet_Door Frame | 1d | 2026-10-18 | 2026-10-19 | 2256 |  | 7 Days Work | 9182144 |
| 2258 | 36900.37000.37100.37800.38500.41800.59200.809100 | Toilet_Wash basin & Couter | 3d | 2026-10-19 | 2026-10-22 | 2257 |  | 7 Days Work | 9182154 |
| 2259 | 36900.37000.37100.37800.38500.41800.59200.809200 | Toilet_Wall dado | 20d | 2026-10-22 | 2026-11-11 | 2258 |  | 7 Days Work | 9182164 |
| 2260 | 36900.37000.37100.37800.38500.41800.59200.809300 | Toilet_Granite Work-Ledge wall top | 3d | 2026-11-11 | 2026-11-14 | 2259 |  | 7 Days Work | 9182174 |
| 2261 | 36900.37000.37100.37800.38500.41800.59200.809400 | Toilet_Floor Tilling work | 20d | 2026-11-14 | 2026-12-04 | 2260 |  | 7 Days Work | 9182184 |
| 2262 | 36900.37000.37100.37800.38500.41800.59200.809500 | Toilet_1st row of dado | 5d | 2026-12-04 | 2026-12-09 | 2261 |  | 7 Days Work | 9182194 |
| 2263 | 36900.37000.37100.37800.38500.41800.59200.809600 | Toilet_Window Fixing | 14d | 2026-12-09 | 2026-12-23 | 2262 |  | 7 Days Work | 9182204 |
| 2264 | 36900.37000.37100.37800.38500.41800.59200.809700 | Toilet_Services above False ceiling | 21d | 2026-12-23 | 2027-01-13 | 2263 |  | 7 Days Work | 9182214 |
| 2265 | 36900.37000.37100.37800.38500.41800.59200.809800 | Toilet_False Ceiling framing | 12d | 2027-01-13 | 2027-01-25 | 2264 |  | 7 Days Work | 9182224 |
| 2266 | 36900.37000.37100.37800.38500.41800.59200.809900 | Toilet_Door Frame | 5d | 2027-01-25 | 2027-01-30 | 2265 |  | 7 Days Work | 9182234 |
| 2267 | 36900.37000.37100.37800.38500.41800.59200.810000 | Toilet_Epoxy Tile Grouting | 7d | 2027-03-27 | 2027-04-03 | 2242SS |  | 7 Days Work | 9182244 |
| 2268 | 36900.37000.37100.37800.38500.41800.59200.810100 | Toilet_False ceiling board fixing, CP Sanitary Fixture, Electric Fixture | 21d | 2027-04-03 | 2027-04-24 | 2267 |  | 7 Days Work | 9182254 |
| 2269 | 36900.37000.37100.37800.38500.41900 | **15th Habitable/17th Floor** | 245d | 2026-09-01 | 2027-05-04 |  | start no earlier than 2026-09-01 | 7 Days Work | 9170064 |
| 2270 | 36900.37000.37100.37800.38500.41900.261300 | Post Pour | 7d | 2026-09-01 | 2026-09-08 | 1423FS+15d |  | 7 Days Work | 9175674 |
| 2271 | 36900.37000.37100.37800.38500.41900.261400 | MEP Clearance -1 | 5d | 2026-09-08 | 2026-09-13 | 2270 |  | 7 Days Work | 9175684 |
| 2272 | 36900.37000.37100.37800.38500.41900.261500 | Benchmark | 1d | 2026-09-13 | 2026-09-14 | 2271 |  | 7 Days Work | 9175694 |
| 2273 | 36900.37000.37100.37800.38500.41900.261600 | Temporary Railing | 3d | 2026-09-14 | 2026-09-17 | 2272 |  | 7 Days Work | 9175704 |
| 2274 | 36900.37000.37100.37800.38500.41900.261700 | Blockwork | 10d | 2026-09-17 | 2026-09-27 | 2273 |  | 7 Days Work | 9175714 |
| 2275 | 36900.37000.37100.37800.38500.41900.261800 | MEP Clearance -2 | 10d | 2026-09-27 | 2026-10-07 | 2274 |  | 7 Days Work | 9175724 |
| 2276 | 36900.37000.37100.37800.38500.41900.261900 | Gypsum Plaster | 14d | 2026-10-07 | 2026-10-21 | 2275 |  | 7 Days Work | 9175734 |
| 2277 | 36900.37000.37100.37800.38500.41900.262000 | Kitchen Platform | 3d | 2026-10-21 | 2026-10-24 | 2276 |  | 7 Days Work | 9175744 |
| 2278 | 36900.37000.37100.37800.38500.41900.262100 | Kitchen dado | 7d | 2026-10-24 | 2026-10-31 | 2277 |  | 7 Days Work | 9175754 |
| 2279 | 36900.37000.37100.37800.38500.41900.262200 | Fire Fighting | 5d | 2026-10-31 | 2026-11-05 | 2278 |  | 7 Days Work | 9175764 |
| 2280 | 36900.37000.37100.37800.38500.41900.262300 | Anticapilary | 5d | 2026-11-05 | 2026-11-10 | 2279 |  | 7 Days Work | 9175774 |
| 2281 | 36900.37000.37100.37800.38500.41900.262400 | Stone Laying | 10d | 2026-12-13 | 2026-12-23 | 2321 |  | 7 Days Work | 9175784 |
| 2282 | 36900.37000.37100.37800.38500.41900.262500 | Tiles Laying | 7d | 2026-12-13 | 2026-12-20 | 2321 |  | 7 Days Work | 9175794 |
| 2283 | 36900.37000.37100.37800.38500.41900.262600 | 1st cutting/polishing of stone flooring | 7d | 2026-12-20 | 2026-12-27 | 2282 |  | 7 Days Work | 9175804 |
| 2284 | 36900.37000.37100.37800.38500.41900.262700 | Tiles/Stone skirting | 5d | 2026-12-27 | 2027-01-01 | 2283 |  | 7 Days Work | 9175814 |
| 2285 | 36900.37000.37100.37800.38500.41900.262800 | Protechtion sheet | 1d | 2027-01-01 | 2027-01-02 | 2284 |  | 7 Days Work | 9175824 |
| 2286 | 36900.37000.37100.37800.38500.41900.262900 | Installation of Temporary Door | 1d | 2027-01-02 | 2027-01-03 | 2285 |  | 7 Days Work | 9175834 |
| 2287 | 36900.37000.37100.37800.38500.41900.263000 | Fixing of window tracks | 5d | 2027-01-03 | 2027-01-08 | 2286 |  | 7 Days Work | 9175844 |
| 2288 | 36900.37000.37100.37800.38500.41900.263100 | Wire Pulling | 7d | 2027-01-08 | 2027-01-15 | 2287 |  | 7 Days Work | 9175854 |
| 2289 | 36900.37000.37100.37800.38500.41900.263200 | Gypsum Remaining | 5d | 2027-01-15 | 2027-01-20 | 2288 |  | 7 Days Work | 9175864 |
| 2290 | 36900.37000.37100.37800.38500.41900.263300 | Fixing of windoow shutter | 5d | 2027-01-20 | 2027-01-25 | 2289 |  | 7 Days Work | 9175874 |
| 2291 | 36900.37000.37100.37800.38500.41900.263400 | Putty Works - walls & ceiling | 15d | 2027-01-25 | 2027-02-09 | 2290 |  | 7 Days Work | 9175884 |
| 2292 | 36900.37000.37100.37800.38500.41900.263500 | False Ceiling- Framing | 10d | 2027-02-09 | 2027-02-19 | 2291 |  | 7 Days Work | 9175894 |
| 2293 | 36900.37000.37100.37800.38500.41900.263600 | Pre Hung Door | 3d | 2027-02-19 | 2027-02-22 | 2292 |  | 7 Days Work | 9175904 |
| 2294 | 36900.37000.37100.37800.38500.41900.263700 | Protechtion sheet | 2d | 2027-02-22 | 2027-02-24 | 2293 |  | 7 Days Work | 9175914 |
| 2295 | 36900.37000.37100.37800.38500.41900.263800 | Skirting near door | 2d | 2027-02-24 | 2027-02-26 | 2294 |  | 7 Days Work | 9175924 |
| 2296 | 36900.37000.37100.37800.38500.41900.263900 | Electrical Switch box fixing | 14d | 2027-02-26 | 2027-03-12 | 2295 |  | 7 Days Work | 9175934 |
| 2297 | 36900.37000.37100.37800.38500.41900.264000 | Fire Fighting painting | 5d | 2027-03-12 | 2027-03-17 | 2296 |  | 7 Days Work | 9175944 |
| 2298 | 36900.37000.37100.37800.38500.41900.264100 | Protection of all flooring, door & window hardware | 5d | 2027-03-17 | 2027-03-22 | 2297 |  | 7 Days Work | 9175954 |
| 2299 | 36900.37000.37100.37800.38500.41900.264200 | 1st coat primer- ceiling 1st & walls | 14d | 2027-03-22 | 2027-04-05 | 2298 |  | 7 Days Work | 9175964 |
| 2300 | 36900.37000.37100.37800.38500.41900.264300 | Wooden Flooring | 5d | 2027-04-05 | 2027-04-10 | 2299 |  | 7 Days Work | 9175974 |
| 2301 | 36900.37000.37100.37800.38500.41900.264400 | Removing of Temporary Railing & installation of Glass Railing | 5d | 2027-04-05 | 2027-04-10 | 2299 |  | 7 Days Work | 9175984 |
| 2302 | 36900.37000.37100.37800.38500.41900.264500 | Tile Grouting | 7d | 2027-04-05 | 2027-04-12 | 2299 |  | 7 Days Work | 9175994 |
| 2303 | 36900.37000.37100.37800.38500.41900.264600 | False Ceiling | 5d | 2027-04-12 | 2027-04-17 | 2302 |  | 7 Days Work | 9176004 |
| 2304 | 36900.37000.37100.37800.38500.41900.264700 | 2nd coat of primer | 10d | 2027-04-17 | 2027-04-27 | 2303 |  | 7 Days Work | 9176014 |
| 2305 | 36900.37000.37100.37800.38500.41900.264800 | Final cutting/polishing of stone flooring | 7d | 2027-04-27 | 2027-05-04 | 2304 |  | 7 Days Work | 9176024 |

| ID | WBS | Task | Duration | Start | Finish | Predecessors | Constraint | Calendar | Unique_Task_ID |
| --- | --- | --- | --- | --- | --- | --- | --- | --- | --- |
| 2306 | 36900.37000.37100.37800.38500.41900.59300 | **Toilet** | 237d | 2026-09-08 | 2027-05-03 |  | start no earlier than 2026-09-08 | 7 Days Work | 9170264 |
| 2307 | 36900.37000.37100.37800.38500.41900.59300.810200 | Toilet_MEP Clearance -1 | 7d | 2026-09-08 | 2026-09-15 | 2270 |  | 7 Days Work | 9182264 |
| 2308 | 36900.37000.37100.37800.38500.41900.59300.810300 | Toilet_Level Marking | 1d | 2026-09-15 | 2026-09-16 | 2307 |  | 7 Days Work | 9182274 |
| 2309 | 36900.37000.37100.37800.38500.41900.59300.810400 | Toilet_Chasing work for Electrical conduit & concealed plumbing | 5d | 2026-09-16 | 2026-09-21 | 2308 |  | 7 Days Work | 9182284 |
| 2310 | 36900.37000.37100.37800.38500.41900.59300.810500 | Toilet_Plumbing work 1st fix | 5d | 2026-09-21 | 2026-09-26 | 2309 |  | 7 Days Work | 9182294 |
| 2311 | 36900.37000.37100.37800.38500.41900.59300.810600 | Toilet_Sleeve/Bore Packing | 5d | 2026-09-26 | 2026-10-01 | 2310 |  | 7 Days Work | 9182304 |
| 2312 | 36900.37000.37100.37800.38500.41900.59300.810700 | Toilet_Waterproofing | 10d | 2026-10-01 | 2026-10-11 | 2311 |  | 7 Days Work | 9182314 |
| 2313 | 36900.37000.37100.37800.38500.41900.59300.810800 | Toilet_Screed | 1d | 2026-10-11 | 2026-10-12 | 2312 |  | 7 Days Work | 9182324 |
| 2314 | 36900.37000.37100.37800.38500.41900.59300.810900 | Toilet_Plumbing 2nd fix | 5d | 2026-10-12 | 2026-10-17 | 2313 |  | 7 Days Work | 9182334 |
| 2315 | 36900.37000.37100.37800.38500.41900.59300.811000 | Toilet_Ledge wall | 5d | 2026-10-17 | 2026-10-22 | 2314 |  | 7 Days Work | 9182344 |
| 2316 | 36900.37000.37100.37800.38500.41900.59300.811100 | Toilet_Cement Plaster | 5d | 2026-10-22 | 2026-10-27 | 2315 |  | 7 Days Work | 9182354 |
| 2317 | 36900.37000.37100.37800.38500.41900.59300.811200 | Toilet_Door Frame | 1d | 2026-10-27 | 2026-10-28 | 2316 |  | 7 Days Work | 9182364 |
| 2318 | 36900.37000.37100.37800.38500.41900.59300.811300 | Toilet_Wash basin & Couter | 3d | 2026-10-28 | 2026-10-31 | 2317 |  | 7 Days Work | 9182374 |
| 2319 | 36900.37000.37100.37800.38500.41900.59300.811400 | Toilet_Wall dado | 20d | 2026-10-31 | 2026-11-20 | 2318 |  | 7 Days Work | 9182384 |
| 2320 | 36900.37000.37100.37800.38500.41900.59300.811500 | Toilet_Granite Work-Ledge wall top | 3d | 2026-11-20 | 2026-11-23 | 2319 |  | 7 Days Work | 9182394 |
| 2321 | 36900.37000.37100.37800.38500.41900.59300.811600 | Toilet_Floor Tilling work | 20d | 2026-11-23 | 2026-12-13 | 2320 |  | 7 Days Work | 9182404 |
| 2322 | 36900.37000.37100.37800.38500.41900.59300.811700 | Toilet_1st row of dado | 5d | 2026-12-13 | 2026-12-18 | 2321 |  | 7 Days Work | 9182414 |
| 2323 | 36900.37000.37100.37800.38500.41900.59300.811800 | Toilet_Window Fixing | 14d | 2026-12-18 | 2027-01-01 | 2322 |  | 7 Days Work | 9182424 |
| 2324 | 36900.37000.37100.37800.38500.41900.59300.811900 | Toilet_Services above False ceiling | 21d | 2027-01-01 | 2027-01-22 | 2323 |  | 7 Days Work | 9182434 |
| 2325 | 36900.37000.37100.37800.38500.41900.59300.812000 | Toilet_False Ceiling framing | 12d | 2027-01-22 | 2027-02-03 | 2324 |  | 7 Days Work | 9182444 |
| 2326 | 36900.37000.37100.37800.38500.41900.59300.812100 | Toilet_Door Frame | 5d | 2027-02-03 | 2027-02-08 | 2325 |  | 7 Days Work | 9182454 |
| 2327 | 36900.37000.37100.37800.38500.41900.59300.812200 | Toilet_Epoxy Tile Grouting | 7d | 2027-04-05 | 2027-04-12 | 2302SS |  | 7 Days Work | 9182464 |
| 2328 | 36900.37000.37100.37800.38500.41900.59300.812300 | Toilet_False ceiling board fixing, CP Sanitary Fixture, Electric Fixture | 21d | 2027-04-12 | 2027-05-03 | 2327 |  | 7 Days Work | 9182474 |
| 2329 | 36900.37000.37100.37800.38500.42000 | **16th Habitable/18th Floor** | 245d | 2026-09-13 | 2027-05-16 |  | start no earlier than 2026-09-13 | 7 Days Work | 9170074 |
| 2330 | 36900.37000.37100.37800.38500.42000.264900 | Post Pour | 7d | 2026-09-13 | 2026-09-20 | 1424FS+15d |  | 7 Days Work | 9176034 |
| 2331 | 36900.37000.37100.37800.38500.42000.265000 | MEP Clearance -1 | 5d | 2026-09-20 | 2026-09-25 | 2330 |  | 7 Days Work | 9176044 |
| 2332 | 36900.37000.37100.37800.38500.42000.265100 | Benchmark | 1d | 2026-09-25 | 2026-09-26 | 2331 |  | 7 Days Work | 9176054 |
| 2333 | 36900.37000.37100.37800.38500.42000.265200 | Temporary Railing | 3d | 2026-09-26 | 2026-09-29 | 2332 |  | 7 Days Work | 9176064 |
| 2334 | 36900.37000.37100.37800.38500.42000.265300 | Blockwork | 10d | 2026-09-29 | 2026-10-09 | 2333 |  | 7 Days Work | 9176074 |
| 2335 | 36900.37000.37100.37800.38500.42000.265400 | MEP Clearance -2 | 10d | 2026-10-09 | 2026-10-19 | 2334 |  | 7 Days Work | 9176084 |
| 2336 | 36900.37000.37100.37800.38500.42000.265500 | Gypsum Plaster | 14d | 2026-10-19 | 2026-11-02 | 2335 |  | 7 Days Work | 9176094 |
| 2337 | 36900.37000.37100.37800.38500.42000.265600 | Kitchen Platform | 3d | 2026-11-02 | 2026-11-05 | 2336 |  | 7 Days Work | 9176104 |
| 2338 | 36900.37000.37100.37800.38500.42000.265700 | Kitchen dado | 7d | 2026-11-05 | 2026-11-12 | 2337 |  | 7 Days Work | 9176114 |
| 2339 | 36900.37000.37100.37800.38500.42000.265800 | Fire Fighting | 5d | 2026-11-12 | 2026-11-17 | 2338 |  | 7 Days Work | 9176124 |
| 2340 | 36900.37000.37100.37800.38500.42000.265900 | Anticapilary | 5d | 2026-11-17 | 2026-11-22 | 2339 |  | 7 Days Work | 9176134 |
| 2341 | 36900.37000.37100.37800.38500.42000.266000 | Stone Laying | 10d | 2026-12-25 | 2027-01-04 | 2381 |  | 7 Days Work | 9176144 |
| 2342 | 36900.37000.37100.37800.38500.42000.266100 | Tiles Laying | 7d | 2026-12-25 | 2027-01-01 | 2381 |  | 7 Days Work | 9176154 |
| 2343 | 36900.37000.37100.37800.38500.42000.266200 | 1st cutting/polishing of stone flooring | 7d | 2027-01-01 | 2027-01-08 | 2342 |  | 7 Days Work | 9176164 |
| 2344 | 36900.37000.37100.37800.38500.42000.266300 | Tiles/Stone skirting | 5d | 2027-01-08 | 2027-01-13 | 2343 |  | 7 Days Work | 9176174 |
| 2345 | 36900.37000.37100.37800.38500.42000.266400 | Protechtion sheet | 1d | 2027-01-13 | 2027-01-14 | 2344 |  | 7 Days Work | 9176184 |
| 2346 | 36900.37000.37100.37800.38500.42000.266500 | Installation of Temporary Door | 1d | 2027-01-14 | 2027-01-15 | 2345 |  | 7 Days Work | 9176194 |
| 2347 | 36900.37000.37100.37800.38500.42000.266600 | Fixing of window tracks | 5d | 2027-01-15 | 2027-01-20 | 2346 |  | 7 Days Work | 9176204 |
| 2348 | 36900.37000.37100.37800.38500.42000.266700 | Wire Pulling | 7d | 2027-01-20 | 2027-01-27 | 2347 |  | 7 Days Work | 9176214 |
| 2349 | 36900.37000.37100.37800.38500.42000.266800 | Gypsum Remaining | 5d | 2027-01-27 | 2027-02-01 | 2348 |  | 7 Days Work | 9176224 |
| 2350 | 36900.37000.37100.37800.38500.42000.266900 | Fixing of windoow shutter | 5d | 2027-02-01 | 2027-02-06 | 2349 |  | 7 Days Work | 9176234 |
| 2351 | 36900.37000.37100.37800.38500.42000.267000 | Putty Works - walls & ceiling | 15d | 2027-02-06 | 2027-02-21 | 2350 |  | 7 Days Work | 9176244 |
| 2352 | 36900.37000.37100.37800.38500.42000.267100 | False Ceiling- Framing | 10d | 2027-02-21 | 2027-03-03 | 2351 |  | 7 Days Work | 9176254 |
| 2353 | 36900.37000.37100.37800.38500.42000.267200 | Pre Hung Door | 3d | 2027-03-03 | 2027-03-06 | 2352 |  | 7 Days Work | 9176264 |
| 2354 | 36900.37000.37100.37800.38500.42000.267300 | Protechtion sheet | 2d | 2027-03-06 | 2027-03-08 | 2353 |  | 7 Days Work | 9176274 |
| 2355 | 36900.37000.37100.37800.38500.42000.267400 | Skirting near door | 2d | 2027-03-08 | 2027-03-10 | 2354 |  | 7 Days Work | 9176284 |
| 2356 | 36900.37000.37100.37800.38500.42000.267500 | Electrical Switch box fixing | 14d | 2027-03-10 | 2027-03-24 | 2355 |  | 7 Days Work | 9176294 |
| 2357 | 36900.37000.37100.37800.38500.42000.267600 | Fire Fighting painting | 5d | 2027-03-24 | 2027-03-29 | 2356 |  | 7 Days Work | 9176304 |
| 2358 | 36900.37000.37100.37800.38500.42000.267700 | Protection of all flooring, door & window hardware | 5d | 2027-03-29 | 2027-04-03 | 2357 |  | 7 Days Work | 9176314 |
| 2359 | 36900.37000.37100.37800.38500.42000.267800 | 1st coat primer- ceiling 1st & walls | 14d | 2027-04-03 | 2027-04-17 | 2358 |  | 7 Days Work | 9176324 |
| 2360 | 36900.37000.37100.37800.38500.42000.267900 | Wooden Flooring | 5d | 2027-04-17 | 2027-04-22 | 2359 |  | 7 Days Work | 9176334 |
| 2361 | 36900.37000.37100.37800.38500.42000.268000 | Removing of Temporary Railing & installation of Glass Railing | 5d | 2027-04-17 | 2027-04-22 | 2359 |  | 7 Days Work | 9176344 |
| 2362 | 36900.37000.37100.37800.38500.42000.268100 | Tile Grouting | 7d | 2027-04-17 | 2027-04-24 | 2359 |  | 7 Days Work | 9176354 |
| 2363 | 36900.37000.37100.37800.38500.42000.268200 | False Ceiling | 5d | 2027-04-24 | 2027-04-29 | 2362 |  | 7 Days Work | 9176364 |
| 2364 | 36900.37000.37100.37800.38500.42000.268300 | 2nd coat of primer | 10d | 2027-04-29 | 2027-05-09 | 2363 |  | 7 Days Work | 9176374 |
| 2365 | 36900.37000.37100.37800.38500.42000.268400 | Final cutting/polishing of stone flooring | 7d | 2027-05-09 | 2027-05-16 | 2364 |  | 7 Days Work | 9176384 |

| ID | WBS | Task | Duration | Start | Finish | Predecessors | Constraint | Calendar | Unique_Task_ID |
| --- | --- | --- | --- | --- | --- | --- | --- | --- | --- |
| 2366 | 36900.37000.37100.37800.38500.42000.59400 | **Toilet** | 237d | 2026-09-20 | 2027-05-15 |  | start no earlier than 2026-09-20 | 7 Days Work | 9170274 |
| 2367 | 36900.37000.37100.37800.38500.42000.59400.812400 | Toilet_MEP Clearance -1 | 7d | 2026-09-20 | 2026-09-27 | 2330 |  | 7 Days Work | 9182484 |
| 2368 | 36900.37000.37100.37800.38500.42000.59400.812500 | Toilet_Level Marking | 1d | 2026-09-27 | 2026-09-28 | 2367 |  | 7 Days Work | 9182494 |
| 2369 | 36900.37000.37100.37800.38500.42000.59400.812600 | Toilet_Chasing work for Electrical conduit & concealed plumbing | 5d | 2026-09-28 | 2026-10-03 | 2368 |  | 7 Days Work | 9182504 |
| 2370 | 36900.37000.37100.37800.38500.42000.59400.812700 | Toilet_Plumbing work 1st fix | 5d | 2026-10-03 | 2026-10-08 | 2369 |  | 7 Days Work | 9182514 |
| 2371 | 36900.37000.37100.37800.38500.42000.59400.812800 | Toilet_Sleeve/Bore Packing | 5d | 2026-10-08 | 2026-10-13 | 2370 |  | 7 Days Work | 9182524 |
| 2372 | 36900.37000.37100.37800.38500.42000.59400.812900 | Toilet_Waterproofing | 10d | 2026-10-13 | 2026-10-23 | 2371 |  | 7 Days Work | 9182534 |
| 2373 | 36900.37000.37100.37800.38500.42000.59400.813000 | Toilet_Screed | 1d | 2026-10-23 | 2026-10-24 | 2372 |  | 7 Days Work | 9182544 |
| 2374 | 36900.37000.37100.37800.38500.42000.59400.813100 | Toilet_Plumbing 2nd fix | 5d | 2026-10-24 | 2026-10-29 | 2373 |  | 7 Days Work | 9182554 |
| 2375 | 36900.37000.37100.37800.38500.42000.59400.813200 | Toilet_Ledge wall | 5d | 2026-10-29 | 2026-11-03 | 2374 |  | 7 Days Work | 9182564 |
| 2376 | 36900.37000.37100.37800.38500.42000.59400.813300 | Toilet_Cement Plaster | 5d | 2026-11-03 | 2026-11-08 | 2375 |  | 7 Days Work | 9182574 |
| 2377 | 36900.37000.37100.37800.38500.42000.59400.813400 | Toilet_Door Frame | 1d | 2026-11-08 | 2026-11-09 | 2376 |  | 7 Days Work | 9182584 |
| 2378 | 36900.37000.37100.37800.38500.42000.59400.813500 | Toilet_Wash basin & Couter | 3d | 2026-11-09 | 2026-11-12 | 2377 |  | 7 Days Work | 9182594 |
| 2379 | 36900.37000.37100.37800.38500.42000.59400.813600 | Toilet_Wall dado | 20d | 2026-11-12 | 2026-12-02 | 2378 |  | 7 Days Work | 9182604 |
| 2380 | 36900.37000.37100.37800.38500.42000.59400.813700 | Toilet_Granite Work-Ledge wall top | 3d | 2026-12-02 | 2026-12-05 | 2379 |  | 7 Days Work | 9182614 |
| 2381 | 36900.37000.37100.37800.38500.42000.59400.813800 | Toilet_Floor Tilling work | 20d | 2026-12-05 | 2026-12-25 | 2380 |  | 7 Days Work | 9182624 |
| 2382 | 36900.37000.37100.37800.38500.42000.59400.813900 | Toilet_1st row of dado | 5d | 2026-12-25 | 2026-12-30 | 2381 |  | 7 Days Work | 9182634 |
| 2383 | 36900.37000.37100.37800.38500.42000.59400.814000 | Toilet_Window Fixing | 14d | 2026-12-30 | 2027-01-13 | 2382 |  | 7 Days Work | 9182644 |
| 2384 | 36900.37000.37100.37800.38500.42000.59400.814100 | Toilet_Services above False ceiling | 21d | 2027-01-13 | 2027-02-03 | 2383 |  | 7 Days Work | 9182654 |
| 2385 | 36900.37000.37100.37800.38500.42000.59400.814200 | Toilet_False Ceiling framing | 12d | 2027-02-03 | 2027-02-15 | 2384 |  | 7 Days Work | 9182664 |
| 2386 | 36900.37000.37100.37800.38500.42000.59400.814300 | Toilet_Door Frame | 5d | 2027-02-15 | 2027-02-20 | 2385 |  | 7 Days Work | 9182674 |
| 2387 | 36900.37000.37100.37800.38500.42000.59400.814400 | Toilet_Epoxy Tile Grouting | 7d | 2027-04-17 | 2027-04-24 | 2362SS |  | 7 Days Work | 9182684 |
| 2388 | 36900.37000.37100.37800.38500.42000.59400.814500 | Toilet_False ceiling board fixing, CP Sanitary Fixture, Electric Fixture | 21d | 2027-04-24 | 2027-05-15 | 2387 |  | 7 Days Work | 9182694 |
| 2389 | 36900.37000.37100.37800.38500.42100 | **17th Habitable/19th Floor** | 245d | 2026-09-22 | 2027-05-25 |  | start no earlier than 2026-09-22 | 7 Days Work | 9170084 |
| 2390 | 36900.37000.37100.37800.38500.42100.268500 | Post Pour | 7d | 2026-09-22 | 2026-09-29 | 1425FS+15d |  | 7 Days Work | 9176394 |
| 2391 | 36900.37000.37100.37800.38500.42100.268600 | MEP Clearance -1 | 5d | 2026-09-29 | 2026-10-04 | 2390 |  | 7 Days Work | 9176404 |
| 2392 | 36900.37000.37100.37800.38500.42100.268700 | Benchmark | 1d | 2026-10-04 | 2026-10-05 | 2391 |  | 7 Days Work | 9176414 |
| 2393 | 36900.37000.37100.37800.38500.42100.268800 | Temporary Railing | 3d | 2026-10-05 | 2026-10-08 | 2392 |  | 7 Days Work | 9176424 |
| 2394 | 36900.37000.37100.37800.38500.42100.268900 | Blockwork | 10d | 2026-10-08 | 2026-10-18 | 2393 |  | 7 Days Work | 9176434 |
| 2395 | 36900.37000.37100.37800.38500.42100.269000 | MEP Clearance -2 | 10d | 2026-10-18 | 2026-10-28 | 2394 |  | 7 Days Work | 9176444 |
| 2396 | 36900.37000.37100.37800.38500.42100.269100 | Gypsum Plaster | 14d | 2026-10-28 | 2026-11-11 | 2395 |  | 7 Days Work | 9176454 |
| 2397 | 36900.37000.37100.37800.38500.42100.269200 | Kitchen Platform | 3d | 2026-11-11 | 2026-11-14 | 2396 |  | 7 Days Work | 9176464 |
| 2398 | 36900.37000.37100.37800.38500.42100.269300 | Kitchen dado | 7d | 2026-11-14 | 2026-11-21 | 2397 |  | 7 Days Work | 9176474 |
| 2399 | 36900.37000.37100.37800.38500.42100.269400 | Fire Fighting | 5d | 2026-11-21 | 2026-11-26 | 2398 |  | 7 Days Work | 9176484 |
| 2400 | 36900.37000.37100.37800.38500.42100.269500 | Anticapilary | 5d | 2026-11-26 | 2026-12-01 | 2399 |  | 7 Days Work | 9176494 |
| 2401 | 36900.37000.37100.37800.38500.42100.269600 | Stone Laying | 10d | 2027-01-03 | 2027-01-13 | 2441 |  | 7 Days Work | 9176504 |
| 2402 | 36900.37000.37100.37800.38500.42100.269700 | Tiles Laying | 7d | 2027-01-03 | 2027-01-10 | 2441 |  | 7 Days Work | 9176514 |
| 2403 | 36900.37000.37100.37800.38500.42100.269800 | 1st cutting/polishing of stone flooring | 7d | 2027-01-10 | 2027-01-17 | 2402 |  | 7 Days Work | 9176524 |
| 2404 | 36900.37000.37100.37800.38500.42100.269900 | Tiles/Stone skirting | 5d | 2027-01-17 | 2027-01-22 | 2403 |  | 7 Days Work | 9176534 |
| 2405 | 36900.37000.37100.37800.38500.42100.270000 | Protechtion sheet | 1d | 2027-01-22 | 2027-01-23 | 2404 |  | 7 Days Work | 9176544 |
| 2406 | 36900.37000.37100.37800.38500.42100.270100 | Installation of Temporary Door | 1d | 2027-01-23 | 2027-01-24 | 2405 |  | 7 Days Work | 9176554 |
| 2407 | 36900.37000.37100.37800.38500.42100.270200 | Fixing of window tracks | 5d | 2027-01-24 | 2027-01-29 | 2406 |  | 7 Days Work | 9176564 |
| 2408 | 36900.37000.37100.37800.38500.42100.270300 | Wire Pulling | 7d | 2027-01-29 | 2027-02-05 | 2407 |  | 7 Days Work | 9176574 |
| 2409 | 36900.37000.37100.37800.38500.42100.270400 | Gypsum Remaining | 5d | 2027-02-05 | 2027-02-10 | 2408 |  | 7 Days Work | 9176584 |
| 2410 | 36900.37000.37100.37800.38500.42100.270500 | Fixing of windoow shutter | 5d | 2027-02-10 | 2027-02-15 | 2409 |  | 7 Days Work | 9176594 |
| 2411 | 36900.37000.37100.37800.38500.42100.270600 | Putty Works - walls & ceiling | 15d | 2027-02-15 | 2027-03-02 | 2410 |  | 7 Days Work | 9176604 |
| 2412 | 36900.37000.37100.37800.38500.42100.270700 | False Ceiling- Framing | 10d | 2027-03-02 | 2027-03-12 | 2411 |  | 7 Days Work | 9176614 |
| 2413 | 36900.37000.37100.37800.38500.42100.270800 | Pre Hung Door | 3d | 2027-03-12 | 2027-03-15 | 2412 |  | 7 Days Work | 9176624 |
| 2414 | 36900.37000.37100.37800.38500.42100.270900 | Protechtion sheet | 2d | 2027-03-15 | 2027-03-17 | 2413 |  | 7 Days Work | 9176634 |
| 2415 | 36900.37000.37100.37800.38500.42100.271000 | Skirting near door | 2d | 2027-03-17 | 2027-03-19 | 2414 |  | 7 Days Work | 9176644 |
| 2416 | 36900.37000.37100.37800.38500.42100.271100 | Electrical Switch box fixing | 14d | 2027-03-19 | 2027-04-02 | 2415 |  | 7 Days Work | 9176654 |
| 2417 | 36900.37000.37100.37800.38500.42100.271200 | Fire Fighting painting | 5d | 2027-04-02 | 2027-04-07 | 2416 |  | 7 Days Work | 9176664 |
| 2418 | 36900.37000.37100.37800.38500.42100.271300 | Protection of all flooring, door & window hardware | 5d | 2027-04-07 | 2027-04-12 | 2417 |  | 7 Days Work | 9176674 |
| 2419 | 36900.37000.37100.37800.38500.42100.271400 | 1st coat primer- ceiling 1st & walls | 14d | 2027-04-12 | 2027-04-26 | 2418 |  | 7 Days Work | 9176684 |
| 2420 | 36900.37000.37100.37800.38500.42100.271500 | Wooden Flooring | 5d | 2027-04-26 | 2027-05-01 | 2419 |  | 7 Days Work | 9176694 |
| 2421 | 36900.37000.37100.37800.38500.42100.271600 | Removing of Temporary Railing & installation of Glass Railing | 5d | 2027-04-26 | 2027-05-01 | 2419 |  | 7 Days Work | 9176704 |
| 2422 | 36900.37000.37100.37800.38500.42100.271700 | Tile Grouting | 7d | 2027-04-26 | 2027-05-03 | 2419 |  | 7 Days Work | 9176714 |
| 2423 | 36900.37000.37100.37800.38500.42100.271800 | False Ceiling | 5d | 2027-05-03 | 2027-05-08 | 2422 |  | 7 Days Work | 9176724 |
| 2424 | 36900.37000.37100.37800.38500.42100.271900 | 2nd coat of primer | 10d | 2027-05-08 | 2027-05-18 | 2423 |  | 7 Days Work | 9176734 |
| 2425 | 36900.37000.37100.37800.38500.42100.272000 | Final cutting/polishing of stone flooring | 7d | 2027-05-18 | 2027-05-25 | 2424 |  | 7 Days Work | 9176744 |

| ID | WBS | Task | Duration | Start | Finish | Predecessors | Constraint | Calendar | Unique_Task_ID |
| --- | --- | --- | --- | --- | --- | --- | --- | --- | --- |
| 2426 | 36900.37000.37100.37800.38500.42100.59500 | **Toilet** | 237d | 2026-09-29 | 2027-05-24 |  | start no earlier than 2026-09-29 | 7 Days Work | 9170284 |
| 2427 | 36900.37000.37100.37800.38500.42100.59500.814600 | Toilet_MEP Clearance -1 | 7d | 2026-09-29 | 2026-10-06 | 2390 |  | 7 Days Work | 9182704 |
| 2428 | 36900.37000.37100.37800.38500.42100.59500.814700 | Toilet_Level Marking | 1d | 2026-10-06 | 2026-10-07 | 2427 |  | 7 Days Work | 9182714 |
| 2429 | 36900.37000.37100.37800.38500.42100.59500.814800 | Toilet_Chasing work for Electrical conduit & concealed plumbing | 5d | 2026-10-07 | 2026-10-12 | 2428 |  | 7 Days Work | 9182724 |
| 2430 | 36900.37000.37100.37800.38500.42100.59500.814900 | Toilet_Plumbing work 1st fix | 5d | 2026-10-12 | 2026-10-17 | 2429 |  | 7 Days Work | 9182734 |
| 2431 | 36900.37000.37100.37800.38500.42100.59500.815000 | Toilet_Sleeve/Bore Packing | 5d | 2026-10-17 | 2026-10-22 | 2430 |  | 7 Days Work | 9182744 |
| 2432 | 36900.37000.37100.37800.38500.42100.59500.815100 | Toilet_Waterproofing | 10d | 2026-10-22 | 2026-11-01 | 2431 |  | 7 Days Work | 9182754 |
| 2433 | 36900.37000.37100.37800.38500.42100.59500.815200 | Toilet_Screed | 1d | 2026-11-01 | 2026-11-02 | 2432 |  | 7 Days Work | 9182764 |
| 2434 | 36900.37000.37100.37800.38500.42100.59500.815300 | Toilet_Plumbing 2nd fix | 5d | 2026-11-02 | 2026-11-07 | 2433 |  | 7 Days Work | 9182774 |
| 2435 | 36900.37000.37100.37800.38500.42100.59500.815400 | Toilet_Ledge wall | 5d | 2026-11-07 | 2026-11-12 | 2434 |  | 7 Days Work | 9182784 |
| 2436 | 36900.37000.37100.37800.38500.42100.59500.815500 | Toilet_Cement Plaster | 5d | 2026-11-12 | 2026-11-17 | 2435 |  | 7 Days Work | 9182794 |
| 2437 | 36900.37000.37100.37800.38500.42100.59500.815600 | Toilet_Door Frame | 1d | 2026-11-17 | 2026-11-18 | 2436 |  | 7 Days Work | 9182804 |
| 2438 | 36900.37000.37100.37800.38500.42100.59500.815700 | Toilet_Wash basin & Couter | 3d | 2026-11-18 | 2026-11-21 | 2437 |  | 7 Days Work | 9182814 |
| 2439 | 36900.37000.37100.37800.38500.42100.59500.815800 | Toilet_Wall dado | 20d | 2026-11-21 | 2026-12-11 | 2438 |  | 7 Days Work | 9182824 |
| 2440 | 36900.37000.37100.37800.38500.42100.59500.815900 | Toilet_Granite Work-Ledge wall top | 3d | 2026-12-11 | 2026-12-14 | 2439 |  | 7 Days Work | 9182834 |
| 2441 | 36900.37000.37100.37800.38500.42100.59500.816000 | Toilet_Floor Tilling work | 20d | 2026-12-14 | 2027-01-03 | 2440 |  | 7 Days Work | 9182844 |
| 2442 | 36900.37000.37100.37800.38500.42100.59500.816100 | Toilet_1st row of dado | 5d | 2027-01-03 | 2027-01-08 | 2441 |  | 7 Days Work | 9182854 |
| 2443 | 36900.37000.37100.37800.38500.42100.59500.816200 | Toilet_Window Fixing | 14d | 2027-01-08 | 2027-01-22 | 2442 |  | 7 Days Work | 9182864 |
| 2444 | 36900.37000.37100.37800.38500.42100.59500.816300 | Toilet_Services above False ceiling | 21d | 2027-01-22 | 2027-02-12 | 2443 |  | 7 Days Work | 9182874 |
| 2445 | 36900.37000.37100.37800.38500.42100.59500.816400 | Toilet_False Ceiling framing | 12d | 2027-02-12 | 2027-02-24 | 2444 |  | 7 Days Work | 9182884 |
| 2446 | 36900.37000.37100.37800.38500.42100.59500.816500 | Toilet_Door Frame | 5d | 2027-02-24 | 2027-03-01 | 2445 |  | 7 Days Work | 9182894 |
| 2447 | 36900.37000.37100.37800.38500.42100.59500.816600 | Toilet_Epoxy Tile Grouting | 7d | 2027-04-26 | 2027-05-03 | 2422SS |  | 7 Days Work | 9182904 |
| 2448 | 36900.37000.37100.37800.38500.42100.59500.816700 | Toilet_False ceiling board fixing, CP Sanitary Fixture, Electric Fixture | 21d | 2027-05-03 | 2027-05-24 | 2447 |  | 7 Days Work | 9182914 |
| 2449 | 36900.37000.37100.37800.38500.42200 | **18th Habitable/20th Floor** | 245d | 2026-10-04 | 2027-06-06 |  | start no earlier than 2026-10-04 | 7 Days Work | 9170094 |
| 2450 | 36900.37000.37100.37800.38500.42200.272100 | Post Pour | 7d | 2026-10-04 | 2026-10-11 | 1426FS+15d |  | 7 Days Work | 9176754 |
| 2451 | 36900.37000.37100.37800.38500.42200.272200 | MEP Clearance -1 | 5d | 2026-10-11 | 2026-10-16 | 2450 |  | 7 Days Work | 9176764 |
| 2452 | 36900.37000.37100.37800.38500.42200.272300 | Benchmark | 1d | 2026-10-16 | 2026-10-17 | 2451 |  | 7 Days Work | 9176774 |
| 2453 | 36900.37000.37100.37800.38500.42200.272400 | Temporary Railing | 3d | 2026-10-17 | 2026-10-20 | 2452 |  | 7 Days Work | 9176784 |
| 2454 | 36900.37000.37100.37800.38500.42200.272500 | Blockwork | 10d | 2026-10-20 | 2026-10-30 | 2453 |  | 7 Days Work | 9176794 |
| 2455 | 36900.37000.37100.37800.38500.42200.272600 | MEP Clearance -2 | 10d | 2026-10-30 | 2026-11-09 | 2454 |  | 7 Days Work | 9176804 |
| 2456 | 36900.37000.37100.37800.38500.42200.272700 | Gypsum Plaster | 14d | 2026-11-09 | 2026-11-23 | 2455 |  | 7 Days Work | 9043574 |
| 2457 | 36900.37000.37100.37800.38500.42200.272800 | Kitchen Platform | 3d | 2026-11-23 | 2026-11-26 | 2456 |  | 7 Days Work | 9176824 |
| 2458 | 36900.37000.37100.37800.38500.42200.272900 | Kitchen dado | 7d | 2026-11-26 | 2026-12-03 | 2457 |  | 7 Days Work | 9176834 |
| 2459 | 36900.37000.37100.37800.38500.42200.273000 | Fire Fighting | 5d | 2026-12-03 | 2026-12-08 | 2458 |  | 7 Days Work | 9176844 |
| 2460 | 36900.37000.37100.37800.38500.42200.273100 | Anticapilary | 5d | 2026-12-08 | 2026-12-13 | 2459 |  | 7 Days Work | 9176854 |
| 2461 | 36900.37000.37100.37800.38500.42200.273200 | Stone Laying | 10d | 2027-01-15 | 2027-01-25 | 2501 |  | 7 Days Work | 9176864 |
| 2462 | 36900.37000.37100.37800.38500.42200.273300 | Tiles Laying | 7d | 2027-01-15 | 2027-01-22 | 2501 |  | 7 Days Work | 9043584 |
| 2463 | 36900.37000.37100.37800.38500.42200.273400 | 1st cutting/polishing of stone flooring | 7d | 2027-01-22 | 2027-01-29 | 2462 |  | 7 Days Work | 9176884 |
| 2464 | 36900.37000.37100.37800.38500.42200.273500 | Tiles/Stone skirting | 5d | 2027-01-29 | 2027-02-03 | 2463 |  | 7 Days Work | 9176894 |
| 2465 | 36900.37000.37100.37800.38500.42200.273600 | Protechtion sheet | 1d | 2027-02-03 | 2027-02-04 | 2464 |  | 7 Days Work | 9176904 |
| 2466 | 36900.37000.37100.37800.38500.42200.273700 | Installation of Temporary Door | 1d | 2027-02-04 | 2027-02-05 | 2465 |  | 7 Days Work | 9176914 |
| 2467 | 36900.37000.37100.37800.38500.42200.273800 | Fixing of window tracks | 5d | 2027-02-05 | 2027-02-10 | 2466 |  | 7 Days Work | 9176924 |
| 2468 | 36900.37000.37100.37800.38500.42200.273900 | Wire Pulling | 7d | 2027-02-10 | 2027-02-17 | 2467 |  | 7 Days Work | 9176934 |
| 2469 | 36900.37000.37100.37800.38500.42200.274000 | Gypsum Remaining | 5d | 2027-02-17 | 2027-02-22 | 2468 |  | 7 Days Work | 9176944 |
| 2470 | 36900.37000.37100.37800.38500.42200.274100 | Fixing of windoow shutter | 5d | 2027-02-22 | 2027-02-27 | 2469 |  | 7 Days Work | 9176954 |
| 2471 | 36900.37000.37100.37800.38500.42200.274200 | Putty Works - walls & ceiling | 15d | 2027-02-27 | 2027-03-14 | 2470 |  | 7 Days Work | 9176964 |
| 2472 | 36900.37000.37100.37800.38500.42200.274300 | False Ceiling- Framing | 10d | 2027-03-14 | 2027-03-24 | 2471 |  | 7 Days Work | 9176974 |
| 2473 | 36900.37000.37100.37800.38500.42200.274400 | Pre Hung Door | 3d | 2027-03-24 | 2027-03-27 | 2472 |  | 7 Days Work | 9176984 |
| 2474 | 36900.37000.37100.37800.38500.42200.274500 | Protechtion sheet | 2d | 2027-03-27 | 2027-03-29 | 2473 |  | 7 Days Work | 9176994 |
| 2475 | 36900.37000.37100.37800.38500.42200.274600 | Skirting near door | 2d | 2027-03-29 | 2027-03-31 | 2474 |  | 7 Days Work | 9177004 |
| 2476 | 36900.37000.37100.37800.38500.42200.274700 | Electrical Switch box fixing | 14d | 2027-03-31 | 2027-04-14 | 2475 |  | 7 Days Work | 9177014 |
| 2477 | 36900.37000.37100.37800.38500.42200.274800 | Fire Fighting painting | 5d | 2027-04-14 | 2027-04-19 | 2476 |  | 7 Days Work | 9177024 |
| 2478 | 36900.37000.37100.37800.38500.42200.274900 | Protection of all flooring, door & window hardware | 5d | 2027-04-19 | 2027-04-24 | 2477 |  | 7 Days Work | 9177034 |
| 2479 | 36900.37000.37100.37800.38500.42200.275000 | 1st coat primer- ceiling 1st & walls | 14d | 2027-04-24 | 2027-05-08 | 2478 |  | 7 Days Work | 9177044 |
| 2480 | 36900.37000.37100.37800.38500.42200.275100 | Wooden Flooring | 5d | 2027-05-08 | 2027-05-13 | 2479 |  | 7 Days Work | 9177054 |
| 2481 | 36900.37000.37100.37800.38500.42200.275200 | Removing of Temporary Railing & installation of Glass Railing | 5d | 2027-05-08 | 2027-05-13 | 2479 |  | 7 Days Work | 9177064 |
| 2482 | 36900.37000.37100.37800.38500.42200.275300 | Tile Grouting | 7d | 2027-05-08 | 2027-05-15 | 2479 |  | 7 Days Work | 9177074 |
| 2483 | 36900.37000.37100.37800.38500.42200.275400 | False Ceiling | 5d | 2027-05-15 | 2027-05-20 | 2482 |  | 7 Days Work | 9177084 |
| 2484 | 36900.37000.37100.37800.38500.42200.275500 | 2nd coat of primer | 10d | 2027-05-20 | 2027-05-30 | 2483 |  | 7 Days Work | 9177094 |
| 2485 | 36900.37000.37100.37800.38500.42200.275600 | Final cutting/polishing of stone flooring | 7d | 2027-05-30 | 2027-06-06 | 2484 |  | 7 Days Work | 9177104 |

| ID | WBS | Task | Duration | Start | Finish | Predecessors | Constraint | Calendar | Unique_Task_ID |
| --- | --- | --- | --- | --- | --- | --- | --- | --- | --- |
| 2486 | 36900.37000.37100.37800.38500.42200.59600 | **Toilet** | 237d | 2026-10-11 | 2027-06-05 |  | start no earlier than 2026-10-11 | 7 Days Work | 9170294 |
| 2487 | 36900.37000.37100.37800.38500.42200.59600.816800 | Toilet_MEP Clearance -1 | 7d | 2026-10-11 | 2026-10-18 | 2450 |  | 7 Days Work | 9182924 |
| 2488 | 36900.37000.37100.37800.38500.42200.59600.816900 | Toilet_Level Marking | 1d | 2026-10-18 | 2026-10-19 | 2487 |  | 7 Days Work | 9182934 |
| 2489 | 36900.37000.37100.37800.38500.42200.59600.817000 | Toilet_Chasing work for Electrical conduit & concealed plumbing | 5d | 2026-10-19 | 2026-10-24 | 2488 |  | 7 Days Work | 9182944 |
| 2490 | 36900.37000.37100.37800.38500.42200.59600.817100 | Toilet_Plumbing work 1st fix | 5d | 2026-10-24 | 2026-10-29 | 2489 |  | 7 Days Work | 9182954 |
| 2491 | 36900.37000.37100.37800.38500.42200.59600.817200 | Toilet_Sleeve/Bore Packing | 5d | 2026-10-29 | 2026-11-03 | 2490 |  | 7 Days Work | 9182964 |
| 2492 | 36900.37000.37100.37800.38500.42200.59600.817300 | Toilet_Waterproofing | 10d | 2026-11-03 | 2026-11-13 | 2491 |  | 7 Days Work | 9182974 |
| 2493 | 36900.37000.37100.37800.38500.42200.59600.817400 | Toilet_Screed | 1d | 2026-11-13 | 2026-11-14 | 2492 |  | 7 Days Work | 9182984 |
| 2494 | 36900.37000.37100.37800.38500.42200.59600.817500 | Toilet_Plumbing 2nd fix | 5d | 2026-11-14 | 2026-11-19 | 2493 |  | 7 Days Work | 9182994 |
| 2495 | 36900.37000.37100.37800.38500.42200.59600.817600 | Toilet_Ledge wall | 5d | 2026-11-19 | 2026-11-24 | 2494 |  | 7 Days Work | 9183004 |
| 2496 | 36900.37000.37100.37800.38500.42200.59600.817700 | Toilet_Cement Plaster | 5d | 2026-11-24 | 2026-11-29 | 2495 |  | 7 Days Work | 9183014 |
| 2497 | 36900.37000.37100.37800.38500.42200.59600.817800 | Toilet_Door Frame | 1d | 2026-11-29 | 2026-11-30 | 2496 |  | 7 Days Work | 9183024 |
| 2498 | 36900.37000.37100.37800.38500.42200.59600.817900 | Toilet_Wash basin & Couter | 3d | 2026-11-30 | 2026-12-03 | 2497 |  | 7 Days Work | 9183034 |
| 2499 | 36900.37000.37100.37800.38500.42200.59600.818000 | Toilet_Wall dado | 20d | 2026-12-03 | 2026-12-23 | 2498 |  | 7 Days Work | 9183044 |
| 2500 | 36900.37000.37100.37800.38500.42200.59600.818100 | Toilet_Granite Work-Ledge wall top | 3d | 2026-12-23 | 2026-12-26 | 2499 |  | 7 Days Work | 9183054 |
| 2501 | 36900.37000.37100.37800.38500.42200.59600.818200 | Toilet_Floor Tilling work | 20d | 2026-12-26 | 2027-01-15 | 2500 |  | 7 Days Work | 9183064 |
| 2502 | 36900.37000.37100.37800.38500.42200.59600.818300 | Toilet_1st row of dado | 5d | 2027-01-15 | 2027-01-20 | 2501 |  | 7 Days Work | 9183074 |
| 2503 | 36900.37000.37100.37800.38500.42200.59600.818400 | Toilet_Window Fixing | 14d | 2027-01-20 | 2027-02-03 | 2502 |  | 7 Days Work | 9183084 |
| 2504 | 36900.37000.37100.37800.38500.42200.59600.818500 | Toilet_Services above False ceiling | 21d | 2027-02-03 | 2027-02-24 | 2503 |  | 7 Days Work | 9183094 |
| 2505 | 36900.37000.37100.37800.38500.42200.59600.818600 | Toilet_False Ceiling framing | 12d | 2027-02-24 | 2027-03-08 | 2504 |  | 7 Days Work | 9183104 |
| 2506 | 36900.37000.37100.37800.38500.42200.59600.818700 | Toilet_Door Frame | 5d | 2027-03-08 | 2027-03-13 | 2505 |  | 7 Days Work | 9183114 |
| 2507 | 36900.37000.37100.37800.38500.42200.59600.818800 | Toilet_Epoxy Tile Grouting | 7d | 2027-05-08 | 2027-05-15 | 2482SS |  | 7 Days Work | 9183124 |
| 2508 | 36900.37000.37100.37800.38500.42200.59600.818900 | Toilet_False ceiling board fixing, CP Sanitary Fixture, Electric Fixture | 21d | 2027-05-15 | 2027-06-05 | 2507 |  | 7 Days Work | 9183134 |
| 2509 | 36900.37000.37100.37800.52800 | **Common area Finishing** | 311d | 2026-12-05 | 2027-10-12 |  | start no earlier than 2026-12-05 | 7 Days Work | 9170114 |
| 2510 | 36900.37000.37100.37800.52800.80300 | **1st Habitable/3rd Floor** | 158d | 2026-12-05 | 2027-05-12 |  | start no earlier than 2026-12-05 | 7 Days Work | 9170504 |
| 2511 | 36900.37000.37100.37800.52800.80300.275700 | Side blockwork for lift shafts | 9d | 2026-12-05 | 2026-12-14 | 2696 |  | 7 Days Work | 9177474 |
| 2512 | 36900.37000.37100.37800.52800.80300.275800 | Door Threshold for lifts | 6d | 2026-12-14 | 2026-12-20 | 2511 |  | 7 Days Work | 9177484 |
| 2513 | 36900.37000.37100.37800.52800.80300.275900 | Granite Cladding | 10d | 2026-12-20 | 2026-12-30 | 2512 |  | 7 Days Work | 9177494 |
| 2514 | 36900.37000.37100.37800.52800.80300.276000 | MEP Services | 60d | 2026-12-30 | 2027-02-28 | 2513 |  | 7 Days Work | 9177504 |
| 2515 | 36900.37000.37100.37800.52800.80300.276100 | Flooring+Skirting | 20d | 2027-02-28 | 2027-03-20 | 2514 |  | 7 Days Work | 9177514 |
| 2516 | 36900.37000.37100.37800.52800.80300.276200 | Wall finishes | 21d | 2027-03-20 | 2027-04-10 | 2515 |  | 7 Days Work | 9177524 |
| 2517 | 36900.37000.37100.37800.52800.80300.276300 | False Ceiling | 10d | 2027-04-10 | 2027-04-20 | 2516 |  | 7 Days Work | 9177534 |
| 2518 | 36900.37000.37100.37800.52800.80300.276400 | Staircase | 15d | 2027-04-20 | 2027-05-05 | 2517 |  | 7 Days Work | 9177544 |
| 2519 | 36900.37000.37100.37800.52800.80300.276500 | Deep Cleaning | 7d | 2027-05-05 | 2027-05-12 | 2518 |  | 7 Days Work | 9177554 |

| ID | WBS | Task | Duration | Start | Finish | Predecessors | Constraint | Calendar | Unique_Task_ID |
| --- | --- | --- | --- | --- | --- | --- | --- | --- | --- |
| 2520 | 36900.37000.37100.37800.52800.80200 | **2nd Habitable/4th Floor** | 158d | 2026-12-14 | 2027-05-21 |  | start no earlier than 2026-12-14 | 7 Days Work | 9170494 |
| 2521 | 36900.37000.37100.37800.52800.80200.276600 | Side blockwork for lift shafts | 9d | 2026-12-14 | 2026-12-23 | 2511 |  | 7 Days Work | 9177564 |
| 2522 | 36900.37000.37100.37800.52800.80200.276700 | Door Threshold for lifts | 6d | 2026-12-23 | 2026-12-29 | 2521 |  | 7 Days Work | 9177574 |
| 2523 | 36900.37000.37100.37800.52800.80200.276800 | Granite Cladding | 10d | 2026-12-29 | 2027-01-08 | 2522 |  | 7 Days Work | 9177584 |
| 2524 | 36900.37000.37100.37800.52800.80200.276900 | MEP Services | 60d | 2027-01-08 | 2027-03-09 | 2523 |  | 7 Days Work | 9177594 |
| 2525 | 36900.37000.37100.37800.52800.80200.277000 | Flooring+Skirting | 20d | 2027-03-09 | 2027-03-29 | 2524 |  | 7 Days Work | 9177604 |
| 2526 | 36900.37000.37100.37800.52800.80200.277100 | Wall finishes | 21d | 2027-03-29 | 2027-04-19 | 2525 |  | 7 Days Work | 9177614 |
| 2527 | 36900.37000.37100.37800.52800.80200.277200 | False Ceiling | 10d | 2027-04-19 | 2027-04-29 | 2526 |  | 7 Days Work | 9177624 |
| 2528 | 36900.37000.37100.37800.52800.80200.277300 | Staircase | 15d | 2027-04-29 | 2027-05-14 | 2527 |  | 7 Days Work | 9177634 |
| 2529 | 36900.37000.37100.37800.52800.80200.277400 | Deep Cleaning | 7d | 2027-05-14 | 2027-05-21 | 2528 |  | 7 Days Work | 9177644 |
| 2530 | 36900.37000.37100.37800.52800.80100 | **3rd Habitable/5th Floor** | 158d | 2026-12-23 | 2027-05-30 |  | start no earlier than 2026-12-23 | 7 Days Work | 9170484 |
| 2531 | 36900.37000.37100.37800.52800.80100.277500 | Side blockwork for lift shafts | 9d | 2026-12-23 | 2027-01-01 | 2521 |  | 7 Days Work | 9177654 |
| 2532 | 36900.37000.37100.37800.52800.80100.277600 | Door Threshold for lifts | 6d | 2027-01-01 | 2027-01-07 | 2531 |  | 7 Days Work | 9177664 |
| 2533 | 36900.37000.37100.37800.52800.80100.277700 | Granite Cladding | 10d | 2027-01-07 | 2027-01-17 | 2532 |  | 7 Days Work | 9177674 |
| 2534 | 36900.37000.37100.37800.52800.80100.277800 | MEP Services | 60d | 2027-01-17 | 2027-03-18 | 2533 |  | 7 Days Work | 9177684 |
| 2535 | 36900.37000.37100.37800.52800.80100.277900 | Flooring+Skirting | 20d | 2027-03-18 | 2027-04-07 | 2534 |  | 7 Days Work | 9177694 |
| 2536 | 36900.37000.37100.37800.52800.80100.278000 | Wall finishes | 21d | 2027-04-07 | 2027-04-28 | 2535 |  | 7 Days Work | 9177704 |
| 2537 | 36900.37000.37100.37800.52800.80100.278100 | False Ceiling | 10d | 2027-04-28 | 2027-05-08 | 2536 |  | 7 Days Work | 9177714 |
| 2538 | 36900.37000.37100.37800.52800.80100.278200 | Staircase | 15d | 2027-05-08 | 2027-05-23 | 2537 |  | 7 Days Work | 9177724 |
| 2539 | 36900.37000.37100.37800.52800.80100.278300 | Deep Cleaning | 7d | 2027-05-23 | 2027-05-30 | 2538 |  | 7 Days Work | 9177734 |
| 2540 | 36900.37000.37100.37800.52800.80000 | **4th Habitable/6th Floor** | 158d | 2027-01-01 | 2027-06-08 |  | start no earlier than 2027-01-01 | 7 Days Work | 9170444 |
| 2541 | 36900.37000.37100.37800.52800.80000.278400 | Side blockwork for lift shafts | 9d | 2027-01-01 | 2027-01-10 | 2531 |  | 7 Days Work | 9177744 |
| 2542 | 36900.37000.37100.37800.52800.80000.278500 | Door Threshold for lifts | 6d | 2027-01-10 | 2027-01-16 | 2541 |  | 7 Days Work | 9177754 |
| 2543 | 36900.37000.37100.37800.52800.80000.278600 | Granite Cladding | 10d | 2027-01-16 | 2027-01-26 | 2542 |  | 7 Days Work | 9177764 |
| 2544 | 36900.37000.37100.37800.52800.80000.278700 | MEP Services | 60d | 2027-01-26 | 2027-03-27 | 2543 |  | 7 Days Work | 9177774 |
| 2545 | 36900.37000.37100.37800.52800.80000.278800 | Flooring+Skirting | 20d | 2027-03-27 | 2027-04-16 | 2544 |  | 7 Days Work | 9177784 |
| 2546 | 36900.37000.37100.37800.52800.80000.278900 | Wall finishes | 21d | 2027-04-16 | 2027-05-07 | 2545 |  | 7 Days Work | 9177794 |
| 2547 | 36900.37000.37100.37800.52800.80000.279000 | False Ceiling | 10d | 2027-05-07 | 2027-05-17 | 2546 |  | 7 Days Work | 9177804 |
| 2548 | 36900.37000.37100.37800.52800.80000.279100 | Staircase | 15d | 2027-05-17 | 2027-06-01 | 2547 |  | 7 Days Work | 9177814 |
| 2549 | 36900.37000.37100.37800.52800.80000.279200 | Deep Cleaning | 7d | 2027-06-01 | 2027-06-08 | 2548 |  | 7 Days Work | 9177824 |

| ID | WBS | Task | Duration | Start | Finish | Predecessors | Constraint | Calendar | Unique_Task_ID |
| --- | --- | --- | --- | --- | --- | --- | --- | --- | --- |
| 2550 | 36900.37000.37100.37800.52800.79900 | **5th Habitable/7th Floor** | 158d | 2027-01-10 | 2027-06-17 |  | start no earlier than 2027-01-10 | 7 Days Work | 9170434 |
| 2551 | 36900.37000.37100.37800.52800.79900.279300 | Side blockwork for lift shafts | 9d | 2027-01-10 | 2027-01-19 | 2541 |  | 7 Days Work | 9177834 |
| 2552 | 36900.37000.37100.37800.52800.79900.279400 | Door Threshold for lifts | 6d | 2027-01-19 | 2027-01-25 | 2551 |  | 7 Days Work | 9177844 |
| 2553 | 36900.37000.37100.37800.52800.79900.279500 | Granite Cladding | 10d | 2027-01-25 | 2027-02-04 | 2552 |  | 7 Days Work | 9177854 |
| 2554 | 36900.37000.37100.37800.52800.79900.279600 | MEP Services | 60d | 2027-02-04 | 2027-04-05 | 2553 |  | 7 Days Work | 9177864 |
| 2555 | 36900.37000.37100.37800.52800.79900.279700 | Flooring+Skirting | 20d | 2027-04-05 | 2027-04-25 | 2554 |  | 7 Days Work | 9177874 |
| 2556 | 36900.37000.37100.37800.52800.79900.279800 | Wall finishes | 21d | 2027-04-25 | 2027-05-16 | 2555 |  | 7 Days Work | 9177884 |
| 2557 | 36900.37000.37100.37800.52800.79900.279900 | False Ceiling | 10d | 2027-05-16 | 2027-05-26 | 2556 |  | 7 Days Work | 9177894 |
| 2558 | 36900.37000.37100.37800.52800.79900.280000 | Staircase | 15d | 2027-05-26 | 2027-06-10 | 2557 |  | 7 Days Work | 9177904 |
| 2559 | 36900.37000.37100.37800.52800.79900.280100 | Deep Cleaning | 7d | 2027-06-10 | 2027-06-17 | 2558 |  | 7 Days Work | 9177914 |
| 2560 | 36900.37000.37100.37800.52800.79800 | **6th Habitable/8th Floor** | 158d | 2027-01-19 | 2027-06-26 |  | start no earlier than 2027-01-19 | 7 Days Work | 9170334 |
| 2561 | 36900.37000.37100.37800.52800.79800.280200 | Side blockwork for lift shafts | 9d | 2027-01-19 | 2027-01-28 | 2551 |  | 7 Days Work | 9177924 |
| 2562 | 36900.37000.37100.37800.52800.79800.280300 | Door Threshold for lifts | 6d | 2027-01-28 | 2027-02-03 | 2561 |  | 7 Days Work | 9177934 |
| 2563 | 36900.37000.37100.37800.52800.79800.280400 | Granite Cladding | 10d | 2027-02-03 | 2027-02-13 | 2562 |  | 7 Days Work | 9177944 |
| 2564 | 36900.37000.37100.37800.52800.79800.280500 | MEP Services | 60d | 2027-02-13 | 2027-04-14 | 2563 |  | 7 Days Work | 9177954 |
| 2565 | 36900.37000.37100.37800.52800.79800.280600 | Flooring+Skirting | 20d | 2027-04-14 | 2027-05-04 | 2564 |  | 7 Days Work | 9177964 |
| 2566 | 36900.37000.37100.37800.52800.79800.280700 | Wall finishes | 21d | 2027-05-04 | 2027-05-25 | 2565 |  | 7 Days Work | 9177974 |
| 2567 | 36900.37000.37100.37800.52800.79800.280800 | False Ceiling | 10d | 2027-05-25 | 2027-06-04 | 2566 |  | 7 Days Work | 9177984 |
| 2568 | 36900.37000.37100.37800.52800.79800.280900 | Staircase | 15d | 2027-06-04 | 2027-06-19 | 2567 |  | 7 Days Work | 9177994 |
| 2569 | 36900.37000.37100.37800.52800.79800.281000 | Deep Cleaning | 7d | 2027-06-19 | 2027-06-26 | 2568 |  | 7 Days Work | 9178004 |
| 2570 | 36900.37000.37100.37800.52800.79700 | **7th Habitable/9th Floor** | 158d | 2027-01-28 | 2027-07-05 |  | start no earlier than 2027-01-28 | 7 Days Work | 9170354 |
| 2571 | 36900.37000.37100.37800.52800.79700.281100 | Side blockwork for lift shafts | 9d | 2027-01-28 | 2027-02-06 | 2561 |  | 7 Days Work | 9178014 |
| 2572 | 36900.37000.37100.37800.52800.79700.281200 | Door Threshold for lifts | 6d | 2027-02-06 | 2027-02-12 | 2571 |  | 7 Days Work | 9178024 |
| 2573 | 36900.37000.37100.37800.52800.79700.281300 | Granite Cladding | 10d | 2027-02-12 | 2027-02-22 | 2572 |  | 7 Days Work | 9178034 |
| 2574 | 36900.37000.37100.37800.52800.79700.281400 | MEP Services | 60d | 2027-02-22 | 2027-04-23 | 2573 |  | 7 Days Work | 9178044 |
| 2575 | 36900.37000.37100.37800.52800.79700.281500 | Flooring+Skirting | 20d | 2027-04-23 | 2027-05-13 | 2574 |  | 7 Days Work | 9178054 |
| 2576 | 36900.37000.37100.37800.52800.79700.281600 | Wall finishes | 21d | 2027-05-13 | 2027-06-03 | 2575 |  | 7 Days Work | 9178064 |
| 2577 | 36900.37000.37100.37800.52800.79700.281700 | False Ceiling | 10d | 2027-06-03 | 2027-06-13 | 2576 |  | 7 Days Work | 9178074 |
| 2578 | 36900.37000.37100.37800.52800.79700.281800 | Staircase | 15d | 2027-06-13 | 2027-06-28 | 2577 |  | 7 Days Work | 9178084 |
| 2579 | 36900.37000.37100.37800.52800.79700.281900 | Deep Cleaning | 7d | 2027-06-28 | 2027-07-05 | 2578 |  | 7 Days Work | 9178094 |

| ID | WBS | Task | Duration | Start | Finish | Predecessors | Constraint | Calendar | Unique_Task_ID |
| --- | --- | --- | --- | --- | --- | --- | --- | --- | --- |
| 2580 | 36900.37000.37100.37800.52800.79600 | **8th Habitable/10th Floor** | 158d | 2027-02-06 | 2027-07-14 |  | start no earlier than 2027-02-06 | 7 Days Work | 9170364 |
| 2581 | 36900.37000.37100.37800.52800.79600.282000 | Side blockwork for lift shafts | 9d | 2027-02-06 | 2027-02-15 | 2571 |  | 7 Days Work | 9178104 |
| 2582 | 36900.37000.37100.37800.52800.79600.282100 | Door Threshold for lifts | 6d | 2027-02-15 | 2027-02-21 | 2581 |  | 7 Days Work | 9178114 |
| 2583 | 36900.37000.37100.37800.52800.79600.282200 | Granite Cladding | 10d | 2027-02-21 | 2027-03-03 | 2582 |  | 7 Days Work | 9178124 |
| 2584 | 36900.37000.37100.37800.52800.79600.282300 | MEP Services | 60d | 2027-03-03 | 2027-05-02 | 2583 |  | 7 Days Work | 9178134 |
| 2585 | 36900.37000.37100.37800.52800.79600.282400 | Flooring+Skirting | 20d | 2027-05-02 | 2027-05-22 | 2584 |  | 7 Days Work | 9178144 |
| 2586 | 36900.37000.37100.37800.52800.79600.282500 | Wall finishes | 21d | 2027-05-22 | 2027-06-12 | 2585 |  | 7 Days Work | 9178154 |
| 2587 | 36900.37000.37100.37800.52800.79600.282600 | False Ceiling | 10d | 2027-06-12 | 2027-06-22 | 2586 |  | 7 Days Work | 9178164 |
| 2588 | 36900.37000.37100.37800.52800.79600.282700 | Staircase | 15d | 2027-06-22 | 2027-07-07 | 2587 |  | 7 Days Work | 9178174 |
| 2589 | 36900.37000.37100.37800.52800.79600.282800 | Deep Cleaning | 7d | 2027-07-07 | 2027-07-14 | 2588 |  | 7 Days Work | 9178184 |
| 2590 | 36900.37000.37100.37800.52800.79500 | **9th Habitable/11th Floor** | 158d | 2027-02-15 | 2027-07-23 |  | start no earlier than 2027-02-15 | 7 Days Work | 9170374 |
| 2591 | 36900.37000.37100.37800.52800.79500.282900 | Side blockwork for lift shafts | 9d | 2027-02-15 | 2027-02-24 | 2581 |  | 7 Days Work | 9178194 |
| 2592 | 36900.37000.37100.37800.52800.79500.283000 | Door Threshold for lifts | 6d | 2027-02-24 | 2027-03-02 | 2591 |  | 7 Days Work | 9178204 |
| 2593 | 36900.37000.37100.37800.52800.79500.283100 | Granite Cladding | 10d | 2027-03-02 | 2027-03-12 | 2592 |  | 7 Days Work | 9178214 |
| 2594 | 36900.37000.37100.37800.52800.79500.283200 | MEP Services | 60d | 2027-03-12 | 2027-05-11 | 2593 |  | 7 Days Work | 9178224 |
| 2595 | 36900.37000.37100.37800.52800.79500.283300 | Flooring+Skirting | 20d | 2027-05-11 | 2027-05-31 | 2594 |  | 7 Days Work | 9178234 |
| 2596 | 36900.37000.37100.37800.52800.79500.283400 | Wall finishes | 21d | 2027-05-31 | 2027-06-21 | 2595 |  | 7 Days Work | 9178244 |
| 2597 | 36900.37000.37100.37800.52800.79500.283500 | False Ceiling | 10d | 2027-06-21 | 2027-07-01 | 2596 |  | 7 Days Work | 9178254 |
| 2598 | 36900.37000.37100.37800.52800.79500.283600 | Staircase | 15d | 2027-07-01 | 2027-07-16 | 2597 |  | 7 Days Work | 9178264 |
| 2599 | 36900.37000.37100.37800.52800.79500.283700 | Deep Cleaning | 7d | 2027-07-16 | 2027-07-23 | 2598 |  | 7 Days Work | 9178274 |
| 2600 | 36900.37000.37100.37800.52800.79400 | **10th Habitable/12th Floor** | 158d | 2027-02-24 | 2027-08-01 |  | start no earlier than 2027-02-24 | 7 Days Work | 9170344 |
| 2601 | 36900.37000.37100.37800.52800.79400.283800 | Side blockwork for lift shafts | 9d | 2027-02-24 | 2027-03-05 | 2591 |  | 7 Days Work | 9178284 |
| 2602 | 36900.37000.37100.37800.52800.79400.283900 | Door Threshold for lifts | 6d | 2027-03-05 | 2027-03-11 | 2601 |  | 7 Days Work | 9178294 |
| 2603 | 36900.37000.37100.37800.52800.79400.284000 | Granite Cladding | 10d | 2027-03-11 | 2027-03-21 | 2602 |  | 7 Days Work | 9178304 |
| 2604 | 36900.37000.37100.37800.52800.79400.284100 | MEP Services | 60d | 2027-03-21 | 2027-05-20 | 2603 |  | 7 Days Work | 9178314 |
| 2605 | 36900.37000.37100.37800.52800.79400.284200 | Flooring+Skirting | 20d | 2027-05-20 | 2027-06-09 | 2604 |  | 7 Days Work | 9178324 |
| 2606 | 36900.37000.37100.37800.52800.79400.284300 | Wall finishes | 21d | 2027-06-09 | 2027-06-30 | 2605 |  | 7 Days Work | 9178334 |
| 2607 | 36900.37000.37100.37800.52800.79400.284400 | False Ceiling | 10d | 2027-06-30 | 2027-07-10 | 2606 |  | 7 Days Work | 9178344 |
| 2608 | 36900.37000.37100.37800.52800.79400.284500 | Staircase | 15d | 2027-07-10 | 2027-07-25 | 2607 |  | 7 Days Work | 9178354 |
| 2609 | 36900.37000.37100.37800.52800.79400.284600 | Deep Cleaning | 7d | 2027-07-25 | 2027-08-01 | 2608 |  | 7 Days Work | 9178364 |

| ID | WBS | Task | Duration | Start | Finish | Predecessors | Constraint | Calendar | Unique_Task_ID |
| --- | --- | --- | --- | --- | --- | --- | --- | --- | --- |
| 2610 | 36900.37000.37100.37800.52800.79300 | **11th Habitable/13th Floor** | 158d | 2027-03-05 | 2027-08-10 |  | start no earlier than 2027-03-05 | 7 Days Work | 9170324 |
| 2611 | 36900.37000.37100.37800.52800.79300.284700 | Side blockwork for lift shafts | 9d | 2027-03-05 | 2027-03-14 | 2601 |  | 7 Days Work | 9178374 |
| 2612 | 36900.37000.37100.37800.52800.79300.284800 | Door Threshold for lifts | 6d | 2027-03-14 | 2027-03-20 | 2611 |  | 7 Days Work | 9178384 |
| 2613 | 36900.37000.37100.37800.52800.79300.284900 | Granite Cladding | 10d | 2027-03-20 | 2027-03-30 | 2612 |  | 7 Days Work | 9178394 |
| 2614 | 36900.37000.37100.37800.52800.79300.285000 | MEP Services | 60d | 2027-03-30 | 2027-05-29 | 2613 |  | 7 Days Work | 9178404 |
| 2615 | 36900.37000.37100.37800.52800.79300.285100 | Flooring+Skirting | 20d | 2027-05-29 | 2027-06-18 | 2614 |  | 7 Days Work | 9178414 |
| 2616 | 36900.37000.37100.37800.52800.79300.285200 | Wall finishes | 21d | 2027-06-18 | 2027-07-09 | 2615 |  | 7 Days Work | 9178424 |
| 2617 | 36900.37000.37100.37800.52800.79300.285300 | False Ceiling | 10d | 2027-07-09 | 2027-07-19 | 2616 |  | 7 Days Work | 9178434 |
| 2618 | 36900.37000.37100.37800.52800.79300.285400 | Staircase | 15d | 2027-07-19 | 2027-08-03 | 2617 |  | 7 Days Work | 9178444 |
| 2619 | 36900.37000.37100.37800.52800.79300.285500 | Deep Cleaning | 7d | 2027-08-03 | 2027-08-10 | 2618 |  | 7 Days Work | 9178454 |
| 2620 | 36900.37000.37100.37800.52800.79100 | **12th Habitable/14th Floor** | 158d | 2027-03-14 | 2027-08-19 |  | start no earlier than 2027-03-14 | 7 Days Work | 9170384 |
| 2621 | 36900.37000.37100.37800.52800.79100.285600 | Side blockwork for lift shafts | 9d | 2027-03-14 | 2027-03-23 | 2611 |  | 7 Days Work | 9178464 |
| 2622 | 36900.37000.37100.37800.52800.79100.285700 | Door Threshold for lifts | 6d | 2027-03-23 | 2027-03-29 | 2621 |  | 7 Days Work | 9178474 |
| 2623 | 36900.37000.37100.37800.52800.79100.285800 | Granite Cladding | 10d | 2027-03-29 | 2027-04-08 | 2622 |  | 7 Days Work | 9178484 |
| 2624 | 36900.37000.37100.37800.52800.79100.285900 | MEP Services | 60d | 2027-04-08 | 2027-06-07 | 2623 |  | 7 Days Work | 9178494 |
| 2625 | 36900.37000.37100.37800.52800.79100.286000 | Flooring+Skirting | 20d | 2027-06-07 | 2027-06-27 | 2624 |  | 7 Days Work | 9178504 |
| 2626 | 36900.37000.37100.37800.52800.79100.286100 | Wall finishes | 21d | 2027-06-27 | 2027-07-18 | 2625 |  | 7 Days Work | 9178514 |
| 2627 | 36900.37000.37100.37800.52800.79100.286200 | False Ceiling | 10d | 2027-07-18 | 2027-07-28 | 2626 |  | 7 Days Work | 9178524 |
| 2628 | 36900.37000.37100.37800.52800.79100.286300 | Staircase | 15d | 2027-07-28 | 2027-08-12 | 2627 |  | 7 Days Work | 9178534 |
| 2629 | 36900.37000.37100.37800.52800.79100.286400 | Deep Cleaning | 7d | 2027-08-12 | 2027-08-19 | 2628 |  | 7 Days Work | 9178544 |
| 2630 | 36900.37000.37100.37800.52800.79000 | **13th Habitable/15th Floor** | 158d | 2027-03-23 | 2027-08-28 |  | start no earlier than 2027-03-23 | 7 Days Work | 9170394 |
| 2631 | 36900.37000.37100.37800.52800.79000.286500 | Side blockwork for lift shafts | 9d | 2027-03-23 | 2027-04-01 | 2621 |  | 7 Days Work | 9178554 |
| 2632 | 36900.37000.37100.37800.52800.79000.286600 | Door Threshold for lifts | 6d | 2027-04-01 | 2027-04-07 | 2631 |  | 7 Days Work | 9178564 |
| 2633 | 36900.37000.37100.37800.52800.79000.286700 | Granite Cladding | 10d | 2027-04-07 | 2027-04-17 | 2632 |  | 7 Days Work | 9178574 |
| 2634 | 36900.37000.37100.37800.52800.79000.286800 | MEP Services | 60d | 2027-04-17 | 2027-06-16 | 2633 |  | 7 Days Work | 9178584 |
| 2635 | 36900.37000.37100.37800.52800.79000.286900 | Flooring+Skirting | 20d | 2027-06-16 | 2027-07-06 | 2634 |  | 7 Days Work | 9178594 |
| 2636 | 36900.37000.37100.37800.52800.79000.287000 | Wall finishes | 21d | 2027-07-06 | 2027-07-27 | 2635 |  | 7 Days Work | 9178604 |
| 2637 | 36900.37000.37100.37800.52800.79000.287100 | False Ceiling | 10d | 2027-07-27 | 2027-08-06 | 2636 |  | 7 Days Work | 9178614 |
| 2638 | 36900.37000.37100.37800.52800.79000.287200 | Staircase | 15d | 2027-08-06 | 2027-08-21 | 2637 |  | 7 Days Work | 9178624 |
| 2639 | 36900.37000.37100.37800.52800.79000.287300 | Deep Cleaning | 7d | 2027-08-21 | 2027-08-28 | 2638 |  | 7 Days Work | 9178634 |

| ID | WBS | Task | Duration | Start | Finish | Predecessors | Constraint | Calendar | Unique_Task_ID |
| --- | --- | --- | --- | --- | --- | --- | --- | --- | --- |
| 2640 | 36900.37000.37100.37800.52800.78900 | **14th Habitable/16th Floor** | 158d | 2027-04-01 | 2027-09-06 |  | start no earlier than 2027-04-01 | 7 Days Work | 9170404 |
| 2641 | 36900.37000.37100.37800.52800.78900.287400 | Side blockwork for lift shafts | 9d | 2027-04-01 | 2027-04-10 | 2631 |  | 7 Days Work | 9178644 |
| 2642 | 36900.37000.37100.37800.52800.78900.287500 | Door Threshold for lifts | 6d | 2027-04-10 | 2027-04-16 | 2641 |  | 7 Days Work | 9178654 |
| 2643 | 36900.37000.37100.37800.52800.78900.287600 | Granite Cladding | 10d | 2027-04-16 | 2027-04-26 | 2642 |  | 7 Days Work | 9178664 |
| 2644 | 36900.37000.37100.37800.52800.78900.287700 | MEP Services | 60d | 2027-04-26 | 2027-06-25 | 2643 |  | 7 Days Work | 9178674 |
| 2645 | 36900.37000.37100.37800.52800.78900.287800 | Flooring+Skirting | 20d | 2027-06-25 | 2027-07-15 | 2644 |  | 7 Days Work | 9178684 |
| 2646 | 36900.37000.37100.37800.52800.78900.287900 | Wall finishes | 21d | 2027-07-15 | 2027-08-05 | 2645 |  | 7 Days Work | 9178694 |
| 2647 | 36900.37000.37100.37800.52800.78900.288000 | False Ceiling | 10d | 2027-08-05 | 2027-08-15 | 2646 |  | 7 Days Work | 9178704 |
| 2648 | 36900.37000.37100.37800.52800.78900.288100 | Staircase | 15d | 2027-08-15 | 2027-08-30 | 2647 |  | 7 Days Work | 9178714 |
| 2649 | 36900.37000.37100.37800.52800.78900.288200 | Deep Cleaning | 7d | 2027-08-30 | 2027-09-06 | 2648 |  | 7 Days Work | 9178724 |
| 2650 | 36900.37000.37100.37800.52800.78600 | **15th Habitable/17th Floor** | 158d | 2027-04-10 | 2027-09-15 |  | start no earlier than 2027-04-10 | 7 Days Work | 9170414 |
| 2651 | 36900.37000.37100.37800.52800.78600.288300 | Side blockwork for lift shafts | 9d | 2027-04-10 | 2027-04-19 | 2641 |  | 7 Days Work | 9178734 |
| 2652 | 36900.37000.37100.37800.52800.78600.288400 | Door Threshold for lifts | 6d | 2027-04-19 | 2027-04-25 | 2651 |  | 7 Days Work | 9178744 |
| 2653 | 36900.37000.37100.37800.52800.78600.288500 | Granite Cladding | 10d | 2027-04-25 | 2027-05-05 | 2652 |  | 7 Days Work | 9178754 |
| 2654 | 36900.37000.37100.37800.52800.78600.288600 | MEP Services | 60d | 2027-05-05 | 2027-07-04 | 2653 |  | 7 Days Work | 9178764 |
| 2655 | 36900.37000.37100.37800.52800.78600.288700 | Flooring+Skirting | 20d | 2027-07-04 | 2027-07-24 | 2654 |  | 7 Days Work | 9178774 |
| 2656 | 36900.37000.37100.37800.52800.78600.288800 | Wall finishes | 21d | 2027-07-24 | 2027-08-14 | 2655 |  | 7 Days Work | 9178784 |
| 2657 | 36900.37000.37100.37800.52800.78600.288900 | False Ceiling | 10d | 2027-08-14 | 2027-08-24 | 2656 |  | 7 Days Work | 9178794 |
| 2658 | 36900.37000.37100.37800.52800.78600.289000 | Staircase | 15d | 2027-08-24 | 2027-09-08 | 2657 |  | 7 Days Work | 9178804 |
| 2659 | 36900.37000.37100.37800.52800.78600.289100 | Deep Cleaning | 7d | 2027-09-08 | 2027-09-15 | 2658 |  | 7 Days Work | 9178814 |
| 2660 | 36900.37000.37100.37800.52800.78500 | **16th Habitable/18th Floor** | 158d | 2027-04-19 | 2027-09-24 |  | start no earlier than 2027-04-19 | 7 Days Work | 9170424 |
| 2661 | 36900.37000.37100.37800.52800.78500.289200 | Side blockwork for lift shafts | 9d | 2027-04-19 | 2027-04-28 | 2651 |  | 7 Days Work | 9178824 |
| 2662 | 36900.37000.37100.37800.52800.78500.289300 | Door Threshold for lifts | 6d | 2027-04-28 | 2027-05-04 | 2661 |  | 7 Days Work | 9178834 |
| 2663 | 36900.37000.37100.37800.52800.78500.289400 | Granite Cladding | 10d | 2027-05-04 | 2027-05-14 | 2662 |  | 7 Days Work | 9178844 |
| 2664 | 36900.37000.37100.37800.52800.78500.289500 | MEP Services | 60d | 2027-05-14 | 2027-07-13 | 2663 |  | 7 Days Work | 9178854 |
| 2665 | 36900.37000.37100.37800.52800.78500.289600 | Flooring+Skirting | 20d | 2027-07-13 | 2027-08-02 | 2664 |  | 7 Days Work | 9178864 |
| 2666 | 36900.37000.37100.37800.52800.78500.289700 | Wall finishes | 21d | 2027-08-02 | 2027-08-23 | 2665 |  | 7 Days Work | 9178874 |
| 2667 | 36900.37000.37100.37800.52800.78500.289800 | False Ceiling | 10d | 2027-08-23 | 2027-09-02 | 2666 |  | 7 Days Work | 9178884 |
| 2668 | 36900.37000.37100.37800.52800.78500.289900 | Staircase | 15d | 2027-09-02 | 2027-09-17 | 2667 |  | 7 Days Work | 9178894 |
| 2669 | 36900.37000.37100.37800.52800.78500.290000 | Deep Cleaning | 7d | 2027-09-17 | 2027-09-24 | 2668 |  | 7 Days Work | 9178904 |

| ID | WBS | Task | Duration | Start | Finish | Predecessors | Constraint | Calendar | Unique_Task_ID |
| --- | --- | --- | --- | --- | --- | --- | --- | --- | --- |
| 2670 | 36900.37000.37100.37800.52800.78400 | **17th Habitable/19th Floor** | 158d | 2027-04-28 | 2027-10-03 |  | start no earlier than 2027-04-28 | 7 Days Work | 9170454 |
| 2671 | 36900.37000.37100.37800.52800.78400.290100 | Side blockwork for lift shafts | 9d | 2027-04-28 | 2027-05-07 | 2661 |  | 7 Days Work | 9178914 |
| 2672 | 36900.37000.37100.37800.52800.78400.290200 | Door Threshold for lifts | 6d | 2027-05-07 | 2027-05-13 | 2671 |  | 7 Days Work | 9178924 |
| 2673 | 36900.37000.37100.37800.52800.78400.290300 | Granite Cladding | 10d | 2027-05-13 | 2027-05-23 | 2672 |  | 7 Days Work | 9178934 |
| 2674 | 36900.37000.37100.37800.52800.78400.290400 | MEP Services | 60d | 2027-05-23 | 2027-07-22 | 2673 |  | 7 Days Work | 9178944 |
| 2675 | 36900.37000.37100.37800.52800.78400.290500 | Flooring+Skirting | 20d | 2027-07-22 | 2027-08-11 | 2674 |  | 7 Days Work | 9178954 |
| 2676 | 36900.37000.37100.37800.52800.78400.290600 | Wall finishes | 21d | 2027-08-11 | 2027-09-01 | 2675 |  | 7 Days Work | 9178964 |
| 2677 | 36900.37000.37100.37800.52800.78400.290700 | False Ceiling | 10d | 2027-09-01 | 2027-09-11 | 2676 |  | 7 Days Work | 9178974 |
| 2678 | 36900.37000.37100.37800.52800.78400.290800 | Staircase | 15d | 2027-09-11 | 2027-09-26 | 2677 |  | 7 Days Work | 9178984 |
| 2679 | 36900.37000.37100.37800.52800.78400.290900 | Deep Cleaning | 7d | 2027-09-26 | 2027-10-03 | 2678 |  | 7 Days Work | 9178994 |
| 2680 | 36900.37000.37100.37800.52800.78300 | **18th Habitable/20th Floor** | 158d | 2027-05-07 | 2027-10-12 |  | start no earlier than 2027-05-07 | 7 Days Work | 9170464 |
| 2681 | 36900.37000.37100.37800.52800.78300.291000 | Side blockwork for lift shafts | 9d | 2027-05-07 | 2027-05-16 | 2671 |  | 7 Days Work | 9179004 |
| 2682 | 36900.37000.37100.37800.52800.78300.291100 | Door Threshold for lifts | 6d | 2027-05-16 | 2027-05-22 | 2681 |  | 7 Days Work | 9179014 |
| 2683 | 36900.37000.37100.37800.52800.78300.291200 | Granite Cladding | 10d | 2027-05-22 | 2027-06-01 | 2682 |  | 7 Days Work | 9179024 |
| 2684 | 36900.37000.37100.37800.52800.78300.291300 | MEP Services | 60d | 2027-06-01 | 2027-07-31 | 2683 |  | 7 Days Work | 9179034 |
| 2685 | 36900.37000.37100.37800.52800.78300.291400 | Flooring+Skirting | 20d | 2027-07-31 | 2027-08-20 | 2684 |  | 7 Days Work | 9179044 |
| 2686 | 36900.37000.37100.37800.52800.78300.291500 | Wall finishes | 21d | 2027-08-20 | 2027-09-10 | 2685 |  | 7 Days Work | 9179054 |
| 2687 | 36900.37000.37100.37800.52800.78300.291600 | False Ceiling | 10d | 2027-09-10 | 2027-09-20 | 2686 |  | 7 Days Work | 9179064 |
| 2688 | 36900.37000.37100.37800.52800.78300.291700 | Staircase | 15d | 2027-09-20 | 2027-10-05 | 2687 |  | 7 Days Work | 9179074 |
| 2689 | 36900.37000.37100.37800.52800.78300.291800 | Deep Cleaning | 7d | 2027-10-05 | 2027-10-12 | 2688 |  | 7 Days Work | 9043604 |
| 2690 | 36900.37000.37100.37800.67900 | **Lift** | 323.25d | 2026-03-02 | 2027-01-19 |  | start no earlier than 2026-03-02 | 7 Days Work | 9170314 |
| 2691 | 36900.37000.37100.37800.67900.118200 | Order Issue | 105d | 2026-03-02 | 2026-06-15 | 1418FS-120d |  | 7 Days Work | 9170514 |
| 2692 | 36900.37000.37100.37800.67900.118300 | Shop drawing approval | 30d | 2026-06-15 | 2026-07-15 | 2691 |  | 7 Days Work | 9170524 |
| 2693 | 36900.37000.37100.37800.67900.118400 | Material recipt | 90d | 2026-07-15 | 2026-10-13 | 2692 |  | 7 Days Work | 9170534 |
| 2694 | 36900.37000.37100.37800.67900.118500 | Lift Shaft Handover | 30d | 2026-10-24 | 2026-11-23 | 1427 |  | 7 Days Work | 9170544 |
| 2695 | 36900.37000.37100.37800.67900.118600 | Template fixing by lift contractor | 7d | 2026-11-23 | 2026-11-30 | 2694 |  | 7 Days Work | 9170554 |
| 2696 | 36900.37000.37100.37800.67900.118700 | Centre line marking for lift shafts | 5d | 2026-11-30 | 2026-12-05 | 2695 |  | 7 Days Work | 9170564 |
| 2697 | 36900.37000.37100.37800.67900.118800 | Rail & Bracket Fixing | 5d | 2026-12-05 | 2026-12-10 | 2696 |  | 7 Days Work | 9170574 |
| 2698 | 36900.37000.37100.37800.67900.118900 | Cage Installation | 5d | 2026-12-10 | 2026-12-15 | 2697 |  | 7 Days Work | 9170584 |
| 2699 | 36900.37000.37100.37800.67900.119000 | Slow Speed | 20d | 2026-12-15 | 2027-01-04 | 2698 |  | 7 Days Work | 9170594 |
| 2700 | 36900.37000.37100.37800.67900.119100 | High Spped | 5d | 2027-01-04 | 2027-01-09 | 2699 |  | 7 Days Work | 9170604 |
| 2701 | 36900.37000.37100.37800.67900.119200 | Commisioning | 7d | 2027-01-09 | 2027-01-16 | 2700 |  | 7 Days Work | 9170614 |
| 2702 | 36900.37000.37100.37800.67900.119300 | Handover | 3d | 2027-01-16 | 2027-01-19 | 2701 |  | 7 Days Work | 9043594 |
| 2703 | 36900.37000.37100.37800.92100 | External Paint | 90d | 2027-02-01 | 2027-05-02 | 1426FS+135d |  | 7 Days Work | 9042584 |

| ID | WBS | Task | Duration | Start | Finish | Predecessors | Complete | Constraint | Calendar | Unique_Task_ID |
| --- | --- | --- | --- | --- | --- | --- | --- | --- | --- | --- |
| 2704 | 36900.37000.37100.37600 | **Tower-3** | 898d | 2025-03-04 | 2027-08-18 |  |  | start no earlier than 2025-03-04 | 7 Days Work | 9042624 |
| 2705 | 36900.37000.37100.37600.83600 | Pilling | 128d | 2025-03-04 | 2025-07-18 | 4FS-33d | 19% |  | 7 Days Work | 9043614 |
| 2706 | 36900.37000.37100.37600.92200 | Excavation & Pile Breaking | 37d | 2025-07-19 | 2025-08-24 | 2705 |  |  | 7 Days Work | 9043615 |
| 2707 | 36900.37000.37100.37600.92300 | Pilecap | 26d | 2025-08-25 | 2025-09-19 | 2706 |  |  | 7 Days Work | 9043624 |
| 2708 | 36900.37000.37100.37600.92400 | up to PL | 22d | 2025-09-20 | 2025-10-11 | 2707 |  |  | 7 Days Work | 9043634 |
| 2709 | 36900.37000.37100.37600.92500 | 1st Floor Slab RCC | 25d | 2025-10-12 | 2025-11-05 | 2708 |  |  | 7 Days Work | 9043644 |
| 2710 | 36900.37000.37100.37600.92600 | 2nd Floor Slab RCC | 25d | 2025-11-06 | 2025-11-30 | 2709 |  |  | 7 Days Work | 9043654 |
| 2711 | 36900.37000.37100.37600.92700 | 3rd Floor Slab RCC | 25d | 2025-12-01 | 2025-12-25 | 2710 |  |  | 7 Days Work | 9043664 |
| 2712 | 36900.37000.37100.37600.92800 | 4th Floor Slab RCC | 21d | 2025-12-26 | 2026-01-15 | 2711 |  |  | 7 Days Work | 9043674 |
| 2713 | 36900.37000.37100.37600.92900 | 5th Floor Slab RCC | 15d | 2026-01-16 | 2026-01-30 | 2712 |  |  | 7 Days Work | 9043684 |
| 2714 | 36900.37000.37100.37600.93000 | 6th Floor Slab RCC | 9d | 2026-01-31 | 2026-02-08 | 2713 |  |  | 7 Days Work | 9043694 |
| 2715 | 36900.37000.37100.37600.93100 | 7th Floor Slab RCC | 12d | 2026-02-09 | 2026-02-20 | 2714 |  |  | 7 Days Work | 9043704 |
| 2716 | 36900.37000.37100.37600.93200 | 8th Floor Slab RCC | 9d | 2026-02-21 | 2026-03-01 | 2715 |  |  | 7 Days Work | 9043714 |
| 2717 | 36900.37000.37100.37600.93300 | 9th Floor Slab RCC | 9d | 2026-03-02 | 2026-03-10 | 2716 |  |  | 7 Days Work | 9043724 |
| 2718 | 36900.37000.37100.37600.93400 | 10th Floor Slab RCC | 9d | 2026-03-11 | 2026-03-19 | 2717 |  |  | 7 Days Work | 9043734 |
| 2719 | 36900.37000.37100.37600.93500 | 11th Floor Slab RCC | 12d | 2026-03-20 | 2026-03-31 | 2718 |  |  | 7 Days Work | 9043744 |
| 2720 | 36900.37000.37100.37600.93600 | 12th Floor Slab RCC | 9d | 2026-04-01 | 2026-04-09 | 2719 |  |  | 7 Days Work | 9043754 |
| 2721 | 36900.37000.37100.37600.93700 | 13th Floor Slab RCC | 9d | 2026-04-10 | 2026-04-18 | 2720 |  |  | 7 Days Work | 9043764 |
| 2722 | 36900.37000.37100.37600.93800 | 14th Floor Slab RCC | 9d | 2026-04-19 | 2026-04-27 | 2721 |  |  | 7 Days Work | 9043774 |
| 2723 | 36900.37000.37100.37600.93900 | 15th Floor Slab RCC | 12d | 2026-04-28 | 2026-05-09 | 2722 |  |  | 7 Days Work | 9043784 |
| 2724 | 36900.37000.37100.37600.94000 | 16th Floor Slab RCC | 9d | 2026-05-10 | 2026-05-18 | 2723 |  |  | 7 Days Work | 9043794 |
| 2725 | 36900.37000.37100.37600.94100 | 17th Floor Slab RCC | 9d | 2026-05-19 | 2026-05-27 | 2724 |  |  | 7 Days Work | 9043804 |
| 2726 | 36900.37000.37100.37600.94200 | 18th Floor Slab RCC | 9d | 2026-05-28 | 2026-06-05 | 2725 |  |  | 7 Days Work | 9043814 |
| 2727 | 36900.37000.37100.37600.94300 | 19th Floor Slab RCC | 12d | 2026-06-06 | 2026-06-17 | 2726 |  |  | 7 Days Work | 9043824 |
| 2728 | 36900.37000.37100.37600.94400 | 20th Floor Slab RCC | 9d | 2026-06-18 | 2026-06-26 | 2727 |  |  | 7 Days Work | 9043834 |
| 2729 | 36900.37000.37100.37600.94500 | 21st Floor Slab RCC | 9d | 2026-06-27 | 2026-07-05 | 2728 |  |  | 7 Days Work | 9043844 |
| 2730 | 36900.37000.37100.37600.94600 | Terrace | 12d | 2026-07-06 | 2026-07-17 | 2729 |  |  | 7 Days Work | 9043854 |
| 2731 | 36900.37000.37100.37600.94700 | Above Terrace | 35d | 2026-07-18 | 2026-08-21 | 2730 |  |  | 7 Days Work | 9043855 |

| ID | WBS | Task | Duration | Start | Finish | Predecessors | Constraint | Calendar | Unique_Task_ID |
| --- | --- | --- | --- | --- | --- | --- | --- | --- | --- |
| 2732 | 36900.37000.37100.37600.38400 | **Flat Finishing** | 428d | 2026-01-31 | 2027-04-03 |  | start no earlier than 2026-01-31 | 7 Days Work | 9183364 |
| 2733 | 36900.37000.37100.37600.38400.42300 | **1st Habitable/3rd Floor** | 245d | 2026-01-31 | 2026-10-02 |  | start no earlier than 2026-01-31 | 7 Days Work | 9183374 |
| 2734 | 36900.37000.37100.37600.38400.42300.291900 | Post Pour | 7d | 2026-01-31 | 2026-02-06 | 2712FS+15d |  | 7 Days Work | 9184084 |
| 2735 | 36900.37000.37100.37600.38400.42300.292000 | MEP Clearance -1 | 5d | 2026-02-07 | 2026-02-11 | 2734 |  | 7 Days Work | 9184094 |
| 2736 | 36900.37000.37100.37600.38400.42300.292100 | Benchmark | 1d | 2026-02-12 | 2026-02-12 | 2735 |  | 7 Days Work | 9184104 |
| 2737 | 36900.37000.37100.37600.38400.42300.292200 | Temporary Railing | 3d | 2026-02-13 | 2026-02-15 | 2736 |  | 7 Days Work | 9184114 |
| 2738 | 36900.37000.37100.37600.38400.42300.292300 | Blockwork | 10d | 2026-02-16 | 2026-02-25 | 2737 |  | 7 Days Work | 9184124 |
| 2739 | 36900.37000.37100.37600.38400.42300.292400 | MEP Clearance -2 | 10d | 2026-02-26 | 2026-03-07 | 2738 |  | 7 Days Work | 9184134 |
| 2740 | 36900.37000.37100.37600.38400.42300.292500 | Gypsum Plaster | 14d | 2026-03-08 | 2026-03-21 | 2739 |  | 7 Days Work | 9043864 |
| 2741 | 36900.37000.37100.37600.38400.42300.292600 | Kitchen Platform | 3d | 2026-03-22 | 2026-03-24 | 2740 |  | 7 Days Work | 9184154 |
| 2742 | 36900.37000.37100.37600.38400.42300.292700 | Kitchen dado | 7d | 2026-03-25 | 2026-03-31 | 2741 |  | 7 Days Work | 9184164 |
| 2743 | 36900.37000.37100.37600.38400.42300.292800 | Fire Fighting | 5d | 2026-04-01 | 2026-04-05 | 2742 |  | 7 Days Work | 9184174 |
| 2744 | 36900.37000.37100.37600.38400.42300.292900 | Anticapilary | 5d | 2026-04-06 | 2026-04-10 | 2743 |  | 7 Days Work | 9184184 |
| 2745 | 36900.37000.37100.37600.38400.42300.293000 | Stone Laying | 10d | 2026-05-14 | 2026-05-23 | 2785 |  | 7 Days Work | 9184194 |
| 2746 | 36900.37000.37100.37600.38400.42300.293100 | Tiles Laying | 7d | 2026-05-14 | 2026-05-20 | 2785 |  | 7 Days Work | 9043874 |
| 2747 | 36900.37000.37100.37600.38400.42300.293200 | 1st cutting/polishing of stone flooring | 7d | 2026-05-21 | 2026-05-27 | 2746 |  | 7 Days Work | 9184214 |
| 2748 | 36900.37000.37100.37600.38400.42300.293300 | Tiles/Stone skirting | 5d | 2026-05-28 | 2026-06-01 | 2747 |  | 7 Days Work | 9184224 |
| 2749 | 36900.37000.37100.37600.38400.42300.293400 | Protechtion sheet | 1d | 2026-06-02 | 2026-06-02 | 2748 |  | 7 Days Work | 9184234 |
| 2750 | 36900.37000.37100.37600.38400.42300.293500 | Installation of Temporary Door | 1d | 2026-06-03 | 2026-06-03 | 2749 |  | 7 Days Work | 9184244 |
| 2751 | 36900.37000.37100.37600.38400.42300.293600 | Fixing of window tracks | 5d | 2026-06-04 | 2026-06-08 | 2750 |  | 7 Days Work | 9184254 |
| 2752 | 36900.37000.37100.37600.38400.42300.293700 | Wire Pulling | 7d | 2026-06-09 | 2026-06-15 | 2751 |  | 7 Days Work | 9184264 |
| 2753 | 36900.37000.37100.37600.38400.42300.293800 | Gypsum Remaining | 5d | 2026-06-16 | 2026-06-20 | 2752 |  | 7 Days Work | 9184274 |
| 2754 | 36900.37000.37100.37600.38400.42300.293900 | Fixing of windoow shutter | 5d | 2026-06-21 | 2026-06-25 | 2753 |  | 7 Days Work | 9184284 |
| 2755 | 36900.37000.37100.37600.38400.42300.294000 | Putty Works - walls & ceiling | 15d | 2026-06-26 | 2026-07-10 | 2754 |  | 7 Days Work | 9184294 |
| 2756 | 36900.37000.37100.37600.38400.42300.294100 | False Ceiling- Framing | 10d | 2026-07-11 | 2026-07-20 | 2755 |  | 7 Days Work | 9184304 |
| 2757 | 36900.37000.37100.37600.38400.42300.294200 | Pre Hung Door | 3d | 2026-07-21 | 2026-07-23 | 2756 |  | 7 Days Work | 9184314 |
| 2758 | 36900.37000.37100.37600.38400.42300.294300 | Protechtion sheet | 2d | 2026-07-24 | 2026-07-25 | 2757 |  | 7 Days Work | 9184324 |
| 2759 | 36900.37000.37100.37600.38400.42300.294400 | Skirting near door | 2d | 2026-07-26 | 2026-07-27 | 2758 |  | 7 Days Work | 9184334 |
| 2760 | 36900.37000.37100.37600.38400.42300.294500 | Electrical Switch box fixing | 14d | 2026-07-28 | 2026-08-10 | 2759 |  | 7 Days Work | 9184344 |
| 2761 | 36900.37000.37100.37600.38400.42300.294600 | Fire Fighting painting | 5d | 2026-08-11 | 2026-08-15 | 2760 |  | 7 Days Work | 9184354 |
| 2762 | 36900.37000.37100.37600.38400.42300.294700 | Protection of all flooring, door & window hardware | 5d | 2026-08-16 | 2026-08-20 | 2761 |  | 7 Days Work | 9184364 |
| 2763 | 36900.37000.37100.37600.38400.42300.294800 | 1st coat primer- ceiling 1st & walls | 14d | 2026-08-21 | 2026-09-03 | 2762 |  | 7 Days Work | 9184374 |
| 2764 | 36900.37000.37100.37600.38400.42300.294900 | Wooden Flooring | 5d | 2026-09-04 | 2026-09-08 | 2763 |  | 7 Days Work | 9184384 |
| 2765 | 36900.37000.37100.37600.38400.42300.295000 | Removing of Temporary Railing & installation of Glass Railing | 5d | 2026-09-04 | 2026-09-08 | 2763 |  | 7 Days Work | 9184394 |
| 2766 | 36900.37000.37100.37600.38400.42300.295100 | Tile Grouting | 7d | 2026-09-04 | 2026-09-10 | 2763 |  | 7 Days Work | 9184404 |
| 2767 | 36900.37000.37100.37600.38400.42300.295200 | False Ceiling | 5d | 2026-09-11 | 2026-09-15 | 2766 |  | 7 Days Work | 9184414 |
| 2768 | 36900.37000.37100.37600.38400.42300.295300 | 2nd coat of primer | 10d | 2026-09-16 | 2026-09-25 | 2767 |  | 7 Days Work | 9184424 |
| 2769 | 36900.37000.37100.37600.38400.42300.295400 | Final cutting/polishing of stone flooring | 7d | 2026-09-26 | 2026-10-02 | 2768 |  | 7 Days Work | 9184434 |

| ID | WBS | Task | Duration | Start | Finish | Predecessors | Constraint | Calendar | Unique_Task_ID |
| --- | --- | --- | --- | --- | --- | --- | --- | --- | --- |
| 2770 | 36900.37000.37100.37600.38400.42300.59700 | **Toilet** | 237d | 2026-02-07 | 2026-10-01 |  | start no earlier than 2026-02-07 | 7 Days Work | 9183574 |
| 2771 | 36900.37000.37100.37600.38400.42300.59700.819000 | Toilet_MEP Clearance -1 | 7d | 2026-02-07 | 2026-02-13 | 2734 |  | 7 Days Work | 9192634 |
| 2772 | 36900.37000.37100.37600.38400.42300.59700.819100 | Toilet_Level Marking | 1d | 2026-02-14 | 2026-02-14 | 2771 |  | 7 Days Work | 9192644 |
| 2773 | 36900.37000.37100.37600.38400.42300.59700.819200 | Toilet_Chasing work for Electrical conduit & concealed plumbing | 5d | 2026-02-15 | 2026-02-19 | 2772 |  | 7 Days Work | 9192654 |
| 2774 | 36900.37000.37100.37600.38400.42300.59700.819300 | Toilet_Plumbing work 1st fix | 5d | 2026-02-20 | 2026-02-24 | 2773 |  | 7 Days Work | 9192664 |
| 2775 | 36900.37000.37100.37600.38400.42300.59700.819400 | Toilet_Sleeve/Bore Packing | 5d | 2026-02-25 | 2026-03-01 | 2774 |  | 7 Days Work | 9192674 |
| 2776 | 36900.37000.37100.37600.38400.42300.59700.819500 | Toilet_Waterproofing | 10d | 2026-03-02 | 2026-03-11 | 2775 |  | 7 Days Work | 9192684 |
| 2777 | 36900.37000.37100.37600.38400.42300.59700.819600 | Toilet_Screed | 1d | 2026-03-12 | 2026-03-12 | 2776 |  | 7 Days Work | 9192694 |
| 2778 | 36900.37000.37100.37600.38400.42300.59700.819700 | Toilet_Plumbing 2nd fix | 5d | 2026-03-13 | 2026-03-17 | 2777 |  | 7 Days Work | 9192704 |
| 2779 | 36900.37000.37100.37600.38400.42300.59700.819800 | Toilet_Ledge wall | 5d | 2026-03-18 | 2026-03-22 | 2778 |  | 7 Days Work | 9192714 |
| 2780 | 36900.37000.37100.37600.38400.42300.59700.819900 | Toilet_Cement Plaster | 5d | 2026-03-23 | 2026-03-27 | 2779 |  | 7 Days Work | 9192724 |
| 2781 | 36900.37000.37100.37600.38400.42300.59700.820000 | Toilet_Door Frame | 1d | 2026-03-28 | 2026-03-28 | 2780 |  | 7 Days Work | 9192734 |
| 2782 | 36900.37000.37100.37600.38400.42300.59700.820100 | Toilet_Wash basin & Couter | 3d | 2026-03-29 | 2026-03-31 | 2781 |  | 7 Days Work | 9192744 |
| 2783 | 36900.37000.37100.37600.38400.42300.59700.820200 | Toilet_Wall dado | 20d | 2026-04-01 | 2026-04-20 | 2782 |  | 7 Days Work | 9192754 |
| 2784 | 36900.37000.37100.37600.38400.42300.59700.820300 | Toilet_Granite Work-Ledge wall top | 3d | 2026-04-21 | 2026-04-23 | 2783 |  | 7 Days Work | 9192764 |
| 2785 | 36900.37000.37100.37600.38400.42300.59700.820400 | Toilet_Floor Tilling work | 20d | 2026-04-24 | 2026-05-13 | 2784 |  | 7 Days Work | 9192774 |
| 2786 | 36900.37000.37100.37600.38400.42300.59700.820500 | Toilet_1st row of dado | 5d | 2026-05-14 | 2026-05-18 | 2785 |  | 7 Days Work | 9192784 |
| 2787 | 36900.37000.37100.37600.38400.42300.59700.820600 | Toilet_Window Fixing | 14d | 2026-05-19 | 2026-06-01 | 2786 |  | 7 Days Work | 9192794 |
| 2788 | 36900.37000.37100.37600.38400.42300.59700.820700 | Toilet_Services above False ceiling | 21d | 2026-06-02 | 2026-06-22 | 2787 |  | 7 Days Work | 9192804 |
| 2789 | 36900.37000.37100.37600.38400.42300.59700.820800 | Toilet_False Ceiling framing | 12d | 2026-06-23 | 2026-07-04 | 2788 |  | 7 Days Work | 9192814 |
| 2790 | 36900.37000.37100.37600.38400.42300.59700.820900 | Toilet_Door Frame | 5d | 2026-07-05 | 2026-07-09 | 2789 |  | 7 Days Work | 9192824 |
| 2791 | 36900.37000.37100.37600.38400.42300.59700.821000 | Toilet_Epoxy Tile Grouting | 7d | 2026-09-04 | 2026-09-10 | 2766SS |  | 7 Days Work | 9192834 |
| 2792 | 36900.37000.37100.37600.38400.42300.59700.821100 | Toilet_False ceiling board fixing, CP Sanitary Fixture, Electric Fixture | 21d | 2026-09-11 | 2026-10-01 | 2791 |  | 7 Days Work | 9192844 |
| 2793 | 36900.37000.37100.37600.38400.42400 | **2nd Habitable/4th Floor** | 245d | 2026-02-15 | 2026-10-17 |  | start no earlier than 2026-02-15 | 7 Days Work | 9183384 |
| 2794 | 36900.37000.37100.37600.38400.42400.295500 | Post Pour | 7d | 2026-02-15 | 2026-02-21 | 2713FS+15d |  | 7 Days Work | 9184444 |
| 2795 | 36900.37000.37100.37600.38400.42400.295600 | MEP Clearance -1 | 5d | 2026-02-22 | 2026-02-26 | 2794 |  | 7 Days Work | 9184454 |
| 2796 | 36900.37000.37100.37600.38400.42400.295700 | Benchmark | 1d | 2026-02-27 | 2026-02-27 | 2795 |  | 7 Days Work | 9184464 |
| 2797 | 36900.37000.37100.37600.38400.42400.295800 | Temporary Railing | 3d | 2026-02-28 | 2026-03-02 | 2796 |  | 7 Days Work | 9184474 |
| 2798 | 36900.37000.37100.37600.38400.42400.295900 | Blockwork | 10d | 2026-03-03 | 2026-03-12 | 2797 |  | 7 Days Work | 9184484 |
| 2799 | 36900.37000.37100.37600.38400.42400.296000 | MEP Clearance -2 | 10d | 2026-03-13 | 2026-03-22 | 2798 |  | 7 Days Work | 9184494 |
| 2800 | 36900.37000.37100.37600.38400.42400.296100 | Gypsum Plaster | 14d | 2026-03-23 | 2026-04-05 | 2799 |  | 7 Days Work | 9184504 |
| 2801 | 36900.37000.37100.37600.38400.42400.296200 | Kitchen Platform | 3d | 2026-04-06 | 2026-04-08 | 2800 |  | 7 Days Work | 9184514 |
| 2802 | 36900.37000.37100.37600.38400.42400.296300 | Kitchen dado | 7d | 2026-04-09 | 2026-04-15 | 2801 |  | 7 Days Work | 9184524 |
| 2803 | 36900.37000.37100.37600.38400.42400.296400 | Fire Fighting | 5d | 2026-04-16 | 2026-04-20 | 2802 |  | 7 Days Work | 9184534 |
| 2804 | 36900.37000.37100.37600.38400.42400.296500 | Anticapilary | 5d | 2026-04-21 | 2026-04-25 | 2803 |  | 7 Days Work | 9184544 |
| 2805 | 36900.37000.37100.37600.38400.42400.296600 | Stone Laying | 10d | 2026-05-29 | 2026-06-07 | 2845 |  | 7 Days Work | 9184554 |
| 2806 | 36900.37000.37100.37600.38400.42400.296700 | Tiles Laying | 7d | 2026-05-29 | 2026-06-04 | 2845 |  | 7 Days Work | 9184564 |
| 2807 | 36900.37000.37100.37600.38400.42400.296800 | 1st cutting/polishing of stone flooring | 7d | 2026-06-05 | 2026-06-11 | 2806 |  | 7 Days Work | 9184574 |
| 2808 | 36900.37000.37100.37600.38400.42400.296900 | Tiles/Stone skirting | 5d | 2026-06-12 | 2026-06-16 | 2807 |  | 7 Days Work | 9184584 |
| 2809 | 36900.37000.37100.37600.38400.42400.297000 | Protechtion sheet | 1d | 2026-06-17 | 2026-06-17 | 2808 |  | 7 Days Work | 9184594 |
| 2810 | 36900.37000.37100.37600.38400.42400.297100 | Installation of Temporary Door | 1d | 2026-06-18 | 2026-06-18 | 2809 |  | 7 Days Work | 9184604 |
| 2811 | 36900.37000.37100.37600.38400.42400.297200 | Fixing of window tracks | 5d | 2026-06-19 | 2026-06-23 | 2810 |  | 7 Days Work | 9184614 |
| 2812 | 36900.37000.37100.37600.38400.42400.297300 | Wire Pulling | 7d | 2026-06-24 | 2026-06-30 | 2811 |  | 7 Days Work | 9184624 |
| 2813 | 36900.37000.37100.37600.38400.42400.297400 | Gypsum Remaining | 5d | 2026-07-01 | 2026-07-05 | 2812 |  | 7 Days Work | 9184634 |
| 2814 | 36900.37000.37100.37600.38400.42400.297500 | Fixing of windoow shutter | 5d | 2026-07-06 | 2026-07-10 | 2813 |  | 7 Days Work | 9184644 |
| 2815 | 36900.37000.37100.37600.38400.42400.297600 | Putty Works - walls & ceiling | 15d | 2026-07-11 | 2026-07-25 | 2814 |  | 7 Days Work | 9184654 |
| 2816 | 36900.37000.37100.37600.38400.42400.297700 | False Ceiling- Framing | 10d | 2026-07-26 | 2026-08-04 | 2815 |  | 7 Days Work | 9184664 |
| 2817 | 36900.37000.37100.37600.38400.42400.297800 | Pre Hung Door | 3d | 2026-08-05 | 2026-08-07 | 2816 |  | 7 Days Work | 9184674 |
| 2818 | 36900.37000.37100.37600.38400.42400.297900 | Protechtion sheet | 2d | 2026-08-08 | 2026-08-09 | 2817 |  | 7 Days Work | 9184684 |
| 2819 | 36900.37000.37100.37600.38400.42400.298000 | Skirting near door | 2d | 2026-08-10 | 2026-08-11 | 2818 |  | 7 Days Work | 9184694 |
| 2820 | 36900.37000.37100.37600.38400.42400.298100 | Electrical Switch box fixing | 14d | 2026-08-12 | 2026-08-25 | 2819 |  | 7 Days Work | 9184704 |
| 2821 | 36900.37000.37100.37600.38400.42400.298200 | Fire Fighting painting | 5d | 2026-08-26 | 2026-08-30 | 2820 |  | 7 Days Work | 9184714 |
| 2822 | 36900.37000.37100.37600.38400.42400.298300 | Protection of all flooring, door & window hardware | 5d | 2026-08-31 | 2026-09-04 | 2821 |  | 7 Days Work | 9184724 |
| 2823 | 36900.37000.37100.37600.38400.42400.298400 | 1st coat primer- ceiling 1st & walls | 14d | 2026-09-05 | 2026-09-18 | 2822 |  | 7 Days Work | 9184734 |
| 2824 | 36900.37000.37100.37600.38400.42400.298500 | Wooden Flooring | 5d | 2026-09-19 | 2026-09-23 | 2823 |  | 7 Days Work | 9184744 |
| 2825 | 36900.37000.37100.37600.38400.42400.298600 | Removing of Temporary Railing & installation of Glass Railing | 5d | 2026-09-19 | 2026-09-23 | 2823 |  | 7 Days Work | 9184754 |
| 2826 | 36900.37000.37100.37600.38400.42400.298700 | Tile Grouting | 7d | 2026-09-19 | 2026-09-25 | 2823 |  | 7 Days Work | 9184764 |
| 2827 | 36900.37000.37100.37600.38400.42400.298800 | False Ceiling | 5d | 2026-09-26 | 2026-09-30 | 2826 |  | 7 Days Work | 9184774 |
| 2828 | 36900.37000.37100.37600.38400.42400.298900 | 2nd coat of primer | 10d | 2026-10-01 | 2026-10-10 | 2827 |  | 7 Days Work | 9184784 |
| 2829 | 36900.37000.37100.37600.38400.42400.299000 | Final cutting/polishing of stone flooring | 7d | 2026-10-11 | 2026-10-17 | 2828 |  | 7 Days Work | 9184794 |

| ID | WBS | Task | Duration | Start | Finish | Predecessors | Constraint | Calendar | Unique_Task_ID |
| --- | --- | --- | --- | --- | --- | --- | --- | --- | --- |
| 2830 | 36900.37000.37100.37600.38400.42400.59800 | **Toilet** | 237d | 2026-02-22 | 2026-10-16 |  | start no earlier than 2026-02-22 | 7 Days Work | 9183584 |
| 2831 | 36900.37000.37100.37600.38400.42400.59800.821200 | Toilet_MEP Clearance -1 | 7d | 2026-02-22 | 2026-02-28 | 2794 |  | 7 Days Work | 9192854 |
| 2832 | 36900.37000.37100.37600.38400.42400.59800.821300 | Toilet_Level Marking | 1d | 2026-03-01 | 2026-03-01 | 2831 |  | 7 Days Work | 9192864 |
| 2833 | 36900.37000.37100.37600.38400.42400.59800.821400 | Toilet_Chasing work for Electrical conduit & concealed plumbing | 5d | 2026-03-02 | 2026-03-06 | 2832 |  | 7 Days Work | 9192874 |
| 2834 | 36900.37000.37100.37600.38400.42400.59800.821500 | Toilet_Plumbing work 1st fix | 5d | 2026-03-07 | 2026-03-11 | 2833 |  | 7 Days Work | 9192884 |
| 2835 | 36900.37000.37100.37600.38400.42400.59800.821600 | Toilet_Sleeve/Bore Packing | 5d | 2026-03-12 | 2026-03-16 | 2834 |  | 7 Days Work | 9192894 |
| 2836 | 36900.37000.37100.37600.38400.42400.59800.821700 | Toilet_Waterproofing | 10d | 2026-03-17 | 2026-03-26 | 2835 |  | 7 Days Work | 9192904 |
| 2837 | 36900.37000.37100.37600.38400.42400.59800.821800 | Toilet_Screed | 1d | 2026-03-27 | 2026-03-27 | 2836 |  | 7 Days Work | 9192914 |
| 2838 | 36900.37000.37100.37600.38400.42400.59800.821900 | Toilet_Plumbing 2nd fix | 5d | 2026-03-28 | 2026-04-01 | 2837 |  | 7 Days Work | 9192924 |
| 2839 | 36900.37000.37100.37600.38400.42400.59800.822000 | Toilet_Ledge wall | 5d | 2026-04-02 | 2026-04-06 | 2838 |  | 7 Days Work | 9192934 |
| 2840 | 36900.37000.37100.37600.38400.42400.59800.822100 | Toilet_Cement Plaster | 5d | 2026-04-07 | 2026-04-11 | 2839 |  | 7 Days Work | 9192944 |
| 2841 | 36900.37000.37100.37600.38400.42400.59800.822200 | Toilet_Door Frame | 1d | 2026-04-12 | 2026-04-12 | 2840 |  | 7 Days Work | 9192954 |
| 2842 | 36900.37000.37100.37600.38400.42400.59800.822300 | Toilet_Wash basin & Couter | 3d | 2026-04-13 | 2026-04-15 | 2841 |  | 7 Days Work | 9192964 |
| 2843 | 36900.37000.37100.37600.38400.42400.59800.822400 | Toilet_Wall dado | 20d | 2026-04-16 | 2026-05-05 | 2842 |  | 7 Days Work | 9192974 |
| 2844 | 36900.37000.37100.37600.38400.42400.59800.822500 | Toilet_Granite Work-Ledge wall top | 3d | 2026-05-06 | 2026-05-08 | 2843 |  | 7 Days Work | 9192984 |
| 2845 | 36900.37000.37100.37600.38400.42400.59800.822600 | Toilet_Floor Tilling work | 20d | 2026-05-09 | 2026-05-28 | 2844 |  | 7 Days Work | 9192994 |
| 2846 | 36900.37000.37100.37600.38400.42400.59800.822700 | Toilet_1st row of dado | 5d | 2026-05-29 | 2026-06-02 | 2845 |  | 7 Days Work | 9193004 |
| 2847 | 36900.37000.37100.37600.38400.42400.59800.822800 | Toilet_Window Fixing | 14d | 2026-06-03 | 2026-06-16 | 2846 |  | 7 Days Work | 9193014 |
| 2848 | 36900.37000.37100.37600.38400.42400.59800.822900 | Toilet_Services above False ceiling | 21d | 2026-06-17 | 2026-07-07 | 2847 |  | 7 Days Work | 9193024 |
| 2849 | 36900.37000.37100.37600.38400.42400.59800.823000 | Toilet_False Ceiling framing | 12d | 2026-07-08 | 2026-07-19 | 2848 |  | 7 Days Work | 9193034 |
| 2850 | 36900.37000.37100.37600.38400.42400.59800.823100 | Toilet_Door Frame | 5d | 2026-07-20 | 2026-07-24 | 2849 |  | 7 Days Work | 9193044 |
| 2851 | 36900.37000.37100.37600.38400.42400.59800.823200 | Toilet_Epoxy Tile Grouting | 7d | 2026-09-19 | 2026-09-25 | 2826SS |  | 7 Days Work | 9193054 |
| 2852 | 36900.37000.37100.37600.38400.42400.59800.823300 | Toilet_False ceiling board fixing, CP Sanitary Fixture, Electric Fixture | 21d | 2026-09-26 | 2026-10-16 | 2851 |  | 7 Days Work | 9193064 |
| 2853 | 36900.37000.37100.37600.38400.42500 | **3rd Habitable/5th Floor** | 245d | 2026-02-24 | 2026-10-26 |  | start no earlier than 2026-02-24 | 7 Days Work | 9183394 |
| 2854 | 36900.37000.37100.37600.38400.42500.299100 | Post Pour | 7d | 2026-02-24 | 2026-03-02 | 2714FS+15d |  | 7 Days Work | 9184804 |
| 2855 | 36900.37000.37100.37600.38400.42500.299200 | MEP Clearance -1 | 5d | 2026-03-03 | 2026-03-07 | 2854 |  | 7 Days Work | 9184814 |
| 2856 | 36900.37000.37100.37600.38400.42500.299300 | Benchmark | 1d | 2026-03-08 | 2026-03-08 | 2855 |  | 7 Days Work | 9184824 |
| 2857 | 36900.37000.37100.37600.38400.42500.299400 | Temporary Railing | 3d | 2026-03-09 | 2026-03-11 | 2856 |  | 7 Days Work | 9184834 |
| 2858 | 36900.37000.37100.37600.38400.42500.299500 | Blockwork | 10d | 2026-03-12 | 2026-03-21 | 2857 |  | 7 Days Work | 9184844 |
| 2859 | 36900.37000.37100.37600.38400.42500.299600 | MEP Clearance -2 | 10d | 2026-03-22 | 2026-03-31 | 2858 |  | 7 Days Work | 9184854 |
| 2860 | 36900.37000.37100.37600.38400.42500.299700 | Gypsum Plaster | 14d | 2026-04-01 | 2026-04-14 | 2859 |  | 7 Days Work | 9184864 |
| 2861 | 36900.37000.37100.37600.38400.42500.299800 | Kitchen Platform | 3d | 2026-04-15 | 2026-04-17 | 2860 |  | 7 Days Work | 9184874 |
| 2862 | 36900.37000.37100.37600.38400.42500.299900 | Kitchen dado | 7d | 2026-04-18 | 2026-04-24 | 2861 |  | 7 Days Work | 9184884 |
| 2863 | 36900.37000.37100.37600.38400.42500.300000 | Fire Fighting | 5d | 2026-04-25 | 2026-04-29 | 2862 |  | 7 Days Work | 9184894 |
| 2864 | 36900.37000.37100.37600.38400.42500.300100 | Anticapilary | 5d | 2026-04-30 | 2026-05-04 | 2863 |  | 7 Days Work | 9184904 |
| 2865 | 36900.37000.37100.37600.38400.42500.300200 | Stone Laying | 10d | 2026-06-07 | 2026-06-16 | 2905 |  | 7 Days Work | 9184914 |
| 2866 | 36900.37000.37100.37600.38400.42500.300300 | Tiles Laying | 7d | 2026-06-07 | 2026-06-13 | 2905 |  | 7 Days Work | 9184924 |
| 2867 | 36900.37000.37100.37600.38400.42500.300400 | 1st cutting/polishing of stone flooring | 7d | 2026-06-14 | 2026-06-20 | 2866 |  | 7 Days Work | 9184934 |
| 2868 | 36900.37000.37100.37600.38400.42500.300500 | Tiles/Stone skirting | 5d | 2026-06-21 | 2026-06-25 | 2867 |  | 7 Days Work | 9184944 |
| 2869 | 36900.37000.37100.37600.38400.42500.300600 | Protechtion sheet | 1d | 2026-06-26 | 2026-06-26 | 2868 |  | 7 Days Work | 9184954 |
| 2870 | 36900.37000.37100.37600.38400.42500.300700 | Installation of Temporary Door | 1d | 2026-06-27 | 2026-06-27 | 2869 |  | 7 Days Work | 9184964 |
| 2871 | 36900.37000.37100.37600.38400.42500.300800 | Fixing of window tracks | 5d | 2026-06-28 | 2026-07-02 | 2870 |  | 7 Days Work | 9184974 |
| 2872 | 36900.37000.37100.37600.38400.42500.300900 | Wire Pulling | 7d | 2026-07-03 | 2026-07-09 | 2871 |  | 7 Days Work | 9184984 |
| 2873 | 36900.37000.37100.37600.38400.42500.301000 | Gypsum Remaining | 5d | 2026-07-10 | 2026-07-14 | 2872 |  | 7 Days Work | 9184994 |
| 2874 | 36900.37000.37100.37600.38400.42500.301100 | Fixing of windoow shutter | 5d | 2026-07-15 | 2026-07-19 | 2873 |  | 7 Days Work | 9185004 |
| 2875 | 36900.37000.37100.37600.38400.42500.301200 | Putty Works - walls & ceiling | 15d | 2026-07-20 | 2026-08-03 | 2874 |  | 7 Days Work | 9185014 |
| 2876 | 36900.37000.37100.37600.38400.42500.301300 | False Ceiling- Framing | 10d | 2026-08-04 | 2026-08-13 | 2875 |  | 7 Days Work | 9185024 |
| 2877 | 36900.37000.37100.37600.38400.42500.301400 | Pre Hung Door | 3d | 2026-08-14 | 2026-08-16 | 2876 |  | 7 Days Work | 9185034 |
| 2878 | 36900.37000.37100.37600.38400.42500.301500 | Protechtion sheet | 2d | 2026-08-17 | 2026-08-18 | 2877 |  | 7 Days Work | 9185044 |
| 2879 | 36900.37000.37100.37600.38400.42500.301600 | Skirting near door | 2d | 2026-08-19 | 2026-08-20 | 2878 |  | 7 Days Work | 9185054 |
| 2880 | 36900.37000.37100.37600.38400.42500.301700 | Electrical Switch box fixing | 14d | 2026-08-21 | 2026-09-03 | 2879 |  | 7 Days Work | 9185064 |
| 2881 | 36900.37000.37100.37600.38400.42500.301800 | Fire Fighting painting | 5d | 2026-09-04 | 2026-09-08 | 2880 |  | 7 Days Work | 9185074 |
| 2882 | 36900.37000.37100.37600.38400.42500.301900 | Protection of all flooring, door & window hardware | 5d | 2026-09-09 | 2026-09-13 | 2881 |  | 7 Days Work | 9185084 |
| 2883 | 36900.37000.37100.37600.38400.42500.302000 | 1st coat primer- ceiling 1st & walls | 14d | 2026-09-14 | 2026-09-27 | 2882 |  | 7 Days Work | 9185094 |
| 2884 | 36900.37000.37100.37600.38400.42500.302100 | Wooden Flooring | 5d | 2026-09-28 | 2026-10-02 | 2883 |  | 7 Days Work | 9185104 |
| 2885 | 36900.37000.37100.37600.38400.42500.302200 | Removing of Temporary Railing & installation of Glass Railing | 5d | 2026-09-28 | 2026-10-02 | 2883 |  | 7 Days Work | 9185114 |
| 2886 | 36900.37000.37100.37600.38400.42500.302300 | Tile Grouting | 7d | 2026-09-28 | 2026-10-04 | 2883 |  | 7 Days Work | 9185124 |
| 2887 | 36900.37000.37100.37600.38400.42500.302400 | False Ceiling | 5d | 2026-10-05 | 2026-10-09 | 2886 |  | 7 Days Work | 9185134 |
| 2888 | 36900.37000.37100.37600.38400.42500.302500 | 2nd coat of primer | 10d | 2026-10-10 | 2026-10-19 | 2887 |  | 7 Days Work | 9185144 |
| 2889 | 36900.37000.37100.37600.38400.42500.302600 | Final cutting/polishing of stone flooring | 7d | 2026-10-20 | 2026-10-26 | 2888 |  | 7 Days Work | 9185154 |

| ID | WBS | Task | Duration | Start | Finish | Predecessors | Constraint | Calendar | Unique_Task_ID |
| --- | --- | --- | --- | --- | --- | --- | --- | --- | --- |
| 2890 | 36900.37000.37100.37600.38400.42500.59900 | **Toilet** | 237d | 2026-03-03 | 2026-10-25 |  | start no earlier than 2026-03-03 | 7 Days Work | 9183594 |
| 2891 | 36900.37000.37100.37600.38400.42500.59900.823400 | Toilet_MEP Clearance -1 | 7d | 2026-03-03 | 2026-03-09 | 2854 |  | 7 Days Work | 9193074 |
| 2892 | 36900.37000.37100.37600.38400.42500.59900.823500 | Toilet_Level Marking | 1d | 2026-03-10 | 2026-03-10 | 2891 |  | 7 Days Work | 9193084 |
| 2893 | 36900.37000.37100.37600.38400.42500.59900.823600 | Toilet_Chasing work for Electrical conduit & concealed plumbing | 5d | 2026-03-11 | 2026-03-15 | 2892 |  | 7 Days Work | 9193094 |
| 2894 | 36900.37000.37100.37600.38400.42500.59900.823700 | Toilet_Plumbing work 1st fix | 5d | 2026-03-16 | 2026-03-20 | 2893 |  | 7 Days Work | 9193104 |
| 2895 | 36900.37000.37100.37600.38400.42500.59900.823800 | Toilet_Sleeve/Bore Packing | 5d | 2026-03-21 | 2026-03-25 | 2894 |  | 7 Days Work | 9193114 |
| 2896 | 36900.37000.37100.37600.38400.42500.59900.823900 | Toilet_Waterproofing | 10d | 2026-03-26 | 2026-04-04 | 2895 |  | 7 Days Work | 9193124 |
| 2897 | 36900.37000.37100.37600.38400.42500.59900.824000 | Toilet_Screed | 1d | 2026-04-05 | 2026-04-05 | 2896 |  | 7 Days Work | 9193134 |
| 2898 | 36900.37000.37100.37600.38400.42500.59900.824100 | Toilet_Plumbing 2nd fix | 5d | 2026-04-06 | 2026-04-10 | 2897 |  | 7 Days Work | 9193144 |
| 2899 | 36900.37000.37100.37600.38400.42500.59900.824200 | Toilet_Ledge wall | 5d | 2026-04-11 | 2026-04-15 | 2898 |  | 7 Days Work | 9193154 |
| 2900 | 36900.37000.37100.37600.38400.42500.59900.824300 | Toilet_Cement Plaster | 5d | 2026-04-16 | 2026-04-20 | 2899 |  | 7 Days Work | 9193164 |
| 2901 | 36900.37000.37100.37600.38400.42500.59900.824400 | Toilet_Door Frame | 1d | 2026-04-21 | 2026-04-21 | 2900 |  | 7 Days Work | 9193174 |
| 2902 | 36900.37000.37100.37600.38400.42500.59900.824500 | Toilet_Wash basin & Couter | 3d | 2026-04-22 | 2026-04-24 | 2901 |  | 7 Days Work | 9193184 |
| 2903 | 36900.37000.37100.37600.38400.42500.59900.824600 | Toilet_Wall dado | 20d | 2026-04-25 | 2026-05-14 | 2902 |  | 7 Days Work | 9193194 |
| 2904 | 36900.37000.37100.37600.38400.42500.59900.824700 | Toilet_Granite Work-Ledge wall top | 3d | 2026-05-15 | 2026-05-17 | 2903 |  | 7 Days Work | 9193204 |
| 2905 | 36900.37000.37100.37600.38400.42500.59900.824800 | Toilet_Floor Tilling work | 20d | 2026-05-18 | 2026-06-06 | 2904 |  | 7 Days Work | 9193214 |
| 2906 | 36900.37000.37100.37600.38400.42500.59900.824900 | Toilet_1st row of dado | 5d | 2026-06-07 | 2026-06-11 | 2905 |  | 7 Days Work | 9193224 |
| 2907 | 36900.37000.37100.37600.38400.42500.59900.825000 | Toilet_Window Fixing | 14d | 2026-06-12 | 2026-06-25 | 2906 |  | 7 Days Work | 9193234 |
| 2908 | 36900.37000.37100.37600.38400.42500.59900.825100 | Toilet_Services above False ceiling | 21d | 2026-06-26 | 2026-07-16 | 2907 |  | 7 Days Work | 9193244 |
| 2909 | 36900.37000.37100.37600.38400.42500.59900.825200 | Toilet_False Ceiling framing | 12d | 2026-07-17 | 2026-07-28 | 2908 |  | 7 Days Work | 9193254 |
| 2910 | 36900.37000.37100.37600.38400.42500.59900.825300 | Toilet_Door Frame | 5d | 2026-07-29 | 2026-08-02 | 2909 |  | 7 Days Work | 9193264 |
| 2911 | 36900.37000.37100.37600.38400.42500.59900.825400 | Toilet_Epoxy Tile Grouting | 7d | 2026-09-28 | 2026-10-04 | 2886SS |  | 7 Days Work | 9193274 |
| 2912 | 36900.37000.37100.37600.38400.42500.59900.825500 | Toilet_False ceiling board fixing, CP Sanitary Fixture, Electric Fixture | 21d | 2026-10-05 | 2026-10-25 | 2911 |  | 7 Days Work | 9193284 |
| 2913 | 36900.37000.37100.37600.38400.42600 | **4th Habitable/6th Floor** | 245d | 2026-03-08 | 2026-11-07 |  | start no earlier than 2026-03-08 | 7 Days Work | 9183404 |
| 2914 | 36900.37000.37100.37600.38400.42600.302700 | Post Pour | 7d | 2026-03-08 | 2026-03-14 | 2715FS+15d |  | 7 Days Work | 9185164 |
| 2915 | 36900.37000.37100.37600.38400.42600.302800 | MEP Clearance -1 | 5d | 2026-03-15 | 2026-03-19 | 2914 |  | 7 Days Work | 9185174 |
| 2916 | 36900.37000.37100.37600.38400.42600.302900 | Benchmark | 1d | 2026-03-20 | 2026-03-20 | 2915 |  | 7 Days Work | 9185184 |
| 2917 | 36900.37000.37100.37600.38400.42600.303000 | Temporary Railing | 3d | 2026-03-21 | 2026-03-23 | 2916 |  | 7 Days Work | 9185194 |
| 2918 | 36900.37000.37100.37600.38400.42600.303100 | Blockwork | 10d | 2026-03-24 | 2026-04-02 | 2917 |  | 7 Days Work | 9185204 |
| 2919 | 36900.37000.37100.37600.38400.42600.303200 | MEP Clearance -2 | 10d | 2026-04-03 | 2026-04-12 | 2918 |  | 7 Days Work | 9185214 |
| 2920 | 36900.37000.37100.37600.38400.42600.303300 | Gypsum Plaster | 14d | 2026-04-13 | 2026-04-26 | 2919 |  | 7 Days Work | 9185224 |
| 2921 | 36900.37000.37100.37600.38400.42600.303400 | Kitchen Platform | 3d | 2026-04-27 | 2026-04-29 | 2920 |  | 7 Days Work | 9185234 |
| 2922 | 36900.37000.37100.37600.38400.42600.303500 | Kitchen dado | 7d | 2026-04-30 | 2026-05-06 | 2921 |  | 7 Days Work | 9185244 |
| 2923 | 36900.37000.37100.37600.38400.42600.303600 | Fire Fighting | 5d | 2026-05-07 | 2026-05-11 | 2922 |  | 7 Days Work | 9185254 |
| 2924 | 36900.37000.37100.37600.38400.42600.303700 | Anticapilary | 5d | 2026-05-12 | 2026-05-16 | 2923 |  | 7 Days Work | 9185264 |
| 2925 | 36900.37000.37100.37600.38400.42600.303800 | Stone Laying | 10d | 2026-06-19 | 2026-06-28 | 2965 |  | 7 Days Work | 9185274 |
| 2926 | 36900.37000.37100.37600.38400.42600.303900 | Tiles Laying | 7d | 2026-06-19 | 2026-06-25 | 2965 |  | 7 Days Work | 9185284 |
| 2927 | 36900.37000.37100.37600.38400.42600.304000 | 1st cutting/polishing of stone flooring | 7d | 2026-06-26 | 2026-07-02 | 2926 |  | 7 Days Work | 9185294 |
| 2928 | 36900.37000.37100.37600.38400.42600.304100 | Tiles/Stone skirting | 5d | 2026-07-03 | 2026-07-07 | 2927 |  | 7 Days Work | 9185304 |
| 2929 | 36900.37000.37100.37600.38400.42600.304200 | Protechtion sheet | 1d | 2026-07-08 | 2026-07-08 | 2928 |  | 7 Days Work | 9185314 |
| 2930 | 36900.37000.37100.37600.38400.42600.304300 | Installation of Temporary Door | 1d | 2026-07-09 | 2026-07-09 | 2929 |  | 7 Days Work | 9185324 |
| 2931 | 36900.37000.37100.37600.38400.42600.304400 | Fixing of window tracks | 5d | 2026-07-10 | 2026-07-14 | 2930 |  | 7 Days Work | 9185334 |
| 2932 | 36900.37000.37100.37600.38400.42600.304500 | Wire Pulling | 7d | 2026-07-15 | 2026-07-21 | 2931 |  | 7 Days Work | 9185344 |
| 2933 | 36900.37000.37100.37600.38400.42600.304600 | Gypsum Remaining | 5d | 2026-07-22 | 2026-07-26 | 2932 |  | 7 Days Work | 9185354 |
| 2934 | 36900.37000.37100.37600.38400.42600.304700 | Fixing of windoow shutter | 5d | 2026-07-27 | 2026-07-31 | 2933 |  | 7 Days Work | 9185364 |
| 2935 | 36900.37000.37100.37600.38400.42600.304800 | Putty Works - walls & ceiling | 15d | 2026-08-01 | 2026-08-15 | 2934 |  | 7 Days Work | 9185374 |
| 2936 | 36900.37000.37100.37600.38400.42600.304900 | False Ceiling- Framing | 10d | 2026-08-16 | 2026-08-25 | 2935 |  | 7 Days Work | 9185384 |
| 2937 | 36900.37000.37100.37600.38400.42600.305000 | Pre Hung Door | 3d | 2026-08-26 | 2026-08-28 | 2936 |  | 7 Days Work | 9185394 |
| 2938 | 36900.37000.37100.37600.38400.42600.305100 | Protechtion sheet | 2d | 2026-08-29 | 2026-08-30 | 2937 |  | 7 Days Work | 9185404 |
| 2939 | 36900.37000.37100.37600.38400.42600.305200 | Skirting near door | 2d | 2026-08-31 | 2026-09-01 | 2938 |  | 7 Days Work | 9185414 |
| 2940 | 36900.37000.37100.37600.38400.42600.305300 | Electrical Switch box fixing | 14d | 2026-09-02 | 2026-09-15 | 2939 |  | 7 Days Work | 9185424 |
| 2941 | 36900.37000.37100.37600.38400.42600.305400 | Fire Fighting painting | 5d | 2026-09-16 | 2026-09-20 | 2940 |  | 7 Days Work | 9185434 |
| 2942 | 36900.37000.37100.37600.38400.42600.305500 | Protection of all flooring, door & window hardware | 5d | 2026-09-21 | 2026-09-25 | 2941 |  | 7 Days Work | 9185444 |
| 2943 | 36900.37000.37100.37600.38400.42600.305600 | 1st coat primer- ceiling 1st & walls | 14d | 2026-09-26 | 2026-10-09 | 2942 |  | 7 Days Work | 9185454 |
| 2944 | 36900.37000.37100.37600.38400.42600.305700 | Wooden Flooring | 5d | 2026-10-10 | 2026-10-14 | 2943 |  | 7 Days Work | 9185464 |
| 2945 | 36900.37000.37100.37600.38400.42600.305800 | Removing of Temporary Railing & installation of Glass Railing | 5d | 2026-10-10 | 2026-10-14 | 2943 |  | 7 Days Work | 9185474 |
| 2946 | 36900.37000.37100.37600.38400.42600.305900 | Tile Grouting | 7d | 2026-10-10 | 2026-10-16 | 2943 |  | 7 Days Work | 9185484 |
| 2947 | 36900.37000.37100.37600.38400.42600.306000 | False Ceiling | 5d | 2026-10-17 | 2026-10-21 | 2946 |  | 7 Days Work | 9185494 |
| 2948 | 36900.37000.37100.37600.38400.42600.306100 | 2nd coat of primer | 10d | 2026-10-22 | 2026-10-31 | 2947 |  | 7 Days Work | 9185504 |
| 2949 | 36900.37000.37100.37600.38400.42600.306200 | Final cutting/polishing of stone flooring | 7d | 2026-11-01 | 2026-11-07 | 2948 |  | 7 Days Work | 9185514 |

| ID | WBS | Task | Duration | Start | Finish | Predecessors | Constraint | Calendar | Unique_Task_ID |
| --- | --- | --- | --- | --- | --- | --- | --- | --- | --- |
| 2950 | 36900.37000.37100.37600.38400.42600.60000 | **Toilet** | 237d | 2026-03-15 | 2026-11-06 |  | start no earlier than 2026-03-15 | 7 Days Work | 9183604 |
| 2951 | 36900.37000.37100.37600.38400.42600.60000.825600 | Toilet_MEP Clearance -1 | 7d | 2026-03-15 | 2026-03-21 | 2914 |  | 7 Days Work | 9193294 |
| 2952 | 36900.37000.37100.37600.38400.42600.60000.825700 | Toilet_Level Marking | 1d | 2026-03-22 | 2026-03-22 | 2951 |  | 7 Days Work | 9193304 |
| 2953 | 36900.37000.37100.37600.38400.42600.60000.825800 | Toilet_Chasing work for Electrical conduit & concealed plumbing | 5d | 2026-03-23 | 2026-03-27 | 2952 |  | 7 Days Work | 9193314 |
| 2954 | 36900.37000.37100.37600.38400.42600.60000.825900 | Toilet_Plumbing work 1st fix | 5d | 2026-03-28 | 2026-04-01 | 2953 |  | 7 Days Work | 9193324 |
| 2955 | 36900.37000.37100.37600.38400.42600.60000.826000 | Toilet_Sleeve/Bore Packing | 5d | 2026-04-02 | 2026-04-06 | 2954 |  | 7 Days Work | 9193334 |
| 2956 | 36900.37000.37100.37600.38400.42600.60000.826100 | Toilet_Waterproofing | 10d | 2026-04-07 | 2026-04-16 | 2955 |  | 7 Days Work | 9193344 |
| 2957 | 36900.37000.37100.37600.38400.42600.60000.826200 | Toilet_Screed | 1d | 2026-04-17 | 2026-04-17 | 2956 |  | 7 Days Work | 9193354 |
| 2958 | 36900.37000.37100.37600.38400.42600.60000.826300 | Toilet_Plumbing 2nd fix | 5d | 2026-04-18 | 2026-04-22 | 2957 |  | 7 Days Work | 9193364 |
| 2959 | 36900.37000.37100.37600.38400.42600.60000.826400 | Toilet_Ledge wall | 5d | 2026-04-23 | 2026-04-27 | 2958 |  | 7 Days Work | 9193374 |
| 2960 | 36900.37000.37100.37600.38400.42600.60000.826500 | Toilet_Cement Plaster | 5d | 2026-04-28 | 2026-05-02 | 2959 |  | 7 Days Work | 9193384 |
| 2961 | 36900.37000.37100.37600.38400.42600.60000.826600 | Toilet_Door Frame | 1d | 2026-05-03 | 2026-05-03 | 2960 |  | 7 Days Work | 9193394 |
| 2962 | 36900.37000.37100.37600.38400.42600.60000.826700 | Toilet_Wash basin & Couter | 3d | 2026-05-04 | 2026-05-06 | 2961 |  | 7 Days Work | 9193404 |
| 2963 | 36900.37000.37100.37600.38400.42600.60000.826800 | Toilet_Wall dado | 20d | 2026-05-07 | 2026-05-26 | 2962 |  | 7 Days Work | 9193414 |
| 2964 | 36900.37000.37100.37600.38400.42600.60000.826900 | Toilet_Granite Work-Ledge wall top | 3d | 2026-05-27 | 2026-05-29 | 2963 |  | 7 Days Work | 9193424 |
| 2965 | 36900.37000.37100.37600.38400.42600.60000.827000 | Toilet_Floor Tilling work | 20d | 2026-05-30 | 2026-06-18 | 2964 |  | 7 Days Work | 9193434 |
| 2966 | 36900.37000.37100.37600.38400.42600.60000.827100 | Toilet_1st row of dado | 5d | 2026-06-19 | 2026-06-23 | 2965 |  | 7 Days Work | 9193444 |
| 2967 | 36900.37000.37100.37600.38400.42600.60000.827200 | Toilet_Window Fixing | 14d | 2026-06-24 | 2026-07-07 | 2966 |  | 7 Days Work | 9193454 |
| 2968 | 36900.37000.37100.37600.38400.42600.60000.827300 | Toilet_Services above False ceiling | 21d | 2026-07-08 | 2026-07-28 | 2967 |  | 7 Days Work | 9193464 |
| 2969 | 36900.37000.37100.37600.38400.42600.60000.827400 | Toilet_False Ceiling framing | 12d | 2026-07-29 | 2026-08-09 | 2968 |  | 7 Days Work | 9193474 |
| 2970 | 36900.37000.37100.37600.38400.42600.60000.827500 | Toilet_Door Frame | 5d | 2026-08-10 | 2026-08-14 | 2969 |  | 7 Days Work | 9193484 |
| 2971 | 36900.37000.37100.37600.38400.42600.60000.827600 | Toilet_Epoxy Tile Grouting | 7d | 2026-10-10 | 2026-10-16 | 2946SS |  | 7 Days Work | 9193494 |
| 2972 | 36900.37000.37100.37600.38400.42600.60000.827700 | Toilet_False ceiling board fixing, CP Sanitary Fixture, Electric Fixture | 21d | 2026-10-17 | 2026-11-06 | 2971 |  | 7 Days Work | 9193504 |
| 2973 | 36900.37000.37100.37600.38400.42700 | **5th Habitable/7th Floor** | 245d | 2026-03-17 | 2026-11-16 |  | start no earlier than 2026-03-17 | 7 Days Work | 9183414 |
| 2974 | 36900.37000.37100.37600.38400.42700.306300 | Post Pour | 7d | 2026-03-17 | 2026-03-23 | 2716FS+15d |  | 7 Days Work | 9185524 |
| 2975 | 36900.37000.37100.37600.38400.42700.306400 | MEP Clearance -1 | 5d | 2026-03-24 | 2026-03-28 | 2974 |  | 7 Days Work | 9185534 |
| 2976 | 36900.37000.37100.37600.38400.42700.306500 | Benchmark | 1d | 2026-03-29 | 2026-03-29 | 2975 |  | 7 Days Work | 9185544 |
| 2977 | 36900.37000.37100.37600.38400.42700.306600 | Temporary Railing | 3d | 2026-03-30 | 2026-04-01 | 2976 |  | 7 Days Work | 9185554 |
| 2978 | 36900.37000.37100.37600.38400.42700.306700 | Blockwork | 10d | 2026-04-02 | 2026-04-11 | 2977 |  | 7 Days Work | 9185564 |
| 2979 | 36900.37000.37100.37600.38400.42700.306800 | MEP Clearance -2 | 10d | 2026-04-12 | 2026-04-21 | 2978 |  | 7 Days Work | 9185574 |
| 2980 | 36900.37000.37100.37600.38400.42700.306900 | Gypsum Plaster | 14d | 2026-04-22 | 2026-05-05 | 2979 |  | 7 Days Work | 9185584 |
| 2981 | 36900.37000.37100.37600.38400.42700.307000 | Kitchen Platform | 3d | 2026-05-06 | 2026-05-08 | 2980 |  | 7 Days Work | 9185594 |
| 2982 | 36900.37000.37100.37600.38400.42700.307100 | Kitchen dado | 7d | 2026-05-09 | 2026-05-15 | 2981 |  | 7 Days Work | 9185604 |
| 2983 | 36900.37000.37100.37600.38400.42700.307200 | Fire Fighting | 5d | 2026-05-16 | 2026-05-20 | 2982 |  | 7 Days Work | 9185614 |
| 2984 | 36900.37000.37100.37600.38400.42700.307300 | Anticapilary | 5d | 2026-05-21 | 2026-05-25 | 2983 |  | 7 Days Work | 9185624 |
| 2985 | 36900.37000.37100.37600.38400.42700.307400 | Stone Laying | 10d | 2026-06-28 | 2026-07-07 | 3025 |  | 7 Days Work | 9185634 |
| 2986 | 36900.37000.37100.37600.38400.42700.307500 | Tiles Laying | 7d | 2026-06-28 | 2026-07-04 | 3025 |  | 7 Days Work | 9185644 |
| 2987 | 36900.37000.37100.37600.38400.42700.307600 | 1st cutting/polishing of stone flooring | 7d | 2026-07-05 | 2026-07-11 | 2986 |  | 7 Days Work | 9185654 |
| 2988 | 36900.37000.37100.37600.38400.42700.307700 | Tiles/Stone skirting | 5d | 2026-07-12 | 2026-07-16 | 2987 |  | 7 Days Work | 9185664 |
| 2989 | 36900.37000.37100.37600.38400.42700.307800 | Protechtion sheet | 1d | 2026-07-17 | 2026-07-17 | 2988 |  | 7 Days Work | 9185674 |
| 2990 | 36900.37000.37100.37600.38400.42700.307900 | Installation of Temporary Door | 1d | 2026-07-18 | 2026-07-18 | 2989 |  | 7 Days Work | 9185684 |
| 2991 | 36900.37000.37100.37600.38400.42700.308000 | Fixing of window tracks | 5d | 2026-07-19 | 2026-07-23 | 2990 |  | 7 Days Work | 9185694 |
| 2992 | 36900.37000.37100.37600.38400.42700.308100 | Wire Pulling | 7d | 2026-07-24 | 2026-07-30 | 2991 |  | 7 Days Work | 9185704 |
| 2993 | 36900.37000.37100.37600.38400.42700.308200 | Gypsum Remaining | 5d | 2026-07-31 | 2026-08-04 | 2992 |  | 7 Days Work | 9185714 |
| 2994 | 36900.37000.37100.37600.38400.42700.308300 | Fixing of windoow shutter | 5d | 2026-08-05 | 2026-08-09 | 2993 |  | 7 Days Work | 9185724 |
| 2995 | 36900.37000.37100.37600.38400.42700.308400 | Putty Works - walls & ceiling | 15d | 2026-08-10 | 2026-08-24 | 2994 |  | 7 Days Work | 9185734 |
| 2996 | 36900.37000.37100.37600.38400.42700.308500 | False Ceiling- Framing | 10d | 2026-08-25 | 2026-09-03 | 2995 |  | 7 Days Work | 9185744 |
| 2997 | 36900.37000.37100.37600.38400.42700.308600 | Pre Hung Door | 3d | 2026-09-04 | 2026-09-06 | 2996 |  | 7 Days Work | 9185754 |
| 2998 | 36900.37000.37100.37600.38400.42700.308700 | Protechtion sheet | 2d | 2026-09-07 | 2026-09-08 | 2997 |  | 7 Days Work | 9185764 |
| 2999 | 36900.37000.37100.37600.38400.42700.308800 | Skirting near door | 2d | 2026-09-09 | 2026-09-10 | 2998 |  | 7 Days Work | 9185774 |
| 3000 | 36900.37000.37100.37600.38400.42700.308900 | Electrical Switch box fixing | 14d | 2026-09-11 | 2026-09-24 | 2999 |  | 7 Days Work | 9185784 |
| 3001 | 36900.37000.37100.37600.38400.42700.309000 | Fire Fighting painting | 5d | 2026-09-25 | 2026-09-29 | 3000 |  | 7 Days Work | 9185794 |
| 3002 | 36900.37000.37100.37600.38400.42700.309100 | Protection of all flooring, door & window hardware | 5d | 2026-09-30 | 2026-10-04 | 3001 |  | 7 Days Work | 9185804 |
| 3003 | 36900.37000.37100.37600.38400.42700.309200 | 1st coat primer- ceiling 1st & walls | 14d | 2026-10-05 | 2026-10-18 | 3002 |  | 7 Days Work | 9185814 |
| 3004 | 36900.37000.37100.37600.38400.42700.309300 | Wooden Flooring | 5d | 2026-10-19 | 2026-10-23 | 3003 |  | 7 Days Work | 9185824 |
| 3005 | 36900.37000.37100.37600.38400.42700.309400 | Removing of Temporary Railing & installation of Glass Railing | 5d | 2026-10-19 | 2026-10-23 | 3003 |  | 7 Days Work | 9185834 |
| 3006 | 36900.37000.37100.37600.38400.42700.309500 | Tile Grouting | 7d | 2026-10-19 | 2026-10-25 | 3003 |  | 7 Days Work | 9185844 |
| 3007 | 36900.37000.37100.37600.38400.42700.309600 | False Ceiling | 5d | 2026-10-26 | 2026-10-30 | 3006 |  | 7 Days Work | 9185854 |
| 3008 | 36900.37000.37100.37600.38400.42700.309700 | 2nd coat of primer | 10d | 2026-10-31 | 2026-11-09 | 3007 |  | 7 Days Work | 9185864 |
| 3009 | 36900.37000.37100.37600.38400.42700.309800 | Final cutting/polishing of stone flooring | 7d | 2026-11-10 | 2026-11-16 | 3008 |  | 7 Days Work | 9185874 |

| ID | WBS | Task | Duration | Start | Finish | Predecessors | Constraint | Calendar | Unique_Task_ID |
| --- | --- | --- | --- | --- | --- | --- | --- | --- | --- |
| 3010 | 36900.37000.37100.37600.38400.42700.60100 | **Toilet** | 237d | 2026-03-24 | 2026-11-15 |  | start no earlier than 2026-03-24 | 7 Days Work | 9183614 |
| 3011 | 36900.37000.37100.37600.38400.42700.60100.827800 | Toilet_MEP Clearance -1 | 7d | 2026-03-24 | 2026-03-30 | 2974 |  | 7 Days Work | 9193514 |
| 3012 | 36900.37000.37100.37600.38400.42700.60100.827900 | Toilet_Level Marking | 1d | 2026-03-31 | 2026-03-31 | 3011 |  | 7 Days Work | 9193524 |
| 3013 | 36900.37000.37100.37600.38400.42700.60100.828000 | Toilet_Chasing work for Electrical conduit & concealed plumbing | 5d | 2026-04-01 | 2026-04-05 | 3012 |  | 7 Days Work | 9193534 |
| 3014 | 36900.37000.37100.37600.38400.42700.60100.828100 | Toilet_Plumbing work 1st fix | 5d | 2026-04-06 | 2026-04-10 | 3013 |  | 7 Days Work | 9193544 |
| 3015 | 36900.37000.37100.37600.38400.42700.60100.828200 | Toilet_Sleeve/Bore Packing | 5d | 2026-04-11 | 2026-04-15 | 3014 |  | 7 Days Work | 9193554 |
| 3016 | 36900.37000.37100.37600.38400.42700.60100.828300 | Toilet_Waterproofing | 10d | 2026-04-16 | 2026-04-25 | 3015 |  | 7 Days Work | 9193564 |
| 3017 | 36900.37000.37100.37600.38400.42700.60100.828400 | Toilet_Screed | 1d | 2026-04-26 | 2026-04-26 | 3016 |  | 7 Days Work | 9193574 |
| 3018 | 36900.37000.37100.37600.38400.42700.60100.828500 | Toilet_Plumbing 2nd fix | 5d | 2026-04-27 | 2026-05-01 | 3017 |  | 7 Days Work | 9193584 |
| 3019 | 36900.37000.37100.37600.38400.42700.60100.828600 | Toilet_Ledge wall | 5d | 2026-05-02 | 2026-05-06 | 3018 |  | 7 Days Work | 9193594 |
| 3020 | 36900.37000.37100.37600.38400.42700.60100.828700 | Toilet_Cement Plaster | 5d | 2026-05-07 | 2026-05-11 | 3019 |  | 7 Days Work | 9193604 |
| 3021 | 36900.37000.37100.37600.38400.42700.60100.828800 | Toilet_Door Frame | 1d | 2026-05-12 | 2026-05-12 | 3020 |  | 7 Days Work | 9193614 |
| 3022 | 36900.37000.37100.37600.38400.42700.60100.828900 | Toilet_Wash basin & Couter | 3d | 2026-05-13 | 2026-05-15 | 3021 |  | 7 Days Work | 9193624 |
| 3023 | 36900.37000.37100.37600.38400.42700.60100.829000 | Toilet_Wall dado | 20d | 2026-05-16 | 2026-06-04 | 3022 |  | 7 Days Work | 9193634 |
| 3024 | 36900.37000.37100.37600.38400.42700.60100.829100 | Toilet_Granite Work-Ledge wall top | 3d | 2026-06-05 | 2026-06-07 | 3023 |  | 7 Days Work | 9193644 |
| 3025 | 36900.37000.37100.37600.38400.42700.60100.829200 | Toilet_Floor Tilling work | 20d | 2026-06-08 | 2026-06-27 | 3024 |  | 7 Days Work | 9193654 |
| 3026 | 36900.37000.37100.37600.38400.42700.60100.829300 | Toilet_1st row of dado | 5d | 2026-06-28 | 2026-07-02 | 3025 |  | 7 Days Work | 9193664 |
| 3027 | 36900.37000.37100.37600.38400.42700.60100.829400 | Toilet_Window Fixing | 14d | 2026-07-03 | 2026-07-16 | 3026 |  | 7 Days Work | 9193674 |
| 3028 | 36900.37000.37100.37600.38400.42700.60100.829500 | Toilet_Services above False ceiling | 21d | 2026-07-17 | 2026-08-06 | 3027 |  | 7 Days Work | 9193684 |
| 3029 | 36900.37000.37100.37600.38400.42700.60100.829600 | Toilet_False Ceiling framing | 12d | 2026-08-07 | 2026-08-18 | 3028 |  | 7 Days Work | 9193694 |
| 3030 | 36900.37000.37100.37600.38400.42700.60100.829700 | Toilet_Door Frame | 5d | 2026-08-19 | 2026-08-23 | 3029 |  | 7 Days Work | 9193704 |
| 3031 | 36900.37000.37100.37600.38400.42700.60100.829800 | Toilet_Epoxy Tile Grouting | 7d | 2026-10-19 | 2026-10-25 | 3006SS |  | 7 Days Work | 9193714 |
| 3032 | 36900.37000.37100.37600.38400.42700.60100.829900 | Toilet_False ceiling board fixing, CP Sanitary Fixture, Electric Fixture | 21d | 2026-10-26 | 2026-11-15 | 3031 |  | 7 Days Work | 9193724 |
| 3033 | 36900.37000.37100.37600.38400.42800 | **6th Habitable/8th Floor** | 245d | 2026-03-26 | 2026-11-25 |  | start no earlier than 2026-03-26 | 7 Days Work | 9183424 |
| 3034 | 36900.37000.37100.37600.38400.42800.309900 | Post Pour | 7d | 2026-03-26 | 2026-04-01 | 2717FS+15d |  | 7 Days Work | 9185884 |
| 3035 | 36900.37000.37100.37600.38400.42800.310000 | MEP Clearance -1 | 5d | 2026-04-02 | 2026-04-06 | 3034 |  | 7 Days Work | 9185894 |
| 3036 | 36900.37000.37100.37600.38400.42800.310100 | Benchmark | 1d | 2026-04-07 | 2026-04-07 | 3035 |  | 7 Days Work | 9185904 |
| 3037 | 36900.37000.37100.37600.38400.42800.310200 | Temporary Railing | 3d | 2026-04-08 | 2026-04-10 | 3036 |  | 7 Days Work | 9185914 |
| 3038 | 36900.37000.37100.37600.38400.42800.310300 | Blockwork | 10d | 2026-04-11 | 2026-04-20 | 3037 |  | 7 Days Work | 9185924 |
| 3039 | 36900.37000.37100.37600.38400.42800.310400 | MEP Clearance -2 | 10d | 2026-04-21 | 2026-04-30 | 3038 |  | 7 Days Work | 9185934 |
| 3040 | 36900.37000.37100.37600.38400.42800.310500 | Gypsum Plaster | 14d | 2026-05-01 | 2026-05-14 | 3039 |  | 7 Days Work | 9185944 |
| 3041 | 36900.37000.37100.37600.38400.42800.310600 | Kitchen Platform | 3d | 2026-05-15 | 2026-05-17 | 3040 |  | 7 Days Work | 9185954 |
| 3042 | 36900.37000.37100.37600.38400.42800.310700 | Kitchen dado | 7d | 2026-05-18 | 2026-05-24 | 3041 |  | 7 Days Work | 9185964 |
| 3043 | 36900.37000.37100.37600.38400.42800.310800 | Fire Fighting | 5d | 2026-05-25 | 2026-05-29 | 3042 |  | 7 Days Work | 9185974 |
| 3044 | 36900.37000.37100.37600.38400.42800.310900 | Anticapilary | 5d | 2026-05-30 | 2026-06-03 | 3043 |  | 7 Days Work | 9185984 |
| 3045 | 36900.37000.37100.37600.38400.42800.311000 | Stone Laying | 10d | 2026-07-07 | 2026-07-16 | 3085 |  | 7 Days Work | 9185994 |
| 3046 | 36900.37000.37100.37600.38400.42800.311100 | Tiles Laying | 7d | 2026-07-07 | 2026-07-13 | 3085 |  | 7 Days Work | 9186004 |
| 3047 | 36900.37000.37100.37600.38400.42800.311200 | 1st cutting/polishing of stone flooring | 7d | 2026-07-14 | 2026-07-20 | 3046 |  | 7 Days Work | 9186014 |
| 3048 | 36900.37000.37100.37600.38400.42800.311300 | Tiles/Stone skirting | 5d | 2026-07-21 | 2026-07-25 | 3047 |  | 7 Days Work | 9186024 |
| 3049 | 36900.37000.37100.37600.38400.42800.311400 | Protechtion sheet | 1d | 2026-07-26 | 2026-07-26 | 3048 |  | 7 Days Work | 9186034 |
| 3050 | 36900.37000.37100.37600.38400.42800.311500 | Installation of Temporary Door | 1d | 2026-07-27 | 2026-07-27 | 3049 |  | 7 Days Work | 9186044 |
| 3051 | 36900.37000.37100.37600.38400.42800.311600 | Fixing of window tracks | 5d | 2026-07-28 | 2026-08-01 | 3050 |  | 7 Days Work | 9186054 |
| 3052 | 36900.37000.37100.37600.38400.42800.311700 | Wire Pulling | 7d | 2026-08-02 | 2026-08-08 | 3051 |  | 7 Days Work | 9186064 |
| 3053 | 36900.37000.37100.37600.38400.42800.311800 | Gypsum Remaining | 5d | 2026-08-09 | 2026-08-13 | 3052 |  | 7 Days Work | 9186074 |
| 3054 | 36900.37000.37100.37600.38400.42800.311900 | Fixing of windoow shutter | 5d | 2026-08-14 | 2026-08-18 | 3053 |  | 7 Days Work | 9186084 |
| 3055 | 36900.37000.37100.37600.38400.42800.312000 | Putty Works - walls & ceiling | 15d | 2026-08-19 | 2026-09-02 | 3054 |  | 7 Days Work | 9186094 |
| 3056 | 36900.37000.37100.37600.38400.42800.312100 | False Ceiling- Framing | 10d | 2026-09-03 | 2026-09-12 | 3055 |  | 7 Days Work | 9186104 |
| 3057 | 36900.37000.37100.37600.38400.42800.312200 | Pre Hung Door | 3d | 2026-09-13 | 2026-09-15 | 3056 |  | 7 Days Work | 9186114 |
| 3058 | 36900.37000.37100.37600.38400.42800.312300 | Protechtion sheet | 2d | 2026-09-16 | 2026-09-17 | 3057 |  | 7 Days Work | 9186124 |
| 3059 | 36900.37000.37100.37600.38400.42800.312400 | Skirting near door | 2d | 2026-09-18 | 2026-09-19 | 3058 |  | 7 Days Work | 9186134 |
| 3060 | 36900.37000.37100.37600.38400.42800.312500 | Electrical Switch box fixing | 14d | 2026-09-20 | 2026-10-03 | 3059 |  | 7 Days Work | 9186144 |
| 3061 | 36900.37000.37100.37600.38400.42800.312600 | Fire Fighting painting | 5d | 2026-10-04 | 2026-10-08 | 3060 |  | 7 Days Work | 9186154 |
| 3062 | 36900.37000.37100.37600.38400.42800.312700 | Protection of all flooring, door & window hardware | 5d | 2026-10-09 | 2026-10-13 | 3061 |  | 7 Days Work | 9186164 |
| 3063 | 36900.37000.37100.37600.38400.42800.312800 | 1st coat primer- ceiling 1st & walls | 14d | 2026-10-14 | 2026-10-27 | 3062 |  | 7 Days Work | 9186174 |
| 3064 | 36900.37000.37100.37600.38400.42800.312900 | Wooden Flooring | 5d | 2026-10-28 | 2026-11-01 | 3063 |  | 7 Days Work | 9186184 |
| 3065 | 36900.37000.37100.37600.38400.42800.313000 | Removing of Temporary Railing & installation of Glass Railing | 5d | 2026-10-28 | 2026-11-01 | 3063 |  | 7 Days Work | 9186194 |
| 3066 | 36900.37000.37100.37600.38400.42800.313100 | Tile Grouting | 7d | 2026-10-28 | 2026-11-03 | 3063 |  | 7 Days Work | 9186204 |
| 3067 | 36900.37000.37100.37600.38400.42800.313200 | False Ceiling | 5d | 2026-11-04 | 2026-11-08 | 3066 |  | 7 Days Work | 9186214 |
| 3068 | 36900.37000.37100.37600.38400.42800.313300 | 2nd coat of primer | 10d | 2026-11-09 | 2026-11-18 | 3067 |  | 7 Days Work | 9186224 |
| 3069 | 36900.37000.37100.37600.38400.42800.313400 | Final cutting/polishing of stone flooring | 7d | 2026-11-19 | 2026-11-25 | 3068 |  | 7 Days Work | 9186234 |

| ID | WBS | Task | Duration | Start | Finish | Predecessors | Constraint | Calendar | Unique_Task_ID |
| --- | --- | --- | --- | --- | --- | --- | --- | --- | --- |
| 3070 | 36900.37000.37100.37600.38400.42800.60200 | **Toilet** | 237d | 2026-04-02 | 2026-11-24 |  | start no earlier than 2026-04-02 | 7 Days Work | 9183624 |
| 3071 | 36900.37000.37100.37600.38400.42800.60200.830000 | Toilet_MEP Clearance -1 | 7d | 2026-04-02 | 2026-04-08 | 3034 |  | 7 Days Work | 9193734 |
| 3072 | 36900.37000.37100.37600.38400.42800.60200.830100 | Toilet_Level Marking | 1d | 2026-04-09 | 2026-04-09 | 3071 |  | 7 Days Work | 9193744 |
| 3073 | 36900.37000.37100.37600.38400.42800.60200.830200 | Toilet_Chasing work for Electrical conduit & concealed plumbing | 5d | 2026-04-10 | 2026-04-14 | 3072 |  | 7 Days Work | 9193754 |
| 3074 | 36900.37000.37100.37600.38400.42800.60200.830300 | Toilet_Plumbing work 1st fix | 5d | 2026-04-15 | 2026-04-19 | 3073 |  | 7 Days Work | 9193764 |
| 3075 | 36900.37000.37100.37600.38400.42800.60200.830400 | Toilet_Sleeve/Bore Packing | 5d | 2026-04-20 | 2026-04-24 | 3074 |  | 7 Days Work | 9193774 |
| 3076 | 36900.37000.37100.37600.38400.42800.60200.830500 | Toilet_Waterproofing | 10d | 2026-04-25 | 2026-05-04 | 3075 |  | 7 Days Work | 9193784 |
| 3077 | 36900.37000.37100.37600.38400.42800.60200.830600 | Toilet_Screed | 1d | 2026-05-05 | 2026-05-05 | 3076 |  | 7 Days Work | 9193794 |
| 3078 | 36900.37000.37100.37600.38400.42800.60200.830700 | Toilet_Plumbing 2nd fix | 5d | 2026-05-06 | 2026-05-10 | 3077 |  | 7 Days Work | 9193804 |
| 3079 | 36900.37000.37100.37600.38400.42800.60200.830800 | Toilet_Ledge wall | 5d | 2026-05-11 | 2026-05-15 | 3078 |  | 7 Days Work | 9193814 |
| 3080 | 36900.37000.37100.37600.38400.42800.60200.830900 | Toilet_Cement Plaster | 5d | 2026-05-16 | 2026-05-20 | 3079 |  | 7 Days Work | 9193824 |
| 3081 | 36900.37000.37100.37600.38400.42800.60200.831000 | Toilet_Door Frame | 1d | 2026-05-21 | 2026-05-21 | 3080 |  | 7 Days Work | 9193834 |
| 3082 | 36900.37000.37100.37600.38400.42800.60200.831100 | Toilet_Wash basin & Couter | 3d | 2026-05-22 | 2026-05-24 | 3081 |  | 7 Days Work | 9193844 |
| 3083 | 36900.37000.37100.37600.38400.42800.60200.831200 | Toilet_Wall dado | 20d | 2026-05-25 | 2026-06-13 | 3082 |  | 7 Days Work | 9193854 |
| 3084 | 36900.37000.37100.37600.38400.42800.60200.831300 | Toilet_Granite Work-Ledge wall top | 3d | 2026-06-14 | 2026-06-16 | 3083 |  | 7 Days Work | 9193864 |
| 3085 | 36900.37000.37100.37600.38400.42800.60200.831400 | Toilet_Floor Tilling work | 20d | 2026-06-17 | 2026-07-06 | 3084 |  | 7 Days Work | 9193874 |
| 3086 | 36900.37000.37100.37600.38400.42800.60200.831500 | Toilet_1st row of dado | 5d | 2026-07-07 | 2026-07-11 | 3085 |  | 7 Days Work | 9193884 |
| 3087 | 36900.37000.37100.37600.38400.42800.60200.831600 | Toilet_Window Fixing | 14d | 2026-07-12 | 2026-07-25 | 3086 |  | 7 Days Work | 9193894 |
| 3088 | 36900.37000.37100.37600.38400.42800.60200.831700 | Toilet_Services above False ceiling | 21d | 2026-07-26 | 2026-08-15 | 3087 |  | 7 Days Work | 9193904 |
| 3089 | 36900.37000.37100.37600.38400.42800.60200.831800 | Toilet_False Ceiling framing | 12d | 2026-08-16 | 2026-08-27 | 3088 |  | 7 Days Work | 9193914 |
| 3090 | 36900.37000.37100.37600.38400.42800.60200.831900 | Toilet_Door Frame | 5d | 2026-08-28 | 2026-09-01 | 3089 |  | 7 Days Work | 9193924 |
| 3091 | 36900.37000.37100.37600.38400.42800.60200.832000 | Toilet_Epoxy Tile Grouting | 7d | 2026-10-28 | 2026-11-03 | 3066SS |  | 7 Days Work | 9193934 |
| 3092 | 36900.37000.37100.37600.38400.42800.60200.832100 | Toilet_False ceiling board fixing, CP Sanitary Fixture, Electric Fixture | 21d | 2026-11-04 | 2026-11-24 | 3091 |  | 7 Days Work | 9193944 |
| 3093 | 36900.37000.37100.37600.38400.42900 | **7th Habitable/9th Floor** | 245d | 2026-04-04 | 2026-12-04 |  | start no earlier than 2026-04-04 | 7 Days Work | 9183434 |
| 3094 | 36900.37000.37100.37600.38400.42900.313500 | Post Pour | 7d | 2026-04-04 | 2026-04-10 | 2718FS+15d |  | 7 Days Work | 9186244 |
| 3095 | 36900.37000.37100.37600.38400.42900.313600 | MEP Clearance -1 | 5d | 2026-04-11 | 2026-04-15 | 3094 |  | 7 Days Work | 9186254 |
| 3096 | 36900.37000.37100.37600.38400.42900.313700 | Benchmark | 1d | 2026-04-16 | 2026-04-16 | 3095 |  | 7 Days Work | 9186264 |
| 3097 | 36900.37000.37100.37600.38400.42900.313800 | Temporary Railing | 3d | 2026-04-17 | 2026-04-19 | 3096 |  | 7 Days Work | 9186274 |
| 3098 | 36900.37000.37100.37600.38400.42900.313900 | Blockwork | 10d | 2026-04-20 | 2026-04-29 | 3097 |  | 7 Days Work | 9186284 |
| 3099 | 36900.37000.37100.37600.38400.42900.314000 | MEP Clearance -2 | 10d | 2026-04-30 | 2026-05-09 | 3098 |  | 7 Days Work | 9186294 |
| 3100 | 36900.37000.37100.37600.38400.42900.314100 | Gypsum Plaster | 14d | 2026-05-10 | 2026-05-23 | 3099 |  | 7 Days Work | 9186304 |
| 3101 | 36900.37000.37100.37600.38400.42900.314200 | Kitchen Platform | 3d | 2026-05-24 | 2026-05-26 | 3100 |  | 7 Days Work | 9186314 |
| 3102 | 36900.37000.37100.37600.38400.42900.314300 | Kitchen dado | 7d | 2026-05-27 | 2026-06-02 | 3101 |  | 7 Days Work | 9186324 |
| 3103 | 36900.37000.37100.37600.38400.42900.314400 | Fire Fighting | 5d | 2026-06-03 | 2026-06-07 | 3102 |  | 7 Days Work | 9186334 |
| 3104 | 36900.37000.37100.37600.38400.42900.314500 | Anticapilary | 5d | 2026-06-08 | 2026-06-12 | 3103 |  | 7 Days Work | 9186344 |
| 3105 | 36900.37000.37100.37600.38400.42900.314600 | Stone Laying | 10d | 2026-07-16 | 2026-07-25 | 3145 |  | 7 Days Work | 9186354 |
| 3106 | 36900.37000.37100.37600.38400.42900.314700 | Tiles Laying | 7d | 2026-07-16 | 2026-07-22 | 3145 |  | 7 Days Work | 9186364 |
| 3107 | 36900.37000.37100.37600.38400.42900.314800 | 1st cutting/polishing of stone flooring | 7d | 2026-07-23 | 2026-07-29 | 3106 |  | 7 Days Work | 9186374 |
| 3108 | 36900.37000.37100.37600.38400.42900.314900 | Tiles/Stone skirting | 5d | 2026-07-30 | 2026-08-03 | 3107 |  | 7 Days Work | 9186384 |
| 3109 | 36900.37000.37100.37600.38400.42900.315000 | Protechtion sheet | 1d | 2026-08-04 | 2026-08-04 | 3108 |  | 7 Days Work | 9186394 |
| 3110 | 36900.37000.37100.37600.38400.42900.315100 | Installation of Temporary Door | 1d | 2026-08-05 | 2026-08-05 | 3109 |  | 7 Days Work | 9186404 |
| 3111 | 36900.37000.37100.37600.38400.42900.315200 | Fixing of window tracks | 5d | 2026-08-06 | 2026-08-10 | 3110 |  | 7 Days Work | 9186414 |
| 3112 | 36900.37000.37100.37600.38400.42900.315300 | Wire Pulling | 7d | 2026-08-11 | 2026-08-17 | 3111 |  | 7 Days Work | 9186424 |
| 3113 | 36900.37000.37100.37600.38400.42900.315400 | Gypsum Remaining | 5d | 2026-08-18 | 2026-08-22 | 3112 |  | 7 Days Work | 9186434 |
| 3114 | 36900.37000.37100.37600.38400.42900.315500 | Fixing of windoow shutter | 5d | 2026-08-23 | 2026-08-27 | 3113 |  | 7 Days Work | 9186444 |
| 3115 | 36900.37000.37100.37600.38400.42900.315600 | Putty Works - walls & ceiling | 15d | 2026-08-28 | 2026-09-11 | 3114 |  | 7 Days Work | 9186454 |
| 3116 | 36900.37000.37100.37600.38400.42900.315700 | False Ceiling- Framing | 10d | 2026-09-12 | 2026-09-21 | 3115 |  | 7 Days Work | 9186464 |
| 3117 | 36900.37000.37100.37600.38400.42900.315800 | Pre Hung Door | 3d | 2026-09-22 | 2026-09-24 | 3116 |  | 7 Days Work | 9186474 |
| 3118 | 36900.37000.37100.37600.38400.42900.315900 | Protechtion sheet | 2d | 2026-09-25 | 2026-09-26 | 3117 |  | 7 Days Work | 9186484 |
| 3119 | 36900.37000.37100.37600.38400.42900.316000 | Skirting near door | 2d | 2026-09-27 | 2026-09-28 | 3118 |  | 7 Days Work | 9186494 |
| 3120 | 36900.37000.37100.37600.38400.42900.316100 | Electrical Switch box fixing | 14d | 2026-09-29 | 2026-10-12 | 3119 |  | 7 Days Work | 9186504 |
| 3121 | 36900.37000.37100.37600.38400.42900.316200 | Fire Fighting painting | 5d | 2026-10-13 | 2026-10-17 | 3120 |  | 7 Days Work | 9186514 |
| 3122 | 36900.37000.37100.37600.38400.42900.316300 | Protection of all flooring, door & window hardware | 5d | 2026-10-18 | 2026-10-22 | 3121 |  | 7 Days Work | 9186524 |
| 3123 | 36900.37000.37100.37600.38400.42900.316400 | 1st coat primer- ceiling 1st & walls | 14d | 2026-10-23 | 2026-11-05 | 3122 |  | 7 Days Work | 9186534 |
| 3124 | 36900.37000.37100.37600.38400.42900.316500 | Wooden Flooring | 5d | 2026-11-06 | 2026-11-10 | 3123 |  | 7 Days Work | 9186544 |
| 3125 | 36900.37000.37100.37600.38400.42900.316600 | Removing of Temporary Railing & installation of Glass Railing | 5d | 2026-11-06 | 2026-11-10 | 3123 |  | 7 Days Work | 9186554 |
| 3126 | 36900.37000.37100.37600.38400.42900.316700 | Tile Grouting | 7d | 2026-11-06 | 2026-11-12 | 3123 |  | 7 Days Work | 9186564 |
| 3127 | 36900.37000.37100.37600.38400.42900.316800 | False Ceiling | 5d | 2026-11-13 | 2026-11-17 | 3126 |  | 7 Days Work | 9186574 |
| 3128 | 36900.37000.37100.37600.38400.42900.316900 | 2nd coat of primer | 10d | 2026-11-18 | 2026-11-27 | 3127 |  | 7 Days Work | 9186584 |
| 3129 | 36900.37000.37100.37600.38400.42900.317000 | Final cutting/polishing of stone flooring | 7d | 2026-11-28 | 2026-12-04 | 3128 |  | 7 Days Work | 9186594 |

| ID | WBS | Task | Duration | Start | Finish | Predecessors | Constraint | Calendar | Unique_Task_ID |
| --- | --- | --- | --- | --- | --- | --- | --- | --- | --- |
| 3130 | 36900.37000.37100.37600.38400.42900.60300 | **Toilet** | 237d | 2026-04-11 | 2026-12-03 |  | start no earlier than 2026-04-11 | 7 Days Work | 9183634 |
| 3131 | 36900.37000.37100.37600.38400.42900.60300.832200 | Toilet_MEP Clearance -1 | 7d | 2026-04-11 | 2026-04-17 | 3094 |  | 7 Days Work | 9193954 |
| 3132 | 36900.37000.37100.37600.38400.42900.60300.832300 | Toilet_Level Marking | 1d | 2026-04-18 | 2026-04-18 | 3131 |  | 7 Days Work | 9193964 |
| 3133 | 36900.37000.37100.37600.38400.42900.60300.832400 | Toilet_Chasing work for Electrical conduit & concealed plumbing | 5d | 2026-04-19 | 2026-04-23 | 3132 |  | 7 Days Work | 9193974 |
| 3134 | 36900.37000.37100.37600.38400.42900.60300.832500 | Toilet_Plumbing work 1st fix | 5d | 2026-04-24 | 2026-04-28 | 3133 |  | 7 Days Work | 9193984 |
| 3135 | 36900.37000.37100.37600.38400.42900.60300.832600 | Toilet_Sleeve/Bore Packing | 5d | 2026-04-29 | 2026-05-03 | 3134 |  | 7 Days Work | 9193994 |
| 3136 | 36900.37000.37100.37600.38400.42900.60300.832700 | Toilet_Waterproofing | 10d | 2026-05-04 | 2026-05-13 | 3135 |  | 7 Days Work | 9194004 |
| 3137 | 36900.37000.37100.37600.38400.42900.60300.832800 | Toilet_Screed | 1d | 2026-05-14 | 2026-05-14 | 3136 |  | 7 Days Work | 9194014 |
| 3138 | 36900.37000.37100.37600.38400.42900.60300.832900 | Toilet_Plumbing 2nd fix | 5d | 2026-05-15 | 2026-05-19 | 3137 |  | 7 Days Work | 9194024 |
| 3139 | 36900.37000.37100.37600.38400.42900.60300.833000 | Toilet_Ledge wall | 5d | 2026-05-20 | 2026-05-24 | 3138 |  | 7 Days Work | 9194034 |
| 3140 | 36900.37000.37100.37600.38400.42900.60300.833100 | Toilet_Cement Plaster | 5d | 2026-05-25 | 2026-05-29 | 3139 |  | 7 Days Work | 9194044 |
| 3141 | 36900.37000.37100.37600.38400.42900.60300.833200 | Toilet_Door Frame | 1d | 2026-05-30 | 2026-05-30 | 3140 |  | 7 Days Work | 9194054 |
| 3142 | 36900.37000.37100.37600.38400.42900.60300.833300 | Toilet_Wash basin & Couter | 3d | 2026-05-31 | 2026-06-02 | 3141 |  | 7 Days Work | 9194064 |
| 3143 | 36900.37000.37100.37600.38400.42900.60300.833400 | Toilet_Wall dado | 20d | 2026-06-03 | 2026-06-22 | 3142 |  | 7 Days Work | 9194074 |
| 3144 | 36900.37000.37100.37600.38400.42900.60300.833500 | Toilet_Granite Work-Ledge wall top | 3d | 2026-06-23 | 2026-06-25 | 3143 |  | 7 Days Work | 9194084 |
| 3145 | 36900.37000.37100.37600.38400.42900.60300.833600 | Toilet_Floor Tilling work | 20d | 2026-06-26 | 2026-07-15 | 3144 |  | 7 Days Work | 9194094 |
| 3146 | 36900.37000.37100.37600.38400.42900.60300.833700 | Toilet_1st row of dado | 5d | 2026-07-16 | 2026-07-20 | 3145 |  | 7 Days Work | 9194104 |
| 3147 | 36900.37000.37100.37600.38400.42900.60300.833800 | Toilet_Window Fixing | 14d | 2026-07-21 | 2026-08-03 | 3146 |  | 7 Days Work | 9194114 |
| 3148 | 36900.37000.37100.37600.38400.42900.60300.833900 | Toilet_Services above False ceiling | 21d | 2026-08-04 | 2026-08-24 | 3147 |  | 7 Days Work | 9194124 |
| 3149 | 36900.37000.37100.37600.38400.42900.60300.834000 | Toilet_False Ceiling framing | 12d | 2026-08-25 | 2026-09-05 | 3148 |  | 7 Days Work | 9194134 |
| 3150 | 36900.37000.37100.37600.38400.42900.60300.834100 | Toilet_Door Frame | 5d | 2026-09-06 | 2026-09-10 | 3149 |  | 7 Days Work | 9194144 |
| 3151 | 36900.37000.37100.37600.38400.42900.60300.834200 | Toilet_Epoxy Tile Grouting | 7d | 2026-11-06 | 2026-11-12 | 3126SS |  | 7 Days Work | 9194154 |
| 3152 | 36900.37000.37100.37600.38400.42900.60300.834300 | Toilet_False ceiling board fixing, CP Sanitary Fixture, Electric Fixture | 21d | 2026-11-13 | 2026-12-03 | 3151 |  | 7 Days Work | 9194164 |
| 3153 | 36900.37000.37100.37600.38400.43000 | **8th Habitable/10th Floor** | 245d | 2026-04-16 | 2026-12-16 |  | start no earlier than 2026-04-16 | 7 Days Work | 9183444 |
| 3154 | 36900.37000.37100.37600.38400.43000.317100 | Post Pour | 7d | 2026-04-16 | 2026-04-22 | 2719FS+15d |  | 7 Days Work | 9186604 |
| 3155 | 36900.37000.37100.37600.38400.43000.317200 | MEP Clearance -1 | 5d | 2026-04-23 | 2026-04-27 | 3154 |  | 7 Days Work | 9186614 |
| 3156 | 36900.37000.37100.37600.38400.43000.317300 | Benchmark | 1d | 2026-04-28 | 2026-04-28 | 3155 |  | 7 Days Work | 9186624 |
| 3157 | 36900.37000.37100.37600.38400.43000.317400 | Temporary Railing | 3d | 2026-04-29 | 2026-05-01 | 3156 |  | 7 Days Work | 9186634 |
| 3158 | 36900.37000.37100.37600.38400.43000.317500 | Blockwork | 10d | 2026-05-02 | 2026-05-11 | 3157 |  | 7 Days Work | 9186644 |
| 3159 | 36900.37000.37100.37600.38400.43000.317600 | MEP Clearance -2 | 10d | 2026-05-12 | 2026-05-21 | 3158 |  | 7 Days Work | 9186654 |
| 3160 | 36900.37000.37100.37600.38400.43000.317700 | Gypsum Plaster | 14d | 2026-05-22 | 2026-06-04 | 3159 |  | 7 Days Work | 9186664 |
| 3161 | 36900.37000.37100.37600.38400.43000.317800 | Kitchen Platform | 3d | 2026-06-05 | 2026-06-07 | 3160 |  | 7 Days Work | 9186674 |
| 3162 | 36900.37000.37100.37600.38400.43000.317900 | Kitchen dado | 7d | 2026-06-08 | 2026-06-14 | 3161 |  | 7 Days Work | 9186684 |
| 3163 | 36900.37000.37100.37600.38400.43000.318000 | Fire Fighting | 5d | 2026-06-15 | 2026-06-19 | 3162 |  | 7 Days Work | 9186694 |
| 3164 | 36900.37000.37100.37600.38400.43000.318100 | Anticapilary | 5d | 2026-06-20 | 2026-06-24 | 3163 |  | 7 Days Work | 9186704 |
| 3165 | 36900.37000.37100.37600.38400.43000.318200 | Stone Laying | 10d | 2026-07-28 | 2026-08-06 | 3205 |  | 7 Days Work | 9186714 |
| 3166 | 36900.37000.37100.37600.38400.43000.318300 | Tiles Laying | 7d | 2026-07-28 | 2026-08-03 | 3205 |  | 7 Days Work | 9186724 |
| 3167 | 36900.37000.37100.37600.38400.43000.318400 | 1st cutting/polishing of stone flooring | 7d | 2026-08-04 | 2026-08-10 | 3166 |  | 7 Days Work | 9186734 |
| 3168 | 36900.37000.37100.37600.38400.43000.318500 | Tiles/Stone skirting | 5d | 2026-08-11 | 2026-08-15 | 3167 |  | 7 Days Work | 9186744 |
| 3169 | 36900.37000.37100.37600.38400.43000.318600 | Protechtion sheet | 1d | 2026-08-16 | 2026-08-16 | 3168 |  | 7 Days Work | 9186754 |
| 3170 | 36900.37000.37100.37600.38400.43000.318700 | Installation of Temporary Door | 1d | 2026-08-17 | 2026-08-17 | 3169 |  | 7 Days Work | 9186764 |
| 3171 | 36900.37000.37100.37600.38400.43000.318800 | Fixing of window tracks | 5d | 2026-08-18 | 2026-08-22 | 3170 |  | 7 Days Work | 9186774 |
| 3172 | 36900.37000.37100.37600.38400.43000.318900 | Wire Pulling | 7d | 2026-08-23 | 2026-08-29 | 3171 |  | 7 Days Work | 9186784 |
| 3173 | 36900.37000.37100.37600.38400.43000.319000 | Gypsum Remaining | 5d | 2026-08-30 | 2026-09-03 | 3172 |  | 7 Days Work | 9186794 |
| 3174 | 36900.37000.37100.37600.38400.43000.319100 | Fixing of windoow shutter | 5d | 2026-09-04 | 2026-09-08 | 3173 |  | 7 Days Work | 9186804 |
| 3175 | 36900.37000.37100.37600.38400.43000.319200 | Putty Works - walls & ceiling | 15d | 2026-09-09 | 2026-09-23 | 3174 |  | 7 Days Work | 9186814 |
| 3176 | 36900.37000.37100.37600.38400.43000.319300 | False Ceiling- Framing | 10d | 2026-09-24 | 2026-10-03 | 3175 |  | 7 Days Work | 9186824 |
| 3177 | 36900.37000.37100.37600.38400.43000.319400 | Pre Hung Door | 3d | 2026-10-04 | 2026-10-06 | 3176 |  | 7 Days Work | 9186834 |
| 3178 | 36900.37000.37100.37600.38400.43000.319500 | Protechtion sheet | 2d | 2026-10-07 | 2026-10-08 | 3177 |  | 7 Days Work | 9186844 |
| 3179 | 36900.37000.37100.37600.38400.43000.319600 | Skirting near door | 2d | 2026-10-09 | 2026-10-10 | 3178 |  | 7 Days Work | 9186854 |
| 3180 | 36900.37000.37100.37600.38400.43000.319700 | Electrical Switch box fixing | 14d | 2026-10-11 | 2026-10-24 | 3179 |  | 7 Days Work | 9186864 |
| 3181 | 36900.37000.37100.37600.38400.43000.319800 | Fire Fighting painting | 5d | 2026-10-25 | 2026-10-29 | 3180 |  | 7 Days Work | 9186874 |
| 3182 | 36900.37000.37100.37600.38400.43000.319900 | Protection of all flooring, door & window hardware | 5d | 2026-10-30 | 2026-11-03 | 3181 |  | 7 Days Work | 9186884 |
| 3183 | 36900.37000.37100.37600.38400.43000.320000 | 1st coat primer- ceiling 1st & walls | 14d | 2026-11-04 | 2026-11-17 | 3182 |  | 7 Days Work | 9186894 |
| 3184 | 36900.37000.37100.37600.38400.43000.320100 | Wooden Flooring | 5d | 2026-11-18 | 2026-11-22 | 3183 |  | 7 Days Work | 9186904 |
| 3185 | 36900.37000.37100.37600.38400.43000.320200 | Removing of Temporary Railing & installation of Glass Railing | 5d | 2026-11-18 | 2026-11-22 | 3183 |  | 7 Days Work | 9186914 |
| 3186 | 36900.37000.37100.37600.38400.43000.320300 | Tile Grouting | 7d | 2026-11-18 | 2026-11-24 | 3183 |  | 7 Days Work | 9186924 |
| 3187 | 36900.37000.37100.37600.38400.43000.320400 | False Ceiling | 5d | 2026-11-25 | 2026-11-29 | 3186 |  | 7 Days Work | 9186934 |
| 3188 | 36900.37000.37100.37600.38400.43000.320500 | 2nd coat of primer | 10d | 2026-11-30 | 2026-12-09 | 3187 |  | 7 Days Work | 9186944 |
| 3189 | 36900.37000.37100.37600.38400.43000.320600 | Final cutting/polishing of stone flooring | 7d | 2026-12-10 | 2026-12-16 | 3188 |  | 7 Days Work | 9186954 |

| ID | WBS | Task | Duration | Start | Finish | Predecessors | Constraint | Calendar | Unique_Task_ID |
| --- | --- | --- | --- | --- | --- | --- | --- | --- | --- |
| 3190 | 36900.37000.37100.37600.38400.43000.60400 | **Toilet** | 237d | 2026-04-23 | 2026-12-15 |  | start no earlier than 2026-04-23 | 7 Days Work | 9183644 |
| 3191 | 36900.37000.37100.37600.38400.43000.60400.834400 | Toilet_MEP Clearance -1 | 7d | 2026-04-23 | 2026-04-29 | 3154 |  | 7 Days Work | 9194174 |
| 3192 | 36900.37000.37100.37600.38400.43000.60400.834500 | Toilet_Level Marking | 1d | 2026-04-30 | 2026-04-30 | 3191 |  | 7 Days Work | 9194184 |
| 3193 | 36900.37000.37100.37600.38400.43000.60400.834600 | Toilet_Chasing work for Electrical conduit & concealed plumbing | 5d | 2026-05-01 | 2026-05-05 | 3192 |  | 7 Days Work | 9194194 |
| 3194 | 36900.37000.37100.37600.38400.43000.60400.834700 | Toilet_Plumbing work 1st fix | 5d | 2026-05-06 | 2026-05-10 | 3193 |  | 7 Days Work | 9194204 |
| 3195 | 36900.37000.37100.37600.38400.43000.60400.834800 | Toilet_Sleeve/Bore Packing | 5d | 2026-05-11 | 2026-05-15 | 3194 |  | 7 Days Work | 9194214 |
| 3196 | 36900.37000.37100.37600.38400.43000.60400.834900 | Toilet_Waterproofing | 10d | 2026-05-16 | 2026-05-25 | 3195 |  | 7 Days Work | 9194224 |
| 3197 | 36900.37000.37100.37600.38400.43000.60400.835000 | Toilet_Screed | 1d | 2026-05-26 | 2026-05-26 | 3196 |  | 7 Days Work | 9194234 |
| 3198 | 36900.37000.37100.37600.38400.43000.60400.835100 | Toilet_Plumbing 2nd fix | 5d | 2026-05-27 | 2026-05-31 | 3197 |  | 7 Days Work | 9194244 |
| 3199 | 36900.37000.37100.37600.38400.43000.60400.835200 | Toilet_Ledge wall | 5d | 2026-06-01 | 2026-06-05 | 3198 |  | 7 Days Work | 9194254 |
| 3200 | 36900.37000.37100.37600.38400.43000.60400.835300 | Toilet_Cement Plaster | 5d | 2026-06-06 | 2026-06-10 | 3199 |  | 7 Days Work | 9194264 |
| 3201 | 36900.37000.37100.37600.38400.43000.60400.835400 | Toilet_Door Frame | 1d | 2026-06-11 | 2026-06-11 | 3200 |  | 7 Days Work | 9194274 |
| 3202 | 36900.37000.37100.37600.38400.43000.60400.835500 | Toilet_Wash basin & Couter | 3d | 2026-06-12 | 2026-06-14 | 3201 |  | 7 Days Work | 9194284 |
| 3203 | 36900.37000.37100.37600.38400.43000.60400.835600 | Toilet_Wall dado | 20d | 2026-06-15 | 2026-07-04 | 3202 |  | 7 Days Work | 9194294 |
| 3204 | 36900.37000.37100.37600.38400.43000.60400.835700 | Toilet_Granite Work-Ledge wall top | 3d | 2026-07-05 | 2026-07-07 | 3203 |  | 7 Days Work | 9194304 |
| 3205 | 36900.37000.37100.37600.38400.43000.60400.835800 | Toilet_Floor Tilling work | 20d | 2026-07-08 | 2026-07-27 | 3204 |  | 7 Days Work | 9194314 |
| 3206 | 36900.37000.37100.37600.38400.43000.60400.835900 | Toilet_1st row of dado | 5d | 2026-07-28 | 2026-08-01 | 3205 |  | 7 Days Work | 9194324 |
| 3207 | 36900.37000.37100.37600.38400.43000.60400.836000 | Toilet_Window Fixing | 14d | 2026-08-02 | 2026-08-15 | 3206 |  | 7 Days Work | 9194334 |
| 3208 | 36900.37000.37100.37600.38400.43000.60400.836100 | Toilet_Services above False ceiling | 21d | 2026-08-16 | 2026-09-05 | 3207 |  | 7 Days Work | 9194344 |
| 3209 | 36900.37000.37100.37600.38400.43000.60400.836200 | Toilet_False Ceiling framing | 12d | 2026-09-06 | 2026-09-17 | 3208 |  | 7 Days Work | 9194354 |
| 3210 | 36900.37000.37100.37600.38400.43000.60400.836300 | Toilet_Door Frame | 5d | 2026-09-18 | 2026-09-22 | 3209 |  | 7 Days Work | 9194364 |
| 3211 | 36900.37000.37100.37600.38400.43000.60400.836400 | Toilet_Epoxy Tile Grouting | 7d | 2026-11-18 | 2026-11-24 | 3186SS |  | 7 Days Work | 9194374 |
| 3212 | 36900.37000.37100.37600.38400.43000.60400.836500 | Toilet_False ceiling board fixing, CP Sanitary Fixture, Electric Fixture | 21d | 2026-11-25 | 2026-12-15 | 3211 |  | 7 Days Work | 9194384 |
| 3213 | 36900.37000.37100.37600.38400.43100 | **9th Habitable/11th Floor** | 245d | 2026-04-25 | 2026-12-25 |  | start no earlier than 2026-04-25 | 7 Days Work | 9183454 |
| 3214 | 36900.37000.37100.37600.38400.43100.320700 | Post Pour | 7d | 2026-04-25 | 2026-05-01 | 2720FS+15d |  | 7 Days Work | 9186964 |
| 3215 | 36900.37000.37100.37600.38400.43100.320800 | MEP Clearance -1 | 5d | 2026-05-02 | 2026-05-06 | 3214 |  | 7 Days Work | 9186974 |
| 3216 | 36900.37000.37100.37600.38400.43100.320900 | Benchmark | 1d | 2026-05-07 | 2026-05-07 | 3215 |  | 7 Days Work | 9186984 |
| 3217 | 36900.37000.37100.37600.38400.43100.321000 | Temporary Railing | 3d | 2026-05-08 | 2026-05-10 | 3216 |  | 7 Days Work | 9186994 |
| 3218 | 36900.37000.37100.37600.38400.43100.321100 | Blockwork | 10d | 2026-05-11 | 2026-05-20 | 3217 |  | 7 Days Work | 9187004 |
| 3219 | 36900.37000.37100.37600.38400.43100.321200 | MEP Clearance -2 | 10d | 2026-05-21 | 2026-05-30 | 3218 |  | 7 Days Work | 9187014 |
| 3220 | 36900.37000.37100.37600.38400.43100.321300 | Gypsum Plaster | 14d | 2026-05-31 | 2026-06-13 | 3219 |  | 7 Days Work | 9187024 |
| 3221 | 36900.37000.37100.37600.38400.43100.321400 | Kitchen Platform | 3d | 2026-06-14 | 2026-06-16 | 3220 |  | 7 Days Work | 9187034 |
| 3222 | 36900.37000.37100.37600.38400.43100.321500 | Kitchen dado | 7d | 2026-06-17 | 2026-06-23 | 3221 |  | 7 Days Work | 9187044 |
| 3223 | 36900.37000.37100.37600.38400.43100.321600 | Fire Fighting | 5d | 2026-06-24 | 2026-06-28 | 3222 |  | 7 Days Work | 9187054 |
| 3224 | 36900.37000.37100.37600.38400.43100.321700 | Anticapilary | 5d | 2026-06-29 | 2026-07-03 | 3223 |  | 7 Days Work | 9187064 |
| 3225 | 36900.37000.37100.37600.38400.43100.321800 | Stone Laying | 10d | 2026-08-06 | 2026-08-15 | 3265 |  | 7 Days Work | 9187074 |
| 3226 | 36900.37000.37100.37600.38400.43100.321900 | Tiles Laying | 7d | 2026-08-06 | 2026-08-12 | 3265 |  | 7 Days Work | 9187084 |
| 3227 | 36900.37000.37100.37600.38400.43100.322000 | 1st cutting/polishing of stone flooring | 7d | 2026-08-13 | 2026-08-19 | 3226 |  | 7 Days Work | 9187094 |
| 3228 | 36900.37000.37100.37600.38400.43100.322100 | Tiles/Stone skirting | 5d | 2026-08-20 | 2026-08-24 | 3227 |  | 7 Days Work | 9187104 |
| 3229 | 36900.37000.37100.37600.38400.43100.322200 | Protechtion sheet | 1d | 2026-08-25 | 2026-08-25 | 3228 |  | 7 Days Work | 9187114 |
| 3230 | 36900.37000.37100.37600.38400.43100.322300 | Installation of Temporary Door | 1d | 2026-08-26 | 2026-08-26 | 3229 |  | 7 Days Work | 9187124 |
| 3231 | 36900.37000.37100.37600.38400.43100.322400 | Fixing of window tracks | 5d | 2026-08-27 | 2026-08-31 | 3230 |  | 7 Days Work | 9187134 |
| 3232 | 36900.37000.37100.37600.38400.43100.322500 | Wire Pulling | 7d | 2026-09-01 | 2026-09-07 | 3231 |  | 7 Days Work | 9187144 |
| 3233 | 36900.37000.37100.37600.38400.43100.322600 | Gypsum Remaining | 5d | 2026-09-08 | 2026-09-12 | 3232 |  | 7 Days Work | 9187154 |
| 3234 | 36900.37000.37100.37600.38400.43100.322700 | Fixing of windoow shutter | 5d | 2026-09-13 | 2026-09-17 | 3233 |  | 7 Days Work | 9187164 |
| 3235 | 36900.37000.37100.37600.38400.43100.322800 | Putty Works - walls & ceiling | 15d | 2026-09-18 | 2026-10-02 | 3234 |  | 7 Days Work | 9187174 |
| 3236 | 36900.37000.37100.37600.38400.43100.322900 | False Ceiling- Framing | 10d | 2026-10-03 | 2026-10-12 | 3235 |  | 7 Days Work | 9187184 |
| 3237 | 36900.37000.37100.37600.38400.43100.323000 | Pre Hung Door | 3d | 2026-10-13 | 2026-10-15 | 3236 |  | 7 Days Work | 9187194 |
| 3238 | 36900.37000.37100.37600.38400.43100.323100 | Protechtion sheet | 2d | 2026-10-16 | 2026-10-17 | 3237 |  | 7 Days Work | 9187204 |
| 3239 | 36900.37000.37100.37600.38400.43100.323200 | Skirting near door | 2d | 2026-10-18 | 2026-10-19 | 3238 |  | 7 Days Work | 9187214 |
| 3240 | 36900.37000.37100.37600.38400.43100.323300 | Electrical Switch box fixing | 14d | 2026-10-20 | 2026-11-02 | 3239 |  | 7 Days Work | 9187224 |
| 3241 | 36900.37000.37100.37600.38400.43100.323400 | Fire Fighting painting | 5d | 2026-11-03 | 2026-11-07 | 3240 |  | 7 Days Work | 9187234 |
| 3242 | 36900.37000.37100.37600.38400.43100.323500 | Protection of all flooring, door & window hardware | 5d | 2026-11-08 | 2026-11-12 | 3241 |  | 7 Days Work | 9187244 |
| 3243 | 36900.37000.37100.37600.38400.43100.323600 | 1st coat primer- ceiling 1st & walls | 14d | 2026-11-13 | 2026-11-26 | 3242 |  | 7 Days Work | 9187254 |
| 3244 | 36900.37000.37100.37600.38400.43100.323700 | Wooden Flooring | 5d | 2026-11-27 | 2026-12-01 | 3243 |  | 7 Days Work | 9187264 |
| 3245 | 36900.37000.37100.37600.38400.43100.323800 | Removing of Temporary Railing & installation of Glass Railing | 5d | 2026-11-27 | 2026-12-01 | 3243 |  | 7 Days Work | 9187274 |
| 3246 | 36900.37000.37100.37600.38400.43100.323900 | Tile Grouting | 7d | 2026-11-27 | 2026-12-03 | 3243 |  | 7 Days Work | 9187284 |
| 3247 | 36900.37000.37100.37600.38400.43100.324000 | False Ceiling | 5d | 2026-12-04 | 2026-12-08 | 3246 |  | 7 Days Work | 9187294 |
| 3248 | 36900.37000.37100.37600.38400.43100.324100 | 2nd coat of primer | 10d | 2026-12-09 | 2026-12-18 | 3247 |  | 7 Days Work | 9187304 |
| 3249 | 36900.37000.37100.37600.38400.43100.324200 | Final cutting/polishing of stone flooring | 7d | 2026-12-19 | 2026-12-25 | 3248 |  | 7 Days Work | 9187314 |

| ID | WBS | Task | Duration | Start | Finish | Predecessors | Constraint | Calendar | Unique_Task_ID |
| --- | --- | --- | --- | --- | --- | --- | --- | --- | --- |
| 3250 | 36900.37000.37100.37600.38400.43100.58700 | **Toilet** | 237d | 2026-05-02 | 2026-12-24 |  | start no earlier than 2026-05-02 | 7 Days Work | 9183654 |
| 3251 | 36900.37000.37100.37600.38400.43100.58700.836600 | Toilet_MEP Clearance -1 | 7d | 2026-05-02 | 2026-05-08 | 3214 |  | 7 Days Work | 9194394 |
| 3252 | 36900.37000.37100.37600.38400.43100.58700.836700 | Toilet_Level Marking | 1d | 2026-05-09 | 2026-05-09 | 3251 |  | 7 Days Work | 9194404 |
| 3253 | 36900.37000.37100.37600.38400.43100.58700.836800 | Toilet_Chasing work for Electrical conduit & concealed plumbing | 5d | 2026-05-10 | 2026-05-14 | 3252 |  | 7 Days Work | 9194414 |
| 3254 | 36900.37000.37100.37600.38400.43100.58700.836900 | Toilet_Plumbing work 1st fix | 5d | 2026-05-15 | 2026-05-19 | 3253 |  | 7 Days Work | 9194424 |
| 3255 | 36900.37000.37100.37600.38400.43100.58700.837000 | Toilet_Sleeve/Bore Packing | 5d | 2026-05-20 | 2026-05-24 | 3254 |  | 7 Days Work | 9194434 |
| 3256 | 36900.37000.37100.37600.38400.43100.58700.837100 | Toilet_Waterproofing | 10d | 2026-05-25 | 2026-06-03 | 3255 |  | 7 Days Work | 9194444 |
| 3257 | 36900.37000.37100.37600.38400.43100.58700.837200 | Toilet_Screed | 1d | 2026-06-04 | 2026-06-04 | 3256 |  | 7 Days Work | 9194454 |
| 3258 | 36900.37000.37100.37600.38400.43100.58700.837300 | Toilet_Plumbing 2nd fix | 5d | 2026-06-05 | 2026-06-09 | 3257 |  | 7 Days Work | 9194464 |
| 3259 | 36900.37000.37100.37600.38400.43100.58700.837400 | Toilet_Ledge wall | 5d | 2026-06-10 | 2026-06-14 | 3258 |  | 7 Days Work | 9194474 |
| 3260 | 36900.37000.37100.37600.38400.43100.58700.837500 | Toilet_Cement Plaster | 5d | 2026-06-15 | 2026-06-19 | 3259 |  | 7 Days Work | 9194484 |
| 3261 | 36900.37000.37100.37600.38400.43100.58700.837600 | Toilet_Door Frame | 1d | 2026-06-20 | 2026-06-20 | 3260 |  | 7 Days Work | 9194494 |
| 3262 | 36900.37000.37100.37600.38400.43100.58700.837700 | Toilet_Wash basin & Couter | 3d | 2026-06-21 | 2026-06-23 | 3261 |  | 7 Days Work | 9194504 |
| 3263 | 36900.37000.37100.37600.38400.43100.58700.837800 | Toilet_Wall dado | 20d | 2026-06-24 | 2026-07-13 | 3262 |  | 7 Days Work | 9194514 |
| 3264 | 36900.37000.37100.37600.38400.43100.58700.837900 | Toilet_Granite Work-Ledge wall top | 3d | 2026-07-14 | 2026-07-16 | 3263 |  | 7 Days Work | 9194524 |
| 3265 | 36900.37000.37100.37600.38400.43100.58700.838000 | Toilet_Floor Tilling work | 20d | 2026-07-17 | 2026-08-05 | 3264 |  | 7 Days Work | 9194534 |
| 3266 | 36900.37000.37100.37600.38400.43100.58700.838100 | Toilet_1st row of dado | 5d | 2026-08-06 | 2026-08-10 | 3265 |  | 7 Days Work | 9194544 |
| 3267 | 36900.37000.37100.37600.38400.43100.58700.838200 | Toilet_Window Fixing | 14d | 2026-08-11 | 2026-08-24 | 3266 |  | 7 Days Work | 9194554 |
| 3268 | 36900.37000.37100.37600.38400.43100.58700.838300 | Toilet_Services above False ceiling | 21d | 2026-08-25 | 2026-09-14 | 3267 |  | 7 Days Work | 9194564 |
| 3269 | 36900.37000.37100.37600.38400.43100.58700.838400 | Toilet_False Ceiling framing | 12d | 2026-09-15 | 2026-09-26 | 3268 |  | 7 Days Work | 9194574 |
| 3270 | 36900.37000.37100.37600.38400.43100.58700.838500 | Toilet_Door Frame | 5d | 2026-09-27 | 2026-10-01 | 3269 |  | 7 Days Work | 9194584 |
| 3271 | 36900.37000.37100.37600.38400.43100.58700.838600 | Toilet_Epoxy Tile Grouting | 7d | 2026-11-27 | 2026-12-03 | 3246SS |  | 7 Days Work | 9194594 |
| 3272 | 36900.37000.37100.37600.38400.43100.58700.838700 | Toilet_False ceiling board fixing, CP Sanitary Fixture, Electric Fixture | 21d | 2026-12-04 | 2026-12-24 | 3271 |  | 7 Days Work | 9194604 |
| 3273 | 36900.37000.37100.37600.38400.43200 | **10th Habitable/12th Floor** | 245d | 2026-05-04 | 2027-01-03 |  | start no earlier than 2026-05-04 | 7 Days Work | 9183464 |
| 3274 | 36900.37000.37100.37600.38400.43200.324300 | Post Pour | 7d | 2026-05-04 | 2026-05-10 | 2721FS+15d |  | 7 Days Work | 9187324 |
| 3275 | 36900.37000.37100.37600.38400.43200.324400 | MEP Clearance -1 | 5d | 2026-05-11 | 2026-05-15 | 3274 |  | 7 Days Work | 9187334 |
| 3276 | 36900.37000.37100.37600.38400.43200.324500 | Benchmark | 1d | 2026-05-16 | 2026-05-16 | 3275 |  | 7 Days Work | 9187344 |
| 3277 | 36900.37000.37100.37600.38400.43200.324600 | Temporary Railing | 3d | 2026-05-17 | 2026-05-19 | 3276 |  | 7 Days Work | 9187354 |
| 3278 | 36900.37000.37100.37600.38400.43200.324700 | Blockwork | 10d | 2026-05-20 | 2026-05-29 | 3277 |  | 7 Days Work | 9187364 |
| 3279 | 36900.37000.37100.37600.38400.43200.324800 | MEP Clearance -2 | 10d | 2026-05-30 | 2026-06-08 | 3278 |  | 7 Days Work | 9187374 |
| 3280 | 36900.37000.37100.37600.38400.43200.324900 | Gypsum Plaster | 14d | 2026-06-09 | 2026-06-22 | 3279 |  | 7 Days Work | 9187384 |
| 3281 | 36900.37000.37100.37600.38400.43200.325000 | Kitchen Platform | 3d | 2026-06-23 | 2026-06-25 | 3280 |  | 7 Days Work | 9187394 |
| 3282 | 36900.37000.37100.37600.38400.43200.325100 | Kitchen dado | 7d | 2026-06-26 | 2026-07-02 | 3281 |  | 7 Days Work | 9187404 |
| 3283 | 36900.37000.37100.37600.38400.43200.325200 | Fire Fighting | 5d | 2026-07-03 | 2026-07-07 | 3282 |  | 7 Days Work | 9187414 |
| 3284 | 36900.37000.37100.37600.38400.43200.325300 | Anticapilary | 5d | 2026-07-08 | 2026-07-12 | 3283 |  | 7 Days Work | 9187424 |
| 3285 | 36900.37000.37100.37600.38400.43200.325400 | Stone Laying | 10d | 2026-08-15 | 2026-08-24 | 3325 |  | 7 Days Work | 9187434 |
| 3286 | 36900.37000.37100.37600.38400.43200.325500 | Tiles Laying | 7d | 2026-08-15 | 2026-08-21 | 3325 |  | 7 Days Work | 9187444 |
| 3287 | 36900.37000.37100.37600.38400.43200.325600 | 1st cutting/polishing of stone flooring | 7d | 2026-08-22 | 2026-08-28 | 3286 |  | 7 Days Work | 9187454 |
| 3288 | 36900.37000.37100.37600.38400.43200.325700 | Tiles/Stone skirting | 5d | 2026-08-29 | 2026-09-02 | 3287 |  | 7 Days Work | 9187464 |
| 3289 | 36900.37000.37100.37600.38400.43200.325800 | Protechtion sheet | 1d | 2026-09-03 | 2026-09-03 | 3288 |  | 7 Days Work | 9187474 |
| 3290 | 36900.37000.37100.37600.38400.43200.325900 | Installation of Temporary Door | 1d | 2026-09-04 | 2026-09-04 | 3289 |  | 7 Days Work | 9187484 |
| 3291 | 36900.37000.37100.37600.38400.43200.326000 | Fixing of window tracks | 5d | 2026-09-05 | 2026-09-09 | 3290 |  | 7 Days Work | 9187494 |
| 3292 | 36900.37000.37100.37600.38400.43200.326100 | Wire Pulling | 7d | 2026-09-10 | 2026-09-16 | 3291 |  | 7 Days Work | 9187504 |
| 3293 | 36900.37000.37100.37600.38400.43200.326200 | Gypsum Remaining | 5d | 2026-09-17 | 2026-09-21 | 3292 |  | 7 Days Work | 9187514 |
| 3294 | 36900.37000.37100.37600.38400.43200.326300 | Fixing of windoow shutter | 5d | 2026-09-22 | 2026-09-26 | 3293 |  | 7 Days Work | 9187524 |
| 3295 | 36900.37000.37100.37600.38400.43200.326400 | Putty Works - walls & ceiling | 15d | 2026-09-27 | 2026-10-11 | 3294 |  | 7 Days Work | 9187534 |
| 3296 | 36900.37000.37100.37600.38400.43200.326500 | False Ceiling- Framing | 10d | 2026-10-12 | 2026-10-21 | 3295 |  | 7 Days Work | 9187544 |
| 3297 | 36900.37000.37100.37600.38400.43200.326600 | Pre Hung Door | 3d | 2026-10-22 | 2026-10-24 | 3296 |  | 7 Days Work | 9187554 |
| 3298 | 36900.37000.37100.37600.38400.43200.326700 | Protechtion sheet | 2d | 2026-10-25 | 2026-10-26 | 3297 |  | 7 Days Work | 9187564 |
| 3299 | 36900.37000.37100.37600.38400.43200.326800 | Skirting near door | 2d | 2026-10-27 | 2026-10-28 | 3298 |  | 7 Days Work | 9187574 |
| 3300 | 36900.37000.37100.37600.38400.43200.326900 | Electrical Switch box fixing | 14d | 2026-10-29 | 2026-11-11 | 3299 |  | 7 Days Work | 9187584 |
| 3301 | 36900.37000.37100.37600.38400.43200.327000 | Fire Fighting painting | 5d | 2026-11-12 | 2026-11-16 | 3300 |  | 7 Days Work | 9187594 |
| 3302 | 36900.37000.37100.37600.38400.43200.327100 | Protection of all flooring, door & window hardware | 5d | 2026-11-17 | 2026-11-21 | 3301 |  | 7 Days Work | 9187604 |
| 3303 | 36900.37000.37100.37600.38400.43200.327200 | 1st coat primer- ceiling 1st & walls | 14d | 2026-11-22 | 2026-12-05 | 3302 |  | 7 Days Work | 9187614 |
| 3304 | 36900.37000.37100.37600.38400.43200.327300 | Wooden Flooring | 5d | 2026-12-06 | 2026-12-10 | 3303 |  | 7 Days Work | 9187624 |
| 3305 | 36900.37000.37100.37600.38400.43200.327400 | Removing of Temporary Railing & installation of Glass Railing | 5d | 2026-12-06 | 2026-12-10 | 3303 |  | 7 Days Work | 9187634 |
| 3306 | 36900.37000.37100.37600.38400.43200.327500 | Tile Grouting | 7d | 2026-12-06 | 2026-12-12 | 3303 |  | 7 Days Work | 9187644 |
| 3307 | 36900.37000.37100.37600.38400.43200.327600 | False Ceiling | 5d | 2026-12-13 | 2026-12-17 | 3306 |  | 7 Days Work | 9187654 |
| 3308 | 36900.37000.37100.37600.38400.43200.327700 | 2nd coat of primer | 10d | 2026-12-18 | 2026-12-27 | 3307 |  | 7 Days Work | 9187664 |
| 3309 | 36900.37000.37100.37600.38400.43200.327800 | Final cutting/polishing of stone flooring | 7d | 2026-12-28 | 2027-01-03 | 3308 |  | 7 Days Work | 9187674 |

| ID | WBS | Task | Duration | Start | Finish | Predecessors | Constraint | Calendar | Unique_Task_ID |
| --- | --- | --- | --- | --- | --- | --- | --- | --- | --- |
| 3310 | 36900.37000.37100.37600.38400.43200.56900 | **Toilet** | 237d | 2026-05-11 | 2027-01-02 |  | start no earlier than 2026-05-11 | 7 Days Work | 9183664 |
| 3311 | 36900.37000.37100.37600.38400.43200.56900.838800 | Toilet_MEP Clearance -1 | 7d | 2026-05-11 | 2026-05-17 | 3274 |  | 7 Days Work | 9194614 |
| 3312 | 36900.37000.37100.37600.38400.43200.56900.838900 | Toilet_Level Marking | 1d | 2026-05-18 | 2026-05-18 | 3311 |  | 7 Days Work | 9194624 |
| 3313 | 36900.37000.37100.37600.38400.43200.56900.839000 | Toilet_Chasing work for Electrical conduit & concealed plumbing | 5d | 2026-05-19 | 2026-05-23 | 3312 |  | 7 Days Work | 9194634 |
| 3314 | 36900.37000.37100.37600.38400.43200.56900.839100 | Toilet_Plumbing work 1st fix | 5d | 2026-05-24 | 2026-05-28 | 3313 |  | 7 Days Work | 9194644 |
| 3315 | 36900.37000.37100.37600.38400.43200.56900.839200 | Toilet_Sleeve/Bore Packing | 5d | 2026-05-29 | 2026-06-02 | 3314 |  | 7 Days Work | 9194654 |
| 3316 | 36900.37000.37100.37600.38400.43200.56900.839300 | Toilet_Waterproofing | 10d | 2026-06-03 | 2026-06-12 | 3315 |  | 7 Days Work | 9194664 |
| 3317 | 36900.37000.37100.37600.38400.43200.56900.839400 | Toilet_Screed | 1d | 2026-06-13 | 2026-06-13 | 3316 |  | 7 Days Work | 9194674 |
| 3318 | 36900.37000.37100.37600.38400.43200.56900.839500 | Toilet_Plumbing 2nd fix | 5d | 2026-06-14 | 2026-06-18 | 3317 |  | 7 Days Work | 9194684 |
| 3319 | 36900.37000.37100.37600.38400.43200.56900.839600 | Toilet_Ledge wall | 5d | 2026-06-19 | 2026-06-23 | 3318 |  | 7 Days Work | 9194694 |
| 3320 | 36900.37000.37100.37600.38400.43200.56900.839700 | Toilet_Cement Plaster | 5d | 2026-06-24 | 2026-06-28 | 3319 |  | 7 Days Work | 9194704 |
| 3321 | 36900.37000.37100.37600.38400.43200.56900.839800 | Toilet_Door Frame | 1d | 2026-06-29 | 2026-06-29 | 3320 |  | 7 Days Work | 9194714 |
| 3322 | 36900.37000.37100.37600.38400.43200.56900.839900 | Toilet_Wash basin & Couter | 3d | 2026-06-30 | 2026-07-02 | 3321 |  | 7 Days Work | 9194724 |
| 3323 | 36900.37000.37100.37600.38400.43200.56900.840000 | Toilet_Wall dado | 20d | 2026-07-03 | 2026-07-22 | 3322 |  | 7 Days Work | 9194734 |
| 3324 | 36900.37000.37100.37600.38400.43200.56900.840100 | Toilet_Granite Work-Ledge wall top | 3d | 2026-07-23 | 2026-07-25 | 3323 |  | 7 Days Work | 9194744 |
| 3325 | 36900.37000.37100.37600.38400.43200.56900.840200 | Toilet_Floor Tilling work | 20d | 2026-07-26 | 2026-08-14 | 3324 |  | 7 Days Work | 9194754 |
| 3326 | 36900.37000.37100.37600.38400.43200.56900.840300 | Toilet_1st row of dado | 5d | 2026-08-15 | 2026-08-19 | 3325 |  | 7 Days Work | 9194764 |
| 3327 | 36900.37000.37100.37600.38400.43200.56900.840400 | Toilet_Window Fixing | 14d | 2026-08-20 | 2026-09-02 | 3326 |  | 7 Days Work | 9194774 |
| 3328 | 36900.37000.37100.37600.38400.43200.56900.840500 | Toilet_Services above False ceiling | 21d | 2026-09-03 | 2026-09-23 | 3327 |  | 7 Days Work | 9194784 |
| 3329 | 36900.37000.37100.37600.38400.43200.56900.840600 | Toilet_False Ceiling framing | 12d | 2026-09-24 | 2026-10-05 | 3328 |  | 7 Days Work | 9194794 |
| 3330 | 36900.37000.37100.37600.38400.43200.56900.840700 | Toilet_Door Frame | 5d | 2026-10-06 | 2026-10-10 | 3329 |  | 7 Days Work | 9194804 |
| 3331 | 36900.37000.37100.37600.38400.43200.56900.840800 | Toilet_Epoxy Tile Grouting | 7d | 2026-12-06 | 2026-12-12 | 3306SS |  | 7 Days Work | 9194814 |
| 3332 | 36900.37000.37100.37600.38400.43200.56900.840900 | Toilet_False ceiling board fixing, CP Sanitary Fixture, Electric Fixture | 21d | 2026-12-13 | 2027-01-02 | 3331 |  | 7 Days Work | 9194824 |
| 3333 | 36900.37000.37100.37600.38400.43300 | **11th Habitable/13th Floor** | 245d | 2026-05-13 | 2027-01-12 |  | start no earlier than 2026-05-13 | 7 Days Work | 9183474 |
| 3334 | 36900.37000.37100.37600.38400.43300.327900 | Post Pour | 7d | 2026-05-13 | 2026-05-19 | 2722FS+15d |  | 7 Days Work | 9187684 |
| 3335 | 36900.37000.37100.37600.38400.43300.328000 | MEP Clearance -1 | 5d | 2026-05-20 | 2026-05-24 | 3334 |  | 7 Days Work | 9187694 |
| 3336 | 36900.37000.37100.37600.38400.43300.328100 | Benchmark | 1d | 2026-05-25 | 2026-05-25 | 3335 |  | 7 Days Work | 9187704 |
| 3337 | 36900.37000.37100.37600.38400.43300.328200 | Temporary Railing | 3d | 2026-05-26 | 2026-05-28 | 3336 |  | 7 Days Work | 9187714 |
| 3338 | 36900.37000.37100.37600.38400.43300.328300 | Blockwork | 10d | 2026-05-29 | 2026-06-07 | 3337 |  | 7 Days Work | 9187724 |
| 3339 | 36900.37000.37100.37600.38400.43300.328400 | MEP Clearance -2 | 10d | 2026-06-08 | 2026-06-17 | 3338 |  | 7 Days Work | 9187734 |
| 3340 | 36900.37000.37100.37600.38400.43300.328500 | Gypsum Plaster | 14d | 2026-06-18 | 2026-07-01 | 3339 |  | 7 Days Work | 9187744 |
| 3341 | 36900.37000.37100.37600.38400.43300.328600 | Kitchen Platform | 3d | 2026-07-02 | 2026-07-04 | 3340 |  | 7 Days Work | 9187754 |
| 3342 | 36900.37000.37100.37600.38400.43300.328700 | Kitchen dado | 7d | 2026-07-05 | 2026-07-11 | 3341 |  | 7 Days Work | 9187764 |
| 3343 | 36900.37000.37100.37600.38400.43300.328800 | Fire Fighting | 5d | 2026-07-12 | 2026-07-16 | 3342 |  | 7 Days Work | 9187774 |
| 3344 | 36900.37000.37100.37600.38400.43300.328900 | Anticapilary | 5d | 2026-07-17 | 2026-07-21 | 3343 |  | 7 Days Work | 9187784 |
| 3345 | 36900.37000.37100.37600.38400.43300.329000 | Stone Laying | 10d | 2026-08-24 | 2026-09-02 | 3385 |  | 7 Days Work | 9187794 |
| 3346 | 36900.37000.37100.37600.38400.43300.329100 | Tiles Laying | 7d | 2026-08-24 | 2026-08-30 | 3385 |  | 7 Days Work | 9187804 |
| 3347 | 36900.37000.37100.37600.38400.43300.329200 | 1st cutting/polishing of stone flooring | 7d | 2026-08-31 | 2026-09-06 | 3346 |  | 7 Days Work | 9187814 |
| 3348 | 36900.37000.37100.37600.38400.43300.329300 | Tiles/Stone skirting | 5d | 2026-09-07 | 2026-09-11 | 3347 |  | 7 Days Work | 9187824 |
| 3349 | 36900.37000.37100.37600.38400.43300.329400 | Protechtion sheet | 1d | 2026-09-12 | 2026-09-12 | 3348 |  | 7 Days Work | 9187834 |
| 3350 | 36900.37000.37100.37600.38400.43300.329500 | Installation of Temporary Door | 1d | 2026-09-13 | 2026-09-13 | 3349 |  | 7 Days Work | 9187844 |
| 3351 | 36900.37000.37100.37600.38400.43300.329600 | Fixing of window tracks | 5d | 2026-09-14 | 2026-09-18 | 3350 |  | 7 Days Work | 9187854 |
| 3352 | 36900.37000.37100.37600.38400.43300.329700 | Wire Pulling | 7d | 2026-09-19 | 2026-09-25 | 3351 |  | 7 Days Work | 9187864 |
| 3353 | 36900.37000.37100.37600.38400.43300.329800 | Gypsum Remaining | 5d | 2026-09-26 | 2026-09-30 | 3352 |  | 7 Days Work | 9187874 |
| 3354 | 36900.37000.37100.37600.38400.43300.329900 | Fixing of windoow shutter | 5d | 2026-10-01 | 2026-10-05 | 3353 |  | 7 Days Work | 9187884 |
| 3355 | 36900.37000.37100.37600.38400.43300.330000 | Putty Works - walls & ceiling | 15d | 2026-10-06 | 2026-10-20 | 3354 |  | 7 Days Work | 9187894 |
| 3356 | 36900.37000.37100.37600.38400.43300.330100 | False Ceiling- Framing | 10d | 2026-10-21 | 2026-10-30 | 3355 |  | 7 Days Work | 9187904 |
| 3357 | 36900.37000.37100.37600.38400.43300.330200 | Pre Hung Door | 3d | 2026-10-31 | 2026-11-02 | 3356 |  | 7 Days Work | 9187914 |
| 3358 | 36900.37000.37100.37600.38400.43300.330300 | Protechtion sheet | 2d | 2026-11-03 | 2026-11-04 | 3357 |  | 7 Days Work | 9187924 |
| 3359 | 36900.37000.37100.37600.38400.43300.330400 | Skirting near door | 2d | 2026-11-05 | 2026-11-06 | 3358 |  | 7 Days Work | 9187934 |
| 3360 | 36900.37000.37100.37600.38400.43300.330500 | Electrical Switch box fixing | 14d | 2026-11-07 | 2026-11-20 | 3359 |  | 7 Days Work | 9187944 |
| 3361 | 36900.37000.37100.37600.38400.43300.330600 | Fire Fighting painting | 5d | 2026-11-21 | 2026-11-25 | 3360 |  | 7 Days Work | 9187954 |
| 3362 | 36900.37000.37100.37600.38400.43300.330700 | Protection of all flooring, door & window hardware | 5d | 2026-11-26 | 2026-11-30 | 3361 |  | 7 Days Work | 9187964 |
| 3363 | 36900.37000.37100.37600.38400.43300.330800 | 1st coat primer- ceiling 1st & walls | 14d | 2026-12-01 | 2026-12-14 | 3362 |  | 7 Days Work | 9187974 |
| 3364 | 36900.37000.37100.37600.38400.43300.330900 | Wooden Flooring | 5d | 2026-12-15 | 2026-12-19 | 3363 |  | 7 Days Work | 9187984 |
| 3365 | 36900.37000.37100.37600.38400.43300.331000 | Removing of Temporary Railing & installation of Glass Railing | 5d | 2026-12-15 | 2026-12-19 | 3363 |  | 7 Days Work | 9187994 |
| 3366 | 36900.37000.37100.37600.38400.43300.331100 | Tile Grouting | 7d | 2026-12-15 | 2026-12-21 | 3363 |  | 7 Days Work | 9188004 |
| 3367 | 36900.37000.37100.37600.38400.43300.331200 | False Ceiling | 5d | 2026-12-22 | 2026-12-26 | 3366 |  | 7 Days Work | 9188014 |
| 3368 | 36900.37000.37100.37600.38400.43300.331300 | 2nd coat of primer | 10d | 2026-12-27 | 2027-01-05 | 3367 |  | 7 Days Work | 9188024 |
| 3369 | 36900.37000.37100.37600.38400.43300.331400 | Final cutting/polishing of stone flooring | 7d | 2027-01-06 | 2027-01-12 | 3368 |  | 7 Days Work | 9188034 |

| ID | WBS | Task | Duration | Start | Finish | Predecessors | Constraint | Calendar | Unique_Task_ID |
| --- | --- | --- | --- | --- | --- | --- | --- | --- | --- |
| 3370 | 36900.37000.37100.37600.38400.43300.56600 | **Toilet** | 237d | 2026-05-20 | 2027-01-11 |  | start no earlier than 2026-05-20 | 7 Days Work | 9183674 |
| 3371 | 36900.37000.37100.37600.38400.43300.56600.841000 | Toilet_MEP Clearance -1 | 7d | 2026-05-20 | 2026-05-26 | 3334 |  | 7 Days Work | 9194834 |
| 3372 | 36900.37000.37100.37600.38400.43300.56600.841100 | Toilet_Level Marking | 1d | 2026-05-27 | 2026-05-27 | 3371 |  | 7 Days Work | 9194844 |
| 3373 | 36900.37000.37100.37600.38400.43300.56600.841200 | Toilet_Chasing work for Electrical conduit & concealed plumbing | 5d | 2026-05-28 | 2026-06-01 | 3372 |  | 7 Days Work | 9194854 |
| 3374 | 36900.37000.37100.37600.38400.43300.56600.841300 | Toilet_Plumbing work 1st fix | 5d | 2026-06-02 | 2026-06-06 | 3373 |  | 7 Days Work | 9194864 |
| 3375 | 36900.37000.37100.37600.38400.43300.56600.841400 | Toilet_Sleeve/Bore Packing | 5d | 2026-06-07 | 2026-06-11 | 3374 |  | 7 Days Work | 9194874 |
| 3376 | 36900.37000.37100.37600.38400.43300.56600.841500 | Toilet_Waterproofing | 10d | 2026-06-12 | 2026-06-21 | 3375 |  | 7 Days Work | 9194884 |
| 3377 | 36900.37000.37100.37600.38400.43300.56600.841600 | Toilet_Screed | 1d | 2026-06-22 | 2026-06-22 | 3376 |  | 7 Days Work | 9194894 |
| 3378 | 36900.37000.37100.37600.38400.43300.56600.841700 | Toilet_Plumbing 2nd fix | 5d | 2026-06-23 | 2026-06-27 | 3377 |  | 7 Days Work | 9194904 |
| 3379 | 36900.37000.37100.37600.38400.43300.56600.841800 | Toilet_Ledge wall | 5d | 2026-06-28 | 2026-07-02 | 3378 |  | 7 Days Work | 9194914 |
| 3380 | 36900.37000.37100.37600.38400.43300.56600.841900 | Toilet_Cement Plaster | 5d | 2026-07-03 | 2026-07-07 | 3379 |  | 7 Days Work | 9194924 |
| 3381 | 36900.37000.37100.37600.38400.43300.56600.842000 | Toilet_Door Frame | 1d | 2026-07-08 | 2026-07-08 | 3380 |  | 7 Days Work | 9194934 |
| 3382 | 36900.37000.37100.37600.38400.43300.56600.842100 | Toilet_Wash basin & Couter | 3d | 2026-07-09 | 2026-07-11 | 3381 |  | 7 Days Work | 9194944 |
| 3383 | 36900.37000.37100.37600.38400.43300.56600.842200 | Toilet_Wall dado | 20d | 2026-07-12 | 2026-07-31 | 3382 |  | 7 Days Work | 9194954 |
| 3384 | 36900.37000.37100.37600.38400.43300.56600.842300 | Toilet_Granite Work-Ledge wall top | 3d | 2026-08-01 | 2026-08-03 | 3383 |  | 7 Days Work | 9194964 |
| 3385 | 36900.37000.37100.37600.38400.43300.56600.842400 | Toilet_Floor Tilling work | 20d | 2026-08-04 | 2026-08-23 | 3384 |  | 7 Days Work | 9194974 |
| 3386 | 36900.37000.37100.37600.38400.43300.56600.842500 | Toilet_1st row of dado | 5d | 2026-08-24 | 2026-08-28 | 3385 |  | 7 Days Work | 9194984 |
| 3387 | 36900.37000.37100.37600.38400.43300.56600.842600 | Toilet_Window Fixing | 14d | 2026-08-29 | 2026-09-11 | 3386 |  | 7 Days Work | 9194994 |
| 3388 | 36900.37000.37100.37600.38400.43300.56600.842700 | Toilet_Services above False ceiling | 21d | 2026-09-12 | 2026-10-02 | 3387 |  | 7 Days Work | 9195004 |
| 3389 | 36900.37000.37100.37600.38400.43300.56600.842800 | Toilet_False Ceiling framing | 12d | 2026-10-03 | 2026-10-14 | 3388 |  | 7 Days Work | 9195014 |
| 3390 | 36900.37000.37100.37600.38400.43300.56600.842900 | Toilet_Door Frame | 5d | 2026-10-15 | 2026-10-19 | 3389 |  | 7 Days Work | 9195024 |
| 3391 | 36900.37000.37100.37600.38400.43300.56600.843000 | Toilet_Epoxy Tile Grouting | 7d | 2026-12-15 | 2026-12-21 | 3366SS |  | 7 Days Work | 9195034 |
| 3392 | 36900.37000.37100.37600.38400.43300.56600.843100 | Toilet_False ceiling board fixing, CP Sanitary Fixture, Electric Fixture | 21d | 2026-12-22 | 2027-01-11 | 3391 |  | 7 Days Work | 9195044 |
| 3393 | 36900.37000.37100.37600.38400.43400 | **12th Habitable/14th Floor** | 245d | 2026-05-25 | 2027-01-24 |  | start no earlier than 2026-05-25 | 7 Days Work | 9183484 |
| 3394 | 36900.37000.37100.37600.38400.43400.331500 | Post Pour | 7d | 2026-05-25 | 2026-05-31 | 2723FS+15d |  | 7 Days Work | 9188044 |
| 3395 | 36900.37000.37100.37600.38400.43400.331600 | MEP Clearance -1 | 5d | 2026-06-01 | 2026-06-05 | 3394 |  | 7 Days Work | 9188054 |
| 3396 | 36900.37000.37100.37600.38400.43400.331700 | Benchmark | 1d | 2026-06-06 | 2026-06-06 | 3395 |  | 7 Days Work | 9188064 |
| 3397 | 36900.37000.37100.37600.38400.43400.331800 | Temporary Railing | 3d | 2026-06-07 | 2026-06-09 | 3396 |  | 7 Days Work | 9188074 |
| 3398 | 36900.37000.37100.37600.38400.43400.331900 | Blockwork | 10d | 2026-06-10 | 2026-06-19 | 3397 |  | 7 Days Work | 9188084 |
| 3399 | 36900.37000.37100.37600.38400.43400.332000 | MEP Clearance -2 | 10d | 2026-06-20 | 2026-06-29 | 3398 |  | 7 Days Work | 9188094 |
| 3400 | 36900.37000.37100.37600.38400.43400.332100 | Gypsum Plaster | 14d | 2026-06-30 | 2026-07-13 | 3399 |  | 7 Days Work | 9188104 |
| 3401 | 36900.37000.37100.37600.38400.43400.332200 | Kitchen Platform | 3d | 2026-07-14 | 2026-07-16 | 3400 |  | 7 Days Work | 9188114 |
| 3402 | 36900.37000.37100.37600.38400.43400.332300 | Kitchen dado | 7d | 2026-07-17 | 2026-07-23 | 3401 |  | 7 Days Work | 9188124 |
| 3403 | 36900.37000.37100.37600.38400.43400.332400 | Fire Fighting | 5d | 2026-07-24 | 2026-07-28 | 3402 |  | 7 Days Work | 9188134 |
| 3404 | 36900.37000.37100.37600.38400.43400.332500 | Anticapilary | 5d | 2026-07-29 | 2026-08-02 | 3403 |  | 7 Days Work | 9188144 |
| 3405 | 36900.37000.37100.37600.38400.43400.332600 | Stone Laying | 10d | 2026-09-05 | 2026-09-14 | 3445 |  | 7 Days Work | 9188154 |
| 3406 | 36900.37000.37100.37600.38400.43400.332700 | Tiles Laying | 7d | 2026-09-05 | 2026-09-11 | 3445 |  | 7 Days Work | 9188164 |
| 3407 | 36900.37000.37100.37600.38400.43400.332800 | 1st cutting/polishing of stone flooring | 7d | 2026-09-12 | 2026-09-18 | 3406 |  | 7 Days Work | 9188174 |
| 3408 | 36900.37000.37100.37600.38400.43400.332900 | Tiles/Stone skirting | 5d | 2026-09-19 | 2026-09-23 | 3407 |  | 7 Days Work | 9188184 |
| 3409 | 36900.37000.37100.37600.38400.43400.333000 | Protechtion sheet | 1d | 2026-09-24 | 2026-09-24 | 3408 |  | 7 Days Work | 9188194 |
| 3410 | 36900.37000.37100.37600.38400.43400.333100 | Installation of Temporary Door | 1d | 2026-09-25 | 2026-09-25 | 3409 |  | 7 Days Work | 9188204 |
| 3411 | 36900.37000.37100.37600.38400.43400.333200 | Fixing of window tracks | 5d | 2026-09-26 | 2026-09-30 | 3410 |  | 7 Days Work | 9188214 |
| 3412 | 36900.37000.37100.37600.38400.43400.333300 | Wire Pulling | 7d | 2026-10-01 | 2026-10-07 | 3411 |  | 7 Days Work | 9188224 |
| 3413 | 36900.37000.37100.37600.38400.43400.333400 | Gypsum Remaining | 5d | 2026-10-08 | 2026-10-12 | 3412 |  | 7 Days Work | 9188234 |
| 3414 | 36900.37000.37100.37600.38400.43400.333500 | Fixing of windoow shutter | 5d | 2026-10-13 | 2026-10-17 | 3413 |  | 7 Days Work | 9188244 |
| 3415 | 36900.37000.37100.37600.38400.43400.333600 | Putty Works - walls & ceiling | 15d | 2026-10-18 | 2026-11-01 | 3414 |  | 7 Days Work | 9188254 |
| 3416 | 36900.37000.37100.37600.38400.43400.333700 | False Ceiling- Framing | 10d | 2026-11-02 | 2026-11-11 | 3415 |  | 7 Days Work | 9188264 |
| 3417 | 36900.37000.37100.37600.38400.43400.333800 | Pre Hung Door | 3d | 2026-11-12 | 2026-11-14 | 3416 |  | 7 Days Work | 9188274 |
| 3418 | 36900.37000.37100.37600.38400.43400.333900 | Protechtion sheet | 2d | 2026-11-15 | 2026-11-16 | 3417 |  | 7 Days Work | 9188284 |
| 3419 | 36900.37000.37100.37600.38400.43400.334000 | Skirting near door | 2d | 2026-11-17 | 2026-11-18 | 3418 |  | 7 Days Work | 9188294 |
| 3420 | 36900.37000.37100.37600.38400.43400.334100 | Electrical Switch box fixing | 14d | 2026-11-19 | 2026-12-02 | 3419 |  | 7 Days Work | 9188304 |
| 3421 | 36900.37000.37100.37600.38400.43400.334200 | Fire Fighting painting | 5d | 2026-12-03 | 2026-12-07 | 3420 |  | 7 Days Work | 9188314 |
| 3422 | 36900.37000.37100.37600.38400.43400.334300 | Protection of all flooring, door & window hardware | 5d | 2026-12-08 | 2026-12-12 | 3421 |  | 7 Days Work | 9188324 |
| 3423 | 36900.37000.37100.37600.38400.43400.334400 | 1st coat primer- ceiling 1st & walls | 14d | 2026-12-13 | 2026-12-26 | 3422 |  | 7 Days Work | 9188334 |
| 3424 | 36900.37000.37100.37600.38400.43400.334500 | Wooden Flooring | 5d | 2026-12-27 | 2026-12-31 | 3423 |  | 7 Days Work | 9188344 |
| 3425 | 36900.37000.37100.37600.38400.43400.334600 | Removing of Temporary Railing & installation of Glass Railing | 5d | 2026-12-27 | 2026-12-31 | 3423 |  | 7 Days Work | 9188354 |
| 3426 | 36900.37000.37100.37600.38400.43400.334700 | Tile Grouting | 7d | 2026-12-27 | 2027-01-02 | 3423 |  | 7 Days Work | 9188364 |
| 3427 | 36900.37000.37100.37600.38400.43400.334800 | False Ceiling | 5d | 2027-01-03 | 2027-01-07 | 3426 |  | 7 Days Work | 9188374 |
| 3428 | 36900.37000.37100.37600.38400.43400.334900 | 2nd coat of primer | 10d | 2027-01-08 | 2027-01-17 | 3427 |  | 7 Days Work | 9188384 |
| 3429 | 36900.37000.37100.37600.38400.43400.335000 | Final cutting/polishing of stone flooring | 7d | 2027-01-18 | 2027-01-24 | 3428 |  | 7 Days Work | 9188394 |

| ID | WBS | Task | Duration | Start | Finish | Predecessors | Constraint | Calendar | Unique_Task_ID |
| --- | --- | --- | --- | --- | --- | --- | --- | --- | --- |
| 3430 | 36900.37000.37100.37600.38400.43400.56500 | **Toilet** | 237d | 2026-06-01 | 2027-01-23 |  | start no earlier than 2026-06-01 | 7 Days Work | 9183684 |
| 3431 | 36900.37000.37100.37600.38400.43400.56500.843200 | Toilet_MEP Clearance -1 | 7d | 2026-06-01 | 2026-06-07 | 3394 |  | 7 Days Work | 9195054 |
| 3432 | 36900.37000.37100.37600.38400.43400.56500.843300 | Toilet_Level Marking | 1d | 2026-06-08 | 2026-06-08 | 3431 |  | 7 Days Work | 9195064 |
| 3433 | 36900.37000.37100.37600.38400.43400.56500.843400 | Toilet_Chasing work for Electrical conduit & concealed plumbing | 5d | 2026-06-09 | 2026-06-13 | 3432 |  | 7 Days Work | 9195074 |
| 3434 | 36900.37000.37100.37600.38400.43400.56500.843500 | Toilet_Plumbing work 1st fix | 5d | 2026-06-14 | 2026-06-18 | 3433 |  | 7 Days Work | 9195084 |
| 3435 | 36900.37000.37100.37600.38400.43400.56500.843600 | Toilet_Sleeve/Bore Packing | 5d | 2026-06-19 | 2026-06-23 | 3434 |  | 7 Days Work | 9195094 |
| 3436 | 36900.37000.37100.37600.38400.43400.56500.843700 | Toilet_Waterproofing | 10d | 2026-06-24 | 2026-07-03 | 3435 |  | 7 Days Work | 9195104 |
| 3437 | 36900.37000.37100.37600.38400.43400.56500.843800 | Toilet_Screed | 1d | 2026-07-04 | 2026-07-04 | 3436 |  | 7 Days Work | 9195114 |
| 3438 | 36900.37000.37100.37600.38400.43400.56500.843900 | Toilet_Plumbing 2nd fix | 5d | 2026-07-05 | 2026-07-09 | 3437 |  | 7 Days Work | 9195124 |
| 3439 | 36900.37000.37100.37600.38400.43400.56500.844000 | Toilet_Ledge wall | 5d | 2026-07-10 | 2026-07-14 | 3438 |  | 7 Days Work | 9195134 |
| 3440 | 36900.37000.37100.37600.38400.43400.56500.844100 | Toilet_Cement Plaster | 5d | 2026-07-15 | 2026-07-19 | 3439 |  | 7 Days Work | 9195144 |
| 3441 | 36900.37000.37100.37600.38400.43400.56500.844200 | Toilet_Door Frame | 1d | 2026-07-20 | 2026-07-20 | 3440 |  | 7 Days Work | 9195154 |
| 3442 | 36900.37000.37100.37600.38400.43400.56500.844300 | Toilet_Wash basin & Couter | 3d | 2026-07-21 | 2026-07-23 | 3441 |  | 7 Days Work | 9195164 |
| 3443 | 36900.37000.37100.37600.38400.43400.56500.844400 | Toilet_Wall dado | 20d | 2026-07-24 | 2026-08-12 | 3442 |  | 7 Days Work | 9195174 |
| 3444 | 36900.37000.37100.37600.38400.43400.56500.844500 | Toilet_Granite Work-Ledge wall top | 3d | 2026-08-13 | 2026-08-15 | 3443 |  | 7 Days Work | 9195184 |
| 3445 | 36900.37000.37100.37600.38400.43400.56500.844600 | Toilet_Floor Tilling work | 20d | 2026-08-16 | 2026-09-04 | 3444 |  | 7 Days Work | 9195194 |
| 3446 | 36900.37000.37100.37600.38400.43400.56500.844700 | Toilet_1st row of dado | 5d | 2026-09-05 | 2026-09-09 | 3445 |  | 7 Days Work | 9195204 |
| 3447 | 36900.37000.37100.37600.38400.43400.56500.844800 | Toilet_Window Fixing | 14d | 2026-09-10 | 2026-09-23 | 3446 |  | 7 Days Work | 9195214 |
| 3448 | 36900.37000.37100.37600.38400.43400.56500.844900 | Toilet_Services above False ceiling | 21d | 2026-09-24 | 2026-10-14 | 3447 |  | 7 Days Work | 9195224 |
| 3449 | 36900.37000.37100.37600.38400.43400.56500.845000 | Toilet_False Ceiling framing | 12d | 2026-10-15 | 2026-10-26 | 3448 |  | 7 Days Work | 9195234 |
| 3450 | 36900.37000.37100.37600.38400.43400.56500.845100 | Toilet_Door Frame | 5d | 2026-10-27 | 2026-10-31 | 3449 |  | 7 Days Work | 9195244 |
| 3451 | 36900.37000.37100.37600.38400.43400.56500.845200 | Toilet_Epoxy Tile Grouting | 7d | 2026-12-27 | 2027-01-02 | 3426SS |  | 7 Days Work | 9195254 |
| 3452 | 36900.37000.37100.37600.38400.43400.56500.845300 | Toilet_False ceiling board fixing, CP Sanitary Fixture, Electric Fixture | 21d | 2027-01-03 | 2027-01-23 | 3451 |  | 7 Days Work | 9195264 |
| 3453 | 36900.37000.37100.37600.38400.43500 | **13th Habitable/15th Floor** | 245d | 2026-06-03 | 2027-02-02 |  | start no earlier than 2026-06-03 | 7 Days Work | 9183494 |
| 3454 | 36900.37000.37100.37600.38400.43500.335100 | Post Pour | 7d | 2026-06-03 | 2026-06-09 | 2724FS+15d |  | 7 Days Work | 9188404 |
| 3455 | 36900.37000.37100.37600.38400.43500.335200 | MEP Clearance -1 | 5d | 2026-06-10 | 2026-06-14 | 3454 |  | 7 Days Work | 9188414 |
| 3456 | 36900.37000.37100.37600.38400.43500.335300 | Benchmark | 1d | 2026-06-15 | 2026-06-15 | 3455 |  | 7 Days Work | 9188424 |
| 3457 | 36900.37000.37100.37600.38400.43500.335400 | Temporary Railing | 3d | 2026-06-16 | 2026-06-18 | 3456 |  | 7 Days Work | 9188434 |
| 3458 | 36900.37000.37100.37600.38400.43500.335500 | Blockwork | 10d | 2026-06-19 | 2026-06-28 | 3457 |  | 7 Days Work | 9188444 |
| 3459 | 36900.37000.37100.37600.38400.43500.335600 | MEP Clearance -2 | 10d | 2026-06-29 | 2026-07-08 | 3458 |  | 7 Days Work | 9188454 |
| 3460 | 36900.37000.37100.37600.38400.43500.335700 | Gypsum Plaster | 14d | 2026-07-09 | 2026-07-22 | 3459 |  | 7 Days Work | 9188464 |
| 3461 | 36900.37000.37100.37600.38400.43500.335800 | Kitchen Platform | 3d | 2026-07-23 | 2026-07-25 | 3460 |  | 7 Days Work | 9188474 |
| 3462 | 36900.37000.37100.37600.38400.43500.335900 | Kitchen dado | 7d | 2026-07-26 | 2026-08-01 | 3461 |  | 7 Days Work | 9188484 |
| 3463 | 36900.37000.37100.37600.38400.43500.336000 | Fire Fighting | 5d | 2026-08-02 | 2026-08-06 | 3462 |  | 7 Days Work | 9188494 |
| 3464 | 36900.37000.37100.37600.38400.43500.336100 | Anticapilary | 5d | 2026-08-07 | 2026-08-11 | 3463 |  | 7 Days Work | 9188504 |
| 3465 | 36900.37000.37100.37600.38400.43500.336200 | Stone Laying | 10d | 2026-09-14 | 2026-09-23 | 3505 |  | 7 Days Work | 9188514 |
| 3466 | 36900.37000.37100.37600.38400.43500.336300 | Tiles Laying | 7d | 2026-09-14 | 2026-09-20 | 3505 |  | 7 Days Work | 9188524 |
| 3467 | 36900.37000.37100.37600.38400.43500.336400 | 1st cutting/polishing of stone flooring | 7d | 2026-09-21 | 2026-09-27 | 3466 |  | 7 Days Work | 9188534 |
| 3468 | 36900.37000.37100.37600.38400.43500.336500 | Tiles/Stone skirting | 5d | 2026-09-28 | 2026-10-02 | 3467 |  | 7 Days Work | 9188544 |
| 3469 | 36900.37000.37100.37600.38400.43500.336600 | Protechtion sheet | 1d | 2026-10-03 | 2026-10-03 | 3468 |  | 7 Days Work | 9188554 |
| 3470 | 36900.37000.37100.37600.38400.43500.336700 | Installation of Temporary Door | 1d | 2026-10-04 | 2026-10-04 | 3469 |  | 7 Days Work | 9188564 |
| 3471 | 36900.37000.37100.37600.38400.43500.336800 | Fixing of window tracks | 5d | 2026-10-05 | 2026-10-09 | 3470 |  | 7 Days Work | 9188574 |
| 3472 | 36900.37000.37100.37600.38400.43500.336900 | Wire Pulling | 7d | 2026-10-10 | 2026-10-16 | 3471 |  | 7 Days Work | 9188584 |
| 3473 | 36900.37000.37100.37600.38400.43500.337000 | Gypsum Remaining | 5d | 2026-10-17 | 2026-10-21 | 3472 |  | 7 Days Work | 9188594 |
| 3474 | 36900.37000.37100.37600.38400.43500.337100 | Fixing of windoow shutter | 5d | 2026-10-22 | 2026-10-26 | 3473 |  | 7 Days Work | 9188604 |
| 3475 | 36900.37000.37100.37600.38400.43500.337200 | Putty Works - walls & ceiling | 15d | 2026-10-27 | 2026-11-10 | 3474 |  | 7 Days Work | 9188614 |
| 3476 | 36900.37000.37100.37600.38400.43500.337300 | False Ceiling- Framing | 10d | 2026-11-11 | 2026-11-20 | 3475 |  | 7 Days Work | 9188624 |
| 3477 | 36900.37000.37100.37600.38400.43500.337400 | Pre Hung Door | 3d | 2026-11-21 | 2026-11-23 | 3476 |  | 7 Days Work | 9188634 |
| 3478 | 36900.37000.37100.37600.38400.43500.337500 | Protechtion sheet | 2d | 2026-11-24 | 2026-11-25 | 3477 |  | 7 Days Work | 9188644 |
| 3479 | 36900.37000.37100.37600.38400.43500.337600 | Skirting near door | 2d | 2026-11-26 | 2026-11-27 | 3478 |  | 7 Days Work | 9188654 |
| 3480 | 36900.37000.37100.37600.38400.43500.337700 | Electrical Switch box fixing | 14d | 2026-11-28 | 2026-12-11 | 3479 |  | 7 Days Work | 9188664 |
| 3481 | 36900.37000.37100.37600.38400.43500.337800 | Fire Fighting painting | 5d | 2026-12-12 | 2026-12-16 | 3480 |  | 7 Days Work | 9188674 |
| 3482 | 36900.37000.37100.37600.38400.43500.337900 | Protection of all flooring, door & window hardware | 5d | 2026-12-17 | 2026-12-21 | 3481 |  | 7 Days Work | 9188684 |
| 3483 | 36900.37000.37100.37600.38400.43500.338000 | 1st coat primer- ceiling 1st & walls | 14d | 2026-12-22 | 2027-01-04 | 3482 |  | 7 Days Work | 9188694 |
| 3484 | 36900.37000.37100.37600.38400.43500.338100 | Wooden Flooring | 5d | 2027-01-05 | 2027-01-09 | 3483 |  | 7 Days Work | 9188704 |
| 3485 | 36900.37000.37100.37600.38400.43500.338200 | Removing of Temporary Railing & installation of Glass Railing | 5d | 2027-01-05 | 2027-01-09 | 3483 |  | 7 Days Work | 9188714 |
| 3486 | 36900.37000.37100.37600.38400.43500.338300 | Tile Grouting | 7d | 2027-01-05 | 2027-01-11 | 3483 |  | 7 Days Work | 9188724 |
| 3487 | 36900.37000.37100.37600.38400.43500.338400 | False Ceiling | 5d | 2027-01-12 | 2027-01-16 | 3486 |  | 7 Days Work | 9188734 |
| 3488 | 36900.37000.37100.37600.38400.43500.338500 | 2nd coat of primer | 10d | 2027-01-17 | 2027-01-26 | 3487 |  | 7 Days Work | 9188744 |
| 3489 | 36900.37000.37100.37600.38400.43500.338600 | Final cutting/polishing of stone flooring | 7d | 2027-01-27 | 2027-02-02 | 3488 |  | 7 Days Work | 9188754 |

| ID | WBS | Task | Duration | Start | Finish | Predecessors | Constraint | Calendar | Unique_Task_ID |
| --- | --- | --- | --- | --- | --- | --- | --- | --- | --- |
| 3490 | 36900.37000.37100.37600.38400.43500.56400 | **Toilet** | 237d | 2026-06-10 | 2027-02-01 |  | start no earlier than 2026-06-10 | 7 Days Work | 9183694 |
| 3491 | 36900.37000.37100.37600.38400.43500.56400.845400 | Toilet_MEP Clearance -1 | 7d | 2026-06-10 | 2026-06-16 | 3454 |  | 7 Days Work | 9195274 |
| 3492 | 36900.37000.37100.37600.38400.43500.56400.845500 | Toilet_Level Marking | 1d | 2026-06-17 | 2026-06-17 | 3491 |  | 7 Days Work | 9195284 |
| 3493 | 36900.37000.37100.37600.38400.43500.56400.845600 | Toilet_Chasing work for Electrical conduit & concealed plumbing | 5d | 2026-06-18 | 2026-06-22 | 3492 |  | 7 Days Work | 9195294 |
| 3494 | 36900.37000.37100.37600.38400.43500.56400.845700 | Toilet_Plumbing work 1st fix | 5d | 2026-06-23 | 2026-06-27 | 3493 |  | 7 Days Work | 9195304 |
| 3495 | 36900.37000.37100.37600.38400.43500.56400.845800 | Toilet_Sleeve/Bore Packing | 5d | 2026-06-28 | 2026-07-02 | 3494 |  | 7 Days Work | 9195314 |
| 3496 | 36900.37000.37100.37600.38400.43500.56400.845900 | Toilet_Waterproofing | 10d | 2026-07-03 | 2026-07-12 | 3495 |  | 7 Days Work | 9195324 |
| 3497 | 36900.37000.37100.37600.38400.43500.56400.846000 | Toilet_Screed | 1d | 2026-07-13 | 2026-07-13 | 3496 |  | 7 Days Work | 9195334 |
| 3498 | 36900.37000.37100.37600.38400.43500.56400.846100 | Toilet_Plumbing 2nd fix | 5d | 2026-07-14 | 2026-07-18 | 3497 |  | 7 Days Work | 9195344 |
| 3499 | 36900.37000.37100.37600.38400.43500.56400.846200 | Toilet_Ledge wall | 5d | 2026-07-19 | 2026-07-23 | 3498 |  | 7 Days Work | 9195354 |
| 3500 | 36900.37000.37100.37600.38400.43500.56400.846300 | Toilet_Cement Plaster | 5d | 2026-07-24 | 2026-07-28 | 3499 |  | 7 Days Work | 9195364 |
| 3501 | 36900.37000.37100.37600.38400.43500.56400.846400 | Toilet_Door Frame | 1d | 2026-07-29 | 2026-07-29 | 3500 |  | 7 Days Work | 9195374 |
| 3502 | 36900.37000.37100.37600.38400.43500.56400.846500 | Toilet_Wash basin & Couter | 3d | 2026-07-30 | 2026-08-01 | 3501 |  | 7 Days Work | 9195384 |
| 3503 | 36900.37000.37100.37600.38400.43500.56400.846600 | Toilet_Wall dado | 20d | 2026-08-02 | 2026-08-21 | 3502 |  | 7 Days Work | 9195394 |
| 3504 | 36900.37000.37100.37600.38400.43500.56400.846700 | Toilet_Granite Work-Ledge wall top | 3d | 2026-08-22 | 2026-08-24 | 3503 |  | 7 Days Work | 9195404 |
| 3505 | 36900.37000.37100.37600.38400.43500.56400.846800 | Toilet_Floor Tilling work | 20d | 2026-08-25 | 2026-09-13 | 3504 |  | 7 Days Work | 9195414 |
| 3506 | 36900.37000.37100.37600.38400.43500.56400.846900 | Toilet_1st row of dado | 5d | 2026-09-14 | 2026-09-18 | 3505 |  | 7 Days Work | 9195424 |
| 3507 | 36900.37000.37100.37600.38400.43500.56400.847000 | Toilet_Window Fixing | 14d | 2026-09-19 | 2026-10-02 | 3506 |  | 7 Days Work | 9195434 |
| 3508 | 36900.37000.37100.37600.38400.43500.56400.847100 | Toilet_Services above False ceiling | 21d | 2026-10-03 | 2026-10-23 | 3507 |  | 7 Days Work | 9195444 |
| 3509 | 36900.37000.37100.37600.38400.43500.56400.847200 | Toilet_False Ceiling framing | 12d | 2026-10-24 | 2026-11-04 | 3508 |  | 7 Days Work | 9195454 |
| 3510 | 36900.37000.37100.37600.38400.43500.56400.847300 | Toilet_Door Frame | 5d | 2026-11-05 | 2026-11-09 | 3509 |  | 7 Days Work | 9195464 |
| 3511 | 36900.37000.37100.37600.38400.43500.56400.847400 | Toilet_Epoxy Tile Grouting | 7d | 2027-01-05 | 2027-01-11 | 3486SS |  | 7 Days Work | 9195474 |
| 3512 | 36900.37000.37100.37600.38400.43500.56400.847500 | Toilet_False ceiling board fixing, CP Sanitary Fixture, Electric Fixture | 21d | 2027-01-12 | 2027-02-01 | 3511 |  | 7 Days Work | 9195484 |
| 3513 | 36900.37000.37100.37600.38400.43600 | **14th Habitable/16th Floor** | 245d | 2026-06-12 | 2027-02-11 |  | start no earlier than 2026-06-12 | 7 Days Work | 9183504 |
| 3514 | 36900.37000.37100.37600.38400.43600.338700 | Post Pour | 7d | 2026-06-12 | 2026-06-18 | 2725FS+15d |  | 7 Days Work | 9188764 |
| 3515 | 36900.37000.37100.37600.38400.43600.338800 | MEP Clearance -1 | 5d | 2026-06-19 | 2026-06-23 | 3514 |  | 7 Days Work | 9188774 |
| 3516 | 36900.37000.37100.37600.38400.43600.338900 | Benchmark | 1d | 2026-06-24 | 2026-06-24 | 3515 |  | 7 Days Work | 9188784 |
| 3517 | 36900.37000.37100.37600.38400.43600.339000 | Temporary Railing | 3d | 2026-06-25 | 2026-06-27 | 3516 |  | 7 Days Work | 9188794 |
| 3518 | 36900.37000.37100.37600.38400.43600.339100 | Blockwork | 10d | 2026-06-28 | 2026-07-07 | 3517 |  | 7 Days Work | 9188804 |
| 3519 | 36900.37000.37100.37600.38400.43600.339200 | MEP Clearance -2 | 10d | 2026-07-08 | 2026-07-17 | 3518 |  | 7 Days Work | 9188814 |
| 3520 | 36900.37000.37100.37600.38400.43600.339300 | Gypsum Plaster | 14d | 2026-07-18 | 2026-07-31 | 3519 |  | 7 Days Work | 9188824 |
| 3521 | 36900.37000.37100.37600.38400.43600.339400 | Kitchen Platform | 3d | 2026-08-01 | 2026-08-03 | 3520 |  | 7 Days Work | 9188834 |
| 3522 | 36900.37000.37100.37600.38400.43600.339500 | Kitchen dado | 7d | 2026-08-04 | 2026-08-10 | 3521 |  | 7 Days Work | 9188844 |
| 3523 | 36900.37000.37100.37600.38400.43600.339600 | Fire Fighting | 5d | 2026-08-11 | 2026-08-15 | 3522 |  | 7 Days Work | 9188854 |
| 3524 | 36900.37000.37100.37600.38400.43600.339700 | Anticapilary | 5d | 2026-08-16 | 2026-08-20 | 3523 |  | 7 Days Work | 9188864 |
| 3525 | 36900.37000.37100.37600.38400.43600.339800 | Stone Laying | 10d | 2026-09-23 | 2026-10-02 | 3565 |  | 7 Days Work | 9188874 |
| 3526 | 36900.37000.37100.37600.38400.43600.339900 | Tiles Laying | 7d | 2026-09-23 | 2026-09-29 | 3565 |  | 7 Days Work | 9188884 |
| 3527 | 36900.37000.37100.37600.38400.43600.340000 | 1st cutting/polishing of stone flooring | 7d | 2026-09-30 | 2026-10-06 | 3526 |  | 7 Days Work | 9188894 |
| 3528 | 36900.37000.37100.37600.38400.43600.340100 | Tiles/Stone skirting | 5d | 2026-10-07 | 2026-10-11 | 3527 |  | 7 Days Work | 9188904 |
| 3529 | 36900.37000.37100.37600.38400.43600.340200 | Protechtion sheet | 1d | 2026-10-12 | 2026-10-12 | 3528 |  | 7 Days Work | 9188914 |
| 3530 | 36900.37000.37100.37600.38400.43600.340300 | Installation of Temporary Door | 1d | 2026-10-13 | 2026-10-13 | 3529 |  | 7 Days Work | 9188924 |
| 3531 | 36900.37000.37100.37600.38400.43600.340400 | Fixing of window tracks | 5d | 2026-10-14 | 2026-10-18 | 3530 |  | 7 Days Work | 9188934 |
| 3532 | 36900.37000.37100.37600.38400.43600.340500 | Wire Pulling | 7d | 2026-10-19 | 2026-10-25 | 3531 |  | 7 Days Work | 9188944 |
| 3533 | 36900.37000.37100.37600.38400.43600.340600 | Gypsum Remaining | 5d | 2026-10-26 | 2026-10-30 | 3532 |  | 7 Days Work | 9188954 |
| 3534 | 36900.37000.37100.37600.38400.43600.340700 | Fixing of windoow shutter | 5d | 2026-10-31 | 2026-11-04 | 3533 |  | 7 Days Work | 9188964 |
| 3535 | 36900.37000.37100.37600.38400.43600.340800 | Putty Works - walls & ceiling | 15d | 2026-11-05 | 2026-11-19 | 3534 |  | 7 Days Work | 9188974 |
| 3536 | 36900.37000.37100.37600.38400.43600.340900 | False Ceiling- Framing | 10d | 2026-11-20 | 2026-11-29 | 3535 |  | 7 Days Work | 9188984 |
| 3537 | 36900.37000.37100.37600.38400.43600.341000 | Pre Hung Door | 3d | 2026-11-30 | 2026-12-02 | 3536 |  | 7 Days Work | 9188994 |
| 3538 | 36900.37000.37100.37600.38400.43600.341100 | Protechtion sheet | 2d | 2026-12-03 | 2026-12-04 | 3537 |  | 7 Days Work | 9189004 |
| 3539 | 36900.37000.37100.37600.38400.43600.341200 | Skirting near door | 2d | 2026-12-05 | 2026-12-06 | 3538 |  | 7 Days Work | 9189014 |
| 3540 | 36900.37000.37100.37600.38400.43600.341300 | Electrical Switch box fixing | 14d | 2026-12-07 | 2026-12-20 | 3539 |  | 7 Days Work | 9189024 |
| 3541 | 36900.37000.37100.37600.38400.43600.341400 | Fire Fighting painting | 5d | 2026-12-21 | 2026-12-25 | 3540 |  | 7 Days Work | 9189034 |
| 3542 | 36900.37000.37100.37600.38400.43600.341500 | Protection of all flooring, door & window hardware | 5d | 2026-12-26 | 2026-12-30 | 3541 |  | 7 Days Work | 9189044 |
| 3543 | 36900.37000.37100.37600.38400.43600.341600 | 1st coat primer- ceiling 1st & walls | 14d | 2026-12-31 | 2027-01-13 | 3542 |  | 7 Days Work | 9189054 |
| 3544 | 36900.37000.37100.37600.38400.43600.341700 | Wooden Flooring | 5d | 2027-01-14 | 2027-01-18 | 3543 |  | 7 Days Work | 9189064 |
| 3545 | 36900.37000.37100.37600.38400.43600.341800 | Removing of Temporary Railing & installation of Glass Railing | 5d | 2027-01-14 | 2027-01-18 | 3543 |  | 7 Days Work | 9189074 |
| 3546 | 36900.37000.37100.37600.38400.43600.341900 | Tile Grouting | 7d | 2027-01-14 | 2027-01-20 | 3543 |  | 7 Days Work | 9189084 |
| 3547 | 36900.37000.37100.37600.38400.43600.342000 | False Ceiling | 5d | 2027-01-21 | 2027-01-25 | 3546 |  | 7 Days Work | 9189094 |
| 3548 | 36900.37000.37100.37600.38400.43600.342100 | 2nd coat of primer | 10d | 2027-01-26 | 2027-02-04 | 3547 |  | 7 Days Work | 9189104 |
| 3549 | 36900.37000.37100.37600.38400.43600.342200 | Final cutting/polishing of stone flooring | 7d | 2027-02-05 | 2027-02-11 | 3548 |  | 7 Days Work | 9189114 |

| ID | WBS | Task | Duration | Start | Finish | Predecessors | Constraint | Calendar | Unique_Task_ID |
| --- | --- | --- | --- | --- | --- | --- | --- | --- | --- |
| 3550 | 36900.37000.37100.37600.38400.43600.56300 | **Toilet** | 237d | 2026-06-19 | 2027-02-10 |  | start no earlier than 2026-06-19 | 7 Days Work | 9183704 |
| 3551 | 36900.37000.37100.37600.38400.43600.56300.847600 | Toilet_MEP Clearance -1 | 7d | 2026-06-19 | 2026-06-25 | 3514 |  | 7 Days Work | 9195494 |
| 3552 | 36900.37000.37100.37600.38400.43600.56300.847700 | Toilet_Level Marking | 1d | 2026-06-26 | 2026-06-26 | 3551 |  | 7 Days Work | 9195504 |
| 3553 | 36900.37000.37100.37600.38400.43600.56300.847800 | Toilet_Chasing work for Electrical conduit & concealed plumbing | 5d | 2026-06-27 | 2026-07-01 | 3552 |  | 7 Days Work | 9195514 |
| 3554 | 36900.37000.37100.37600.38400.43600.56300.847900 | Toilet_Plumbing work 1st fix | 5d | 2026-07-02 | 2026-07-06 | 3553 |  | 7 Days Work | 9195524 |
| 3555 | 36900.37000.37100.37600.38400.43600.56300.848000 | Toilet_Sleeve/Bore Packing | 5d | 2026-07-07 | 2026-07-11 | 3554 |  | 7 Days Work | 9195534 |
| 3556 | 36900.37000.37100.37600.38400.43600.56300.848100 | Toilet_Waterproofing | 10d | 2026-07-12 | 2026-07-21 | 3555 |  | 7 Days Work | 9195544 |
| 3557 | 36900.37000.37100.37600.38400.43600.56300.848200 | Toilet_Screed | 1d | 2026-07-22 | 2026-07-22 | 3556 |  | 7 Days Work | 9195554 |
| 3558 | 36900.37000.37100.37600.38400.43600.56300.848300 | Toilet_Plumbing 2nd fix | 5d | 2026-07-23 | 2026-07-27 | 3557 |  | 7 Days Work | 9195564 |
| 3559 | 36900.37000.37100.37600.38400.43600.56300.848400 | Toilet_Ledge wall | 5d | 2026-07-28 | 2026-08-01 | 3558 |  | 7 Days Work | 9195574 |
| 3560 | 36900.37000.37100.37600.38400.43600.56300.848500 | Toilet_Cement Plaster | 5d | 2026-08-02 | 2026-08-06 | 3559 |  | 7 Days Work | 9195584 |
| 3561 | 36900.37000.37100.37600.38400.43600.56300.848600 | Toilet_Door Frame | 1d | 2026-08-07 | 2026-08-07 | 3560 |  | 7 Days Work | 9195594 |
| 3562 | 36900.37000.37100.37600.38400.43600.56300.848700 | Toilet_Wash basin & Couter | 3d | 2026-08-08 | 2026-08-10 | 3561 |  | 7 Days Work | 9195604 |
| 3563 | 36900.37000.37100.37600.38400.43600.56300.848800 | Toilet_Wall dado | 20d | 2026-08-11 | 2026-08-30 | 3562 |  | 7 Days Work | 9195614 |
| 3564 | 36900.37000.37100.37600.38400.43600.56300.848900 | Toilet_Granite Work-Ledge wall top | 3d | 2026-08-31 | 2026-09-02 | 3563 |  | 7 Days Work | 9195624 |
| 3565 | 36900.37000.37100.37600.38400.43600.56300.849000 | Toilet_Floor Tilling work | 20d | 2026-09-03 | 2026-09-22 | 3564 |  | 7 Days Work | 9195634 |
| 3566 | 36900.37000.37100.37600.38400.43600.56300.849100 | Toilet_1st row of dado | 5d | 2026-09-23 | 2026-09-27 | 3565 |  | 7 Days Work | 9195644 |
| 3567 | 36900.37000.37100.37600.38400.43600.56300.849200 | Toilet_Window Fixing | 14d | 2026-09-28 | 2026-10-11 | 3566 |  | 7 Days Work | 9195654 |
| 3568 | 36900.37000.37100.37600.38400.43600.56300.849300 | Toilet_Services above False ceiling | 21d | 2026-10-12 | 2026-11-01 | 3567 |  | 7 Days Work | 9195664 |
| 3569 | 36900.37000.37100.37600.38400.43600.56300.849400 | Toilet_False Ceiling framing | 12d | 2026-11-02 | 2026-11-13 | 3568 |  | 7 Days Work | 9195674 |
| 3570 | 36900.37000.37100.37600.38400.43600.56300.849500 | Toilet_Door Frame | 5d | 2026-11-14 | 2026-11-18 | 3569 |  | 7 Days Work | 9195684 |
| 3571 | 36900.37000.37100.37600.38400.43600.56300.849600 | Toilet_Epoxy Tile Grouting | 7d | 2027-01-14 | 2027-01-20 | 3546SS |  | 7 Days Work | 9195694 |
| 3572 | 36900.37000.37100.37600.38400.43600.56300.849700 | Toilet_False ceiling board fixing, CP Sanitary Fixture, Electric Fixture | 21d | 2027-01-21 | 2027-02-10 | 3571 |  | 7 Days Work | 9195704 |
| 3573 | 36900.37000.37100.37600.38400.43700 | **15th Habitable/17th Floor** | 245d | 2026-06-21 | 2027-02-20 |  | start no earlier than 2026-06-21 | 7 Days Work | 9183514 |
| 3574 | 36900.37000.37100.37600.38400.43700.342300 | Post Pour | 7d | 2026-06-21 | 2026-06-27 | 2726FS+15d |  | 7 Days Work | 9189124 |
| 3575 | 36900.37000.37100.37600.38400.43700.342400 | MEP Clearance -1 | 5d | 2026-06-28 | 2026-07-02 | 3574 |  | 7 Days Work | 9189134 |
| 3576 | 36900.37000.37100.37600.38400.43700.342500 | Benchmark | 1d | 2026-07-03 | 2026-07-03 | 3575 |  | 7 Days Work | 9189144 |
| 3577 | 36900.37000.37100.37600.38400.43700.342600 | Temporary Railing | 3d | 2026-07-04 | 2026-07-06 | 3576 |  | 7 Days Work | 9189154 |
| 3578 | 36900.37000.37100.37600.38400.43700.342700 | Blockwork | 10d | 2026-07-07 | 2026-07-16 | 3577 |  | 7 Days Work | 9189164 |
| 3579 | 36900.37000.37100.37600.38400.43700.342800 | MEP Clearance -2 | 10d | 2026-07-17 | 2026-07-26 | 3578 |  | 7 Days Work | 9189174 |
| 3580 | 36900.37000.37100.37600.38400.43700.342900 | Gypsum Plaster | 14d | 2026-07-27 | 2026-08-09 | 3579 |  | 7 Days Work | 9189184 |
| 3581 | 36900.37000.37100.37600.38400.43700.343000 | Kitchen Platform | 3d | 2026-08-10 | 2026-08-12 | 3580 |  | 7 Days Work | 9189194 |
| 3582 | 36900.37000.37100.37600.38400.43700.343100 | Kitchen dado | 7d | 2026-08-13 | 2026-08-19 | 3581 |  | 7 Days Work | 9189204 |
| 3583 | 36900.37000.37100.37600.38400.43700.343200 | Fire Fighting | 5d | 2026-08-20 | 2026-08-24 | 3582 |  | 7 Days Work | 9189214 |
| 3584 | 36900.37000.37100.37600.38400.43700.343300 | Anticapilary | 5d | 2026-08-25 | 2026-08-29 | 3583 |  | 7 Days Work | 9189224 |
| 3585 | 36900.37000.37100.37600.38400.43700.343400 | Stone Laying | 10d | 2026-10-02 | 2026-10-11 | 3625 |  | 7 Days Work | 9189234 |
| 3586 | 36900.37000.37100.37600.38400.43700.343500 | Tiles Laying | 7d | 2026-10-02 | 2026-10-08 | 3625 |  | 7 Days Work | 9189244 |
| 3587 | 36900.37000.37100.37600.38400.43700.343600 | 1st cutting/polishing of stone flooring | 7d | 2026-10-09 | 2026-10-15 | 3586 |  | 7 Days Work | 9189254 |
| 3588 | 36900.37000.37100.37600.38400.43700.343700 | Tiles/Stone skirting | 5d | 2026-10-16 | 2026-10-20 | 3587 |  | 7 Days Work | 9189264 |
| 3589 | 36900.37000.37100.37600.38400.43700.343800 | Protechtion sheet | 1d | 2026-10-21 | 2026-10-21 | 3588 |  | 7 Days Work | 9189274 |
| 3590 | 36900.37000.37100.37600.38400.43700.343900 | Installation of Temporary Door | 1d | 2026-10-22 | 2026-10-22 | 3589 |  | 7 Days Work | 9189284 |
| 3591 | 36900.37000.37100.37600.38400.43700.344000 | Fixing of window tracks | 5d | 2026-10-23 | 2026-10-27 | 3590 |  | 7 Days Work | 9189294 |
| 3592 | 36900.37000.37100.37600.38400.43700.344100 | Wire Pulling | 7d | 2026-10-28 | 2026-11-03 | 3591 |  | 7 Days Work | 9189304 |
| 3593 | 36900.37000.37100.37600.38400.43700.344200 | Gypsum Remaining | 5d | 2026-11-04 | 2026-11-08 | 3592 |  | 7 Days Work | 9189314 |
| 3594 | 36900.37000.37100.37600.38400.43700.344300 | Fixing of windoow shutter | 5d | 2026-11-09 | 2026-11-13 | 3593 |  | 7 Days Work | 9189324 |
| 3595 | 36900.37000.37100.37600.38400.43700.344400 | Putty Works - walls & ceiling | 15d | 2026-11-14 | 2026-11-28 | 3594 |  | 7 Days Work | 9189334 |
| 3596 | 36900.37000.37100.37600.38400.43700.344500 | False Ceiling- Framing | 10d | 2026-11-29 | 2026-12-08 | 3595 |  | 7 Days Work | 9189344 |
| 3597 | 36900.37000.37100.37600.38400.43700.344600 | Pre Hung Door | 3d | 2026-12-09 | 2026-12-11 | 3596 |  | 7 Days Work | 9189354 |
| 3598 | 36900.37000.37100.37600.38400.43700.344700 | Protechtion sheet | 2d | 2026-12-12 | 2026-12-13 | 3597 |  | 7 Days Work | 9189364 |
| 3599 | 36900.37000.37100.37600.38400.43700.344800 | Skirting near door | 2d | 2026-12-14 | 2026-12-15 | 3598 |  | 7 Days Work | 9189374 |
| 3600 | 36900.37000.37100.37600.38400.43700.344900 | Electrical Switch box fixing | 14d | 2026-12-16 | 2026-12-29 | 3599 |  | 7 Days Work | 9189384 |
| 3601 | 36900.37000.37100.37600.38400.43700.345000 | Fire Fighting painting | 5d | 2026-12-30 | 2027-01-03 | 3600 |  | 7 Days Work | 9189394 |
| 3602 | 36900.37000.37100.37600.38400.43700.345100 | Protection of all flooring, door & window hardware | 5d | 2027-01-04 | 2027-01-08 | 3601 |  | 7 Days Work | 9189404 |
| 3603 | 36900.37000.37100.37600.38400.43700.345200 | 1st coat primer- ceiling 1st & walls | 14d | 2027-01-09 | 2027-01-22 | 3602 |  | 7 Days Work | 9189414 |
| 3604 | 36900.37000.37100.37600.38400.43700.345300 | Wooden Flooring | 5d | 2027-01-23 | 2027-01-27 | 3603 |  | 7 Days Work | 9189424 |
| 3605 | 36900.37000.37100.37600.38400.43700.345400 | Removing of Temporary Railing & installation of Glass Railing | 5d | 2027-01-23 | 2027-01-27 | 3603 |  | 7 Days Work | 9189434 |
| 3606 | 36900.37000.37100.37600.38400.43700.345500 | Tile Grouting | 7d | 2027-01-23 | 2027-01-29 | 3603 |  | 7 Days Work | 9189444 |
| 3607 | 36900.37000.37100.37600.38400.43700.345600 | False Ceiling | 5d | 2027-01-30 | 2027-02-03 | 3606 |  | 7 Days Work | 9189454 |
| 3608 | 36900.37000.37100.37600.38400.43700.345700 | 2nd coat of primer | 10d | 2027-02-04 | 2027-02-13 | 3607 |  | 7 Days Work | 9189464 |
| 3609 | 36900.37000.37100.37600.38400.43700.345800 | Final cutting/polishing of stone flooring | 7d | 2027-02-14 | 2027-02-20 | 3608 |  | 7 Days Work | 9189474 |

| ID | WBS | Task | Duration | Start | Finish | Predecessors | Constraint | Calendar | Unique_Task_ID |
| --- | --- | --- | --- | --- | --- | --- | --- | --- | --- |
| 3610 | 36900.37000.37100.37600.38400.43700.56200 | **Toilet** | 237d | 2026-06-28 | 2027-02-19 |  | start no earlier than 2026-06-28 | 7 Days Work | 9183714 |
| 3611 | 36900.37000.37100.37600.38400.43700.56200.849800 | Toilet_MEP Clearance -1 | 7d | 2026-06-28 | 2026-07-04 | 3574 |  | 7 Days Work | 9195714 |
| 3612 | 36900.37000.37100.37600.38400.43700.56200.849900 | Toilet_Level Marking | 1d | 2026-07-05 | 2026-07-05 | 3611 |  | 7 Days Work | 9195724 |
| 3613 | 36900.37000.37100.37600.38400.43700.56200.850000 | Toilet_Chasing work for Electrical conduit & concealed plumbing | 5d | 2026-07-06 | 2026-07-10 | 3612 |  | 7 Days Work | 9195734 |
| 3614 | 36900.37000.37100.37600.38400.43700.56200.850100 | Toilet_Plumbing work 1st fix | 5d | 2026-07-11 | 2026-07-15 | 3613 |  | 7 Days Work | 9195744 |
| 3615 | 36900.37000.37100.37600.38400.43700.56200.850200 | Toilet_Sleeve/Bore Packing | 5d | 2026-07-16 | 2026-07-20 | 3614 |  | 7 Days Work | 9195754 |
| 3616 | 36900.37000.37100.37600.38400.43700.56200.850300 | Toilet_Waterproofing | 10d | 2026-07-21 | 2026-07-30 | 3615 |  | 7 Days Work | 9195764 |
| 3617 | 36900.37000.37100.37600.38400.43700.56200.850400 | Toilet_Screed | 1d | 2026-07-31 | 2026-07-31 | 3616 |  | 7 Days Work | 9195774 |
| 3618 | 36900.37000.37100.37600.38400.43700.56200.850500 | Toilet_Plumbing 2nd fix | 5d | 2026-08-01 | 2026-08-05 | 3617 |  | 7 Days Work | 9195784 |
| 3619 | 36900.37000.37100.37600.38400.43700.56200.850600 | Toilet_Ledge wall | 5d | 2026-08-06 | 2026-08-10 | 3618 |  | 7 Days Work | 9195794 |
| 3620 | 36900.37000.37100.37600.38400.43700.56200.850700 | Toilet_Cement Plaster | 5d | 2026-08-11 | 2026-08-15 | 3619 |  | 7 Days Work | 9195804 |
| 3621 | 36900.37000.37100.37600.38400.43700.56200.850800 | Toilet_Door Frame | 1d | 2026-08-16 | 2026-08-16 | 3620 |  | 7 Days Work | 9195814 |
| 3622 | 36900.37000.37100.37600.38400.43700.56200.850900 | Toilet_Wash basin & Couter | 3d | 2026-08-17 | 2026-08-19 | 3621 |  | 7 Days Work | 9195824 |
| 3623 | 36900.37000.37100.37600.38400.43700.56200.851000 | Toilet_Wall dado | 20d | 2026-08-20 | 2026-09-08 | 3622 |  | 7 Days Work | 9195834 |
| 3624 | 36900.37000.37100.37600.38400.43700.56200.851100 | Toilet_Granite Work-Ledge wall top | 3d | 2026-09-09 | 2026-09-11 | 3623 |  | 7 Days Work | 9195844 |
| 3625 | 36900.37000.37100.37600.38400.43700.56200.851200 | Toilet_Floor Tilling work | 20d | 2026-09-12 | 2026-10-01 | 3624 |  | 7 Days Work | 9195854 |
| 3626 | 36900.37000.37100.37600.38400.43700.56200.851300 | Toilet_1st row of dado | 5d | 2026-10-02 | 2026-10-06 | 3625 |  | 7 Days Work | 9195864 |
| 3627 | 36900.37000.37100.37600.38400.43700.56200.851400 | Toilet_Window Fixing | 14d | 2026-10-07 | 2026-10-20 | 3626 |  | 7 Days Work | 9195874 |
| 3628 | 36900.37000.37100.37600.38400.43700.56200.851500 | Toilet_Services above False ceiling | 21d | 2026-10-21 | 2026-11-10 | 3627 |  | 7 Days Work | 9195884 |
| 3629 | 36900.37000.37100.37600.38400.43700.56200.851600 | Toilet_False Ceiling framing | 12d | 2026-11-11 | 2026-11-22 | 3628 |  | 7 Days Work | 9195894 |
| 3630 | 36900.37000.37100.37600.38400.43700.56200.851700 | Toilet_Door Frame | 5d | 2026-11-23 | 2026-11-27 | 3629 |  | 7 Days Work | 9195904 |
| 3631 | 36900.37000.37100.37600.38400.43700.56200.851800 | Toilet_Epoxy Tile Grouting | 7d | 2027-01-23 | 2027-01-29 | 3606SS |  | 7 Days Work | 9195914 |
| 3632 | 36900.37000.37100.37600.38400.43700.56200.851900 | Toilet_False ceiling board fixing, CP Sanitary Fixture, Electric Fixture | 21d | 2027-01-30 | 2027-02-19 | 3631 |  | 7 Days Work | 9195924 |
| 3633 | 36900.37000.37100.37600.38400.43800 | **16th Habitable/18th Floor** | 245d | 2026-07-03 | 2027-03-04 |  | start no earlier than 2026-07-03 | 7 Days Work | 9183524 |
| 3634 | 36900.37000.37100.37600.38400.43800.345900 | Post Pour | 7d | 2026-07-03 | 2026-07-09 | 2727FS+15d |  | 7 Days Work | 9189484 |
| 3635 | 36900.37000.37100.37600.38400.43800.346000 | MEP Clearance -1 | 5d | 2026-07-10 | 2026-07-14 | 3634 |  | 7 Days Work | 9189494 |
| 3636 | 36900.37000.37100.37600.38400.43800.346100 | Benchmark | 1d | 2026-07-15 | 2026-07-15 | 3635 |  | 7 Days Work | 9189504 |
| 3637 | 36900.37000.37100.37600.38400.43800.346200 | Temporary Railing | 3d | 2026-07-16 | 2026-07-18 | 3636 |  | 7 Days Work | 9189514 |
| 3638 | 36900.37000.37100.37600.38400.43800.346300 | Blockwork | 10d | 2026-07-19 | 2026-07-28 | 3637 |  | 7 Days Work | 9189524 |
| 3639 | 36900.37000.37100.37600.38400.43800.346400 | MEP Clearance -2 | 10d | 2026-07-29 | 2026-08-07 | 3638 |  | 7 Days Work | 9189534 |
| 3640 | 36900.37000.37100.37600.38400.43800.346500 | Gypsum Plaster | 14d | 2026-08-08 | 2026-08-21 | 3639 |  | 7 Days Work | 9189544 |
| 3641 | 36900.37000.37100.37600.38400.43800.346600 | Kitchen Platform | 3d | 2026-08-22 | 2026-08-24 | 3640 |  | 7 Days Work | 9189554 |
| 3642 | 36900.37000.37100.37600.38400.43800.346700 | Kitchen dado | 7d | 2026-08-25 | 2026-08-31 | 3641 |  | 7 Days Work | 9189564 |
| 3643 | 36900.37000.37100.37600.38400.43800.346800 | Fire Fighting | 5d | 2026-09-01 | 2026-09-05 | 3642 |  | 7 Days Work | 9189574 |
| 3644 | 36900.37000.37100.37600.38400.43800.346900 | Anticapilary | 5d | 2026-09-06 | 2026-09-10 | 3643 |  | 7 Days Work | 9189584 |
| 3645 | 36900.37000.37100.37600.38400.43800.347000 | Stone Laying | 10d | 2026-10-14 | 2026-10-23 | 3685 |  | 7 Days Work | 9189594 |
| 3646 | 36900.37000.37100.37600.38400.43800.347100 | Tiles Laying | 7d | 2026-10-14 | 2026-10-20 | 3685 |  | 7 Days Work | 9189604 |
| 3647 | 36900.37000.37100.37600.38400.43800.347200 | 1st cutting/polishing of stone flooring | 7d | 2026-10-21 | 2026-10-27 | 3646 |  | 7 Days Work | 9189614 |
| 3648 | 36900.37000.37100.37600.38400.43800.347300 | Tiles/Stone skirting | 5d | 2026-10-28 | 2026-11-01 | 3647 |  | 7 Days Work | 9189624 |
| 3649 | 36900.37000.37100.37600.38400.43800.347400 | Protechtion sheet | 1d | 2026-11-02 | 2026-11-02 | 3648 |  | 7 Days Work | 9189634 |
| 3650 | 36900.37000.37100.37600.38400.43800.347500 | Installation of Temporary Door | 1d | 2026-11-03 | 2026-11-03 | 3649 |  | 7 Days Work | 9189644 |
| 3651 | 36900.37000.37100.37600.38400.43800.347600 | Fixing of window tracks | 5d | 2026-11-04 | 2026-11-08 | 3650 |  | 7 Days Work | 9189654 |
| 3652 | 36900.37000.37100.37600.38400.43800.347700 | Wire Pulling | 7d | 2026-11-09 | 2026-11-15 | 3651 |  | 7 Days Work | 9189664 |
| 3653 | 36900.37000.37100.37600.38400.43800.347800 | Gypsum Remaining | 5d | 2026-11-16 | 2026-11-20 | 3652 |  | 7 Days Work | 9189674 |
| 3654 | 36900.37000.37100.37600.38400.43800.347900 | Fixing of windoow shutter | 5d | 2026-11-21 | 2026-11-25 | 3653 |  | 7 Days Work | 9189684 |
| 3655 | 36900.37000.37100.37600.38400.43800.348000 | Putty Works - walls & ceiling | 15d | 2026-11-26 | 2026-12-10 | 3654 |  | 7 Days Work | 9189694 |
| 3656 | 36900.37000.37100.37600.38400.43800.348100 | False Ceiling- Framing | 10d | 2026-12-11 | 2026-12-20 | 3655 |  | 7 Days Work | 9189704 |
| 3657 | 36900.37000.37100.37600.38400.43800.348200 | Pre Hung Door | 3d | 2026-12-21 | 2026-12-23 | 3656 |  | 7 Days Work | 9189714 |
| 3658 | 36900.37000.37100.37600.38400.43800.348300 | Protechtion sheet | 2d | 2026-12-24 | 2026-12-25 | 3657 |  | 7 Days Work | 9189724 |
| 3659 | 36900.37000.37100.37600.38400.43800.348400 | Skirting near door | 2d | 2026-12-26 | 2026-12-27 | 3658 |  | 7 Days Work | 9189734 |
| 3660 | 36900.37000.37100.37600.38400.43800.348500 | Electrical Switch box fixing | 14d | 2026-12-28 | 2027-01-10 | 3659 |  | 7 Days Work | 9189744 |
| 3661 | 36900.37000.37100.37600.38400.43800.348600 | Fire Fighting painting | 5d | 2027-01-11 | 2027-01-15 | 3660 |  | 7 Days Work | 9189754 |
| 3662 | 36900.37000.37100.37600.38400.43800.348700 | Protection of all flooring, door & window hardware | 5d | 2027-01-16 | 2027-01-20 | 3661 |  | 7 Days Work | 9189764 |
| 3663 | 36900.37000.37100.37600.38400.43800.348800 | 1st coat primer- ceiling 1st & walls | 14d | 2027-01-21 | 2027-02-03 | 3662 |  | 7 Days Work | 9189774 |
| 3664 | 36900.37000.37100.37600.38400.43800.348900 | Wooden Flooring | 5d | 2027-02-04 | 2027-02-08 | 3663 |  | 7 Days Work | 9189784 |
| 3665 | 36900.37000.37100.37600.38400.43800.349000 | Removing of Temporary Railing & installation of Glass Railing | 5d | 2027-02-04 | 2027-02-08 | 3663 |  | 7 Days Work | 9189794 |
| 3666 | 36900.37000.37100.37600.38400.43800.349100 | Tile Grouting | 7d | 2027-02-04 | 2027-02-10 | 3663 |  | 7 Days Work | 9189804 |
| 3667 | 36900.37000.37100.37600.38400.43800.349200 | False Ceiling | 5d | 2027-02-11 | 2027-02-15 | 3666 |  | 7 Days Work | 9189814 |
| 3668 | 36900.37000.37100.37600.38400.43800.349300 | 2nd coat of primer | 10d | 2027-02-16 | 2027-02-25 | 3667 |  | 7 Days Work | 9189824 |
| 3669 | 36900.37000.37100.37600.38400.43800.349400 | Final cutting/polishing of stone flooring | 7d | 2027-02-26 | 2027-03-04 | 3668 |  | 7 Days Work | 9189834 |

| ID | WBS | Task | Duration | Start | Finish | Predecessors | Constraint | Calendar | Unique_Task_ID |
| --- | --- | --- | --- | --- | --- | --- | --- | --- | --- |
| 3670 | 36900.37000.37100.37600.38400.43800.53100 | **Toilet** | 237d | 2026-07-10 | 2027-03-03 |  | start no earlier than 2026-07-10 | 7 Days Work | 9183724 |
| 3671 | 36900.37000.37100.37600.38400.43800.53100.852000 | Toilet_MEP Clearance -1 | 7d | 2026-07-10 | 2026-07-16 | 3634 |  | 7 Days Work | 9195934 |
| 3672 | 36900.37000.37100.37600.38400.43800.53100.852100 | Toilet_Level Marking | 1d | 2026-07-17 | 2026-07-17 | 3671 |  | 7 Days Work | 9195944 |
| 3673 | 36900.37000.37100.37600.38400.43800.53100.852200 | Toilet_Chasing work for Electrical conduit & concealed plumbing | 5d | 2026-07-18 | 2026-07-22 | 3672 |  | 7 Days Work | 9195954 |
| 3674 | 36900.37000.37100.37600.38400.43800.53100.852300 | Toilet_Plumbing work 1st fix | 5d | 2026-07-23 | 2026-07-27 | 3673 |  | 7 Days Work | 9195964 |
| 3675 | 36900.37000.37100.37600.38400.43800.53100.852400 | Toilet_Sleeve/Bore Packing | 5d | 2026-07-28 | 2026-08-01 | 3674 |  | 7 Days Work | 9195974 |
| 3676 | 36900.37000.37100.37600.38400.43800.53100.852500 | Toilet_Waterproofing | 10d | 2026-08-02 | 2026-08-11 | 3675 |  | 7 Days Work | 9195984 |
| 3677 | 36900.37000.37100.37600.38400.43800.53100.852600 | Toilet_Screed | 1d | 2026-08-12 | 2026-08-12 | 3676 |  | 7 Days Work | 9195994 |
| 3678 | 36900.37000.37100.37600.38400.43800.53100.852700 | Toilet_Plumbing 2nd fix | 5d | 2026-08-13 | 2026-08-17 | 3677 |  | 7 Days Work | 9196004 |
| 3679 | 36900.37000.37100.37600.38400.43800.53100.852800 | Toilet_Ledge wall | 5d | 2026-08-18 | 2026-08-22 | 3678 |  | 7 Days Work | 9196014 |
| 3680 | 36900.37000.37100.37600.38400.43800.53100.852900 | Toilet_Cement Plaster | 5d | 2026-08-23 | 2026-08-27 | 3679 |  | 7 Days Work | 9196024 |
| 3681 | 36900.37000.37100.37600.38400.43800.53100.853000 | Toilet_Door Frame | 1d | 2026-08-28 | 2026-08-28 | 3680 |  | 7 Days Work | 9196034 |
| 3682 | 36900.37000.37100.37600.38400.43800.53100.853100 | Toilet_Wash basin & Couter | 3d | 2026-08-29 | 2026-08-31 | 3681 |  | 7 Days Work | 9196044 |
| 3683 | 36900.37000.37100.37600.38400.43800.53100.853200 | Toilet_Wall dado | 20d | 2026-09-01 | 2026-09-20 | 3682 |  | 7 Days Work | 9196054 |
| 3684 | 36900.37000.37100.37600.38400.43800.53100.853300 | Toilet_Granite Work-Ledge wall top | 3d | 2026-09-21 | 2026-09-23 | 3683 |  | 7 Days Work | 9196064 |
| 3685 | 36900.37000.37100.37600.38400.43800.53100.853400 | Toilet_Floor Tilling work | 20d | 2026-09-24 | 2026-10-13 | 3684 |  | 7 Days Work | 9196074 |
| 3686 | 36900.37000.37100.37600.38400.43800.53100.853500 | Toilet_1st row of dado | 5d | 2026-10-14 | 2026-10-18 | 3685 |  | 7 Days Work | 9196084 |
| 3687 | 36900.37000.37100.37600.38400.43800.53100.853600 | Toilet_Window Fixing | 14d | 2026-10-19 | 2026-11-01 | 3686 |  | 7 Days Work | 9196094 |
| 3688 | 36900.37000.37100.37600.38400.43800.53100.853700 | Toilet_Services above False ceiling | 21d | 2026-11-02 | 2026-11-22 | 3687 |  | 7 Days Work | 9196104 |
| 3689 | 36900.37000.37100.37600.38400.43800.53100.853800 | Toilet_False Ceiling framing | 12d | 2026-11-23 | 2026-12-04 | 3688 |  | 7 Days Work | 9196114 |
| 3690 | 36900.37000.37100.37600.38400.43800.53100.853900 | Toilet_Door Frame | 5d | 2026-12-05 | 2026-12-09 | 3689 |  | 7 Days Work | 9196124 |
| 3691 | 36900.37000.37100.37600.38400.43800.53100.854000 | Toilet_Epoxy Tile Grouting | 7d | 2027-02-04 | 2027-02-10 | 3666SS |  | 7 Days Work | 9196134 |
| 3692 | 36900.37000.37100.37600.38400.43800.53100.854100 | Toilet_False ceiling board fixing, CP Sanitary Fixture, Electric Fixture | 21d | 2027-02-11 | 2027-03-03 | 3691 |  | 7 Days Work | 9196144 |
| 3693 | 36900.37000.37100.37600.38400.43900 | **17th Habitable/19th Floor** | 245d | 2026-07-12 | 2027-03-13 |  | start no earlier than 2026-07-12 | 7 Days Work | 9183534 |
| 3694 | 36900.37000.37100.37600.38400.43900.349500 | Post Pour | 7d | 2026-07-12 | 2026-07-18 | 2728FS+15d |  | 7 Days Work | 9189844 |
| 3695 | 36900.37000.37100.37600.38400.43900.349600 | MEP Clearance -1 | 5d | 2026-07-19 | 2026-07-23 | 3694 |  | 7 Days Work | 9189854 |
| 3696 | 36900.37000.37100.37600.38400.43900.349700 | Benchmark | 1d | 2026-07-24 | 2026-07-24 | 3695 |  | 7 Days Work | 9189864 |
| 3697 | 36900.37000.37100.37600.38400.43900.349800 | Temporary Railing | 3d | 2026-07-25 | 2026-07-27 | 3696 |  | 7 Days Work | 9189874 |
| 3698 | 36900.37000.37100.37600.38400.43900.349900 | Blockwork | 10d | 2026-07-28 | 2026-08-06 | 3697 |  | 7 Days Work | 9189884 |
| 3699 | 36900.37000.37100.37600.38400.43900.350000 | MEP Clearance -2 | 10d | 2026-08-07 | 2026-08-16 | 3698 |  | 7 Days Work | 9189894 |
| 3700 | 36900.37000.37100.37600.38400.43900.350100 | Gypsum Plaster | 14d | 2026-08-17 | 2026-08-30 | 3699 |  | 7 Days Work | 9189904 |
| 3701 | 36900.37000.37100.37600.38400.43900.350200 | Kitchen Platform | 3d | 2026-08-31 | 2026-09-02 | 3700 |  | 7 Days Work | 9189914 |
| 3702 | 36900.37000.37100.37600.38400.43900.350300 | Kitchen dado | 7d | 2026-09-03 | 2026-09-09 | 3701 |  | 7 Days Work | 9189924 |
| 3703 | 36900.37000.37100.37600.38400.43900.350400 | Fire Fighting | 5d | 2026-09-10 | 2026-09-14 | 3702 |  | 7 Days Work | 9189934 |
| 3704 | 36900.37000.37100.37600.38400.43900.350500 | Anticapilary | 5d | 2026-09-15 | 2026-09-19 | 3703 |  | 7 Days Work | 9189944 |
| 3705 | 36900.37000.37100.37600.38400.43900.350600 | Stone Laying | 10d | 2026-10-23 | 2026-11-01 | 3745 |  | 7 Days Work | 9189954 |
| 3706 | 36900.37000.37100.37600.38400.43900.350700 | Tiles Laying | 7d | 2026-10-23 | 2026-10-29 | 3745 |  | 7 Days Work | 9189964 |
| 3707 | 36900.37000.37100.37600.38400.43900.350800 | 1st cutting/polishing of stone flooring | 7d | 2026-10-30 | 2026-11-05 | 3706 |  | 7 Days Work | 9189974 |
| 3708 | 36900.37000.37100.37600.38400.43900.350900 | Tiles/Stone skirting | 5d | 2026-11-06 | 2026-11-10 | 3707 |  | 7 Days Work | 9189984 |
| 3709 | 36900.37000.37100.37600.38400.43900.351000 | Protechtion sheet | 1d | 2026-11-11 | 2026-11-11 | 3708 |  | 7 Days Work | 9189994 |
| 3710 | 36900.37000.37100.37600.38400.43900.351100 | Installation of Temporary Door | 1d | 2026-11-12 | 2026-11-12 | 3709 |  | 7 Days Work | 9190004 |
| 3711 | 36900.37000.37100.37600.38400.43900.351200 | Fixing of window tracks | 5d | 2026-11-13 | 2026-11-17 | 3710 |  | 7 Days Work | 9190014 |
| 3712 | 36900.37000.37100.37600.38400.43900.351300 | Wire Pulling | 7d | 2026-11-18 | 2026-11-24 | 3711 |  | 7 Days Work | 9190024 |
| 3713 | 36900.37000.37100.37600.38400.43900.351400 | Gypsum Remaining | 5d | 2026-11-25 | 2026-11-29 | 3712 |  | 7 Days Work | 9190034 |
| 3714 | 36900.37000.37100.37600.38400.43900.351500 | Fixing of windoow shutter | 5d | 2026-11-30 | 2026-12-04 | 3713 |  | 7 Days Work | 9190044 |
| 3715 | 36900.37000.37100.37600.38400.43900.351600 | Putty Works - walls & ceiling | 15d | 2026-12-05 | 2026-12-19 | 3714 |  | 7 Days Work | 9190054 |
| 3716 | 36900.37000.37100.37600.38400.43900.351700 | False Ceiling- Framing | 10d | 2026-12-20 | 2026-12-29 | 3715 |  | 7 Days Work | 9190064 |
| 3717 | 36900.37000.37100.37600.38400.43900.351800 | Pre Hung Door | 3d | 2026-12-30 | 2027-01-01 | 3716 |  | 7 Days Work | 9190074 |
| 3718 | 36900.37000.37100.37600.38400.43900.351900 | Protechtion sheet | 2d | 2027-01-02 | 2027-01-03 | 3717 |  | 7 Days Work | 9190084 |
| 3719 | 36900.37000.37100.37600.38400.43900.352000 | Skirting near door | 2d | 2027-01-04 | 2027-01-05 | 3718 |  | 7 Days Work | 9190094 |
| 3720 | 36900.37000.37100.37600.38400.43900.352100 | Electrical Switch box fixing | 14d | 2027-01-06 | 2027-01-19 | 3719 |  | 7 Days Work | 9190104 |
| 3721 | 36900.37000.37100.37600.38400.43900.352200 | Fire Fighting painting | 5d | 2027-01-20 | 2027-01-24 | 3720 |  | 7 Days Work | 9190114 |
| 3722 | 36900.37000.37100.37600.38400.43900.352300 | Protection of all flooring, door & window hardware | 5d | 2027-01-25 | 2027-01-29 | 3721 |  | 7 Days Work | 9190124 |
| 3723 | 36900.37000.37100.37600.38400.43900.352400 | 1st coat primer- ceiling 1st & walls | 14d | 2027-01-30 | 2027-02-12 | 3722 |  | 7 Days Work | 9190134 |
| 3724 | 36900.37000.37100.37600.38400.43900.352500 | Wooden Flooring | 5d | 2027-02-13 | 2027-02-17 | 3723 |  | 7 Days Work | 9190144 |
| 3725 | 36900.37000.37100.37600.38400.43900.352600 | Removing of Temporary Railing & installation of Glass Railing | 5d | 2027-02-13 | 2027-02-17 | 3723 |  | 7 Days Work | 9190154 |
| 3726 | 36900.37000.37100.37600.38400.43900.352700 | Tile Grouting | 7d | 2027-02-13 | 2027-02-19 | 3723 |  | 7 Days Work | 9190164 |
| 3727 | 36900.37000.37100.37600.38400.43900.352800 | False Ceiling | 5d | 2027-02-20 | 2027-02-24 | 3726 |  | 7 Days Work | 9190174 |
| 3728 | 36900.37000.37100.37600.38400.43900.352900 | 2nd coat of primer | 10d | 2027-02-25 | 2027-03-06 | 3727 |  | 7 Days Work | 9190184 |
| 3729 | 36900.37000.37100.37600.38400.43900.353000 | Final cutting/polishing of stone flooring | 7d | 2027-03-07 | 2027-03-13 | 3728 |  | 7 Days Work | 9190194 |

| ID | WBS | Task | Duration | Start | Finish | Predecessors | Constraint | Calendar | Unique_Task_ID |
| --- | --- | --- | --- | --- | --- | --- | --- | --- | --- |
| 3730 | 36900.37000.37100.37600.38400.43900.53000 | **Toilet** | 237d | 2026-07-19 | 2027-03-12 |  | start no earlier than 2026-07-19 | 7 Days Work | 9183734 |
| 3731 | 36900.37000.37100.37600.38400.43900.53000.854200 | Toilet_MEP Clearance -1 | 7d | 2026-07-19 | 2026-07-25 | 3694 |  | 7 Days Work | 9196154 |
| 3732 | 36900.37000.37100.37600.38400.43900.53000.854300 | Toilet_Level Marking | 1d | 2026-07-26 | 2026-07-26 | 3731 |  | 7 Days Work | 9196164 |
| 3733 | 36900.37000.37100.37600.38400.43900.53000.854400 | Toilet_Chasing work for Electrical conduit & concealed plumbing | 5d | 2026-07-27 | 2026-07-31 | 3732 |  | 7 Days Work | 9196174 |
| 3734 | 36900.37000.37100.37600.38400.43900.53000.854500 | Toilet_Plumbing work 1st fix | 5d | 2026-08-01 | 2026-08-05 | 3733 |  | 7 Days Work | 9196184 |
| 3735 | 36900.37000.37100.37600.38400.43900.53000.854600 | Toilet_Sleeve/Bore Packing | 5d | 2026-08-06 | 2026-08-10 | 3734 |  | 7 Days Work | 9196194 |
| 3736 | 36900.37000.37100.37600.38400.43900.53000.854700 | Toilet_Waterproofing | 10d | 2026-08-11 | 2026-08-20 | 3735 |  | 7 Days Work | 9196204 |
| 3737 | 36900.37000.37100.37600.38400.43900.53000.854800 | Toilet_Screed | 1d | 2026-08-21 | 2026-08-21 | 3736 |  | 7 Days Work | 9196214 |
| 3738 | 36900.37000.37100.37600.38400.43900.53000.854900 | Toilet_Plumbing 2nd fix | 5d | 2026-08-22 | 2026-08-26 | 3737 |  | 7 Days Work | 9196224 |
| 3739 | 36900.37000.37100.37600.38400.43900.53000.855000 | Toilet_Ledge wall | 5d | 2026-08-27 | 2026-08-31 | 3738 |  | 7 Days Work | 9196234 |
| 3740 | 36900.37000.37100.37600.38400.43900.53000.855100 | Toilet_Cement Plaster | 5d | 2026-09-01 | 2026-09-05 | 3739 |  | 7 Days Work | 9196244 |
| 3741 | 36900.37000.37100.37600.38400.43900.53000.855200 | Toilet_Door Frame | 1d | 2026-09-06 | 2026-09-06 | 3740 |  | 7 Days Work | 9196254 |
| 3742 | 36900.37000.37100.37600.38400.43900.53000.855300 | Toilet_Wash basin & Couter | 3d | 2026-09-07 | 2026-09-09 | 3741 |  | 7 Days Work | 9196264 |
| 3743 | 36900.37000.37100.37600.38400.43900.53000.855400 | Toilet_Wall dado | 20d | 2026-09-10 | 2026-09-29 | 3742 |  | 7 Days Work | 9196274 |
| 3744 | 36900.37000.37100.37600.38400.43900.53000.855500 | Toilet_Granite Work-Ledge wall top | 3d | 2026-09-30 | 2026-10-02 | 3743 |  | 7 Days Work | 9196284 |
| 3745 | 36900.37000.37100.37600.38400.43900.53000.855600 | Toilet_Floor Tilling work | 20d | 2026-10-03 | 2026-10-22 | 3744 |  | 7 Days Work | 9196294 |
| 3746 | 36900.37000.37100.37600.38400.43900.53000.855700 | Toilet_1st row of dado | 5d | 2026-10-23 | 2026-10-27 | 3745 |  | 7 Days Work | 9196304 |
| 3747 | 36900.37000.37100.37600.38400.43900.53000.855800 | Toilet_Window Fixing | 14d | 2026-10-28 | 2026-11-10 | 3746 |  | 7 Days Work | 9196314 |
| 3748 | 36900.37000.37100.37600.38400.43900.53000.855900 | Toilet_Services above False ceiling | 21d | 2026-11-11 | 2026-12-01 | 3747 |  | 7 Days Work | 9196324 |
| 3749 | 36900.37000.37100.37600.38400.43900.53000.856000 | Toilet_False Ceiling framing | 12d | 2026-12-02 | 2026-12-13 | 3748 |  | 7 Days Work | 9196334 |
| 3750 | 36900.37000.37100.37600.38400.43900.53000.856100 | Toilet_Door Frame | 5d | 2026-12-14 | 2026-12-18 | 3749 |  | 7 Days Work | 9196344 |
| 3751 | 36900.37000.37100.37600.38400.43900.53000.856200 | Toilet_Epoxy Tile Grouting | 7d | 2027-02-13 | 2027-02-19 | 3726SS |  | 7 Days Work | 9196354 |
| 3752 | 36900.37000.37100.37600.38400.43900.53000.856300 | Toilet_False ceiling board fixing, CP Sanitary Fixture, Electric Fixture | 21d | 2027-02-20 | 2027-03-12 | 3751 |  | 7 Days Work | 9196364 |
| 3753 | 36900.37000.37100.37600.38400.44000 | **18th Habitable/20th Floor** | 245d | 2026-07-21 | 2027-03-22 |  | start no earlier than 2026-07-21 | 7 Days Work | 9183544 |
| 3754 | 36900.37000.37100.37600.38400.44000.353100 | Post Pour | 7d | 2026-07-21 | 2026-07-27 | 2729FS+15d |  | 7 Days Work | 9190204 |
| 3755 | 36900.37000.37100.37600.38400.44000.353200 | MEP Clearance -1 | 5d | 2026-07-28 | 2026-08-01 | 3754 |  | 7 Days Work | 9190214 |
| 3756 | 36900.37000.37100.37600.38400.44000.353300 | Benchmark | 1d | 2026-08-02 | 2026-08-02 | 3755 |  | 7 Days Work | 9190224 |
| 3757 | 36900.37000.37100.37600.38400.44000.353400 | Temporary Railing | 3d | 2026-08-03 | 2026-08-05 | 3756 |  | 7 Days Work | 9190234 |
| 3758 | 36900.37000.37100.37600.38400.44000.353500 | Blockwork | 10d | 2026-08-06 | 2026-08-15 | 3757 |  | 7 Days Work | 9190244 |
| 3759 | 36900.37000.37100.37600.38400.44000.353600 | MEP Clearance -2 | 10d | 2026-08-16 | 2026-08-25 | 3758 |  | 7 Days Work | 9190254 |
| 3760 | 36900.37000.37100.37600.38400.44000.353700 | Gypsum Plaster | 14d | 2026-08-26 | 2026-09-08 | 3759 |  | 7 Days Work | 9190264 |
| 3761 | 36900.37000.37100.37600.38400.44000.353800 | Kitchen Platform | 3d | 2026-09-09 | 2026-09-11 | 3760 |  | 7 Days Work | 9190274 |
| 3762 | 36900.37000.37100.37600.38400.44000.353900 | Kitchen dado | 7d | 2026-09-12 | 2026-09-18 | 3761 |  | 7 Days Work | 9190284 |
| 3763 | 36900.37000.37100.37600.38400.44000.354000 | Fire Fighting | 5d | 2026-09-19 | 2026-09-23 | 3762 |  | 7 Days Work | 9190294 |
| 3764 | 36900.37000.37100.37600.38400.44000.354100 | Anticapilary | 5d | 2026-09-24 | 2026-09-28 | 3763 |  | 7 Days Work | 9190304 |
| 3765 | 36900.37000.37100.37600.38400.44000.354200 | Stone Laying | 10d | 2026-11-01 | 2026-11-10 | 3805 |  | 7 Days Work | 9190314 |
| 3766 | 36900.37000.37100.37600.38400.44000.354300 | Tiles Laying | 7d | 2026-11-01 | 2026-11-07 | 3805 |  | 7 Days Work | 9190324 |
| 3767 | 36900.37000.37100.37600.38400.44000.354400 | 1st cutting/polishing of stone flooring | 7d | 2026-11-08 | 2026-11-14 | 3766 |  | 7 Days Work | 9190334 |
| 3768 | 36900.37000.37100.37600.38400.44000.354500 | Tiles/Stone skirting | 5d | 2026-11-15 | 2026-11-19 | 3767 |  | 7 Days Work | 9190344 |
| 3769 | 36900.37000.37100.37600.38400.44000.354600 | Protechtion sheet | 1d | 2026-11-20 | 2026-11-20 | 3768 |  | 7 Days Work | 9190354 |
| 3770 | 36900.37000.37100.37600.38400.44000.354700 | Installation of Temporary Door | 1d | 2026-11-21 | 2026-11-21 | 3769 |  | 7 Days Work | 9190364 |
| 3771 | 36900.37000.37100.37600.38400.44000.354800 | Fixing of window tracks | 5d | 2026-11-22 | 2026-11-26 | 3770 |  | 7 Days Work | 9190374 |
| 3772 | 36900.37000.37100.37600.38400.44000.354900 | Wire Pulling | 7d | 2026-11-27 | 2026-12-03 | 3771 |  | 7 Days Work | 9190384 |
| 3773 | 36900.37000.37100.37600.38400.44000.355000 | Gypsum Remaining | 5d | 2026-12-04 | 2026-12-08 | 3772 |  | 7 Days Work | 9190394 |
| 3774 | 36900.37000.37100.37600.38400.44000.355100 | Fixing of windoow shutter | 5d | 2026-12-09 | 2026-12-13 | 3773 |  | 7 Days Work | 9190404 |
| 3775 | 36900.37000.37100.37600.38400.44000.355200 | Putty Works - walls & ceiling | 15d | 2026-12-14 | 2026-12-28 | 3774 |  | 7 Days Work | 9190414 |
| 3776 | 36900.37000.37100.37600.38400.44000.355300 | False Ceiling- Framing | 10d | 2026-12-29 | 2027-01-07 | 3775 |  | 7 Days Work | 9190424 |
| 3777 | 36900.37000.37100.37600.38400.44000.355400 | Pre Hung Door | 3d | 2027-01-08 | 2027-01-10 | 3776 |  | 7 Days Work | 9190434 |
| 3778 | 36900.37000.37100.37600.38400.44000.355500 | Protechtion sheet | 2d | 2027-01-11 | 2027-01-12 | 3777 |  | 7 Days Work | 9190444 |
| 3779 | 36900.37000.37100.37600.38400.44000.355600 | Skirting near door | 2d | 2027-01-13 | 2027-01-14 | 3778 |  | 7 Days Work | 9190454 |
| 3780 | 36900.37000.37100.37600.38400.44000.355700 | Electrical Switch box fixing | 14d | 2027-01-15 | 2027-01-28 | 3779 |  | 7 Days Work | 9190464 |
| 3781 | 36900.37000.37100.37600.38400.44000.355800 | Fire Fighting painting | 5d | 2027-01-29 | 2027-02-02 | 3780 |  | 7 Days Work | 9190474 |
| 3782 | 36900.37000.37100.37600.38400.44000.355900 | Protection of all flooring, door & window hardware | 5d | 2027-02-03 | 2027-02-07 | 3781 |  | 7 Days Work | 9190484 |
| 3783 | 36900.37000.37100.37600.38400.44000.356000 | 1st coat primer- ceiling 1st & walls | 14d | 2027-02-08 | 2027-02-21 | 3782 |  | 7 Days Work | 9190494 |
| 3784 | 36900.37000.37100.37600.38400.44000.356100 | Wooden Flooring | 5d | 2027-02-22 | 2027-02-26 | 3783 |  | 7 Days Work | 9190504 |
| 3785 | 36900.37000.37100.37600.38400.44000.356200 | Removing of Temporary Railing & installation of Glass Railing | 5d | 2027-02-22 | 2027-02-26 | 3783 |  | 7 Days Work | 9190514 |
| 3786 | 36900.37000.37100.37600.38400.44000.356300 | Tile Grouting | 7d | 2027-02-22 | 2027-02-28 | 3783 |  | 7 Days Work | 9190524 |
| 3787 | 36900.37000.37100.37600.38400.44000.356400 | False Ceiling | 5d | 2027-03-01 | 2027-03-05 | 3786 |  | 7 Days Work | 9190534 |
| 3788 | 36900.37000.37100.37600.38400.44000.356500 | 2nd coat of primer | 10d | 2027-03-06 | 2027-03-15 | 3787 |  | 7 Days Work | 9190544 |
| 3789 | 36900.37000.37100.37600.38400.44000.356600 | Final cutting/polishing of stone flooring | 7d | 2027-03-16 | 2027-03-22 | 3788 |  | 7 Days Work | 9190554 |

| ID | WBS | Task | Duration | Start | Finish | Predecessors | Constraint | Calendar | Unique_Task_ID |
| --- | --- | --- | --- | --- | --- | --- | --- | --- | --- |
| 3790 | 36900.37000.37100.37600.38400.44000.61300 | **Toilet** | 237d | 2026-07-28 | 2027-03-21 |  | start no earlier than 2026-07-28 | 7 Days Work | 9183744 |
| 3791 | 36900.37000.37100.37600.38400.44000.61300.856400 | Toilet_MEP Clearance -1 | 7d | 2026-07-28 | 2026-08-03 | 3754 |  | 7 Days Work | 9196374 |
| 3792 | 36900.37000.37100.37600.38400.44000.61300.856500 | Toilet_Level Marking | 1d | 2026-08-04 | 2026-08-04 | 3791 |  | 7 Days Work | 9196384 |
| 3793 | 36900.37000.37100.37600.38400.44000.61300.856600 | Toilet_Chasing work for Electrical conduit & concealed plumbing | 5d | 2026-08-05 | 2026-08-09 | 3792 |  | 7 Days Work | 9196394 |
| 3794 | 36900.37000.37100.37600.38400.44000.61300.856700 | Toilet_Plumbing work 1st fix | 5d | 2026-08-10 | 2026-08-14 | 3793 |  | 7 Days Work | 9196404 |
| 3795 | 36900.37000.37100.37600.38400.44000.61300.856800 | Toilet_Sleeve/Bore Packing | 5d | 2026-08-15 | 2026-08-19 | 3794 |  | 7 Days Work | 9196414 |
| 3796 | 36900.37000.37100.37600.38400.44000.61300.856900 | Toilet_Waterproofing | 10d | 2026-08-20 | 2026-08-29 | 3795 |  | 7 Days Work | 9196424 |
| 3797 | 36900.37000.37100.37600.38400.44000.61300.857000 | Toilet_Screed | 1d | 2026-08-30 | 2026-08-30 | 3796 |  | 7 Days Work | 9196434 |
| 3798 | 36900.37000.37100.37600.38400.44000.61300.857100 | Toilet_Plumbing 2nd fix | 5d | 2026-08-31 | 2026-09-04 | 3797 |  | 7 Days Work | 9196444 |
| 3799 | 36900.37000.37100.37600.38400.44000.61300.857200 | Toilet_Ledge wall | 5d | 2026-09-05 | 2026-09-09 | 3798 |  | 7 Days Work | 9196454 |
| 3800 | 36900.37000.37100.37600.38400.44000.61300.857300 | Toilet_Cement Plaster | 5d | 2026-09-10 | 2026-09-14 | 3799 |  | 7 Days Work | 9196464 |
| 3801 | 36900.37000.37100.37600.38400.44000.61300.857400 | Toilet_Door Frame | 1d | 2026-09-15 | 2026-09-15 | 3800 |  | 7 Days Work | 9196474 |
| 3802 | 36900.37000.37100.37600.38400.44000.61300.857500 | Toilet_Wash basin & Couter | 3d | 2026-09-16 | 2026-09-18 | 3801 |  | 7 Days Work | 9196484 |
| 3803 | 36900.37000.37100.37600.38400.44000.61300.857600 | Toilet_Wall dado | 20d | 2026-09-19 | 2026-10-08 | 3802 |  | 7 Days Work | 9196494 |
| 3804 | 36900.37000.37100.37600.38400.44000.61300.857700 | Toilet_Granite Work-Ledge wall top | 3d | 2026-10-09 | 2026-10-11 | 3803 |  | 7 Days Work | 9196504 |
| 3805 | 36900.37000.37100.37600.38400.44000.61300.857800 | Toilet_Floor Tilling work | 20d | 2026-10-12 | 2026-10-31 | 3804 |  | 7 Days Work | 9196514 |
| 3806 | 36900.37000.37100.37600.38400.44000.61300.857900 | Toilet_1st row of dado | 5d | 2026-11-01 | 2026-11-05 | 3805 |  | 7 Days Work | 9196524 |
| 3807 | 36900.37000.37100.37600.38400.44000.61300.858000 | Toilet_Window Fixing | 14d | 2026-11-06 | 2026-11-19 | 3806 |  | 7 Days Work | 9196534 |
| 3808 | 36900.37000.37100.37600.38400.44000.61300.858100 | Toilet_Services above False ceiling | 21d | 2026-11-20 | 2026-12-10 | 3807 |  | 7 Days Work | 9196544 |
| 3809 | 36900.37000.37100.37600.38400.44000.61300.858200 | Toilet_False Ceiling framing | 12d | 2026-12-11 | 2026-12-22 | 3808 |  | 7 Days Work | 9196554 |
| 3810 | 36900.37000.37100.37600.38400.44000.61300.858300 | Toilet_Door Frame | 5d | 2026-12-23 | 2026-12-27 | 3809 |  | 7 Days Work | 9196564 |
| 3811 | 36900.37000.37100.37600.38400.44000.61300.858400 | Toilet_Epoxy Tile Grouting | 7d | 2027-02-22 | 2027-02-28 | 3786SS |  | 7 Days Work | 9196574 |
| 3812 | 36900.37000.37100.37600.38400.44000.61300.858500 | Toilet_False ceiling board fixing, CP Sanitary Fixture, Electric Fixture | 21d | 2027-03-01 | 2027-03-21 | 3811 |  | 7 Days Work | 9196584 |
| 3813 | 36900.37000.37100.37600.38400.44100 | **19th Habitable/21st Floor** | 245d | 2026-08-02 | 2027-04-03 |  | start no earlier than 2026-08-02 | 7 Days Work | 9183554 |
| 3814 | 36900.37000.37100.37600.38400.44100.356700 | Post Pour | 7d | 2026-08-02 | 2026-08-08 | 2730FS+15d |  | 7 Days Work | 9190564 |
| 3815 | 36900.37000.37100.37600.38400.44100.356800 | MEP Clearance -1 | 5d | 2026-08-09 | 2026-08-13 | 3814 |  | 7 Days Work | 9190574 |
| 3816 | 36900.37000.37100.37600.38400.44100.356900 | Benchmark | 1d | 2026-08-14 | 2026-08-14 | 3815 |  | 7 Days Work | 9190584 |
| 3817 | 36900.37000.37100.37600.38400.44100.357000 | Temporary Railing | 3d | 2026-08-15 | 2026-08-17 | 3816 |  | 7 Days Work | 9190594 |
| 3818 | 36900.37000.37100.37600.38400.44100.357100 | Blockwork | 10d | 2026-08-18 | 2026-08-27 | 3817 |  | 7 Days Work | 9190604 |
| 3819 | 36900.37000.37100.37600.38400.44100.357200 | MEP Clearance -2 | 10d | 2026-08-28 | 2026-09-06 | 3818 |  | 7 Days Work | 9190614 |
| 3820 | 36900.37000.37100.37600.38400.44100.357300 | Gypsum Plaster | 14d | 2026-09-07 | 2026-09-20 | 3819 |  | 7 Days Work | 9190624 |
| 3821 | 36900.37000.37100.37600.38400.44100.357400 | Kitchen Platform | 3d | 2026-09-21 | 2026-09-23 | 3820 |  | 7 Days Work | 9190634 |
| 3822 | 36900.37000.37100.37600.38400.44100.357500 | Kitchen dado | 7d | 2026-09-24 | 2026-09-30 | 3821 |  | 7 Days Work | 9190644 |
| 3823 | 36900.37000.37100.37600.38400.44100.357600 | Fire Fighting | 5d | 2026-10-01 | 2026-10-05 | 3822 |  | 7 Days Work | 9190654 |
| 3824 | 36900.37000.37100.37600.38400.44100.357700 | Anticapilary | 5d | 2026-10-06 | 2026-10-10 | 3823 |  | 7 Days Work | 9190664 |
| 3825 | 36900.37000.37100.37600.38400.44100.357800 | Stone Laying | 10d | 2026-11-13 | 2026-11-22 | 3865 |  | 7 Days Work | 9190674 |
| 3826 | 36900.37000.37100.37600.38400.44100.357900 | Tiles Laying | 7d | 2026-11-13 | 2026-11-19 | 3865 |  | 7 Days Work | 9190684 |
| 3827 | 36900.37000.37100.37600.38400.44100.358000 | 1st cutting/polishing of stone flooring | 7d | 2026-11-20 | 2026-11-26 | 3826 |  | 7 Days Work | 9190694 |
| 3828 | 36900.37000.37100.37600.38400.44100.358100 | Tiles/Stone skirting | 5d | 2026-11-27 | 2026-12-01 | 3827 |  | 7 Days Work | 9190704 |
| 3829 | 36900.37000.37100.37600.38400.44100.358200 | Protechtion sheet | 1d | 2026-12-02 | 2026-12-02 | 3828 |  | 7 Days Work | 9190714 |
| 3830 | 36900.37000.37100.37600.38400.44100.358300 | Installation of Temporary Door | 1d | 2026-12-03 | 2026-12-03 | 3829 |  | 7 Days Work | 9190724 |
| 3831 | 36900.37000.37100.37600.38400.44100.358400 | Fixing of window tracks | 5d | 2026-12-04 | 2026-12-08 | 3830 |  | 7 Days Work | 9190734 |
| 3832 | 36900.37000.37100.37600.38400.44100.358500 | Wire Pulling | 7d | 2026-12-09 | 2026-12-15 | 3831 |  | 7 Days Work | 9190744 |
| 3833 | 36900.37000.37100.37600.38400.44100.358600 | Gypsum Remaining | 5d | 2026-12-16 | 2026-12-20 | 3832 |  | 7 Days Work | 9190754 |
| 3834 | 36900.37000.37100.37600.38400.44100.358700 | Fixing of windoow shutter | 5d | 2026-12-21 | 2026-12-25 | 3833 |  | 7 Days Work | 9190764 |
| 3835 | 36900.37000.37100.37600.38400.44100.358800 | Putty Works - walls & ceiling | 15d | 2026-12-26 | 2027-01-09 | 3834 |  | 7 Days Work | 9190774 |
| 3836 | 36900.37000.37100.37600.38400.44100.358900 | False Ceiling- Framing | 10d | 2027-01-10 | 2027-01-19 | 3835 |  | 7 Days Work | 9190784 |
| 3837 | 36900.37000.37100.37600.38400.44100.359000 | Pre Hung Door | 3d | 2027-01-20 | 2027-01-22 | 3836 |  | 7 Days Work | 9190794 |
| 3838 | 36900.37000.37100.37600.38400.44100.359100 | Protechtion sheet | 2d | 2027-01-23 | 2027-01-24 | 3837 |  | 7 Days Work | 9190804 |
| 3839 | 36900.37000.37100.37600.38400.44100.359200 | Skirting near door | 2d | 2027-01-25 | 2027-01-26 | 3838 |  | 7 Days Work | 9190814 |
| 3840 | 36900.37000.37100.37600.38400.44100.359300 | Electrical Switch box fixing | 14d | 2027-01-27 | 2027-02-09 | 3839 |  | 7 Days Work | 9190824 |
| 3841 | 36900.37000.37100.37600.38400.44100.359400 | Fire Fighting painting | 5d | 2027-02-10 | 2027-02-14 | 3840 |  | 7 Days Work | 9190834 |
| 3842 | 36900.37000.37100.37600.38400.44100.359500 | Protection of all flooring, door & window hardware | 5d | 2027-02-15 | 2027-02-19 | 3841 |  | 7 Days Work | 9190844 |
| 3843 | 36900.37000.37100.37600.38400.44100.359600 | 1st coat primer- ceiling 1st & walls | 14d | 2027-02-20 | 2027-03-05 | 3842 |  | 7 Days Work | 9190854 |
| 3844 | 36900.37000.37100.37600.38400.44100.359700 | Wooden Flooring | 5d | 2027-03-06 | 2027-03-10 | 3843 |  | 7 Days Work | 9190864 |
| 3845 | 36900.37000.37100.37600.38400.44100.359800 | Removing of Temporary Railing & installation of Glass Railing | 5d | 2027-03-06 | 2027-03-10 | 3843 |  | 7 Days Work | 9190874 |
| 3846 | 36900.37000.37100.37600.38400.44100.359900 | Tile Grouting | 7d | 2027-03-06 | 2027-03-12 | 3843 |  | 7 Days Work | 9190884 |
| 3847 | 36900.37000.37100.37600.38400.44100.360000 | False Ceiling | 5d | 2027-03-13 | 2027-03-17 | 3846 |  | 7 Days Work | 9190894 |
| 3848 | 36900.37000.37100.37600.38400.44100.360100 | 2nd coat of primer | 10d | 2027-03-18 | 2027-03-27 | 3847 |  | 7 Days Work | 9190904 |
| 3849 | 36900.37000.37100.37600.38400.44100.360200 | Final cutting/polishing of stone flooring | 7d | 2027-03-28 | 2027-04-03 | 3848 |  | 7 Days Work | 9190914 |

| ID | WBS | Task | Duration | Start | Finish | Predecessors | Constraint | Calendar | Unique_Task_ID |
| --- | --- | --- | --- | --- | --- | --- | --- | --- | --- |
| 3850 | 36900.37000.37100.37600.38400.44100.61800 | **Toilet** | 237d | 2026-08-09 | 2027-04-02 |  | start no earlier than 2026-08-09 | 7 Days Work | 9183754 |
| 3851 | 36900.37000.37100.37600.38400.44100.61800.858600 | Toilet_MEP Clearance -1 | 7d | 2026-08-09 | 2026-08-15 | 3814 |  | 7 Days Work | 9196594 |
| 3852 | 36900.37000.37100.37600.38400.44100.61800.858700 | Toilet_Level Marking | 1d | 2026-08-16 | 2026-08-16 | 3851 |  | 7 Days Work | 9196604 |
| 3853 | 36900.37000.37100.37600.38400.44100.61800.858800 | Toilet_Chasing work for Electrical conduit & concealed plumbing | 5d | 2026-08-17 | 2026-08-21 | 3852 |  | 7 Days Work | 9196614 |
| 3854 | 36900.37000.37100.37600.38400.44100.61800.858900 | Toilet_Plumbing work 1st fix | 5d | 2026-08-22 | 2026-08-26 | 3853 |  | 7 Days Work | 9196624 |
| 3855 | 36900.37000.37100.37600.38400.44100.61800.859000 | Toilet_Sleeve/Bore Packing | 5d | 2026-08-27 | 2026-08-31 | 3854 |  | 7 Days Work | 9196634 |
| 3856 | 36900.37000.37100.37600.38400.44100.61800.859100 | Toilet_Waterproofing | 10d | 2026-09-01 | 2026-09-10 | 3855 |  | 7 Days Work | 9196644 |
| 3857 | 36900.37000.37100.37600.38400.44100.61800.859200 | Toilet_Screed | 1d | 2026-09-11 | 2026-09-11 | 3856 |  | 7 Days Work | 9196654 |
| 3858 | 36900.37000.37100.37600.38400.44100.61800.859300 | Toilet_Plumbing 2nd fix | 5d | 2026-09-12 | 2026-09-16 | 3857 |  | 7 Days Work | 9196664 |
| 3859 | 36900.37000.37100.37600.38400.44100.61800.859400 | Toilet_Ledge wall | 5d | 2026-09-17 | 2026-09-21 | 3858 |  | 7 Days Work | 9196674 |
| 3860 | 36900.37000.37100.37600.38400.44100.61800.859500 | Toilet_Cement Plaster | 5d | 2026-09-22 | 2026-09-26 | 3859 |  | 7 Days Work | 9196684 |
| 3861 | 36900.37000.37100.37600.38400.44100.61800.859600 | Toilet_Door Frame | 1d | 2026-09-27 | 2026-09-27 | 3860 |  | 7 Days Work | 9196694 |
| 3862 | 36900.37000.37100.37600.38400.44100.61800.859700 | Toilet_Wash basin & Couter | 3d | 2026-09-28 | 2026-09-30 | 3861 |  | 7 Days Work | 9196704 |
| 3863 | 36900.37000.37100.37600.38400.44100.61800.859800 | Toilet_Wall dado | 20d | 2026-10-01 | 2026-10-20 | 3862 |  | 7 Days Work | 9196714 |
| 3864 | 36900.37000.37100.37600.38400.44100.61800.859900 | Toilet_Granite Work-Ledge wall top | 3d | 2026-10-21 | 2026-10-23 | 3863 |  | 7 Days Work | 9196724 |
| 3865 | 36900.37000.37100.37600.38400.44100.61800.860000 | Toilet_Floor Tilling work | 20d | 2026-10-24 | 2026-11-12 | 3864 |  | 7 Days Work | 9196734 |
| 3866 | 36900.37000.37100.37600.38400.44100.61800.860100 | Toilet_1st row of dado | 5d | 2026-11-13 | 2026-11-17 | 3865 |  | 7 Days Work | 9196744 |
| 3867 | 36900.37000.37100.37600.38400.44100.61800.860200 | Toilet_Window Fixing | 14d | 2026-11-18 | 2026-12-01 | 3866 |  | 7 Days Work | 9196754 |
| 3868 | 36900.37000.37100.37600.38400.44100.61800.860300 | Toilet_Services above False ceiling | 21d | 2026-12-02 | 2026-12-22 | 3867 |  | 7 Days Work | 9196764 |
| 3869 | 36900.37000.37100.37600.38400.44100.61800.860400 | Toilet_False Ceiling framing | 12d | 2026-12-23 | 2027-01-03 | 3868 |  | 7 Days Work | 9196774 |
| 3870 | 36900.37000.37100.37600.38400.44100.61800.860500 | Toilet_Door Frame | 5d | 2027-01-04 | 2027-01-08 | 3869 |  | 7 Days Work | 9196784 |
| 3871 | 36900.37000.37100.37600.38400.44100.61800.860600 | Toilet_Epoxy Tile Grouting | 7d | 2027-03-06 | 2027-03-12 | 3846SS |  | 7 Days Work | 9196794 |
| 3872 | 36900.37000.37100.37600.38400.44100.61800.860700 | Toilet_False ceiling board fixing, CP Sanitary Fixture, Electric Fixture | 21d | 2027-03-13 | 2027-04-02 | 3871 |  | 7 Days Work | 9196804 |
| 3873 | 36900.37000.37100.37600.52600 | **Common area Finishing** | 320d | 2026-10-03 | 2027-08-18 |  | start no earlier than 2026-10-03 | 7 Days Work | 9183564 |
| 3874 | 36900.37000.37100.37600.52600.78000 | **1st Habitable/3rd Floor** | 158d | 2026-10-03 | 2027-03-09 |  | start no earlier than 2026-10-03 | 7 Days Work | 9183954 |
| 3875 | 36900.37000.37100.37600.52600.78000.360300 | Side blockwork for lift shafts | 9d | 2026-10-03 | 2026-10-11 | 4070 |  | 7 Days Work | 9190924 |
| 3876 | 36900.37000.37100.37600.52600.78000.360400 | Door Threshold for lifts | 6d | 2026-10-12 | 2026-10-17 | 3875 |  | 7 Days Work | 9190934 |
| 3877 | 36900.37000.37100.37600.52600.78000.360500 | Granite Cladding | 10d | 2026-10-18 | 2026-10-27 | 3876 |  | 7 Days Work | 9190944 |
| 3878 | 36900.37000.37100.37600.52600.78000.360600 | MEP Services | 60d | 2026-10-28 | 2026-12-26 | 3877 |  | 7 Days Work | 9190954 |
| 3879 | 36900.37000.37100.37600.52600.78000.360700 | Flooring+Skirting | 20d | 2026-12-27 | 2027-01-15 | 3878 |  | 7 Days Work | 9190964 |
| 3880 | 36900.37000.37100.37600.52600.78000.360800 | Wall finishes | 21d | 2027-01-16 | 2027-02-05 | 3879 |  | 7 Days Work | 9190974 |
| 3881 | 36900.37000.37100.37600.52600.78000.360900 | False Ceiling | 10d | 2027-02-06 | 2027-02-15 | 3880 |  | 7 Days Work | 9190984 |
| 3882 | 36900.37000.37100.37600.52600.78000.361000 | Staircase | 15d | 2027-02-16 | 2027-03-02 | 3881 |  | 7 Days Work | 9190994 |
| 3883 | 36900.37000.37100.37600.52600.78000.361100 | Deep Cleaning | 7d | 2027-03-03 | 2027-03-09 | 3882 |  | 7 Days Work | 9191004 |

| ID | WBS | Task | Duration | Start | Finish | Predecessors | Constraint | Calendar | Unique_Task_ID |
| --- | --- | --- | --- | --- | --- | --- | --- | --- | --- |
| 3884 | 36900.37000.37100.37600.52600.77900 | **2nd Habitable/4th Floor** | 158d | 2026-10-12 | 2027-03-18 |  | start no earlier than 2026-10-12 | 7 Days Work | 9183944 |
| 3885 | 36900.37000.37100.37600.52600.77900.361200 | Side blockwork for lift shafts | 9d | 2026-10-12 | 2026-10-20 | 3875 |  | 7 Days Work | 9191014 |
| 3886 | 36900.37000.37100.37600.52600.77900.361300 | Door Threshold for lifts | 6d | 2026-10-21 | 2026-10-26 | 3885 |  | 7 Days Work | 9191024 |
| 3887 | 36900.37000.37100.37600.52600.77900.361400 | Granite Cladding | 10d | 2026-10-27 | 2026-11-05 | 3886 |  | 7 Days Work | 9191034 |
| 3888 | 36900.37000.37100.37600.52600.77900.361500 | MEP Services | 60d | 2026-11-06 | 2027-01-04 | 3887 |  | 7 Days Work | 9191044 |
| 3889 | 36900.37000.37100.37600.52600.77900.361600 | Flooring+Skirting | 20d | 2027-01-05 | 2027-01-24 | 3888 |  | 7 Days Work | 9191054 |
| 3890 | 36900.37000.37100.37600.52600.77900.361700 | Wall finishes | 21d | 2027-01-25 | 2027-02-14 | 3889 |  | 7 Days Work | 9191064 |
| 3891 | 36900.37000.37100.37600.52600.77900.361800 | False Ceiling | 10d | 2027-02-15 | 2027-02-24 | 3890 |  | 7 Days Work | 9191074 |
| 3892 | 36900.37000.37100.37600.52600.77900.361900 | Staircase | 15d | 2027-02-25 | 2027-03-11 | 3891 |  | 7 Days Work | 9191084 |
| 3893 | 36900.37000.37100.37600.52600.77900.362000 | Deep Cleaning | 7d | 2027-03-12 | 2027-03-18 | 3892 |  | 7 Days Work | 9191094 |
| 3894 | 36900.37000.37100.37600.52600.77800 | **3rd Habitable/5th Floor** | 158d | 2026-10-21 | 2027-03-27 |  | start no earlier than 2026-10-21 | 7 Days Work | 9183934 |
| 3895 | 36900.37000.37100.37600.52600.77800.362100 | Side blockwork for lift shafts | 9d | 2026-10-21 | 2026-10-29 | 3885 |  | 7 Days Work | 9191104 |
| 3896 | 36900.37000.37100.37600.52600.77800.362200 | Door Threshold for lifts | 6d | 2026-10-30 | 2026-11-04 | 3895 |  | 7 Days Work | 9191114 |
| 3897 | 36900.37000.37100.37600.52600.77800.362300 | Granite Cladding | 10d | 2026-11-05 | 2026-11-14 | 3896 |  | 7 Days Work | 9191124 |
| 3898 | 36900.37000.37100.37600.52600.77800.362400 | MEP Services | 60d | 2026-11-15 | 2027-01-13 | 3897 |  | 7 Days Work | 9191134 |
| 3899 | 36900.37000.37100.37600.52600.77800.362500 | Flooring+Skirting | 20d | 2027-01-14 | 2027-02-02 | 3898 |  | 7 Days Work | 9191144 |
| 3900 | 36900.37000.37100.37600.52600.77800.362600 | Wall finishes | 21d | 2027-02-03 | 2027-02-23 | 3899 |  | 7 Days Work | 9191154 |
| 3901 | 36900.37000.37100.37600.52600.77800.362700 | False Ceiling | 10d | 2027-02-24 | 2027-03-05 | 3900 |  | 7 Days Work | 9191164 |
| 3902 | 36900.37000.37100.37600.52600.77800.362800 | Staircase | 15d | 2027-03-06 | 2027-03-20 | 3901 |  | 7 Days Work | 9191174 |
| 3903 | 36900.37000.37100.37600.52600.77800.362900 | Deep Cleaning | 7d | 2027-03-21 | 2027-03-27 | 3902 |  | 7 Days Work | 9191184 |
| 3904 | 36900.37000.37100.37600.52600.77700 | **4th Habitable/6th Floor** | 158d | 2026-10-30 | 2027-04-05 |  | start no earlier than 2026-10-30 | 7 Days Work | 9183894 |
| 3905 | 36900.37000.37100.37600.52600.77700.363000 | Side blockwork for lift shafts | 9d | 2026-10-30 | 2026-11-07 | 3895 |  | 7 Days Work | 9191194 |
| 3906 | 36900.37000.37100.37600.52600.77700.363100 | Door Threshold for lifts | 6d | 2026-11-08 | 2026-11-13 | 3905 |  | 7 Days Work | 9191204 |
| 3907 | 36900.37000.37100.37600.52600.77700.363200 | Granite Cladding | 10d | 2026-11-14 | 2026-11-23 | 3906 |  | 7 Days Work | 9191214 |
| 3908 | 36900.37000.37100.37600.52600.77700.363300 | MEP Services | 60d | 2026-11-24 | 2027-01-22 | 3907 |  | 7 Days Work | 9191224 |
| 3909 | 36900.37000.37100.37600.52600.77700.363400 | Flooring+Skirting | 20d | 2027-01-23 | 2027-02-11 | 3908 |  | 7 Days Work | 9191234 |
| 3910 | 36900.37000.37100.37600.52600.77700.363500 | Wall finishes | 21d | 2027-02-12 | 2027-03-04 | 3909 |  | 7 Days Work | 9191244 |
| 3911 | 36900.37000.37100.37600.52600.77700.363600 | False Ceiling | 10d | 2027-03-05 | 2027-03-14 | 3910 |  | 7 Days Work | 9191254 |
| 3912 | 36900.37000.37100.37600.52600.77700.363700 | Staircase | 15d | 2027-03-15 | 2027-03-29 | 3911 |  | 7 Days Work | 9191264 |
| 3913 | 36900.37000.37100.37600.52600.77700.363800 | Deep Cleaning | 7d | 2027-03-30 | 2027-04-05 | 3912 |  | 7 Days Work | 9191274 |

| ID | WBS | Task | Duration | Start | Finish | Predecessors | Constraint | Calendar | Unique_Task_ID |
| --- | --- | --- | --- | --- | --- | --- | --- | --- | --- |
| 3914 | 36900.37000.37100.37600.52600.77600 | **5th Habitable/7th Floor** | 158d | 2026-11-08 | 2027-04-14 |  | start no earlier than 2026-11-08 | 7 Days Work | 9183884 |
| 3915 | 36900.37000.37100.37600.52600.77600.363900 | Side blockwork for lift shafts | 9d | 2026-11-08 | 2026-11-16 | 3905 |  | 7 Days Work | 9191284 |
| 3916 | 36900.37000.37100.37600.52600.77600.364000 | Door Threshold for lifts | 6d | 2026-11-17 | 2026-11-22 | 3915 |  | 7 Days Work | 9191294 |
| 3917 | 36900.37000.37100.37600.52600.77600.364100 | Granite Cladding | 10d | 2026-11-23 | 2026-12-02 | 3916 |  | 7 Days Work | 9191304 |
| 3918 | 36900.37000.37100.37600.52600.77600.364200 | MEP Services | 60d | 2026-12-03 | 2027-01-31 | 3917 |  | 7 Days Work | 9191314 |
| 3919 | 36900.37000.37100.37600.52600.77600.364300 | Flooring+Skirting | 20d | 2027-02-01 | 2027-02-20 | 3918 |  | 7 Days Work | 9191324 |
| 3920 | 36900.37000.37100.37600.52600.77600.364400 | Wall finishes | 21d | 2027-02-21 | 2027-03-13 | 3919 |  | 7 Days Work | 9191334 |
| 3921 | 36900.37000.37100.37600.52600.77600.364500 | False Ceiling | 10d | 2027-03-14 | 2027-03-23 | 3920 |  | 7 Days Work | 9191344 |
| 3922 | 36900.37000.37100.37600.52600.77600.364600 | Staircase | 15d | 2027-03-24 | 2027-04-07 | 3921 |  | 7 Days Work | 9191354 |
| 3923 | 36900.37000.37100.37600.52600.77600.364700 | Deep Cleaning | 7d | 2027-04-08 | 2027-04-14 | 3922 |  | 7 Days Work | 9191364 |
| 3924 | 36900.37000.37100.37600.52600.77500 | **6th Habitable/8th Floor** | 158d | 2026-11-17 | 2027-04-23 |  | start no earlier than 2026-11-17 | 7 Days Work | 9183784 |
| 3925 | 36900.37000.37100.37600.52600.77500.364800 | Side blockwork for lift shafts | 9d | 2026-11-17 | 2026-11-25 | 3915 |  | 7 Days Work | 9191374 |
| 3926 | 36900.37000.37100.37600.52600.77500.364900 | Door Threshold for lifts | 6d | 2026-11-26 | 2026-12-01 | 3925 |  | 7 Days Work | 9191384 |
| 3927 | 36900.37000.37100.37600.52600.77500.365000 | Granite Cladding | 10d | 2026-12-02 | 2026-12-11 | 3926 |  | 7 Days Work | 9191394 |
| 3928 | 36900.37000.37100.37600.52600.77500.365100 | MEP Services | 60d | 2026-12-12 | 2027-02-09 | 3927 |  | 7 Days Work | 9191404 |
| 3929 | 36900.37000.37100.37600.52600.77500.365200 | Flooring+Skirting | 20d | 2027-02-10 | 2027-03-01 | 3928 |  | 7 Days Work | 9191414 |
| 3930 | 36900.37000.37100.37600.52600.77500.365300 | Wall finishes | 21d | 2027-03-02 | 2027-03-22 | 3929 |  | 7 Days Work | 9191424 |
| 3931 | 36900.37000.37100.37600.52600.77500.365400 | False Ceiling | 10d | 2027-03-23 | 2027-04-01 | 3930 |  | 7 Days Work | 9191434 |
| 3932 | 36900.37000.37100.37600.52600.77500.365500 | Staircase | 15d | 2027-04-02 | 2027-04-16 | 3931 |  | 7 Days Work | 9191444 |
| 3933 | 36900.37000.37100.37600.52600.77500.365600 | Deep Cleaning | 7d | 2027-04-17 | 2027-04-23 | 3932 |  | 7 Days Work | 9191454 |
| 3934 | 36900.37000.37100.37600.52600.77400 | **7th Habitable/9th Floor** | 158d | 2026-11-26 | 2027-05-02 |  | start no earlier than 2026-11-26 | 7 Days Work | 9183804 |
| 3935 | 36900.37000.37100.37600.52600.77400.365700 | Side blockwork for lift shafts | 9d | 2026-11-26 | 2026-12-04 | 3925 |  | 7 Days Work | 9191464 |
| 3936 | 36900.37000.37100.37600.52600.77400.365800 | Door Threshold for lifts | 6d | 2026-12-05 | 2026-12-10 | 3935 |  | 7 Days Work | 9191474 |
| 3937 | 36900.37000.37100.37600.52600.77400.365900 | Granite Cladding | 10d | 2026-12-11 | 2026-12-20 | 3936 |  | 7 Days Work | 9191484 |
| 3938 | 36900.37000.37100.37600.52600.77400.366000 | MEP Services | 60d | 2026-12-21 | 2027-02-18 | 3937 |  | 7 Days Work | 9191494 |
| 3939 | 36900.37000.37100.37600.52600.77400.366100 | Flooring+Skirting | 20d | 2027-02-19 | 2027-03-10 | 3938 |  | 7 Days Work | 9191504 |
| 3940 | 36900.37000.37100.37600.52600.77400.366200 | Wall finishes | 21d | 2027-03-11 | 2027-03-31 | 3939 |  | 7 Days Work | 9191514 |
| 3941 | 36900.37000.37100.37600.52600.77400.366300 | False Ceiling | 10d | 2027-04-01 | 2027-04-10 | 3940 |  | 7 Days Work | 9191524 |
| 3942 | 36900.37000.37100.37600.52600.77400.366400 | Staircase | 15d | 2027-04-11 | 2027-04-25 | 3941 |  | 7 Days Work | 9191534 |
| 3943 | 36900.37000.37100.37600.52600.77400.366500 | Deep Cleaning | 7d | 2027-04-26 | 2027-05-02 | 3942 |  | 7 Days Work | 9191544 |

| ID | WBS | Task | Duration | Start | Finish | Predecessors | Constraint | Calendar | Unique_Task_ID |
| --- | --- | --- | --- | --- | --- | --- | --- | --- | --- |
| 3944 | 36900.37000.37100.37600.52600.77300 | **8th Habitable/10th Floor** | 158d | 2026-12-05 | 2027-05-11 |  | start no earlier than 2026-12-05 | 7 Days Work | 9183814 |
| 3945 | 36900.37000.37100.37600.52600.77300.366600 | Side blockwork for lift shafts | 9d | 2026-12-05 | 2026-12-13 | 3935 |  | 7 Days Work | 9191554 |
| 3946 | 36900.37000.37100.37600.52600.77300.366700 | Door Threshold for lifts | 6d | 2026-12-14 | 2026-12-19 | 3945 |  | 7 Days Work | 9191564 |
| 3947 | 36900.37000.37100.37600.52600.77300.366800 | Granite Cladding | 10d | 2026-12-20 | 2026-12-29 | 3946 |  | 7 Days Work | 9191574 |
| 3948 | 36900.37000.37100.37600.52600.77300.366900 | MEP Services | 60d | 2026-12-30 | 2027-02-27 | 3947 |  | 7 Days Work | 9191584 |
| 3949 | 36900.37000.37100.37600.52600.77300.367000 | Flooring+Skirting | 20d | 2027-02-28 | 2027-03-19 | 3948 |  | 7 Days Work | 9191594 |
| 3950 | 36900.37000.37100.37600.52600.77300.367100 | Wall finishes | 21d | 2027-03-20 | 2027-04-09 | 3949 |  | 7 Days Work | 9191604 |
| 3951 | 36900.37000.37100.37600.52600.77300.367200 | False Ceiling | 10d | 2027-04-10 | 2027-04-19 | 3950 |  | 7 Days Work | 9191614 |
| 3952 | 36900.37000.37100.37600.52600.77300.367300 | Staircase | 15d | 2027-04-20 | 2027-05-04 | 3951 |  | 7 Days Work | 9191624 |
| 3953 | 36900.37000.37100.37600.52600.77300.367400 | Deep Cleaning | 7d | 2027-05-05 | 2027-05-11 | 3952 |  | 7 Days Work | 9191634 |
| 3954 | 36900.37000.37100.37600.52600.77200 | **9th Habitable/11th Floor** | 158d | 2026-12-14 | 2027-05-20 |  | start no earlier than 2026-12-14 | 7 Days Work | 9183824 |
| 3955 | 36900.37000.37100.37600.52600.77200.367500 | Side blockwork for lift shafts | 9d | 2026-12-14 | 2026-12-22 | 3945 |  | 7 Days Work | 9191644 |
| 3956 | 36900.37000.37100.37600.52600.77200.367600 | Door Threshold for lifts | 6d | 2026-12-23 | 2026-12-28 | 3955 |  | 7 Days Work | 9191654 |
| 3957 | 36900.37000.37100.37600.52600.77200.367700 | Granite Cladding | 10d | 2026-12-29 | 2027-01-07 | 3956 |  | 7 Days Work | 9191664 |
| 3958 | 36900.37000.37100.37600.52600.77200.367800 | MEP Services | 60d | 2027-01-08 | 2027-03-08 | 3957 |  | 7 Days Work | 9191674 |
| 3959 | 36900.37000.37100.37600.52600.77200.367900 | Flooring+Skirting | 20d | 2027-03-09 | 2027-03-28 | 3958 |  | 7 Days Work | 9191684 |
| 3960 | 36900.37000.37100.37600.52600.77200.368000 | Wall finishes | 21d | 2027-03-29 | 2027-04-18 | 3959 |  | 7 Days Work | 9191694 |
| 3961 | 36900.37000.37100.37600.52600.77200.368100 | False Ceiling | 10d | 2027-04-19 | 2027-04-28 | 3960 |  | 7 Days Work | 9191704 |
| 3962 | 36900.37000.37100.37600.52600.77200.368200 | Staircase | 15d | 2027-04-29 | 2027-05-13 | 3961 |  | 7 Days Work | 9191714 |
| 3963 | 36900.37000.37100.37600.52600.77200.368300 | Deep Cleaning | 7d | 2027-05-14 | 2027-05-20 | 3962 |  | 7 Days Work | 9191724 |
| 3964 | 36900.37000.37100.37600.52600.77100 | **10th Habitable/12th Floor** | 158d | 2026-12-23 | 2027-05-29 |  | start no earlier than 2026-12-23 | 7 Days Work | 9183794 |
| 3965 | 36900.37000.37100.37600.52600.77100.368400 | Side blockwork for lift shafts | 9d | 2026-12-23 | 2026-12-31 | 3955 |  | 7 Days Work | 9191734 |
| 3966 | 36900.37000.37100.37600.52600.77100.368500 | Door Threshold for lifts | 6d | 2027-01-01 | 2027-01-06 | 3965 |  | 7 Days Work | 9191744 |
| 3967 | 36900.37000.37100.37600.52600.77100.368600 | Granite Cladding | 10d | 2027-01-07 | 2027-01-16 | 3966 |  | 7 Days Work | 9191754 |
| 3968 | 36900.37000.37100.37600.52600.77100.368700 | MEP Services | 60d | 2027-01-17 | 2027-03-17 | 3967 |  | 7 Days Work | 9191764 |
| 3969 | 36900.37000.37100.37600.52600.77100.368800 | Flooring+Skirting | 20d | 2027-03-18 | 2027-04-06 | 3968 |  | 7 Days Work | 9191774 |
| 3970 | 36900.37000.37100.37600.52600.77100.368900 | Wall finishes | 21d | 2027-04-07 | 2027-04-27 | 3969 |  | 7 Days Work | 9191784 |
| 3971 | 36900.37000.37100.37600.52600.77100.369000 | False Ceiling | 10d | 2027-04-28 | 2027-05-07 | 3970 |  | 7 Days Work | 9191794 |
| 3972 | 36900.37000.37100.37600.52600.77100.369100 | Staircase | 15d | 2027-05-08 | 2027-05-22 | 3971 |  | 7 Days Work | 9191804 |
| 3973 | 36900.37000.37100.37600.52600.77100.369200 | Deep Cleaning | 7d | 2027-05-23 | 2027-05-29 | 3972 |  | 7 Days Work | 9191814 |

| ID | WBS | Task | Duration | Start | Finish | Predecessors | Constraint | Calendar | Unique_Task_ID |
| --- | --- | --- | --- | --- | --- | --- | --- | --- | --- |
| 3974 | 36900.37000.37100.37600.52600.77000 | **11th Habitable/13th Floor** | 158d | 2027-01-01 | 2027-06-07 |  | start no earlier than 2027-01-01 | 7 Days Work | 9183774 |
| 3975 | 36900.37000.37100.37600.52600.77000.369300 | Side blockwork for lift shafts | 9d | 2027-01-01 | 2027-01-09 | 3965 |  | 7 Days Work | 9191824 |
| 3976 | 36900.37000.37100.37600.52600.77000.369400 | Door Threshold for lifts | 6d | 2027-01-10 | 2027-01-15 | 3975 |  | 7 Days Work | 9191834 |
| 3977 | 36900.37000.37100.37600.52600.77000.369500 | Granite Cladding | 10d | 2027-01-16 | 2027-01-25 | 3976 |  | 7 Days Work | 9191844 |
| 3978 | 36900.37000.37100.37600.52600.77000.369600 | MEP Services | 60d | 2027-01-26 | 2027-03-26 | 3977 |  | 7 Days Work | 9191854 |
| 3979 | 36900.37000.37100.37600.52600.77000.369700 | Flooring+Skirting | 20d | 2027-03-27 | 2027-04-15 | 3978 |  | 7 Days Work | 9191864 |
| 3980 | 36900.37000.37100.37600.52600.77000.369800 | Wall finishes | 21d | 2027-04-16 | 2027-05-06 | 3979 |  | 7 Days Work | 9191874 |
| 3981 | 36900.37000.37100.37600.52600.77000.369900 | False Ceiling | 10d | 2027-05-07 | 2027-05-16 | 3980 |  | 7 Days Work | 9191884 |
| 3982 | 36900.37000.37100.37600.52600.77000.370000 | Staircase | 15d | 2027-05-17 | 2027-05-31 | 3981 |  | 7 Days Work | 9191894 |
| 3983 | 36900.37000.37100.37600.52600.77000.370100 | Deep Cleaning | 7d | 2027-06-01 | 2027-06-07 | 3982 |  | 7 Days Work | 9191904 |
| 3984 | 36900.37000.37100.37600.52600.76900 | **12th Habitable/14th Floor** | 158d | 2027-01-10 | 2027-06-16 |  | start no earlier than 2027-01-10 | 7 Days Work | 9183834 |
| 3985 | 36900.37000.37100.37600.52600.76900.370200 | Side blockwork for lift shafts | 9d | 2027-01-10 | 2027-01-18 | 3975 |  | 7 Days Work | 9191914 |
| 3986 | 36900.37000.37100.37600.52600.76900.370300 | Door Threshold for lifts | 6d | 2027-01-19 | 2027-01-24 | 3985 |  | 7 Days Work | 9191924 |
| 3987 | 36900.37000.37100.37600.52600.76900.370400 | Granite Cladding | 10d | 2027-01-25 | 2027-02-03 | 3986 |  | 7 Days Work | 9191934 |
| 3988 | 36900.37000.37100.37600.52600.76900.370500 | MEP Services | 60d | 2027-02-04 | 2027-04-04 | 3987 |  | 7 Days Work | 9191944 |
| 3989 | 36900.37000.37100.37600.52600.76900.370600 | Flooring+Skirting | 20d | 2027-04-05 | 2027-04-24 | 3988 |  | 7 Days Work | 9191954 |
| 3990 | 36900.37000.37100.37600.52600.76900.370700 | Wall finishes | 21d | 2027-04-25 | 2027-05-15 | 3989 |  | 7 Days Work | 9191964 |
| 3991 | 36900.37000.37100.37600.52600.76900.370800 | False Ceiling | 10d | 2027-05-16 | 2027-05-25 | 3990 |  | 7 Days Work | 9191974 |
| 3992 | 36900.37000.37100.37600.52600.76900.370900 | Staircase | 15d | 2027-05-26 | 2027-06-09 | 3991 |  | 7 Days Work | 9191984 |
| 3993 | 36900.37000.37100.37600.52600.76900.371000 | Deep Cleaning | 7d | 2027-06-10 | 2027-06-16 | 3992 |  | 7 Days Work | 9191994 |
| 3994 | 36900.37000.37100.37600.52600.76800 | **13th Habitable/15th Floor** | 158d | 2027-01-19 | 2027-06-25 |  | start no earlier than 2027-01-19 | 7 Days Work | 9183844 |
| 3995 | 36900.37000.37100.37600.52600.76800.371100 | Side blockwork for lift shafts | 9d | 2027-01-19 | 2027-01-27 | 3985 |  | 7 Days Work | 9192004 |
| 3996 | 36900.37000.37100.37600.52600.76800.371200 | Door Threshold for lifts | 6d | 2027-01-28 | 2027-02-02 | 3995 |  | 7 Days Work | 9192014 |
| 3997 | 36900.37000.37100.37600.52600.76800.371300 | Granite Cladding | 10d | 2027-02-03 | 2027-02-12 | 3996 |  | 7 Days Work | 9192024 |
| 3998 | 36900.37000.37100.37600.52600.76800.371400 | MEP Services | 60d | 2027-02-13 | 2027-04-13 | 3997 |  | 7 Days Work | 9192034 |
| 3999 | 36900.37000.37100.37600.52600.76800.371500 | Flooring+Skirting | 20d | 2027-04-14 | 2027-05-03 | 3998 |  | 7 Days Work | 9192044 |
| 4000 | 36900.37000.37100.37600.52600.76800.371600 | Wall finishes | 21d | 2027-05-04 | 2027-05-24 | 3999 |  | 7 Days Work | 9192054 |
| 4001 | 36900.37000.37100.37600.52600.76800.371700 | False Ceiling | 10d | 2027-05-25 | 2027-06-03 | 4000 |  | 7 Days Work | 9192064 |
| 4002 | 36900.37000.37100.37600.52600.76800.371800 | Staircase | 15d | 2027-06-04 | 2027-06-18 | 4001 |  | 7 Days Work | 9192074 |
| 4003 | 36900.37000.37100.37600.52600.76800.371900 | Deep Cleaning | 7d | 2027-06-19 | 2027-06-25 | 4002 |  | 7 Days Work | 9192084 |

| ID | WBS | Task | Duration | Start | Finish | Predecessors | Constraint | Calendar | Unique_Task_ID |
| --- | --- | --- | --- | --- | --- | --- | --- | --- | --- |
| 4004 | 36900.37000.37100.37600.52600.76700 | **14th Habitable/16th Floor** | 158d | 2027-01-28 | 2027-07-04 |  | start no earlier than 2027-01-28 | 7 Days Work | 9183854 |
| 4005 | 36900.37000.37100.37600.52600.76700.372000 | Side blockwork for lift shafts | 9d | 2027-01-28 | 2027-02-05 | 3995 |  | 7 Days Work | 9192094 |
| 4006 | 36900.37000.37100.37600.52600.76700.372100 | Door Threshold for lifts | 6d | 2027-02-06 | 2027-02-11 | 4005 |  | 7 Days Work | 9192104 |
| 4007 | 36900.37000.37100.37600.52600.76700.372200 | Granite Cladding | 10d | 2027-02-12 | 2027-02-21 | 4006 |  | 7 Days Work | 9192114 |
| 4008 | 36900.37000.37100.37600.52600.76700.372300 | MEP Services | 60d | 2027-02-22 | 2027-04-22 | 4007 |  | 7 Days Work | 9192124 |
| 4009 | 36900.37000.37100.37600.52600.76700.372400 | Flooring+Skirting | 20d | 2027-04-23 | 2027-05-12 | 4008 |  | 7 Days Work | 9192134 |
| 4010 | 36900.37000.37100.37600.52600.76700.372500 | Wall finishes | 21d | 2027-05-13 | 2027-06-02 | 4009 |  | 7 Days Work | 9192144 |
| 4011 | 36900.37000.37100.37600.52600.76700.372600 | False Ceiling | 10d | 2027-06-03 | 2027-06-12 | 4010 |  | 7 Days Work | 9192154 |
| 4012 | 36900.37000.37100.37600.52600.76700.372700 | Staircase | 15d | 2027-06-13 | 2027-06-27 | 4011 |  | 7 Days Work | 9192164 |
| 4013 | 36900.37000.37100.37600.52600.76700.372800 | Deep Cleaning | 7d | 2027-06-28 | 2027-07-04 | 4012 |  | 7 Days Work | 9192174 |
| 4014 | 36900.37000.37100.37600.52600.76600 | **15th Habitable/17th Floor** | 158d | 2027-02-06 | 2027-07-13 |  | start no earlier than 2027-02-06 | 7 Days Work | 9183864 |
| 4015 | 36900.37000.37100.37600.52600.76600.372900 | Side blockwork for lift shafts | 9d | 2027-02-06 | 2027-02-14 | 4005 |  | 7 Days Work | 9192184 |
| 4016 | 36900.37000.37100.37600.52600.76600.373000 | Door Threshold for lifts | 6d | 2027-02-15 | 2027-02-20 | 4015 |  | 7 Days Work | 9192194 |
| 4017 | 36900.37000.37100.37600.52600.76600.373100 | Granite Cladding | 10d | 2027-02-21 | 2027-03-02 | 4016 |  | 7 Days Work | 9192204 |
| 4018 | 36900.37000.37100.37600.52600.76600.373200 | MEP Services | 60d | 2027-03-03 | 2027-05-01 | 4017 |  | 7 Days Work | 9192214 |
| 4019 | 36900.37000.37100.37600.52600.76600.373300 | Flooring+Skirting | 20d | 2027-05-02 | 2027-05-21 | 4018 |  | 7 Days Work | 9192224 |
| 4020 | 36900.37000.37100.37600.52600.76600.373400 | Wall finishes | 21d | 2027-05-22 | 2027-06-11 | 4019 |  | 7 Days Work | 9192234 |
| 4021 | 36900.37000.37100.37600.52600.76600.373500 | False Ceiling | 10d | 2027-06-12 | 2027-06-21 | 4020 |  | 7 Days Work | 9192244 |
| 4022 | 36900.37000.37100.37600.52600.76600.373600 | Staircase | 15d | 2027-06-22 | 2027-07-06 | 4021 |  | 7 Days Work | 9192254 |
| 4023 | 36900.37000.37100.37600.52600.76600.373700 | Deep Cleaning | 7d | 2027-07-07 | 2027-07-13 | 4022 |  | 7 Days Work | 9192264 |
| 4024 | 36900.37000.37100.37600.52600.76500 | **16th Habitable/18th Floor** | 158d | 2027-02-15 | 2027-07-22 |  | start no earlier than 2027-02-15 | 7 Days Work | 9183874 |
| 4025 | 36900.37000.37100.37600.52600.76500.373800 | Side blockwork for lift shafts | 9d | 2027-02-15 | 2027-02-23 | 4015 |  | 7 Days Work | 9192274 |
| 4026 | 36900.37000.37100.37600.52600.76500.373900 | Door Threshold for lifts | 6d | 2027-02-24 | 2027-03-01 | 4025 |  | 7 Days Work | 9192284 |
| 4027 | 36900.37000.37100.37600.52600.76500.374000 | Granite Cladding | 10d | 2027-03-02 | 2027-03-11 | 4026 |  | 7 Days Work | 9192294 |
| 4028 | 36900.37000.37100.37600.52600.76500.374100 | MEP Services | 60d | 2027-03-12 | 2027-05-10 | 4027 |  | 7 Days Work | 9192304 |
| 4029 | 36900.37000.37100.37600.52600.76500.374200 | Flooring+Skirting | 20d | 2027-05-11 | 2027-05-30 | 4028 |  | 7 Days Work | 9192314 |
| 4030 | 36900.37000.37100.37600.52600.76500.374300 | Wall finishes | 21d | 2027-05-31 | 2027-06-20 | 4029 |  | 7 Days Work | 9192324 |
| 4031 | 36900.37000.37100.37600.52600.76500.374400 | False Ceiling | 10d | 2027-06-21 | 2027-06-30 | 4030 |  | 7 Days Work | 9192334 |
| 4032 | 36900.37000.37100.37600.52600.76500.374500 | Staircase | 15d | 2027-07-01 | 2027-07-15 | 4031 |  | 7 Days Work | 9192344 |
| 4033 | 36900.37000.37100.37600.52600.76500.374600 | Deep Cleaning | 7d | 2027-07-16 | 2027-07-22 | 4032 |  | 7 Days Work | 9192354 |

| ID | WBS | Task | Duration | Start | Finish | Predecessors | Constraint | Calendar | Unique_Task_ID |
| --- | --- | --- | --- | --- | --- | --- | --- | --- | --- |
| 4034 | 36900.37000.37100.37600.52600.76400 | **17th Habitable/19th Floor** | 158d | 2027-02-24 | 2027-07-31 |  | start no earlier than 2027-02-24 | 7 Days Work | 9183904 |
| 4035 | 36900.37000.37100.37600.52600.76400.374700 | Side blockwork for lift shafts | 9d | 2027-02-24 | 2027-03-04 | 4025 |  | 7 Days Work | 9192364 |
| 4036 | 36900.37000.37100.37600.52600.76400.374800 | Door Threshold for lifts | 6d | 2027-03-05 | 2027-03-10 | 4035 |  | 7 Days Work | 9192374 |
| 4037 | 36900.37000.37100.37600.52600.76400.374900 | Granite Cladding | 10d | 2027-03-11 | 2027-03-20 | 4036 |  | 7 Days Work | 9192384 |
| 4038 | 36900.37000.37100.37600.52600.76400.375000 | MEP Services | 60d | 2027-03-21 | 2027-05-19 | 4037 |  | 7 Days Work | 9192394 |
| 4039 | 36900.37000.37100.37600.52600.76400.375100 | Flooring+Skirting | 20d | 2027-05-20 | 2027-06-08 | 4038 |  | 7 Days Work | 9192404 |
| 4040 | 36900.37000.37100.37600.52600.76400.375200 | Wall finishes | 21d | 2027-06-09 | 2027-06-29 | 4039 |  | 7 Days Work | 9192414 |
| 4041 | 36900.37000.37100.37600.52600.76400.375300 | False Ceiling | 10d | 2027-06-30 | 2027-07-09 | 4040 |  | 7 Days Work | 9192424 |
| 4042 | 36900.37000.37100.37600.52600.76400.375400 | Staircase | 15d | 2027-07-10 | 2027-07-24 | 4041 |  | 7 Days Work | 9192434 |
| 4043 | 36900.37000.37100.37600.52600.76400.375500 | Deep Cleaning | 7d | 2027-07-25 | 2027-07-31 | 4042 |  | 7 Days Work | 9192444 |
| 4044 | 36900.37000.37100.37600.52600.76300 | **18th Habitable/20th Floor** | 158d | 2027-03-05 | 2027-08-09 |  | start no earlier than 2027-03-05 | 7 Days Work | 9183914 |
| 4045 | 36900.37000.37100.37600.52600.76300.375600 | Side blockwork for lift shafts | 9d | 2027-03-05 | 2027-03-13 | 4035 |  | 7 Days Work | 9192454 |
| 4046 | 36900.37000.37100.37600.52600.76300.375700 | Door Threshold for lifts | 6d | 2027-03-14 | 2027-03-19 | 4045 |  | 7 Days Work | 9192464 |
| 4047 | 36900.37000.37100.37600.52600.76300.375800 | Granite Cladding | 10d | 2027-03-20 | 2027-03-29 | 4046 |  | 7 Days Work | 9192474 |
| 4048 | 36900.37000.37100.37600.52600.76300.375900 | MEP Services | 60d | 2027-03-30 | 2027-05-28 | 4047 |  | 7 Days Work | 9192484 |
| 4049 | 36900.37000.37100.37600.52600.76300.376000 | Flooring+Skirting | 20d | 2027-05-29 | 2027-06-17 | 4048 |  | 7 Days Work | 9192494 |
| 4050 | 36900.37000.37100.37600.52600.76300.376100 | Wall finishes | 21d | 2027-06-18 | 2027-07-08 | 4049 |  | 7 Days Work | 9192504 |
| 4051 | 36900.37000.37100.37600.52600.76300.376200 | False Ceiling | 10d | 2027-07-09 | 2027-07-18 | 4050 |  | 7 Days Work | 9192514 |
| 4052 | 36900.37000.37100.37600.52600.76300.376300 | Staircase | 15d | 2027-07-19 | 2027-08-02 | 4051 |  | 7 Days Work | 9192524 |
| 4053 | 36900.37000.37100.37600.52600.76300.376400 | Deep Cleaning | 7d | 2027-08-03 | 2027-08-09 | 4052 |  | 7 Days Work | 9192534 |
| 4054 | 36900.37000.37100.37600.52600.76200 | **19th Habitable/21st Floor** | 158d | 2027-03-14 | 2027-08-18 |  | start no earlier than 2027-03-14 | 7 Days Work | 9183924 |
| 4055 | 36900.37000.37100.37600.52600.76200.376500 | Side blockwork for lift shafts | 9d | 2027-03-14 | 2027-03-22 | 4045 |  | 7 Days Work | 9192544 |
| 4056 | 36900.37000.37100.37600.52600.76200.376600 | Door Threshold for lifts | 6d | 2027-03-23 | 2027-03-28 | 4055 |  | 7 Days Work | 9192554 |
| 4057 | 36900.37000.37100.37600.52600.76200.376700 | Granite Cladding | 10d | 2027-03-29 | 2027-04-07 | 4056 |  | 7 Days Work | 9192564 |
| 4058 | 36900.37000.37100.37600.52600.76200.376800 | MEP Services | 60d | 2027-04-08 | 2027-06-06 | 4057 |  | 7 Days Work | 9192574 |
| 4059 | 36900.37000.37100.37600.52600.76200.376900 | Flooring+Skirting | 20d | 2027-06-07 | 2027-06-26 | 4058 |  | 7 Days Work | 9192584 |
| 4060 | 36900.37000.37100.37600.52600.76200.377000 | Wall finishes | 21d | 2027-06-27 | 2027-07-17 | 4059 |  | 7 Days Work | 9192594 |
| 4061 | 36900.37000.37100.37600.52600.76200.377100 | False Ceiling | 10d | 2027-07-18 | 2027-07-27 | 4060 |  | 7 Days Work | 9192604 |
| 4062 | 36900.37000.37100.37600.52600.76200.377200 | Staircase | 15d | 2027-07-28 | 2027-08-11 | 4061 |  | 7 Days Work | 9192614 |
| 4063 | 36900.37000.37100.37600.52600.76200.377300 | Deep Cleaning | 7d | 2027-08-12 | 2027-08-18 | 4062 |  | 7 Days Work | 9043894 |

| ID | WBS | Task | Duration | Start | Finish | Predecessors | Complete | Constraint | Calendar | Unique_Task_ID |
| --- | --- | --- | --- | --- | --- | --- | --- | --- | --- | --- |
| 4064 | 36900.37000.37100.37600.68000 | **Lift** | 332d | 2025-12-20 | 2026-11-16 |  |  | start no earlier than 2025-12-20 | 7 Days Work | 9183764 |
| 4065 | 36900.37000.37100.37600.68000.119400 | Order Issue | 104d | 2025-12-20 | 2026-04-02 | 2721FS-120d |  |  | 7 Days Work | 9183964 |
| 4066 | 36900.37000.37100.37600.68000.119500 | Shop drawing approval | 30d | 2026-04-03 | 2026-05-02 | 4065 |  |  | 7 Days Work | 9183974 |
| 4067 | 36900.37000.37100.37600.68000.119600 | Material recipt | 90d | 2026-05-03 | 2026-07-31 | 4066 |  |  | 7 Days Work | 9183984 |
| 4068 | 36900.37000.37100.37600.68000.119700 | Lift Shaft Handover | 30d | 2026-08-22 | 2026-09-20 | 2731 |  |  | 7 Days Work | 9183994 |
| 4069 | 36900.37000.37100.37600.68000.119800 | Template fixing by lift contractor | 7d | 2026-09-21 | 2026-09-27 | 4068 |  |  | 7 Days Work | 9184004 |
| 4070 | 36900.37000.37100.37600.68000.119900 | Centre line marking for lift shafts | 5d | 2026-09-28 | 2026-10-02 | 4069 |  |  | 7 Days Work | 9184014 |
| 4071 | 36900.37000.37100.37600.68000.120000 | Rail & Bracket Fixing | 5d | 2026-10-03 | 2026-10-07 | 4070 |  |  | 7 Days Work | 9184024 |
| 4072 | 36900.37000.37100.37600.68000.120100 | Cage Installation | 5d | 2026-10-08 | 2026-10-12 | 4071 |  |  | 7 Days Work | 9184034 |
| 4073 | 36900.37000.37100.37600.68000.120200 | Slow Speed | 20d | 2026-10-13 | 2026-11-01 | 4072 |  |  | 7 Days Work | 9184044 |
| 4074 | 36900.37000.37100.37600.68000.120300 | High Spped | 5d | 2026-11-02 | 2026-11-06 | 4073 |  |  | 7 Days Work | 9184054 |
| 4075 | 36900.37000.37100.37600.68000.120400 | Commisioning | 7d | 2026-11-07 | 2026-11-13 | 4074 |  |  | 7 Days Work | 9184064 |
| 4076 | 36900.37000.37100.37600.68000.120500 | Handover | 3d | 2026-11-14 | 2026-11-16 | 4075 |  |  | 7 Days Work | 9043884 |
| 4077 | 36900.37000.37100.37600.94800 | External Paint | 90d | 2026-11-30 | 2027-02-27 | 2730FS+135d |  |  | 7 Days Work | 9145954 |
| 4078 | 36900.37000.37100.37200 | **Tower-4** | 880d | 2025-03-03 | 2027-07-30 |  |  | start no earlier than 2025-03-03 | 7 Days Work | 9042634 |
| 4079 | 36900.37000.37100.37200.83500 | Pilling | 125d | 2025-03-03 | 2025-07-06 | 2705SS+1d | 22% | start no earlier than 2025-03-03 | 7 Days Work | 9043904 |
| 4080 | 36900.37000.37100.37200.94900 | Excavation & Pile Breaking | 37d | 2025-07-07 | 2025-08-12 | 4079 |  |  | 7 Days Work | 9043905 |
| 4081 | 36900.37000.37100.37200.95000 | Pilecap | 26d | 2025-08-13 | 2025-09-07 | 4080 |  |  | 7 Days Work | 9043914 |
| 4082 | 36900.37000.37100.37200.95100 | up to PL | 22d | 2025-09-08 | 2025-09-29 | 4081 |  |  | 7 Days Work | 9043924 |
| 4083 | 36900.37000.37100.37200.95200 | 1st Floor Slab RCC | 25d | 2025-09-30 | 2025-10-24 | 4082 |  |  | 7 Days Work | 9043934 |
| 4084 | 36900.37000.37100.37200.95300 | 2nd Floor Slab RCC | 25d | 2025-10-25 | 2025-11-18 | 4083 |  |  | 7 Days Work | 9043944 |
| 4085 | 36900.37000.37100.37200.95400 | 3rd Floor Slab RCC | 21d | 2025-11-19 | 2025-12-09 | 4084 |  |  | 7 Days Work | 9043954 |
| 4086 | 36900.37000.37100.37200.95500 | 4th Floor Slab RCC | 15d | 2025-12-10 | 2025-12-24 | 4085 |  |  | 7 Days Work | 9043964 |
| 4087 | 36900.37000.37100.37200.95600 | 5th Floor Slab RCC | 9d | 2025-12-25 | 2026-01-02 | 4086 |  |  | 7 Days Work | 9043974 |
| 4088 | 36900.37000.37100.37200.95700 | 6th Floor Slab RCC | 9d | 2026-01-03 | 2026-01-11 | 4087 |  |  | 7 Days Work | 9043984 |
| 4089 | 36900.37000.37100.37200.95800 | 7th Floor Slab RCC | 12d | 2026-01-12 | 2026-01-23 | 4088 |  |  | 7 Days Work | 9043994 |
| 4090 | 36900.37000.37100.37200.95900 | 8th Floor Slab RCC | 9d | 2026-01-24 | 2026-02-01 | 4089 |  |  | 7 Days Work | 9044004 |
| 4091 | 36900.37000.37100.37200.96000 | 9th Floor Slab RCC | 9d | 2026-02-02 | 2026-02-10 | 4090 |  |  | 7 Days Work | 9044014 |
| 4092 | 36900.37000.37100.37200.96100 | 10th Floor Slab RCC | 9d | 2026-02-11 | 2026-02-19 | 4091 |  |  | 7 Days Work | 9044024 |
| 4093 | 36900.37000.37100.37200.96200 | 11th Floor Slab RCC | 12d | 2026-02-20 | 2026-03-03 | 4092 |  |  | 7 Days Work | 9044034 |
| 4094 | 36900.37000.37100.37200.96300 | 12th Floor Slab RCC | 9d | 2026-03-04 | 2026-03-12 | 4093 |  |  | 7 Days Work | 9044044 |
| 4095 | 36900.37000.37100.37200.96400 | 13th Floor Slab RCC | 9d | 2026-03-13 | 2026-03-21 | 4094 |  |  | 7 Days Work | 9044054 |
| 4096 | 36900.37000.37100.37200.96500 | 14th Floor Slab RCC | 9d | 2026-03-22 | 2026-03-30 | 4095 |  |  | 7 Days Work | 9044064 |
| 4097 | 36900.37000.37100.37200.96600 | 15th Floor Slab RCC | 12d | 2026-03-31 | 2026-04-11 | 4096 |  |  | 7 Days Work | 9044074 |
| 4098 | 36900.37000.37100.37200.96700 | 16th Floor Slab RCC | 9d | 2026-04-12 | 2026-04-20 | 4097 |  |  | 7 Days Work | 9044084 |
| 4099 | 36900.37000.37100.37200.96800 | 17th Floor Slab RCC | 9d | 2026-04-21 | 2026-04-29 | 4098 |  |  | 7 Days Work | 9044094 |
| 4100 | 36900.37000.37100.37200.96900 | 18th Floor Slab RCC | 9d | 2026-04-30 | 2026-05-08 | 4099 |  |  | 7 Days Work | 9044104 |
| 4101 | 36900.37000.37100.37200.97000 | 19th Floor Slab RCC | 12d | 2026-05-09 | 2026-05-20 | 4100 |  |  | 7 Days Work | 9044114 |
| 4102 | 36900.37000.37100.37200.97100 | 20th Floor Slab RCC | 9d | 2026-05-21 | 2026-05-29 | 4101 |  |  | 7 Days Work | 9044124 |
| 4103 | 36900.37000.37100.37200.97200 | 21st Floor Slab RCC | 9d | 2026-05-30 | 2026-06-07 | 4102 |  |  | 7 Days Work | 9044134 |
| 4104 | 36900.37000.37100.37200.97300 | Terrace | 12d | 2026-06-08 | 2026-06-19 | 4103 |  |  | 7 Days Work | 9044144 |
| 4105 | 36900.37000.37100.37200.97400 | Above Terrace | 35d | 2026-06-20 | 2026-07-24 | 4104 |  |  | 7 Days Work | 9044145 |

| ID | WBS | Task | Duration | Start | Finish | Predecessors | Constraint | Calendar | Unique_Task_ID |
| --- | --- | --- | --- | --- | --- | --- | --- | --- | --- |
| 4106 | 36900.37000.37100.37200.37900 | **Flat Finishing** | 437d | 2025-12-25 | 2027-03-06 |  | start no earlier than 2025-12-25 | 7 Days Work | 9196814 |
| 4107 | 36900.37000.37100.37200.37900.44200 | **1st Habitable/2nd Floor** | 245d | 2025-12-25 | 2026-08-26 |  | start no earlier than 2025-12-25 | 7 Days Work | 9196824 |
| 4108 | 36900.37000.37100.37200.37900.44200.377400 | Post Pour | 7d | 2025-12-25 | 2025-12-31 | 4085FS+15d |  | 7 Days Work | 9197534 |
| 4109 | 36900.37000.37100.37200.37900.44200.377500 | MEP Clearance -1 | 5d | 2026-01-01 | 2026-01-05 | 4108 |  | 7 Days Work | 9197544 |
| 4110 | 36900.37000.37100.37200.37900.44200.377600 | Benchmark | 1d | 2026-01-06 | 2026-01-06 | 4109 |  | 7 Days Work | 9197554 |
| 4111 | 36900.37000.37100.37200.37900.44200.377700 | Temporary Railing | 3d | 2026-01-07 | 2026-01-09 | 4110 |  | 7 Days Work | 9197564 |
| 4112 | 36900.37000.37100.37200.37900.44200.377800 | Blockwork | 10d | 2026-01-10 | 2026-01-19 | 4111 |  | 7 Days Work | 9197574 |
| 4113 | 36900.37000.37100.37200.37900.44200.377900 | MEP Clearance -2 | 10d | 2026-01-20 | 2026-01-29 | 4112 |  | 7 Days Work | 9197584 |
| 4114 | 36900.37000.37100.37200.37900.44200.378000 | Gypsum Plaster | 14d | 2026-01-30 | 2026-02-12 | 4113 |  | 7 Days Work | 9197594 |
| 4115 | 36900.37000.37100.37200.37900.44200.378100 | Kitchen Platform | 3d | 2026-02-13 | 2026-02-15 | 4114 |  | 7 Days Work | 9197604 |
| 4116 | 36900.37000.37100.37200.37900.44200.378200 | Kitchen dado | 7d | 2026-02-16 | 2026-02-22 | 4115 |  | 7 Days Work | 9197614 |
| 4117 | 36900.37000.37100.37200.37900.44200.378300 | Fire Fighting | 5d | 2026-02-23 | 2026-02-27 | 4116 |  | 7 Days Work | 9197624 |
| 4118 | 36900.37000.37100.37200.37900.44200.378400 | Anticapilary | 5d | 2026-02-28 | 2026-03-04 | 4117 |  | 7 Days Work | 9197634 |
| 4119 | 36900.37000.37100.37200.37900.44200.378500 | Stone Laying | 10d | 2026-04-07 | 2026-04-16 | 4159 |  | 7 Days Work | 9197644 |
| 4120 | 36900.37000.37100.37200.37900.44200.378600 | Tiles Laying | 7d | 2026-04-07 | 2026-04-13 | 4159 |  | 7 Days Work | 9197654 |
| 4121 | 36900.37000.37100.37200.37900.44200.378700 | 1st cutting/polishing of stone flooring | 7d | 2026-04-14 | 2026-04-20 | 4120 |  | 7 Days Work | 9197664 |
| 4122 | 36900.37000.37100.37200.37900.44200.378800 | Tiles/Stone skirting | 5d | 2026-04-21 | 2026-04-25 | 4121 |  | 7 Days Work | 9197674 |
| 4123 | 36900.37000.37100.37200.37900.44200.378900 | Protechtion sheet | 1d | 2026-04-26 | 2026-04-26 | 4122 |  | 7 Days Work | 9197684 |
| 4124 | 36900.37000.37100.37200.37900.44200.379000 | Installation of Temporary Door | 1d | 2026-04-27 | 2026-04-27 | 4123 |  | 7 Days Work | 9197694 |
| 4125 | 36900.37000.37100.37200.37900.44200.379100 | Fixing of window tracks | 5d | 2026-04-28 | 2026-05-02 | 4124 |  | 7 Days Work | 9197704 |
| 4126 | 36900.37000.37100.37200.37900.44200.379200 | Wire Pulling | 7d | 2026-05-03 | 2026-05-09 | 4125 |  | 7 Days Work | 9197714 |
| 4127 | 36900.37000.37100.37200.37900.44200.379300 | Gypsum Remaining | 5d | 2026-05-10 | 2026-05-14 | 4126 |  | 7 Days Work | 9197724 |
| 4128 | 36900.37000.37100.37200.37900.44200.379400 | Fixing of windoow shutter | 5d | 2026-05-15 | 2026-05-19 | 4127 |  | 7 Days Work | 9197734 |
| 4129 | 36900.37000.37100.37200.37900.44200.379500 | Putty Works - walls & ceiling | 15d | 2026-05-20 | 2026-06-03 | 4128 |  | 7 Days Work | 9197744 |
| 4130 | 36900.37000.37100.37200.37900.44200.379600 | False Ceiling- Framing | 10d | 2026-06-04 | 2026-06-13 | 4129 |  | 7 Days Work | 9197754 |
| 4131 | 36900.37000.37100.37200.37900.44200.379700 | Pre Hung Door | 3d | 2026-06-14 | 2026-06-16 | 4130 |  | 7 Days Work | 9197764 |
| 4132 | 36900.37000.37100.37200.37900.44200.379800 | Protechtion sheet | 2d | 2026-06-17 | 2026-06-18 | 4131 |  | 7 Days Work | 9197774 |
| 4133 | 36900.37000.37100.37200.37900.44200.379900 | Skirting near door | 2d | 2026-06-19 | 2026-06-20 | 4132 |  | 7 Days Work | 9197784 |
| 4134 | 36900.37000.37100.37200.37900.44200.380000 | Electrical Switch box fixing | 14d | 2026-06-21 | 2026-07-04 | 4133 |  | 7 Days Work | 9197794 |
| 4135 | 36900.37000.37100.37200.37900.44200.380100 | Fire Fighting painting | 5d | 2026-07-05 | 2026-07-09 | 4134 |  | 7 Days Work | 9197804 |
| 4136 | 36900.37000.37100.37200.37900.44200.380200 | Protection of all flooring, door & window hardware | 5d | 2026-07-10 | 2026-07-14 | 4135 |  | 7 Days Work | 9197814 |
| 4137 | 36900.37000.37100.37200.37900.44200.380300 | 1st coat primer- ceiling 1st & walls | 14d | 2026-07-15 | 2026-07-28 | 4136 |  | 7 Days Work | 9197824 |
| 4138 | 36900.37000.37100.37200.37900.44200.380400 | Wooden Flooring | 5d | 2026-07-29 | 2026-08-02 | 4137 |  | 7 Days Work | 9197834 |
| 4139 | 36900.37000.37100.37200.37900.44200.380500 | Removing of Temporary Railing & installation of Glass Railing | 5d | 2026-07-29 | 2026-08-02 | 4137 |  | 7 Days Work | 9197844 |
| 4140 | 36900.37000.37100.37200.37900.44200.380600 | Tile Grouting | 7d | 2026-07-29 | 2026-08-04 | 4137 |  | 7 Days Work | 9197854 |
| 4141 | 36900.37000.37100.37200.37900.44200.380700 | False Ceiling | 5d | 2026-08-05 | 2026-08-09 | 4140 |  | 7 Days Work | 9197864 |
| 4142 | 36900.37000.37100.37200.37900.44200.380800 | 2nd coat of primer | 10d | 2026-08-10 | 2026-08-19 | 4141 |  | 7 Days Work | 9197874 |
| 4143 | 36900.37000.37100.37200.37900.44200.380900 | Final cutting/polishing of stone flooring | 7d | 2026-08-20 | 2026-08-26 | 4142 |  | 7 Days Work | 9197884 |

| ID | WBS | Task | Duration | Start | Finish | Predecessors | Constraint | Calendar | Unique_Task_ID |
| --- | --- | --- | --- | --- | --- | --- | --- | --- | --- |
| 4144 | 36900.37000.37100.37200.37900.44200.61900 | **Toilet** | 237d | 2026-01-01 | 2026-08-25 |  | start no earlier than 2026-01-01 | 7 Days Work | 9197024 |
| 4145 | 36900.37000.37100.37200.37900.44200.61900.860800 | Toilet_MEP Clearance -1 | 7d | 2026-01-01 | 2026-01-07 | 4108 |  | 7 Days Work | 9206084 |
| 4146 | 36900.37000.37100.37200.37900.44200.61900.860900 | Toilet_Level Marking | 1d | 2026-01-08 | 2026-01-08 | 4145 |  | 7 Days Work | 9206094 |
| 4147 | 36900.37000.37100.37200.37900.44200.61900.861000 | Toilet_Chasing work for Electrical conduit & concealed plumbing | 5d | 2026-01-09 | 2026-01-13 | 4146 |  | 7 Days Work | 9206104 |
| 4148 | 36900.37000.37100.37200.37900.44200.61900.861100 | Toilet_Plumbing work 1st fix | 5d | 2026-01-14 | 2026-01-18 | 4147 |  | 7 Days Work | 9206114 |
| 4149 | 36900.37000.37100.37200.37900.44200.61900.861200 | Toilet_Sleeve/Bore Packing | 5d | 2026-01-19 | 2026-01-23 | 4148 |  | 7 Days Work | 9206124 |
| 4150 | 36900.37000.37100.37200.37900.44200.61900.861300 | Toilet_Waterproofing | 10d | 2026-01-24 | 2026-02-02 | 4149 |  | 7 Days Work | 9206134 |
| 4151 | 36900.37000.37100.37200.37900.44200.61900.861400 | Toilet_Screed | 1d | 2026-02-03 | 2026-02-03 | 4150 |  | 7 Days Work | 9206144 |
| 4152 | 36900.37000.37100.37200.37900.44200.61900.861500 | Toilet_Plumbing 2nd fix | 5d | 2026-02-04 | 2026-02-08 | 4151 |  | 7 Days Work | 9206154 |
| 4153 | 36900.37000.37100.37200.37900.44200.61900.861600 | Toilet_Ledge wall | 5d | 2026-02-09 | 2026-02-13 | 4152 |  | 7 Days Work | 9206164 |
| 4154 | 36900.37000.37100.37200.37900.44200.61900.861700 | Toilet_Cement Plaster | 5d | 2026-02-14 | 2026-02-18 | 4153 |  | 7 Days Work | 9206174 |
| 4155 | 36900.37000.37100.37200.37900.44200.61900.861800 | Toilet_Door Frame | 1d | 2026-02-19 | 2026-02-19 | 4154 |  | 7 Days Work | 9206184 |
| 4156 | 36900.37000.37100.37200.37900.44200.61900.861900 | Toilet_Wash basin & Couter | 3d | 2026-02-20 | 2026-02-22 | 4155 |  | 7 Days Work | 9206194 |
| 4157 | 36900.37000.37100.37200.37900.44200.61900.862000 | Toilet_Wall dado | 20d | 2026-02-23 | 2026-03-14 | 4156 |  | 7 Days Work | 9206204 |
| 4158 | 36900.37000.37100.37200.37900.44200.61900.862100 | Toilet_Granite Work-Ledge wall top | 3d | 2026-03-15 | 2026-03-17 | 4157 |  | 7 Days Work | 9206214 |
| 4159 | 36900.37000.37100.37200.37900.44200.61900.862200 | Toilet_Floor Tilling work | 20d | 2026-03-18 | 2026-04-06 | 4158 |  | 7 Days Work | 9206224 |
| 4160 | 36900.37000.37100.37200.37900.44200.61900.862300 | Toilet_1st row of dado | 5d | 2026-04-07 | 2026-04-11 | 4159 |  | 7 Days Work | 9206234 |
| 4161 | 36900.37000.37100.37200.37900.44200.61900.862400 | Toilet_Window Fixing | 14d | 2026-04-12 | 2026-04-25 | 4160 |  | 7 Days Work | 9206244 |
| 4162 | 36900.37000.37100.37200.37900.44200.61900.862500 | Toilet_Services above False ceiling | 21d | 2026-04-26 | 2026-05-16 | 4161 |  | 7 Days Work | 9206254 |
| 4163 | 36900.37000.37100.37200.37900.44200.61900.862600 | Toilet_False Ceiling framing | 12d | 2026-05-17 | 2026-05-28 | 4162 |  | 7 Days Work | 9206264 |
| 4164 | 36900.37000.37100.37200.37900.44200.61900.862700 | Toilet_Door Frame | 5d | 2026-05-29 | 2026-06-02 | 4163 |  | 7 Days Work | 9206274 |
| 4165 | 36900.37000.37100.37200.37900.44200.61900.862800 | Toilet_Epoxy Tile Grouting | 7d | 2026-07-29 | 2026-08-04 | 4140SS |  | 7 Days Work | 9206284 |
| 4166 | 36900.37000.37100.37200.37900.44200.61900.862900 | Toilet_False ceiling board fixing, CP Sanitary Fixture, Electric Fixture | 21d | 2026-08-05 | 2026-08-25 | 4165 |  | 7 Days Work | 9206294 |
| 4167 | 36900.37000.37100.37200.37900.44300 | **2nd Habitable/3rd Floor** | 245d | 2026-01-09 | 2026-09-10 |  | start no earlier than 2026-01-09 | 7 Days Work | 9196834 |
| 4168 | 36900.37000.37100.37200.37900.44300.381000 | Post Pour | 7d | 2026-01-09 | 2026-01-15 | 4086FS+15d |  | 7 Days Work | 9197894 |
| 4169 | 36900.37000.37100.37200.37900.44300.381100 | MEP Clearance -1 | 5d | 2026-01-16 | 2026-01-20 | 4168 |  | 7 Days Work | 9197904 |
| 4170 | 36900.37000.37100.37200.37900.44300.381200 | Benchmark | 1d | 2026-01-21 | 2026-01-21 | 4169 |  | 7 Days Work | 9197914 |
| 4171 | 36900.37000.37100.37200.37900.44300.381300 | Temporary Railing | 3d | 2026-01-22 | 2026-01-24 | 4170 |  | 7 Days Work | 9197924 |
| 4172 | 36900.37000.37100.37200.37900.44300.381400 | Blockwork | 10d | 2026-01-25 | 2026-02-03 | 4171 |  | 7 Days Work | 9197934 |
| 4173 | 36900.37000.37100.37200.37900.44300.381500 | MEP Clearance -2 | 10d | 2026-02-04 | 2026-02-13 | 4172 |  | 7 Days Work | 9197944 |
| 4174 | 36900.37000.37100.37200.37900.44300.381600 | Gypsum Plaster | 14d | 2026-02-14 | 2026-02-27 | 4173 |  | 7 Days Work | 9197954 |
| 4175 | 36900.37000.37100.37200.37900.44300.381700 | Kitchen Platform | 3d | 2026-02-28 | 2026-03-02 | 4174 |  | 7 Days Work | 9197964 |
| 4176 | 36900.37000.37100.37200.37900.44300.381800 | Kitchen dado | 7d | 2026-03-03 | 2026-03-09 | 4175 |  | 7 Days Work | 9197974 |
| 4177 | 36900.37000.37100.37200.37900.44300.381900 | Fire Fighting | 5d | 2026-03-10 | 2026-03-14 | 4176 |  | 7 Days Work | 9197984 |
| 4178 | 36900.37000.37100.37200.37900.44300.382000 | Anticapilary | 5d | 2026-03-15 | 2026-03-19 | 4177 |  | 7 Days Work | 9197994 |
| 4179 | 36900.37000.37100.37200.37900.44300.382100 | Stone Laying | 10d | 2026-04-22 | 2026-05-01 | 4219 |  | 7 Days Work | 9198004 |
| 4180 | 36900.37000.37100.37200.37900.44300.382200 | Tiles Laying | 7d | 2026-04-22 | 2026-04-28 | 4219 |  | 7 Days Work | 9198014 |
| 4181 | 36900.37000.37100.37200.37900.44300.382300 | 1st cutting/polishing of stone flooring | 7d | 2026-04-29 | 2026-05-05 | 4180 |  | 7 Days Work | 9198024 |
| 4182 | 36900.37000.37100.37200.37900.44300.382400 | Tiles/Stone skirting | 5d | 2026-05-06 | 2026-05-10 | 4181 |  | 7 Days Work | 9198034 |
| 4183 | 36900.37000.37100.37200.37900.44300.382500 | Protechtion sheet | 1d | 2026-05-11 | 2026-05-11 | 4182 |  | 7 Days Work | 9198044 |
| 4184 | 36900.37000.37100.37200.37900.44300.382600 | Installation of Temporary Door | 1d | 2026-05-12 | 2026-05-12 | 4183 |  | 7 Days Work | 9198054 |
| 4185 | 36900.37000.37100.37200.37900.44300.382700 | Fixing of window tracks | 5d | 2026-05-13 | 2026-05-17 | 4184 |  | 7 Days Work | 9198064 |
| 4186 | 36900.37000.37100.37200.37900.44300.382800 | Wire Pulling | 7d | 2026-05-18 | 2026-05-24 | 4185 |  | 7 Days Work | 9198074 |
| 4187 | 36900.37000.37100.37200.37900.44300.382900 | Gypsum Remaining | 5d | 2026-05-25 | 2026-05-29 | 4186 |  | 7 Days Work | 9198084 |
| 4188 | 36900.37000.37100.37200.37900.44300.383000 | Fixing of windoow shutter | 5d | 2026-05-30 | 2026-06-03 | 4187 |  | 7 Days Work | 9198094 |
| 4189 | 36900.37000.37100.37200.37900.44300.383100 | Putty Works - walls & ceiling | 15d | 2026-06-04 | 2026-06-18 | 4188 |  | 7 Days Work | 9198104 |
| 4190 | 36900.37000.37100.37200.37900.44300.383200 | False Ceiling- Framing | 10d | 2026-06-19 | 2026-06-28 | 4189 |  | 7 Days Work | 9198114 |
| 4191 | 36900.37000.37100.37200.37900.44300.383300 | Pre Hung Door | 3d | 2026-06-29 | 2026-07-01 | 4190 |  | 7 Days Work | 9198124 |
| 4192 | 36900.37000.37100.37200.37900.44300.383400 | Protechtion sheet | 2d | 2026-07-02 | 2026-07-03 | 4191 |  | 7 Days Work | 9198134 |
| 4193 | 36900.37000.37100.37200.37900.44300.383500 | Skirting near door | 2d | 2026-07-04 | 2026-07-05 | 4192 |  | 7 Days Work | 9198144 |
| 4194 | 36900.37000.37100.37200.37900.44300.383600 | Electrical Switch box fixing | 14d | 2026-07-06 | 2026-07-19 | 4193 |  | 7 Days Work | 9198154 |
| 4195 | 36900.37000.37100.37200.37900.44300.383700 | Fire Fighting painting | 5d | 2026-07-20 | 2026-07-24 | 4194 |  | 7 Days Work | 9198164 |
| 4196 | 36900.37000.37100.37200.37900.44300.383800 | Protection of all flooring, door & window hardware | 5d | 2026-07-25 | 2026-07-29 | 4195 |  | 7 Days Work | 9198174 |
| 4197 | 36900.37000.37100.37200.37900.44300.383900 | 1st coat primer- ceiling 1st & walls | 14d | 2026-07-30 | 2026-08-12 | 4196 |  | 7 Days Work | 9198184 |
| 4198 | 36900.37000.37100.37200.37900.44300.384000 | Wooden Flooring | 5d | 2026-08-13 | 2026-08-17 | 4197 |  | 7 Days Work | 9198194 |
| 4199 | 36900.37000.37100.37200.37900.44300.384100 | Removing of Temporary Railing & installation of Glass Railing | 5d | 2026-08-13 | 2026-08-17 | 4197 |  | 7 Days Work | 9198204 |
| 4200 | 36900.37000.37100.37200.37900.44300.384200 | Tile Grouting | 7d | 2026-08-13 | 2026-08-19 | 4197 |  | 7 Days Work | 9198214 |
| 4201 | 36900.37000.37100.37200.37900.44300.384300 | False Ceiling | 5d | 2026-08-20 | 2026-08-24 | 4200 |  | 7 Days Work | 9198224 |
| 4202 | 36900.37000.37100.37200.37900.44300.384400 | 2nd coat of primer | 10d | 2026-08-25 | 2026-09-03 | 4201 |  | 7 Days Work | 9198234 |
| 4203 | 36900.37000.37100.37200.37900.44300.384500 | Final cutting/polishing of stone flooring | 7d | 2026-09-04 | 2026-09-10 | 4202 |  | 7 Days Work | 9198244 |

| ID | WBS | Task | Duration | Start | Finish | Predecessors | Constraint | Calendar | Unique_Task_ID |
| --- | --- | --- | --- | --- | --- | --- | --- | --- | --- |
| 4204 | 36900.37000.37100.37200.37900.44300.64600 | **Toilet** | 237d | 2026-01-16 | 2026-09-09 |  | start no earlier than 2026-01-16 | 7 Days Work | 9197034 |
| 4205 | 36900.37000.37100.37200.37900.44300.64600.863000 | Toilet_MEP Clearance -1 | 7d | 2026-01-16 | 2026-01-22 | 4168 |  | 7 Days Work | 9206304 |
| 4206 | 36900.37000.37100.37200.37900.44300.64600.863100 | Toilet_Level Marking | 1d | 2026-01-23 | 2026-01-23 | 4205 |  | 7 Days Work | 9206314 |
| 4207 | 36900.37000.37100.37200.37900.44300.64600.863200 | Toilet_Chasing work for Electrical conduit & concealed plumbing | 5d | 2026-01-24 | 2026-01-28 | 4206 |  | 7 Days Work | 9206324 |
| 4208 | 36900.37000.37100.37200.37900.44300.64600.863300 | Toilet_Plumbing work 1st fix | 5d | 2026-01-29 | 2026-02-02 | 4207 |  | 7 Days Work | 9206334 |
| 4209 | 36900.37000.37100.37200.37900.44300.64600.863400 | Toilet_Sleeve/Bore Packing | 5d | 2026-02-03 | 2026-02-07 | 4208 |  | 7 Days Work | 9206344 |
| 4210 | 36900.37000.37100.37200.37900.44300.64600.863500 | Toilet_Waterproofing | 10d | 2026-02-08 | 2026-02-17 | 4209 |  | 7 Days Work | 9206354 |
| 4211 | 36900.37000.37100.37200.37900.44300.64600.863600 | Toilet_Screed | 1d | 2026-02-18 | 2026-02-18 | 4210 |  | 7 Days Work | 9206364 |
| 4212 | 36900.37000.37100.37200.37900.44300.64600.863700 | Toilet_Plumbing 2nd fix | 5d | 2026-02-19 | 2026-02-23 | 4211 |  | 7 Days Work | 9206374 |
| 4213 | 36900.37000.37100.37200.37900.44300.64600.863800 | Toilet_Ledge wall | 5d | 2026-02-24 | 2026-02-28 | 4212 |  | 7 Days Work | 9206384 |
| 4214 | 36900.37000.37100.37200.37900.44300.64600.863900 | Toilet_Cement Plaster | 5d | 2026-03-01 | 2026-03-05 | 4213 |  | 7 Days Work | 9206394 |
| 4215 | 36900.37000.37100.37200.37900.44300.64600.864000 | Toilet_Door Frame | 1d | 2026-03-06 | 2026-03-06 | 4214 |  | 7 Days Work | 9206404 |
| 4216 | 36900.37000.37100.37200.37900.44300.64600.864100 | Toilet_Wash basin & Couter | 3d | 2026-03-07 | 2026-03-09 | 4215 |  | 7 Days Work | 9206414 |
| 4217 | 36900.37000.37100.37200.37900.44300.64600.864200 | Toilet_Wall dado | 20d | 2026-03-10 | 2026-03-29 | 4216 |  | 7 Days Work | 9206424 |
| 4218 | 36900.37000.37100.37200.37900.44300.64600.864300 | Toilet_Granite Work-Ledge wall top | 3d | 2026-03-30 | 2026-04-01 | 4217 |  | 7 Days Work | 9206434 |
| 4219 | 36900.37000.37100.37200.37900.44300.64600.864400 | Toilet_Floor Tilling work | 20d | 2026-04-02 | 2026-04-21 | 4218 |  | 7 Days Work | 9206444 |
| 4220 | 36900.37000.37100.37200.37900.44300.64600.864500 | Toilet_1st row of dado | 5d | 2026-04-22 | 2026-04-26 | 4219 |  | 7 Days Work | 9206454 |
| 4221 | 36900.37000.37100.37200.37900.44300.64600.864600 | Toilet_Window Fixing | 14d | 2026-04-27 | 2026-05-10 | 4220 |  | 7 Days Work | 9206464 |
| 4222 | 36900.37000.37100.37200.37900.44300.64600.864700 | Toilet_Services above False ceiling | 21d | 2026-05-11 | 2026-05-31 | 4221 |  | 7 Days Work | 9206474 |
| 4223 | 36900.37000.37100.37200.37900.44300.64600.864800 | Toilet_False Ceiling framing | 12d | 2026-06-01 | 2026-06-12 | 4222 |  | 7 Days Work | 9206484 |
| 4224 | 36900.37000.37100.37200.37900.44300.64600.864900 | Toilet_Door Frame | 5d | 2026-06-13 | 2026-06-17 | 4223 |  | 7 Days Work | 9206494 |
| 4225 | 36900.37000.37100.37200.37900.44300.64600.865000 | Toilet_Epoxy Tile Grouting | 7d | 2026-08-13 | 2026-08-19 | 4200SS |  | 7 Days Work | 9206504 |
| 4226 | 36900.37000.37100.37200.37900.44300.64600.865100 | Toilet_False ceiling board fixing, CP Sanitary Fixture, Electric Fixture | 21d | 2026-08-20 | 2026-09-09 | 4225 |  | 7 Days Work | 9206514 |
| 4227 | 36900.37000.37100.37200.37900.44400 | **3rd Habitable/4th Floor** | 245d | 2026-01-18 | 2026-09-19 |  | start no earlier than 2026-01-18 | 7 Days Work | 9196844 |
| 4228 | 36900.37000.37100.37200.37900.44400.384600 | Post Pour | 7d | 2026-01-18 | 2026-01-24 | 4087FS+15d |  | 7 Days Work | 9198254 |
| 4229 | 36900.37000.37100.37200.37900.44400.384700 | MEP Clearance -1 | 5d | 2026-01-25 | 2026-01-29 | 4228 |  | 7 Days Work | 9198264 |
| 4230 | 36900.37000.37100.37200.37900.44400.384800 | Benchmark | 1d | 2026-01-30 | 2026-01-30 | 4229 |  | 7 Days Work | 9198274 |
| 4231 | 36900.37000.37100.37200.37900.44400.384900 | Temporary Railing | 3d | 2026-01-31 | 2026-02-02 | 4230 |  | 7 Days Work | 9198284 |
| 4232 | 36900.37000.37100.37200.37900.44400.385000 | Blockwork | 10d | 2026-02-03 | 2026-02-12 | 4231 |  | 7 Days Work | 9198294 |
| 4233 | 36900.37000.37100.37200.37900.44400.385100 | MEP Clearance -2 | 10d | 2026-02-13 | 2026-02-22 | 4232 |  | 7 Days Work | 9198304 |
| 4234 | 36900.37000.37100.37200.37900.44400.385200 | Gypsum Plaster | 14d | 2026-02-23 | 2026-03-08 | 4233 |  | 7 Days Work | 9198314 |
| 4235 | 36900.37000.37100.37200.37900.44400.385300 | Kitchen Platform | 3d | 2026-03-09 | 2026-03-11 | 4234 |  | 7 Days Work | 9198324 |
| 4236 | 36900.37000.37100.37200.37900.44400.385400 | Kitchen dado | 7d | 2026-03-12 | 2026-03-18 | 4235 |  | 7 Days Work | 9198334 |
| 4237 | 36900.37000.37100.37200.37900.44400.385500 | Fire Fighting | 5d | 2026-03-19 | 2026-03-23 | 4236 |  | 7 Days Work | 9198344 |
| 4238 | 36900.37000.37100.37200.37900.44400.385600 | Anticapilary | 5d | 2026-03-24 | 2026-03-28 | 4237 |  | 7 Days Work | 9198354 |
| 4239 | 36900.37000.37100.37200.37900.44400.385700 | Stone Laying | 10d | 2026-05-01 | 2026-05-10 | 4279 |  | 7 Days Work | 9198364 |
| 4240 | 36900.37000.37100.37200.37900.44400.385800 | Tiles Laying | 7d | 2026-05-01 | 2026-05-07 | 4279 |  | 7 Days Work | 9198374 |
| 4241 | 36900.37000.37100.37200.37900.44400.385900 | 1st cutting/polishing of stone flooring | 7d | 2026-05-08 | 2026-05-14 | 4240 |  | 7 Days Work | 9198384 |
| 4242 | 36900.37000.37100.37200.37900.44400.386000 | Tiles/Stone skirting | 5d | 2026-05-15 | 2026-05-19 | 4241 |  | 7 Days Work | 9198394 |
| 4243 | 36900.37000.37100.37200.37900.44400.386100 | Protechtion sheet | 1d | 2026-05-20 | 2026-05-20 | 4242 |  | 7 Days Work | 9198404 |
| 4244 | 36900.37000.37100.37200.37900.44400.386200 | Installation of Temporary Door | 1d | 2026-05-21 | 2026-05-21 | 4243 |  | 7 Days Work | 9198414 |
| 4245 | 36900.37000.37100.37200.37900.44400.386300 | Fixing of window tracks | 5d | 2026-05-22 | 2026-05-26 | 4244 |  | 7 Days Work | 9198424 |
| 4246 | 36900.37000.37100.37200.37900.44400.386400 | Wire Pulling | 7d | 2026-05-27 | 2026-06-02 | 4245 |  | 7 Days Work | 9198434 |
| 4247 | 36900.37000.37100.37200.37900.44400.386500 | Gypsum Remaining | 5d | 2026-06-03 | 2026-06-07 | 4246 |  | 7 Days Work | 9198444 |
| 4248 | 36900.37000.37100.37200.37900.44400.386600 | Fixing of windoow shutter | 5d | 2026-06-08 | 2026-06-12 | 4247 |  | 7 Days Work | 9198454 |
| 4249 | 36900.37000.37100.37200.37900.44400.386700 | Putty Works - walls & ceiling | 15d | 2026-06-13 | 2026-06-27 | 4248 |  | 7 Days Work | 9198464 |
| 4250 | 36900.37000.37100.37200.37900.44400.386800 | False Ceiling- Framing | 10d | 2026-06-28 | 2026-07-07 | 4249 |  | 7 Days Work | 9198474 |
| 4251 | 36900.37000.37100.37200.37900.44400.386900 | Pre Hung Door | 3d | 2026-07-08 | 2026-07-10 | 4250 |  | 7 Days Work | 9198484 |
| 4252 | 36900.37000.37100.37200.37900.44400.387000 | Protechtion sheet | 2d | 2026-07-11 | 2026-07-12 | 4251 |  | 7 Days Work | 9198494 |
| 4253 | 36900.37000.37100.37200.37900.44400.387100 | Skirting near door | 2d | 2026-07-13 | 2026-07-14 | 4252 |  | 7 Days Work | 9198504 |
| 4254 | 36900.37000.37100.37200.37900.44400.387200 | Electrical Switch box fixing | 14d | 2026-07-15 | 2026-07-28 | 4253 |  | 7 Days Work | 9198514 |
| 4255 | 36900.37000.37100.37200.37900.44400.387300 | Fire Fighting painting | 5d | 2026-07-29 | 2026-08-02 | 4254 |  | 7 Days Work | 9198524 |
| 4256 | 36900.37000.37100.37200.37900.44400.387400 | Protection of all flooring, door & window hardware | 5d | 2026-08-03 | 2026-08-07 | 4255 |  | 7 Days Work | 9198534 |
| 4257 | 36900.37000.37100.37200.37900.44400.387500 | 1st coat primer- ceiling 1st & walls | 14d | 2026-08-08 | 2026-08-21 | 4256 |  | 7 Days Work | 9198544 |
| 4258 | 36900.37000.37100.37200.37900.44400.387600 | Wooden Flooring | 5d | 2026-08-22 | 2026-08-26 | 4257 |  | 7 Days Work | 9198554 |
| 4259 | 36900.37000.37100.37200.37900.44400.387700 | Removing of Temporary Railing & installation of Glass Railing | 5d | 2026-08-22 | 2026-08-26 | 4257 |  | 7 Days Work | 9198564 |
| 4260 | 36900.37000.37100.37200.37900.44400.387800 | Tile Grouting | 7d | 2026-08-22 | 2026-08-28 | 4257 |  | 7 Days Work | 9198574 |
| 4261 | 36900.37000.37100.37200.37900.44400.387900 | False Ceiling | 5d | 2026-08-29 | 2026-09-02 | 4260 |  | 7 Days Work | 9198584 |
| 4262 | 36900.37000.37100.37200.37900.44400.388000 | 2nd coat of primer | 10d | 2026-09-03 | 2026-09-12 | 4261 |  | 7 Days Work | 9198594 |
| 4263 | 36900.37000.37100.37200.37900.44400.388100 | Final cutting/polishing of stone flooring | 7d | 2026-09-13 | 2026-09-19 | 4262 |  | 7 Days Work | 9198604 |

| ID | WBS | Task | Duration | Start | Finish | Predecessors | Constraint | Calendar | Unique_Task_ID |
| --- | --- | --- | --- | --- | --- | --- | --- | --- | --- |
| 4264 | 36900.37000.37100.37200.37900.44400.64700 | **Toilet** | 237d | 2026-01-25 | 2026-09-18 |  | start no earlier than 2026-01-25 | 7 Days Work | 9197044 |
| 4265 | 36900.37000.37100.37200.37900.44400.64700.865200 | Toilet_MEP Clearance -1 | 7d | 2026-01-25 | 2026-01-31 | 4228 |  | 7 Days Work | 9206524 |
| 4266 | 36900.37000.37100.37200.37900.44400.64700.865300 | Toilet_Level Marking | 1d | 2026-02-01 | 2026-02-01 | 4265 |  | 7 Days Work | 9206534 |
| 4267 | 36900.37000.37100.37200.37900.44400.64700.865400 | Toilet_Chasing work for Electrical conduit & concealed plumbing | 5d | 2026-02-02 | 2026-02-06 | 4266 |  | 7 Days Work | 9206544 |
| 4268 | 36900.37000.37100.37200.37900.44400.64700.865500 | Toilet_Plumbing work 1st fix | 5d | 2026-02-07 | 2026-02-11 | 4267 |  | 7 Days Work | 9206554 |
| 4269 | 36900.37000.37100.37200.37900.44400.64700.865600 | Toilet_Sleeve/Bore Packing | 5d | 2026-02-12 | 2026-02-16 | 4268 |  | 7 Days Work | 9206564 |
| 4270 | 36900.37000.37100.37200.37900.44400.64700.865700 | Toilet_Waterproofing | 10d | 2026-02-17 | 2026-02-26 | 4269 |  | 7 Days Work | 9206574 |
| 4271 | 36900.37000.37100.37200.37900.44400.64700.865800 | Toilet_Screed | 1d | 2026-02-27 | 2026-02-27 | 4270 |  | 7 Days Work | 9206584 |
| 4272 | 36900.37000.37100.37200.37900.44400.64700.865900 | Toilet_Plumbing 2nd fix | 5d | 2026-02-28 | 2026-03-04 | 4271 |  | 7 Days Work | 9206594 |
| 4273 | 36900.37000.37100.37200.37900.44400.64700.866000 | Toilet_Ledge wall | 5d | 2026-03-05 | 2026-03-09 | 4272 |  | 7 Days Work | 9206604 |
| 4274 | 36900.37000.37100.37200.37900.44400.64700.866100 | Toilet_Cement Plaster | 5d | 2026-03-10 | 2026-03-14 | 4273 |  | 7 Days Work | 9206614 |
| 4275 | 36900.37000.37100.37200.37900.44400.64700.866200 | Toilet_Door Frame | 1d | 2026-03-15 | 2026-03-15 | 4274 |  | 7 Days Work | 9206624 |
| 4276 | 36900.37000.37100.37200.37900.44400.64700.866300 | Toilet_Wash basin & Couter | 3d | 2026-03-16 | 2026-03-18 | 4275 |  | 7 Days Work | 9206634 |
| 4277 | 36900.37000.37100.37200.37900.44400.64700.866400 | Toilet_Wall dado | 20d | 2026-03-19 | 2026-04-07 | 4276 |  | 7 Days Work | 9206644 |
| 4278 | 36900.37000.37100.37200.37900.44400.64700.866500 | Toilet_Granite Work-Ledge wall top | 3d | 2026-04-08 | 2026-04-10 | 4277 |  | 7 Days Work | 9206654 |
| 4279 | 36900.37000.37100.37200.37900.44400.64700.866600 | Toilet_Floor Tilling work | 20d | 2026-04-11 | 2026-04-30 | 4278 |  | 7 Days Work | 9206664 |
| 4280 | 36900.37000.37100.37200.37900.44400.64700.866700 | Toilet_1st row of dado | 5d | 2026-05-01 | 2026-05-05 | 4279 |  | 7 Days Work | 9206674 |
| 4281 | 36900.37000.37100.37200.37900.44400.64700.866800 | Toilet_Window Fixing | 14d | 2026-05-06 | 2026-05-19 | 4280 |  | 7 Days Work | 9206684 |
| 4282 | 36900.37000.37100.37200.37900.44400.64700.866900 | Toilet_Services above False ceiling | 21d | 2026-05-20 | 2026-06-09 | 4281 |  | 7 Days Work | 9206694 |
| 4283 | 36900.37000.37100.37200.37900.44400.64700.867000 | Toilet_False Ceiling framing | 12d | 2026-06-10 | 2026-06-21 | 4282 |  | 7 Days Work | 9206704 |
| 4284 | 36900.37000.37100.37200.37900.44400.64700.867100 | Toilet_Door Frame | 5d | 2026-06-22 | 2026-06-26 | 4283 |  | 7 Days Work | 9206714 |
| 4285 | 36900.37000.37100.37200.37900.44400.64700.867200 | Toilet_Epoxy Tile Grouting | 7d | 2026-08-22 | 2026-08-28 | 4260SS |  | 7 Days Work | 9206724 |
| 4286 | 36900.37000.37100.37200.37900.44400.64700.867300 | Toilet_False ceiling board fixing, CP Sanitary Fixture, Electric Fixture | 21d | 2026-08-29 | 2026-09-18 | 4285 |  | 7 Days Work | 9206734 |
| 4287 | 36900.37000.37100.37200.37900.44500 | **4th Habitable/5th Floor** | 245d | 2026-01-27 | 2026-09-28 |  | start no earlier than 2026-01-27 | 7 Days Work | 9196854 |
| 4288 | 36900.37000.37100.37200.37900.44500.388200 | Post Pour | 7d | 2026-01-27 | 2026-02-02 | 4088FS+15d |  | 7 Days Work | 9198614 |
| 4289 | 36900.37000.37100.37200.37900.44500.388300 | MEP Clearance -1 | 5d | 2026-02-03 | 2026-02-07 | 4288 |  | 7 Days Work | 9198624 |
| 4290 | 36900.37000.37100.37200.37900.44500.388400 | Benchmark | 1d | 2026-02-08 | 2026-02-08 | 4289 |  | 7 Days Work | 9198634 |
| 4291 | 36900.37000.37100.37200.37900.44500.388500 | Temporary Railing | 3d | 2026-02-09 | 2026-02-11 | 4290 |  | 7 Days Work | 9198644 |
| 4292 | 36900.37000.37100.37200.37900.44500.388600 | Blockwork | 10d | 2026-02-12 | 2026-02-21 | 4291 |  | 7 Days Work | 9198654 |
| 4293 | 36900.37000.37100.37200.37900.44500.388700 | MEP Clearance -2 | 10d | 2026-02-22 | 2026-03-03 | 4292 |  | 7 Days Work | 9198664 |
| 4294 | 36900.37000.37100.37200.37900.44500.388800 | Gypsum Plaster | 14d | 2026-03-04 | 2026-03-17 | 4293 |  | 7 Days Work | 9198674 |
| 4295 | 36900.37000.37100.37200.37900.44500.388900 | Kitchen Platform | 3d | 2026-03-18 | 2026-03-20 | 4294 |  | 7 Days Work | 9198684 |
| 4296 | 36900.37000.37100.37200.37900.44500.389000 | Kitchen dado | 7d | 2026-03-21 | 2026-03-27 | 4295 |  | 7 Days Work | 9198694 |
| 4297 | 36900.37000.37100.37200.37900.44500.389100 | Fire Fighting | 5d | 2026-03-28 | 2026-04-01 | 4296 |  | 7 Days Work | 9198704 |
| 4298 | 36900.37000.37100.37200.37900.44500.389200 | Anticapilary | 5d | 2026-04-02 | 2026-04-06 | 4297 |  | 7 Days Work | 9198714 |
| 4299 | 36900.37000.37100.37200.37900.44500.389300 | Stone Laying | 10d | 2026-05-10 | 2026-05-19 | 4339 |  | 7 Days Work | 9198724 |
| 4300 | 36900.37000.37100.37200.37900.44500.389400 | Tiles Laying | 7d | 2026-05-10 | 2026-05-16 | 4339 |  | 7 Days Work | 9198734 |
| 4301 | 36900.37000.37100.37200.37900.44500.389500 | 1st cutting/polishing of stone flooring | 7d | 2026-05-17 | 2026-05-23 | 4300 |  | 7 Days Work | 9198744 |
| 4302 | 36900.37000.37100.37200.37900.44500.389600 | Tiles/Stone skirting | 5d | 2026-05-24 | 2026-05-28 | 4301 |  | 7 Days Work | 9198754 |
| 4303 | 36900.37000.37100.37200.37900.44500.389700 | Protechtion sheet | 1d | 2026-05-29 | 2026-05-29 | 4302 |  | 7 Days Work | 9198764 |
| 4304 | 36900.37000.37100.37200.37900.44500.389800 | Installation of Temporary Door | 1d | 2026-05-30 | 2026-05-30 | 4303 |  | 7 Days Work | 9198774 |
| 4305 | 36900.37000.37100.37200.37900.44500.389900 | Fixing of window tracks | 5d | 2026-05-31 | 2026-06-04 | 4304 |  | 7 Days Work | 9198784 |
| 4306 | 36900.37000.37100.37200.37900.44500.390000 | Wire Pulling | 7d | 2026-06-05 | 2026-06-11 | 4305 |  | 7 Days Work | 9198794 |
| 4307 | 36900.37000.37100.37200.37900.44500.390100 | Gypsum Remaining | 5d | 2026-06-12 | 2026-06-16 | 4306 |  | 7 Days Work | 9198804 |
| 4308 | 36900.37000.37100.37200.37900.44500.390200 | Fixing of windoow shutter | 5d | 2026-06-17 | 2026-06-21 | 4307 |  | 7 Days Work | 9198814 |
| 4309 | 36900.37000.37100.37200.37900.44500.390300 | Putty Works - walls & ceiling | 15d | 2026-06-22 | 2026-07-06 | 4308 |  | 7 Days Work | 9198824 |
| 4310 | 36900.37000.37100.37200.37900.44500.390400 | False Ceiling- Framing | 10d | 2026-07-07 | 2026-07-16 | 4309 |  | 7 Days Work | 9198834 |
| 4311 | 36900.37000.37100.37200.37900.44500.390500 | Pre Hung Door | 3d | 2026-07-17 | 2026-07-19 | 4310 |  | 7 Days Work | 9198844 |
| 4312 | 36900.37000.37100.37200.37900.44500.390600 | Protechtion sheet | 2d | 2026-07-20 | 2026-07-21 | 4311 |  | 7 Days Work | 9198854 |
| 4313 | 36900.37000.37100.37200.37900.44500.390700 | Skirting near door | 2d | 2026-07-22 | 2026-07-23 | 4312 |  | 7 Days Work | 9198864 |
| 4314 | 36900.37000.37100.37200.37900.44500.390800 | Electrical Switch box fixing | 14d | 2026-07-24 | 2026-08-06 | 4313 |  | 7 Days Work | 9198874 |
| 4315 | 36900.37000.37100.37200.37900.44500.390900 | Fire Fighting painting | 5d | 2026-08-07 | 2026-08-11 | 4314 |  | 7 Days Work | 9198884 |
| 4316 | 36900.37000.37100.37200.37900.44500.391000 | Protection of all flooring, door & window hardware | 5d | 2026-08-12 | 2026-08-16 | 4315 |  | 7 Days Work | 9198894 |
| 4317 | 36900.37000.37100.37200.37900.44500.391100 | 1st coat primer- ceiling 1st & walls | 14d | 2026-08-17 | 2026-08-30 | 4316 |  | 7 Days Work | 9198904 |
| 4318 | 36900.37000.37100.37200.37900.44500.391200 | Wooden Flooring | 5d | 2026-08-31 | 2026-09-04 | 4317 |  | 7 Days Work | 9198914 |
| 4319 | 36900.37000.37100.37200.37900.44500.391300 | Removing of Temporary Railing & installation of Glass Railing | 5d | 2026-08-31 | 2026-09-04 | 4317 |  | 7 Days Work | 9198924 |
| 4320 | 36900.37000.37100.37200.37900.44500.391400 | Tile Grouting | 7d | 2026-08-31 | 2026-09-06 | 4317 |  | 7 Days Work | 9198934 |
| 4321 | 36900.37000.37100.37200.37900.44500.391500 | False Ceiling | 5d | 2026-09-07 | 2026-09-11 | 4320 |  | 7 Days Work | 9198944 |
| 4322 | 36900.37000.37100.37200.37900.44500.391600 | 2nd coat of primer | 10d | 2026-09-12 | 2026-09-21 | 4321 |  | 7 Days Work | 9198954 |
| 4323 | 36900.37000.37100.37200.37900.44500.391700 | Final cutting/polishing of stone flooring | 7d | 2026-09-22 | 2026-09-28 | 4322 |  | 7 Days Work | 9198964 |

| ID | WBS | Task | Duration | Start | Finish | Predecessors | Constraint | Calendar | Unique_Task_ID |
| --- | --- | --- | --- | --- | --- | --- | --- | --- | --- |
| 4324 | 36900.37000.37100.37200.37900.44500.65200 | **Toilet** | 237d | 2026-02-03 | 2026-09-27 |  | start no earlier than 2026-02-03 | 7 Days Work | 9197054 |
| 4325 | 36900.37000.37100.37200.37900.44500.65200.867400 | Toilet_MEP Clearance -1 | 7d | 2026-02-03 | 2026-02-09 | 4288 |  | 7 Days Work | 9206744 |
| 4326 | 36900.37000.37100.37200.37900.44500.65200.867500 | Toilet_Level Marking | 1d | 2026-02-10 | 2026-02-10 | 4325 |  | 7 Days Work | 9206754 |
| 4327 | 36900.37000.37100.37200.37900.44500.65200.867600 | Toilet_Chasing work for Electrical conduit & concealed plumbing | 5d | 2026-02-11 | 2026-02-15 | 4326 |  | 7 Days Work | 9206764 |
| 4328 | 36900.37000.37100.37200.37900.44500.65200.867700 | Toilet_Plumbing work 1st fix | 5d | 2026-02-16 | 2026-02-20 | 4327 |  | 7 Days Work | 9206774 |
| 4329 | 36900.37000.37100.37200.37900.44500.65200.867800 | Toilet_Sleeve/Bore Packing | 5d | 2026-02-21 | 2026-02-25 | 4328 |  | 7 Days Work | 9206784 |
| 4330 | 36900.37000.37100.37200.37900.44500.65200.867900 | Toilet_Waterproofing | 10d | 2026-02-26 | 2026-03-07 | 4329 |  | 7 Days Work | 9206794 |
| 4331 | 36900.37000.37100.37200.37900.44500.65200.868000 | Toilet_Screed | 1d | 2026-03-08 | 2026-03-08 | 4330 |  | 7 Days Work | 9206804 |
| 4332 | 36900.37000.37100.37200.37900.44500.65200.868100 | Toilet_Plumbing 2nd fix | 5d | 2026-03-09 | 2026-03-13 | 4331 |  | 7 Days Work | 9206814 |
| 4333 | 36900.37000.37100.37200.37900.44500.65200.868200 | Toilet_Ledge wall | 5d | 2026-03-14 | 2026-03-18 | 4332 |  | 7 Days Work | 9206824 |
| 4334 | 36900.37000.37100.37200.37900.44500.65200.868300 | Toilet_Cement Plaster | 5d | 2026-03-19 | 2026-03-23 | 4333 |  | 7 Days Work | 9206834 |
| 4335 | 36900.37000.37100.37200.37900.44500.65200.868400 | Toilet_Door Frame | 1d | 2026-03-24 | 2026-03-24 | 4334 |  | 7 Days Work | 9206844 |
| 4336 | 36900.37000.37100.37200.37900.44500.65200.868500 | Toilet_Wash basin & Couter | 3d | 2026-03-25 | 2026-03-27 | 4335 |  | 7 Days Work | 9206854 |
| 4337 | 36900.37000.37100.37200.37900.44500.65200.868600 | Toilet_Wall dado | 20d | 2026-03-28 | 2026-04-16 | 4336 |  | 7 Days Work | 9206864 |
| 4338 | 36900.37000.37100.37200.37900.44500.65200.868700 | Toilet_Granite Work-Ledge wall top | 3d | 2026-04-17 | 2026-04-19 | 4337 |  | 7 Days Work | 9206874 |
| 4339 | 36900.37000.37100.37200.37900.44500.65200.868800 | Toilet_Floor Tilling work | 20d | 2026-04-20 | 2026-05-09 | 4338 |  | 7 Days Work | 9206884 |
| 4340 | 36900.37000.37100.37200.37900.44500.65200.868900 | Toilet_1st row of dado | 5d | 2026-05-10 | 2026-05-14 | 4339 |  | 7 Days Work | 9206894 |
| 4341 | 36900.37000.37100.37200.37900.44500.65200.869000 | Toilet_Window Fixing | 14d | 2026-05-15 | 2026-05-28 | 4340 |  | 7 Days Work | 9206904 |
| 4342 | 36900.37000.37100.37200.37900.44500.65200.869100 | Toilet_Services above False ceiling | 21d | 2026-05-29 | 2026-06-18 | 4341 |  | 7 Days Work | 9206914 |
| 4343 | 36900.37000.37100.37200.37900.44500.65200.869200 | Toilet_False Ceiling framing | 12d | 2026-06-19 | 2026-06-30 | 4342 |  | 7 Days Work | 9206924 |
| 4344 | 36900.37000.37100.37200.37900.44500.65200.869300 | Toilet_Door Frame | 5d | 2026-07-01 | 2026-07-05 | 4343 |  | 7 Days Work | 9206934 |
| 4345 | 36900.37000.37100.37200.37900.44500.65200.869400 | Toilet_Epoxy Tile Grouting | 7d | 2026-08-31 | 2026-09-06 | 4320SS |  | 7 Days Work | 9206944 |
| 4346 | 36900.37000.37100.37200.37900.44500.65200.869500 | Toilet_False ceiling board fixing, CP Sanitary Fixture, Electric Fixture | 21d | 2026-09-07 | 2026-09-27 | 4345 |  | 7 Days Work | 9206954 |
| 4347 | 36900.37000.37100.37200.37900.44600 | **5th Habitable/6th Floor** | 245d | 2026-02-08 | 2026-10-10 |  | start no earlier than 2026-02-08 | 7 Days Work | 9196864 |
| 4348 | 36900.37000.37100.37200.37900.44600.391800 | Post Pour | 7d | 2026-02-08 | 2026-02-14 | 4089FS+15d |  | 7 Days Work | 9198974 |
| 4349 | 36900.37000.37100.37200.37900.44600.391900 | MEP Clearance -1 | 5d | 2026-02-15 | 2026-02-19 | 4348 |  | 7 Days Work | 9198984 |
| 4350 | 36900.37000.37100.37200.37900.44600.392000 | Benchmark | 1d | 2026-02-20 | 2026-02-20 | 4349 |  | 7 Days Work | 9198994 |
| 4351 | 36900.37000.37100.37200.37900.44600.392100 | Temporary Railing | 3d | 2026-02-21 | 2026-02-23 | 4350 |  | 7 Days Work | 9199004 |
| 4352 | 36900.37000.37100.37200.37900.44600.392200 | Blockwork | 10d | 2026-02-24 | 2026-03-05 | 4351 |  | 7 Days Work | 9199014 |
| 4353 | 36900.37000.37100.37200.37900.44600.392300 | MEP Clearance -2 | 10d | 2026-03-06 | 2026-03-15 | 4352 |  | 7 Days Work | 9199024 |
| 4354 | 36900.37000.37100.37200.37900.44600.392400 | Gypsum Plaster | 14d | 2026-03-16 | 2026-03-29 | 4353 |  | 7 Days Work | 9199034 |
| 4355 | 36900.37000.37100.37200.37900.44600.392500 | Kitchen Platform | 3d | 2026-03-30 | 2026-04-01 | 4354 |  | 7 Days Work | 9199044 |
| 4356 | 36900.37000.37100.37200.37900.44600.392600 | Kitchen dado | 7d | 2026-04-02 | 2026-04-08 | 4355 |  | 7 Days Work | 9199054 |
| 4357 | 36900.37000.37100.37200.37900.44600.392700 | Fire Fighting | 5d | 2026-04-09 | 2026-04-13 | 4356 |  | 7 Days Work | 9199064 |
| 4358 | 36900.37000.37100.37200.37900.44600.392800 | Anticapilary | 5d | 2026-04-14 | 2026-04-18 | 4357 |  | 7 Days Work | 9199074 |
| 4359 | 36900.37000.37100.37200.37900.44600.392900 | Stone Laying | 10d | 2026-05-22 | 2026-05-31 | 4399 |  | 7 Days Work | 9199084 |
| 4360 | 36900.37000.37100.37200.37900.44600.393000 | Tiles Laying | 7d | 2026-05-22 | 2026-05-28 | 4399 |  | 7 Days Work | 9199094 |
| 4361 | 36900.37000.37100.37200.37900.44600.393100 | 1st cutting/polishing of stone flooring | 7d | 2026-05-29 | 2026-06-04 | 4360 |  | 7 Days Work | 9199104 |
| 4362 | 36900.37000.37100.37200.37900.44600.393200 | Tiles/Stone skirting | 5d | 2026-06-05 | 2026-06-09 | 4361 |  | 7 Days Work | 9199114 |
| 4363 | 36900.37000.37100.37200.37900.44600.393300 | Protechtion sheet | 1d | 2026-06-10 | 2026-06-10 | 4362 |  | 7 Days Work | 9199124 |
| 4364 | 36900.37000.37100.37200.37900.44600.393400 | Installation of Temporary Door | 1d | 2026-06-11 | 2026-06-11 | 4363 |  | 7 Days Work | 9199134 |
| 4365 | 36900.37000.37100.37200.37900.44600.393500 | Fixing of window tracks | 5d | 2026-06-12 | 2026-06-16 | 4364 |  | 7 Days Work | 9199144 |
| 4366 | 36900.37000.37100.37200.37900.44600.393600 | Wire Pulling | 7d | 2026-06-17 | 2026-06-23 | 4365 |  | 7 Days Work | 9199154 |
| 4367 | 36900.37000.37100.37200.37900.44600.393700 | Gypsum Remaining | 5d | 2026-06-24 | 2026-06-28 | 4366 |  | 7 Days Work | 9199164 |
| 4368 | 36900.37000.37100.37200.37900.44600.393800 | Fixing of windoow shutter | 5d | 2026-06-29 | 2026-07-03 | 4367 |  | 7 Days Work | 9199174 |
| 4369 | 36900.37000.37100.37200.37900.44600.393900 | Putty Works - walls & ceiling | 15d | 2026-07-04 | 2026-07-18 | 4368 |  | 7 Days Work | 9199184 |
| 4370 | 36900.37000.37100.37200.37900.44600.394000 | False Ceiling- Framing | 10d | 2026-07-19 | 2026-07-28 | 4369 |  | 7 Days Work | 9199194 |
| 4371 | 36900.37000.37100.37200.37900.44600.394100 | Pre Hung Door | 3d | 2026-07-29 | 2026-07-31 | 4370 |  | 7 Days Work | 9199204 |
| 4372 | 36900.37000.37100.37200.37900.44600.394200 | Protechtion sheet | 2d | 2026-08-01 | 2026-08-02 | 4371 |  | 7 Days Work | 9199214 |
| 4373 | 36900.37000.37100.37200.37900.44600.394300 | Skirting near door | 2d | 2026-08-03 | 2026-08-04 | 4372 |  | 7 Days Work | 9199224 |
| 4374 | 36900.37000.37100.37200.37900.44600.394400 | Electrical Switch box fixing | 14d | 2026-08-05 | 2026-08-18 | 4373 |  | 7 Days Work | 9199234 |
| 4375 | 36900.37000.37100.37200.37900.44600.394500 | Fire Fighting painting | 5d | 2026-08-19 | 2026-08-23 | 4374 |  | 7 Days Work | 9199244 |
| 4376 | 36900.37000.37100.37200.37900.44600.394600 | Protection of all flooring, door & window hardware | 5d | 2026-08-24 | 2026-08-28 | 4375 |  | 7 Days Work | 9199254 |
| 4377 | 36900.37000.37100.37200.37900.44600.394700 | 1st coat primer- ceiling 1st & walls | 14d | 2026-08-29 | 2026-09-11 | 4376 |  | 7 Days Work | 9199264 |
| 4378 | 36900.37000.37100.37200.37900.44600.394800 | Wooden Flooring | 5d | 2026-09-12 | 2026-09-16 | 4377 |  | 7 Days Work | 9199274 |
| 4379 | 36900.37000.37100.37200.37900.44600.394900 | Removing of Temporary Railing & installation of Glass Railing | 5d | 2026-09-12 | 2026-09-16 | 4377 |  | 7 Days Work | 9199284 |
| 4380 | 36900.37000.37100.37200.37900.44600.395000 | Tile Grouting | 7d | 2026-09-12 | 2026-09-18 | 4377 |  | 7 Days Work | 9199294 |
| 4381 | 36900.37000.37100.37200.37900.44600.395100 | False Ceiling | 5d | 2026-09-19 | 2026-09-23 | 4380 |  | 7 Days Work | 9199304 |
| 4382 | 36900.37000.37100.37200.37900.44600.395200 | 2nd coat of primer | 10d | 2026-09-24 | 2026-10-03 | 4381 |  | 7 Days Work | 9199314 |
| 4383 | 36900.37000.37100.37200.37900.44600.395300 | Final cutting/polishing of stone flooring | 7d | 2026-10-04 | 2026-10-10 | 4382 |  | 7 Days Work | 9199324 |

| ID | WBS | Task | Duration | Start | Finish | Predecessors | Constraint | Calendar | Unique_Task_ID |
| --- | --- | --- | --- | --- | --- | --- | --- | --- | --- |
| 4384 | 36900.37000.37100.37200.37900.44600.65300 | **Toilet** | 237d | 2026-02-15 | 2026-10-09 |  | start no earlier than 2026-02-15 | 7 Days Work | 9197064 |
| 4385 | 36900.37000.37100.37200.37900.44600.65300.869600 | Toilet_MEP Clearance -1 | 7d | 2026-02-15 | 2026-02-21 | 4348 |  | 7 Days Work | 9206964 |
| 4386 | 36900.37000.37100.37200.37900.44600.65300.869700 | Toilet_Level Marking | 1d | 2026-02-22 | 2026-02-22 | 4385 |  | 7 Days Work | 9206974 |
| 4387 | 36900.37000.37100.37200.37900.44600.65300.869800 | Toilet_Chasing work for Electrical conduit & concealed plumbing | 5d | 2026-02-23 | 2026-02-27 | 4386 |  | 7 Days Work | 9206984 |
| 4388 | 36900.37000.37100.37200.37900.44600.65300.869900 | Toilet_Plumbing work 1st fix | 5d | 2026-02-28 | 2026-03-04 | 4387 |  | 7 Days Work | 9206994 |
| 4389 | 36900.37000.37100.37200.37900.44600.65300.870000 | Toilet_Sleeve/Bore Packing | 5d | 2026-03-05 | 2026-03-09 | 4388 |  | 7 Days Work | 9207004 |
| 4390 | 36900.37000.37100.37200.37900.44600.65300.870100 | Toilet_Waterproofing | 10d | 2026-03-10 | 2026-03-19 | 4389 |  | 7 Days Work | 9207014 |
| 4391 | 36900.37000.37100.37200.37900.44600.65300.870200 | Toilet_Screed | 1d | 2026-03-20 | 2026-03-20 | 4390 |  | 7 Days Work | 9207024 |
| 4392 | 36900.37000.37100.37200.37900.44600.65300.870300 | Toilet_Plumbing 2nd fix | 5d | 2026-03-21 | 2026-03-25 | 4391 |  | 7 Days Work | 9207034 |
| 4393 | 36900.37000.37100.37200.37900.44600.65300.870400 | Toilet_Ledge wall | 5d | 2026-03-26 | 2026-03-30 | 4392 |  | 7 Days Work | 9207044 |
| 4394 | 36900.37000.37100.37200.37900.44600.65300.870500 | Toilet_Cement Plaster | 5d | 2026-03-31 | 2026-04-04 | 4393 |  | 7 Days Work | 9207054 |
| 4395 | 36900.37000.37100.37200.37900.44600.65300.870600 | Toilet_Door Frame | 1d | 2026-04-05 | 2026-04-05 | 4394 |  | 7 Days Work | 9207064 |
| 4396 | 36900.37000.37100.37200.37900.44600.65300.870700 | Toilet_Wash basin & Couter | 3d | 2026-04-06 | 2026-04-08 | 4395 |  | 7 Days Work | 9207074 |
| 4397 | 36900.37000.37100.37200.37900.44600.65300.870800 | Toilet_Wall dado | 20d | 2026-04-09 | 2026-04-28 | 4396 |  | 7 Days Work | 9207084 |
| 4398 | 36900.37000.37100.37200.37900.44600.65300.870900 | Toilet_Granite Work-Ledge wall top | 3d | 2026-04-29 | 2026-05-01 | 4397 |  | 7 Days Work | 9207094 |
| 4399 | 36900.37000.37100.37200.37900.44600.65300.871000 | Toilet_Floor Tilling work | 20d | 2026-05-02 | 2026-05-21 | 4398 |  | 7 Days Work | 9207104 |
| 4400 | 36900.37000.37100.37200.37900.44600.65300.871100 | Toilet_1st row of dado | 5d | 2026-05-22 | 2026-05-26 | 4399 |  | 7 Days Work | 9207114 |
| 4401 | 36900.37000.37100.37200.37900.44600.65300.871200 | Toilet_Window Fixing | 14d | 2026-05-27 | 2026-06-09 | 4400 |  | 7 Days Work | 9207124 |
| 4402 | 36900.37000.37100.37200.37900.44600.65300.871300 | Toilet_Services above False ceiling | 21d | 2026-06-10 | 2026-06-30 | 4401 |  | 7 Days Work | 9207134 |
| 4403 | 36900.37000.37100.37200.37900.44600.65300.871400 | Toilet_False Ceiling framing | 12d | 2026-07-01 | 2026-07-12 | 4402 |  | 7 Days Work | 9207144 |
| 4404 | 36900.37000.37100.37200.37900.44600.65300.871500 | Toilet_Door Frame | 5d | 2026-07-13 | 2026-07-17 | 4403 |  | 7 Days Work | 9207154 |
| 4405 | 36900.37000.37100.37200.37900.44600.65300.871600 | Toilet_Epoxy Tile Grouting | 7d | 2026-09-12 | 2026-09-18 | 4380SS |  | 7 Days Work | 9207164 |
| 4406 | 36900.37000.37100.37200.37900.44600.65300.871700 | Toilet_False ceiling board fixing, CP Sanitary Fixture, Electric Fixture | 21d | 2026-09-19 | 2026-10-09 | 4405 |  | 7 Days Work | 9207174 |
| 4407 | 36900.37000.37100.37200.37900.44700 | **6th Habitable/7th Floor** | 245d | 2026-02-17 | 2026-10-19 |  | start no earlier than 2026-02-17 | 7 Days Work | 9196874 |
| 4408 | 36900.37000.37100.37200.37900.44700.395400 | Post Pour | 7d | 2026-02-17 | 2026-02-23 | 4090FS+15d |  | 7 Days Work | 9199334 |
| 4409 | 36900.37000.37100.37200.37900.44700.395500 | MEP Clearance -1 | 5d | 2026-02-24 | 2026-02-28 | 4408 |  | 7 Days Work | 9199344 |
| 4410 | 36900.37000.37100.37200.37900.44700.395600 | Benchmark | 1d | 2026-03-01 | 2026-03-01 | 4409 |  | 7 Days Work | 9199354 |
| 4411 | 36900.37000.37100.37200.37900.44700.395700 | Temporary Railing | 3d | 2026-03-02 | 2026-03-04 | 4410 |  | 7 Days Work | 9199364 |
| 4412 | 36900.37000.37100.37200.37900.44700.395800 | Blockwork | 10d | 2026-03-05 | 2026-03-14 | 4411 |  | 7 Days Work | 9199374 |
| 4413 | 36900.37000.37100.37200.37900.44700.395900 | MEP Clearance -2 | 10d | 2026-03-15 | 2026-03-24 | 4412 |  | 7 Days Work | 9199384 |
| 4414 | 36900.37000.37100.37200.37900.44700.396000 | Gypsum Plaster | 14d | 2026-03-25 | 2026-04-07 | 4413 |  | 7 Days Work | 9199394 |
| 4415 | 36900.37000.37100.37200.37900.44700.396100 | Kitchen Platform | 3d | 2026-04-08 | 2026-04-10 | 4414 |  | 7 Days Work | 9199404 |
| 4416 | 36900.37000.37100.37200.37900.44700.396200 | Kitchen dado | 7d | 2026-04-11 | 2026-04-17 | 4415 |  | 7 Days Work | 9199414 |
| 4417 | 36900.37000.37100.37200.37900.44700.396300 | Fire Fighting | 5d | 2026-04-18 | 2026-04-22 | 4416 |  | 7 Days Work | 9199424 |
| 4418 | 36900.37000.37100.37200.37900.44700.396400 | Anticapilary | 5d | 2026-04-23 | 2026-04-27 | 4417 |  | 7 Days Work | 9199434 |
| 4419 | 36900.37000.37100.37200.37900.44700.396500 | Stone Laying | 10d | 2026-05-31 | 2026-06-09 | 4459 |  | 7 Days Work | 9199444 |
| 4420 | 36900.37000.37100.37200.37900.44700.396600 | Tiles Laying | 7d | 2026-05-31 | 2026-06-06 | 4459 |  | 7 Days Work | 9199454 |
| 4421 | 36900.37000.37100.37200.37900.44700.396700 | 1st cutting/polishing of stone flooring | 7d | 2026-06-07 | 2026-06-13 | 4420 |  | 7 Days Work | 9199464 |
| 4422 | 36900.37000.37100.37200.37900.44700.396800 | Tiles/Stone skirting | 5d | 2026-06-14 | 2026-06-18 | 4421 |  | 7 Days Work | 9199474 |
| 4423 | 36900.37000.37100.37200.37900.44700.396900 | Protechtion sheet | 1d | 2026-06-19 | 2026-06-19 | 4422 |  | 7 Days Work | 9199484 |
| 4424 | 36900.37000.37100.37200.37900.44700.397000 | Installation of Temporary Door | 1d | 2026-06-20 | 2026-06-20 | 4423 |  | 7 Days Work | 9199494 |
| 4425 | 36900.37000.37100.37200.37900.44700.397100 | Fixing of window tracks | 5d | 2026-06-21 | 2026-06-25 | 4424 |  | 7 Days Work | 9199504 |
| 4426 | 36900.37000.37100.37200.37900.44700.397200 | Wire Pulling | 7d | 2026-06-26 | 2026-07-02 | 4425 |  | 7 Days Work | 9199514 |
| 4427 | 36900.37000.37100.37200.37900.44700.397300 | Gypsum Remaining | 5d | 2026-07-03 | 2026-07-07 | 4426 |  | 7 Days Work | 9199524 |
| 4428 | 36900.37000.37100.37200.37900.44700.397400 | Fixing of windoow shutter | 5d | 2026-07-08 | 2026-07-12 | 4427 |  | 7 Days Work | 9199534 |
| 4429 | 36900.37000.37100.37200.37900.44700.397500 | Putty Works - walls & ceiling | 15d | 2026-07-13 | 2026-07-27 | 4428 |  | 7 Days Work | 9199544 |
| 4430 | 36900.37000.37100.37200.37900.44700.397600 | False Ceiling- Framing | 10d | 2026-07-28 | 2026-08-06 | 4429 |  | 7 Days Work | 9199554 |
| 4431 | 36900.37000.37100.37200.37900.44700.397700 | Pre Hung Door | 3d | 2026-08-07 | 2026-08-09 | 4430 |  | 7 Days Work | 9199564 |
| 4432 | 36900.37000.37100.37200.37900.44700.397800 | Protechtion sheet | 2d | 2026-08-10 | 2026-08-11 | 4431 |  | 7 Days Work | 9199574 |
| 4433 | 36900.37000.37100.37200.37900.44700.397900 | Skirting near door | 2d | 2026-08-12 | 2026-08-13 | 4432 |  | 7 Days Work | 9199584 |
| 4434 | 36900.37000.37100.37200.37900.44700.398000 | Electrical Switch box fixing | 14d | 2026-08-14 | 2026-08-27 | 4433 |  | 7 Days Work | 9199594 |
| 4435 | 36900.37000.37100.37200.37900.44700.398100 | Fire Fighting painting | 5d | 2026-08-28 | 2026-09-01 | 4434 |  | 7 Days Work | 9199604 |
| 4436 | 36900.37000.37100.37200.37900.44700.398200 | Protection of all flooring, door & window hardware | 5d | 2026-09-02 | 2026-09-06 | 4435 |  | 7 Days Work | 9199614 |
| 4437 | 36900.37000.37100.37200.37900.44700.398300 | 1st coat primer- ceiling 1st & walls | 14d | 2026-09-07 | 2026-09-20 | 4436 |  | 7 Days Work | 9199624 |
| 4438 | 36900.37000.37100.37200.37900.44700.398400 | Wooden Flooring | 5d | 2026-09-21 | 2026-09-25 | 4437 |  | 7 Days Work | 9199634 |
| 4439 | 36900.37000.37100.37200.37900.44700.398500 | Removing of Temporary Railing & installation of Glass Railing | 5d | 2026-09-21 | 2026-09-25 | 4437 |  | 7 Days Work | 9199644 |
| 4440 | 36900.37000.37100.37200.37900.44700.398600 | Tile Grouting | 7d | 2026-09-21 | 2026-09-27 | 4437 |  | 7 Days Work | 9199654 |
| 4441 | 36900.37000.37100.37200.37900.44700.398700 | False Ceiling | 5d | 2026-09-28 | 2026-10-02 | 4440 |  | 7 Days Work | 9199664 |
| 4442 | 36900.37000.37100.37200.37900.44700.398800 | 2nd coat of primer | 10d | 2026-10-03 | 2026-10-12 | 4441 |  | 7 Days Work | 9199674 |
| 4443 | 36900.37000.37100.37200.37900.44700.398900 | Final cutting/polishing of stone flooring | 7d | 2026-10-13 | 2026-10-19 | 4442 |  | 7 Days Work | 9199684 |

| ID | WBS | Task | Duration | Start | Finish | Predecessors | Constraint | Calendar | Unique_Task_ID |
| --- | --- | --- | --- | --- | --- | --- | --- | --- | --- |
| 4444 | 36900.37000.37100.37200.37900.44700.65800 | **Toilet** | 237d | 2026-02-24 | 2026-10-18 |  | start no earlier than 2026-02-24 | 7 Days Work | 9197074 |
| 4445 | 36900.37000.37100.37200.37900.44700.65800.871800 | Toilet_MEP Clearance -1 | 7d | 2026-02-24 | 2026-03-02 | 4408 |  | 7 Days Work | 9207184 |
| 4446 | 36900.37000.37100.37200.37900.44700.65800.871900 | Toilet_Level Marking | 1d | 2026-03-03 | 2026-03-03 | 4445 |  | 7 Days Work | 9207194 |
| 4447 | 36900.37000.37100.37200.37900.44700.65800.872000 | Toilet_Chasing work for Electrical conduit & concealed plumbing | 5d | 2026-03-04 | 2026-03-08 | 4446 |  | 7 Days Work | 9207204 |
| 4448 | 36900.37000.37100.37200.37900.44700.65800.872100 | Toilet_Plumbing work 1st fix | 5d | 2026-03-09 | 2026-03-13 | 4447 |  | 7 Days Work | 9207214 |
| 4449 | 36900.37000.37100.37200.37900.44700.65800.872200 | Toilet_Sleeve/Bore Packing | 5d | 2026-03-14 | 2026-03-18 | 4448 |  | 7 Days Work | 9207224 |
| 4450 | 36900.37000.37100.37200.37900.44700.65800.872300 | Toilet_Waterproofing | 10d | 2026-03-19 | 2026-03-28 | 4449 |  | 7 Days Work | 9207234 |
| 4451 | 36900.37000.37100.37200.37900.44700.65800.872400 | Toilet_Screed | 1d | 2026-03-29 | 2026-03-29 | 4450 |  | 7 Days Work | 9207244 |
| 4452 | 36900.37000.37100.37200.37900.44700.65800.872500 | Toilet_Plumbing 2nd fix | 5d | 2026-03-30 | 2026-04-03 | 4451 |  | 7 Days Work | 9207254 |
| 4453 | 36900.37000.37100.37200.37900.44700.65800.872600 | Toilet_Ledge wall | 5d | 2026-04-04 | 2026-04-08 | 4452 |  | 7 Days Work | 9207264 |
| 4454 | 36900.37000.37100.37200.37900.44700.65800.872700 | Toilet_Cement Plaster | 5d | 2026-04-09 | 2026-04-13 | 4453 |  | 7 Days Work | 9207274 |
| 4455 | 36900.37000.37100.37200.37900.44700.65800.872800 | Toilet_Door Frame | 1d | 2026-04-14 | 2026-04-14 | 4454 |  | 7 Days Work | 9207284 |
| 4456 | 36900.37000.37100.37200.37900.44700.65800.872900 | Toilet_Wash basin & Couter | 3d | 2026-04-15 | 2026-04-17 | 4455 |  | 7 Days Work | 9207294 |
| 4457 | 36900.37000.37100.37200.37900.44700.65800.873000 | Toilet_Wall dado | 20d | 2026-04-18 | 2026-05-07 | 4456 |  | 7 Days Work | 9207304 |
| 4458 | 36900.37000.37100.37200.37900.44700.65800.873100 | Toilet_Granite Work-Ledge wall top | 3d | 2026-05-08 | 2026-05-10 | 4457 |  | 7 Days Work | 9207314 |
| 4459 | 36900.37000.37100.37200.37900.44700.65800.873200 | Toilet_Floor Tilling work | 20d | 2026-05-11 | 2026-05-30 | 4458 |  | 7 Days Work | 9207324 |
| 4460 | 36900.37000.37100.37200.37900.44700.65800.873300 | Toilet_1st row of dado | 5d | 2026-05-31 | 2026-06-04 | 4459 |  | 7 Days Work | 9207334 |
| 4461 | 36900.37000.37100.37200.37900.44700.65800.873400 | Toilet_Window Fixing | 14d | 2026-06-05 | 2026-06-18 | 4460 |  | 7 Days Work | 9207344 |
| 4462 | 36900.37000.37100.37200.37900.44700.65800.873500 | Toilet_Services above False ceiling | 21d | 2026-06-19 | 2026-07-09 | 4461 |  | 7 Days Work | 9207354 |
| 4463 | 36900.37000.37100.37200.37900.44700.65800.873600 | Toilet_False Ceiling framing | 12d | 2026-07-10 | 2026-07-21 | 4462 |  | 7 Days Work | 9207364 |
| 4464 | 36900.37000.37100.37200.37900.44700.65800.873700 | Toilet_Door Frame | 5d | 2026-07-22 | 2026-07-26 | 4463 |  | 7 Days Work | 9207374 |
| 4465 | 36900.37000.37100.37200.37900.44700.65800.873800 | Toilet_Epoxy Tile Grouting | 7d | 2026-09-21 | 2026-09-27 | 4440SS |  | 7 Days Work | 9207384 |
| 4466 | 36900.37000.37100.37200.37900.44700.65800.873900 | Toilet_False ceiling board fixing, CP Sanitary Fixture, Electric Fixture | 21d | 2026-09-28 | 2026-10-18 | 4465 |  | 7 Days Work | 9207394 |
| 4467 | 36900.37000.37100.37200.37900.44800 | **7th Habitable/8th Floor** | 245d | 2026-02-26 | 2026-10-28 |  | start no earlier than 2026-02-26 | 7 Days Work | 9196884 |
| 4468 | 36900.37000.37100.37200.37900.44800.399000 | Post Pour | 7d | 2026-02-26 | 2026-03-04 | 4091FS+15d |  | 7 Days Work | 9199694 |
| 4469 | 36900.37000.37100.37200.37900.44800.399100 | MEP Clearance -1 | 5d | 2026-03-05 | 2026-03-09 | 4468 |  | 7 Days Work | 9199704 |
| 4470 | 36900.37000.37100.37200.37900.44800.399200 | Benchmark | 1d | 2026-03-10 | 2026-03-10 | 4469 |  | 7 Days Work | 9199714 |
| 4471 | 36900.37000.37100.37200.37900.44800.399300 | Temporary Railing | 3d | 2026-03-11 | 2026-03-13 | 4470 |  | 7 Days Work | 9199724 |
| 4472 | 36900.37000.37100.37200.37900.44800.399400 | Blockwork | 10d | 2026-03-14 | 2026-03-23 | 4471 |  | 7 Days Work | 9199734 |
| 4473 | 36900.37000.37100.37200.37900.44800.399500 | MEP Clearance -2 | 10d | 2026-03-24 | 2026-04-02 | 4472 |  | 7 Days Work | 9199744 |
| 4474 | 36900.37000.37100.37200.37900.44800.399600 | Gypsum Plaster | 14d | 2026-04-03 | 2026-04-16 | 4473 |  | 7 Days Work | 9199754 |
| 4475 | 36900.37000.37100.37200.37900.44800.399700 | Kitchen Platform | 3d | 2026-04-17 | 2026-04-19 | 4474 |  | 7 Days Work | 9199764 |
| 4476 | 36900.37000.37100.37200.37900.44800.399800 | Kitchen dado | 7d | 2026-04-20 | 2026-04-26 | 4475 |  | 7 Days Work | 9199774 |
| 4477 | 36900.37000.37100.37200.37900.44800.399900 | Fire Fighting | 5d | 2026-04-27 | 2026-05-01 | 4476 |  | 7 Days Work | 9199784 |
| 4478 | 36900.37000.37100.37200.37900.44800.400000 | Anticapilary | 5d | 2026-05-02 | 2026-05-06 | 4477 |  | 7 Days Work | 9199794 |
| 4479 | 36900.37000.37100.37200.37900.44800.400100 | Stone Laying | 10d | 2026-06-09 | 2026-06-18 | 4519 |  | 7 Days Work | 9199804 |
| 4480 | 36900.37000.37100.37200.37900.44800.400200 | Tiles Laying | 7d | 2026-06-09 | 2026-06-15 | 4519 |  | 7 Days Work | 9199814 |
| 4481 | 36900.37000.37100.37200.37900.44800.400300 | 1st cutting/polishing of stone flooring | 7d | 2026-06-16 | 2026-06-22 | 4480 |  | 7 Days Work | 9199824 |
| 4482 | 36900.37000.37100.37200.37900.44800.400400 | Tiles/Stone skirting | 5d | 2026-06-23 | 2026-06-27 | 4481 |  | 7 Days Work | 9199834 |
| 4483 | 36900.37000.37100.37200.37900.44800.400500 | Protechtion sheet | 1d | 2026-06-28 | 2026-06-28 | 4482 |  | 7 Days Work | 9199844 |
| 4484 | 36900.37000.37100.37200.37900.44800.400600 | Installation of Temporary Door | 1d | 2026-06-29 | 2026-06-29 | 4483 |  | 7 Days Work | 9199854 |
| 4485 | 36900.37000.37100.37200.37900.44800.400700 | Fixing of window tracks | 5d | 2026-06-30 | 2026-07-04 | 4484 |  | 7 Days Work | 9199864 |
| 4486 | 36900.37000.37100.37200.37900.44800.400800 | Wire Pulling | 7d | 2026-07-05 | 2026-07-11 | 4485 |  | 7 Days Work | 9199874 |
| 4487 | 36900.37000.37100.37200.37900.44800.400900 | Gypsum Remaining | 5d | 2026-07-12 | 2026-07-16 | 4486 |  | 7 Days Work | 9199884 |
| 4488 | 36900.37000.37100.37200.37900.44800.401000 | Fixing of windoow shutter | 5d | 2026-07-17 | 2026-07-21 | 4487 |  | 7 Days Work | 9199894 |
| 4489 | 36900.37000.37100.37200.37900.44800.401100 | Putty Works - walls & ceiling | 15d | 2026-07-22 | 2026-08-05 | 4488 |  | 7 Days Work | 9199904 |
| 4490 | 36900.37000.37100.37200.37900.44800.401200 | False Ceiling- Framing | 10d | 2026-08-06 | 2026-08-15 | 4489 |  | 7 Days Work | 9199914 |
| 4491 | 36900.37000.37100.37200.37900.44800.401300 | Pre Hung Door | 3d | 2026-08-16 | 2026-08-18 | 4490 |  | 7 Days Work | 9199924 |
| 4492 | 36900.37000.37100.37200.37900.44800.401400 | Protechtion sheet | 2d | 2026-08-19 | 2026-08-20 | 4491 |  | 7 Days Work | 9199934 |
| 4493 | 36900.37000.37100.37200.37900.44800.401500 | Skirting near door | 2d | 2026-08-21 | 2026-08-22 | 4492 |  | 7 Days Work | 9199944 |
| 4494 | 36900.37000.37100.37200.37900.44800.401600 | Electrical Switch box fixing | 14d | 2026-08-23 | 2026-09-05 | 4493 |  | 7 Days Work | 9199954 |
| 4495 | 36900.37000.37100.37200.37900.44800.401700 | Fire Fighting painting | 5d | 2026-09-06 | 2026-09-10 | 4494 |  | 7 Days Work | 9199964 |
| 4496 | 36900.37000.37100.37200.37900.44800.401800 | Protection of all flooring, door & window hardware | 5d | 2026-09-11 | 2026-09-15 | 4495 |  | 7 Days Work | 9199974 |
| 4497 | 36900.37000.37100.37200.37900.44800.401900 | 1st coat primer- ceiling 1st & walls | 14d | 2026-09-16 | 2026-09-29 | 4496 |  | 7 Days Work | 9199984 |
| 4498 | 36900.37000.37100.37200.37900.44800.402000 | Wooden Flooring | 5d | 2026-09-30 | 2026-10-04 | 4497 |  | 7 Days Work | 9199994 |
| 4499 | 36900.37000.37100.37200.37900.44800.402100 | Removing of Temporary Railing & installation of Glass Railing | 5d | 2026-09-30 | 2026-10-04 | 4497 |  | 7 Days Work | 9200004 |
| 4500 | 36900.37000.37100.37200.37900.44800.402200 | Tile Grouting | 7d | 2026-09-30 | 2026-10-06 | 4497 |  | 7 Days Work | 9200014 |
| 4501 | 36900.37000.37100.37200.37900.44800.402300 | False Ceiling | 5d | 2026-10-07 | 2026-10-11 | 4500 |  | 7 Days Work | 9200024 |
| 4502 | 36900.37000.37100.37200.37900.44800.402400 | 2nd coat of primer | 10d | 2026-10-12 | 2026-10-21 | 4501 |  | 7 Days Work | 9200034 |
| 4503 | 36900.37000.37100.37200.37900.44800.402500 | Final cutting/polishing of stone flooring | 7d | 2026-10-22 | 2026-10-28 | 4502 |  | 7 Days Work | 9200044 |

| ID | WBS | Task | Duration | Start | Finish | Predecessors | Constraint | Calendar | Unique_Task_ID |
| --- | --- | --- | --- | --- | --- | --- | --- | --- | --- |
| 4504 | 36900.37000.37100.37200.37900.44800.56800 | **Toilet** | 237d | 2026-03-05 | 2026-10-27 |  | start no earlier than 2026-03-05 | 7 Days Work | 9197084 |
| 4505 | 36900.37000.37100.37200.37900.44800.56800.874000 | Toilet_MEP Clearance -1 | 7d | 2026-03-05 | 2026-03-11 | 4468 |  | 7 Days Work | 9207404 |
| 4506 | 36900.37000.37100.37200.37900.44800.56800.874100 | Toilet_Level Marking | 1d | 2026-03-12 | 2026-03-12 | 4505 |  | 7 Days Work | 9207414 |
| 4507 | 36900.37000.37100.37200.37900.44800.56800.874200 | Toilet_Chasing work for Electrical conduit & concealed plumbing | 5d | 2026-03-13 | 2026-03-17 | 4506 |  | 7 Days Work | 9207424 |
| 4508 | 36900.37000.37100.37200.37900.44800.56800.874300 | Toilet_Plumbing work 1st fix | 5d | 2026-03-18 | 2026-03-22 | 4507 |  | 7 Days Work | 9207434 |
| 4509 | 36900.37000.37100.37200.37900.44800.56800.874400 | Toilet_Sleeve/Bore Packing | 5d | 2026-03-23 | 2026-03-27 | 4508 |  | 7 Days Work | 9207444 |
| 4510 | 36900.37000.37100.37200.37900.44800.56800.874500 | Toilet_Waterproofing | 10d | 2026-03-28 | 2026-04-06 | 4509 |  | 7 Days Work | 9207454 |
| 4511 | 36900.37000.37100.37200.37900.44800.56800.874600 | Toilet_Screed | 1d | 2026-04-07 | 2026-04-07 | 4510 |  | 7 Days Work | 9207464 |
| 4512 | 36900.37000.37100.37200.37900.44800.56800.874700 | Toilet_Plumbing 2nd fix | 5d | 2026-04-08 | 2026-04-12 | 4511 |  | 7 Days Work | 9207474 |
| 4513 | 36900.37000.37100.37200.37900.44800.56800.874800 | Toilet_Ledge wall | 5d | 2026-04-13 | 2026-04-17 | 4512 |  | 7 Days Work | 9207484 |
| 4514 | 36900.37000.37100.37200.37900.44800.56800.874900 | Toilet_Cement Plaster | 5d | 2026-04-18 | 2026-04-22 | 4513 |  | 7 Days Work | 9207494 |
| 4515 | 36900.37000.37100.37200.37900.44800.56800.875000 | Toilet_Door Frame | 1d | 2026-04-23 | 2026-04-23 | 4514 |  | 7 Days Work | 9207504 |
| 4516 | 36900.37000.37100.37200.37900.44800.56800.875100 | Toilet_Wash basin & Couter | 3d | 2026-04-24 | 2026-04-26 | 4515 |  | 7 Days Work | 9207514 |
| 4517 | 36900.37000.37100.37200.37900.44800.56800.875200 | Toilet_Wall dado | 20d | 2026-04-27 | 2026-05-16 | 4516 |  | 7 Days Work | 9207524 |
| 4518 | 36900.37000.37100.37200.37900.44800.56800.875300 | Toilet_Granite Work-Ledge wall top | 3d | 2026-05-17 | 2026-05-19 | 4517 |  | 7 Days Work | 9207534 |
| 4519 | 36900.37000.37100.37200.37900.44800.56800.875400 | Toilet_Floor Tilling work | 20d | 2026-05-20 | 2026-06-08 | 4518 |  | 7 Days Work | 9207544 |
| 4520 | 36900.37000.37100.37200.37900.44800.56800.875500 | Toilet_1st row of dado | 5d | 2026-06-09 | 2026-06-13 | 4519 |  | 7 Days Work | 9207554 |
| 4521 | 36900.37000.37100.37200.37900.44800.56800.875600 | Toilet_Window Fixing | 14d | 2026-06-14 | 2026-06-27 | 4520 |  | 7 Days Work | 9207564 |
| 4522 | 36900.37000.37100.37200.37900.44800.56800.875700 | Toilet_Services above False ceiling | 21d | 2026-06-28 | 2026-07-18 | 4521 |  | 7 Days Work | 9207574 |
| 4523 | 36900.37000.37100.37200.37900.44800.56800.875800 | Toilet_False Ceiling framing | 12d | 2026-07-19 | 2026-07-30 | 4522 |  | 7 Days Work | 9207584 |
| 4524 | 36900.37000.37100.37200.37900.44800.56800.875900 | Toilet_Door Frame | 5d | 2026-07-31 | 2026-08-04 | 4523 |  | 7 Days Work | 9207594 |
| 4525 | 36900.37000.37100.37200.37900.44800.56800.876000 | Toilet_Epoxy Tile Grouting | 7d | 2026-09-30 | 2026-10-06 | 4500SS |  | 7 Days Work | 9207604 |
| 4526 | 36900.37000.37100.37200.37900.44800.56800.876100 | Toilet_False ceiling board fixing, CP Sanitary Fixture, Electric Fixture | 21d | 2026-10-07 | 2026-10-27 | 4525 |  | 7 Days Work | 9207614 |
| 4527 | 36900.37000.37100.37200.37900.44900 | **8th Habitable/9th Floor** | 245d | 2026-03-07 | 2026-11-06 |  | start no earlier than 2026-03-07 | 7 Days Work | 9196894 |
| 4528 | 36900.37000.37100.37200.37900.44900.402600 | Post Pour | 7d | 2026-03-07 | 2026-03-13 | 4092FS+15d |  | 7 Days Work | 9200054 |
| 4529 | 36900.37000.37100.37200.37900.44900.402700 | MEP Clearance -1 | 5d | 2026-03-14 | 2026-03-18 | 4528 |  | 7 Days Work | 9200064 |
| 4530 | 36900.37000.37100.37200.37900.44900.402800 | Benchmark | 1d | 2026-03-19 | 2026-03-19 | 4529 |  | 7 Days Work | 9200074 |
| 4531 | 36900.37000.37100.37200.37900.44900.402900 | Temporary Railing | 3d | 2026-03-20 | 2026-03-22 | 4530 |  | 7 Days Work | 9200084 |
| 4532 | 36900.37000.37100.37200.37900.44900.403000 | Blockwork | 10d | 2026-03-23 | 2026-04-01 | 4531 |  | 7 Days Work | 9200094 |
| 4533 | 36900.37000.37100.37200.37900.44900.403100 | MEP Clearance -2 | 10d | 2026-04-02 | 2026-04-11 | 4532 |  | 7 Days Work | 9200104 |
| 4534 | 36900.37000.37100.37200.37900.44900.403200 | Gypsum Plaster | 14d | 2026-04-12 | 2026-04-25 | 4533 |  | 7 Days Work | 9200114 |
| 4535 | 36900.37000.37100.37200.37900.44900.403300 | Kitchen Platform | 3d | 2026-04-26 | 2026-04-28 | 4534 |  | 7 Days Work | 9200124 |
| 4536 | 36900.37000.37100.37200.37900.44900.403400 | Kitchen dado | 7d | 2026-04-29 | 2026-05-05 | 4535 |  | 7 Days Work | 9200134 |
| 4537 | 36900.37000.37100.37200.37900.44900.403500 | Fire Fighting | 5d | 2026-05-06 | 2026-05-10 | 4536 |  | 7 Days Work | 9200144 |
| 4538 | 36900.37000.37100.37200.37900.44900.403600 | Anticapilary | 5d | 2026-05-11 | 2026-05-15 | 4537 |  | 7 Days Work | 9200154 |
| 4539 | 36900.37000.37100.37200.37900.44900.403700 | Stone Laying | 10d | 2026-06-18 | 2026-06-27 | 4579 |  | 7 Days Work | 9200164 |
| 4540 | 36900.37000.37100.37200.37900.44900.403800 | Tiles Laying | 7d | 2026-06-18 | 2026-06-24 | 4579 |  | 7 Days Work | 9200174 |
| 4541 | 36900.37000.37100.37200.37900.44900.403900 | 1st cutting/polishing of stone flooring | 7d | 2026-06-25 | 2026-07-01 | 4540 |  | 7 Days Work | 9200184 |
| 4542 | 36900.37000.37100.37200.37900.44900.404000 | Tiles/Stone skirting | 5d | 2026-07-02 | 2026-07-06 | 4541 |  | 7 Days Work | 9200194 |
| 4543 | 36900.37000.37100.37200.37900.44900.404100 | Protechtion sheet | 1d | 2026-07-07 | 2026-07-07 | 4542 |  | 7 Days Work | 9200204 |
| 4544 | 36900.37000.37100.37200.37900.44900.404200 | Installation of Temporary Door | 1d | 2026-07-08 | 2026-07-08 | 4543 |  | 7 Days Work | 9200214 |
| 4545 | 36900.37000.37100.37200.37900.44900.404300 | Fixing of window tracks | 5d | 2026-07-09 | 2026-07-13 | 4544 |  | 7 Days Work | 9200224 |
| 4546 | 36900.37000.37100.37200.37900.44900.404400 | Wire Pulling | 7d | 2026-07-14 | 2026-07-20 | 4545 |  | 7 Days Work | 9200234 |
| 4547 | 36900.37000.37100.37200.37900.44900.404500 | Gypsum Remaining | 5d | 2026-07-21 | 2026-07-25 | 4546 |  | 7 Days Work | 9200244 |
| 4548 | 36900.37000.37100.37200.37900.44900.404600 | Fixing of windoow shutter | 5d | 2026-07-26 | 2026-07-30 | 4547 |  | 7 Days Work | 9200254 |
| 4549 | 36900.37000.37100.37200.37900.44900.404700 | Putty Works - walls & ceiling | 15d | 2026-07-31 | 2026-08-14 | 4548 |  | 7 Days Work | 9200264 |
| 4550 | 36900.37000.37100.37200.37900.44900.404800 | False Ceiling- Framing | 10d | 2026-08-15 | 2026-08-24 | 4549 |  | 7 Days Work | 9200274 |
| 4551 | 36900.37000.37100.37200.37900.44900.404900 | Pre Hung Door | 3d | 2026-08-25 | 2026-08-27 | 4550 |  | 7 Days Work | 9200284 |
| 4552 | 36900.37000.37100.37200.37900.44900.405000 | Protechtion sheet | 2d | 2026-08-28 | 2026-08-29 | 4551 |  | 7 Days Work | 9200294 |
| 4553 | 36900.37000.37100.37200.37900.44900.405100 | Skirting near door | 2d | 2026-08-30 | 2026-08-31 | 4552 |  | 7 Days Work | 9200304 |
| 4554 | 36900.37000.37100.37200.37900.44900.405200 | Electrical Switch box fixing | 14d | 2026-09-01 | 2026-09-14 | 4553 |  | 7 Days Work | 9200314 |
| 4555 | 36900.37000.37100.37200.37900.44900.405300 | Fire Fighting painting | 5d | 2026-09-15 | 2026-09-19 | 4554 |  | 7 Days Work | 9200324 |
| 4556 | 36900.37000.37100.37200.37900.44900.405400 | Protection of all flooring, door & window hardware | 5d | 2026-09-20 | 2026-09-24 | 4555 |  | 7 Days Work | 9200334 |
| 4557 | 36900.37000.37100.37200.37900.44900.405500 | 1st coat primer- ceiling 1st & walls | 14d | 2026-09-25 | 2026-10-08 | 4556 |  | 7 Days Work | 9200344 |
| 4558 | 36900.37000.37100.37200.37900.44900.405600 | Wooden Flooring | 5d | 2026-10-09 | 2026-10-13 | 4557 |  | 7 Days Work | 9200354 |
| 4559 | 36900.37000.37100.37200.37900.44900.405700 | Removing of Temporary Railing & installation of Glass Railing | 5d | 2026-10-09 | 2026-10-13 | 4557 |  | 7 Days Work | 9200364 |
| 4560 | 36900.37000.37100.37200.37900.44900.405800 | Tile Grouting | 7d | 2026-10-09 | 2026-10-15 | 4557 |  | 7 Days Work | 9200374 |
| 4561 | 36900.37000.37100.37200.37900.44900.405900 | False Ceiling | 5d | 2026-10-16 | 2026-10-20 | 4560 |  | 7 Days Work | 9200384 |
| 4562 | 36900.37000.37100.37200.37900.44900.406000 | 2nd coat of primer | 10d | 2026-10-21 | 2026-10-30 | 4561 |  | 7 Days Work | 9200394 |
| 4563 | 36900.37000.37100.37200.37900.44900.406100 | Final cutting/polishing of stone flooring | 7d | 2026-10-31 | 2026-11-06 | 4562 |  | 7 Days Work | 9200404 |

| ID | WBS | Task | Duration | Start | Finish | Predecessors | Constraint | Calendar | Unique_Task_ID |
| --- | --- | --- | --- | --- | --- | --- | --- | --- | --- |
| 4564 | 36900.37000.37100.37200.37900.44900.56700 | **Toilet** | 237d | 2026-03-14 | 2026-11-05 |  | start no earlier than 2026-03-14 | 7 Days Work | 9197094 |
| 4565 | 36900.37000.37100.37200.37900.44900.56700.876200 | Toilet_MEP Clearance -1 | 7d | 2026-03-14 | 2026-03-20 | 4528 |  | 7 Days Work | 9207624 |
| 4566 | 36900.37000.37100.37200.37900.44900.56700.876300 | Toilet_Level Marking | 1d | 2026-03-21 | 2026-03-21 | 4565 |  | 7 Days Work | 9207634 |
| 4567 | 36900.37000.37100.37200.37900.44900.56700.876400 | Toilet_Chasing work for Electrical conduit & concealed plumbing | 5d | 2026-03-22 | 2026-03-26 | 4566 |  | 7 Days Work | 9207644 |
| 4568 | 36900.37000.37100.37200.37900.44900.56700.876500 | Toilet_Plumbing work 1st fix | 5d | 2026-03-27 | 2026-03-31 | 4567 |  | 7 Days Work | 9207654 |
| 4569 | 36900.37000.37100.37200.37900.44900.56700.876600 | Toilet_Sleeve/Bore Packing | 5d | 2026-04-01 | 2026-04-05 | 4568 |  | 7 Days Work | 9207664 |
| 4570 | 36900.37000.37100.37200.37900.44900.56700.876700 | Toilet_Waterproofing | 10d | 2026-04-06 | 2026-04-15 | 4569 |  | 7 Days Work | 9207674 |
| 4571 | 36900.37000.37100.37200.37900.44900.56700.876800 | Toilet_Screed | 1d | 2026-04-16 | 2026-04-16 | 4570 |  | 7 Days Work | 9207684 |
| 4572 | 36900.37000.37100.37200.37900.44900.56700.876900 | Toilet_Plumbing 2nd fix | 5d | 2026-04-17 | 2026-04-21 | 4571 |  | 7 Days Work | 9207694 |
| 4573 | 36900.37000.37100.37200.37900.44900.56700.877000 | Toilet_Ledge wall | 5d | 2026-04-22 | 2026-04-26 | 4572 |  | 7 Days Work | 9207704 |
| 4574 | 36900.37000.37100.37200.37900.44900.56700.877100 | Toilet_Cement Plaster | 5d | 2026-04-27 | 2026-05-01 | 4573 |  | 7 Days Work | 9207714 |
| 4575 | 36900.37000.37100.37200.37900.44900.56700.877200 | Toilet_Door Frame | 1d | 2026-05-02 | 2026-05-02 | 4574 |  | 7 Days Work | 9207724 |
| 4576 | 36900.37000.37100.37200.37900.44900.56700.877300 | Toilet_Wash basin & Couter | 3d | 2026-05-03 | 2026-05-05 | 4575 |  | 7 Days Work | 9207734 |
| 4577 | 36900.37000.37100.37200.37900.44900.56700.877400 | Toilet_Wall dado | 20d | 2026-05-06 | 2026-05-25 | 4576 |  | 7 Days Work | 9207744 |
| 4578 | 36900.37000.37100.37200.37900.44900.56700.877500 | Toilet_Granite Work-Ledge wall top | 3d | 2026-05-26 | 2026-05-28 | 4577 |  | 7 Days Work | 9207754 |
| 4579 | 36900.37000.37100.37200.37900.44900.56700.877600 | Toilet_Floor Tilling work | 20d | 2026-05-29 | 2026-06-17 | 4578 |  | 7 Days Work | 9207764 |
| 4580 | 36900.37000.37100.37200.37900.44900.56700.877700 | Toilet_1st row of dado | 5d | 2026-06-18 | 2026-06-22 | 4579 |  | 7 Days Work | 9207774 |
| 4581 | 36900.37000.37100.37200.37900.44900.56700.877800 | Toilet_Window Fixing | 14d | 2026-06-23 | 2026-07-06 | 4580 |  | 7 Days Work | 9207784 |
| 4582 | 36900.37000.37100.37200.37900.44900.56700.877900 | Toilet_Services above False ceiling | 21d | 2026-07-07 | 2026-07-27 | 4581 |  | 7 Days Work | 9207794 |
| 4583 | 36900.37000.37100.37200.37900.44900.56700.878000 | Toilet_False Ceiling framing | 12d | 2026-07-28 | 2026-08-08 | 4582 |  | 7 Days Work | 9207804 |
| 4584 | 36900.37000.37100.37200.37900.44900.56700.878100 | Toilet_Door Frame | 5d | 2026-08-09 | 2026-08-13 | 4583 |  | 7 Days Work | 9207814 |
| 4585 | 36900.37000.37100.37200.37900.44900.56700.878200 | Toilet_Epoxy Tile Grouting | 7d | 2026-10-09 | 2026-10-15 | 4560SS |  | 7 Days Work | 9207824 |
| 4586 | 36900.37000.37100.37200.37900.44900.56700.878300 | Toilet_False ceiling board fixing, CP Sanitary Fixture, Electric Fixture | 21d | 2026-10-16 | 2026-11-05 | 4585 |  | 7 Days Work | 9207834 |
| 4587 | 36900.37000.37100.37200.37900.45000 | **9th Habitable/10th Floor** | 245d | 2026-03-19 | 2026-11-18 |  | start no earlier than 2026-03-19 | 7 Days Work | 9196904 |
| 4588 | 36900.37000.37100.37200.37900.45000.406200 | Post Pour | 7d | 2026-03-19 | 2026-03-25 | 4093FS+15d |  | 7 Days Work | 9200414 |
| 4589 | 36900.37000.37100.37200.37900.45000.406300 | MEP Clearance -1 | 5d | 2026-03-26 | 2026-03-30 | 4588 |  | 7 Days Work | 9200424 |
| 4590 | 36900.37000.37100.37200.37900.45000.406400 | Benchmark | 1d | 2026-03-31 | 2026-03-31 | 4589 |  | 7 Days Work | 9200434 |
| 4591 | 36900.37000.37100.37200.37900.45000.406500 | Temporary Railing | 3d | 2026-04-01 | 2026-04-03 | 4590 |  | 7 Days Work | 9200444 |
| 4592 | 36900.37000.37100.37200.37900.45000.406600 | Blockwork | 10d | 2026-04-04 | 2026-04-13 | 4591 |  | 7 Days Work | 9200454 |
| 4593 | 36900.37000.37100.37200.37900.45000.406700 | MEP Clearance -2 | 10d | 2026-04-14 | 2026-04-23 | 4592 |  | 7 Days Work | 9200464 |
| 4594 | 36900.37000.37100.37200.37900.45000.406800 | Gypsum Plaster | 14d | 2026-04-24 | 2026-05-07 | 4593 |  | 7 Days Work | 9200474 |
| 4595 | 36900.37000.37100.37200.37900.45000.406900 | Kitchen Platform | 3d | 2026-05-08 | 2026-05-10 | 4594 |  | 7 Days Work | 9200484 |
| 4596 | 36900.37000.37100.37200.37900.45000.407000 | Kitchen dado | 7d | 2026-05-11 | 2026-05-17 | 4595 |  | 7 Days Work | 9200494 |
| 4597 | 36900.37000.37100.37200.37900.45000.407100 | Fire Fighting | 5d | 2026-05-18 | 2026-05-22 | 4596 |  | 7 Days Work | 9200504 |
| 4598 | 36900.37000.37100.37200.37900.45000.407200 | Anticapilary | 5d | 2026-05-23 | 2026-05-27 | 4597 |  | 7 Days Work | 9200514 |
| 4599 | 36900.37000.37100.37200.37900.45000.407300 | Stone Laying | 10d | 2026-06-30 | 2026-07-09 | 4639 |  | 7 Days Work | 9200524 |
| 4600 | 36900.37000.37100.37200.37900.45000.407400 | Tiles Laying | 7d | 2026-06-30 | 2026-07-06 | 4639 |  | 7 Days Work | 9200534 |
| 4601 | 36900.37000.37100.37200.37900.45000.407500 | 1st cutting/polishing of stone flooring | 7d | 2026-07-07 | 2026-07-13 | 4600 |  | 7 Days Work | 9200544 |
| 4602 | 36900.37000.37100.37200.37900.45000.407600 | Tiles/Stone skirting | 5d | 2026-07-14 | 2026-07-18 | 4601 |  | 7 Days Work | 9200554 |
| 4603 | 36900.37000.37100.37200.37900.45000.407700 | Protechtion sheet | 1d | 2026-07-19 | 2026-07-19 | 4602 |  | 7 Days Work | 9200564 |
| 4604 | 36900.37000.37100.37200.37900.45000.407800 | Installation of Temporary Door | 1d | 2026-07-20 | 2026-07-20 | 4603 |  | 7 Days Work | 9200574 |
| 4605 | 36900.37000.37100.37200.37900.45000.407900 | Fixing of window tracks | 5d | 2026-07-21 | 2026-07-25 | 4604 |  | 7 Days Work | 9200584 |
| 4606 | 36900.37000.37100.37200.37900.45000.408000 | Wire Pulling | 7d | 2026-07-26 | 2026-08-01 | 4605 |  | 7 Days Work | 9200594 |
| 4607 | 36900.37000.37100.37200.37900.45000.408100 | Gypsum Remaining | 5d | 2026-08-02 | 2026-08-06 | 4606 |  | 7 Days Work | 9200604 |
| 4608 | 36900.37000.37100.37200.37900.45000.408200 | Fixing of windoow shutter | 5d | 2026-08-07 | 2026-08-11 | 4607 |  | 7 Days Work | 9200614 |
| 4609 | 36900.37000.37100.37200.37900.45000.408300 | Putty Works - walls & ceiling | 15d | 2026-08-12 | 2026-08-26 | 4608 |  | 7 Days Work | 9200624 |
| 4610 | 36900.37000.37100.37200.37900.45000.408400 | False Ceiling- Framing | 10d | 2026-08-27 | 2026-09-05 | 4609 |  | 7 Days Work | 9200634 |
| 4611 | 36900.37000.37100.37200.37900.45000.408500 | Pre Hung Door | 3d | 2026-09-06 | 2026-09-08 | 4610 |  | 7 Days Work | 9200644 |
| 4612 | 36900.37000.37100.37200.37900.45000.408600 | Protechtion sheet | 2d | 2026-09-09 | 2026-09-10 | 4611 |  | 7 Days Work | 9200654 |
| 4613 | 36900.37000.37100.37200.37900.45000.408700 | Skirting near door | 2d | 2026-09-11 | 2026-09-12 | 4612 |  | 7 Days Work | 9200664 |
| 4614 | 36900.37000.37100.37200.37900.45000.408800 | Electrical Switch box fixing | 14d | 2026-09-13 | 2026-09-26 | 4613 |  | 7 Days Work | 9200674 |
| 4615 | 36900.37000.37100.37200.37900.45000.408900 | Fire Fighting painting | 5d | 2026-09-27 | 2026-10-01 | 4614 |  | 7 Days Work | 9200684 |
| 4616 | 36900.37000.37100.37200.37900.45000.409000 | Protection of all flooring, door & window hardware | 5d | 2026-10-02 | 2026-10-06 | 4615 |  | 7 Days Work | 9200694 |
| 4617 | 36900.37000.37100.37200.37900.45000.409100 | 1st coat primer- ceiling 1st & walls | 14d | 2026-10-07 | 2026-10-20 | 4616 |  | 7 Days Work | 9200704 |
| 4618 | 36900.37000.37100.37200.37900.45000.409200 | Wooden Flooring | 5d | 2026-10-21 | 2026-10-25 | 4617 |  | 7 Days Work | 9200714 |
| 4619 | 36900.37000.37100.37200.37900.45000.409300 | Removing of Temporary Railing & installation of Glass Railing | 5d | 2026-10-21 | 2026-10-25 | 4617 |  | 7 Days Work | 9200724 |
| 4620 | 36900.37000.37100.37200.37900.45000.409400 | Tile Grouting | 7d | 2026-10-21 | 2026-10-27 | 4617 |  | 7 Days Work | 9200734 |
| 4621 | 36900.37000.37100.37200.37900.45000.409500 | False Ceiling | 5d | 2026-10-28 | 2026-11-01 | 4620 |  | 7 Days Work | 9200744 |
| 4622 | 36900.37000.37100.37200.37900.45000.409600 | 2nd coat of primer | 10d | 2026-11-02 | 2026-11-11 | 4621 |  | 7 Days Work | 9200754 |
| 4623 | 36900.37000.37100.37200.37900.45000.409700 | Final cutting/polishing of stone flooring | 7d | 2026-11-12 | 2026-11-18 | 4622 |  | 7 Days Work | 9200764 |

| ID | WBS | Task | Duration | Start | Finish | Predecessors | Constraint | Calendar | Unique_Task_ID |
| --- | --- | --- | --- | --- | --- | --- | --- | --- | --- |
| 4624 | 36900.37000.37100.37200.37900.45000.53900 | **Toilet** | 237d | 2026-03-26 | 2026-11-17 |  | start no earlier than 2026-03-26 | 7 Days Work | 9197104 |
| 4625 | 36900.37000.37100.37200.37900.45000.53900.878400 | Toilet_MEP Clearance -1 | 7d | 2026-03-26 | 2026-04-01 | 4588 |  | 7 Days Work | 9207844 |
| 4626 | 36900.37000.37100.37200.37900.45000.53900.878500 | Toilet_Level Marking | 1d | 2026-04-02 | 2026-04-02 | 4625 |  | 7 Days Work | 9207854 |
| 4627 | 36900.37000.37100.37200.37900.45000.53900.878600 | Toilet_Chasing work for Electrical conduit & concealed plumbing | 5d | 2026-04-03 | 2026-04-07 | 4626 |  | 7 Days Work | 9207864 |
| 4628 | 36900.37000.37100.37200.37900.45000.53900.878700 | Toilet_Plumbing work 1st fix | 5d | 2026-04-08 | 2026-04-12 | 4627 |  | 7 Days Work | 9207874 |
| 4629 | 36900.37000.37100.37200.37900.45000.53900.878800 | Toilet_Sleeve/Bore Packing | 5d | 2026-04-13 | 2026-04-17 | 4628 |  | 7 Days Work | 9207884 |
| 4630 | 36900.37000.37100.37200.37900.45000.53900.878900 | Toilet_Waterproofing | 10d | 2026-04-18 | 2026-04-27 | 4629 |  | 7 Days Work | 9207894 |
| 4631 | 36900.37000.37100.37200.37900.45000.53900.879000 | Toilet_Screed | 1d | 2026-04-28 | 2026-04-28 | 4630 |  | 7 Days Work | 9207904 |
| 4632 | 36900.37000.37100.37200.37900.45000.53900.879100 | Toilet_Plumbing 2nd fix | 5d | 2026-04-29 | 2026-05-03 | 4631 |  | 7 Days Work | 9207914 |
| 4633 | 36900.37000.37100.37200.37900.45000.53900.879200 | Toilet_Ledge wall | 5d | 2026-05-04 | 2026-05-08 | 4632 |  | 7 Days Work | 9207924 |
| 4634 | 36900.37000.37100.37200.37900.45000.53900.879300 | Toilet_Cement Plaster | 5d | 2026-05-09 | 2026-05-13 | 4633 |  | 7 Days Work | 9207934 |
| 4635 | 36900.37000.37100.37200.37900.45000.53900.879400 | Toilet_Door Frame | 1d | 2026-05-14 | 2026-05-14 | 4634 |  | 7 Days Work | 9207944 |
| 4636 | 36900.37000.37100.37200.37900.45000.53900.879500 | Toilet_Wash basin & Couter | 3d | 2026-05-15 | 2026-05-17 | 4635 |  | 7 Days Work | 9207954 |
| 4637 | 36900.37000.37100.37200.37900.45000.53900.879600 | Toilet_Wall dado | 20d | 2026-05-18 | 2026-06-06 | 4636 |  | 7 Days Work | 9207964 |
| 4638 | 36900.37000.37100.37200.37900.45000.53900.879700 | Toilet_Granite Work-Ledge wall top | 3d | 2026-06-07 | 2026-06-09 | 4637 |  | 7 Days Work | 9207974 |
| 4639 | 36900.37000.37100.37200.37900.45000.53900.879800 | Toilet_Floor Tilling work | 20d | 2026-06-10 | 2026-06-29 | 4638 |  | 7 Days Work | 9207984 |
| 4640 | 36900.37000.37100.37200.37900.45000.53900.879900 | Toilet_1st row of dado | 5d | 2026-06-30 | 2026-07-04 | 4639 |  | 7 Days Work | 9207994 |
| 4641 | 36900.37000.37100.37200.37900.45000.53900.880000 | Toilet_Window Fixing | 14d | 2026-07-05 | 2026-07-18 | 4640 |  | 7 Days Work | 9208004 |
| 4642 | 36900.37000.37100.37200.37900.45000.53900.880100 | Toilet_Services above False ceiling | 21d | 2026-07-19 | 2026-08-08 | 4641 |  | 7 Days Work | 9208014 |
| 4643 | 36900.37000.37100.37200.37900.45000.53900.880200 | Toilet_False Ceiling framing | 12d | 2026-08-09 | 2026-08-20 | 4642 |  | 7 Days Work | 9208024 |
| 4644 | 36900.37000.37100.37200.37900.45000.53900.880300 | Toilet_Door Frame | 5d | 2026-08-21 | 2026-08-25 | 4643 |  | 7 Days Work | 9208034 |
| 4645 | 36900.37000.37100.37200.37900.45000.53900.880400 | Toilet_Epoxy Tile Grouting | 7d | 2026-10-21 | 2026-10-27 | 4620SS |  | 7 Days Work | 9208044 |
| 4646 | 36900.37000.37100.37200.37900.45000.53900.880500 | Toilet_False ceiling board fixing, CP Sanitary Fixture, Electric Fixture | 21d | 2026-10-28 | 2026-11-17 | 4645 |  | 7 Days Work | 9208054 |
| 4647 | 36900.37000.37100.37200.37900.45100 | **10th Habitable/11th Floor** | 245d | 2026-03-28 | 2026-11-27 |  | start no earlier than 2026-03-28 | 7 Days Work | 9196914 |
| 4648 | 36900.37000.37100.37200.37900.45100.409800 | Post Pour | 7d | 2026-03-28 | 2026-04-03 | 4094FS+15d |  | 7 Days Work | 9200774 |
| 4649 | 36900.37000.37100.37200.37900.45100.409900 | MEP Clearance -1 | 5d | 2026-04-04 | 2026-04-08 | 4648 |  | 7 Days Work | 9200784 |
| 4650 | 36900.37000.37100.37200.37900.45100.410000 | Benchmark | 1d | 2026-04-09 | 2026-04-09 | 4649 |  | 7 Days Work | 9200794 |
| 4651 | 36900.37000.37100.37200.37900.45100.410100 | Temporary Railing | 3d | 2026-04-10 | 2026-04-12 | 4650 |  | 7 Days Work | 9200804 |
| 4652 | 36900.37000.37100.37200.37900.45100.410200 | Blockwork | 10d | 2026-04-13 | 2026-04-22 | 4651 |  | 7 Days Work | 9200814 |
| 4653 | 36900.37000.37100.37200.37900.45100.410300 | MEP Clearance -2 | 10d | 2026-04-23 | 2026-05-02 | 4652 |  | 7 Days Work | 9200824 |
| 4654 | 36900.37000.37100.37200.37900.45100.410400 | Gypsum Plaster | 14d | 2026-05-03 | 2026-05-16 | 4653 |  | 7 Days Work | 9200834 |
| 4655 | 36900.37000.37100.37200.37900.45100.410500 | Kitchen Platform | 3d | 2026-05-17 | 2026-05-19 | 4654 |  | 7 Days Work | 9200844 |
| 4656 | 36900.37000.37100.37200.37900.45100.410600 | Kitchen dado | 7d | 2026-05-20 | 2026-05-26 | 4655 |  | 7 Days Work | 9200854 |
| 4657 | 36900.37000.37100.37200.37900.45100.410700 | Fire Fighting | 5d | 2026-05-27 | 2026-05-31 | 4656 |  | 7 Days Work | 9200864 |
| 4658 | 36900.37000.37100.37200.37900.45100.410800 | Anticapilary | 5d | 2026-06-01 | 2026-06-05 | 4657 |  | 7 Days Work | 9200874 |
| 4659 | 36900.37000.37100.37200.37900.45100.410900 | Stone Laying | 10d | 2026-07-09 | 2026-07-18 | 4699 |  | 7 Days Work | 9200884 |
| 4660 | 36900.37000.37100.37200.37900.45100.411000 | Tiles Laying | 7d | 2026-07-09 | 2026-07-15 | 4699 |  | 7 Days Work | 9200894 |
| 4661 | 36900.37000.37100.37200.37900.45100.411100 | 1st cutting/polishing of stone flooring | 7d | 2026-07-16 | 2026-07-22 | 4660 |  | 7 Days Work | 9200904 |
| 4662 | 36900.37000.37100.37200.37900.45100.411200 | Tiles/Stone skirting | 5d | 2026-07-23 | 2026-07-27 | 4661 |  | 7 Days Work | 9200914 |
| 4663 | 36900.37000.37100.37200.37900.45100.411300 | Protechtion sheet | 1d | 2026-07-28 | 2026-07-28 | 4662 |  | 7 Days Work | 9200924 |
| 4664 | 36900.37000.37100.37200.37900.45100.411400 | Installation of Temporary Door | 1d | 2026-07-29 | 2026-07-29 | 4663 |  | 7 Days Work | 9200934 |
| 4665 | 36900.37000.37100.37200.37900.45100.411500 | Fixing of window tracks | 5d | 2026-07-30 | 2026-08-03 | 4664 |  | 7 Days Work | 9200944 |
| 4666 | 36900.37000.37100.37200.37900.45100.411600 | Wire Pulling | 7d | 2026-08-04 | 2026-08-10 | 4665 |  | 7 Days Work | 9200954 |
| 4667 | 36900.37000.37100.37200.37900.45100.411700 | Gypsum Remaining | 5d | 2026-08-11 | 2026-08-15 | 4666 |  | 7 Days Work | 9200964 |
| 4668 | 36900.37000.37100.37200.37900.45100.411800 | Fixing of windoow shutter | 5d | 2026-08-16 | 2026-08-20 | 4667 |  | 7 Days Work | 9200974 |
| 4669 | 36900.37000.37100.37200.37900.45100.411900 | Putty Works - walls & ceiling | 15d | 2026-08-21 | 2026-09-04 | 4668 |  | 7 Days Work | 9200984 |
| 4670 | 36900.37000.37100.37200.37900.45100.412000 | False Ceiling- Framing | 10d | 2026-09-05 | 2026-09-14 | 4669 |  | 7 Days Work | 9200994 |
| 4671 | 36900.37000.37100.37200.37900.45100.412100 | Pre Hung Door | 3d | 2026-09-15 | 2026-09-17 | 4670 |  | 7 Days Work | 9201004 |
| 4672 | 36900.37000.37100.37200.37900.45100.412200 | Protechtion sheet | 2d | 2026-09-18 | 2026-09-19 | 4671 |  | 7 Days Work | 9201014 |
| 4673 | 36900.37000.37100.37200.37900.45100.412300 | Skirting near door | 2d | 2026-09-20 | 2026-09-21 | 4672 |  | 7 Days Work | 9201024 |
| 4674 | 36900.37000.37100.37200.37900.45100.412400 | Electrical Switch box fixing | 14d | 2026-09-22 | 2026-10-05 | 4673 |  | 7 Days Work | 9201034 |
| 4675 | 36900.37000.37100.37200.37900.45100.412500 | Fire Fighting painting | 5d | 2026-10-06 | 2026-10-10 | 4674 |  | 7 Days Work | 9201044 |
| 4676 | 36900.37000.37100.37200.37900.45100.412600 | Protection of all flooring, door & window hardware | 5d | 2026-10-11 | 2026-10-15 | 4675 |  | 7 Days Work | 9201054 |
| 4677 | 36900.37000.37100.37200.37900.45100.412700 | 1st coat primer- ceiling 1st & walls | 14d | 2026-10-16 | 2026-10-29 | 4676 |  | 7 Days Work | 9201064 |
| 4678 | 36900.37000.37100.37200.37900.45100.412800 | Wooden Flooring | 5d | 2026-10-30 | 2026-11-03 | 4677 |  | 7 Days Work | 9201074 |
| 4679 | 36900.37000.37100.37200.37900.45100.412900 | Removing of Temporary Railing & installation of Glass Railing | 5d | 2026-10-30 | 2026-11-03 | 4677 |  | 7 Days Work | 9201084 |
| 4680 | 36900.37000.37100.37200.37900.45100.413000 | Tile Grouting | 7d | 2026-10-30 | 2026-11-05 | 4677 |  | 7 Days Work | 9201094 |
| 4681 | 36900.37000.37100.37200.37900.45100.413100 | False Ceiling | 5d | 2026-11-06 | 2026-11-10 | 4680 |  | 7 Days Work | 9201104 |
| 4682 | 36900.37000.37100.37200.37900.45100.413200 | 2nd coat of primer | 10d | 2026-11-11 | 2026-11-20 | 4681 |  | 7 Days Work | 9201114 |
| 4683 | 36900.37000.37100.37200.37900.45100.413300 | Final cutting/polishing of stone flooring | 7d | 2026-11-21 | 2026-11-27 | 4682 |  | 7 Days Work | 9201124 |

| ID | WBS | Task | Duration | Start | Finish | Predecessors | Constraint | Calendar | Unique_Task_ID |
| --- | --- | --- | --- | --- | --- | --- | --- | --- | --- |
| 4684 | 36900.37000.37100.37200.37900.45100.53800 | **Toilet** | 237d | 2026-04-04 | 2026-11-26 |  | start no earlier than 2026-04-04 | 7 Days Work | 9197114 |
| 4685 | 36900.37000.37100.37200.37900.45100.53800.880600 | Toilet_MEP Clearance -1 | 7d | 2026-04-04 | 2026-04-10 | 4648 |  | 7 Days Work | 9208064 |
| 4686 | 36900.37000.37100.37200.37900.45100.53800.880700 | Toilet_Level Marking | 1d | 2026-04-11 | 2026-04-11 | 4685 |  | 7 Days Work | 9208074 |
| 4687 | 36900.37000.37100.37200.37900.45100.53800.880800 | Toilet_Chasing work for Electrical conduit & concealed plumbing | 5d | 2026-04-12 | 2026-04-16 | 4686 |  | 7 Days Work | 9208084 |
| 4688 | 36900.37000.37100.37200.37900.45100.53800.880900 | Toilet_Plumbing work 1st fix | 5d | 2026-04-17 | 2026-04-21 | 4687 |  | 7 Days Work | 9208094 |
| 4689 | 36900.37000.37100.37200.37900.45100.53800.881000 | Toilet_Sleeve/Bore Packing | 5d | 2026-04-22 | 2026-04-26 | 4688 |  | 7 Days Work | 9208104 |
| 4690 | 36900.37000.37100.37200.37900.45100.53800.881100 | Toilet_Waterproofing | 10d | 2026-04-27 | 2026-05-06 | 4689 |  | 7 Days Work | 9208114 |
| 4691 | 36900.37000.37100.37200.37900.45100.53800.881200 | Toilet_Screed | 1d | 2026-05-07 | 2026-05-07 | 4690 |  | 7 Days Work | 9208124 |
| 4692 | 36900.37000.37100.37200.37900.45100.53800.881300 | Toilet_Plumbing 2nd fix | 5d | 2026-05-08 | 2026-05-12 | 4691 |  | 7 Days Work | 9208134 |
| 4693 | 36900.37000.37100.37200.37900.45100.53800.881400 | Toilet_Ledge wall | 5d | 2026-05-13 | 2026-05-17 | 4692 |  | 7 Days Work | 9208144 |
| 4694 | 36900.37000.37100.37200.37900.45100.53800.881500 | Toilet_Cement Plaster | 5d | 2026-05-18 | 2026-05-22 | 4693 |  | 7 Days Work | 9208154 |
| 4695 | 36900.37000.37100.37200.37900.45100.53800.881600 | Toilet_Door Frame | 1d | 2026-05-23 | 2026-05-23 | 4694 |  | 7 Days Work | 9208164 |
| 4696 | 36900.37000.37100.37200.37900.45100.53800.881700 | Toilet_Wash basin & Couter | 3d | 2026-05-24 | 2026-05-26 | 4695 |  | 7 Days Work | 9208174 |
| 4697 | 36900.37000.37100.37200.37900.45100.53800.881800 | Toilet_Wall dado | 20d | 2026-05-27 | 2026-06-15 | 4696 |  | 7 Days Work | 9208184 |
| 4698 | 36900.37000.37100.37200.37900.45100.53800.881900 | Toilet_Granite Work-Ledge wall top | 3d | 2026-06-16 | 2026-06-18 | 4697 |  | 7 Days Work | 9208194 |
| 4699 | 36900.37000.37100.37200.37900.45100.53800.882000 | Toilet_Floor Tilling work | 20d | 2026-06-19 | 2026-07-08 | 4698 |  | 7 Days Work | 9208204 |
| 4700 | 36900.37000.37100.37200.37900.45100.53800.882100 | Toilet_1st row of dado | 5d | 2026-07-09 | 2026-07-13 | 4699 |  | 7 Days Work | 9208214 |
| 4701 | 36900.37000.37100.37200.37900.45100.53800.882200 | Toilet_Window Fixing | 14d | 2026-07-14 | 2026-07-27 | 4700 |  | 7 Days Work | 9208224 |
| 4702 | 36900.37000.37100.37200.37900.45100.53800.882300 | Toilet_Services above False ceiling | 21d | 2026-07-28 | 2026-08-17 | 4701 |  | 7 Days Work | 9208234 |
| 4703 | 36900.37000.37100.37200.37900.45100.53800.882400 | Toilet_False Ceiling framing | 12d | 2026-08-18 | 2026-08-29 | 4702 |  | 7 Days Work | 9208244 |
| 4704 | 36900.37000.37100.37200.37900.45100.53800.882500 | Toilet_Door Frame | 5d | 2026-08-30 | 2026-09-03 | 4703 |  | 7 Days Work | 9208254 |
| 4705 | 36900.37000.37100.37200.37900.45100.53800.882600 | Toilet_Epoxy Tile Grouting | 7d | 2026-10-30 | 2026-11-05 | 4680SS |  | 7 Days Work | 9208264 |
| 4706 | 36900.37000.37100.37200.37900.45100.53800.882700 | Toilet_False ceiling board fixing, CP Sanitary Fixture, Electric Fixture | 21d | 2026-11-06 | 2026-11-26 | 4705 |  | 7 Days Work | 9208274 |
| 4707 | 36900.37000.37100.37200.37900.45200 | **11th Habitable/12th Floor** | 245d | 2026-04-06 | 2026-12-06 |  | start no earlier than 2026-04-06 | 7 Days Work | 9196924 |
| 4708 | 36900.37000.37100.37200.37900.45200.413400 | Post Pour | 7d | 2026-04-06 | 2026-04-12 | 4095FS+15d |  | 7 Days Work | 9201134 |
| 4709 | 36900.37000.37100.37200.37900.45200.413500 | MEP Clearance -1 | 5d | 2026-04-13 | 2026-04-17 | 4708 |  | 7 Days Work | 9201144 |
| 4710 | 36900.37000.37100.37200.37900.45200.413600 | Benchmark | 1d | 2026-04-18 | 2026-04-18 | 4709 |  | 7 Days Work | 9201154 |
| 4711 | 36900.37000.37100.37200.37900.45200.413700 | Temporary Railing | 3d | 2026-04-19 | 2026-04-21 | 4710 |  | 7 Days Work | 9201164 |
| 4712 | 36900.37000.37100.37200.37900.45200.413800 | Blockwork | 10d | 2026-04-22 | 2026-05-01 | 4711 |  | 7 Days Work | 9201174 |
| 4713 | 36900.37000.37100.37200.37900.45200.413900 | MEP Clearance -2 | 10d | 2026-05-02 | 2026-05-11 | 4712 |  | 7 Days Work | 9201184 |
| 4714 | 36900.37000.37100.37200.37900.45200.414000 | Gypsum Plaster | 14d | 2026-05-12 | 2026-05-25 | 4713 |  | 7 Days Work | 9201194 |
| 4715 | 36900.37000.37100.37200.37900.45200.414100 | Kitchen Platform | 3d | 2026-05-26 | 2026-05-28 | 4714 |  | 7 Days Work | 9201204 |
| 4716 | 36900.37000.37100.37200.37900.45200.414200 | Kitchen dado | 7d | 2026-05-29 | 2026-06-04 | 4715 |  | 7 Days Work | 9201214 |
| 4717 | 36900.37000.37100.37200.37900.45200.414300 | Fire Fighting | 5d | 2026-06-05 | 2026-06-09 | 4716 |  | 7 Days Work | 9201224 |
| 4718 | 36900.37000.37100.37200.37900.45200.414400 | Anticapilary | 5d | 2026-06-10 | 2026-06-14 | 4717 |  | 7 Days Work | 9201234 |
| 4719 | 36900.37000.37100.37200.37900.45200.414500 | Stone Laying | 10d | 2026-07-18 | 2026-07-27 | 4759 |  | 7 Days Work | 9201244 |
| 4720 | 36900.37000.37100.37200.37900.45200.414600 | Tiles Laying | 7d | 2026-07-18 | 2026-07-24 | 4759 |  | 7 Days Work | 9201254 |
| 4721 | 36900.37000.37100.37200.37900.45200.414700 | 1st cutting/polishing of stone flooring | 7d | 2026-07-25 | 2026-07-31 | 4720 |  | 7 Days Work | 9201264 |
| 4722 | 36900.37000.37100.37200.37900.45200.414800 | Tiles/Stone skirting | 5d | 2026-08-01 | 2026-08-05 | 4721 |  | 7 Days Work | 9201274 |
| 4723 | 36900.37000.37100.37200.37900.45200.414900 | Protechtion sheet | 1d | 2026-08-06 | 2026-08-06 | 4722 |  | 7 Days Work | 9201284 |
| 4724 | 36900.37000.37100.37200.37900.45200.415000 | Installation of Temporary Door | 1d | 2026-08-07 | 2026-08-07 | 4723 |  | 7 Days Work | 9201294 |
| 4725 | 36900.37000.37100.37200.37900.45200.415100 | Fixing of window tracks | 5d | 2026-08-08 | 2026-08-12 | 4724 |  | 7 Days Work | 9201304 |
| 4726 | 36900.37000.37100.37200.37900.45200.415200 | Wire Pulling | 7d | 2026-08-13 | 2026-08-19 | 4725 |  | 7 Days Work | 9201314 |
| 4727 | 36900.37000.37100.37200.37900.45200.415300 | Gypsum Remaining | 5d | 2026-08-20 | 2026-08-24 | 4726 |  | 7 Days Work | 9201324 |
| 4728 | 36900.37000.37100.37200.37900.45200.415400 | Fixing of windoow shutter | 5d | 2026-08-25 | 2026-08-29 | 4727 |  | 7 Days Work | 9201334 |
| 4729 | 36900.37000.37100.37200.37900.45200.415500 | Putty Works - walls & ceiling | 15d | 2026-08-30 | 2026-09-13 | 4728 |  | 7 Days Work | 9201344 |
| 4730 | 36900.37000.37100.37200.37900.45200.415600 | False Ceiling- Framing | 10d | 2026-09-14 | 2026-09-23 | 4729 |  | 7 Days Work | 9201354 |
| 4731 | 36900.37000.37100.37200.37900.45200.415700 | Pre Hung Door | 3d | 2026-09-24 | 2026-09-26 | 4730 |  | 7 Days Work | 9201364 |
| 4732 | 36900.37000.37100.37200.37900.45200.415800 | Protechtion sheet | 2d | 2026-09-27 | 2026-09-28 | 4731 |  | 7 Days Work | 9201374 |
| 4733 | 36900.37000.37100.37200.37900.45200.415900 | Skirting near door | 2d | 2026-09-29 | 2026-09-30 | 4732 |  | 7 Days Work | 9201384 |
| 4734 | 36900.37000.37100.37200.37900.45200.416000 | Electrical Switch box fixing | 14d | 2026-10-01 | 2026-10-14 | 4733 |  | 7 Days Work | 9201394 |
| 4735 | 36900.37000.37100.37200.37900.45200.416100 | Fire Fighting painting | 5d | 2026-10-15 | 2026-10-19 | 4734 |  | 7 Days Work | 9201404 |
| 4736 | 36900.37000.37100.37200.37900.45200.416200 | Protection of all flooring, door & window hardware | 5d | 2026-10-20 | 2026-10-24 | 4735 |  | 7 Days Work | 9201414 |
| 4737 | 36900.37000.37100.37200.37900.45200.416300 | 1st coat primer- ceiling 1st & walls | 14d | 2026-10-25 | 2026-11-07 | 4736 |  | 7 Days Work | 9201424 |
| 4738 | 36900.37000.37100.37200.37900.45200.416400 | Wooden Flooring | 5d | 2026-11-08 | 2026-11-12 | 4737 |  | 7 Days Work | 9201434 |
| 4739 | 36900.37000.37100.37200.37900.45200.416500 | Removing of Temporary Railing & installation of Glass Railing | 5d | 2026-11-08 | 2026-11-12 | 4737 |  | 7 Days Work | 9201444 |
| 4740 | 36900.37000.37100.37200.37900.45200.416600 | Tile Grouting | 7d | 2026-11-08 | 2026-11-14 | 4737 |  | 7 Days Work | 9201454 |
| 4741 | 36900.37000.37100.37200.37900.45200.416700 | False Ceiling | 5d | 2026-11-15 | 2026-11-19 | 4740 |  | 7 Days Work | 9201464 |
| 4742 | 36900.37000.37100.37200.37900.45200.416800 | 2nd coat of primer | 10d | 2026-11-20 | 2026-11-29 | 4741 |  | 7 Days Work | 9201474 |
| 4743 | 36900.37000.37100.37200.37900.45200.416900 | Final cutting/polishing of stone flooring | 7d | 2026-11-30 | 2026-12-06 | 4742 |  | 7 Days Work | 9201484 |

| ID | WBS | Task | Duration | Start | Finish | Predecessors | Constraint | Calendar | Unique_Task_ID |
| --- | --- | --- | --- | --- | --- | --- | --- | --- | --- |
| 4744 | 36900.37000.37100.37200.37900.45200.53700 | **Toilet** | 237d | 2026-04-13 | 2026-12-05 |  | start no earlier than 2026-04-13 | 7 Days Work | 9197124 |
| 4745 | 36900.37000.37100.37200.37900.45200.53700.882800 | Toilet_MEP Clearance -1 | 7d | 2026-04-13 | 2026-04-19 | 4708 |  | 7 Days Work | 9208284 |
| 4746 | 36900.37000.37100.37200.37900.45200.53700.882900 | Toilet_Level Marking | 1d | 2026-04-20 | 2026-04-20 | 4745 |  | 7 Days Work | 9208294 |
| 4747 | 36900.37000.37100.37200.37900.45200.53700.883000 | Toilet_Chasing work for Electrical conduit & concealed plumbing | 5d | 2026-04-21 | 2026-04-25 | 4746 |  | 7 Days Work | 9208304 |
| 4748 | 36900.37000.37100.37200.37900.45200.53700.883100 | Toilet_Plumbing work 1st fix | 5d | 2026-04-26 | 2026-04-30 | 4747 |  | 7 Days Work | 9208314 |
| 4749 | 36900.37000.37100.37200.37900.45200.53700.883200 | Toilet_Sleeve/Bore Packing | 5d | 2026-05-01 | 2026-05-05 | 4748 |  | 7 Days Work | 9208324 |
| 4750 | 36900.37000.37100.37200.37900.45200.53700.883300 | Toilet_Waterproofing | 10d | 2026-05-06 | 2026-05-15 | 4749 |  | 7 Days Work | 9208334 |
| 4751 | 36900.37000.37100.37200.37900.45200.53700.883400 | Toilet_Screed | 1d | 2026-05-16 | 2026-05-16 | 4750 |  | 7 Days Work | 9208344 |
| 4752 | 36900.37000.37100.37200.37900.45200.53700.883500 | Toilet_Plumbing 2nd fix | 5d | 2026-05-17 | 2026-05-21 | 4751 |  | 7 Days Work | 9208354 |
| 4753 | 36900.37000.37100.37200.37900.45200.53700.883600 | Toilet_Ledge wall | 5d | 2026-05-22 | 2026-05-26 | 4752 |  | 7 Days Work | 9208364 |
| 4754 | 36900.37000.37100.37200.37900.45200.53700.883700 | Toilet_Cement Plaster | 5d | 2026-05-27 | 2026-05-31 | 4753 |  | 7 Days Work | 9208374 |
| 4755 | 36900.37000.37100.37200.37900.45200.53700.883800 | Toilet_Door Frame | 1d | 2026-06-01 | 2026-06-01 | 4754 |  | 7 Days Work | 9208384 |
| 4756 | 36900.37000.37100.37200.37900.45200.53700.883900 | Toilet_Wash basin & Couter | 3d | 2026-06-02 | 2026-06-04 | 4755 |  | 7 Days Work | 9208394 |
| 4757 | 36900.37000.37100.37200.37900.45200.53700.884000 | Toilet_Wall dado | 20d | 2026-06-05 | 2026-06-24 | 4756 |  | 7 Days Work | 9208404 |
| 4758 | 36900.37000.37100.37200.37900.45200.53700.884100 | Toilet_Granite Work-Ledge wall top | 3d | 2026-06-25 | 2026-06-27 | 4757 |  | 7 Days Work | 9208414 |
| 4759 | 36900.37000.37100.37200.37900.45200.53700.884200 | Toilet_Floor Tilling work | 20d | 2026-06-28 | 2026-07-17 | 4758 |  | 7 Days Work | 9208424 |
| 4760 | 36900.37000.37100.37200.37900.45200.53700.884300 | Toilet_1st row of dado | 5d | 2026-07-18 | 2026-07-22 | 4759 |  | 7 Days Work | 9208434 |
| 4761 | 36900.37000.37100.37200.37900.45200.53700.884400 | Toilet_Window Fixing | 14d | 2026-07-23 | 2026-08-05 | 4760 |  | 7 Days Work | 9208444 |
| 4762 | 36900.37000.37100.37200.37900.45200.53700.884500 | Toilet_Services above False ceiling | 21d | 2026-08-06 | 2026-08-26 | 4761 |  | 7 Days Work | 9208454 |
| 4763 | 36900.37000.37100.37200.37900.45200.53700.884600 | Toilet_False Ceiling framing | 12d | 2026-08-27 | 2026-09-07 | 4762 |  | 7 Days Work | 9208464 |
| 4764 | 36900.37000.37100.37200.37900.45200.53700.884700 | Toilet_Door Frame | 5d | 2026-09-08 | 2026-09-12 | 4763 |  | 7 Days Work | 9208474 |
| 4765 | 36900.37000.37100.37200.37900.45200.53700.884800 | Toilet_Epoxy Tile Grouting | 7d | 2026-11-08 | 2026-11-14 | 4740SS |  | 7 Days Work | 9208484 |
| 4766 | 36900.37000.37100.37200.37900.45200.53700.884900 | Toilet_False ceiling board fixing, CP Sanitary Fixture, Electric Fixture | 21d | 2026-11-15 | 2026-12-05 | 4765 |  | 7 Days Work | 9208494 |
| 4767 | 36900.37000.37100.37200.37900.45300 | **12th Habitable/13th Floor** | 245d | 2026-04-15 | 2026-12-15 |  | start no earlier than 2026-04-15 | 7 Days Work | 9196934 |
| 4768 | 36900.37000.37100.37200.37900.45300.417000 | Post Pour | 7d | 2026-04-15 | 2026-04-21 | 4096FS+15d |  | 7 Days Work | 9201494 |
| 4769 | 36900.37000.37100.37200.37900.45300.417100 | MEP Clearance -1 | 5d | 2026-04-22 | 2026-04-26 | 4768 |  | 7 Days Work | 9201504 |
| 4770 | 36900.37000.37100.37200.37900.45300.417200 | Benchmark | 1d | 2026-04-27 | 2026-04-27 | 4769 |  | 7 Days Work | 9201514 |
| 4771 | 36900.37000.37100.37200.37900.45300.417300 | Temporary Railing | 3d | 2026-04-28 | 2026-04-30 | 4770 |  | 7 Days Work | 9201524 |
| 4772 | 36900.37000.37100.37200.37900.45300.417400 | Blockwork | 10d | 2026-05-01 | 2026-05-10 | 4771 |  | 7 Days Work | 9201534 |
| 4773 | 36900.37000.37100.37200.37900.45300.417500 | MEP Clearance -2 | 10d | 2026-05-11 | 2026-05-20 | 4772 |  | 7 Days Work | 9201544 |
| 4774 | 36900.37000.37100.37200.37900.45300.417600 | Gypsum Plaster | 14d | 2026-05-21 | 2026-06-03 | 4773 |  | 7 Days Work | 9201554 |
| 4775 | 36900.37000.37100.37200.37900.45300.417700 | Kitchen Platform | 3d | 2026-06-04 | 2026-06-06 | 4774 |  | 7 Days Work | 9201564 |
| 4776 | 36900.37000.37100.37200.37900.45300.417800 | Kitchen dado | 7d | 2026-06-07 | 2026-06-13 | 4775 |  | 7 Days Work | 9201574 |
| 4777 | 36900.37000.37100.37200.37900.45300.417900 | Fire Fighting | 5d | 2026-06-14 | 2026-06-18 | 4776 |  | 7 Days Work | 9201584 |
| 4778 | 36900.37000.37100.37200.37900.45300.418000 | Anticapilary | 5d | 2026-06-19 | 2026-06-23 | 4777 |  | 7 Days Work | 9201594 |
| 4779 | 36900.37000.37100.37200.37900.45300.418100 | Stone Laying | 10d | 2026-07-27 | 2026-08-05 | 4819 |  | 7 Days Work | 9201604 |
| 4780 | 36900.37000.37100.37200.37900.45300.418200 | Tiles Laying | 7d | 2026-07-27 | 2026-08-02 | 4819 |  | 7 Days Work | 9201614 |
| 4781 | 36900.37000.37100.37200.37900.45300.418300 | 1st cutting/polishing of stone flooring | 7d | 2026-08-03 | 2026-08-09 | 4780 |  | 7 Days Work | 9201624 |
| 4782 | 36900.37000.37100.37200.37900.45300.418400 | Tiles/Stone skirting | 5d | 2026-08-10 | 2026-08-14 | 4781 |  | 7 Days Work | 9201634 |
| 4783 | 36900.37000.37100.37200.37900.45300.418500 | Protechtion sheet | 1d | 2026-08-15 | 2026-08-15 | 4782 |  | 7 Days Work | 9201644 |
| 4784 | 36900.37000.37100.37200.37900.45300.418600 | Installation of Temporary Door | 1d | 2026-08-16 | 2026-08-16 | 4783 |  | 7 Days Work | 9201654 |
| 4785 | 36900.37000.37100.37200.37900.45300.418700 | Fixing of window tracks | 5d | 2026-08-17 | 2026-08-21 | 4784 |  | 7 Days Work | 9201664 |
| 4786 | 36900.37000.37100.37200.37900.45300.418800 | Wire Pulling | 7d | 2026-08-22 | 2026-08-28 | 4785 |  | 7 Days Work | 9201674 |
| 4787 | 36900.37000.37100.37200.37900.45300.418900 | Gypsum Remaining | 5d | 2026-08-29 | 2026-09-02 | 4786 |  | 7 Days Work | 9201684 |
| 4788 | 36900.37000.37100.37200.37900.45300.419000 | Fixing of windoow shutter | 5d | 2026-09-03 | 2026-09-07 | 4787 |  | 7 Days Work | 9201694 |
| 4789 | 36900.37000.37100.37200.37900.45300.419100 | Putty Works - walls & ceiling | 15d | 2026-09-08 | 2026-09-22 | 4788 |  | 7 Days Work | 9201704 |
| 4790 | 36900.37000.37100.37200.37900.45300.419200 | False Ceiling- Framing | 10d | 2026-09-23 | 2026-10-02 | 4789 |  | 7 Days Work | 9201714 |
| 4791 | 36900.37000.37100.37200.37900.45300.419300 | Pre Hung Door | 3d | 2026-10-03 | 2026-10-05 | 4790 |  | 7 Days Work | 9201724 |
| 4792 | 36900.37000.37100.37200.37900.45300.419400 | Protechtion sheet | 2d | 2026-10-06 | 2026-10-07 | 4791 |  | 7 Days Work | 9201734 |
| 4793 | 36900.37000.37100.37200.37900.45300.419500 | Skirting near door | 2d | 2026-10-08 | 2026-10-09 | 4792 |  | 7 Days Work | 9201744 |
| 4794 | 36900.37000.37100.37200.37900.45300.419600 | Electrical Switch box fixing | 14d | 2026-10-10 | 2026-10-23 | 4793 |  | 7 Days Work | 9201754 |
| 4795 | 36900.37000.37100.37200.37900.45300.419700 | Fire Fighting painting | 5d | 2026-10-24 | 2026-10-28 | 4794 |  | 7 Days Work | 9201764 |
| 4796 | 36900.37000.37100.37200.37900.45300.419800 | Protection of all flooring, door & window hardware | 5d | 2026-10-29 | 2026-11-02 | 4795 |  | 7 Days Work | 9201774 |
| 4797 | 36900.37000.37100.37200.37900.45300.419900 | 1st coat primer- ceiling 1st & walls | 14d | 2026-11-03 | 2026-11-16 | 4796 |  | 7 Days Work | 9201784 |
| 4798 | 36900.37000.37100.37200.37900.45300.420000 | Wooden Flooring | 5d | 2026-11-17 | 2026-11-21 | 4797 |  | 7 Days Work | 9201794 |
| 4799 | 36900.37000.37100.37200.37900.45300.420100 | Removing of Temporary Railing & installation of Glass Railing | 5d | 2026-11-17 | 2026-11-21 | 4797 |  | 7 Days Work | 9201804 |
| 4800 | 36900.37000.37100.37200.37900.45300.420200 | Tile Grouting | 7d | 2026-11-17 | 2026-11-23 | 4797 |  | 7 Days Work | 9201814 |
| 4801 | 36900.37000.37100.37200.37900.45300.420300 | False Ceiling | 5d | 2026-11-24 | 2026-11-28 | 4800 |  | 7 Days Work | 9201824 |
| 4802 | 36900.37000.37100.37200.37900.45300.420400 | 2nd coat of primer | 10d | 2026-11-29 | 2026-12-08 | 4801 |  | 7 Days Work | 9201834 |
| 4803 | 36900.37000.37100.37200.37900.45300.420500 | Final cutting/polishing of stone flooring | 7d | 2026-12-09 | 2026-12-15 | 4802 |  | 7 Days Work | 9201844 |

| ID | WBS | Task | Duration | Start | Finish | Predecessors | Constraint | Calendar | Unique_Task_ID |
| --- | --- | --- | --- | --- | --- | --- | --- | --- | --- |
| 4804 | 36900.37000.37100.37200.37900.45300.66300 | **Toilet** | 237d | 2026-04-22 | 2026-12-14 |  | start no earlier than 2026-04-22 | 7 Days Work | 9197134 |
| 4805 | 36900.37000.37100.37200.37900.45300.66300.885000 | Toilet_MEP Clearance -1 | 7d | 2026-04-22 | 2026-04-28 | 4768 |  | 7 Days Work | 9208504 |
| 4806 | 36900.37000.37100.37200.37900.45300.66300.885100 | Toilet_Level Marking | 1d | 2026-04-29 | 2026-04-29 | 4805 |  | 7 Days Work | 9208514 |
| 4807 | 36900.37000.37100.37200.37900.45300.66300.885200 | Toilet_Chasing work for Electrical conduit & concealed plumbing | 5d | 2026-04-30 | 2026-05-04 | 4806 |  | 7 Days Work | 9208524 |
| 4808 | 36900.37000.37100.37200.37900.45300.66300.885300 | Toilet_Plumbing work 1st fix | 5d | 2026-05-05 | 2026-05-09 | 4807 |  | 7 Days Work | 9208534 |
| 4809 | 36900.37000.37100.37200.37900.45300.66300.885400 | Toilet_Sleeve/Bore Packing | 5d | 2026-05-10 | 2026-05-14 | 4808 |  | 7 Days Work | 9208544 |
| 4810 | 36900.37000.37100.37200.37900.45300.66300.885500 | Toilet_Waterproofing | 10d | 2026-05-15 | 2026-05-24 | 4809 |  | 7 Days Work | 9208554 |
| 4811 | 36900.37000.37100.37200.37900.45300.66300.885600 | Toilet_Screed | 1d | 2026-05-25 | 2026-05-25 | 4810 |  | 7 Days Work | 9208564 |
| 4812 | 36900.37000.37100.37200.37900.45300.66300.885700 | Toilet_Plumbing 2nd fix | 5d | 2026-05-26 | 2026-05-30 | 4811 |  | 7 Days Work | 9208574 |
| 4813 | 36900.37000.37100.37200.37900.45300.66300.885800 | Toilet_Ledge wall | 5d | 2026-05-31 | 2026-06-04 | 4812 |  | 7 Days Work | 9208584 |
| 4814 | 36900.37000.37100.37200.37900.45300.66300.885900 | Toilet_Cement Plaster | 5d | 2026-06-05 | 2026-06-09 | 4813 |  | 7 Days Work | 9208594 |
| 4815 | 36900.37000.37100.37200.37900.45300.66300.886000 | Toilet_Door Frame | 1d | 2026-06-10 | 2026-06-10 | 4814 |  | 7 Days Work | 9208604 |
| 4816 | 36900.37000.37100.37200.37900.45300.66300.886100 | Toilet_Wash basin & Couter | 3d | 2026-06-11 | 2026-06-13 | 4815 |  | 7 Days Work | 9208614 |
| 4817 | 36900.37000.37100.37200.37900.45300.66300.886200 | Toilet_Wall dado | 20d | 2026-06-14 | 2026-07-03 | 4816 |  | 7 Days Work | 9208624 |
| 4818 | 36900.37000.37100.37200.37900.45300.66300.886300 | Toilet_Granite Work-Ledge wall top | 3d | 2026-07-04 | 2026-07-06 | 4817 |  | 7 Days Work | 9208634 |
| 4819 | 36900.37000.37100.37200.37900.45300.66300.886400 | Toilet_Floor Tilling work | 20d | 2026-07-07 | 2026-07-26 | 4818 |  | 7 Days Work | 9208644 |
| 4820 | 36900.37000.37100.37200.37900.45300.66300.886500 | Toilet_1st row of dado | 5d | 2026-07-27 | 2026-07-31 | 4819 |  | 7 Days Work | 9208654 |
| 4821 | 36900.37000.37100.37200.37900.45300.66300.886600 | Toilet_Window Fixing | 14d | 2026-08-01 | 2026-08-14 | 4820 |  | 7 Days Work | 9208664 |
| 4822 | 36900.37000.37100.37200.37900.45300.66300.886700 | Toilet_Services above False ceiling | 21d | 2026-08-15 | 2026-09-04 | 4821 |  | 7 Days Work | 9208674 |
| 4823 | 36900.37000.37100.37200.37900.45300.66300.886800 | Toilet_False Ceiling framing | 12d | 2026-09-05 | 2026-09-16 | 4822 |  | 7 Days Work | 9208684 |
| 4824 | 36900.37000.37100.37200.37900.45300.66300.886900 | Toilet_Door Frame | 5d | 2026-09-17 | 2026-09-21 | 4823 |  | 7 Days Work | 9208694 |
| 4825 | 36900.37000.37100.37200.37900.45300.66300.887000 | Toilet_Epoxy Tile Grouting | 7d | 2026-11-17 | 2026-11-23 | 4800SS |  | 7 Days Work | 9208704 |
| 4826 | 36900.37000.37100.37200.37900.45300.66300.887100 | Toilet_False ceiling board fixing, CP Sanitary Fixture, Electric Fixture | 21d | 2026-11-24 | 2026-12-14 | 4825 |  | 7 Days Work | 9208714 |
| 4827 | 36900.37000.37100.37200.37900.45400 | **13th Habitable/14th Floor** | 245d | 2026-04-27 | 2026-12-27 |  | start no earlier than 2026-04-27 | 7 Days Work | 9196944 |
| 4828 | 36900.37000.37100.37200.37900.45400.420600 | Post Pour | 7d | 2026-04-27 | 2026-05-03 | 4097FS+15d |  | 7 Days Work | 9201854 |
| 4829 | 36900.37000.37100.37200.37900.45400.420700 | MEP Clearance -1 | 5d | 2026-05-04 | 2026-05-08 | 4828 |  | 7 Days Work | 9201864 |
| 4830 | 36900.37000.37100.37200.37900.45400.420800 | Benchmark | 1d | 2026-05-09 | 2026-05-09 | 4829 |  | 7 Days Work | 9201874 |
| 4831 | 36900.37000.37100.37200.37900.45400.420900 | Temporary Railing | 3d | 2026-05-10 | 2026-05-12 | 4830 |  | 7 Days Work | 9201884 |
| 4832 | 36900.37000.37100.37200.37900.45400.421000 | Blockwork | 10d | 2026-05-13 | 2026-05-22 | 4831 |  | 7 Days Work | 9201894 |
| 4833 | 36900.37000.37100.37200.37900.45400.421100 | MEP Clearance -2 | 10d | 2026-05-23 | 2026-06-01 | 4832 |  | 7 Days Work | 9201904 |
| 4834 | 36900.37000.37100.37200.37900.45400.421200 | Gypsum Plaster | 14d | 2026-06-02 | 2026-06-15 | 4833 |  | 7 Days Work | 9201914 |
| 4835 | 36900.37000.37100.37200.37900.45400.421300 | Kitchen Platform | 3d | 2026-06-16 | 2026-06-18 | 4834 |  | 7 Days Work | 9201924 |
| 4836 | 36900.37000.37100.37200.37900.45400.421400 | Kitchen dado | 7d | 2026-06-19 | 2026-06-25 | 4835 |  | 7 Days Work | 9201934 |
| 4837 | 36900.37000.37100.37200.37900.45400.421500 | Fire Fighting | 5d | 2026-06-26 | 2026-06-30 | 4836 |  | 7 Days Work | 9201944 |
| 4838 | 36900.37000.37100.37200.37900.45400.421600 | Anticapilary | 5d | 2026-07-01 | 2026-07-05 | 4837 |  | 7 Days Work | 9201954 |
| 4839 | 36900.37000.37100.37200.37900.45400.421700 | Stone Laying | 10d | 2026-08-08 | 2026-08-17 | 4879 |  | 7 Days Work | 9201964 |
| 4840 | 36900.37000.37100.37200.37900.45400.421800 | Tiles Laying | 7d | 2026-08-08 | 2026-08-14 | 4879 |  | 7 Days Work | 9201974 |
| 4841 | 36900.37000.37100.37200.37900.45400.421900 | 1st cutting/polishing of stone flooring | 7d | 2026-08-15 | 2026-08-21 | 4840 |  | 7 Days Work | 9201984 |
| 4842 | 36900.37000.37100.37200.37900.45400.422000 | Tiles/Stone skirting | 5d | 2026-08-22 | 2026-08-26 | 4841 |  | 7 Days Work | 9201994 |
| 4843 | 36900.37000.37100.37200.37900.45400.422100 | Protechtion sheet | 1d | 2026-08-27 | 2026-08-27 | 4842 |  | 7 Days Work | 9202004 |
| 4844 | 36900.37000.37100.37200.37900.45400.422200 | Installation of Temporary Door | 1d | 2026-08-28 | 2026-08-28 | 4843 |  | 7 Days Work | 9202014 |
| 4845 | 36900.37000.37100.37200.37900.45400.422300 | Fixing of window tracks | 5d | 2026-08-29 | 2026-09-02 | 4844 |  | 7 Days Work | 9202024 |
| 4846 | 36900.37000.37100.37200.37900.45400.422400 | Wire Pulling | 7d | 2026-09-03 | 2026-09-09 | 4845 |  | 7 Days Work | 9202034 |
| 4847 | 36900.37000.37100.37200.37900.45400.422500 | Gypsum Remaining | 5d | 2026-09-10 | 2026-09-14 | 4846 |  | 7 Days Work | 9202044 |
| 4848 | 36900.37000.37100.37200.37900.45400.422600 | Fixing of windoow shutter | 5d | 2026-09-15 | 2026-09-19 | 4847 |  | 7 Days Work | 9202054 |
| 4849 | 36900.37000.37100.37200.37900.45400.422700 | Putty Works - walls & ceiling | 15d | 2026-09-20 | 2026-10-04 | 4848 |  | 7 Days Work | 9202064 |
| 4850 | 36900.37000.37100.37200.37900.45400.422800 | False Ceiling- Framing | 10d | 2026-10-05 | 2026-10-14 | 4849 |  | 7 Days Work | 9202074 |
| 4851 | 36900.37000.37100.37200.37900.45400.422900 | Pre Hung Door | 3d | 2026-10-15 | 2026-10-17 | 4850 |  | 7 Days Work | 9202084 |
| 4852 | 36900.37000.37100.37200.37900.45400.423000 | Protechtion sheet | 2d | 2026-10-18 | 2026-10-19 | 4851 |  | 7 Days Work | 9202094 |
| 4853 | 36900.37000.37100.37200.37900.45400.423100 | Skirting near door | 2d | 2026-10-20 | 2026-10-21 | 4852 |  | 7 Days Work | 9202104 |
| 4854 | 36900.37000.37100.37200.37900.45400.423200 | Electrical Switch box fixing | 14d | 2026-10-22 | 2026-11-04 | 4853 |  | 7 Days Work | 9202114 |
| 4855 | 36900.37000.37100.37200.37900.45400.423300 | Fire Fighting painting | 5d | 2026-11-05 | 2026-11-09 | 4854 |  | 7 Days Work | 9202124 |
| 4856 | 36900.37000.37100.37200.37900.45400.423400 | Protection of all flooring, door & window hardware | 5d | 2026-11-10 | 2026-11-14 | 4855 |  | 7 Days Work | 9202134 |
| 4857 | 36900.37000.37100.37200.37900.45400.423500 | 1st coat primer- ceiling 1st & walls | 14d | 2026-11-15 | 2026-11-28 | 4856 |  | 7 Days Work | 9202144 |
| 4858 | 36900.37000.37100.37200.37900.45400.423600 | Wooden Flooring | 5d | 2026-11-29 | 2026-12-03 | 4857 |  | 7 Days Work | 9202154 |
| 4859 | 36900.37000.37100.37200.37900.45400.423700 | Removing of Temporary Railing & installation of Glass Railing | 5d | 2026-11-29 | 2026-12-03 | 4857 |  | 7 Days Work | 9202164 |
| 4860 | 36900.37000.37100.37200.37900.45400.423800 | Tile Grouting | 7d | 2026-11-29 | 2026-12-05 | 4857 |  | 7 Days Work | 9202174 |
| 4861 | 36900.37000.37100.37200.37900.45400.423900 | False Ceiling | 5d | 2026-12-06 | 2026-12-10 | 4860 |  | 7 Days Work | 9202184 |
| 4862 | 36900.37000.37100.37200.37900.45400.424000 | 2nd coat of primer | 10d | 2026-12-11 | 2026-12-20 | 4861 |  | 7 Days Work | 9202194 |
| 4863 | 36900.37000.37100.37200.37900.45400.424100 | Final cutting/polishing of stone flooring | 7d | 2026-12-21 | 2026-12-27 | 4862 |  | 7 Days Work | 9202204 |

| ID | WBS | Task | Duration | Start | Finish | Predecessors | Constraint | Calendar | Unique_Task_ID |
| --- | --- | --- | --- | --- | --- | --- | --- | --- | --- |
| 4864 | 36900.37000.37100.37200.37900.45400.66200 | **Toilet** | 237d | 2026-05-04 | 2026-12-26 |  | start no earlier than 2026-05-04 | 7 Days Work | 9197144 |
| 4865 | 36900.37000.37100.37200.37900.45400.66200.887200 | Toilet_MEP Clearance -1 | 7d | 2026-05-04 | 2026-05-10 | 4828 |  | 7 Days Work | 9208724 |
| 4866 | 36900.37000.37100.37200.37900.45400.66200.887300 | Toilet_Level Marking | 1d | 2026-05-11 | 2026-05-11 | 4865 |  | 7 Days Work | 9208734 |
| 4867 | 36900.37000.37100.37200.37900.45400.66200.887400 | Toilet_Chasing work for Electrical conduit & concealed plumbing | 5d | 2026-05-12 | 2026-05-16 | 4866 |  | 7 Days Work | 9208744 |
| 4868 | 36900.37000.37100.37200.37900.45400.66200.887500 | Toilet_Plumbing work 1st fix | 5d | 2026-05-17 | 2026-05-21 | 4867 |  | 7 Days Work | 9208754 |
| 4869 | 36900.37000.37100.37200.37900.45400.66200.887600 | Toilet_Sleeve/Bore Packing | 5d | 2026-05-22 | 2026-05-26 | 4868 |  | 7 Days Work | 9208764 |
| 4870 | 36900.37000.37100.37200.37900.45400.66200.887700 | Toilet_Waterproofing | 10d | 2026-05-27 | 2026-06-05 | 4869 |  | 7 Days Work | 9208774 |
| 4871 | 36900.37000.37100.37200.37900.45400.66200.887800 | Toilet_Screed | 1d | 2026-06-06 | 2026-06-06 | 4870 |  | 7 Days Work | 9208784 |
| 4872 | 36900.37000.37100.37200.37900.45400.66200.887900 | Toilet_Plumbing 2nd fix | 5d | 2026-06-07 | 2026-06-11 | 4871 |  | 7 Days Work | 9208794 |
| 4873 | 36900.37000.37100.37200.37900.45400.66200.888000 | Toilet_Ledge wall | 5d | 2026-06-12 | 2026-06-16 | 4872 |  | 7 Days Work | 9208804 |
| 4874 | 36900.37000.37100.37200.37900.45400.66200.888100 | Toilet_Cement Plaster | 5d | 2026-06-17 | 2026-06-21 | 4873 |  | 7 Days Work | 9208814 |
| 4875 | 36900.37000.37100.37200.37900.45400.66200.888200 | Toilet_Door Frame | 1d | 2026-06-22 | 2026-06-22 | 4874 |  | 7 Days Work | 9208824 |
| 4876 | 36900.37000.37100.37200.37900.45400.66200.888300 | Toilet_Wash basin & Couter | 3d | 2026-06-23 | 2026-06-25 | 4875 |  | 7 Days Work | 9208834 |
| 4877 | 36900.37000.37100.37200.37900.45400.66200.888400 | Toilet_Wall dado | 20d | 2026-06-26 | 2026-07-15 | 4876 |  | 7 Days Work | 9208844 |
| 4878 | 36900.37000.37100.37200.37900.45400.66200.888500 | Toilet_Granite Work-Ledge wall top | 3d | 2026-07-16 | 2026-07-18 | 4877 |  | 7 Days Work | 9208854 |
| 4879 | 36900.37000.37100.37200.37900.45400.66200.888600 | Toilet_Floor Tilling work | 20d | 2026-07-19 | 2026-08-07 | 4878 |  | 7 Days Work | 9208864 |
| 4880 | 36900.37000.37100.37200.37900.45400.66200.888700 | Toilet_1st row of dado | 5d | 2026-08-08 | 2026-08-12 | 4879 |  | 7 Days Work | 9208874 |
| 4881 | 36900.37000.37100.37200.37900.45400.66200.888800 | Toilet_Window Fixing | 14d | 2026-08-13 | 2026-08-26 | 4880 |  | 7 Days Work | 9208884 |
| 4882 | 36900.37000.37100.37200.37900.45400.66200.888900 | Toilet_Services above False ceiling | 21d | 2026-08-27 | 2026-09-16 | 4881 |  | 7 Days Work | 9208894 |
| 4883 | 36900.37000.37100.37200.37900.45400.66200.889000 | Toilet_False Ceiling framing | 12d | 2026-09-17 | 2026-09-28 | 4882 |  | 7 Days Work | 9208904 |
| 4884 | 36900.37000.37100.37200.37900.45400.66200.889100 | Toilet_Door Frame | 5d | 2026-09-29 | 2026-10-03 | 4883 |  | 7 Days Work | 9208914 |
| 4885 | 36900.37000.37100.37200.37900.45400.66200.889200 | Toilet_Epoxy Tile Grouting | 7d | 2026-11-29 | 2026-12-05 | 4860SS |  | 7 Days Work | 9208924 |
| 4886 | 36900.37000.37100.37200.37900.45400.66200.889300 | Toilet_False ceiling board fixing, CP Sanitary Fixture, Electric Fixture | 21d | 2026-12-06 | 2026-12-26 | 4885 |  | 7 Days Work | 9208934 |
| 4887 | 36900.37000.37100.37200.37900.45500 | **14th Habitable/15th Floor** | 245d | 2026-05-06 | 2027-01-05 |  | start no earlier than 2026-05-06 | 7 Days Work | 9196954 |
| 4888 | 36900.37000.37100.37200.37900.45500.424200 | Post Pour | 7d | 2026-05-06 | 2026-05-12 | 4098FS+15d |  | 7 Days Work | 9202214 |
| 4889 | 36900.37000.37100.37200.37900.45500.424300 | MEP Clearance -1 | 5d | 2026-05-13 | 2026-05-17 | 4888 |  | 7 Days Work | 9202224 |
| 4890 | 36900.37000.37100.37200.37900.45500.424400 | Benchmark | 1d | 2026-05-18 | 2026-05-18 | 4889 |  | 7 Days Work | 9202234 |
| 4891 | 36900.37000.37100.37200.37900.45500.424500 | Temporary Railing | 3d | 2026-05-19 | 2026-05-21 | 4890 |  | 7 Days Work | 9202244 |
| 4892 | 36900.37000.37100.37200.37900.45500.424600 | Blockwork | 10d | 2026-05-22 | 2026-05-31 | 4891 |  | 7 Days Work | 9202254 |
| 4893 | 36900.37000.37100.37200.37900.45500.424700 | MEP Clearance -2 | 10d | 2026-06-01 | 2026-06-10 | 4892 |  | 7 Days Work | 9202264 |
| 4894 | 36900.37000.37100.37200.37900.45500.424800 | Gypsum Plaster | 14d | 2026-06-11 | 2026-06-24 | 4893 |  | 7 Days Work | 9202274 |
| 4895 | 36900.37000.37100.37200.37900.45500.424900 | Kitchen Platform | 3d | 2026-06-25 | 2026-06-27 | 4894 |  | 7 Days Work | 9202284 |
| 4896 | 36900.37000.37100.37200.37900.45500.425000 | Kitchen dado | 7d | 2026-06-28 | 2026-07-04 | 4895 |  | 7 Days Work | 9202294 |
| 4897 | 36900.37000.37100.37200.37900.45500.425100 | Fire Fighting | 5d | 2026-07-05 | 2026-07-09 | 4896 |  | 7 Days Work | 9202304 |
| 4898 | 36900.37000.37100.37200.37900.45500.425200 | Anticapilary | 5d | 2026-07-10 | 2026-07-14 | 4897 |  | 7 Days Work | 9202314 |
| 4899 | 36900.37000.37100.37200.37900.45500.425300 | Stone Laying | 10d | 2026-08-17 | 2026-08-26 | 4939 |  | 7 Days Work | 9202324 |
| 4900 | 36900.37000.37100.37200.37900.45500.425400 | Tiles Laying | 7d | 2026-08-17 | 2026-08-23 | 4939 |  | 7 Days Work | 9202334 |
| 4901 | 36900.37000.37100.37200.37900.45500.425500 | 1st cutting/polishing of stone flooring | 7d | 2026-08-24 | 2026-08-30 | 4900 |  | 7 Days Work | 9202344 |
| 4902 | 36900.37000.37100.37200.37900.45500.425600 | Tiles/Stone skirting | 5d | 2026-08-31 | 2026-09-04 | 4901 |  | 7 Days Work | 9202354 |
| 4903 | 36900.37000.37100.37200.37900.45500.425700 | Protechtion sheet | 1d | 2026-09-05 | 2026-09-05 | 4902 |  | 7 Days Work | 9202364 |
| 4904 | 36900.37000.37100.37200.37900.45500.425800 | Installation of Temporary Door | 1d | 2026-09-06 | 2026-09-06 | 4903 |  | 7 Days Work | 9202374 |
| 4905 | 36900.37000.37100.37200.37900.45500.425900 | Fixing of window tracks | 5d | 2026-09-07 | 2026-09-11 | 4904 |  | 7 Days Work | 9202384 |
| 4906 | 36900.37000.37100.37200.37900.45500.426000 | Wire Pulling | 7d | 2026-09-12 | 2026-09-18 | 4905 |  | 7 Days Work | 9202394 |
| 4907 | 36900.37000.37100.37200.37900.45500.426100 | Gypsum Remaining | 5d | 2026-09-19 | 2026-09-23 | 4906 |  | 7 Days Work | 9202404 |
| 4908 | 36900.37000.37100.37200.37900.45500.426200 | Fixing of windoow shutter | 5d | 2026-09-24 | 2026-09-28 | 4907 |  | 7 Days Work | 9202414 |
| 4909 | 36900.37000.37100.37200.37900.45500.426300 | Putty Works - walls & ceiling | 15d | 2026-09-29 | 2026-10-13 | 4908 |  | 7 Days Work | 9202424 |
| 4910 | 36900.37000.37100.37200.37900.45500.426400 | False Ceiling- Framing | 10d | 2026-10-14 | 2026-10-23 | 4909 |  | 7 Days Work | 9202434 |
| 4911 | 36900.37000.37100.37200.37900.45500.426500 | Pre Hung Door | 3d | 2026-10-24 | 2026-10-26 | 4910 |  | 7 Days Work | 9202444 |
| 4912 | 36900.37000.37100.37200.37900.45500.426600 | Protechtion sheet | 2d | 2026-10-27 | 2026-10-28 | 4911 |  | 7 Days Work | 9202454 |
| 4913 | 36900.37000.37100.37200.37900.45500.426700 | Skirting near door | 2d | 2026-10-29 | 2026-10-30 | 4912 |  | 7 Days Work | 9202464 |
| 4914 | 36900.37000.37100.37200.37900.45500.426800 | Electrical Switch box fixing | 14d | 2026-10-31 | 2026-11-13 | 4913 |  | 7 Days Work | 9202474 |
| 4915 | 36900.37000.37100.37200.37900.45500.426900 | Fire Fighting painting | 5d | 2026-11-14 | 2026-11-18 | 4914 |  | 7 Days Work | 9202484 |
| 4916 | 36900.37000.37100.37200.37900.45500.427000 | Protection of all flooring, door & window hardware | 5d | 2026-11-19 | 2026-11-23 | 4915 |  | 7 Days Work | 9202494 |
| 4917 | 36900.37000.37100.37200.37900.45500.427100 | 1st coat primer- ceiling 1st & walls | 14d | 2026-11-24 | 2026-12-07 | 4916 |  | 7 Days Work | 9202504 |
| 4918 | 36900.37000.37100.37200.37900.45500.427200 | Wooden Flooring | 5d | 2026-12-08 | 2026-12-12 | 4917 |  | 7 Days Work | 9202514 |
| 4919 | 36900.37000.37100.37200.37900.45500.427300 | Removing of Temporary Railing & installation of Glass Railing | 5d | 2026-12-08 | 2026-12-12 | 4917 |  | 7 Days Work | 9202524 |
| 4920 | 36900.37000.37100.37200.37900.45500.427400 | Tile Grouting | 7d | 2026-12-08 | 2026-12-14 | 4917 |  | 7 Days Work | 9202534 |
| 4921 | 36900.37000.37100.37200.37900.45500.427500 | False Ceiling | 5d | 2026-12-15 | 2026-12-19 | 4920 |  | 7 Days Work | 9202544 |
| 4922 | 36900.37000.37100.37200.37900.45500.427600 | 2nd coat of primer | 10d | 2026-12-20 | 2026-12-29 | 4921 |  | 7 Days Work | 9202554 |
| 4923 | 36900.37000.37100.37200.37900.45500.427700 | Final cutting/polishing of stone flooring | 7d | 2026-12-30 | 2027-01-05 | 4922 |  | 7 Days Work | 9202564 |

| ID | WBS | Task | Duration | Start | Finish | Predecessors | Constraint | Calendar | Unique_Task_ID |
| --- | --- | --- | --- | --- | --- | --- | --- | --- | --- |
| 4924 | 36900.37000.37100.37200.37900.45500.66100 | **Toilet** | 237d | 2026-05-13 | 2027-01-04 |  | start no earlier than 2026-05-13 | 7 Days Work | 9197154 |
| 4925 | 36900.37000.37100.37200.37900.45500.66100.889400 | Toilet_MEP Clearance -1 | 7d | 2026-05-13 | 2026-05-19 | 4888 |  | 7 Days Work | 9208944 |
| 4926 | 36900.37000.37100.37200.37900.45500.66100.889500 | Toilet_Level Marking | 1d | 2026-05-20 | 2026-05-20 | 4925 |  | 7 Days Work | 9208954 |
| 4927 | 36900.37000.37100.37200.37900.45500.66100.889600 | Toilet_Chasing work for Electrical conduit & concealed plumbing | 5d | 2026-05-21 | 2026-05-25 | 4926 |  | 7 Days Work | 9208964 |
| 4928 | 36900.37000.37100.37200.37900.45500.66100.889700 | Toilet_Plumbing work 1st fix | 5d | 2026-05-26 | 2026-05-30 | 4927 |  | 7 Days Work | 9208974 |
| 4929 | 36900.37000.37100.37200.37900.45500.66100.889800 | Toilet_Sleeve/Bore Packing | 5d | 2026-05-31 | 2026-06-04 | 4928 |  | 7 Days Work | 9208984 |
| 4930 | 36900.37000.37100.37200.37900.45500.66100.889900 | Toilet_Waterproofing | 10d | 2026-06-05 | 2026-06-14 | 4929 |  | 7 Days Work | 9208994 |
| 4931 | 36900.37000.37100.37200.37900.45500.66100.890000 | Toilet_Screed | 1d | 2026-06-15 | 2026-06-15 | 4930 |  | 7 Days Work | 9209004 |
| 4932 | 36900.37000.37100.37200.37900.45500.66100.890100 | Toilet_Plumbing 2nd fix | 5d | 2026-06-16 | 2026-06-20 | 4931 |  | 7 Days Work | 9209014 |
| 4933 | 36900.37000.37100.37200.37900.45500.66100.890200 | Toilet_Ledge wall | 5d | 2026-06-21 | 2026-06-25 | 4932 |  | 7 Days Work | 9209024 |
| 4934 | 36900.37000.37100.37200.37900.45500.66100.890300 | Toilet_Cement Plaster | 5d | 2026-06-26 | 2026-06-30 | 4933 |  | 7 Days Work | 9209034 |
| 4935 | 36900.37000.37100.37200.37900.45500.66100.890400 | Toilet_Door Frame | 1d | 2026-07-01 | 2026-07-01 | 4934 |  | 7 Days Work | 9209044 |
| 4936 | 36900.37000.37100.37200.37900.45500.66100.890500 | Toilet_Wash basin & Couter | 3d | 2026-07-02 | 2026-07-04 | 4935 |  | 7 Days Work | 9209054 |
| 4937 | 36900.37000.37100.37200.37900.45500.66100.890600 | Toilet_Wall dado | 20d | 2026-07-05 | 2026-07-24 | 4936 |  | 7 Days Work | 9209064 |
| 4938 | 36900.37000.37100.37200.37900.45500.66100.890700 | Toilet_Granite Work-Ledge wall top | 3d | 2026-07-25 | 2026-07-27 | 4937 |  | 7 Days Work | 9209074 |
| 4939 | 36900.37000.37100.37200.37900.45500.66100.890800 | Toilet_Floor Tilling work | 20d | 2026-07-28 | 2026-08-16 | 4938 |  | 7 Days Work | 9209084 |
| 4940 | 36900.37000.37100.37200.37900.45500.66100.890900 | Toilet_1st row of dado | 5d | 2026-08-17 | 2026-08-21 | 4939 |  | 7 Days Work | 9209094 |
| 4941 | 36900.37000.37100.37200.37900.45500.66100.891000 | Toilet_Window Fixing | 14d | 2026-08-22 | 2026-09-04 | 4940 |  | 7 Days Work | 9209104 |
| 4942 | 36900.37000.37100.37200.37900.45500.66100.891100 | Toilet_Services above False ceiling | 21d | 2026-09-05 | 2026-09-25 | 4941 |  | 7 Days Work | 9209114 |
| 4943 | 36900.37000.37100.37200.37900.45500.66100.891200 | Toilet_False Ceiling framing | 12d | 2026-09-26 | 2026-10-07 | 4942 |  | 7 Days Work | 9209124 |
| 4944 | 36900.37000.37100.37200.37900.45500.66100.891300 | Toilet_Door Frame | 5d | 2026-10-08 | 2026-10-12 | 4943 |  | 7 Days Work | 9209134 |
| 4945 | 36900.37000.37100.37200.37900.45500.66100.891400 | Toilet_Epoxy Tile Grouting | 7d | 2026-12-08 | 2026-12-14 | 4920SS |  | 7 Days Work | 9209144 |
| 4946 | 36900.37000.37100.37200.37900.45500.66100.891500 | Toilet_False ceiling board fixing, CP Sanitary Fixture, Electric Fixture | 21d | 2026-12-15 | 2027-01-04 | 4945 |  | 7 Days Work | 9209154 |
| 4947 | 36900.37000.37100.37200.37900.45600 | **15th Habitable/16th Floor** | 245d | 2026-05-15 | 2027-01-14 |  | start no earlier than 2026-05-15 | 7 Days Work | 9196964 |
| 4948 | 36900.37000.37100.37200.37900.45600.427800 | Post Pour | 7d | 2026-05-15 | 2026-05-21 | 4099FS+15d |  | 7 Days Work | 9202574 |
| 4949 | 36900.37000.37100.37200.37900.45600.427900 | MEP Clearance -1 | 5d | 2026-05-22 | 2026-05-26 | 4948 |  | 7 Days Work | 9202584 |
| 4950 | 36900.37000.37100.37200.37900.45600.428000 | Benchmark | 1d | 2026-05-27 | 2026-05-27 | 4949 |  | 7 Days Work | 9202594 |
| 4951 | 36900.37000.37100.37200.37900.45600.428100 | Temporary Railing | 3d | 2026-05-28 | 2026-05-30 | 4950 |  | 7 Days Work | 9202604 |
| 4952 | 36900.37000.37100.37200.37900.45600.428200 | Blockwork | 10d | 2026-05-31 | 2026-06-09 | 4951 |  | 7 Days Work | 9202614 |
| 4953 | 36900.37000.37100.37200.37900.45600.428300 | MEP Clearance -2 | 10d | 2026-06-10 | 2026-06-19 | 4952 |  | 7 Days Work | 9202624 |
| 4954 | 36900.37000.37100.37200.37900.45600.428400 | Gypsum Plaster | 14d | 2026-06-20 | 2026-07-03 | 4953 |  | 7 Days Work | 9202634 |
| 4955 | 36900.37000.37100.37200.37900.45600.428500 | Kitchen Platform | 3d | 2026-07-04 | 2026-07-06 | 4954 |  | 7 Days Work | 9202644 |
| 4956 | 36900.37000.37100.37200.37900.45600.428600 | Kitchen dado | 7d | 2026-07-07 | 2026-07-13 | 4955 |  | 7 Days Work | 9202654 |
| 4957 | 36900.37000.37100.37200.37900.45600.428700 | Fire Fighting | 5d | 2026-07-14 | 2026-07-18 | 4956 |  | 7 Days Work | 9202664 |
| 4958 | 36900.37000.37100.37200.37900.45600.428800 | Anticapilary | 5d | 2026-07-19 | 2026-07-23 | 4957 |  | 7 Days Work | 9202674 |
| 4959 | 36900.37000.37100.37200.37900.45600.428900 | Stone Laying | 10d | 2026-08-26 | 2026-09-04 | 4999 |  | 7 Days Work | 9202684 |
| 4960 | 36900.37000.37100.37200.37900.45600.429000 | Tiles Laying | 7d | 2026-08-26 | 2026-09-01 | 4999 |  | 7 Days Work | 9202694 |
| 4961 | 36900.37000.37100.37200.37900.45600.429100 | 1st cutting/polishing of stone flooring | 7d | 2026-09-02 | 2026-09-08 | 4960 |  | 7 Days Work | 9202704 |
| 4962 | 36900.37000.37100.37200.37900.45600.429200 | Tiles/Stone skirting | 5d | 2026-09-09 | 2026-09-13 | 4961 |  | 7 Days Work | 9202714 |
| 4963 | 36900.37000.37100.37200.37900.45600.429300 | Protechtion sheet | 1d | 2026-09-14 | 2026-09-14 | 4962 |  | 7 Days Work | 9202724 |
| 4964 | 36900.37000.37100.37200.37900.45600.429400 | Installation of Temporary Door | 1d | 2026-09-15 | 2026-09-15 | 4963 |  | 7 Days Work | 9202734 |
| 4965 | 36900.37000.37100.37200.37900.45600.429500 | Fixing of window tracks | 5d | 2026-09-16 | 2026-09-20 | 4964 |  | 7 Days Work | 9202744 |
| 4966 | 36900.37000.37100.37200.37900.45600.429600 | Wire Pulling | 7d | 2026-09-21 | 2026-09-27 | 4965 |  | 7 Days Work | 9202754 |
| 4967 | 36900.37000.37100.37200.37900.45600.429700 | Gypsum Remaining | 5d | 2026-09-28 | 2026-10-02 | 4966 |  | 7 Days Work | 9202764 |
| 4968 | 36900.37000.37100.37200.37900.45600.429800 | Fixing of windoow shutter | 5d | 2026-10-03 | 2026-10-07 | 4967 |  | 7 Days Work | 9202774 |
| 4969 | 36900.37000.37100.37200.37900.45600.429900 | Putty Works - walls & ceiling | 15d | 2026-10-08 | 2026-10-22 | 4968 |  | 7 Days Work | 9202784 |
| 4970 | 36900.37000.37100.37200.37900.45600.430000 | False Ceiling- Framing | 10d | 2026-10-23 | 2026-11-01 | 4969 |  | 7 Days Work | 9202794 |
| 4971 | 36900.37000.37100.37200.37900.45600.430100 | Pre Hung Door | 3d | 2026-11-02 | 2026-11-04 | 4970 |  | 7 Days Work | 9202804 |
| 4972 | 36900.37000.37100.37200.37900.45600.430200 | Protechtion sheet | 2d | 2026-11-05 | 2026-11-06 | 4971 |  | 7 Days Work | 9202814 |
| 4973 | 36900.37000.37100.37200.37900.45600.430300 | Skirting near door | 2d | 2026-11-07 | 2026-11-08 | 4972 |  | 7 Days Work | 9202824 |
| 4974 | 36900.37000.37100.37200.37900.45600.430400 | Electrical Switch box fixing | 14d | 2026-11-09 | 2026-11-22 | 4973 |  | 7 Days Work | 9202834 |
| 4975 | 36900.37000.37100.37200.37900.45600.430500 | Fire Fighting painting | 5d | 2026-11-23 | 2026-11-27 | 4974 |  | 7 Days Work | 9202844 |
| 4976 | 36900.37000.37100.37200.37900.45600.430600 | Protection of all flooring, door & window hardware | 5d | 2026-11-28 | 2026-12-02 | 4975 |  | 7 Days Work | 9202854 |
| 4977 | 36900.37000.37100.37200.37900.45600.430700 | 1st coat primer- ceiling 1st & walls | 14d | 2026-12-03 | 2026-12-16 | 4976 |  | 7 Days Work | 9202864 |
| 4978 | 36900.37000.37100.37200.37900.45600.430800 | Wooden Flooring | 5d | 2026-12-17 | 2026-12-21 | 4977 |  | 7 Days Work | 9202874 |
| 4979 | 36900.37000.37100.37200.37900.45600.430900 | Removing of Temporary Railing & installation of Glass Railing | 5d | 2026-12-17 | 2026-12-21 | 4977 |  | 7 Days Work | 9202884 |
| 4980 | 36900.37000.37100.37200.37900.45600.431000 | Tile Grouting | 7d | 2026-12-17 | 2026-12-23 | 4977 |  | 7 Days Work | 9202894 |
| 4981 | 36900.37000.37100.37200.37900.45600.431100 | False Ceiling | 5d | 2026-12-24 | 2026-12-28 | 4980 |  | 7 Days Work | 9202904 |
| 4982 | 36900.37000.37100.37200.37900.45600.431200 | 2nd coat of primer | 10d | 2026-12-29 | 2027-01-07 | 4981 |  | 7 Days Work | 9202914 |
| 4983 | 36900.37000.37100.37200.37900.45600.431300 | Final cutting/polishing of stone flooring | 7d | 2027-01-08 | 2027-01-14 | 4982 |  | 7 Days Work | 9202924 |

| ID | WBS | Task | Duration | Start | Finish | Predecessors | Constraint | Calendar | Unique_Task_ID |
| --- | --- | --- | --- | --- | --- | --- | --- | --- | --- |
| 4984 | 36900.37000.37100.37200.37900.45600.66000 | **Toilet** | 237d | 2026-05-22 | 2027-01-13 |  | start no earlier than 2026-05-22 | 7 Days Work | 9197164 |
| 4985 | 36900.37000.37100.37200.37900.45600.66000.891600 | Toilet_MEP Clearance -1 | 7d | 2026-05-22 | 2026-05-28 | 4948 |  | 7 Days Work | 9209164 |
| 4986 | 36900.37000.37100.37200.37900.45600.66000.891700 | Toilet_Level Marking | 1d | 2026-05-29 | 2026-05-29 | 4985 |  | 7 Days Work | 9209174 |
| 4987 | 36900.37000.37100.37200.37900.45600.66000.891800 | Toilet_Chasing work for Electrical conduit & concealed plumbing | 5d | 2026-05-30 | 2026-06-03 | 4986 |  | 7 Days Work | 9209184 |
| 4988 | 36900.37000.37100.37200.37900.45600.66000.891900 | Toilet_Plumbing work 1st fix | 5d | 2026-06-04 | 2026-06-08 | 4987 |  | 7 Days Work | 9209194 |
| 4989 | 36900.37000.37100.37200.37900.45600.66000.892000 | Toilet_Sleeve/Bore Packing | 5d | 2026-06-09 | 2026-06-13 | 4988 |  | 7 Days Work | 9209204 |
| 4990 | 36900.37000.37100.37200.37900.45600.66000.892100 | Toilet_Waterproofing | 10d | 2026-06-14 | 2026-06-23 | 4989 |  | 7 Days Work | 9209214 |
| 4991 | 36900.37000.37100.37200.37900.45600.66000.892200 | Toilet_Screed | 1d | 2026-06-24 | 2026-06-24 | 4990 |  | 7 Days Work | 9209224 |
| 4992 | 36900.37000.37100.37200.37900.45600.66000.892300 | Toilet_Plumbing 2nd fix | 5d | 2026-06-25 | 2026-06-29 | 4991 |  | 7 Days Work | 9209234 |
| 4993 | 36900.37000.37100.37200.37900.45600.66000.892400 | Toilet_Ledge wall | 5d | 2026-06-30 | 2026-07-04 | 4992 |  | 7 Days Work | 9209244 |
| 4994 | 36900.37000.37100.37200.37900.45600.66000.892500 | Toilet_Cement Plaster | 5d | 2026-07-05 | 2026-07-09 | 4993 |  | 7 Days Work | 9209254 |
| 4995 | 36900.37000.37100.37200.37900.45600.66000.892600 | Toilet_Door Frame | 1d | 2026-07-10 | 2026-07-10 | 4994 |  | 7 Days Work | 9209264 |
| 4996 | 36900.37000.37100.37200.37900.45600.66000.892700 | Toilet_Wash basin & Couter | 3d | 2026-07-11 | 2026-07-13 | 4995 |  | 7 Days Work | 9209274 |
| 4997 | 36900.37000.37100.37200.37900.45600.66000.892800 | Toilet_Wall dado | 20d | 2026-07-14 | 2026-08-02 | 4996 |  | 7 Days Work | 9209284 |
| 4998 | 36900.37000.37100.37200.37900.45600.66000.892900 | Toilet_Granite Work-Ledge wall top | 3d | 2026-08-03 | 2026-08-05 | 4997 |  | 7 Days Work | 9209294 |
| 4999 | 36900.37000.37100.37200.37900.45600.66000.893000 | Toilet_Floor Tilling work | 20d | 2026-08-06 | 2026-08-25 | 4998 |  | 7 Days Work | 9209304 |
| 5000 | 36900.37000.37100.37200.37900.45600.66000.893100 | Toilet_1st row of dado | 5d | 2026-08-26 | 2026-08-30 | 4999 |  | 7 Days Work | 9209314 |
| 5001 | 36900.37000.37100.37200.37900.45600.66000.893200 | Toilet_Window Fixing | 14d | 2026-08-31 | 2026-09-13 | 5000 |  | 7 Days Work | 9209324 |
| 5002 | 36900.37000.37100.37200.37900.45600.66000.893300 | Toilet_Services above False ceiling | 21d | 2026-09-14 | 2026-10-04 | 5001 |  | 7 Days Work | 9209334 |
| 5003 | 36900.37000.37100.37200.37900.45600.66000.893400 | Toilet_False Ceiling framing | 12d | 2026-10-05 | 2026-10-16 | 5002 |  | 7 Days Work | 9209344 |
| 5004 | 36900.37000.37100.37200.37900.45600.66000.893500 | Toilet_Door Frame | 5d | 2026-10-17 | 2026-10-21 | 5003 |  | 7 Days Work | 9209354 |
| 5005 | 36900.37000.37100.37200.37900.45600.66000.893600 | Toilet_Epoxy Tile Grouting | 7d | 2026-12-17 | 2026-12-23 | 4980SS |  | 7 Days Work | 9209364 |
| 5006 | 36900.37000.37100.37200.37900.45600.66000.893700 | Toilet_False ceiling board fixing, CP Sanitary Fixture, Electric Fixture | 21d | 2026-12-24 | 2027-01-13 | 5005 |  | 7 Days Work | 9209374 |
| 5007 | 36900.37000.37100.37200.37900.45700 | **16th Habitable/17th Floor** | 245d | 2026-05-24 | 2027-01-23 |  | start no earlier than 2026-05-24 | 7 Days Work | 9196974 |
| 5008 | 36900.37000.37100.37200.37900.45700.431400 | Post Pour | 7d | 2026-05-24 | 2026-05-30 | 4100FS+15d |  | 7 Days Work | 9202934 |
| 5009 | 36900.37000.37100.37200.37900.45700.431500 | MEP Clearance -1 | 5d | 2026-05-31 | 2026-06-04 | 5008 |  | 7 Days Work | 9202944 |
| 5010 | 36900.37000.37100.37200.37900.45700.431600 | Benchmark | 1d | 2026-06-05 | 2026-06-05 | 5009 |  | 7 Days Work | 9202954 |
| 5011 | 36900.37000.37100.37200.37900.45700.431700 | Temporary Railing | 3d | 2026-06-06 | 2026-06-08 | 5010 |  | 7 Days Work | 9202964 |
| 5012 | 36900.37000.37100.37200.37900.45700.431800 | Blockwork | 10d | 2026-06-09 | 2026-06-18 | 5011 |  | 7 Days Work | 9202974 |
| 5013 | 36900.37000.37100.37200.37900.45700.431900 | MEP Clearance -2 | 10d | 2026-06-19 | 2026-06-28 | 5012 |  | 7 Days Work | 9202984 |
| 5014 | 36900.37000.37100.37200.37900.45700.432000 | Gypsum Plaster | 14d | 2026-06-29 | 2026-07-12 | 5013 |  | 7 Days Work | 9202994 |
| 5015 | 36900.37000.37100.37200.37900.45700.432100 | Kitchen Platform | 3d | 2026-07-13 | 2026-07-15 | 5014 |  | 7 Days Work | 9203004 |
| 5016 | 36900.37000.37100.37200.37900.45700.432200 | Kitchen dado | 7d | 2026-07-16 | 2026-07-22 | 5015 |  | 7 Days Work | 9203014 |
| 5017 | 36900.37000.37100.37200.37900.45700.432300 | Fire Fighting | 5d | 2026-07-23 | 2026-07-27 | 5016 |  | 7 Days Work | 9203024 |
| 5018 | 36900.37000.37100.37200.37900.45700.432400 | Anticapilary | 5d | 2026-07-28 | 2026-08-01 | 5017 |  | 7 Days Work | 9203034 |
| 5019 | 36900.37000.37100.37200.37900.45700.432500 | Stone Laying | 10d | 2026-09-04 | 2026-09-13 | 5059 |  | 7 Days Work | 9203044 |
| 5020 | 36900.37000.37100.37200.37900.45700.432600 | Tiles Laying | 7d | 2026-09-04 | 2026-09-10 | 5059 |  | 7 Days Work | 9203054 |
| 5021 | 36900.37000.37100.37200.37900.45700.432700 | 1st cutting/polishing of stone flooring | 7d | 2026-09-11 | 2026-09-17 | 5020 |  | 7 Days Work | 9203064 |
| 5022 | 36900.37000.37100.37200.37900.45700.432800 | Tiles/Stone skirting | 5d | 2026-09-18 | 2026-09-22 | 5021 |  | 7 Days Work | 9203074 |
| 5023 | 36900.37000.37100.37200.37900.45700.432900 | Protechtion sheet | 1d | 2026-09-23 | 2026-09-23 | 5022 |  | 7 Days Work | 9203084 |
| 5024 | 36900.37000.37100.37200.37900.45700.433000 | Installation of Temporary Door | 1d | 2026-09-24 | 2026-09-24 | 5023 |  | 7 Days Work | 9203094 |
| 5025 | 36900.37000.37100.37200.37900.45700.433100 | Fixing of window tracks | 5d | 2026-09-25 | 2026-09-29 | 5024 |  | 7 Days Work | 9203104 |
| 5026 | 36900.37000.37100.37200.37900.45700.433200 | Wire Pulling | 7d | 2026-09-30 | 2026-10-06 | 5025 |  | 7 Days Work | 9203114 |
| 5027 | 36900.37000.37100.37200.37900.45700.433300 | Gypsum Remaining | 5d | 2026-10-07 | 2026-10-11 | 5026 |  | 7 Days Work | 9203124 |
| 5028 | 36900.37000.37100.37200.37900.45700.433400 | Fixing of windoow shutter | 5d | 2026-10-12 | 2026-10-16 | 5027 |  | 7 Days Work | 9203134 |
| 5029 | 36900.37000.37100.37200.37900.45700.433500 | Putty Works - walls & ceiling | 15d | 2026-10-17 | 2026-10-31 | 5028 |  | 7 Days Work | 9203144 |
| 5030 | 36900.37000.37100.37200.37900.45700.433600 | False Ceiling- Framing | 10d | 2026-11-01 | 2026-11-10 | 5029 |  | 7 Days Work | 9203154 |
| 5031 | 36900.37000.37100.37200.37900.45700.433700 | Pre Hung Door | 3d | 2026-11-11 | 2026-11-13 | 5030 |  | 7 Days Work | 9203164 |
| 5032 | 36900.37000.37100.37200.37900.45700.433800 | Protechtion sheet | 2d | 2026-11-14 | 2026-11-15 | 5031 |  | 7 Days Work | 9203174 |
| 5033 | 36900.37000.37100.37200.37900.45700.433900 | Skirting near door | 2d | 2026-11-16 | 2026-11-17 | 5032 |  | 7 Days Work | 9203184 |
| 5034 | 36900.37000.37100.37200.37900.45700.434000 | Electrical Switch box fixing | 14d | 2026-11-18 | 2026-12-01 | 5033 |  | 7 Days Work | 9203194 |
| 5035 | 36900.37000.37100.37200.37900.45700.434100 | Fire Fighting painting | 5d | 2026-12-02 | 2026-12-06 | 5034 |  | 7 Days Work | 9203204 |
| 5036 | 36900.37000.37100.37200.37900.45700.434200 | Protection of all flooring, door & window hardware | 5d | 2026-12-07 | 2026-12-11 | 5035 |  | 7 Days Work | 9203214 |
| 5037 | 36900.37000.37100.37200.37900.45700.434300 | 1st coat primer- ceiling 1st & walls | 14d | 2026-12-12 | 2026-12-25 | 5036 |  | 7 Days Work | 9203224 |
| 5038 | 36900.37000.37100.37200.37900.45700.434400 | Wooden Flooring | 5d | 2026-12-26 | 2026-12-30 | 5037 |  | 7 Days Work | 9203234 |
| 5039 | 36900.37000.37100.37200.37900.45700.434500 | Removing of Temporary Railing & installation of Glass Railing | 5d | 2026-12-26 | 2026-12-30 | 5037 |  | 7 Days Work | 9203244 |
| 5040 | 36900.37000.37100.37200.37900.45700.434600 | Tile Grouting | 7d | 2026-12-26 | 2027-01-01 | 5037 |  | 7 Days Work | 9203254 |
| 5041 | 36900.37000.37100.37200.37900.45700.434700 | False Ceiling | 5d | 2027-01-02 | 2027-01-06 | 5040 |  | 7 Days Work | 9203264 |
| 5042 | 36900.37000.37100.37200.37900.45700.434800 | 2nd coat of primer | 10d | 2027-01-07 | 2027-01-16 | 5041 |  | 7 Days Work | 9203274 |
| 5043 | 36900.37000.37100.37200.37900.45700.434900 | Final cutting/polishing of stone flooring | 7d | 2027-01-17 | 2027-01-23 | 5042 |  | 7 Days Work | 9203284 |

| ID | WBS | Task | Duration | Start | Finish | Predecessors | Constraint | Calendar | Unique_Task_ID |
| --- | --- | --- | --- | --- | --- | --- | --- | --- | --- |
| 5044 | 36900.37000.37100.37200.37900.45700.65900 | **Toilet** | 237d | 2026-05-31 | 2027-01-22 |  | start no earlier than 2026-05-31 | 7 Days Work | 9197174 |
| 5045 | 36900.37000.37100.37200.37900.45700.65900.893800 | Toilet_MEP Clearance -1 | 7d | 2026-05-31 | 2026-06-06 | 5008 |  | 7 Days Work | 9209384 |
| 5046 | 36900.37000.37100.37200.37900.45700.65900.893900 | Toilet_Level Marking | 1d | 2026-06-07 | 2026-06-07 | 5045 |  | 7 Days Work | 9209394 |
| 5047 | 36900.37000.37100.37200.37900.45700.65900.894000 | Toilet_Chasing work for Electrical conduit & concealed plumbing | 5d | 2026-06-08 | 2026-06-12 | 5046 |  | 7 Days Work | 9209404 |
| 5048 | 36900.37000.37100.37200.37900.45700.65900.894100 | Toilet_Plumbing work 1st fix | 5d | 2026-06-13 | 2026-06-17 | 5047 |  | 7 Days Work | 9209414 |
| 5049 | 36900.37000.37100.37200.37900.45700.65900.894200 | Toilet_Sleeve/Bore Packing | 5d | 2026-06-18 | 2026-06-22 | 5048 |  | 7 Days Work | 9209424 |
| 5050 | 36900.37000.37100.37200.37900.45700.65900.894300 | Toilet_Waterproofing | 10d | 2026-06-23 | 2026-07-02 | 5049 |  | 7 Days Work | 9209434 |
| 5051 | 36900.37000.37100.37200.37900.45700.65900.894400 | Toilet_Screed | 1d | 2026-07-03 | 2026-07-03 | 5050 |  | 7 Days Work | 9209444 |
| 5052 | 36900.37000.37100.37200.37900.45700.65900.894500 | Toilet_Plumbing 2nd fix | 5d | 2026-07-04 | 2026-07-08 | 5051 |  | 7 Days Work | 9209454 |
| 5053 | 36900.37000.37100.37200.37900.45700.65900.894600 | Toilet_Ledge wall | 5d | 2026-07-09 | 2026-07-13 | 5052 |  | 7 Days Work | 9209464 |
| 5054 | 36900.37000.37100.37200.37900.45700.65900.894700 | Toilet_Cement Plaster | 5d | 2026-07-14 | 2026-07-18 | 5053 |  | 7 Days Work | 9209474 |
| 5055 | 36900.37000.37100.37200.37900.45700.65900.894800 | Toilet_Door Frame | 1d | 2026-07-19 | 2026-07-19 | 5054 |  | 7 Days Work | 9209484 |
| 5056 | 36900.37000.37100.37200.37900.45700.65900.894900 | Toilet_Wash basin & Couter | 3d | 2026-07-20 | 2026-07-22 | 5055 |  | 7 Days Work | 9209494 |
| 5057 | 36900.37000.37100.37200.37900.45700.65900.895000 | Toilet_Wall dado | 20d | 2026-07-23 | 2026-08-11 | 5056 |  | 7 Days Work | 9209504 |
| 5058 | 36900.37000.37100.37200.37900.45700.65900.895100 | Toilet_Granite Work-Ledge wall top | 3d | 2026-08-12 | 2026-08-14 | 5057 |  | 7 Days Work | 9209514 |
| 5059 | 36900.37000.37100.37200.37900.45700.65900.895200 | Toilet_Floor Tilling work | 20d | 2026-08-15 | 2026-09-03 | 5058 |  | 7 Days Work | 9209524 |
| 5060 | 36900.37000.37100.37200.37900.45700.65900.895300 | Toilet_1st row of dado | 5d | 2026-09-04 | 2026-09-08 | 5059 |  | 7 Days Work | 9209534 |
| 5061 | 36900.37000.37100.37200.37900.45700.65900.895400 | Toilet_Window Fixing | 14d | 2026-09-09 | 2026-09-22 | 5060 |  | 7 Days Work | 9209544 |
| 5062 | 36900.37000.37100.37200.37900.45700.65900.895500 | Toilet_Services above False ceiling | 21d | 2026-09-23 | 2026-10-13 | 5061 |  | 7 Days Work | 9209554 |
| 5063 | 36900.37000.37100.37200.37900.45700.65900.895600 | Toilet_False Ceiling framing | 12d | 2026-10-14 | 2026-10-25 | 5062 |  | 7 Days Work | 9209564 |
| 5064 | 36900.37000.37100.37200.37900.45700.65900.895700 | Toilet_Door Frame | 5d | 2026-10-26 | 2026-10-30 | 5063 |  | 7 Days Work | 9209574 |
| 5065 | 36900.37000.37100.37200.37900.45700.65900.895800 | Toilet_Epoxy Tile Grouting | 7d | 2026-12-26 | 2027-01-01 | 5040SS |  | 7 Days Work | 9209584 |
| 5066 | 36900.37000.37100.37200.37900.45700.65900.895900 | Toilet_False ceiling board fixing, CP Sanitary Fixture, Electric Fixture | 21d | 2027-01-02 | 2027-01-22 | 5065 |  | 7 Days Work | 9209594 |
| 5067 | 36900.37000.37100.37200.37900.45800 | **17th Habitable/18th Floor** | 245d | 2026-06-05 | 2027-02-04 |  | start no earlier than 2026-06-05 | 7 Days Work | 9196984 |
| 5068 | 36900.37000.37100.37200.37900.45800.435000 | Post Pour | 7d | 2026-06-05 | 2026-06-11 | 4101FS+15d |  | 7 Days Work | 9203294 |
| 5069 | 36900.37000.37100.37200.37900.45800.435100 | MEP Clearance -1 | 5d | 2026-06-12 | 2026-06-16 | 5068 |  | 7 Days Work | 9203304 |
| 5070 | 36900.37000.37100.37200.37900.45800.435200 | Benchmark | 1d | 2026-06-17 | 2026-06-17 | 5069 |  | 7 Days Work | 9203314 |
| 5071 | 36900.37000.37100.37200.37900.45800.435300 | Temporary Railing | 3d | 2026-06-18 | 2026-06-20 | 5070 |  | 7 Days Work | 9203324 |
| 5072 | 36900.37000.37100.37200.37900.45800.435400 | Blockwork | 10d | 2026-06-21 | 2026-06-30 | 5071 |  | 7 Days Work | 9203334 |
| 5073 | 36900.37000.37100.37200.37900.45800.435500 | MEP Clearance -2 | 10d | 2026-07-01 | 2026-07-10 | 5072 |  | 7 Days Work | 9203344 |
| 5074 | 36900.37000.37100.37200.37900.45800.435600 | Gypsum Plaster | 14d | 2026-07-11 | 2026-07-24 | 5073 |  | 7 Days Work | 9203354 |
| 5075 | 36900.37000.37100.37200.37900.45800.435700 | Kitchen Platform | 3d | 2026-07-25 | 2026-07-27 | 5074 |  | 7 Days Work | 9203364 |
| 5076 | 36900.37000.37100.37200.37900.45800.435800 | Kitchen dado | 7d | 2026-07-28 | 2026-08-03 | 5075 |  | 7 Days Work | 9203374 |
| 5077 | 36900.37000.37100.37200.37900.45800.435900 | Fire Fighting | 5d | 2026-08-04 | 2026-08-08 | 5076 |  | 7 Days Work | 9203384 |
| 5078 | 36900.37000.37100.37200.37900.45800.436000 | Anticapilary | 5d | 2026-08-09 | 2026-08-13 | 5077 |  | 7 Days Work | 9203394 |
| 5079 | 36900.37000.37100.37200.37900.45800.436100 | Stone Laying | 10d | 2026-09-16 | 2026-09-25 | 5119 |  | 7 Days Work | 9203404 |
| 5080 | 36900.37000.37100.37200.37900.45800.436200 | Tiles Laying | 7d | 2026-09-16 | 2026-09-22 | 5119 |  | 7 Days Work | 9203414 |
| 5081 | 36900.37000.37100.37200.37900.45800.436300 | 1st cutting/polishing of stone flooring | 7d | 2026-09-23 | 2026-09-29 | 5080 |  | 7 Days Work | 9203424 |
| 5082 | 36900.37000.37100.37200.37900.45800.436400 | Tiles/Stone skirting | 5d | 2026-09-30 | 2026-10-04 | 5081 |  | 7 Days Work | 9203434 |
| 5083 | 36900.37000.37100.37200.37900.45800.436500 | Protechtion sheet | 1d | 2026-10-05 | 2026-10-05 | 5082 |  | 7 Days Work | 9203444 |
| 5084 | 36900.37000.37100.37200.37900.45800.436600 | Installation of Temporary Door | 1d | 2026-10-06 | 2026-10-06 | 5083 |  | 7 Days Work | 9203454 |
| 5085 | 36900.37000.37100.37200.37900.45800.436700 | Fixing of window tracks | 5d | 2026-10-07 | 2026-10-11 | 5084 |  | 7 Days Work | 9203464 |
| 5086 | 36900.37000.37100.37200.37900.45800.436800 | Wire Pulling | 7d | 2026-10-12 | 2026-10-18 | 5085 |  | 7 Days Work | 9203474 |
| 5087 | 36900.37000.37100.37200.37900.45800.436900 | Gypsum Remaining | 5d | 2026-10-19 | 2026-10-23 | 5086 |  | 7 Days Work | 9203484 |
| 5088 | 36900.37000.37100.37200.37900.45800.437000 | Fixing of windoow shutter | 5d | 2026-10-24 | 2026-10-28 | 5087 |  | 7 Days Work | 9203494 |
| 5089 | 36900.37000.37100.37200.37900.45800.437100 | Putty Works - walls & ceiling | 15d | 2026-10-29 | 2026-11-12 | 5088 |  | 7 Days Work | 9203504 |
| 5090 | 36900.37000.37100.37200.37900.45800.437200 | False Ceiling- Framing | 10d | 2026-11-13 | 2026-11-22 | 5089 |  | 7 Days Work | 9203514 |
| 5091 | 36900.37000.37100.37200.37900.45800.437300 | Pre Hung Door | 3d | 2026-11-23 | 2026-11-25 | 5090 |  | 7 Days Work | 9203524 |
| 5092 | 36900.37000.37100.37200.37900.45800.437400 | Protechtion sheet | 2d | 2026-11-26 | 2026-11-27 | 5091 |  | 7 Days Work | 9203534 |
| 5093 | 36900.37000.37100.37200.37900.45800.437500 | Skirting near door | 2d | 2026-11-28 | 2026-11-29 | 5092 |  | 7 Days Work | 9203544 |
| 5094 | 36900.37000.37100.37200.37900.45800.437600 | Electrical Switch box fixing | 14d | 2026-11-30 | 2026-12-13 | 5093 |  | 7 Days Work | 9203554 |
| 5095 | 36900.37000.37100.37200.37900.45800.437700 | Fire Fighting painting | 5d | 2026-12-14 | 2026-12-18 | 5094 |  | 7 Days Work | 9203564 |
| 5096 | 36900.37000.37100.37200.37900.45800.437800 | Protection of all flooring, door & window hardware | 5d | 2026-12-19 | 2026-12-23 | 5095 |  | 7 Days Work | 9203574 |
| 5097 | 36900.37000.37100.37200.37900.45800.437900 | 1st coat primer- ceiling 1st & walls | 14d | 2026-12-24 | 2027-01-06 | 5096 |  | 7 Days Work | 9203584 |
| 5098 | 36900.37000.37100.37200.37900.45800.438000 | Wooden Flooring | 5d | 2027-01-07 | 2027-01-11 | 5097 |  | 7 Days Work | 9203594 |
| 5099 | 36900.37000.37100.37200.37900.45800.438100 | Removing of Temporary Railing & installation of Glass Railing | 5d | 2027-01-07 | 2027-01-11 | 5097 |  | 7 Days Work | 9203604 |
| 5100 | 36900.37000.37100.37200.37900.45800.438200 | Tile Grouting | 7d | 2027-01-07 | 2027-01-13 | 5097 |  | 7 Days Work | 9203614 |
| 5101 | 36900.37000.37100.37200.37900.45800.438300 | False Ceiling | 5d | 2027-01-14 | 2027-01-18 | 5100 |  | 7 Days Work | 9203624 |
| 5102 | 36900.37000.37100.37200.37900.45800.438400 | 2nd coat of primer | 10d | 2027-01-19 | 2027-01-28 | 5101 |  | 7 Days Work | 9203634 |
| 5103 | 36900.37000.37100.37200.37900.45800.438500 | Final cutting/polishing of stone flooring | 7d | 2027-01-29 | 2027-02-04 | 5102 |  | 7 Days Work | 9203644 |

| ID | WBS | Task | Duration | Start | Finish | Predecessors | Constraint | Calendar | Unique_Task_ID |
| --- | --- | --- | --- | --- | --- | --- | --- | --- | --- |
| 5104 | 36900.37000.37100.37200.37900.45800.65700 | **Toilet** | 237d | 2026-06-12 | 2027-02-03 |  | start no earlier than 2026-06-12 | 7 Days Work | 9197184 |
| 5105 | 36900.37000.37100.37200.37900.45800.65700.896000 | Toilet_MEP Clearance -1 | 7d | 2026-06-12 | 2026-06-18 | 5068 |  | 7 Days Work | 9209604 |
| 5106 | 36900.37000.37100.37200.37900.45800.65700.896100 | Toilet_Level Marking | 1d | 2026-06-19 | 2026-06-19 | 5105 |  | 7 Days Work | 9209614 |
| 5107 | 36900.37000.37100.37200.37900.45800.65700.896200 | Toilet_Chasing work for Electrical conduit & concealed plumbing | 5d | 2026-06-20 | 2026-06-24 | 5106 |  | 7 Days Work | 9209624 |
| 5108 | 36900.37000.37100.37200.37900.45800.65700.896300 | Toilet_Plumbing work 1st fix | 5d | 2026-06-25 | 2026-06-29 | 5107 |  | 7 Days Work | 9209634 |
| 5109 | 36900.37000.37100.37200.37900.45800.65700.896400 | Toilet_Sleeve/Bore Packing | 5d | 2026-06-30 | 2026-07-04 | 5108 |  | 7 Days Work | 9209644 |
| 5110 | 36900.37000.37100.37200.37900.45800.65700.896500 | Toilet_Waterproofing | 10d | 2026-07-05 | 2026-07-14 | 5109 |  | 7 Days Work | 9209654 |
| 5111 | 36900.37000.37100.37200.37900.45800.65700.896600 | Toilet_Screed | 1d | 2026-07-15 | 2026-07-15 | 5110 |  | 7 Days Work | 9209664 |
| 5112 | 36900.37000.37100.37200.37900.45800.65700.896700 | Toilet_Plumbing 2nd fix | 5d | 2026-07-16 | 2026-07-20 | 5111 |  | 7 Days Work | 9209674 |
| 5113 | 36900.37000.37100.37200.37900.45800.65700.896800 | Toilet_Ledge wall | 5d | 2026-07-21 | 2026-07-25 | 5112 |  | 7 Days Work | 9209684 |
| 5114 | 36900.37000.37100.37200.37900.45800.65700.896900 | Toilet_Cement Plaster | 5d | 2026-07-26 | 2026-07-30 | 5113 |  | 7 Days Work | 9209694 |
| 5115 | 36900.37000.37100.37200.37900.45800.65700.897000 | Toilet_Door Frame | 1d | 2026-07-31 | 2026-07-31 | 5114 |  | 7 Days Work | 9209704 |
| 5116 | 36900.37000.37100.37200.37900.45800.65700.897100 | Toilet_Wash basin & Couter | 3d | 2026-08-01 | 2026-08-03 | 5115 |  | 7 Days Work | 9209714 |
| 5117 | 36900.37000.37100.37200.37900.45800.65700.897200 | Toilet_Wall dado | 20d | 2026-08-04 | 2026-08-23 | 5116 |  | 7 Days Work | 9209724 |
| 5118 | 36900.37000.37100.37200.37900.45800.65700.897300 | Toilet_Granite Work-Ledge wall top | 3d | 2026-08-24 | 2026-08-26 | 5117 |  | 7 Days Work | 9209734 |
| 5119 | 36900.37000.37100.37200.37900.45800.65700.897400 | Toilet_Floor Tilling work | 20d | 2026-08-27 | 2026-09-15 | 5118 |  | 7 Days Work | 9209744 |
| 5120 | 36900.37000.37100.37200.37900.45800.65700.897500 | Toilet_1st row of dado | 5d | 2026-09-16 | 2026-09-20 | 5119 |  | 7 Days Work | 9209754 |
| 5121 | 36900.37000.37100.37200.37900.45800.65700.897600 | Toilet_Window Fixing | 14d | 2026-09-21 | 2026-10-04 | 5120 |  | 7 Days Work | 9209764 |
| 5122 | 36900.37000.37100.37200.37900.45800.65700.897700 | Toilet_Services above False ceiling | 21d | 2026-10-05 | 2026-10-25 | 5121 |  | 7 Days Work | 9209774 |
| 5123 | 36900.37000.37100.37200.37900.45800.65700.897800 | Toilet_False Ceiling framing | 12d | 2026-10-26 | 2026-11-06 | 5122 |  | 7 Days Work | 9209784 |
| 5124 | 36900.37000.37100.37200.37900.45800.65700.897900 | Toilet_Door Frame | 5d | 2026-11-07 | 2026-11-11 | 5123 |  | 7 Days Work | 9209794 |
| 5125 | 36900.37000.37100.37200.37900.45800.65700.898000 | Toilet_Epoxy Tile Grouting | 7d | 2027-01-07 | 2027-01-13 | 5100SS |  | 7 Days Work | 9209804 |
| 5126 | 36900.37000.37100.37200.37900.45800.65700.898100 | Toilet_False ceiling board fixing, CP Sanitary Fixture, Electric Fixture | 21d | 2027-01-14 | 2027-02-03 | 5125 |  | 7 Days Work | 9209814 |
| 5127 | 36900.37000.37100.37200.37900.45900 | **18th Habitable/19th Floor** | 245d | 2026-06-14 | 2027-02-13 |  | start no earlier than 2026-06-14 | 7 Days Work | 9196994 |
| 5128 | 36900.37000.37100.37200.37900.45900.438600 | Post Pour | 7d | 2026-06-14 | 2026-06-20 | 4102FS+15d |  | 7 Days Work | 9203654 |
| 5129 | 36900.37000.37100.37200.37900.45900.438700 | MEP Clearance -1 | 5d | 2026-06-21 | 2026-06-25 | 5128 |  | 7 Days Work | 9203664 |
| 5130 | 36900.37000.37100.37200.37900.45900.438800 | Benchmark | 1d | 2026-06-26 | 2026-06-26 | 5129 |  | 7 Days Work | 9203674 |
| 5131 | 36900.37000.37100.37200.37900.45900.438900 | Temporary Railing | 3d | 2026-06-27 | 2026-06-29 | 5130 |  | 7 Days Work | 9203684 |
| 5132 | 36900.37000.37100.37200.37900.45900.439000 | Blockwork | 10d | 2026-06-30 | 2026-07-09 | 5131 |  | 7 Days Work | 9203694 |
| 5133 | 36900.37000.37100.37200.37900.45900.439100 | MEP Clearance -2 | 10d | 2026-07-10 | 2026-07-19 | 5132 |  | 7 Days Work | 9203704 |
| 5134 | 36900.37000.37100.37200.37900.45900.439200 | Gypsum Plaster | 14d | 2026-07-20 | 2026-08-02 | 5133 |  | 7 Days Work | 9203714 |
| 5135 | 36900.37000.37100.37200.37900.45900.439300 | Kitchen Platform | 3d | 2026-08-03 | 2026-08-05 | 5134 |  | 7 Days Work | 9203724 |
| 5136 | 36900.37000.37100.37200.37900.45900.439400 | Kitchen dado | 7d | 2026-08-06 | 2026-08-12 | 5135 |  | 7 Days Work | 9203734 |
| 5137 | 36900.37000.37100.37200.37900.45900.439500 | Fire Fighting | 5d | 2026-08-13 | 2026-08-17 | 5136 |  | 7 Days Work | 9203744 |
| 5138 | 36900.37000.37100.37200.37900.45900.439600 | Anticapilary | 5d | 2026-08-18 | 2026-08-22 | 5137 |  | 7 Days Work | 9203754 |
| 5139 | 36900.37000.37100.37200.37900.45900.439700 | Stone Laying | 10d | 2026-09-25 | 2026-10-04 | 5179 |  | 7 Days Work | 9203764 |
| 5140 | 36900.37000.37100.37200.37900.45900.439800 | Tiles Laying | 7d | 2026-09-25 | 2026-10-01 | 5179 |  | 7 Days Work | 9203774 |
| 5141 | 36900.37000.37100.37200.37900.45900.439900 | 1st cutting/polishing of stone flooring | 7d | 2026-10-02 | 2026-10-08 | 5140 |  | 7 Days Work | 9203784 |
| 5142 | 36900.37000.37100.37200.37900.45900.440000 | Tiles/Stone skirting | 5d | 2026-10-09 | 2026-10-13 | 5141 |  | 7 Days Work | 9203794 |
| 5143 | 36900.37000.37100.37200.37900.45900.440100 | Protechtion sheet | 1d | 2026-10-14 | 2026-10-14 | 5142 |  | 7 Days Work | 9203804 |
| 5144 | 36900.37000.37100.37200.37900.45900.440200 | Installation of Temporary Door | 1d | 2026-10-15 | 2026-10-15 | 5143 |  | 7 Days Work | 9203814 |
| 5145 | 36900.37000.37100.37200.37900.45900.440300 | Fixing of window tracks | 5d | 2026-10-16 | 2026-10-20 | 5144 |  | 7 Days Work | 9203824 |
| 5146 | 36900.37000.37100.37200.37900.45900.440400 | Wire Pulling | 7d | 2026-10-21 | 2026-10-27 | 5145 |  | 7 Days Work | 9203834 |
| 5147 | 36900.37000.37100.37200.37900.45900.440500 | Gypsum Remaining | 5d | 2026-10-28 | 2026-11-01 | 5146 |  | 7 Days Work | 9203844 |
| 5148 | 36900.37000.37100.37200.37900.45900.440600 | Fixing of windoow shutter | 5d | 2026-11-02 | 2026-11-06 | 5147 |  | 7 Days Work | 9203854 |
| 5149 | 36900.37000.37100.37200.37900.45900.440700 | Putty Works - walls & ceiling | 15d | 2026-11-07 | 2026-11-21 | 5148 |  | 7 Days Work | 9203864 |
| 5150 | 36900.37000.37100.37200.37900.45900.440800 | False Ceiling- Framing | 10d | 2026-11-22 | 2026-12-01 | 5149 |  | 7 Days Work | 9203874 |
| 5151 | 36900.37000.37100.37200.37900.45900.440900 | Pre Hung Door | 3d | 2026-12-02 | 2026-12-04 | 5150 |  | 7 Days Work | 9203884 |
| 5152 | 36900.37000.37100.37200.37900.45900.441000 | Protechtion sheet | 2d | 2026-12-05 | 2026-12-06 | 5151 |  | 7 Days Work | 9203894 |
| 5153 | 36900.37000.37100.37200.37900.45900.441100 | Skirting near door | 2d | 2026-12-07 | 2026-12-08 | 5152 |  | 7 Days Work | 9203904 |
| 5154 | 36900.37000.37100.37200.37900.45900.441200 | Electrical Switch box fixing | 14d | 2026-12-09 | 2026-12-22 | 5153 |  | 7 Days Work | 9203914 |
| 5155 | 36900.37000.37100.37200.37900.45900.441300 | Fire Fighting painting | 5d | 2026-12-23 | 2026-12-27 | 5154 |  | 7 Days Work | 9203924 |
| 5156 | 36900.37000.37100.37200.37900.45900.441400 | Protection of all flooring, door & window hardware | 5d | 2026-12-28 | 2027-01-01 | 5155 |  | 7 Days Work | 9203934 |
| 5157 | 36900.37000.37100.37200.37900.45900.441500 | 1st coat primer- ceiling 1st & walls | 14d | 2027-01-02 | 2027-01-15 | 5156 |  | 7 Days Work | 9203944 |
| 5158 | 36900.37000.37100.37200.37900.45900.441600 | Wooden Flooring | 5d | 2027-01-16 | 2027-01-20 | 5157 |  | 7 Days Work | 9203954 |
| 5159 | 36900.37000.37100.37200.37900.45900.441700 | Removing of Temporary Railing & installation of Glass Railing | 5d | 2027-01-16 | 2027-01-20 | 5157 |  | 7 Days Work | 9203964 |
| 5160 | 36900.37000.37100.37200.37900.45900.441800 | Tile Grouting | 7d | 2027-01-16 | 2027-01-22 | 5157 |  | 7 Days Work | 9203974 |
| 5161 | 36900.37000.37100.37200.37900.45900.441900 | False Ceiling | 5d | 2027-01-23 | 2027-01-27 | 5160 |  | 7 Days Work | 9203984 |
| 5162 | 36900.37000.37100.37200.37900.45900.442000 | 2nd coat of primer | 10d | 2027-01-28 | 2027-02-06 | 5161 |  | 7 Days Work | 9203994 |
| 5163 | 36900.37000.37100.37200.37900.45900.442100 | Final cutting/polishing of stone flooring | 7d | 2027-02-07 | 2027-02-13 | 5162 |  | 7 Days Work | 9204004 |

| ID | WBS | Task | Duration | Start | Finish | Predecessors | Constraint | Calendar | Unique_Task_ID |
| --- | --- | --- | --- | --- | --- | --- | --- | --- | --- |
| 5164 | 36900.37000.37100.37200.37900.45900.65600 | **Toilet** | 237d | 2026-06-21 | 2027-02-12 |  | start no earlier than 2026-06-21 | 7 Days Work | 9197194 |
| 5165 | 36900.37000.37100.37200.37900.45900.65600.898200 | Toilet_MEP Clearance -1 | 7d | 2026-06-21 | 2026-06-27 | 5128 |  | 7 Days Work | 9209824 |
| 5166 | 36900.37000.37100.37200.37900.45900.65600.898300 | Toilet_Level Marking | 1d | 2026-06-28 | 2026-06-28 | 5165 |  | 7 Days Work | 9209834 |
| 5167 | 36900.37000.37100.37200.37900.45900.65600.898400 | Toilet_Chasing work for Electrical conduit & concealed plumbing | 5d | 2026-06-29 | 2026-07-03 | 5166 |  | 7 Days Work | 9209844 |
| 5168 | 36900.37000.37100.37200.37900.45900.65600.898500 | Toilet_Plumbing work 1st fix | 5d | 2026-07-04 | 2026-07-08 | 5167 |  | 7 Days Work | 9209854 |
| 5169 | 36900.37000.37100.37200.37900.45900.65600.898600 | Toilet_Sleeve/Bore Packing | 5d | 2026-07-09 | 2026-07-13 | 5168 |  | 7 Days Work | 9209864 |
| 5170 | 36900.37000.37100.37200.37900.45900.65600.898700 | Toilet_Waterproofing | 10d | 2026-07-14 | 2026-07-23 | 5169 |  | 7 Days Work | 9209874 |
| 5171 | 36900.37000.37100.37200.37900.45900.65600.898800 | Toilet_Screed | 1d | 2026-07-24 | 2026-07-24 | 5170 |  | 7 Days Work | 9209884 |
| 5172 | 36900.37000.37100.37200.37900.45900.65600.898900 | Toilet_Plumbing 2nd fix | 5d | 2026-07-25 | 2026-07-29 | 5171 |  | 7 Days Work | 9209894 |
| 5173 | 36900.37000.37100.37200.37900.45900.65600.899000 | Toilet_Ledge wall | 5d | 2026-07-30 | 2026-08-03 | 5172 |  | 7 Days Work | 9209904 |
| 5174 | 36900.37000.37100.37200.37900.45900.65600.899100 | Toilet_Cement Plaster | 5d | 2026-08-04 | 2026-08-08 | 5173 |  | 7 Days Work | 9209914 |
| 5175 | 36900.37000.37100.37200.37900.45900.65600.899200 | Toilet_Door Frame | 1d | 2026-08-09 | 2026-08-09 | 5174 |  | 7 Days Work | 9209924 |
| 5176 | 36900.37000.37100.37200.37900.45900.65600.899300 | Toilet_Wash basin & Couter | 3d | 2026-08-10 | 2026-08-12 | 5175 |  | 7 Days Work | 9209934 |
| 5177 | 36900.37000.37100.37200.37900.45900.65600.899400 | Toilet_Wall dado | 20d | 2026-08-13 | 2026-09-01 | 5176 |  | 7 Days Work | 9209944 |
| 5178 | 36900.37000.37100.37200.37900.45900.65600.899500 | Toilet_Granite Work-Ledge wall top | 3d | 2026-09-02 | 2026-09-04 | 5177 |  | 7 Days Work | 9209954 |
| 5179 | 36900.37000.37100.37200.37900.45900.65600.899600 | Toilet_Floor Tilling work | 20d | 2026-09-05 | 2026-09-24 | 5178 |  | 7 Days Work | 9209964 |
| 5180 | 36900.37000.37100.37200.37900.45900.65600.899700 | Toilet_1st row of dado | 5d | 2026-09-25 | 2026-09-29 | 5179 |  | 7 Days Work | 9209974 |
| 5181 | 36900.37000.37100.37200.37900.45900.65600.899800 | Toilet_Window Fixing | 14d | 2026-09-30 | 2026-10-13 | 5180 |  | 7 Days Work | 9209984 |
| 5182 | 36900.37000.37100.37200.37900.45900.65600.899900 | Toilet_Services above False ceiling | 21d | 2026-10-14 | 2026-11-03 | 5181 |  | 7 Days Work | 9209994 |
| 5183 | 36900.37000.37100.37200.37900.45900.65600.900000 | Toilet_False Ceiling framing | 12d | 2026-11-04 | 2026-11-15 | 5182 |  | 7 Days Work | 9210004 |
| 5184 | 36900.37000.37100.37200.37900.45900.65600.900100 | Toilet_Door Frame | 5d | 2026-11-16 | 2026-11-20 | 5183 |  | 7 Days Work | 9210014 |
| 5185 | 36900.37000.37100.37200.37900.45900.65600.900200 | Toilet_Epoxy Tile Grouting | 7d | 2027-01-16 | 2027-01-22 | 5160SS |  | 7 Days Work | 9210024 |
| 5186 | 36900.37000.37100.37200.37900.45900.65600.900300 | Toilet_False ceiling board fixing, CP Sanitary Fixture, Electric Fixture | 21d | 2027-01-23 | 2027-02-12 | 5185 |  | 7 Days Work | 9210034 |
| 5187 | 36900.37000.37100.37200.37900.46000 | **19th Habitable/20th Floor** | 245d | 2026-06-23 | 2027-02-22 |  | start no earlier than 2026-06-23 | 7 Days Work | 9197004 |
| 5188 | 36900.37000.37100.37200.37900.46000.442200 | Post Pour | 7d | 2026-06-23 | 2026-06-29 | 4103FS+15d |  | 7 Days Work | 9204014 |
| 5189 | 36900.37000.37100.37200.37900.46000.442300 | MEP Clearance -1 | 5d | 2026-06-30 | 2026-07-04 | 5188 |  | 7 Days Work | 9204024 |
| 5190 | 36900.37000.37100.37200.37900.46000.442400 | Benchmark | 1d | 2026-07-05 | 2026-07-05 | 5189 |  | 7 Days Work | 9204034 |
| 5191 | 36900.37000.37100.37200.37900.46000.442500 | Temporary Railing | 3d | 2026-07-06 | 2026-07-08 | 5190 |  | 7 Days Work | 9204044 |
| 5192 | 36900.37000.37100.37200.37900.46000.442600 | Blockwork | 10d | 2026-07-09 | 2026-07-18 | 5191 |  | 7 Days Work | 9204054 |
| 5193 | 36900.37000.37100.37200.37900.46000.442700 | MEP Clearance -2 | 10d | 2026-07-19 | 2026-07-28 | 5192 |  | 7 Days Work | 9204064 |
| 5194 | 36900.37000.37100.37200.37900.46000.442800 | Gypsum Plaster | 14d | 2026-07-29 | 2026-08-11 | 5193 |  | 7 Days Work | 9204074 |
| 5195 | 36900.37000.37100.37200.37900.46000.442900 | Kitchen Platform | 3d | 2026-08-12 | 2026-08-14 | 5194 |  | 7 Days Work | 9204084 |
| 5196 | 36900.37000.37100.37200.37900.46000.443000 | Kitchen dado | 7d | 2026-08-15 | 2026-08-21 | 5195 |  | 7 Days Work | 9204094 |
| 5197 | 36900.37000.37100.37200.37900.46000.443100 | Fire Fighting | 5d | 2026-08-22 | 2026-08-26 | 5196 |  | 7 Days Work | 9204104 |
| 5198 | 36900.37000.37100.37200.37900.46000.443200 | Anticapilary | 5d | 2026-08-27 | 2026-08-31 | 5197 |  | 7 Days Work | 9204114 |
| 5199 | 36900.37000.37100.37200.37900.46000.443300 | Stone Laying | 10d | 2026-10-04 | 2026-10-13 | 5239 |  | 7 Days Work | 9204124 |
| 5200 | 36900.37000.37100.37200.37900.46000.443400 | Tiles Laying | 7d | 2026-10-04 | 2026-10-10 | 5239 |  | 7 Days Work | 9204134 |
| 5201 | 36900.37000.37100.37200.37900.46000.443500 | 1st cutting/polishing of stone flooring | 7d | 2026-10-11 | 2026-10-17 | 5200 |  | 7 Days Work | 9204144 |
| 5202 | 36900.37000.37100.37200.37900.46000.443600 | Tiles/Stone skirting | 5d | 2026-10-18 | 2026-10-22 | 5201 |  | 7 Days Work | 9204154 |
| 5203 | 36900.37000.37100.37200.37900.46000.443700 | Protechtion sheet | 1d | 2026-10-23 | 2026-10-23 | 5202 |  | 7 Days Work | 9204164 |
| 5204 | 36900.37000.37100.37200.37900.46000.443800 | Installation of Temporary Door | 1d | 2026-10-24 | 2026-10-24 | 5203 |  | 7 Days Work | 9204174 |
| 5205 | 36900.37000.37100.37200.37900.46000.443900 | Fixing of window tracks | 5d | 2026-10-25 | 2026-10-29 | 5204 |  | 7 Days Work | 9204184 |
| 5206 | 36900.37000.37100.37200.37900.46000.444000 | Wire Pulling | 7d | 2026-10-30 | 2026-11-05 | 5205 |  | 7 Days Work | 9204194 |
| 5207 | 36900.37000.37100.37200.37900.46000.444100 | Gypsum Remaining | 5d | 2026-11-06 | 2026-11-10 | 5206 |  | 7 Days Work | 9204204 |
| 5208 | 36900.37000.37100.37200.37900.46000.444200 | Fixing of windoow shutter | 5d | 2026-11-11 | 2026-11-15 | 5207 |  | 7 Days Work | 9204214 |
| 5209 | 36900.37000.37100.37200.37900.46000.444300 | Putty Works - walls & ceiling | 15d | 2026-11-16 | 2026-11-30 | 5208 |  | 7 Days Work | 9204224 |
| 5210 | 36900.37000.37100.37200.37900.46000.444400 | False Ceiling- Framing | 10d | 2026-12-01 | 2026-12-10 | 5209 |  | 7 Days Work | 9204234 |
| 5211 | 36900.37000.37100.37200.37900.46000.444500 | Pre Hung Door | 3d | 2026-12-11 | 2026-12-13 | 5210 |  | 7 Days Work | 9204244 |
| 5212 | 36900.37000.37100.37200.37900.46000.444600 | Protechtion sheet | 2d | 2026-12-14 | 2026-12-15 | 5211 |  | 7 Days Work | 9204254 |
| 5213 | 36900.37000.37100.37200.37900.46000.444700 | Skirting near door | 2d | 2026-12-16 | 2026-12-17 | 5212 |  | 7 Days Work | 9204264 |
| 5214 | 36900.37000.37100.37200.37900.46000.444800 | Electrical Switch box fixing | 14d | 2026-12-18 | 2026-12-31 | 5213 |  | 7 Days Work | 9204274 |
| 5215 | 36900.37000.37100.37200.37900.46000.444900 | Fire Fighting painting | 5d | 2027-01-01 | 2027-01-05 | 5214 |  | 7 Days Work | 9204284 |
| 5216 | 36900.37000.37100.37200.37900.46000.445000 | Protection of all flooring, door & window hardware | 5d | 2027-01-06 | 2027-01-10 | 5215 |  | 7 Days Work | 9204294 |
| 5217 | 36900.37000.37100.37200.37900.46000.445100 | 1st coat primer- ceiling 1st & walls | 14d | 2027-01-11 | 2027-01-24 | 5216 |  | 7 Days Work | 9204304 |
| 5218 | 36900.37000.37100.37200.37900.46000.445200 | Wooden Flooring | 5d | 2027-01-25 | 2027-01-29 | 5217 |  | 7 Days Work | 9204314 |
| 5219 | 36900.37000.37100.37200.37900.46000.445300 | Removing of Temporary Railing & installation of Glass Railing | 5d | 2027-01-25 | 2027-01-29 | 5217 |  | 7 Days Work | 9204324 |
| 5220 | 36900.37000.37100.37200.37900.46000.445400 | Tile Grouting | 7d | 2027-01-25 | 2027-01-31 | 5217 |  | 7 Days Work | 9204334 |
| 5221 | 36900.37000.37100.37200.37900.46000.445500 | False Ceiling | 5d | 2027-02-01 | 2027-02-05 | 5220 |  | 7 Days Work | 9204344 |
| 5222 | 36900.37000.37100.37200.37900.46000.445600 | 2nd coat of primer | 10d | 2027-02-06 | 2027-02-15 | 5221 |  | 7 Days Work | 9204354 |
| 5223 | 36900.37000.37100.37200.37900.46000.445700 | Final cutting/polishing of stone flooring | 7d | 2027-02-16 | 2027-02-22 | 5222 |  | 7 Days Work | 9204364 |

| ID | WBS | Task | Duration | Start | Finish | Predecessors | Constraint | Calendar | Unique_Task_ID |
| --- | --- | --- | --- | --- | --- | --- | --- | --- | --- |
| 5224 | 36900.37000.37100.37200.37900.46000.65500 | **Toilet** | 237d | 2026-06-30 | 2027-02-21 |  | start no earlier than 2026-06-30 | 7 Days Work | 9197204 |
| 5225 | 36900.37000.37100.37200.37900.46000.65500.900400 | Toilet_MEP Clearance -1 | 7d | 2026-06-30 | 2026-07-06 | 5188 |  | 7 Days Work | 9210044 |
| 5226 | 36900.37000.37100.37200.37900.46000.65500.900500 | Toilet_Level Marking | 1d | 2026-07-07 | 2026-07-07 | 5225 |  | 7 Days Work | 9210054 |
| 5227 | 36900.37000.37100.37200.37900.46000.65500.900600 | Toilet_Chasing work for Electrical conduit & concealed plumbing | 5d | 2026-07-08 | 2026-07-12 | 5226 |  | 7 Days Work | 9210064 |
| 5228 | 36900.37000.37100.37200.37900.46000.65500.900700 | Toilet_Plumbing work 1st fix | 5d | 2026-07-13 | 2026-07-17 | 5227 |  | 7 Days Work | 9210074 |
| 5229 | 36900.37000.37100.37200.37900.46000.65500.900800 | Toilet_Sleeve/Bore Packing | 5d | 2026-07-18 | 2026-07-22 | 5228 |  | 7 Days Work | 9210084 |
| 5230 | 36900.37000.37100.37200.37900.46000.65500.900900 | Toilet_Waterproofing | 10d | 2026-07-23 | 2026-08-01 | 5229 |  | 7 Days Work | 9210094 |
| 5231 | 36900.37000.37100.37200.37900.46000.65500.901000 | Toilet_Screed | 1d | 2026-08-02 | 2026-08-02 | 5230 |  | 7 Days Work | 9210104 |
| 5232 | 36900.37000.37100.37200.37900.46000.65500.901100 | Toilet_Plumbing 2nd fix | 5d | 2026-08-03 | 2026-08-07 | 5231 |  | 7 Days Work | 9210114 |
| 5233 | 36900.37000.37100.37200.37900.46000.65500.901200 | Toilet_Ledge wall | 5d | 2026-08-08 | 2026-08-12 | 5232 |  | 7 Days Work | 9210124 |
| 5234 | 36900.37000.37100.37200.37900.46000.65500.901300 | Toilet_Cement Plaster | 5d | 2026-08-13 | 2026-08-17 | 5233 |  | 7 Days Work | 9210134 |
| 5235 | 36900.37000.37100.37200.37900.46000.65500.901400 | Toilet_Door Frame | 1d | 2026-08-18 | 2026-08-18 | 5234 |  | 7 Days Work | 9210144 |
| 5236 | 36900.37000.37100.37200.37900.46000.65500.901500 | Toilet_Wash basin & Couter | 3d | 2026-08-19 | 2026-08-21 | 5235 |  | 7 Days Work | 9210154 |
| 5237 | 36900.37000.37100.37200.37900.46000.65500.901600 | Toilet_Wall dado | 20d | 2026-08-22 | 2026-09-10 | 5236 |  | 7 Days Work | 9210164 |
| 5238 | 36900.37000.37100.37200.37900.46000.65500.901700 | Toilet_Granite Work-Ledge wall top | 3d | 2026-09-11 | 2026-09-13 | 5237 |  | 7 Days Work | 9210174 |
| 5239 | 36900.37000.37100.37200.37900.46000.65500.901800 | Toilet_Floor Tilling work | 20d | 2026-09-14 | 2026-10-03 | 5238 |  | 7 Days Work | 9210184 |
| 5240 | 36900.37000.37100.37200.37900.46000.65500.901900 | Toilet_1st row of dado | 5d | 2026-10-04 | 2026-10-08 | 5239 |  | 7 Days Work | 9210194 |
| 5241 | 36900.37000.37100.37200.37900.46000.65500.902000 | Toilet_Window Fixing | 14d | 2026-10-09 | 2026-10-22 | 5240 |  | 7 Days Work | 9210204 |
| 5242 | 36900.37000.37100.37200.37900.46000.65500.902100 | Toilet_Services above False ceiling | 21d | 2026-10-23 | 2026-11-12 | 5241 |  | 7 Days Work | 9210214 |
| 5243 | 36900.37000.37100.37200.37900.46000.65500.902200 | Toilet_False Ceiling framing | 12d | 2026-11-13 | 2026-11-24 | 5242 |  | 7 Days Work | 9210224 |
| 5244 | 36900.37000.37100.37200.37900.46000.65500.902300 | Toilet_Door Frame | 5d | 2026-11-25 | 2026-11-29 | 5243 |  | 7 Days Work | 9210234 |
| 5245 | 36900.37000.37100.37200.37900.46000.65500.902400 | Toilet_Epoxy Tile Grouting | 7d | 2027-01-25 | 2027-01-31 | 5220SS |  | 7 Days Work | 9210244 |
| 5246 | 36900.37000.37100.37200.37900.46000.65500.902500 | Toilet_False ceiling board fixing, CP Sanitary Fixture, Electric Fixture | 21d | 2027-02-01 | 2027-02-21 | 5245 |  | 7 Days Work | 9210254 |
| 5247 | 36900.37000.37100.37200.37900.46100 | **19th Habitable/21st Floor** | 245d | 2026-07-05 | 2027-03-06 |  | start no earlier than 2026-07-05 | 7 Days Work | 9264674 |
| 5248 | 36900.37000.37100.37200.37900.46100.445800 | Post Pour | 7d | 2026-07-05 | 2026-07-11 | 4104FS+15d |  | 7 Days Work | 9264694 |
| 5249 | 36900.37000.37100.37200.37900.46100.445900 | MEP Clearance -1 | 5d | 2026-07-12 | 2026-07-16 | 5248 |  | 7 Days Work | 9264704 |
| 5250 | 36900.37000.37100.37200.37900.46100.446000 | Benchmark | 1d | 2026-07-17 | 2026-07-17 | 5249 |  | 7 Days Work | 9264714 |
| 5251 | 36900.37000.37100.37200.37900.46100.446100 | Temporary Railing | 3d | 2026-07-18 | 2026-07-20 | 5250 |  | 7 Days Work | 9264724 |
| 5252 | 36900.37000.37100.37200.37900.46100.446200 | Blockwork | 10d | 2026-07-21 | 2026-07-30 | 5251 |  | 7 Days Work | 9264734 |
| 5253 | 36900.37000.37100.37200.37900.46100.446300 | MEP Clearance -2 | 10d | 2026-07-31 | 2026-08-09 | 5252 |  | 7 Days Work | 9264744 |
| 5254 | 36900.37000.37100.37200.37900.46100.446400 | Gypsum Plaster | 14d | 2026-08-10 | 2026-08-23 | 5253 |  | 7 Days Work | 9044154 |
| 5255 | 36900.37000.37100.37200.37900.46100.446500 | Kitchen Platform | 3d | 2026-08-24 | 2026-08-26 | 5254 |  | 7 Days Work | 9264764 |
| 5256 | 36900.37000.37100.37200.37900.46100.446600 | Kitchen dado | 7d | 2026-08-27 | 2026-09-02 | 5255 |  | 7 Days Work | 9264774 |
| 5257 | 36900.37000.37100.37200.37900.46100.446700 | Fire Fighting | 5d | 2026-09-03 | 2026-09-07 | 5256 |  | 7 Days Work | 9264784 |
| 5258 | 36900.37000.37100.37200.37900.46100.446800 | Anticapilary | 5d | 2026-09-08 | 2026-09-12 | 5257 |  | 7 Days Work | 9264794 |
| 5259 | 36900.37000.37100.37200.37900.46100.446900 | Stone Laying | 10d | 2026-10-16 | 2026-10-25 | 5299 |  | 7 Days Work | 9264804 |
| 5260 | 36900.37000.37100.37200.37900.46100.447000 | Tiles Laying | 7d | 2026-10-16 | 2026-10-22 | 5299 |  | 7 Days Work | 9044164 |
| 5261 | 36900.37000.37100.37200.37900.46100.447100 | 1st cutting/polishing of stone flooring | 7d | 2026-10-23 | 2026-10-29 | 5260 |  | 7 Days Work | 9264824 |
| 5262 | 36900.37000.37100.37200.37900.46100.447200 | Tiles/Stone skirting | 5d | 2026-10-30 | 2026-11-03 | 5261 |  | 7 Days Work | 9264834 |
| 5263 | 36900.37000.37100.37200.37900.46100.447300 | Protechtion sheet | 1d | 2026-11-04 | 2026-11-04 | 5262 |  | 7 Days Work | 9264844 |
| 5264 | 36900.37000.37100.37200.37900.46100.447400 | Installation of Temporary Door | 1d | 2026-11-05 | 2026-11-05 | 5263 |  | 7 Days Work | 9264854 |
| 5265 | 36900.37000.37100.37200.37900.46100.447500 | Fixing of window tracks | 5d | 2026-11-06 | 2026-11-10 | 5264 |  | 7 Days Work | 9264864 |
| 5266 | 36900.37000.37100.37200.37900.46100.447600 | Wire Pulling | 7d | 2026-11-11 | 2026-11-17 | 5265 |  | 7 Days Work | 9264874 |
| 5267 | 36900.37000.37100.37200.37900.46100.447700 | Gypsum Remaining | 5d | 2026-11-18 | 2026-11-22 | 5266 |  | 7 Days Work | 9264884 |
| 5268 | 36900.37000.37100.37200.37900.46100.447800 | Fixing of windoow shutter | 5d | 2026-11-23 | 2026-11-27 | 5267 |  | 7 Days Work | 9264894 |
| 5269 | 36900.37000.37100.37200.37900.46100.447900 | Putty Works - walls & ceiling | 15d | 2026-11-28 | 2026-12-12 | 5268 |  | 7 Days Work | 9264904 |
| 5270 | 36900.37000.37100.37200.37900.46100.448000 | False Ceiling- Framing | 10d | 2026-12-13 | 2026-12-22 | 5269 |  | 7 Days Work | 9264914 |
| 5271 | 36900.37000.37100.37200.37900.46100.448100 | Pre Hung Door | 3d | 2026-12-23 | 2026-12-25 | 5270 |  | 7 Days Work | 9264924 |
| 5272 | 36900.37000.37100.37200.37900.46100.448200 | Protechtion sheet | 2d | 2026-12-26 | 2026-12-27 | 5271 |  | 7 Days Work | 9264934 |
| 5273 | 36900.37000.37100.37200.37900.46100.448300 | Skirting near door | 2d | 2026-12-28 | 2026-12-29 | 5272 |  | 7 Days Work | 9264944 |
| 5274 | 36900.37000.37100.37200.37900.46100.448400 | Electrical Switch box fixing | 14d | 2026-12-30 | 2027-01-12 | 5273 |  | 7 Days Work | 9264954 |
| 5275 | 36900.37000.37100.37200.37900.46100.448500 | Fire Fighting painting | 5d | 2027-01-13 | 2027-01-17 | 5274 |  | 7 Days Work | 9264964 |
| 5276 | 36900.37000.37100.37200.37900.46100.448600 | Protection of all flooring, door & window hardware | 5d | 2027-01-18 | 2027-01-22 | 5275 |  | 7 Days Work | 9264974 |
| 5277 | 36900.37000.37100.37200.37900.46100.448700 | 1st coat primer- ceiling 1st & walls | 14d | 2027-01-23 | 2027-02-05 | 5276 |  | 7 Days Work | 9264984 |
| 5278 | 36900.37000.37100.37200.37900.46100.448800 | Wooden Flooring | 5d | 2027-02-06 | 2027-02-10 | 5277 |  | 7 Days Work | 9264994 |
| 5279 | 36900.37000.37100.37200.37900.46100.448900 | Removing of Temporary Railing & installation of Glass Railing | 5d | 2027-02-06 | 2027-02-10 | 5277 |  | 7 Days Work | 9265004 |
| 5280 | 36900.37000.37100.37200.37900.46100.449000 | Tile Grouting | 7d | 2027-02-06 | 2027-02-12 | 5277 |  | 7 Days Work | 9265014 |
| 5281 | 36900.37000.37100.37200.37900.46100.449100 | False Ceiling | 5d | 2027-02-13 | 2027-02-17 | 5280 |  | 7 Days Work | 9265024 |
| 5282 | 36900.37000.37100.37200.37900.46100.449200 | 2nd coat of primer | 10d | 2027-02-18 | 2027-02-27 | 5281 |  | 7 Days Work | 9265034 |
| 5283 | 36900.37000.37100.37200.37900.46100.449300 | Final cutting/polishing of stone flooring | 7d | 2027-02-28 | 2027-03-06 | 5282 |  | 7 Days Work | 9265044 |

| ID | WBS | Task | Duration | Start | Finish | Predecessors | Constraint | Calendar | Unique_Task_ID |
| --- | --- | --- | --- | --- | --- | --- | --- | --- | --- |
| 5284 | 36900.37000.37100.37200.37900.46100.65400 | **Toilet** | 237d | 2026-07-12 | 2027-03-05 |  | start no earlier than 2026-07-12 | 7 Days Work | 9264684 |
| 5285 | 36900.37000.37100.37200.37900.46100.65400.902600 | Toilet_MEP Clearance -1 | 7d | 2026-07-12 | 2026-07-18 | 5248 |  | 7 Days Work | 9265054 |
| 5286 | 36900.37000.37100.37200.37900.46100.65400.902700 | Toilet_Level Marking | 1d | 2026-07-19 | 2026-07-19 | 5285 |  | 7 Days Work | 9265064 |
| 5287 | 36900.37000.37100.37200.37900.46100.65400.902800 | Toilet_Chasing work for Electrical conduit & concealed plumbing | 5d | 2026-07-20 | 2026-07-24 | 5286 |  | 7 Days Work | 9265074 |
| 5288 | 36900.37000.37100.37200.37900.46100.65400.902900 | Toilet_Plumbing work 1st fix | 5d | 2026-07-25 | 2026-07-29 | 5287 |  | 7 Days Work | 9265084 |
| 5289 | 36900.37000.37100.37200.37900.46100.65400.903000 | Toilet_Sleeve/Bore Packing | 5d | 2026-07-30 | 2026-08-03 | 5288 |  | 7 Days Work | 9265094 |
| 5290 | 36900.37000.37100.37200.37900.46100.65400.903100 | Toilet_Waterproofing | 10d | 2026-08-04 | 2026-08-13 | 5289 |  | 7 Days Work | 9265104 |
| 5291 | 36900.37000.37100.37200.37900.46100.65400.903200 | Toilet_Screed | 1d | 2026-08-14 | 2026-08-14 | 5290 |  | 7 Days Work | 9265114 |
| 5292 | 36900.37000.37100.37200.37900.46100.65400.903300 | Toilet_Plumbing 2nd fix | 5d | 2026-08-15 | 2026-08-19 | 5291 |  | 7 Days Work | 9265124 |
| 5293 | 36900.37000.37100.37200.37900.46100.65400.903400 | Toilet_Ledge wall | 5d | 2026-08-20 | 2026-08-24 | 5292 |  | 7 Days Work | 9265134 |
| 5294 | 36900.37000.37100.37200.37900.46100.65400.903500 | Toilet_Cement Plaster | 5d | 2026-08-25 | 2026-08-29 | 5293 |  | 7 Days Work | 9265144 |
| 5295 | 36900.37000.37100.37200.37900.46100.65400.903600 | Toilet_Door Frame | 1d | 2026-08-30 | 2026-08-30 | 5294 |  | 7 Days Work | 9265154 |
| 5296 | 36900.37000.37100.37200.37900.46100.65400.903700 | Toilet_Wash basin & Couter | 3d | 2026-08-31 | 2026-09-02 | 5295 |  | 7 Days Work | 9265164 |
| 5297 | 36900.37000.37100.37200.37900.46100.65400.903800 | Toilet_Wall dado | 20d | 2026-09-03 | 2026-09-22 | 5296 |  | 7 Days Work | 9265174 |
| 5298 | 36900.37000.37100.37200.37900.46100.65400.903900 | Toilet_Granite Work-Ledge wall top | 3d | 2026-09-23 | 2026-09-25 | 5297 |  | 7 Days Work | 9265184 |
| 5299 | 36900.37000.37100.37200.37900.46100.65400.904000 | Toilet_Floor Tilling work | 20d | 2026-09-26 | 2026-10-15 | 5298 |  | 7 Days Work | 9265194 |
| 5300 | 36900.37000.37100.37200.37900.46100.65400.904100 | Toilet_1st row of dado | 5d | 2026-10-16 | 2026-10-20 | 5299 |  | 7 Days Work | 9265204 |
| 5301 | 36900.37000.37100.37200.37900.46100.65400.904200 | Toilet_Window Fixing | 14d | 2026-10-21 | 2026-11-03 | 5300 |  | 7 Days Work | 9265214 |
| 5302 | 36900.37000.37100.37200.37900.46100.65400.904300 | Toilet_Services above False ceiling | 21d | 2026-11-04 | 2026-11-24 | 5301 |  | 7 Days Work | 9265224 |
| 5303 | 36900.37000.37100.37200.37900.46100.65400.904400 | Toilet_False Ceiling framing | 12d | 2026-11-25 | 2026-12-06 | 5302 |  | 7 Days Work | 9265234 |
| 5304 | 36900.37000.37100.37200.37900.46100.65400.904500 | Toilet_Door Frame | 5d | 2026-12-07 | 2026-12-11 | 5303 |  | 7 Days Work | 9265244 |
| 5305 | 36900.37000.37100.37200.37900.46100.65400.904600 | Toilet_Epoxy Tile Grouting | 7d | 2027-02-06 | 2027-02-12 | 5280SS |  | 7 Days Work | 9265254 |
| 5306 | 36900.37000.37100.37200.37900.46100.65400.904700 | Toilet_False ceiling board fixing, CP Sanitary Fixture, Electric Fixture | 21d | 2027-02-13 | 2027-03-05 | 5305 |  | 7 Days Work | 9265264 |
| 5307 | 36900.37000.37100.37200.52400 | **Common area Finishing** | 329d | 2026-09-05 | 2027-07-30 |  | start no earlier than 2026-09-05 | 7 Days Work | 9197014 |
| 5308 | 36900.37000.37100.37200.52400.76100 | **1st Habitable/2nd Floor** | 158d | 2026-09-05 | 2027-02-09 |  | start no earlier than 2026-09-05 | 7 Days Work | 9197404 |
| 5309 | 36900.37000.37100.37200.52400.76100.449400 | Side blockwork for lift shafts | 9d | 2026-09-05 | 2026-09-13 | 5514 |  | 7 Days Work | 9204374 |
| 5310 | 36900.37000.37100.37200.52400.76100.449500 | Door Threshold for lifts | 6d | 2026-09-14 | 2026-09-19 | 5309 |  | 7 Days Work | 9204384 |
| 5311 | 36900.37000.37100.37200.52400.76100.449600 | Granite Cladding | 10d | 2026-09-20 | 2026-09-29 | 5310 |  | 7 Days Work | 9204394 |
| 5312 | 36900.37000.37100.37200.52400.76100.449700 | MEP Services | 60d | 2026-09-30 | 2026-11-28 | 5311 |  | 7 Days Work | 9204404 |
| 5313 | 36900.37000.37100.37200.52400.76100.449800 | Flooring+Skirting | 20d | 2026-11-29 | 2026-12-18 | 5312 |  | 7 Days Work | 9204414 |
| 5314 | 36900.37000.37100.37200.52400.76100.449900 | Wall finishes | 21d | 2026-12-19 | 2027-01-08 | 5313 |  | 7 Days Work | 9204424 |
| 5315 | 36900.37000.37100.37200.52400.76100.450000 | False Ceiling | 10d | 2027-01-09 | 2027-01-18 | 5314 |  | 7 Days Work | 9204434 |
| 5316 | 36900.37000.37100.37200.52400.76100.450100 | Staircase | 15d | 2027-01-19 | 2027-02-02 | 5315 |  | 7 Days Work | 9204444 |
| 5317 | 36900.37000.37100.37200.52400.76100.450200 | Deep Cleaning | 7d | 2027-02-03 | 2027-02-09 | 5316 |  | 7 Days Work | 9204454 |

| ID | WBS | Task | Duration | Start | Finish | Predecessors | Constraint | Calendar | Unique_Task_ID |
| --- | --- | --- | --- | --- | --- | --- | --- | --- | --- |
| 5318 | 36900.37000.37100.37200.52400.76000 | **2nd Habitable/3rd Floor** | 158d | 2026-09-14 | 2027-02-18 |  | start no earlier than 2026-09-14 | 7 Days Work | 9197394 |
| 5319 | 36900.37000.37100.37200.52400.76000.450300 | Side blockwork for lift shafts | 9d | 2026-09-14 | 2026-09-22 | 5309 |  | 7 Days Work | 9204464 |
| 5320 | 36900.37000.37100.37200.52400.76000.450400 | Door Threshold for lifts | 6d | 2026-09-23 | 2026-09-28 | 5319 |  | 7 Days Work | 9204474 |
| 5321 | 36900.37000.37100.37200.52400.76000.450500 | Granite Cladding | 10d | 2026-09-29 | 2026-10-08 | 5320 |  | 7 Days Work | 9204484 |
| 5322 | 36900.37000.37100.37200.52400.76000.450600 | MEP Services | 60d | 2026-10-09 | 2026-12-07 | 5321 |  | 7 Days Work | 9204494 |
| 5323 | 36900.37000.37100.37200.52400.76000.450700 | Flooring+Skirting | 20d | 2026-12-08 | 2026-12-27 | 5322 |  | 7 Days Work | 9204504 |
| 5324 | 36900.37000.37100.37200.52400.76000.450800 | Wall finishes | 21d | 2026-12-28 | 2027-01-17 | 5323 |  | 7 Days Work | 9204514 |
| 5325 | 36900.37000.37100.37200.52400.76000.450900 | False Ceiling | 10d | 2027-01-18 | 2027-01-27 | 5324 |  | 7 Days Work | 9204524 |
| 5326 | 36900.37000.37100.37200.52400.76000.451000 | Staircase | 15d | 2027-01-28 | 2027-02-11 | 5325 |  | 7 Days Work | 9204534 |
| 5327 | 36900.37000.37100.37200.52400.76000.451100 | Deep Cleaning | 7d | 2027-02-12 | 2027-02-18 | 5326 |  | 7 Days Work | 9204544 |
| 5328 | 36900.37000.37100.37200.52400.75900 | **3rd Habitable/4th Floor** | 158d | 2026-09-23 | 2027-02-27 |  | start no earlier than 2026-09-23 | 7 Days Work | 9197384 |
| 5329 | 36900.37000.37100.37200.52400.75900.451200 | Side blockwork for lift shafts | 9d | 2026-09-23 | 2026-10-01 | 5319 |  | 7 Days Work | 9204554 |
| 5330 | 36900.37000.37100.37200.52400.75900.451300 | Door Threshold for lifts | 6d | 2026-10-02 | 2026-10-07 | 5329 |  | 7 Days Work | 9204564 |
| 5331 | 36900.37000.37100.37200.52400.75900.451400 | Granite Cladding | 10d | 2026-10-08 | 2026-10-17 | 5330 |  | 7 Days Work | 9204574 |
| 5332 | 36900.37000.37100.37200.52400.75900.451500 | MEP Services | 60d | 2026-10-18 | 2026-12-16 | 5331 |  | 7 Days Work | 9204584 |
| 5333 | 36900.37000.37100.37200.52400.75900.451600 | Flooring+Skirting | 20d | 2026-12-17 | 2027-01-05 | 5332 |  | 7 Days Work | 9204594 |
| 5334 | 36900.37000.37100.37200.52400.75900.451700 | Wall finishes | 21d | 2027-01-06 | 2027-01-26 | 5333 |  | 7 Days Work | 9204604 |
| 5335 | 36900.37000.37100.37200.52400.75900.451800 | False Ceiling | 10d | 2027-01-27 | 2027-02-05 | 5334 |  | 7 Days Work | 9204614 |
| 5336 | 36900.37000.37100.37200.52400.75900.451900 | Staircase | 15d | 2027-02-06 | 2027-02-20 | 5335 |  | 7 Days Work | 9204624 |
| 5337 | 36900.37000.37100.37200.52400.75900.452000 | Deep Cleaning | 7d | 2027-02-21 | 2027-02-27 | 5336 |  | 7 Days Work | 9204634 |
| 5338 | 36900.37000.37100.37200.52400.75800 | **4th Habitable/5th Floor** | 158d | 2026-10-02 | 2027-03-08 |  | start no earlier than 2026-10-02 | 7 Days Work | 9197344 |
| 5339 | 36900.37000.37100.37200.52400.75800.452100 | Side blockwork for lift shafts | 9d | 2026-10-02 | 2026-10-10 | 5329 |  | 7 Days Work | 9204644 |
| 5340 | 36900.37000.37100.37200.52400.75800.452200 | Door Threshold for lifts | 6d | 2026-10-11 | 2026-10-16 | 5339 |  | 7 Days Work | 9204654 |
| 5341 | 36900.37000.37100.37200.52400.75800.452300 | Granite Cladding | 10d | 2026-10-17 | 2026-10-26 | 5340 |  | 7 Days Work | 9204664 |
| 5342 | 36900.37000.37100.37200.52400.75800.452400 | MEP Services | 60d | 2026-10-27 | 2026-12-25 | 5341 |  | 7 Days Work | 9204674 |
| 5343 | 36900.37000.37100.37200.52400.75800.452500 | Flooring+Skirting | 20d | 2026-12-26 | 2027-01-14 | 5342 |  | 7 Days Work | 9204684 |
| 5344 | 36900.37000.37100.37200.52400.75800.452600 | Wall finishes | 21d | 2027-01-15 | 2027-02-04 | 5343 |  | 7 Days Work | 9204694 |
| 5345 | 36900.37000.37100.37200.52400.75800.452700 | False Ceiling | 10d | 2027-02-05 | 2027-02-14 | 5344 |  | 7 Days Work | 9204704 |
| 5346 | 36900.37000.37100.37200.52400.75800.452800 | Staircase | 15d | 2027-02-15 | 2027-03-01 | 5345 |  | 7 Days Work | 9204714 |
| 5347 | 36900.37000.37100.37200.52400.75800.452900 | Deep Cleaning | 7d | 2027-03-02 | 2027-03-08 | 5346 |  | 7 Days Work | 9204724 |

| ID | WBS | Task | Duration | Start | Finish | Predecessors | Constraint | Calendar | Unique_Task_ID |
| --- | --- | --- | --- | --- | --- | --- | --- | --- | --- |
| 5348 | 36900.37000.37100.37200.52400.75700 | **5th Habitable/6th Floor** | 158d | 2026-10-11 | 2027-03-17 |  | start no earlier than 2026-10-11 | 7 Days Work | 9197334 |
| 5349 | 36900.37000.37100.37200.52400.75700.453000 | Side blockwork for lift shafts | 9d | 2026-10-11 | 2026-10-19 | 5339 |  | 7 Days Work | 9204734 |
| 5350 | 36900.37000.37100.37200.52400.75700.453100 | Door Threshold for lifts | 6d | 2026-10-20 | 2026-10-25 | 5349 |  | 7 Days Work | 9204744 |
| 5351 | 36900.37000.37100.37200.52400.75700.453200 | Granite Cladding | 10d | 2026-10-26 | 2026-11-04 | 5350 |  | 7 Days Work | 9204754 |
| 5352 | 36900.37000.37100.37200.52400.75700.453300 | MEP Services | 60d | 2026-11-05 | 2027-01-03 | 5351 |  | 7 Days Work | 9204764 |
| 5353 | 36900.37000.37100.37200.52400.75700.453400 | Flooring+Skirting | 20d | 2027-01-04 | 2027-01-23 | 5352 |  | 7 Days Work | 9204774 |
| 5354 | 36900.37000.37100.37200.52400.75700.453500 | Wall finishes | 21d | 2027-01-24 | 2027-02-13 | 5353 |  | 7 Days Work | 9204784 |
| 5355 | 36900.37000.37100.37200.52400.75700.453600 | False Ceiling | 10d | 2027-02-14 | 2027-02-23 | 5354 |  | 7 Days Work | 9204794 |
| 5356 | 36900.37000.37100.37200.52400.75700.453700 | Staircase | 15d | 2027-02-24 | 2027-03-10 | 5355 |  | 7 Days Work | 9204804 |
| 5357 | 36900.37000.37100.37200.52400.75700.453800 | Deep Cleaning | 7d | 2027-03-11 | 2027-03-17 | 5356 |  | 7 Days Work | 9204814 |
| 5358 | 36900.37000.37100.37200.52400.75600 | **6th Habitable/7th Floor** | 158d | 2026-10-20 | 2027-03-26 |  | start no earlier than 2026-10-20 | 7 Days Work | 9197234 |
| 5359 | 36900.37000.37100.37200.52400.75600.453900 | Side blockwork for lift shafts | 9d | 2026-10-20 | 2026-10-28 | 5349 |  | 7 Days Work | 9204824 |
| 5360 | 36900.37000.37100.37200.52400.75600.454000 | Door Threshold for lifts | 6d | 2026-10-29 | 2026-11-03 | 5359 |  | 7 Days Work | 9204834 |
| 5361 | 36900.37000.37100.37200.52400.75600.454100 | Granite Cladding | 10d | 2026-11-04 | 2026-11-13 | 5360 |  | 7 Days Work | 9204844 |
| 5362 | 36900.37000.37100.37200.52400.75600.454200 | MEP Services | 60d | 2026-11-14 | 2027-01-12 | 5361 |  | 7 Days Work | 9204854 |
| 5363 | 36900.37000.37100.37200.52400.75600.454300 | Flooring+Skirting | 20d | 2027-01-13 | 2027-02-01 | 5362 |  | 7 Days Work | 9204864 |
| 5364 | 36900.37000.37100.37200.52400.75600.454400 | Wall finishes | 21d | 2027-02-02 | 2027-02-22 | 5363 |  | 7 Days Work | 9204874 |
| 5365 | 36900.37000.37100.37200.52400.75600.454500 | False Ceiling | 10d | 2027-02-23 | 2027-03-04 | 5364 |  | 7 Days Work | 9204884 |
| 5366 | 36900.37000.37100.37200.52400.75600.454600 | Staircase | 15d | 2027-03-05 | 2027-03-19 | 5365 |  | 7 Days Work | 9204894 |
| 5367 | 36900.37000.37100.37200.52400.75600.454700 | Deep Cleaning | 7d | 2027-03-20 | 2027-03-26 | 5366 |  | 7 Days Work | 9204904 |
| 5368 | 36900.37000.37100.37200.52400.75500 | **7th Habitable/8th Floor** | 158d | 2026-10-29 | 2027-04-04 |  | start no earlier than 2026-10-29 | 7 Days Work | 9197254 |
| 5369 | 36900.37000.37100.37200.52400.75500.454800 | Side blockwork for lift shafts | 9d | 2026-10-29 | 2026-11-06 | 5359 |  | 7 Days Work | 9204914 |
| 5370 | 36900.37000.37100.37200.52400.75500.454900 | Door Threshold for lifts | 6d | 2026-11-07 | 2026-11-12 | 5369 |  | 7 Days Work | 9204924 |
| 5371 | 36900.37000.37100.37200.52400.75500.455000 | Granite Cladding | 10d | 2026-11-13 | 2026-11-22 | 5370 |  | 7 Days Work | 9204934 |
| 5372 | 36900.37000.37100.37200.52400.75500.455100 | MEP Services | 60d | 2026-11-23 | 2027-01-21 | 5371 |  | 7 Days Work | 9204944 |
| 5373 | 36900.37000.37100.37200.52400.75500.455200 | Flooring+Skirting | 20d | 2027-01-22 | 2027-02-10 | 5372 |  | 7 Days Work | 9204954 |
| 5374 | 36900.37000.37100.37200.52400.75500.455300 | Wall finishes | 21d | 2027-02-11 | 2027-03-03 | 5373 |  | 7 Days Work | 9204964 |
| 5375 | 36900.37000.37100.37200.52400.75500.455400 | False Ceiling | 10d | 2027-03-04 | 2027-03-13 | 5374 |  | 7 Days Work | 9204974 |
| 5376 | 36900.37000.37100.37200.52400.75500.455500 | Staircase | 15d | 2027-03-14 | 2027-03-28 | 5375 |  | 7 Days Work | 9204984 |
| 5377 | 36900.37000.37100.37200.52400.75500.455600 | Deep Cleaning | 7d | 2027-03-29 | 2027-04-04 | 5376 |  | 7 Days Work | 9204994 |

| ID | WBS | Task | Duration | Start | Finish | Predecessors | Constraint | Calendar | Unique_Task_ID |
| --- | --- | --- | --- | --- | --- | --- | --- | --- | --- |
| 5378 | 36900.37000.37100.37200.52400.75400 | **8th Habitable/9th Floor** | 158d | 2026-11-07 | 2027-04-13 |  | start no earlier than 2026-11-07 | 7 Days Work | 9197264 |
| 5379 | 36900.37000.37100.37200.52400.75400.455700 | Side blockwork for lift shafts | 9d | 2026-11-07 | 2026-11-15 | 5369 |  | 7 Days Work | 9205004 |
| 5380 | 36900.37000.37100.37200.52400.75400.455800 | Door Threshold for lifts | 6d | 2026-11-16 | 2026-11-21 | 5379 |  | 7 Days Work | 9205014 |
| 5381 | 36900.37000.37100.37200.52400.75400.455900 | Granite Cladding | 10d | 2026-11-22 | 2026-12-01 | 5380 |  | 7 Days Work | 9205024 |
| 5382 | 36900.37000.37100.37200.52400.75400.456000 | MEP Services | 60d | 2026-12-02 | 2027-01-30 | 5381 |  | 7 Days Work | 9205034 |
| 5383 | 36900.37000.37100.37200.52400.75400.456100 | Flooring+Skirting | 20d | 2027-01-31 | 2027-02-19 | 5382 |  | 7 Days Work | 9205044 |
| 5384 | 36900.37000.37100.37200.52400.75400.456200 | Wall finishes | 21d | 2027-02-20 | 2027-03-12 | 5383 |  | 7 Days Work | 9205054 |
| 5385 | 36900.37000.37100.37200.52400.75400.456300 | False Ceiling | 10d | 2027-03-13 | 2027-03-22 | 5384 |  | 7 Days Work | 9205064 |
| 5386 | 36900.37000.37100.37200.52400.75400.456400 | Staircase | 15d | 2027-03-23 | 2027-04-06 | 5385 |  | 7 Days Work | 9205074 |
| 5387 | 36900.37000.37100.37200.52400.75400.456500 | Deep Cleaning | 7d | 2027-04-07 | 2027-04-13 | 5386 |  | 7 Days Work | 9205084 |
| 5388 | 36900.37000.37100.37200.52400.75300 | **9th Habitable/10th Floor** | 158d | 2026-11-16 | 2027-04-22 |  | start no earlier than 2026-11-16 | 7 Days Work | 9197274 |
| 5389 | 36900.37000.37100.37200.52400.75300.456600 | Side blockwork for lift shafts | 9d | 2026-11-16 | 2026-11-24 | 5379 |  | 7 Days Work | 9205094 |
| 5390 | 36900.37000.37100.37200.52400.75300.456700 | Door Threshold for lifts | 6d | 2026-11-25 | 2026-11-30 | 5389 |  | 7 Days Work | 9205104 |
| 5391 | 36900.37000.37100.37200.52400.75300.456800 | Granite Cladding | 10d | 2026-12-01 | 2026-12-10 | 5390 |  | 7 Days Work | 9205114 |
| 5392 | 36900.37000.37100.37200.52400.75300.456900 | MEP Services | 60d | 2026-12-11 | 2027-02-08 | 5391 |  | 7 Days Work | 9205124 |
| 5393 | 36900.37000.37100.37200.52400.75300.457000 | Flooring+Skirting | 20d | 2027-02-09 | 2027-02-28 | 5392 |  | 7 Days Work | 9205134 |
| 5394 | 36900.37000.37100.37200.52400.75300.457100 | Wall finishes | 21d | 2027-03-01 | 2027-03-21 | 5393 |  | 7 Days Work | 9205144 |
| 5395 | 36900.37000.37100.37200.52400.75300.457200 | False Ceiling | 10d | 2027-03-22 | 2027-03-31 | 5394 |  | 7 Days Work | 9205154 |
| 5396 | 36900.37000.37100.37200.52400.75300.457300 | Staircase | 15d | 2027-04-01 | 2027-04-15 | 5395 |  | 7 Days Work | 9205164 |
| 5397 | 36900.37000.37100.37200.52400.75300.457400 | Deep Cleaning | 7d | 2027-04-16 | 2027-04-22 | 5396 |  | 7 Days Work | 9205174 |
| 5398 | 36900.37000.37100.37200.52400.75200 | **10th Habitable/11th Floor** | 158d | 2026-11-25 | 2027-05-01 |  | start no earlier than 2026-11-25 | 7 Days Work | 9197244 |
| 5399 | 36900.37000.37100.37200.52400.75200.457500 | Side blockwork for lift shafts | 9d | 2026-11-25 | 2026-12-03 | 5389 |  | 7 Days Work | 9205184 |
| 5400 | 36900.37000.37100.37200.52400.75200.457600 | Door Threshold for lifts | 6d | 2026-12-04 | 2026-12-09 | 5399 |  | 7 Days Work | 9205194 |
| 5401 | 36900.37000.37100.37200.52400.75200.457700 | Granite Cladding | 10d | 2026-12-10 | 2026-12-19 | 5400 |  | 7 Days Work | 9205204 |
| 5402 | 36900.37000.37100.37200.52400.75200.457800 | MEP Services | 60d | 2026-12-20 | 2027-02-17 | 5401 |  | 7 Days Work | 9205214 |
| 5403 | 36900.37000.37100.37200.52400.75200.457900 | Flooring+Skirting | 20d | 2027-02-18 | 2027-03-09 | 5402 |  | 7 Days Work | 9205224 |
| 5404 | 36900.37000.37100.37200.52400.75200.458000 | Wall finishes | 21d | 2027-03-10 | 2027-03-30 | 5403 |  | 7 Days Work | 9205234 |
| 5405 | 36900.37000.37100.37200.52400.75200.458100 | False Ceiling | 10d | 2027-03-31 | 2027-04-09 | 5404 |  | 7 Days Work | 9205244 |
| 5406 | 36900.37000.37100.37200.52400.75200.458200 | Staircase | 15d | 2027-04-10 | 2027-04-24 | 5405 |  | 7 Days Work | 9205254 |
| 5407 | 36900.37000.37100.37200.52400.75200.458300 | Deep Cleaning | 7d | 2027-04-25 | 2027-05-01 | 5406 |  | 7 Days Work | 9205264 |

| ID | WBS | Task | Duration | Start | Finish | Predecessors | Constraint | Calendar | Unique_Task_ID |
| --- | --- | --- | --- | --- | --- | --- | --- | --- | --- |
| 5408 | 36900.37000.37100.37200.52400.75100 | **11th Habitable/12th Floor** | 158d | 2026-12-04 | 2027-05-10 |  | start no earlier than 2026-12-04 | 7 Days Work | 9197224 |
| 5409 | 36900.37000.37100.37200.52400.75100.458400 | Side blockwork for lift shafts | 9d | 2026-12-04 | 2026-12-12 | 5399 |  | 7 Days Work | 9205274 |
| 5410 | 36900.37000.37100.37200.52400.75100.458500 | Door Threshold for lifts | 6d | 2026-12-13 | 2026-12-18 | 5409 |  | 7 Days Work | 9205284 |
| 5411 | 36900.37000.37100.37200.52400.75100.458600 | Granite Cladding | 10d | 2026-12-19 | 2026-12-28 | 5410 |  | 7 Days Work | 9205294 |
| 5412 | 36900.37000.37100.37200.52400.75100.458700 | MEP Services | 60d | 2026-12-29 | 2027-02-26 | 5411 |  | 7 Days Work | 9205304 |
| 5413 | 36900.37000.37100.37200.52400.75100.458800 | Flooring+Skirting | 20d | 2027-02-27 | 2027-03-18 | 5412 |  | 7 Days Work | 9205314 |
| 5414 | 36900.37000.37100.37200.52400.75100.458900 | Wall finishes | 21d | 2027-03-19 | 2027-04-08 | 5413 |  | 7 Days Work | 9205324 |
| 5415 | 36900.37000.37100.37200.52400.75100.459000 | False Ceiling | 10d | 2027-04-09 | 2027-04-18 | 5414 |  | 7 Days Work | 9205334 |
| 5416 | 36900.37000.37100.37200.52400.75100.459100 | Staircase | 15d | 2027-04-19 | 2027-05-03 | 5415 |  | 7 Days Work | 9205344 |
| 5417 | 36900.37000.37100.37200.52400.75100.459200 | Deep Cleaning | 7d | 2027-05-04 | 2027-05-10 | 5416 |  | 7 Days Work | 9205354 |
| 5418 | 36900.37000.37100.37200.52400.75000 | **12th Habitable/13th Floor** | 158d | 2026-12-13 | 2027-05-19 |  | start no earlier than 2026-12-13 | 7 Days Work | 9197284 |
| 5419 | 36900.37000.37100.37200.52400.75000.459300 | Side blockwork for lift shafts | 9d | 2026-12-13 | 2026-12-21 | 5409 |  | 7 Days Work | 9205364 |
| 5420 | 36900.37000.37100.37200.52400.75000.459400 | Door Threshold for lifts | 6d | 2026-12-22 | 2026-12-27 | 5419 |  | 7 Days Work | 9205374 |
| 5421 | 36900.37000.37100.37200.52400.75000.459500 | Granite Cladding | 10d | 2026-12-28 | 2027-01-06 | 5420 |  | 7 Days Work | 9205384 |
| 5422 | 36900.37000.37100.37200.52400.75000.459600 | MEP Services | 60d | 2027-01-07 | 2027-03-07 | 5421 |  | 7 Days Work | 9205394 |
| 5423 | 36900.37000.37100.37200.52400.75000.459700 | Flooring+Skirting | 20d | 2027-03-08 | 2027-03-27 | 5422 |  | 7 Days Work | 9205404 |
| 5424 | 36900.37000.37100.37200.52400.75000.459800 | Wall finishes | 21d | 2027-03-28 | 2027-04-17 | 5423 |  | 7 Days Work | 9205414 |
| 5425 | 36900.37000.37100.37200.52400.75000.459900 | False Ceiling | 10d | 2027-04-18 | 2027-04-27 | 5424 |  | 7 Days Work | 9205424 |
| 5426 | 36900.37000.37100.37200.52400.75000.460000 | Staircase | 15d | 2027-04-28 | 2027-05-12 | 5425 |  | 7 Days Work | 9205434 |
| 5427 | 36900.37000.37100.37200.52400.75000.460100 | Deep Cleaning | 7d | 2027-05-13 | 2027-05-19 | 5426 |  | 7 Days Work | 9205444 |
| 5428 | 36900.37000.37100.37200.52400.74900 | **13th Habitable/14th Floor** | 158d | 2026-12-22 | 2027-05-28 |  | start no earlier than 2026-12-22 | 7 Days Work | 9197294 |
| 5429 | 36900.37000.37100.37200.52400.74900.460200 | Side blockwork for lift shafts | 9d | 2026-12-22 | 2026-12-30 | 5419 |  | 7 Days Work | 9205454 |
| 5430 | 36900.37000.37100.37200.52400.74900.460300 | Door Threshold for lifts | 6d | 2026-12-31 | 2027-01-05 | 5429 |  | 7 Days Work | 9205464 |
| 5431 | 36900.37000.37100.37200.52400.74900.460400 | Granite Cladding | 10d | 2027-01-06 | 2027-01-15 | 5430 |  | 7 Days Work | 9205474 |
| 5432 | 36900.37000.37100.37200.52400.74900.460500 | MEP Services | 60d | 2027-01-16 | 2027-03-16 | 5431 |  | 7 Days Work | 9205484 |
| 5433 | 36900.37000.37100.37200.52400.74900.460600 | Flooring+Skirting | 20d | 2027-03-17 | 2027-04-05 | 5432 |  | 7 Days Work | 9205494 |
| 5434 | 36900.37000.37100.37200.52400.74900.460700 | Wall finishes | 21d | 2027-04-06 | 2027-04-26 | 5433 |  | 7 Days Work | 9205504 |
| 5435 | 36900.37000.37100.37200.52400.74900.460800 | False Ceiling | 10d | 2027-04-27 | 2027-05-06 | 5434 |  | 7 Days Work | 9205514 |
| 5436 | 36900.37000.37100.37200.52400.74900.460900 | Staircase | 15d | 2027-05-07 | 2027-05-21 | 5435 |  | 7 Days Work | 9205524 |
| 5437 | 36900.37000.37100.37200.52400.74900.461000 | Deep Cleaning | 7d | 2027-05-22 | 2027-05-28 | 5436 |  | 7 Days Work | 9205534 |

| ID | WBS | Task | Duration | Start | Finish | Predecessors | Constraint | Calendar | Unique_Task_ID |
| --- | --- | --- | --- | --- | --- | --- | --- | --- | --- |
| 5438 | 36900.37000.37100.37200.52400.74800 | **14th Habitable/15th Floor** | 158d | 2026-12-31 | 2027-06-06 |  | start no earlier than 2026-12-31 | 7 Days Work | 9197304 |
| 5439 | 36900.37000.37100.37200.52400.74800.461100 | Side blockwork for lift shafts | 9d | 2026-12-31 | 2027-01-08 | 5429 |  | 7 Days Work | 9205544 |
| 5440 | 36900.37000.37100.37200.52400.74800.461200 | Door Threshold for lifts | 6d | 2027-01-09 | 2027-01-14 | 5439 |  | 7 Days Work | 9205554 |
| 5441 | 36900.37000.37100.37200.52400.74800.461300 | Granite Cladding | 10d | 2027-01-15 | 2027-01-24 | 5440 |  | 7 Days Work | 9205564 |
| 5442 | 36900.37000.37100.37200.52400.74800.461400 | MEP Services | 60d | 2027-01-25 | 2027-03-25 | 5441 |  | 7 Days Work | 9205574 |
| 5443 | 36900.37000.37100.37200.52400.74800.461500 | Flooring+Skirting | 20d | 2027-03-26 | 2027-04-14 | 5442 |  | 7 Days Work | 9205584 |
| 5444 | 36900.37000.37100.37200.52400.74800.461600 | Wall finishes | 21d | 2027-04-15 | 2027-05-05 | 5443 |  | 7 Days Work | 9205594 |
| 5445 | 36900.37000.37100.37200.52400.74800.461700 | False Ceiling | 10d | 2027-05-06 | 2027-05-15 | 5444 |  | 7 Days Work | 9205604 |
| 5446 | 36900.37000.37100.37200.52400.74800.461800 | Staircase | 15d | 2027-05-16 | 2027-05-30 | 5445 |  | 7 Days Work | 9205614 |
| 5447 | 36900.37000.37100.37200.52400.74800.461900 | Deep Cleaning | 7d | 2027-05-31 | 2027-06-06 | 5446 |  | 7 Days Work | 9205624 |
| 5448 | 36900.37000.37100.37200.52400.74700 | **15th Habitable/16th Floor** | 158d | 2027-01-09 | 2027-06-15 |  | start no earlier than 2027-01-09 | 7 Days Work | 9197314 |
| 5449 | 36900.37000.37100.37200.52400.74700.462000 | Side blockwork for lift shafts | 9d | 2027-01-09 | 2027-01-17 | 5439 |  | 7 Days Work | 9205634 |
| 5450 | 36900.37000.37100.37200.52400.74700.462100 | Door Threshold for lifts | 6d | 2027-01-18 | 2027-01-23 | 5449 |  | 7 Days Work | 9205644 |
| 5451 | 36900.37000.37100.37200.52400.74700.462200 | Granite Cladding | 10d | 2027-01-24 | 2027-02-02 | 5450 |  | 7 Days Work | 9205654 |
| 5452 | 36900.37000.37100.37200.52400.74700.462300 | MEP Services | 60d | 2027-02-03 | 2027-04-03 | 5451 |  | 7 Days Work | 9205664 |
| 5453 | 36900.37000.37100.37200.52400.74700.462400 | Flooring+Skirting | 20d | 2027-04-04 | 2027-04-23 | 5452 |  | 7 Days Work | 9205674 |
| 5454 | 36900.37000.37100.37200.52400.74700.462500 | Wall finishes | 21d | 2027-04-24 | 2027-05-14 | 5453 |  | 7 Days Work | 9205684 |
| 5455 | 36900.37000.37100.37200.52400.74700.462600 | False Ceiling | 10d | 2027-05-15 | 2027-05-24 | 5454 |  | 7 Days Work | 9205694 |
| 5456 | 36900.37000.37100.37200.52400.74700.462700 | Staircase | 15d | 2027-05-25 | 2027-06-08 | 5455 |  | 7 Days Work | 9205704 |
| 5457 | 36900.37000.37100.37200.52400.74700.462800 | Deep Cleaning | 7d | 2027-06-09 | 2027-06-15 | 5456 |  | 7 Days Work | 9205714 |
| 5458 | 36900.37000.37100.37200.52400.74600 | **16th Habitable/17th Floor** | 158d | 2027-01-18 | 2027-06-24 |  | start no earlier than 2027-01-18 | 7 Days Work | 9197324 |
| 5459 | 36900.37000.37100.37200.52400.74600.462900 | Side blockwork for lift shafts | 9d | 2027-01-18 | 2027-01-26 | 5449 |  | 7 Days Work | 9205724 |
| 5460 | 36900.37000.37100.37200.52400.74600.463000 | Door Threshold for lifts | 6d | 2027-01-27 | 2027-02-01 | 5459 |  | 7 Days Work | 9205734 |
| 5461 | 36900.37000.37100.37200.52400.74600.463100 | Granite Cladding | 10d | 2027-02-02 | 2027-02-11 | 5460 |  | 7 Days Work | 9205744 |
| 5462 | 36900.37000.37100.37200.52400.74600.463200 | MEP Services | 60d | 2027-02-12 | 2027-04-12 | 5461 |  | 7 Days Work | 9205754 |
| 5463 | 36900.37000.37100.37200.52400.74600.463300 | Flooring+Skirting | 20d | 2027-04-13 | 2027-05-02 | 5462 |  | 7 Days Work | 9205764 |
| 5464 | 36900.37000.37100.37200.52400.74600.463400 | Wall finishes | 21d | 2027-05-03 | 2027-05-23 | 5463 |  | 7 Days Work | 9205774 |
| 5465 | 36900.37000.37100.37200.52400.74600.463500 | False Ceiling | 10d | 2027-05-24 | 2027-06-02 | 5464 |  | 7 Days Work | 9205784 |
| 5466 | 36900.37000.37100.37200.52400.74600.463600 | Staircase | 15d | 2027-06-03 | 2027-06-17 | 5465 |  | 7 Days Work | 9205794 |
| 5467 | 36900.37000.37100.37200.52400.74600.463700 | Deep Cleaning | 7d | 2027-06-18 | 2027-06-24 | 5466 |  | 7 Days Work | 9205804 |

| ID | WBS | Task | Duration | Start | Finish | Predecessors | Constraint | Calendar | Unique_Task_ID |
| --- | --- | --- | --- | --- | --- | --- | --- | --- | --- |
| 5468 | 36900.37000.37100.37200.52400.74500 | **17th Habitable/18th Floor** | 158d | 2027-01-27 | 2027-07-03 |  | start no earlier than 2027-01-27 | 7 Days Work | 9197354 |
| 5469 | 36900.37000.37100.37200.52400.74500.463800 | Side blockwork for lift shafts | 9d | 2027-01-27 | 2027-02-04 | 5459 |  | 7 Days Work | 9205814 |
| 5470 | 36900.37000.37100.37200.52400.74500.463900 | Door Threshold for lifts | 6d | 2027-02-05 | 2027-02-10 | 5469 |  | 7 Days Work | 9205824 |
| 5471 | 36900.37000.37100.37200.52400.74500.464000 | Granite Cladding | 10d | 2027-02-11 | 2027-02-20 | 5470 |  | 7 Days Work | 9205834 |
| 5472 | 36900.37000.37100.37200.52400.74500.464100 | MEP Services | 60d | 2027-02-21 | 2027-04-21 | 5471 |  | 7 Days Work | 9205844 |
| 5473 | 36900.37000.37100.37200.52400.74500.464200 | Flooring+Skirting | 20d | 2027-04-22 | 2027-05-11 | 5472 |  | 7 Days Work | 9205854 |
| 5474 | 36900.37000.37100.37200.52400.74500.464300 | Wall finishes | 21d | 2027-05-12 | 2027-06-01 | 5473 |  | 7 Days Work | 9205864 |
| 5475 | 36900.37000.37100.37200.52400.74500.464400 | False Ceiling | 10d | 2027-06-02 | 2027-06-11 | 5474 |  | 7 Days Work | 9205874 |
| 5476 | 36900.37000.37100.37200.52400.74500.464500 | Staircase | 15d | 2027-06-12 | 2027-06-26 | 5475 |  | 7 Days Work | 9205884 |
| 5477 | 36900.37000.37100.37200.52400.74500.464600 | Deep Cleaning | 7d | 2027-06-27 | 2027-07-03 | 5476 |  | 7 Days Work | 9205894 |
| 5478 | 36900.37000.37100.37200.52400.74400 | **18th Habitable/19th Floor** | 158d | 2027-02-05 | 2027-07-12 |  | start no earlier than 2027-02-05 | 7 Days Work | 9197364 |
| 5479 | 36900.37000.37100.37200.52400.74400.464700 | Side blockwork for lift shafts | 9d | 2027-02-05 | 2027-02-13 | 5469 |  | 7 Days Work | 9205904 |
| 5480 | 36900.37000.37100.37200.52400.74400.464800 | Door Threshold for lifts | 6d | 2027-02-14 | 2027-02-19 | 5479 |  | 7 Days Work | 9205914 |
| 5481 | 36900.37000.37100.37200.52400.74400.464900 | Granite Cladding | 10d | 2027-02-20 | 2027-03-01 | 5480 |  | 7 Days Work | 9205924 |
| 5482 | 36900.37000.37100.37200.52400.74400.465000 | MEP Services | 60d | 2027-03-02 | 2027-04-30 | 5481 |  | 7 Days Work | 9205934 |
| 5483 | 36900.37000.37100.37200.52400.74400.465100 | Flooring+Skirting | 20d | 2027-05-01 | 2027-05-20 | 5482 |  | 7 Days Work | 9205944 |
| 5484 | 36900.37000.37100.37200.52400.74400.465200 | Wall finishes | 21d | 2027-05-21 | 2027-06-10 | 5483 |  | 7 Days Work | 9205954 |
| 5485 | 36900.37000.37100.37200.52400.74400.465300 | False Ceiling | 10d | 2027-06-11 | 2027-06-20 | 5484 |  | 7 Days Work | 9205964 |
| 5486 | 36900.37000.37100.37200.52400.74400.465400 | Staircase | 15d | 2027-06-21 | 2027-07-05 | 5485 |  | 7 Days Work | 9205974 |
| 5487 | 36900.37000.37100.37200.52400.74400.465500 | Deep Cleaning | 7d | 2027-07-06 | 2027-07-12 | 5486 |  | 7 Days Work | 9205984 |
| 5488 | 36900.37000.37100.37200.52400.74300 | **19th Habitable/20th Floor** | 158d | 2027-02-14 | 2027-07-21 |  | start no earlier than 2027-02-14 | 7 Days Work | 9197374 |
| 5489 | 36900.37000.37100.37200.52400.74300.465600 | Side blockwork for lift shafts | 9d | 2027-02-14 | 2027-02-22 | 5479 |  | 7 Days Work | 9205994 |
| 5490 | 36900.37000.37100.37200.52400.74300.465700 | Door Threshold for lifts | 6d | 2027-02-23 | 2027-02-28 | 5489 |  | 7 Days Work | 9206004 |
| 5491 | 36900.37000.37100.37200.52400.74300.465800 | Granite Cladding | 10d | 2027-03-01 | 2027-03-10 | 5490 |  | 7 Days Work | 9206014 |
| 5492 | 36900.37000.37100.37200.52400.74300.465900 | MEP Services | 60d | 2027-03-11 | 2027-05-09 | 5491 |  | 7 Days Work | 9206024 |
| 5493 | 36900.37000.37100.37200.52400.74300.466000 | Flooring+Skirting | 20d | 2027-05-10 | 2027-05-29 | 5492 |  | 7 Days Work | 9206034 |
| 5494 | 36900.37000.37100.37200.52400.74300.466100 | Wall finishes | 21d | 2027-05-30 | 2027-06-19 | 5493 |  | 7 Days Work | 9206044 |
| 5495 | 36900.37000.37100.37200.52400.74300.466200 | False Ceiling | 10d | 2027-06-20 | 2027-06-29 | 5494 |  | 7 Days Work | 9206054 |
| 5496 | 36900.37000.37100.37200.52400.74300.466300 | Staircase | 15d | 2027-06-30 | 2027-07-14 | 5495 |  | 7 Days Work | 9206064 |
| 5497 | 36900.37000.37100.37200.52400.74300.466400 | Deep Cleaning | 7d | 2027-07-15 | 2027-07-21 | 5496 |  | 7 Days Work | 9206074 |

| ID | WBS | Task | Duration | Start | Finish | Predecessors | Constraint | Calendar | Unique_Task_ID |
| --- | --- | --- | --- | --- | --- | --- | --- | --- | --- |
| 5498 | 36900.37000.37100.37200.52400.74200 | **20th Habitable/21st Floor** | 158d | 2027-02-23 | 2027-07-30 |  | start no earlier than 2027-02-23 | 7 Days Work | 9265274 |
| 5499 | 36900.37000.37100.37200.52400.74200.466500 | Side blockwork for lift shafts | 9d | 2027-02-23 | 2027-03-03 | 5489 |  | 7 Days Work | 9265284 |
| 5500 | 36900.37000.37100.37200.52400.74200.466600 | Door Threshold for lifts | 6d | 2027-03-04 | 2027-03-09 | 5499 |  | 7 Days Work | 9265294 |
| 5501 | 36900.37000.37100.37200.52400.74200.466700 | Granite Cladding | 10d | 2027-03-10 | 2027-03-19 | 5500 |  | 7 Days Work | 9265304 |
| 5502 | 36900.37000.37100.37200.52400.74200.466800 | MEP Services | 60d | 2027-03-20 | 2027-05-18 | 5501 |  | 7 Days Work | 9265314 |
| 5503 | 36900.37000.37100.37200.52400.74200.466900 | Flooring+Skirting | 20d | 2027-05-19 | 2027-06-07 | 5502 |  | 7 Days Work | 9265324 |
| 5504 | 36900.37000.37100.37200.52400.74200.467000 | Wall finishes | 21d | 2027-06-08 | 2027-06-28 | 5503 |  | 7 Days Work | 9265334 |
| 5505 | 36900.37000.37100.37200.52400.74200.467100 | False Ceiling | 10d | 2027-06-29 | 2027-07-08 | 5504 |  | 7 Days Work | 9265344 |
| 5506 | 36900.37000.37100.37200.52400.74200.467200 | Staircase | 15d | 2027-07-09 | 2027-07-23 | 5505 |  | 7 Days Work | 9265354 |
| 5507 | 36900.37000.37100.37200.52400.74200.467300 | Deep Cleaning | 7d | 2027-07-24 | 2027-07-30 | 5506 |  | 7 Days Work | 9044184 |
| 5508 | 36900.37000.37100.37200.67700 | **Lift** | 337d | 2025-11-17 | 2026-10-19 |  | start no earlier than 2025-11-17 | 7 Days Work | 9197214 |
| 5509 | 36900.37000.37100.37200.67700.120600 | Order Issue | 104d | 2025-11-17 | 2026-02-28 | 4095FS-125d |  | 7 Days Work | 9197414 |
| 5510 | 36900.37000.37100.37200.67700.120700 | Shop drawing approval | 30d | 2026-03-01 | 2026-03-30 | 5509 |  | 7 Days Work | 9197424 |
| 5511 | 36900.37000.37100.37200.67700.120800 | Material recipt | 90d | 2026-03-31 | 2026-06-28 | 5510 |  | 7 Days Work | 9197434 |
| 5512 | 36900.37000.37100.37200.67700.120900 | Lift Shaft Handover | 30d | 2026-07-25 | 2026-08-23 | 4105 |  | 7 Days Work | 9197444 |
| 5513 | 36900.37000.37100.37200.67700.121000 | Template fixing by lift contractor | 7d | 2026-08-24 | 2026-08-30 | 5512 |  | 7 Days Work | 9197454 |
| 5514 | 36900.37000.37100.37200.67700.121100 | Centre line marking for lift shafts | 5d | 2026-08-31 | 2026-09-04 | 5513 |  | 7 Days Work | 9197464 |
| 5515 | 36900.37000.37100.37200.67700.121200 | Rail & Bracket Fixing | 5d | 2026-09-05 | 2026-09-09 | 5514 |  | 7 Days Work | 9197474 |
| 5516 | 36900.37000.37100.37200.67700.121300 | Cage Installation | 5d | 2026-09-10 | 2026-09-14 | 5515 |  | 7 Days Work | 9197484 |
| 5517 | 36900.37000.37100.37200.67700.121400 | Slow Speed | 20d | 2026-09-15 | 2026-10-04 | 5516 |  | 7 Days Work | 9197494 |
| 5518 | 36900.37000.37100.37200.67700.121500 | High Spped | 5d | 2026-10-05 | 2026-10-09 | 5517 |  | 7 Days Work | 9197504 |
| 5519 | 36900.37000.37100.37200.67700.121600 | Commisioning | 7d | 2026-10-10 | 2026-10-16 | 5518 |  | 7 Days Work | 9197514 |
| 5520 | 36900.37000.37100.37200.67700.121700 | Handover | 3d | 2026-10-17 | 2026-10-19 | 5519 |  | 7 Days Work | 9044174 |
| 5521 | 36900.37000.37100.37200.97500 | External Paint | 90d | 2026-11-02 | 2027-01-30 | 4104FS+135d |  | 7 Days Work | 9146004 |

| ID | WBS | Task | Duration | Start | Finish | Predecessors | Complete | Constraint | Calendar | Unique_Task_ID |
| --- | --- | --- | --- | --- | --- | --- | --- | --- | --- | --- |
| 5522 | 36900.37000.37100.37300 | **Tower-5** | 887d | 2025-03-04 | 2027-08-07 |  |  | start no earlier than 2025-03-04 | 7 Days Work | 9042644 |
| 5523 | 36900.37000.37100.37300.83400 | Pilling | 118d | 2025-03-04 | 2025-07-14 | 2705SS | 11% | start no earlier than 2025-03-04 | 7 Days Work | 9044244 |
| 5524 | 36900.37000.37100.37300.97600 | Excavation & Pile Breaking | 37d | 2025-07-15 | 2025-08-20 | 5523 |  |  | 7 Days Work | 9044245 |
| 5525 | 36900.37000.37100.37300.97700 | Pilecap | 26d | 2025-08-21 | 2025-09-15 | 5524 |  |  | 7 Days Work | 9044254 |
| 5526 | 36900.37000.37100.37300.97800 | up to PL | 22d | 2025-09-16 | 2025-10-07 | 5525 |  |  | 7 Days Work | 9044264 |
| 5527 | 36900.37000.37100.37300.97900 | 1st Floor Slab RCC | 25d | 2025-10-08 | 2025-11-01 | 5526 |  |  | 7 Days Work | 9044274 |
| 5528 | 36900.37000.37100.37300.98000 | 2nd Floor Slab RCC | 25d | 2025-11-02 | 2025-11-26 | 5527 |  |  | 7 Days Work | 9044284 |
| 5529 | 36900.37000.37100.37300.98100 | 3rd Floor Slab RCC | 21d | 2025-11-27 | 2025-12-17 | 5528 |  |  | 7 Days Work | 9044294 |
| 5530 | 36900.37000.37100.37300.98200 | 4th Floor Slab RCC | 15d | 2025-12-18 | 2026-01-01 | 5529 |  |  | 7 Days Work | 9044304 |
| 5531 | 36900.37000.37100.37300.98300 | 5th Floor Slab RCC | 9d | 2026-01-02 | 2026-01-10 | 5530 |  |  | 7 Days Work | 9044314 |
| 5532 | 36900.37000.37100.37300.98400 | 6th Floor Slab RCC | 9d | 2026-01-11 | 2026-01-19 | 5531 |  |  | 7 Days Work | 9044324 |
| 5533 | 36900.37000.37100.37300.98500 | 7th Floor Slab RCC | 12d | 2026-01-20 | 2026-01-31 | 5532 |  |  | 7 Days Work | 9044334 |
| 5534 | 36900.37000.37100.37300.98600 | 8th Floor Slab RCC | 9d | 2026-02-01 | 2026-02-09 | 5533 |  |  | 7 Days Work | 9044344 |
| 5535 | 36900.37000.37100.37300.98700 | 9th Floor Slab RCC | 9d | 2026-02-10 | 2026-02-18 | 5534 |  |  | 7 Days Work | 9044354 |
| 5536 | 36900.37000.37100.37300.98800 | 10th Floor Slab RCC | 9d | 2026-02-19 | 2026-02-27 | 5535 |  |  | 7 Days Work | 9044364 |
| 5537 | 36900.37000.37100.37300.108000 | 11th Floor Slab RCC | 12d | 2026-02-28 | 2026-03-11 | 5536 |  |  | 7 Days Work | 9044374 |
| 5538 | 36900.37000.37100.37300.108100 | 12th Floor Slab RCC | 9d | 2026-03-12 | 2026-03-20 | 5537 |  |  | 7 Days Work | 9044384 |
| 5539 | 36900.37000.37100.37300.108200 | 13th Floor Slab RCC | 9d | 2026-03-21 | 2026-03-29 | 5538 |  |  | 7 Days Work | 9044394 |
| 5540 | 36900.37000.37100.37300.108300 | 14th Floor Slab RCC | 9d | 2026-03-30 | 2026-04-07 | 5539 |  |  | 7 Days Work | 9044404 |
| 5541 | 36900.37000.37100.37300.108400 | 15th Floor Slab RCC | 12d | 2026-04-08 | 2026-04-19 | 5540 |  |  | 7 Days Work | 9044414 |
| 5542 | 36900.37000.37100.37300.108500 | 16th Floor Slab RCC | 9d | 2026-04-20 | 2026-04-28 | 5541 |  |  | 7 Days Work | 9044424 |
| 5543 | 36900.37000.37100.37300.108600 | 17th Floor Slab RCC | 9d | 2026-04-29 | 2026-05-07 | 5542 |  |  | 7 Days Work | 9044434 |
| 5544 | 36900.37000.37100.37300.108700 | 18th Floor Slab RCC | 9d | 2026-05-08 | 2026-05-16 | 5543 |  |  | 7 Days Work | 9044444 |
| 5545 | 36900.37000.37100.37300.108800 | 19th Floor Slab RCC | 12d | 2026-05-17 | 2026-05-28 | 5544 |  |  | 7 Days Work | 9044454 |
| 5546 | 36900.37000.37100.37300.108900 | 20th Floor Slab RCC | 9d | 2026-05-29 | 2026-06-06 | 5545 |  |  | 7 Days Work | 9044464 |
| 5547 | 36900.37000.37100.37300.109000 | 21st Floor Slab RCC | 9d | 2026-06-07 | 2026-06-15 | 5546 |  |  | 7 Days Work | 9044474 |
| 5548 | 36900.37000.37100.37300.109100 | Terrace | 12d | 2026-06-16 | 2026-06-27 | 5547 |  |  | 7 Days Work | 9044484 |
| 5549 | 36900.37000.37100.37300.109200 | Above Terrace | 35d | 2026-06-28 | 2026-08-01 | 5548 |  |  | 7 Days Work | 9279524 |

| ID | WBS | Task | Duration | Start | Finish | Predecessors | Constraint | Calendar | Unique_Task_ID |
| --- | --- | --- | --- | --- | --- | --- | --- | --- | --- |
| 5550 | 36900.37000.37100.37300.38000 | **Flat Finishing** | 437d | 2026-01-02 | 2027-03-14 |  | start no earlier than 2026-01-02 | 7 Days Work | 9265374 |
| 5551 | 36900.37000.37100.37300.38000.46200 | **1st Habitable/2nd Floor** | 245d | 2026-01-02 | 2026-09-03 |  | start no earlier than 2026-01-02 | 7 Days Work | 9265384 |
| 5552 | 36900.37000.37100.37300.38000.46200.467400 | Post Pour | 7d | 2026-01-02 | 2026-01-08 | 5529FS+15d |  | 7 Days Work | 9266124 |
| 5553 | 36900.37000.37100.37300.38000.46200.467500 | MEP Clearance -1 | 5d | 2026-01-09 | 2026-01-13 | 5552 |  | 7 Days Work | 9266134 |
| 5554 | 36900.37000.37100.37300.38000.46200.467600 | Benchmark | 1d | 2026-01-14 | 2026-01-14 | 5553 |  | 7 Days Work | 9266144 |
| 5555 | 36900.37000.37100.37300.38000.46200.467700 | Temporary Railing | 3d | 2026-01-15 | 2026-01-17 | 5554 |  | 7 Days Work | 9266154 |
| 5556 | 36900.37000.37100.37300.38000.46200.467800 | Blockwork | 10d | 2026-01-18 | 2026-01-27 | 5555 |  | 7 Days Work | 9266164 |
| 5557 | 36900.37000.37100.37300.38000.46200.467900 | MEP Clearance -2 | 10d | 2026-01-28 | 2026-02-06 | 5556 |  | 7 Days Work | 9266174 |
| 5558 | 36900.37000.37100.37300.38000.46200.468000 | Gypsum Plaster | 14d | 2026-02-07 | 2026-02-20 | 5557 |  | 7 Days Work | 9266184 |
| 5559 | 36900.37000.37100.37300.38000.46200.468100 | Kitchen Platform | 3d | 2026-02-21 | 2026-02-23 | 5558 |  | 7 Days Work | 9266194 |
| 5560 | 36900.37000.37100.37300.38000.46200.468200 | Kitchen dado | 7d | 2026-02-24 | 2026-03-02 | 5559 |  | 7 Days Work | 9266204 |
| 5561 | 36900.37000.37100.37300.38000.46200.468300 | Fire Fighting | 5d | 2026-03-03 | 2026-03-07 | 5560 |  | 7 Days Work | 9266214 |
| 5562 | 36900.37000.37100.37300.38000.46200.468400 | Anticapilary | 5d | 2026-03-08 | 2026-03-12 | 5561 |  | 7 Days Work | 9266224 |
| 5563 | 36900.37000.37100.37300.38000.46200.468500 | Stone Laying | 10d | 2026-04-15 | 2026-04-24 | 5603 |  | 7 Days Work | 9266234 |
| 5564 | 36900.37000.37100.37300.38000.46200.468600 | Tiles Laying | 7d | 2026-04-15 | 2026-04-21 | 5603 |  | 7 Days Work | 9266244 |
| 5565 | 36900.37000.37100.37300.38000.46200.468700 | 1st cutting/polishing of stone flooring | 7d | 2026-04-22 | 2026-04-28 | 5564 |  | 7 Days Work | 9266254 |
| 5566 | 36900.37000.37100.37300.38000.46200.468800 | Tiles/Stone skirting | 5d | 2026-04-29 | 2026-05-03 | 5565 |  | 7 Days Work | 9266264 |
| 5567 | 36900.37000.37100.37300.38000.46200.468900 | Protechtion sheet | 1d | 2026-05-04 | 2026-05-04 | 5566 |  | 7 Days Work | 9266274 |
| 5568 | 36900.37000.37100.37300.38000.46200.469000 | Installation of Temporary Door | 1d | 2026-05-05 | 2026-05-05 | 5567 |  | 7 Days Work | 9266284 |
| 5569 | 36900.37000.37100.37300.38000.46200.469100 | Fixing of window tracks | 5d | 2026-05-06 | 2026-05-10 | 5568 |  | 7 Days Work | 9266294 |
| 5570 | 36900.37000.37100.37300.38000.46200.469200 | Wire Pulling | 7d | 2026-05-11 | 2026-05-17 | 5569 |  | 7 Days Work | 9266304 |
| 5571 | 36900.37000.37100.37300.38000.46200.469300 | Gypsum Remaining | 5d | 2026-05-18 | 2026-05-22 | 5570 |  | 7 Days Work | 9266314 |
| 5572 | 36900.37000.37100.37300.38000.46200.469400 | Fixing of windoow shutter | 5d | 2026-05-23 | 2026-05-27 | 5571 |  | 7 Days Work | 9266324 |
| 5573 | 36900.37000.37100.37300.38000.46200.469500 | Putty Works - walls & ceiling | 15d | 2026-05-28 | 2026-06-11 | 5572 |  | 7 Days Work | 9266334 |
| 5574 | 36900.37000.37100.37300.38000.46200.469600 | False Ceiling- Framing | 10d | 2026-06-12 | 2026-06-21 | 5573 |  | 7 Days Work | 9266344 |
| 5575 | 36900.37000.37100.37300.38000.46200.469700 | Pre Hung Door | 3d | 2026-06-22 | 2026-06-24 | 5574 |  | 7 Days Work | 9266354 |
| 5576 | 36900.37000.37100.37300.38000.46200.469800 | Protechtion sheet | 2d | 2026-06-25 | 2026-06-26 | 5575 |  | 7 Days Work | 9266364 |
| 5577 | 36900.37000.37100.37300.38000.46200.469900 | Skirting near door | 2d | 2026-06-27 | 2026-06-28 | 5576 |  | 7 Days Work | 9266374 |
| 5578 | 36900.37000.37100.37300.38000.46200.470000 | Electrical Switch box fixing | 14d | 2026-06-29 | 2026-07-12 | 5577 |  | 7 Days Work | 9266384 |
| 5579 | 36900.37000.37100.37300.38000.46200.470100 | Fire Fighting painting | 5d | 2026-07-13 | 2026-07-17 | 5578 |  | 7 Days Work | 9266394 |
| 5580 | 36900.37000.37100.37300.38000.46200.470200 | Protection of all flooring, door & window hardware | 5d | 2026-07-18 | 2026-07-22 | 5579 |  | 7 Days Work | 9266404 |
| 5581 | 36900.37000.37100.37300.38000.46200.470300 | 1st coat primer- ceiling 1st & walls | 14d | 2026-07-23 | 2026-08-05 | 5580 |  | 7 Days Work | 9266414 |
| 5582 | 36900.37000.37100.37300.38000.46200.470400 | Wooden Flooring | 5d | 2026-08-06 | 2026-08-10 | 5581 |  | 7 Days Work | 9266424 |
| 5583 | 36900.37000.37100.37300.38000.46200.470500 | Removing of Temporary Railing & installation of Glass Railing | 5d | 2026-08-06 | 2026-08-10 | 5581 |  | 7 Days Work | 9266434 |
| 5584 | 36900.37000.37100.37300.38000.46200.470600 | Tile Grouting | 7d | 2026-08-06 | 2026-08-12 | 5581 |  | 7 Days Work | 9266444 |
| 5585 | 36900.37000.37100.37300.38000.46200.470700 | False Ceiling | 5d | 2026-08-13 | 2026-08-17 | 5584 |  | 7 Days Work | 9266454 |
| 5586 | 36900.37000.37100.37300.38000.46200.470800 | 2nd coat of primer | 10d | 2026-08-18 | 2026-08-27 | 5585 |  | 7 Days Work | 9266464 |
| 5587 | 36900.37000.37100.37300.38000.46200.470900 | Final cutting/polishing of stone flooring | 7d | 2026-08-28 | 2026-09-03 | 5586 |  | 7 Days Work | 9266474 |

| ID | WBS | Task | Duration | Start | Finish | Predecessors | Constraint | Calendar | Unique_Task_ID |
| --- | --- | --- | --- | --- | --- | --- | --- | --- | --- |
| 5588 | 36900.37000.37100.37300.38000.46200.65100 | **Toilet** | 237d | 2026-01-09 | 2026-09-02 |  | start no earlier than 2026-01-09 | 7 Days Work | 9265594 |
| 5589 | 36900.37000.37100.37300.38000.46200.65100.904800 | Toilet_MEP Clearance -1 | 7d | 2026-01-09 | 2026-01-15 | 5552 |  | 7 Days Work | 9275124 |
| 5590 | 36900.37000.37100.37300.38000.46200.65100.904900 | Toilet_Level Marking | 1d | 2026-01-16 | 2026-01-16 | 5589 |  | 7 Days Work | 9275134 |
| 5591 | 36900.37000.37100.37300.38000.46200.65100.905000 | Toilet_Chasing work for Electrical conduit & concealed plumbing | 5d | 2026-01-17 | 2026-01-21 | 5590 |  | 7 Days Work | 9275144 |
| 5592 | 36900.37000.37100.37300.38000.46200.65100.905100 | Toilet_Plumbing work 1st fix | 5d | 2026-01-22 | 2026-01-26 | 5591 |  | 7 Days Work | 9275154 |
| 5593 | 36900.37000.37100.37300.38000.46200.65100.905200 | Toilet_Sleeve/Bore Packing | 5d | 2026-01-27 | 2026-01-31 | 5592 |  | 7 Days Work | 9275164 |
| 5594 | 36900.37000.37100.37300.38000.46200.65100.905300 | Toilet_Waterproofing | 10d | 2026-02-01 | 2026-02-10 | 5593 |  | 7 Days Work | 9275174 |
| 5595 | 36900.37000.37100.37300.38000.46200.65100.905400 | Toilet_Screed | 1d | 2026-02-11 | 2026-02-11 | 5594 |  | 7 Days Work | 9275184 |
| 5596 | 36900.37000.37100.37300.38000.46200.65100.905500 | Toilet_Plumbing 2nd fix | 5d | 2026-02-12 | 2026-02-16 | 5595 |  | 7 Days Work | 9275194 |
| 5597 | 36900.37000.37100.37300.38000.46200.65100.905600 | Toilet_Ledge wall | 5d | 2026-02-17 | 2026-02-21 | 5596 |  | 7 Days Work | 9275204 |
| 5598 | 36900.37000.37100.37300.38000.46200.65100.905700 | Toilet_Cement Plaster | 5d | 2026-02-22 | 2026-02-26 | 5597 |  | 7 Days Work | 9275214 |
| 5599 | 36900.37000.37100.37300.38000.46200.65100.905800 | Toilet_Door Frame | 1d | 2026-02-27 | 2026-02-27 | 5598 |  | 7 Days Work | 9275224 |
| 5600 | 36900.37000.37100.37300.38000.46200.65100.905900 | Toilet_Wash basin & Couter | 3d | 2026-02-28 | 2026-03-02 | 5599 |  | 7 Days Work | 9275234 |
| 5601 | 36900.37000.37100.37300.38000.46200.65100.906000 | Toilet_Wall dado | 20d | 2026-03-03 | 2026-03-22 | 5600 |  | 7 Days Work | 9275244 |
| 5602 | 36900.37000.37100.37300.38000.46200.65100.906100 | Toilet_Granite Work-Ledge wall top | 3d | 2026-03-23 | 2026-03-25 | 5601 |  | 7 Days Work | 9275254 |
| 5603 | 36900.37000.37100.37300.38000.46200.65100.906200 | Toilet_Floor Tilling work | 20d | 2026-03-26 | 2026-04-14 | 5602 |  | 7 Days Work | 9275264 |
| 5604 | 36900.37000.37100.37300.38000.46200.65100.906300 | Toilet_1st row of dado | 5d | 2026-04-15 | 2026-04-19 | 5603 |  | 7 Days Work | 9275274 |
| 5605 | 36900.37000.37100.37300.38000.46200.65100.906400 | Toilet_Window Fixing | 14d | 2026-04-20 | 2026-05-03 | 5604 |  | 7 Days Work | 9275284 |
| 5606 | 36900.37000.37100.37300.38000.46200.65100.906500 | Toilet_Services above False ceiling | 21d | 2026-05-04 | 2026-05-24 | 5605 |  | 7 Days Work | 9275294 |
| 5607 | 36900.37000.37100.37300.38000.46200.65100.906600 | Toilet_False Ceiling framing | 12d | 2026-05-25 | 2026-06-05 | 5606 |  | 7 Days Work | 9275304 |
| 5608 | 36900.37000.37100.37300.38000.46200.65100.906700 | Toilet_Door Frame | 5d | 2026-06-06 | 2026-06-10 | 5607 |  | 7 Days Work | 9275314 |
| 5609 | 36900.37000.37100.37300.38000.46200.65100.906800 | Toilet_Epoxy Tile Grouting | 7d | 2026-08-06 | 2026-08-12 | 5584SS |  | 7 Days Work | 9275324 |
| 5610 | 36900.37000.37100.37300.38000.46200.65100.906900 | Toilet_False ceiling board fixing, CP Sanitary Fixture, Electric Fixture | 21d | 2026-08-13 | 2026-09-02 | 5609 |  | 7 Days Work | 9275334 |
| 5611 | 36900.37000.37100.37300.38000.46300 | **2nd Habitable/3rd Floor** | 245d | 2026-01-17 | 2026-09-18 |  | start no earlier than 2026-01-17 | 7 Days Work | 9265394 |
| 5612 | 36900.37000.37100.37300.38000.46300.471000 | Post Pour | 7d | 2026-01-17 | 2026-01-23 | 5530FS+15d |  | 7 Days Work | 9266484 |
| 5613 | 36900.37000.37100.37300.38000.46300.471100 | MEP Clearance -1 | 5d | 2026-01-24 | 2026-01-28 | 5612 |  | 7 Days Work | 9266494 |
| 5614 | 36900.37000.37100.37300.38000.46300.471200 | Benchmark | 1d | 2026-01-29 | 2026-01-29 | 5613 |  | 7 Days Work | 9266504 |
| 5615 | 36900.37000.37100.37300.38000.46300.471300 | Temporary Railing | 3d | 2026-01-30 | 2026-02-01 | 5614 |  | 7 Days Work | 9266514 |
| 5616 | 36900.37000.37100.37300.38000.46300.471400 | Blockwork | 10d | 2026-02-02 | 2026-02-11 | 5615 |  | 7 Days Work | 9266524 |
| 5617 | 36900.37000.37100.37300.38000.46300.471500 | MEP Clearance -2 | 10d | 2026-02-12 | 2026-02-21 | 5616 |  | 7 Days Work | 9266534 |
| 5618 | 36900.37000.37100.37300.38000.46300.471600 | Gypsum Plaster | 14d | 2026-02-22 | 2026-03-07 | 5617 |  | 7 Days Work | 9266544 |
| 5619 | 36900.37000.37100.37300.38000.46300.471700 | Kitchen Platform | 3d | 2026-03-08 | 2026-03-10 | 5618 |  | 7 Days Work | 9266554 |
| 5620 | 36900.37000.37100.37300.38000.46300.471800 | Kitchen dado | 7d | 2026-03-11 | 2026-03-17 | 5619 |  | 7 Days Work | 9266564 |
| 5621 | 36900.37000.37100.37300.38000.46300.471900 | Fire Fighting | 5d | 2026-03-18 | 2026-03-22 | 5620 |  | 7 Days Work | 9266574 |
| 5622 | 36900.37000.37100.37300.38000.46300.472000 | Anticapilary | 5d | 2026-03-23 | 2026-03-27 | 5621 |  | 7 Days Work | 9266584 |
| 5623 | 36900.37000.37100.37300.38000.46300.472100 | Stone Laying | 10d | 2026-04-30 | 2026-05-09 | 5663 |  | 7 Days Work | 9266594 |
| 5624 | 36900.37000.37100.37300.38000.46300.472200 | Tiles Laying | 7d | 2026-04-30 | 2026-05-06 | 5663 |  | 7 Days Work | 9266604 |
| 5625 | 36900.37000.37100.37300.38000.46300.472300 | 1st cutting/polishing of stone flooring | 7d | 2026-05-07 | 2026-05-13 | 5624 |  | 7 Days Work | 9266614 |
| 5626 | 36900.37000.37100.37300.38000.46300.472400 | Tiles/Stone skirting | 5d | 2026-05-14 | 2026-05-18 | 5625 |  | 7 Days Work | 9266624 |
| 5627 | 36900.37000.37100.37300.38000.46300.472500 | Protechtion sheet | 1d | 2026-05-19 | 2026-05-19 | 5626 |  | 7 Days Work | 9266634 |
| 5628 | 36900.37000.37100.37300.38000.46300.472600 | Installation of Temporary Door | 1d | 2026-05-20 | 2026-05-20 | 5627 |  | 7 Days Work | 9266644 |
| 5629 | 36900.37000.37100.37300.38000.46300.472700 | Fixing of window tracks | 5d | 2026-05-21 | 2026-05-25 | 5628 |  | 7 Days Work | 9266654 |
| 5630 | 36900.37000.37100.37300.38000.46300.472800 | Wire Pulling | 7d | 2026-05-26 | 2026-06-01 | 5629 |  | 7 Days Work | 9266664 |
| 5631 | 36900.37000.37100.37300.38000.46300.472900 | Gypsum Remaining | 5d | 2026-06-02 | 2026-06-06 | 5630 |  | 7 Days Work | 9266674 |
| 5632 | 36900.37000.37100.37300.38000.46300.473000 | Fixing of windoow shutter | 5d | 2026-06-07 | 2026-06-11 | 5631 |  | 7 Days Work | 9266684 |
| 5633 | 36900.37000.37100.37300.38000.46300.473100 | Putty Works - walls & ceiling | 15d | 2026-06-12 | 2026-06-26 | 5632 |  | 7 Days Work | 9266694 |
| 5634 | 36900.37000.37100.37300.38000.46300.473200 | False Ceiling- Framing | 10d | 2026-06-27 | 2026-07-06 | 5633 |  | 7 Days Work | 9266704 |
| 5635 | 36900.37000.37100.37300.38000.46300.473300 | Pre Hung Door | 3d | 2026-07-07 | 2026-07-09 | 5634 |  | 7 Days Work | 9266714 |
| 5636 | 36900.37000.37100.37300.38000.46300.473400 | Protechtion sheet | 2d | 2026-07-10 | 2026-07-11 | 5635 |  | 7 Days Work | 9266724 |
| 5637 | 36900.37000.37100.37300.38000.46300.473500 | Skirting near door | 2d | 2026-07-12 | 2026-07-13 | 5636 |  | 7 Days Work | 9266734 |
| 5638 | 36900.37000.37100.37300.38000.46300.473600 | Electrical Switch box fixing | 14d | 2026-07-14 | 2026-07-27 | 5637 |  | 7 Days Work | 9266744 |
| 5639 | 36900.37000.37100.37300.38000.46300.473700 | Fire Fighting painting | 5d | 2026-07-28 | 2026-08-01 | 5638 |  | 7 Days Work | 9266754 |
| 5640 | 36900.37000.37100.37300.38000.46300.473800 | Protection of all flooring, door & window hardware | 5d | 2026-08-02 | 2026-08-06 | 5639 |  | 7 Days Work | 9266764 |
| 5641 | 36900.37000.37100.37300.38000.46300.473900 | 1st coat primer- ceiling 1st & walls | 14d | 2026-08-07 | 2026-08-20 | 5640 |  | 7 Days Work | 9266774 |
| 5642 | 36900.37000.37100.37300.38000.46300.474000 | Wooden Flooring | 5d | 2026-08-21 | 2026-08-25 | 5641 |  | 7 Days Work | 9266784 |
| 5643 | 36900.37000.37100.37300.38000.46300.474100 | Removing of Temporary Railing & installation of Glass Railing | 5d | 2026-08-21 | 2026-08-25 | 5641 |  | 7 Days Work | 9266794 |
| 5644 | 36900.37000.37100.37300.38000.46300.474200 | Tile Grouting | 7d | 2026-08-21 | 2026-08-27 | 5641 |  | 7 Days Work | 9266804 |
| 5645 | 36900.37000.37100.37300.38000.46300.474300 | False Ceiling | 5d | 2026-08-28 | 2026-09-01 | 5644 |  | 7 Days Work | 9266814 |
| 5646 | 36900.37000.37100.37300.38000.46300.474400 | 2nd coat of primer | 10d | 2026-09-02 | 2026-09-11 | 5645 |  | 7 Days Work | 9266824 |
| 5647 | 36900.37000.37100.37300.38000.46300.474500 | Final cutting/polishing of stone flooring | 7d | 2026-09-12 | 2026-09-18 | 5646 |  | 7 Days Work | 9266834 |

| ID | WBS | Task | Duration | Start | Finish | Predecessors | Constraint | Calendar | Unique_Task_ID |
| --- | --- | --- | --- | --- | --- | --- | --- | --- | --- |
| 5648 | 36900.37000.37100.37300.38000.46300.65000 | **Toilet** | 237d | 2026-01-24 | 2026-09-17 |  | start no earlier than 2026-01-24 | 7 Days Work | 9265604 |
| 5649 | 36900.37000.37100.37300.38000.46300.65000.907000 | Toilet_MEP Clearance -1 | 7d | 2026-01-24 | 2026-01-30 | 5612 |  | 7 Days Work | 9275344 |
| 5650 | 36900.37000.37100.37300.38000.46300.65000.907100 | Toilet_Level Marking | 1d | 2026-01-31 | 2026-01-31 | 5649 |  | 7 Days Work | 9275354 |
| 5651 | 36900.37000.37100.37300.38000.46300.65000.907200 | Toilet_Chasing work for Electrical conduit & concealed plumbing | 5d | 2026-02-01 | 2026-02-05 | 5650 |  | 7 Days Work | 9275364 |
| 5652 | 36900.37000.37100.37300.38000.46300.65000.907300 | Toilet_Plumbing work 1st fix | 5d | 2026-02-06 | 2026-02-10 | 5651 |  | 7 Days Work | 9275374 |
| 5653 | 36900.37000.37100.37300.38000.46300.65000.907400 | Toilet_Sleeve/Bore Packing | 5d | 2026-02-11 | 2026-02-15 | 5652 |  | 7 Days Work | 9275384 |
| 5654 | 36900.37000.37100.37300.38000.46300.65000.907500 | Toilet_Waterproofing | 10d | 2026-02-16 | 2026-02-25 | 5653 |  | 7 Days Work | 9275394 |
| 5655 | 36900.37000.37100.37300.38000.46300.65000.907600 | Toilet_Screed | 1d | 2026-02-26 | 2026-02-26 | 5654 |  | 7 Days Work | 9275404 |
| 5656 | 36900.37000.37100.37300.38000.46300.65000.907700 | Toilet_Plumbing 2nd fix | 5d | 2026-02-27 | 2026-03-03 | 5655 |  | 7 Days Work | 9275414 |
| 5657 | 36900.37000.37100.37300.38000.46300.65000.907800 | Toilet_Ledge wall | 5d | 2026-03-04 | 2026-03-08 | 5656 |  | 7 Days Work | 9275424 |
| 5658 | 36900.37000.37100.37300.38000.46300.65000.907900 | Toilet_Cement Plaster | 5d | 2026-03-09 | 2026-03-13 | 5657 |  | 7 Days Work | 9275434 |
| 5659 | 36900.37000.37100.37300.38000.46300.65000.908000 | Toilet_Door Frame | 1d | 2026-03-14 | 2026-03-14 | 5658 |  | 7 Days Work | 9275444 |
| 5660 | 36900.37000.37100.37300.38000.46300.65000.908100 | Toilet_Wash basin & Couter | 3d | 2026-03-15 | 2026-03-17 | 5659 |  | 7 Days Work | 9275454 |
| 5661 | 36900.37000.37100.37300.38000.46300.65000.908200 | Toilet_Wall dado | 20d | 2026-03-18 | 2026-04-06 | 5660 |  | 7 Days Work | 9275464 |
| 5662 | 36900.37000.37100.37300.38000.46300.65000.908300 | Toilet_Granite Work-Ledge wall top | 3d | 2026-04-07 | 2026-04-09 | 5661 |  | 7 Days Work | 9275474 |
| 5663 | 36900.37000.37100.37300.38000.46300.65000.908400 | Toilet_Floor Tilling work | 20d | 2026-04-10 | 2026-04-29 | 5662 |  | 7 Days Work | 9275484 |
| 5664 | 36900.37000.37100.37300.38000.46300.65000.908500 | Toilet_1st row of dado | 5d | 2026-04-30 | 2026-05-04 | 5663 |  | 7 Days Work | 9275494 |
| 5665 | 36900.37000.37100.37300.38000.46300.65000.908600 | Toilet_Window Fixing | 14d | 2026-05-05 | 2026-05-18 | 5664 |  | 7 Days Work | 9275504 |
| 5666 | 36900.37000.37100.37300.38000.46300.65000.908700 | Toilet_Services above False ceiling | 21d | 2026-05-19 | 2026-06-08 | 5665 |  | 7 Days Work | 9275514 |
| 5667 | 36900.37000.37100.37300.38000.46300.65000.908800 | Toilet_False Ceiling framing | 12d | 2026-06-09 | 2026-06-20 | 5666 |  | 7 Days Work | 9275524 |
| 5668 | 36900.37000.37100.37300.38000.46300.65000.908900 | Toilet_Door Frame | 5d | 2026-06-21 | 2026-06-25 | 5667 |  | 7 Days Work | 9275534 |
| 5669 | 36900.37000.37100.37300.38000.46300.65000.909000 | Toilet_Epoxy Tile Grouting | 7d | 2026-08-21 | 2026-08-27 | 5644SS |  | 7 Days Work | 9275544 |
| 5670 | 36900.37000.37100.37300.38000.46300.65000.909100 | Toilet_False ceiling board fixing, CP Sanitary Fixture, Electric Fixture | 21d | 2026-08-28 | 2026-09-17 | 5669 |  | 7 Days Work | 9275554 |
| 5671 | 36900.37000.37100.37300.38000.46400 | **3rd Habitable/4th Floor** | 245d | 2026-01-26 | 2026-09-27 |  | start no earlier than 2026-01-26 | 7 Days Work | 9265404 |
| 5672 | 36900.37000.37100.37300.38000.46400.474600 | Post Pour | 7d | 2026-01-26 | 2026-02-01 | 5531FS+15d |  | 7 Days Work | 9266844 |
| 5673 | 36900.37000.37100.37300.38000.46400.474700 | MEP Clearance -1 | 5d | 2026-02-02 | 2026-02-06 | 5672 |  | 7 Days Work | 9266854 |
| 5674 | 36900.37000.37100.37300.38000.46400.474800 | Benchmark | 1d | 2026-02-07 | 2026-02-07 | 5673 |  | 7 Days Work | 9266864 |
| 5675 | 36900.37000.37100.37300.38000.46400.474900 | Temporary Railing | 3d | 2026-02-08 | 2026-02-10 | 5674 |  | 7 Days Work | 9266874 |
| 5676 | 36900.37000.37100.37300.38000.46400.475000 | Blockwork | 10d | 2026-02-11 | 2026-02-20 | 5675 |  | 7 Days Work | 9266884 |
| 5677 | 36900.37000.37100.37300.38000.46400.475100 | MEP Clearance -2 | 10d | 2026-02-21 | 2026-03-02 | 5676 |  | 7 Days Work | 9266894 |
| 5678 | 36900.37000.37100.37300.38000.46400.475200 | Gypsum Plaster | 14d | 2026-03-03 | 2026-03-16 | 5677 |  | 7 Days Work | 9266904 |
| 5679 | 36900.37000.37100.37300.38000.46400.475300 | Kitchen Platform | 3d | 2026-03-17 | 2026-03-19 | 5678 |  | 7 Days Work | 9266914 |
| 5680 | 36900.37000.37100.37300.38000.46400.475400 | Kitchen dado | 7d | 2026-03-20 | 2026-03-26 | 5679 |  | 7 Days Work | 9266924 |
| 5681 | 36900.37000.37100.37300.38000.46400.475500 | Fire Fighting | 5d | 2026-03-27 | 2026-03-31 | 5680 |  | 7 Days Work | 9266934 |
| 5682 | 36900.37000.37100.37300.38000.46400.475600 | Anticapilary | 5d | 2026-04-01 | 2026-04-05 | 5681 |  | 7 Days Work | 9266944 |
| 5683 | 36900.37000.37100.37300.38000.46400.475700 | Stone Laying | 10d | 2026-05-09 | 2026-05-18 | 5723 |  | 7 Days Work | 9266954 |
| 5684 | 36900.37000.37100.37300.38000.46400.475800 | Tiles Laying | 7d | 2026-05-09 | 2026-05-15 | 5723 |  | 7 Days Work | 9266964 |
| 5685 | 36900.37000.37100.37300.38000.46400.475900 | 1st cutting/polishing of stone flooring | 7d | 2026-05-16 | 2026-05-22 | 5684 |  | 7 Days Work | 9266974 |
| 5686 | 36900.37000.37100.37300.38000.46400.476000 | Tiles/Stone skirting | 5d | 2026-05-23 | 2026-05-27 | 5685 |  | 7 Days Work | 9266984 |
| 5687 | 36900.37000.37100.37300.38000.46400.476100 | Protechtion sheet | 1d | 2026-05-28 | 2026-05-28 | 5686 |  | 7 Days Work | 9266994 |
| 5688 | 36900.37000.37100.37300.38000.46400.476200 | Installation of Temporary Door | 1d | 2026-05-29 | 2026-05-29 | 5687 |  | 7 Days Work | 9267004 |
| 5689 | 36900.37000.37100.37300.38000.46400.476300 | Fixing of window tracks | 5d | 2026-05-30 | 2026-06-03 | 5688 |  | 7 Days Work | 9267014 |
| 5690 | 36900.37000.37100.37300.38000.46400.476400 | Wire Pulling | 7d | 2026-06-04 | 2026-06-10 | 5689 |  | 7 Days Work | 9267024 |
| 5691 | 36900.37000.37100.37300.38000.46400.476500 | Gypsum Remaining | 5d | 2026-06-11 | 2026-06-15 | 5690 |  | 7 Days Work | 9267034 |
| 5692 | 36900.37000.37100.37300.38000.46400.476600 | Fixing of windoow shutter | 5d | 2026-06-16 | 2026-06-20 | 5691 |  | 7 Days Work | 9267044 |
| 5693 | 36900.37000.37100.37300.38000.46400.476700 | Putty Works - walls & ceiling | 15d | 2026-06-21 | 2026-07-05 | 5692 |  | 7 Days Work | 9267054 |
| 5694 | 36900.37000.37100.37300.38000.46400.476800 | False Ceiling- Framing | 10d | 2026-07-06 | 2026-07-15 | 5693 |  | 7 Days Work | 9267064 |
| 5695 | 36900.37000.37100.37300.38000.46400.476900 | Pre Hung Door | 3d | 2026-07-16 | 2026-07-18 | 5694 |  | 7 Days Work | 9267074 |
| 5696 | 36900.37000.37100.37300.38000.46400.477000 | Protechtion sheet | 2d | 2026-07-19 | 2026-07-20 | 5695 |  | 7 Days Work | 9267084 |
| 5697 | 36900.37000.37100.37300.38000.46400.477100 | Skirting near door | 2d | 2026-07-21 | 2026-07-22 | 5696 |  | 7 Days Work | 9267094 |
| 5698 | 36900.37000.37100.37300.38000.46400.477200 | Electrical Switch box fixing | 14d | 2026-07-23 | 2026-08-05 | 5697 |  | 7 Days Work | 9267104 |
| 5699 | 36900.37000.37100.37300.38000.46400.477300 | Fire Fighting painting | 5d | 2026-08-06 | 2026-08-10 | 5698 |  | 7 Days Work | 9267114 |
| 5700 | 36900.37000.37100.37300.38000.46400.477400 | Protection of all flooring, door & window hardware | 5d | 2026-08-11 | 2026-08-15 | 5699 |  | 7 Days Work | 9267124 |
| 5701 | 36900.37000.37100.37300.38000.46400.477500 | 1st coat primer- ceiling 1st & walls | 14d | 2026-08-16 | 2026-08-29 | 5700 |  | 7 Days Work | 9267134 |
| 5702 | 36900.37000.37100.37300.38000.46400.477600 | Wooden Flooring | 5d | 2026-08-30 | 2026-09-03 | 5701 |  | 7 Days Work | 9267144 |
| 5703 | 36900.37000.37100.37300.38000.46400.477700 | Removing of Temporary Railing & installation of Glass Railing | 5d | 2026-08-30 | 2026-09-03 | 5701 |  | 7 Days Work | 9267154 |
| 5704 | 36900.37000.37100.37300.38000.46400.477800 | Tile Grouting | 7d | 2026-08-30 | 2026-09-05 | 5701 |  | 7 Days Work | 9267164 |
| 5705 | 36900.37000.37100.37300.38000.46400.477900 | False Ceiling | 5d | 2026-09-06 | 2026-09-10 | 5704 |  | 7 Days Work | 9267174 |
| 5706 | 36900.37000.37100.37300.38000.46400.478000 | 2nd coat of primer | 10d | 2026-09-11 | 2026-09-20 | 5705 |  | 7 Days Work | 9267184 |
| 5707 | 36900.37000.37100.37300.38000.46400.478100 | Final cutting/polishing of stone flooring | 7d | 2026-09-21 | 2026-09-27 | 5706 |  | 7 Days Work | 9267194 |

| ID | WBS | Task | Duration | Start | Finish | Predecessors | Constraint | Calendar | Unique_Task_ID |
| --- | --- | --- | --- | --- | --- | --- | --- | --- | --- |
| 5708 | 36900.37000.37100.37300.38000.46400.64900 | **Toilet** | 237d | 2026-02-02 | 2026-09-26 |  | start no earlier than 2026-02-02 | 7 Days Work | 9265614 |
| 5709 | 36900.37000.37100.37300.38000.46400.64900.909200 | Toilet_MEP Clearance -1 | 7d | 2026-02-02 | 2026-02-08 | 5672 |  | 7 Days Work | 9275564 |
| 5710 | 36900.37000.37100.37300.38000.46400.64900.909300 | Toilet_Level Marking | 1d | 2026-02-09 | 2026-02-09 | 5709 |  | 7 Days Work | 9275574 |
| 5711 | 36900.37000.37100.37300.38000.46400.64900.909400 | Toilet_Chasing work for Electrical conduit & concealed plumbing | 5d | 2026-02-10 | 2026-02-14 | 5710 |  | 7 Days Work | 9275584 |
| 5712 | 36900.37000.37100.37300.38000.46400.64900.909500 | Toilet_Plumbing work 1st fix | 5d | 2026-02-15 | 2026-02-19 | 5711 |  | 7 Days Work | 9275594 |
| 5713 | 36900.37000.37100.37300.38000.46400.64900.909600 | Toilet_Sleeve/Bore Packing | 5d | 2026-02-20 | 2026-02-24 | 5712 |  | 7 Days Work | 9275604 |
| 5714 | 36900.37000.37100.37300.38000.46400.64900.909700 | Toilet_Waterproofing | 10d | 2026-02-25 | 2026-03-06 | 5713 |  | 7 Days Work | 9275614 |
| 5715 | 36900.37000.37100.37300.38000.46400.64900.909800 | Toilet_Screed | 1d | 2026-03-07 | 2026-03-07 | 5714 |  | 7 Days Work | 9275624 |
| 5716 | 36900.37000.37100.37300.38000.46400.64900.909900 | Toilet_Plumbing 2nd fix | 5d | 2026-03-08 | 2026-03-12 | 5715 |  | 7 Days Work | 9275634 |
| 5717 | 36900.37000.37100.37300.38000.46400.64900.910000 | Toilet_Ledge wall | 5d | 2026-03-13 | 2026-03-17 | 5716 |  | 7 Days Work | 9275644 |
| 5718 | 36900.37000.37100.37300.38000.46400.64900.910100 | Toilet_Cement Plaster | 5d | 2026-03-18 | 2026-03-22 | 5717 |  | 7 Days Work | 9275654 |
| 5719 | 36900.37000.37100.37300.38000.46400.64900.910200 | Toilet_Door Frame | 1d | 2026-03-23 | 2026-03-23 | 5718 |  | 7 Days Work | 9275664 |
| 5720 | 36900.37000.37100.37300.38000.46400.64900.910300 | Toilet_Wash basin & Couter | 3d | 2026-03-24 | 2026-03-26 | 5719 |  | 7 Days Work | 9275674 |
| 5721 | 36900.37000.37100.37300.38000.46400.64900.910400 | Toilet_Wall dado | 20d | 2026-03-27 | 2026-04-15 | 5720 |  | 7 Days Work | 9275684 |
| 5722 | 36900.37000.37100.37300.38000.46400.64900.910500 | Toilet_Granite Work-Ledge wall top | 3d | 2026-04-16 | 2026-04-18 | 5721 |  | 7 Days Work | 9275694 |
| 5723 | 36900.37000.37100.37300.38000.46400.64900.910600 | Toilet_Floor Tilling work | 20d | 2026-04-19 | 2026-05-08 | 5722 |  | 7 Days Work | 9275704 |
| 5724 | 36900.37000.37100.37300.38000.46400.64900.910700 | Toilet_1st row of dado | 5d | 2026-05-09 | 2026-05-13 | 5723 |  | 7 Days Work | 9275714 |
| 5725 | 36900.37000.37100.37300.38000.46400.64900.910800 | Toilet_Window Fixing | 14d | 2026-05-14 | 2026-05-27 | 5724 |  | 7 Days Work | 9275724 |
| 5726 | 36900.37000.37100.37300.38000.46400.64900.910900 | Toilet_Services above False ceiling | 21d | 2026-05-28 | 2026-06-17 | 5725 |  | 7 Days Work | 9275734 |
| 5727 | 36900.37000.37100.37300.38000.46400.64900.911000 | Toilet_False Ceiling framing | 12d | 2026-06-18 | 2026-06-29 | 5726 |  | 7 Days Work | 9275744 |
| 5728 | 36900.37000.37100.37300.38000.46400.64900.911100 | Toilet_Door Frame | 5d | 2026-06-30 | 2026-07-04 | 5727 |  | 7 Days Work | 9275754 |
| 5729 | 36900.37000.37100.37300.38000.46400.64900.911200 | Toilet_Epoxy Tile Grouting | 7d | 2026-08-30 | 2026-09-05 | 5704SS |  | 7 Days Work | 9275764 |
| 5730 | 36900.37000.37100.37300.38000.46400.64900.911300 | Toilet_False ceiling board fixing, CP Sanitary Fixture, Electric Fixture | 21d | 2026-09-06 | 2026-09-26 | 5729 |  | 7 Days Work | 9275774 |
| 5731 | 36900.37000.37100.37300.38000.46500 | **4th Habitable/5th Floor** | 245d | 2026-02-04 | 2026-10-06 |  | start no earlier than 2026-02-04 | 7 Days Work | 9265414 |
| 5732 | 36900.37000.37100.37300.38000.46500.478200 | Post Pour | 7d | 2026-02-04 | 2026-02-10 | 5532FS+15d |  | 7 Days Work | 9267204 |
| 5733 | 36900.37000.37100.37300.38000.46500.478300 | MEP Clearance -1 | 5d | 2026-02-11 | 2026-02-15 | 5732 |  | 7 Days Work | 9267214 |
| 5734 | 36900.37000.37100.37300.38000.46500.478400 | Benchmark | 1d | 2026-02-16 | 2026-02-16 | 5733 |  | 7 Days Work | 9267224 |
| 5735 | 36900.37000.37100.37300.38000.46500.478500 | Temporary Railing | 3d | 2026-02-17 | 2026-02-19 | 5734 |  | 7 Days Work | 9267234 |
| 5736 | 36900.37000.37100.37300.38000.46500.478600 | Blockwork | 10d | 2026-02-20 | 2026-03-01 | 5735 |  | 7 Days Work | 9267244 |
| 5737 | 36900.37000.37100.37300.38000.46500.478700 | MEP Clearance -2 | 10d | 2026-03-02 | 2026-03-11 | 5736 |  | 7 Days Work | 9267254 |
| 5738 | 36900.37000.37100.37300.38000.46500.478800 | Gypsum Plaster | 14d | 2026-03-12 | 2026-03-25 | 5737 |  | 7 Days Work | 9267264 |
| 5739 | 36900.37000.37100.37300.38000.46500.478900 | Kitchen Platform | 3d | 2026-03-26 | 2026-03-28 | 5738 |  | 7 Days Work | 9267274 |
| 5740 | 36900.37000.37100.37300.38000.46500.479000 | Kitchen dado | 7d | 2026-03-29 | 2026-04-04 | 5739 |  | 7 Days Work | 9267284 |
| 5741 | 36900.37000.37100.37300.38000.46500.479100 | Fire Fighting | 5d | 2026-04-05 | 2026-04-09 | 5740 |  | 7 Days Work | 9267294 |
| 5742 | 36900.37000.37100.37300.38000.46500.479200 | Anticapilary | 5d | 2026-04-10 | 2026-04-14 | 5741 |  | 7 Days Work | 9267304 |
| 5743 | 36900.37000.37100.37300.38000.46500.479300 | Stone Laying | 10d | 2026-05-18 | 2026-05-27 | 5783 |  | 7 Days Work | 9267314 |
| 5744 | 36900.37000.37100.37300.38000.46500.479400 | Tiles Laying | 7d | 2026-05-18 | 2026-05-24 | 5783 |  | 7 Days Work | 9267324 |
| 5745 | 36900.37000.37100.37300.38000.46500.479500 | 1st cutting/polishing of stone flooring | 7d | 2026-05-25 | 2026-05-31 | 5744 |  | 7 Days Work | 9267334 |
| 5746 | 36900.37000.37100.37300.38000.46500.479600 | Tiles/Stone skirting | 5d | 2026-06-01 | 2026-06-05 | 5745 |  | 7 Days Work | 9267344 |
| 5747 | 36900.37000.37100.37300.38000.46500.479700 | Protechtion sheet | 1d | 2026-06-06 | 2026-06-06 | 5746 |  | 7 Days Work | 9267354 |
| 5748 | 36900.37000.37100.37300.38000.46500.479800 | Installation of Temporary Door | 1d | 2026-06-07 | 2026-06-07 | 5747 |  | 7 Days Work | 9267364 |
| 5749 | 36900.37000.37100.37300.38000.46500.479900 | Fixing of window tracks | 5d | 2026-06-08 | 2026-06-12 | 5748 |  | 7 Days Work | 9267374 |
| 5750 | 36900.37000.37100.37300.38000.46500.480000 | Wire Pulling | 7d | 2026-06-13 | 2026-06-19 | 5749 |  | 7 Days Work | 9267384 |
| 5751 | 36900.37000.37100.37300.38000.46500.480100 | Gypsum Remaining | 5d | 2026-06-20 | 2026-06-24 | 5750 |  | 7 Days Work | 9267394 |
| 5752 | 36900.37000.37100.37300.38000.46500.480200 | Fixing of windoow shutter | 5d | 2026-06-25 | 2026-06-29 | 5751 |  | 7 Days Work | 9267404 |
| 5753 | 36900.37000.37100.37300.38000.46500.480300 | Putty Works - walls & ceiling | 15d | 2026-06-30 | 2026-07-14 | 5752 |  | 7 Days Work | 9267414 |
| 5754 | 36900.37000.37100.37300.38000.46500.480400 | False Ceiling- Framing | 10d | 2026-07-15 | 2026-07-24 | 5753 |  | 7 Days Work | 9267424 |
| 5755 | 36900.37000.37100.37300.38000.46500.480500 | Pre Hung Door | 3d | 2026-07-25 | 2026-07-27 | 5754 |  | 7 Days Work | 9267434 |
| 5756 | 36900.37000.37100.37300.38000.46500.480600 | Protechtion sheet | 2d | 2026-07-28 | 2026-07-29 | 5755 |  | 7 Days Work | 9267444 |
| 5757 | 36900.37000.37100.37300.38000.46500.480700 | Skirting near door | 2d | 2026-07-30 | 2026-07-31 | 5756 |  | 7 Days Work | 9267454 |
| 5758 | 36900.37000.37100.37300.38000.46500.480800 | Electrical Switch box fixing | 14d | 2026-08-01 | 2026-08-14 | 5757 |  | 7 Days Work | 9267464 |
| 5759 | 36900.37000.37100.37300.38000.46500.480900 | Fire Fighting painting | 5d | 2026-08-15 | 2026-08-19 | 5758 |  | 7 Days Work | 9267474 |
| 5760 | 36900.37000.37100.37300.38000.46500.481000 | Protection of all flooring, door & window hardware | 5d | 2026-08-20 | 2026-08-24 | 5759 |  | 7 Days Work | 9267484 |
| 5761 | 36900.37000.37100.37300.38000.46500.481100 | 1st coat primer- ceiling 1st & walls | 14d | 2026-08-25 | 2026-09-07 | 5760 |  | 7 Days Work | 9267494 |
| 5762 | 36900.37000.37100.37300.38000.46500.481200 | Wooden Flooring | 5d | 2026-09-08 | 2026-09-12 | 5761 |  | 7 Days Work | 9267504 |
| 5763 | 36900.37000.37100.37300.38000.46500.481300 | Removing of Temporary Railing & installation of Glass Railing | 5d | 2026-09-08 | 2026-09-12 | 5761 |  | 7 Days Work | 9267514 |
| 5764 | 36900.37000.37100.37300.38000.46500.481400 | Tile Grouting | 7d | 2026-09-08 | 2026-09-14 | 5761 |  | 7 Days Work | 9267524 |
| 5765 | 36900.37000.37100.37300.38000.46500.481500 | False Ceiling | 5d | 2026-09-15 | 2026-09-19 | 5764 |  | 7 Days Work | 9267534 |
| 5766 | 36900.37000.37100.37300.38000.46500.481600 | 2nd coat of primer | 10d | 2026-09-20 | 2026-09-29 | 5765 |  | 7 Days Work | 9267544 |
| 5767 | 36900.37000.37100.37300.38000.46500.481700 | Final cutting/polishing of stone flooring | 7d | 2026-09-30 | 2026-10-06 | 5766 |  | 7 Days Work | 9267554 |

| ID | WBS | Task | Duration | Start | Finish | Predecessors | Constraint | Calendar | Unique_Task_ID |
| --- | --- | --- | --- | --- | --- | --- | --- | --- | --- |
| 5768 | 36900.37000.37100.37300.38000.46500.64800 | **Toilet** | 237d | 2026-02-11 | 2026-10-05 |  | start no earlier than 2026-02-11 | 7 Days Work | 9265624 |
| 5769 | 36900.37000.37100.37300.38000.46500.64800.911400 | Toilet_MEP Clearance -1 | 7d | 2026-02-11 | 2026-02-17 | 5732 |  | 7 Days Work | 9275784 |
| 5770 | 36900.37000.37100.37300.38000.46500.64800.911500 | Toilet_Level Marking | 1d | 2026-02-18 | 2026-02-18 | 5769 |  | 7 Days Work | 9275794 |
| 5771 | 36900.37000.37100.37300.38000.46500.64800.911600 | Toilet_Chasing work for Electrical conduit & concealed plumbing | 5d | 2026-02-19 | 2026-02-23 | 5770 |  | 7 Days Work | 9275804 |
| 5772 | 36900.37000.37100.37300.38000.46500.64800.911700 | Toilet_Plumbing work 1st fix | 5d | 2026-02-24 | 2026-02-28 | 5771 |  | 7 Days Work | 9275814 |
| 5773 | 36900.37000.37100.37300.38000.46500.64800.911800 | Toilet_Sleeve/Bore Packing | 5d | 2026-03-01 | 2026-03-05 | 5772 |  | 7 Days Work | 9275824 |
| 5774 | 36900.37000.37100.37300.38000.46500.64800.911900 | Toilet_Waterproofing | 10d | 2026-03-06 | 2026-03-15 | 5773 |  | 7 Days Work | 9275834 |
| 5775 | 36900.37000.37100.37300.38000.46500.64800.912000 | Toilet_Screed | 1d | 2026-03-16 | 2026-03-16 | 5774 |  | 7 Days Work | 9275844 |
| 5776 | 36900.37000.37100.37300.38000.46500.64800.912100 | Toilet_Plumbing 2nd fix | 5d | 2026-03-17 | 2026-03-21 | 5775 |  | 7 Days Work | 9275854 |
| 5777 | 36900.37000.37100.37300.38000.46500.64800.912200 | Toilet_Ledge wall | 5d | 2026-03-22 | 2026-03-26 | 5776 |  | 7 Days Work | 9275864 |
| 5778 | 36900.37000.37100.37300.38000.46500.64800.912300 | Toilet_Cement Plaster | 5d | 2026-03-27 | 2026-03-31 | 5777 |  | 7 Days Work | 9275874 |
| 5779 | 36900.37000.37100.37300.38000.46500.64800.912400 | Toilet_Door Frame | 1d | 2026-04-01 | 2026-04-01 | 5778 |  | 7 Days Work | 9275884 |
| 5780 | 36900.37000.37100.37300.38000.46500.64800.912500 | Toilet_Wash basin & Couter | 3d | 2026-04-02 | 2026-04-04 | 5779 |  | 7 Days Work | 9275894 |
| 5781 | 36900.37000.37100.37300.38000.46500.64800.912600 | Toilet_Wall dado | 20d | 2026-04-05 | 2026-04-24 | 5780 |  | 7 Days Work | 9275904 |
| 5782 | 36900.37000.37100.37300.38000.46500.64800.912700 | Toilet_Granite Work-Ledge wall top | 3d | 2026-04-25 | 2026-04-27 | 5781 |  | 7 Days Work | 9275914 |
| 5783 | 36900.37000.37100.37300.38000.46500.64800.912800 | Toilet_Floor Tilling work | 20d | 2026-04-28 | 2026-05-17 | 5782 |  | 7 Days Work | 9275924 |
| 5784 | 36900.37000.37100.37300.38000.46500.64800.912900 | Toilet_1st row of dado | 5d | 2026-05-18 | 2026-05-22 | 5783 |  | 7 Days Work | 9275934 |
| 5785 | 36900.37000.37100.37300.38000.46500.64800.913000 | Toilet_Window Fixing | 14d | 2026-05-23 | 2026-06-05 | 5784 |  | 7 Days Work | 9275944 |
| 5786 | 36900.37000.37100.37300.38000.46500.64800.913100 | Toilet_Services above False ceiling | 21d | 2026-06-06 | 2026-06-26 | 5785 |  | 7 Days Work | 9275954 |
| 5787 | 36900.37000.37100.37300.38000.46500.64800.913200 | Toilet_False Ceiling framing | 12d | 2026-06-27 | 2026-07-08 | 5786 |  | 7 Days Work | 9275964 |
| 5788 | 36900.37000.37100.37300.38000.46500.64800.913300 | Toilet_Door Frame | 5d | 2026-07-09 | 2026-07-13 | 5787 |  | 7 Days Work | 9275974 |
| 5789 | 36900.37000.37100.37300.38000.46500.64800.913400 | Toilet_Epoxy Tile Grouting | 7d | 2026-09-08 | 2026-09-14 | 5764SS |  | 7 Days Work | 9275984 |
| 5790 | 36900.37000.37100.37300.38000.46500.64800.913500 | Toilet_False ceiling board fixing, CP Sanitary Fixture, Electric Fixture | 21d | 2026-09-15 | 2026-10-05 | 5789 |  | 7 Days Work | 9275994 |
| 5791 | 36900.37000.37100.37300.38000.46600 | **5th Habitable/6th Floor** | 245d | 2026-02-16 | 2026-10-18 |  | start no earlier than 2026-02-16 | 7 Days Work | 9265424 |
| 5792 | 36900.37000.37100.37300.38000.46600.481800 | Post Pour | 7d | 2026-02-16 | 2026-02-22 | 5533FS+15d |  | 7 Days Work | 9267564 |
| 5793 | 36900.37000.37100.37300.38000.46600.481900 | MEP Clearance -1 | 5d | 2026-02-23 | 2026-02-27 | 5792 |  | 7 Days Work | 9267574 |
| 5794 | 36900.37000.37100.37300.38000.46600.482000 | Benchmark | 1d | 2026-02-28 | 2026-02-28 | 5793 |  | 7 Days Work | 9267584 |
| 5795 | 36900.37000.37100.37300.38000.46600.482100 | Temporary Railing | 3d | 2026-03-01 | 2026-03-03 | 5794 |  | 7 Days Work | 9267594 |
| 5796 | 36900.37000.37100.37300.38000.46600.482200 | Blockwork | 10d | 2026-03-04 | 2026-03-13 | 5795 |  | 7 Days Work | 9267604 |
| 5797 | 36900.37000.37100.37300.38000.46600.482300 | MEP Clearance -2 | 10d | 2026-03-14 | 2026-03-23 | 5796 |  | 7 Days Work | 9267614 |
| 5798 | 36900.37000.37100.37300.38000.46600.482400 | Gypsum Plaster | 14d | 2026-03-24 | 2026-04-06 | 5797 |  | 7 Days Work | 9267624 |
| 5799 | 36900.37000.37100.37300.38000.46600.482500 | Kitchen Platform | 3d | 2026-04-07 | 2026-04-09 | 5798 |  | 7 Days Work | 9267634 |
| 5800 | 36900.37000.37100.37300.38000.46600.482600 | Kitchen dado | 7d | 2026-04-10 | 2026-04-16 | 5799 |  | 7 Days Work | 9267644 |
| 5801 | 36900.37000.37100.37300.38000.46600.482700 | Fire Fighting | 5d | 2026-04-17 | 2026-04-21 | 5800 |  | 7 Days Work | 9267654 |
| 5802 | 36900.37000.37100.37300.38000.46600.482800 | Anticapilary | 5d | 2026-04-22 | 2026-04-26 | 5801 |  | 7 Days Work | 9267664 |
| 5803 | 36900.37000.37100.37300.38000.46600.482900 | Stone Laying | 10d | 2026-05-30 | 2026-06-08 | 5843 |  | 7 Days Work | 9267674 |
| 5804 | 36900.37000.37100.37300.38000.46600.483000 | Tiles Laying | 7d | 2026-05-30 | 2026-06-05 | 5843 |  | 7 Days Work | 9267684 |
| 5805 | 36900.37000.37100.37300.38000.46600.483100 | 1st cutting/polishing of stone flooring | 7d | 2026-06-06 | 2026-06-12 | 5804 |  | 7 Days Work | 9267694 |
| 5806 | 36900.37000.37100.37300.38000.46600.483200 | Tiles/Stone skirting | 5d | 2026-06-13 | 2026-06-17 | 5805 |  | 7 Days Work | 9267704 |
| 5807 | 36900.37000.37100.37300.38000.46600.483300 | Protechtion sheet | 1d | 2026-06-18 | 2026-06-18 | 5806 |  | 7 Days Work | 9267714 |
| 5808 | 36900.37000.37100.37300.38000.46600.483400 | Installation of Temporary Door | 1d | 2026-06-19 | 2026-06-19 | 5807 |  | 7 Days Work | 9267724 |
| 5809 | 36900.37000.37100.37300.38000.46600.483500 | Fixing of window tracks | 5d | 2026-06-20 | 2026-06-24 | 5808 |  | 7 Days Work | 9267734 |
| 5810 | 36900.37000.37100.37300.38000.46600.483600 | Wire Pulling | 7d | 2026-06-25 | 2026-07-01 | 5809 |  | 7 Days Work | 9267744 |
| 5811 | 36900.37000.37100.37300.38000.46600.483700 | Gypsum Remaining | 5d | 2026-07-02 | 2026-07-06 | 5810 |  | 7 Days Work | 9267754 |
| 5812 | 36900.37000.37100.37300.38000.46600.483800 | Fixing of windoow shutter | 5d | 2026-07-07 | 2026-07-11 | 5811 |  | 7 Days Work | 9267764 |
| 5813 | 36900.37000.37100.37300.38000.46600.483900 | Putty Works - walls & ceiling | 15d | 2026-07-12 | 2026-07-26 | 5812 |  | 7 Days Work | 9267774 |
| 5814 | 36900.37000.37100.37300.38000.46600.484000 | False Ceiling- Framing | 10d | 2026-07-27 | 2026-08-05 | 5813 |  | 7 Days Work | 9267784 |
| 5815 | 36900.37000.37100.37300.38000.46600.484100 | Pre Hung Door | 3d | 2026-08-06 | 2026-08-08 | 5814 |  | 7 Days Work | 9267794 |
| 5816 | 36900.37000.37100.37300.38000.46600.484200 | Protechtion sheet | 2d | 2026-08-09 | 2026-08-10 | 5815 |  | 7 Days Work | 9267804 |
| 5817 | 36900.37000.37100.37300.38000.46600.484300 | Skirting near door | 2d | 2026-08-11 | 2026-08-12 | 5816 |  | 7 Days Work | 9267814 |
| 5818 | 36900.37000.37100.37300.38000.46600.484400 | Electrical Switch box fixing | 14d | 2026-08-13 | 2026-08-26 | 5817 |  | 7 Days Work | 9267824 |
| 5819 | 36900.37000.37100.37300.38000.46600.484500 | Fire Fighting painting | 5d | 2026-08-27 | 2026-08-31 | 5818 |  | 7 Days Work | 9267834 |
| 5820 | 36900.37000.37100.37300.38000.46600.484600 | Protection of all flooring, door & window hardware | 5d | 2026-09-01 | 2026-09-05 | 5819 |  | 7 Days Work | 9267844 |
| 5821 | 36900.37000.37100.37300.38000.46600.484700 | 1st coat primer- ceiling 1st & walls | 14d | 2026-09-06 | 2026-09-19 | 5820 |  | 7 Days Work | 9267854 |
| 5822 | 36900.37000.37100.37300.38000.46600.484800 | Wooden Flooring | 5d | 2026-09-20 | 2026-09-24 | 5821 |  | 7 Days Work | 9267864 |
| 5823 | 36900.37000.37100.37300.38000.46600.484900 | Removing of Temporary Railing & installation of Glass Railing | 5d | 2026-09-20 | 2026-09-24 | 5821 |  | 7 Days Work | 9267874 |
| 5824 | 36900.37000.37100.37300.38000.46600.485000 | Tile Grouting | 7d | 2026-09-20 | 2026-09-26 | 5821 |  | 7 Days Work | 9267884 |
| 5825 | 36900.37000.37100.37300.38000.46600.485100 | False Ceiling | 5d | 2026-09-27 | 2026-10-01 | 5824 |  | 7 Days Work | 9267894 |
| 5826 | 36900.37000.37100.37300.38000.46600.485200 | 2nd coat of primer | 10d | 2026-10-02 | 2026-10-11 | 5825 |  | 7 Days Work | 9267904 |
| 5827 | 36900.37000.37100.37300.38000.46600.485300 | Final cutting/polishing of stone flooring | 7d | 2026-10-12 | 2026-10-18 | 5826 |  | 7 Days Work | 9267914 |

| ID | WBS | Task | Duration | Start | Finish | Predecessors | Constraint | Calendar | Unique_Task_ID |
| --- | --- | --- | --- | --- | --- | --- | --- | --- | --- |
| 5828 | 36900.37000.37100.37300.38000.46600.64500 | **Toilet** | 237d | 2026-02-23 | 2026-10-17 |  | start no earlier than 2026-02-23 | 7 Days Work | 9265634 |
| 5829 | 36900.37000.37100.37300.38000.46600.64500.913600 | Toilet_MEP Clearance -1 | 7d | 2026-02-23 | 2026-03-01 | 5792 |  | 7 Days Work | 9276004 |
| 5830 | 36900.37000.37100.37300.38000.46600.64500.913700 | Toilet_Level Marking | 1d | 2026-03-02 | 2026-03-02 | 5829 |  | 7 Days Work | 9276014 |
| 5831 | 36900.37000.37100.37300.38000.46600.64500.913800 | Toilet_Chasing work for Electrical conduit & concealed plumbing | 5d | 2026-03-03 | 2026-03-07 | 5830 |  | 7 Days Work | 9276024 |
| 5832 | 36900.37000.37100.37300.38000.46600.64500.913900 | Toilet_Plumbing work 1st fix | 5d | 2026-03-08 | 2026-03-12 | 5831 |  | 7 Days Work | 9276034 |
| 5833 | 36900.37000.37100.37300.38000.46600.64500.914000 | Toilet_Sleeve/Bore Packing | 5d | 2026-03-13 | 2026-03-17 | 5832 |  | 7 Days Work | 9276044 |
| 5834 | 36900.37000.37100.37300.38000.46600.64500.914100 | Toilet_Waterproofing | 10d | 2026-03-18 | 2026-03-27 | 5833 |  | 7 Days Work | 9276054 |
| 5835 | 36900.37000.37100.37300.38000.46600.64500.914200 | Toilet_Screed | 1d | 2026-03-28 | 2026-03-28 | 5834 |  | 7 Days Work | 9276064 |
| 5836 | 36900.37000.37100.37300.38000.46600.64500.914300 | Toilet_Plumbing 2nd fix | 5d | 2026-03-29 | 2026-04-02 | 5835 |  | 7 Days Work | 9276074 |
| 5837 | 36900.37000.37100.37300.38000.46600.64500.914400 | Toilet_Ledge wall | 5d | 2026-04-03 | 2026-04-07 | 5836 |  | 7 Days Work | 9276084 |
| 5838 | 36900.37000.37100.37300.38000.46600.64500.914500 | Toilet_Cement Plaster | 5d | 2026-04-08 | 2026-04-12 | 5837 |  | 7 Days Work | 9276094 |
| 5839 | 36900.37000.37100.37300.38000.46600.64500.914600 | Toilet_Door Frame | 1d | 2026-04-13 | 2026-04-13 | 5838 |  | 7 Days Work | 9276104 |
| 5840 | 36900.37000.37100.37300.38000.46600.64500.914700 | Toilet_Wash basin & Couter | 3d | 2026-04-14 | 2026-04-16 | 5839 |  | 7 Days Work | 9276114 |
| 5841 | 36900.37000.37100.37300.38000.46600.64500.914800 | Toilet_Wall dado | 20d | 2026-04-17 | 2026-05-06 | 5840 |  | 7 Days Work | 9276124 |
| 5842 | 36900.37000.37100.37300.38000.46600.64500.914900 | Toilet_Granite Work-Ledge wall top | 3d | 2026-05-07 | 2026-05-09 | 5841 |  | 7 Days Work | 9276134 |
| 5843 | 36900.37000.37100.37300.38000.46600.64500.915000 | Toilet_Floor Tilling work | 20d | 2026-05-10 | 2026-05-29 | 5842 |  | 7 Days Work | 9276144 |
| 5844 | 36900.37000.37100.37300.38000.46600.64500.915100 | Toilet_1st row of dado | 5d | 2026-05-30 | 2026-06-03 | 5843 |  | 7 Days Work | 9276154 |
| 5845 | 36900.37000.37100.37300.38000.46600.64500.915200 | Toilet_Window Fixing | 14d | 2026-06-04 | 2026-06-17 | 5844 |  | 7 Days Work | 9276164 |
| 5846 | 36900.37000.37100.37300.38000.46600.64500.915300 | Toilet_Services above False ceiling | 21d | 2026-06-18 | 2026-07-08 | 5845 |  | 7 Days Work | 9276174 |
| 5847 | 36900.37000.37100.37300.38000.46600.64500.915400 | Toilet_False Ceiling framing | 12d | 2026-07-09 | 2026-07-20 | 5846 |  | 7 Days Work | 9276184 |
| 5848 | 36900.37000.37100.37300.38000.46600.64500.915500 | Toilet_Door Frame | 5d | 2026-07-21 | 2026-07-25 | 5847 |  | 7 Days Work | 9276194 |
| 5849 | 36900.37000.37100.37300.38000.46600.64500.915600 | Toilet_Epoxy Tile Grouting | 7d | 2026-09-20 | 2026-09-26 | 5824SS |  | 7 Days Work | 9276204 |
| 5850 | 36900.37000.37100.37300.38000.46600.64500.915700 | Toilet_False ceiling board fixing, CP Sanitary Fixture, Electric Fixture | 21d | 2026-09-27 | 2026-10-17 | 5849 |  | 7 Days Work | 9276214 |
| 5851 | 36900.37000.37100.37300.38000.46700 | **6th Habitable/7th Floor** | 245d | 2026-02-25 | 2026-10-27 |  | start no earlier than 2026-02-25 | 7 Days Work | 9265434 |
| 5852 | 36900.37000.37100.37300.38000.46700.485400 | Post Pour | 7d | 2026-02-25 | 2026-03-03 | 5534FS+15d |  | 7 Days Work | 9267924 |
| 5853 | 36900.37000.37100.37300.38000.46700.485500 | MEP Clearance -1 | 5d | 2026-03-04 | 2026-03-08 | 5852 |  | 7 Days Work | 9267934 |
| 5854 | 36900.37000.37100.37300.38000.46700.485600 | Benchmark | 1d | 2026-03-09 | 2026-03-09 | 5853 |  | 7 Days Work | 9267944 |
| 5855 | 36900.37000.37100.37300.38000.46700.485700 | Temporary Railing | 3d | 2026-03-10 | 2026-03-12 | 5854 |  | 7 Days Work | 9267954 |
| 5856 | 36900.37000.37100.37300.38000.46700.485800 | Blockwork | 10d | 2026-03-13 | 2026-03-22 | 5855 |  | 7 Days Work | 9267964 |
| 5857 | 36900.37000.37100.37300.38000.46700.485900 | MEP Clearance -2 | 10d | 2026-03-23 | 2026-04-01 | 5856 |  | 7 Days Work | 9267974 |
| 5858 | 36900.37000.37100.37300.38000.46700.486000 | Gypsum Plaster | 14d | 2026-04-02 | 2026-04-15 | 5857 |  | 7 Days Work | 9267984 |
| 5859 | 36900.37000.37100.37300.38000.46700.486100 | Kitchen Platform | 3d | 2026-04-16 | 2026-04-18 | 5858 |  | 7 Days Work | 9267994 |
| 5860 | 36900.37000.37100.37300.38000.46700.486200 | Kitchen dado | 7d | 2026-04-19 | 2026-04-25 | 5859 |  | 7 Days Work | 9268004 |
| 5861 | 36900.37000.37100.37300.38000.46700.486300 | Fire Fighting | 5d | 2026-04-26 | 2026-04-30 | 5860 |  | 7 Days Work | 9268014 |
| 5862 | 36900.37000.37100.37300.38000.46700.486400 | Anticapilary | 5d | 2026-05-01 | 2026-05-05 | 5861 |  | 7 Days Work | 9268024 |
| 5863 | 36900.37000.37100.37300.38000.46700.486500 | Stone Laying | 10d | 2026-06-08 | 2026-06-17 | 5903 |  | 7 Days Work | 9268034 |
| 5864 | 36900.37000.37100.37300.38000.46700.486600 | Tiles Laying | 7d | 2026-06-08 | 2026-06-14 | 5903 |  | 7 Days Work | 9268044 |
| 5865 | 36900.37000.37100.37300.38000.46700.486700 | 1st cutting/polishing of stone flooring | 7d | 2026-06-15 | 2026-06-21 | 5864 |  | 7 Days Work | 9268054 |
| 5866 | 36900.37000.37100.37300.38000.46700.486800 | Tiles/Stone skirting | 5d | 2026-06-22 | 2026-06-26 | 5865 |  | 7 Days Work | 9268064 |
| 5867 | 36900.37000.37100.37300.38000.46700.486900 | Protechtion sheet | 1d | 2026-06-27 | 2026-06-27 | 5866 |  | 7 Days Work | 9268074 |
| 5868 | 36900.37000.37100.37300.38000.46700.487000 | Installation of Temporary Door | 1d | 2026-06-28 | 2026-06-28 | 5867 |  | 7 Days Work | 9268084 |
| 5869 | 36900.37000.37100.37300.38000.46700.487100 | Fixing of window tracks | 5d | 2026-06-29 | 2026-07-03 | 5868 |  | 7 Days Work | 9268094 |
| 5870 | 36900.37000.37100.37300.38000.46700.487200 | Wire Pulling | 7d | 2026-07-04 | 2026-07-10 | 5869 |  | 7 Days Work | 9268104 |
| 5871 | 36900.37000.37100.37300.38000.46700.487300 | Gypsum Remaining | 5d | 2026-07-11 | 2026-07-15 | 5870 |  | 7 Days Work | 9268114 |
| 5872 | 36900.37000.37100.37300.38000.46700.487400 | Fixing of windoow shutter | 5d | 2026-07-16 | 2026-07-20 | 5871 |  | 7 Days Work | 9268124 |
| 5873 | 36900.37000.37100.37300.38000.46700.487500 | Putty Works - walls & ceiling | 15d | 2026-07-21 | 2026-08-04 | 5872 |  | 7 Days Work | 9268134 |
| 5874 | 36900.37000.37100.37300.38000.46700.487600 | False Ceiling- Framing | 10d | 2026-08-05 | 2026-08-14 | 5873 |  | 7 Days Work | 9268144 |
| 5875 | 36900.37000.37100.37300.38000.46700.487700 | Pre Hung Door | 3d | 2026-08-15 | 2026-08-17 | 5874 |  | 7 Days Work | 9268154 |
| 5876 | 36900.37000.37100.37300.38000.46700.487800 | Protechtion sheet | 2d | 2026-08-18 | 2026-08-19 | 5875 |  | 7 Days Work | 9268164 |
| 5877 | 36900.37000.37100.37300.38000.46700.487900 | Skirting near door | 2d | 2026-08-20 | 2026-08-21 | 5876 |  | 7 Days Work | 9268174 |
| 5878 | 36900.37000.37100.37300.38000.46700.488000 | Electrical Switch box fixing | 14d | 2026-08-22 | 2026-09-04 | 5877 |  | 7 Days Work | 9268184 |
| 5879 | 36900.37000.37100.37300.38000.46700.488100 | Fire Fighting painting | 5d | 2026-09-05 | 2026-09-09 | 5878 |  | 7 Days Work | 9268194 |
| 5880 | 36900.37000.37100.37300.38000.46700.488200 | Protection of all flooring, door & window hardware | 5d | 2026-09-10 | 2026-09-14 | 5879 |  | 7 Days Work | 9268204 |
| 5881 | 36900.37000.37100.37300.38000.46700.488300 | 1st coat primer- ceiling 1st & walls | 14d | 2026-09-15 | 2026-09-28 | 5880 |  | 7 Days Work | 9268214 |
| 5882 | 36900.37000.37100.37300.38000.46700.488400 | Wooden Flooring | 5d | 2026-09-29 | 2026-10-03 | 5881 |  | 7 Days Work | 9268224 |
| 5883 | 36900.37000.37100.37300.38000.46700.488500 | Removing of Temporary Railing & installation of Glass Railing | 5d | 2026-09-29 | 2026-10-03 | 5881 |  | 7 Days Work | 9268234 |
| 5884 | 36900.37000.37100.37300.38000.46700.488600 | Tile Grouting | 7d | 2026-09-29 | 2026-10-05 | 5881 |  | 7 Days Work | 9268244 |
| 5885 | 36900.37000.37100.37300.38000.46700.488700 | False Ceiling | 5d | 2026-10-06 | 2026-10-10 | 5884 |  | 7 Days Work | 9268254 |
| 5886 | 36900.37000.37100.37300.38000.46700.488800 | 2nd coat of primer | 10d | 2026-10-11 | 2026-10-20 | 5885 |  | 7 Days Work | 9268264 |
| 5887 | 36900.37000.37100.37300.38000.46700.488900 | Final cutting/polishing of stone flooring | 7d | 2026-10-21 | 2026-10-27 | 5886 |  | 7 Days Work | 9268274 |

| ID | WBS | Task | Duration | Start | Finish | Predecessors | Constraint | Calendar | Unique_Task_ID |
| --- | --- | --- | --- | --- | --- | --- | --- | --- | --- |
| 5888 | 36900.37000.37100.37300.38000.46700.64400 | **Toilet** | 237d | 2026-03-04 | 2026-10-26 |  | start no earlier than 2026-03-04 | 7 Days Work | 9265644 |
| 5889 | 36900.37000.37100.37300.38000.46700.64400.915800 | Toilet_MEP Clearance -1 | 7d | 2026-03-04 | 2026-03-10 | 5852 |  | 7 Days Work | 9276224 |
| 5890 | 36900.37000.37100.37300.38000.46700.64400.915900 | Toilet_Level Marking | 1d | 2026-03-11 | 2026-03-11 | 5889 |  | 7 Days Work | 9276234 |
| 5891 | 36900.37000.37100.37300.38000.46700.64400.916000 | Toilet_Chasing work for Electrical conduit & concealed plumbing | 5d | 2026-03-12 | 2026-03-16 | 5890 |  | 7 Days Work | 9276244 |
| 5892 | 36900.37000.37100.37300.38000.46700.64400.916100 | Toilet_Plumbing work 1st fix | 5d | 2026-03-17 | 2026-03-21 | 5891 |  | 7 Days Work | 9276254 |
| 5893 | 36900.37000.37100.37300.38000.46700.64400.916200 | Toilet_Sleeve/Bore Packing | 5d | 2026-03-22 | 2026-03-26 | 5892 |  | 7 Days Work | 9276264 |
| 5894 | 36900.37000.37100.37300.38000.46700.64400.916300 | Toilet_Waterproofing | 10d | 2026-03-27 | 2026-04-05 | 5893 |  | 7 Days Work | 9276274 |
| 5895 | 36900.37000.37100.37300.38000.46700.64400.916400 | Toilet_Screed | 1d | 2026-04-06 | 2026-04-06 | 5894 |  | 7 Days Work | 9276284 |
| 5896 | 36900.37000.37100.37300.38000.46700.64400.916500 | Toilet_Plumbing 2nd fix | 5d | 2026-04-07 | 2026-04-11 | 5895 |  | 7 Days Work | 9276294 |
| 5897 | 36900.37000.37100.37300.38000.46700.64400.916600 | Toilet_Ledge wall | 5d | 2026-04-12 | 2026-04-16 | 5896 |  | 7 Days Work | 9276304 |
| 5898 | 36900.37000.37100.37300.38000.46700.64400.916700 | Toilet_Cement Plaster | 5d | 2026-04-17 | 2026-04-21 | 5897 |  | 7 Days Work | 9276314 |
| 5899 | 36900.37000.37100.37300.38000.46700.64400.916800 | Toilet_Door Frame | 1d | 2026-04-22 | 2026-04-22 | 5898 |  | 7 Days Work | 9276324 |
| 5900 | 36900.37000.37100.37300.38000.46700.64400.916900 | Toilet_Wash basin & Couter | 3d | 2026-04-23 | 2026-04-25 | 5899 |  | 7 Days Work | 9276334 |
| 5901 | 36900.37000.37100.37300.38000.46700.64400.917000 | Toilet_Wall dado | 20d | 2026-04-26 | 2026-05-15 | 5900 |  | 7 Days Work | 9276344 |
| 5902 | 36900.37000.37100.37300.38000.46700.64400.917100 | Toilet_Granite Work-Ledge wall top | 3d | 2026-05-16 | 2026-05-18 | 5901 |  | 7 Days Work | 9276354 |
| 5903 | 36900.37000.37100.37300.38000.46700.64400.917200 | Toilet_Floor Tilling work | 20d | 2026-05-19 | 2026-06-07 | 5902 |  | 7 Days Work | 9276364 |
| 5904 | 36900.37000.37100.37300.38000.46700.64400.917300 | Toilet_1st row of dado | 5d | 2026-06-08 | 2026-06-12 | 5903 |  | 7 Days Work | 9276374 |
| 5905 | 36900.37000.37100.37300.38000.46700.64400.917400 | Toilet_Window Fixing | 14d | 2026-06-13 | 2026-06-26 | 5904 |  | 7 Days Work | 9276384 |
| 5906 | 36900.37000.37100.37300.38000.46700.64400.917500 | Toilet_Services above False ceiling | 21d | 2026-06-27 | 2026-07-17 | 5905 |  | 7 Days Work | 9276394 |
| 5907 | 36900.37000.37100.37300.38000.46700.64400.917600 | Toilet_False Ceiling framing | 12d | 2026-07-18 | 2026-07-29 | 5906 |  | 7 Days Work | 9276404 |
| 5908 | 36900.37000.37100.37300.38000.46700.64400.917700 | Toilet_Door Frame | 5d | 2026-07-30 | 2026-08-03 | 5907 |  | 7 Days Work | 9276414 |
| 5909 | 36900.37000.37100.37300.38000.46700.64400.917800 | Toilet_Epoxy Tile Grouting | 7d | 2026-09-29 | 2026-10-05 | 5884SS |  | 7 Days Work | 9276424 |
| 5910 | 36900.37000.37100.37300.38000.46700.64400.917900 | Toilet_False ceiling board fixing, CP Sanitary Fixture, Electric Fixture | 21d | 2026-10-06 | 2026-10-26 | 5909 |  | 7 Days Work | 9276434 |
| 5911 | 36900.37000.37100.37300.38000.46800 | **7th Habitable/8th Floor** | 245d | 2026-03-06 | 2026-11-05 |  | start no earlier than 2026-03-06 | 7 Days Work | 9265444 |
| 5912 | 36900.37000.37100.37300.38000.46800.489000 | Post Pour | 7d | 2026-03-06 | 2026-03-12 | 5535FS+15d |  | 7 Days Work | 9268284 |
| 5913 | 36900.37000.37100.37300.38000.46800.489100 | MEP Clearance -1 | 5d | 2026-03-13 | 2026-03-17 | 5912 |  | 7 Days Work | 9268294 |
| 5914 | 36900.37000.37100.37300.38000.46800.489200 | Benchmark | 1d | 2026-03-18 | 2026-03-18 | 5913 |  | 7 Days Work | 9268304 |
| 5915 | 36900.37000.37100.37300.38000.46800.489300 | Temporary Railing | 3d | 2026-03-19 | 2026-03-21 | 5914 |  | 7 Days Work | 9268314 |
| 5916 | 36900.37000.37100.37300.38000.46800.489400 | Blockwork | 10d | 2026-03-22 | 2026-03-31 | 5915 |  | 7 Days Work | 9268324 |
| 5917 | 36900.37000.37100.37300.38000.46800.489500 | MEP Clearance -2 | 10d | 2026-04-01 | 2026-04-10 | 5916 |  | 7 Days Work | 9268334 |
| 5918 | 36900.37000.37100.37300.38000.46800.489600 | Gypsum Plaster | 14d | 2026-04-11 | 2026-04-24 | 5917 |  | 7 Days Work | 9268344 |
| 5919 | 36900.37000.37100.37300.38000.46800.489700 | Kitchen Platform | 3d | 2026-04-25 | 2026-04-27 | 5918 |  | 7 Days Work | 9268354 |
| 5920 | 36900.37000.37100.37300.38000.46800.489800 | Kitchen dado | 7d | 2026-04-28 | 2026-05-04 | 5919 |  | 7 Days Work | 9268364 |
| 5921 | 36900.37000.37100.37300.38000.46800.489900 | Fire Fighting | 5d | 2026-05-05 | 2026-05-09 | 5920 |  | 7 Days Work | 9268374 |
| 5922 | 36900.37000.37100.37300.38000.46800.490000 | Anticapilary | 5d | 2026-05-10 | 2026-05-14 | 5921 |  | 7 Days Work | 9268384 |
| 5923 | 36900.37000.37100.37300.38000.46800.490100 | Stone Laying | 10d | 2026-06-17 | 2026-06-26 | 5963 |  | 7 Days Work | 9268394 |
| 5924 | 36900.37000.37100.37300.38000.46800.490200 | Tiles Laying | 7d | 2026-06-17 | 2026-06-23 | 5963 |  | 7 Days Work | 9268404 |
| 5925 | 36900.37000.37100.37300.38000.46800.490300 | 1st cutting/polishing of stone flooring | 7d | 2026-06-24 | 2026-06-30 | 5924 |  | 7 Days Work | 9268414 |
| 5926 | 36900.37000.37100.37300.38000.46800.490400 | Tiles/Stone skirting | 5d | 2026-07-01 | 2026-07-05 | 5925 |  | 7 Days Work | 9268424 |
| 5927 | 36900.37000.37100.37300.38000.46800.490500 | Protechtion sheet | 1d | 2026-07-06 | 2026-07-06 | 5926 |  | 7 Days Work | 9268434 |
| 5928 | 36900.37000.37100.37300.38000.46800.490600 | Installation of Temporary Door | 1d | 2026-07-07 | 2026-07-07 | 5927 |  | 7 Days Work | 9268444 |
| 5929 | 36900.37000.37100.37300.38000.46800.490700 | Fixing of window tracks | 5d | 2026-07-08 | 2026-07-12 | 5928 |  | 7 Days Work | 9268454 |
| 5930 | 36900.37000.37100.37300.38000.46800.490800 | Wire Pulling | 7d | 2026-07-13 | 2026-07-19 | 5929 |  | 7 Days Work | 9268464 |
| 5931 | 36900.37000.37100.37300.38000.46800.490900 | Gypsum Remaining | 5d | 2026-07-20 | 2026-07-24 | 5930 |  | 7 Days Work | 9268474 |
| 5932 | 36900.37000.37100.37300.38000.46800.491000 | Fixing of windoow shutter | 5d | 2026-07-25 | 2026-07-29 | 5931 |  | 7 Days Work | 9268484 |
| 5933 | 36900.37000.37100.37300.38000.46800.491100 | Putty Works - walls & ceiling | 15d | 2026-07-30 | 2026-08-13 | 5932 |  | 7 Days Work | 9268494 |
| 5934 | 36900.37000.37100.37300.38000.46800.491200 | False Ceiling- Framing | 10d | 2026-08-14 | 2026-08-23 | 5933 |  | 7 Days Work | 9268504 |
| 5935 | 36900.37000.37100.37300.38000.46800.491300 | Pre Hung Door | 3d | 2026-08-24 | 2026-08-26 | 5934 |  | 7 Days Work | 9268514 |
| 5936 | 36900.37000.37100.37300.38000.46800.491400 | Protechtion sheet | 2d | 2026-08-27 | 2026-08-28 | 5935 |  | 7 Days Work | 9268524 |
| 5937 | 36900.37000.37100.37300.38000.46800.491500 | Skirting near door | 2d | 2026-08-29 | 2026-08-30 | 5936 |  | 7 Days Work | 9268534 |
| 5938 | 36900.37000.37100.37300.38000.46800.491600 | Electrical Switch box fixing | 14d | 2026-08-31 | 2026-09-13 | 5937 |  | 7 Days Work | 9268544 |
| 5939 | 36900.37000.37100.37300.38000.46800.491700 | Fire Fighting painting | 5d | 2026-09-14 | 2026-09-18 | 5938 |  | 7 Days Work | 9268554 |
| 5940 | 36900.37000.37100.37300.38000.46800.491800 | Protection of all flooring, door & window hardware | 5d | 2026-09-19 | 2026-09-23 | 5939 |  | 7 Days Work | 9268564 |
| 5941 | 36900.37000.37100.37300.38000.46800.491900 | 1st coat primer- ceiling 1st & walls | 14d | 2026-09-24 | 2026-10-07 | 5940 |  | 7 Days Work | 9268574 |
| 5942 | 36900.37000.37100.37300.38000.46800.492000 | Wooden Flooring | 5d | 2026-10-08 | 2026-10-12 | 5941 |  | 7 Days Work | 9268584 |
| 5943 | 36900.37000.37100.37300.38000.46800.492100 | Removing of Temporary Railing & installation of Glass Railing | 5d | 2026-10-08 | 2026-10-12 | 5941 |  | 7 Days Work | 9268594 |
| 5944 | 36900.37000.37100.37300.38000.46800.492200 | Tile Grouting | 7d | 2026-10-08 | 2026-10-14 | 5941 |  | 7 Days Work | 9268604 |
| 5945 | 36900.37000.37100.37300.38000.46800.492300 | False Ceiling | 5d | 2026-10-15 | 2026-10-19 | 5944 |  | 7 Days Work | 9268614 |
| 5946 | 36900.37000.37100.37300.38000.46800.492400 | 2nd coat of primer | 10d | 2026-10-20 | 2026-10-29 | 5945 |  | 7 Days Work | 9268624 |
| 5947 | 36900.37000.37100.37300.38000.46800.492500 | Final cutting/polishing of stone flooring | 7d | 2026-10-30 | 2026-11-05 | 5946 |  | 7 Days Work | 9268634 |

| ID | WBS | Task | Duration | Start | Finish | Predecessors | Constraint | Calendar | Unique_Task_ID |
| --- | --- | --- | --- | --- | --- | --- | --- | --- | --- |
| 5948 | 36900.37000.37100.37300.38000.46800.64300 | **Toilet** | 237d | 2026-03-13 | 2026-11-04 |  | start no earlier than 2026-03-13 | 7 Days Work | 9265654 |
| 5949 | 36900.37000.37100.37300.38000.46800.64300.918000 | Toilet_MEP Clearance -1 | 7d | 2026-03-13 | 2026-03-19 | 5912 |  | 7 Days Work | 9276444 |
| 5950 | 36900.37000.37100.37300.38000.46800.64300.918100 | Toilet_Level Marking | 1d | 2026-03-20 | 2026-03-20 | 5949 |  | 7 Days Work | 9276454 |
| 5951 | 36900.37000.37100.37300.38000.46800.64300.918200 | Toilet_Chasing work for Electrical conduit & concealed plumbing | 5d | 2026-03-21 | 2026-03-25 | 5950 |  | 7 Days Work | 9276464 |
| 5952 | 36900.37000.37100.37300.38000.46800.64300.918300 | Toilet_Plumbing work 1st fix | 5d | 2026-03-26 | 2026-03-30 | 5951 |  | 7 Days Work | 9276474 |
| 5953 | 36900.37000.37100.37300.38000.46800.64300.918400 | Toilet_Sleeve/Bore Packing | 5d | 2026-03-31 | 2026-04-04 | 5952 |  | 7 Days Work | 9276484 |
| 5954 | 36900.37000.37100.37300.38000.46800.64300.918500 | Toilet_Waterproofing | 10d | 2026-04-05 | 2026-04-14 | 5953 |  | 7 Days Work | 9276494 |
| 5955 | 36900.37000.37100.37300.38000.46800.64300.918600 | Toilet_Screed | 1d | 2026-04-15 | 2026-04-15 | 5954 |  | 7 Days Work | 9276504 |
| 5956 | 36900.37000.37100.37300.38000.46800.64300.918700 | Toilet_Plumbing 2nd fix | 5d | 2026-04-16 | 2026-04-20 | 5955 |  | 7 Days Work | 9276514 |
| 5957 | 36900.37000.37100.37300.38000.46800.64300.918800 | Toilet_Ledge wall | 5d | 2026-04-21 | 2026-04-25 | 5956 |  | 7 Days Work | 9276524 |
| 5958 | 36900.37000.37100.37300.38000.46800.64300.918900 | Toilet_Cement Plaster | 5d | 2026-04-26 | 2026-04-30 | 5957 |  | 7 Days Work | 9276534 |
| 5959 | 36900.37000.37100.37300.38000.46800.64300.919000 | Toilet_Door Frame | 1d | 2026-05-01 | 2026-05-01 | 5958 |  | 7 Days Work | 9276544 |
| 5960 | 36900.37000.37100.37300.38000.46800.64300.919100 | Toilet_Wash basin & Couter | 3d | 2026-05-02 | 2026-05-04 | 5959 |  | 7 Days Work | 9276554 |
| 5961 | 36900.37000.37100.37300.38000.46800.64300.919200 | Toilet_Wall dado | 20d | 2026-05-05 | 2026-05-24 | 5960 |  | 7 Days Work | 9276564 |
| 5962 | 36900.37000.37100.37300.38000.46800.64300.919300 | Toilet_Granite Work-Ledge wall top | 3d | 2026-05-25 | 2026-05-27 | 5961 |  | 7 Days Work | 9276574 |
| 5963 | 36900.37000.37100.37300.38000.46800.64300.919400 | Toilet_Floor Tilling work | 20d | 2026-05-28 | 2026-06-16 | 5962 |  | 7 Days Work | 9276584 |
| 5964 | 36900.37000.37100.37300.38000.46800.64300.919500 | Toilet_1st row of dado | 5d | 2026-06-17 | 2026-06-21 | 5963 |  | 7 Days Work | 9276594 |
| 5965 | 36900.37000.37100.37300.38000.46800.64300.919600 | Toilet_Window Fixing | 14d | 2026-06-22 | 2026-07-05 | 5964 |  | 7 Days Work | 9276604 |
| 5966 | 36900.37000.37100.37300.38000.46800.64300.919700 | Toilet_Services above False ceiling | 21d | 2026-07-06 | 2026-07-26 | 5965 |  | 7 Days Work | 9276614 |
| 5967 | 36900.37000.37100.37300.38000.46800.64300.919800 | Toilet_False Ceiling framing | 12d | 2026-07-27 | 2026-08-07 | 5966 |  | 7 Days Work | 9276624 |
| 5968 | 36900.37000.37100.37300.38000.46800.64300.919900 | Toilet_Door Frame | 5d | 2026-08-08 | 2026-08-12 | 5967 |  | 7 Days Work | 9276634 |
| 5969 | 36900.37000.37100.37300.38000.46800.64300.920000 | Toilet_Epoxy Tile Grouting | 7d | 2026-10-08 | 2026-10-14 | 5944SS |  | 7 Days Work | 9276644 |
| 5970 | 36900.37000.37100.37300.38000.46800.64300.920100 | Toilet_False ceiling board fixing, CP Sanitary Fixture, Electric Fixture | 21d | 2026-10-15 | 2026-11-04 | 5969 |  | 7 Days Work | 9276654 |
| 5971 | 36900.37000.37100.37300.38000.46900 | **8th Habitable/9th Floor** | 245d | 2026-03-15 | 2026-11-14 |  | start no earlier than 2026-03-15 | 7 Days Work | 9265454 |
| 5972 | 36900.37000.37100.37300.38000.46900.492600 | Post Pour | 7d | 2026-03-15 | 2026-03-21 | 5536FS+15d |  | 7 Days Work | 9268644 |
| 5973 | 36900.37000.37100.37300.38000.46900.492700 | MEP Clearance -1 | 5d | 2026-03-22 | 2026-03-26 | 5972 |  | 7 Days Work | 9268654 |
| 5974 | 36900.37000.37100.37300.38000.46900.492800 | Benchmark | 1d | 2026-03-27 | 2026-03-27 | 5973 |  | 7 Days Work | 9268664 |
| 5975 | 36900.37000.37100.37300.38000.46900.492900 | Temporary Railing | 3d | 2026-03-28 | 2026-03-30 | 5974 |  | 7 Days Work | 9268674 |
| 5976 | 36900.37000.37100.37300.38000.46900.493000 | Blockwork | 10d | 2026-03-31 | 2026-04-09 | 5975 |  | 7 Days Work | 9268684 |
| 5977 | 36900.37000.37100.37300.38000.46900.493100 | MEP Clearance -2 | 10d | 2026-04-10 | 2026-04-19 | 5976 |  | 7 Days Work | 9268694 |
| 5978 | 36900.37000.37100.37300.38000.46900.493200 | Gypsum Plaster | 14d | 2026-04-20 | 2026-05-03 | 5977 |  | 7 Days Work | 9268704 |
| 5979 | 36900.37000.37100.37300.38000.46900.493300 | Kitchen Platform | 3d | 2026-05-04 | 2026-05-06 | 5978 |  | 7 Days Work | 9268714 |
| 5980 | 36900.37000.37100.37300.38000.46900.493400 | Kitchen dado | 7d | 2026-05-07 | 2026-05-13 | 5979 |  | 7 Days Work | 9268724 |
| 5981 | 36900.37000.37100.37300.38000.46900.493500 | Fire Fighting | 5d | 2026-05-14 | 2026-05-18 | 5980 |  | 7 Days Work | 9268734 |
| 5982 | 36900.37000.37100.37300.38000.46900.493600 | Anticapilary | 5d | 2026-05-19 | 2026-05-23 | 5981 |  | 7 Days Work | 9268744 |
| 5983 | 36900.37000.37100.37300.38000.46900.493700 | Stone Laying | 10d | 2026-06-26 | 2026-07-05 | 6023 |  | 7 Days Work | 9268754 |
| 5984 | 36900.37000.37100.37300.38000.46900.493800 | Tiles Laying | 7d | 2026-06-26 | 2026-07-02 | 6023 |  | 7 Days Work | 9268764 |
| 5985 | 36900.37000.37100.37300.38000.46900.493900 | 1st cutting/polishing of stone flooring | 7d | 2026-07-03 | 2026-07-09 | 5984 |  | 7 Days Work | 9268774 |
| 5986 | 36900.37000.37100.37300.38000.46900.494000 | Tiles/Stone skirting | 5d | 2026-07-10 | 2026-07-14 | 5985 |  | 7 Days Work | 9268784 |
| 5987 | 36900.37000.37100.37300.38000.46900.494100 | Protechtion sheet | 1d | 2026-07-15 | 2026-07-15 | 5986 |  | 7 Days Work | 9268794 |
| 5988 | 36900.37000.37100.37300.38000.46900.494200 | Installation of Temporary Door | 1d | 2026-07-16 | 2026-07-16 | 5987 |  | 7 Days Work | 9268804 |
| 5989 | 36900.37000.37100.37300.38000.46900.494300 | Fixing of window tracks | 5d | 2026-07-17 | 2026-07-21 | 5988 |  | 7 Days Work | 9268814 |
| 5990 | 36900.37000.37100.37300.38000.46900.494400 | Wire Pulling | 7d | 2026-07-22 | 2026-07-28 | 5989 |  | 7 Days Work | 9268824 |
| 5991 | 36900.37000.37100.37300.38000.46900.494500 | Gypsum Remaining | 5d | 2026-07-29 | 2026-08-02 | 5990 |  | 7 Days Work | 9268834 |
| 5992 | 36900.37000.37100.37300.38000.46900.494600 | Fixing of windoow shutter | 5d | 2026-08-03 | 2026-08-07 | 5991 |  | 7 Days Work | 9268844 |
| 5993 | 36900.37000.37100.37300.38000.46900.494700 | Putty Works - walls & ceiling | 15d | 2026-08-08 | 2026-08-22 | 5992 |  | 7 Days Work | 9268854 |
| 5994 | 36900.37000.37100.37300.38000.46900.494800 | False Ceiling- Framing | 10d | 2026-08-23 | 2026-09-01 | 5993 |  | 7 Days Work | 9268864 |
| 5995 | 36900.37000.37100.37300.38000.46900.494900 | Pre Hung Door | 3d | 2026-09-02 | 2026-09-04 | 5994 |  | 7 Days Work | 9268874 |
| 5996 | 36900.37000.37100.37300.38000.46900.495000 | Protechtion sheet | 2d | 2026-09-05 | 2026-09-06 | 5995 |  | 7 Days Work | 9268884 |
| 5997 | 36900.37000.37100.37300.38000.46900.495100 | Skirting near door | 2d | 2026-09-07 | 2026-09-08 | 5996 |  | 7 Days Work | 9268894 |
| 5998 | 36900.37000.37100.37300.38000.46900.495200 | Electrical Switch box fixing | 14d | 2026-09-09 | 2026-09-22 | 5997 |  | 7 Days Work | 9268904 |
| 5999 | 36900.37000.37100.37300.38000.46900.495300 | Fire Fighting painting | 5d | 2026-09-23 | 2026-09-27 | 5998 |  | 7 Days Work | 9268914 |
| 6000 | 36900.37000.37100.37300.38000.46900.495400 | Protection of all flooring, door & window hardware | 5d | 2026-09-28 | 2026-10-02 | 5999 |  | 7 Days Work | 9268924 |
| 6001 | 36900.37000.37100.37300.38000.46900.495500 | 1st coat primer- ceiling 1st & walls | 14d | 2026-10-03 | 2026-10-16 | 6000 |  | 7 Days Work | 9268934 |
| 6002 | 36900.37000.37100.37300.38000.46900.495600 | Wooden Flooring | 5d | 2026-10-17 | 2026-10-21 | 6001 |  | 7 Days Work | 9268944 |
| 6003 | 36900.37000.37100.37300.38000.46900.495700 | Removing of Temporary Railing & installation of Glass Railing | 5d | 2026-10-17 | 2026-10-21 | 6001 |  | 7 Days Work | 9268954 |
| 6004 | 36900.37000.37100.37300.38000.46900.495800 | Tile Grouting | 7d | 2026-10-17 | 2026-10-23 | 6001 |  | 7 Days Work | 9268964 |
| 6005 | 36900.37000.37100.37300.38000.46900.495900 | False Ceiling | 5d | 2026-10-24 | 2026-10-28 | 6004 |  | 7 Days Work | 9268974 |
| 6006 | 36900.37000.37100.37300.38000.46900.496000 | 2nd coat of primer | 10d | 2026-10-29 | 2026-11-07 | 6005 |  | 7 Days Work | 9268984 |
| 6007 | 36900.37000.37100.37300.38000.46900.496100 | Final cutting/polishing of stone flooring | 7d | 2026-11-08 | 2026-11-14 | 6006 |  | 7 Days Work | 9268994 |

| ID | WBS | Task | Duration | Start | Finish | Predecessors | Constraint | Calendar | Unique_Task_ID |
| --- | --- | --- | --- | --- | --- | --- | --- | --- | --- |
| 6008 | 36900.37000.37100.37300.38000.46900.64200 | **Toilet** | 237d | 2026-03-22 | 2026-11-13 |  | start no earlier than 2026-03-22 | 7 Days Work | 9265664 |
| 6009 | 36900.37000.37100.37300.38000.46900.64200.920200 | Toilet_MEP Clearance -1 | 7d | 2026-03-22 | 2026-03-28 | 5972 |  | 7 Days Work | 9276664 |
| 6010 | 36900.37000.37100.37300.38000.46900.64200.920300 | Toilet_Level Marking | 1d | 2026-03-29 | 2026-03-29 | 6009 |  | 7 Days Work | 9276674 |
| 6011 | 36900.37000.37100.37300.38000.46900.64200.920400 | Toilet_Chasing work for Electrical conduit & concealed plumbing | 5d | 2026-03-30 | 2026-04-03 | 6010 |  | 7 Days Work | 9276684 |
| 6012 | 36900.37000.37100.37300.38000.46900.64200.920500 | Toilet_Plumbing work 1st fix | 5d | 2026-04-04 | 2026-04-08 | 6011 |  | 7 Days Work | 9276694 |
| 6013 | 36900.37000.37100.37300.38000.46900.64200.920600 | Toilet_Sleeve/Bore Packing | 5d | 2026-04-09 | 2026-04-13 | 6012 |  | 7 Days Work | 9276704 |
| 6014 | 36900.37000.37100.37300.38000.46900.64200.920700 | Toilet_Waterproofing | 10d | 2026-04-14 | 2026-04-23 | 6013 |  | 7 Days Work | 9276714 |
| 6015 | 36900.37000.37100.37300.38000.46900.64200.920800 | Toilet_Screed | 1d | 2026-04-24 | 2026-04-24 | 6014 |  | 7 Days Work | 9276724 |
| 6016 | 36900.37000.37100.37300.38000.46900.64200.920900 | Toilet_Plumbing 2nd fix | 5d | 2026-04-25 | 2026-04-29 | 6015 |  | 7 Days Work | 9276734 |
| 6017 | 36900.37000.37100.37300.38000.46900.64200.921000 | Toilet_Ledge wall | 5d | 2026-04-30 | 2026-05-04 | 6016 |  | 7 Days Work | 9276744 |
| 6018 | 36900.37000.37100.37300.38000.46900.64200.921100 | Toilet_Cement Plaster | 5d | 2026-05-05 | 2026-05-09 | 6017 |  | 7 Days Work | 9276754 |
| 6019 | 36900.37000.37100.37300.38000.46900.64200.921200 | Toilet_Door Frame | 1d | 2026-05-10 | 2026-05-10 | 6018 |  | 7 Days Work | 9276764 |
| 6020 | 36900.37000.37100.37300.38000.46900.64200.921300 | Toilet_Wash basin & Couter | 3d | 2026-05-11 | 2026-05-13 | 6019 |  | 7 Days Work | 9276774 |
| 6021 | 36900.37000.37100.37300.38000.46900.64200.921400 | Toilet_Wall dado | 20d | 2026-05-14 | 2026-06-02 | 6020 |  | 7 Days Work | 9276784 |
| 6022 | 36900.37000.37100.37300.38000.46900.64200.921500 | Toilet_Granite Work-Ledge wall top | 3d | 2026-06-03 | 2026-06-05 | 6021 |  | 7 Days Work | 9276794 |
| 6023 | 36900.37000.37100.37300.38000.46900.64200.921600 | Toilet_Floor Tilling work | 20d | 2026-06-06 | 2026-06-25 | 6022 |  | 7 Days Work | 9276804 |
| 6024 | 36900.37000.37100.37300.38000.46900.64200.921700 | Toilet_1st row of dado | 5d | 2026-06-26 | 2026-06-30 | 6023 |  | 7 Days Work | 9276814 |
| 6025 | 36900.37000.37100.37300.38000.46900.64200.921800 | Toilet_Window Fixing | 14d | 2026-07-01 | 2026-07-14 | 6024 |  | 7 Days Work | 9276824 |
| 6026 | 36900.37000.37100.37300.38000.46900.64200.921900 | Toilet_Services above False ceiling | 21d | 2026-07-15 | 2026-08-04 | 6025 |  | 7 Days Work | 9276834 |
| 6027 | 36900.37000.37100.37300.38000.46900.64200.922000 | Toilet_False Ceiling framing | 12d | 2026-08-05 | 2026-08-16 | 6026 |  | 7 Days Work | 9276844 |
| 6028 | 36900.37000.37100.37300.38000.46900.64200.922100 | Toilet_Door Frame | 5d | 2026-08-17 | 2026-08-21 | 6027 |  | 7 Days Work | 9276854 |
| 6029 | 36900.37000.37100.37300.38000.46900.64200.922200 | Toilet_Epoxy Tile Grouting | 7d | 2026-10-17 | 2026-10-23 | 6004SS |  | 7 Days Work | 9276864 |
| 6030 | 36900.37000.37100.37300.38000.46900.64200.922300 | Toilet_False ceiling board fixing, CP Sanitary Fixture, Electric Fixture | 21d | 2026-10-24 | 2026-11-13 | 6029 |  | 7 Days Work | 9276874 |
| 6031 | 36900.37000.37100.37300.38000.47000 | **9th Habitable/10th Floor** | 245d | 2026-03-27 | 2026-11-26 |  | start no earlier than 2026-03-27 | 7 Days Work | 9265464 |
| 6032 | 36900.37000.37100.37300.38000.47000.496200 | Post Pour | 7d | 2026-03-27 | 2026-04-02 | 5537FS+15d |  | 7 Days Work | 9269004 |
| 6033 | 36900.37000.37100.37300.38000.47000.496300 | MEP Clearance -1 | 5d | 2026-04-03 | 2026-04-07 | 6032 |  | 7 Days Work | 9269014 |
| 6034 | 36900.37000.37100.37300.38000.47000.496400 | Benchmark | 1d | 2026-04-08 | 2026-04-08 | 6033 |  | 7 Days Work | 9269024 |
| 6035 | 36900.37000.37100.37300.38000.47000.496500 | Temporary Railing | 3d | 2026-04-09 | 2026-04-11 | 6034 |  | 7 Days Work | 9269034 |
| 6036 | 36900.37000.37100.37300.38000.47000.496600 | Blockwork | 10d | 2026-04-12 | 2026-04-21 | 6035 |  | 7 Days Work | 9269044 |
| 6037 | 36900.37000.37100.37300.38000.47000.496700 | MEP Clearance -2 | 10d | 2026-04-22 | 2026-05-01 | 6036 |  | 7 Days Work | 9269054 |
| 6038 | 36900.37000.37100.37300.38000.47000.496800 | Gypsum Plaster | 14d | 2026-05-02 | 2026-05-15 | 6037 |  | 7 Days Work | 9269064 |
| 6039 | 36900.37000.37100.37300.38000.47000.496900 | Kitchen Platform | 3d | 2026-05-16 | 2026-05-18 | 6038 |  | 7 Days Work | 9269074 |
| 6040 | 36900.37000.37100.37300.38000.47000.497000 | Kitchen dado | 7d | 2026-05-19 | 2026-05-25 | 6039 |  | 7 Days Work | 9269084 |
| 6041 | 36900.37000.37100.37300.38000.47000.497100 | Fire Fighting | 5d | 2026-05-26 | 2026-05-30 | 6040 |  | 7 Days Work | 9269094 |
| 6042 | 36900.37000.37100.37300.38000.47000.497200 | Anticapilary | 5d | 2026-05-31 | 2026-06-04 | 6041 |  | 7 Days Work | 9269104 |
| 6043 | 36900.37000.37100.37300.38000.47000.497300 | Stone Laying | 10d | 2026-07-08 | 2026-07-17 | 6083 |  | 7 Days Work | 9269114 |
| 6044 | 36900.37000.37100.37300.38000.47000.497400 | Tiles Laying | 7d | 2026-07-08 | 2026-07-14 | 6083 |  | 7 Days Work | 9269124 |
| 6045 | 36900.37000.37100.37300.38000.47000.497500 | 1st cutting/polishing of stone flooring | 7d | 2026-07-15 | 2026-07-21 | 6044 |  | 7 Days Work | 9269134 |
| 6046 | 36900.37000.37100.37300.38000.47000.497600 | Tiles/Stone skirting | 5d | 2026-07-22 | 2026-07-26 | 6045 |  | 7 Days Work | 9269144 |
| 6047 | 36900.37000.37100.37300.38000.47000.497700 | Protechtion sheet | 1d | 2026-07-27 | 2026-07-27 | 6046 |  | 7 Days Work | 9269154 |
| 6048 | 36900.37000.37100.37300.38000.47000.497800 | Installation of Temporary Door | 1d | 2026-07-28 | 2026-07-28 | 6047 |  | 7 Days Work | 9269164 |
| 6049 | 36900.37000.37100.37300.38000.47000.497900 | Fixing of window tracks | 5d | 2026-07-29 | 2026-08-02 | 6048 |  | 7 Days Work | 9269174 |
| 6050 | 36900.37000.37100.37300.38000.47000.498000 | Wire Pulling | 7d | 2026-08-03 | 2026-08-09 | 6049 |  | 7 Days Work | 9269184 |
| 6051 | 36900.37000.37100.37300.38000.47000.498100 | Gypsum Remaining | 5d | 2026-08-10 | 2026-08-14 | 6050 |  | 7 Days Work | 9269194 |
| 6052 | 36900.37000.37100.37300.38000.47000.498200 | Fixing of windoow shutter | 5d | 2026-08-15 | 2026-08-19 | 6051 |  | 7 Days Work | 9269204 |
| 6053 | 36900.37000.37100.37300.38000.47000.498300 | Putty Works - walls & ceiling | 15d | 2026-08-20 | 2026-09-03 | 6052 |  | 7 Days Work | 9269214 |
| 6054 | 36900.37000.37100.37300.38000.47000.498400 | False Ceiling- Framing | 10d | 2026-09-04 | 2026-09-13 | 6053 |  | 7 Days Work | 9269224 |
| 6055 | 36900.37000.37100.37300.38000.47000.498500 | Pre Hung Door | 3d | 2026-09-14 | 2026-09-16 | 6054 |  | 7 Days Work | 9269234 |
| 6056 | 36900.37000.37100.37300.38000.47000.498600 | Protechtion sheet | 2d | 2026-09-17 | 2026-09-18 | 6055 |  | 7 Days Work | 9269244 |
| 6057 | 36900.37000.37100.37300.38000.47000.498700 | Skirting near door | 2d | 2026-09-19 | 2026-09-20 | 6056 |  | 7 Days Work | 9269254 |
| 6058 | 36900.37000.37100.37300.38000.47000.498800 | Electrical Switch box fixing | 14d | 2026-09-21 | 2026-10-04 | 6057 |  | 7 Days Work | 9269264 |
| 6059 | 36900.37000.37100.37300.38000.47000.498900 | Fire Fighting painting | 5d | 2026-10-05 | 2026-10-09 | 6058 |  | 7 Days Work | 9269274 |
| 6060 | 36900.37000.37100.37300.38000.47000.499000 | Protection of all flooring, door & window hardware | 5d | 2026-10-10 | 2026-10-14 | 6059 |  | 7 Days Work | 9269284 |
| 6061 | 36900.37000.37100.37300.38000.47000.499100 | 1st coat primer- ceiling 1st & walls | 14d | 2026-10-15 | 2026-10-28 | 6060 |  | 7 Days Work | 9269294 |
| 6062 | 36900.37000.37100.37300.38000.47000.499200 | Wooden Flooring | 5d | 2026-10-29 | 2026-11-02 | 6061 |  | 7 Days Work | 9269304 |
| 6063 | 36900.37000.37100.37300.38000.47000.499300 | Removing of Temporary Railing & installation of Glass Railing | 5d | 2026-10-29 | 2026-11-02 | 6061 |  | 7 Days Work | 9269314 |
| 6064 | 36900.37000.37100.37300.38000.47000.499400 | Tile Grouting | 7d | 2026-10-29 | 2026-11-04 | 6061 |  | 7 Days Work | 9269324 |
| 6065 | 36900.37000.37100.37300.38000.47000.499500 | False Ceiling | 5d | 2026-11-05 | 2026-11-09 | 6064 |  | 7 Days Work | 9269334 |
| 6066 | 36900.37000.37100.37300.38000.47000.499600 | 2nd coat of primer | 10d | 2026-11-10 | 2026-11-19 | 6065 |  | 7 Days Work | 9269344 |
| 6067 | 36900.37000.37100.37300.38000.47000.499700 | Final cutting/polishing of stone flooring | 7d | 2026-11-20 | 2026-11-26 | 6066 |  | 7 Days Work | 9269354 |

| ID | WBS | Task | Duration | Start | Finish | Predecessors | Constraint | Calendar | Unique_Task_ID |
| --- | --- | --- | --- | --- | --- | --- | --- | --- | --- |
| 6068 | 36900.37000.37100.37300.38000.47000.64100 | **Toilet** | 237d | 2026-04-03 | 2026-11-25 |  | start no earlier than 2026-04-03 | 7 Days Work | 9265674 |
| 6069 | 36900.37000.37100.37300.38000.47000.64100.922400 | Toilet_MEP Clearance -1 | 7d | 2026-04-03 | 2026-04-09 | 6032 |  | 7 Days Work | 9276884 |
| 6070 | 36900.37000.37100.37300.38000.47000.64100.922500 | Toilet_Level Marking | 1d | 2026-04-10 | 2026-04-10 | 6069 |  | 7 Days Work | 9276894 |
| 6071 | 36900.37000.37100.37300.38000.47000.64100.922600 | Toilet_Chasing work for Electrical conduit & concealed plumbing | 5d | 2026-04-11 | 2026-04-15 | 6070 |  | 7 Days Work | 9276904 |
| 6072 | 36900.37000.37100.37300.38000.47000.64100.922700 | Toilet_Plumbing work 1st fix | 5d | 2026-04-16 | 2026-04-20 | 6071 |  | 7 Days Work | 9276914 |
| 6073 | 36900.37000.37100.37300.38000.47000.64100.922800 | Toilet_Sleeve/Bore Packing | 5d | 2026-04-21 | 2026-04-25 | 6072 |  | 7 Days Work | 9276924 |
| 6074 | 36900.37000.37100.37300.38000.47000.64100.922900 | Toilet_Waterproofing | 10d | 2026-04-26 | 2026-05-05 | 6073 |  | 7 Days Work | 9276934 |
| 6075 | 36900.37000.37100.37300.38000.47000.64100.923000 | Toilet_Screed | 1d | 2026-05-06 | 2026-05-06 | 6074 |  | 7 Days Work | 9276944 |
| 6076 | 36900.37000.37100.37300.38000.47000.64100.923100 | Toilet_Plumbing 2nd fix | 5d | 2026-05-07 | 2026-05-11 | 6075 |  | 7 Days Work | 9276954 |
| 6077 | 36900.37000.37100.37300.38000.47000.64100.923200 | Toilet_Ledge wall | 5d | 2026-05-12 | 2026-05-16 | 6076 |  | 7 Days Work | 9276964 |
| 6078 | 36900.37000.37100.37300.38000.47000.64100.923300 | Toilet_Cement Plaster | 5d | 2026-05-17 | 2026-05-21 | 6077 |  | 7 Days Work | 9276974 |
| 6079 | 36900.37000.37100.37300.38000.47000.64100.923400 | Toilet_Door Frame | 1d | 2026-05-22 | 2026-05-22 | 6078 |  | 7 Days Work | 9276984 |
| 6080 | 36900.37000.37100.37300.38000.47000.64100.923500 | Toilet_Wash basin & Couter | 3d | 2026-05-23 | 2026-05-25 | 6079 |  | 7 Days Work | 9276994 |
| 6081 | 36900.37000.37100.37300.38000.47000.64100.923600 | Toilet_Wall dado | 20d | 2026-05-26 | 2026-06-14 | 6080 |  | 7 Days Work | 9277004 |
| 6082 | 36900.37000.37100.37300.38000.47000.64100.923700 | Toilet_Granite Work-Ledge wall top | 3d | 2026-06-15 | 2026-06-17 | 6081 |  | 7 Days Work | 9277014 |
| 6083 | 36900.37000.37100.37300.38000.47000.64100.923800 | Toilet_Floor Tilling work | 20d | 2026-06-18 | 2026-07-07 | 6082 |  | 7 Days Work | 9277024 |
| 6084 | 36900.37000.37100.37300.38000.47000.64100.923900 | Toilet_1st row of dado | 5d | 2026-07-08 | 2026-07-12 | 6083 |  | 7 Days Work | 9277034 |
| 6085 | 36900.37000.37100.37300.38000.47000.64100.924000 | Toilet_Window Fixing | 14d | 2026-07-13 | 2026-07-26 | 6084 |  | 7 Days Work | 9277044 |
| 6086 | 36900.37000.37100.37300.38000.47000.64100.924100 | Toilet_Services above False ceiling | 21d | 2026-07-27 | 2026-08-16 | 6085 |  | 7 Days Work | 9277054 |
| 6087 | 36900.37000.37100.37300.38000.47000.64100.924200 | Toilet_False Ceiling framing | 12d | 2026-08-17 | 2026-08-28 | 6086 |  | 7 Days Work | 9277064 |
| 6088 | 36900.37000.37100.37300.38000.47000.64100.924300 | Toilet_Door Frame | 5d | 2026-08-29 | 2026-09-02 | 6087 |  | 7 Days Work | 9277074 |
| 6089 | 36900.37000.37100.37300.38000.47000.64100.924400 | Toilet_Epoxy Tile Grouting | 7d | 2026-10-29 | 2026-11-04 | 6064SS |  | 7 Days Work | 9277084 |
| 6090 | 36900.37000.37100.37300.38000.47000.64100.924500 | Toilet_False ceiling board fixing, CP Sanitary Fixture, Electric Fixture | 21d | 2026-11-05 | 2026-11-25 | 6089 |  | 7 Days Work | 9277094 |
| 6091 | 36900.37000.37100.37300.38000.47100 | **10th Habitable/11th Floor** | 245d | 2026-04-05 | 2026-12-05 |  | start no earlier than 2026-04-05 | 7 Days Work | 9265474 |
| 6092 | 36900.37000.37100.37300.38000.47100.499800 | Post Pour | 7d | 2026-04-05 | 2026-04-11 | 5538FS+15d |  | 7 Days Work | 9269364 |
| 6093 | 36900.37000.37100.37300.38000.47100.499900 | MEP Clearance -1 | 5d | 2026-04-12 | 2026-04-16 | 6092 |  | 7 Days Work | 9269374 |
| 6094 | 36900.37000.37100.37300.38000.47100.500000 | Benchmark | 1d | 2026-04-17 | 2026-04-17 | 6093 |  | 7 Days Work | 9269384 |
| 6095 | 36900.37000.37100.37300.38000.47100.500100 | Temporary Railing | 3d | 2026-04-18 | 2026-04-20 | 6094 |  | 7 Days Work | 9269394 |
| 6096 | 36900.37000.37100.37300.38000.47100.500200 | Blockwork | 10d | 2026-04-21 | 2026-04-30 | 6095 |  | 7 Days Work | 9269404 |
| 6097 | 36900.37000.37100.37300.38000.47100.500300 | MEP Clearance -2 | 10d | 2026-05-01 | 2026-05-10 | 6096 |  | 7 Days Work | 9269414 |
| 6098 | 36900.37000.37100.37300.38000.47100.500400 | Gypsum Plaster | 14d | 2026-05-11 | 2026-05-24 | 6097 |  | 7 Days Work | 9269424 |
| 6099 | 36900.37000.37100.37300.38000.47100.500500 | Kitchen Platform | 3d | 2026-05-25 | 2026-05-27 | 6098 |  | 7 Days Work | 9269434 |
| 6100 | 36900.37000.37100.37300.38000.47100.500600 | Kitchen dado | 7d | 2026-05-28 | 2026-06-03 | 6099 |  | 7 Days Work | 9269444 |
| 6101 | 36900.37000.37100.37300.38000.47100.500700 | Fire Fighting | 5d | 2026-06-04 | 2026-06-08 | 6100 |  | 7 Days Work | 9269454 |
| 6102 | 36900.37000.37100.37300.38000.47100.500800 | Anticapilary | 5d | 2026-06-09 | 2026-06-13 | 6101 |  | 7 Days Work | 9269464 |
| 6103 | 36900.37000.37100.37300.38000.47100.500900 | Stone Laying | 10d | 2026-07-17 | 2026-07-26 | 6143 |  | 7 Days Work | 9269474 |
| 6104 | 36900.37000.37100.37300.38000.47100.501000 | Tiles Laying | 7d | 2026-07-17 | 2026-07-23 | 6143 |  | 7 Days Work | 9269484 |
| 6105 | 36900.37000.37100.37300.38000.47100.501100 | 1st cutting/polishing of stone flooring | 7d | 2026-07-24 | 2026-07-30 | 6104 |  | 7 Days Work | 9269494 |
| 6106 | 36900.37000.37100.37300.38000.47100.501200 | Tiles/Stone skirting | 5d | 2026-07-31 | 2026-08-04 | 6105 |  | 7 Days Work | 9269504 |
| 6107 | 36900.37000.37100.37300.38000.47100.501300 | Protechtion sheet | 1d | 2026-08-05 | 2026-08-05 | 6106 |  | 7 Days Work | 9269514 |
| 6108 | 36900.37000.37100.37300.38000.47100.501400 | Installation of Temporary Door | 1d | 2026-08-06 | 2026-08-06 | 6107 |  | 7 Days Work | 9269524 |
| 6109 | 36900.37000.37100.37300.38000.47100.501500 | Fixing of window tracks | 5d | 2026-08-07 | 2026-08-11 | 6108 |  | 7 Days Work | 9269534 |
| 6110 | 36900.37000.37100.37300.38000.47100.501600 | Wire Pulling | 7d | 2026-08-12 | 2026-08-18 | 6109 |  | 7 Days Work | 9269544 |
| 6111 | 36900.37000.37100.37300.38000.47100.501700 | Gypsum Remaining | 5d | 2026-08-19 | 2026-08-23 | 6110 |  | 7 Days Work | 9269554 |
| 6112 | 36900.37000.37100.37300.38000.47100.501800 | Fixing of windoow shutter | 5d | 2026-08-24 | 2026-08-28 | 6111 |  | 7 Days Work | 9269564 |
| 6113 | 36900.37000.37100.37300.38000.47100.501900 | Putty Works - walls & ceiling | 15d | 2026-08-29 | 2026-09-12 | 6112 |  | 7 Days Work | 9269574 |
| 6114 | 36900.37000.37100.37300.38000.47100.502000 | False Ceiling- Framing | 10d | 2026-09-13 | 2026-09-22 | 6113 |  | 7 Days Work | 9269584 |
| 6115 | 36900.37000.37100.37300.38000.47100.502100 | Pre Hung Door | 3d | 2026-09-23 | 2026-09-25 | 6114 |  | 7 Days Work | 9269594 |
| 6116 | 36900.37000.37100.37300.38000.47100.502200 | Protechtion sheet | 2d | 2026-09-26 | 2026-09-27 | 6115 |  | 7 Days Work | 9269604 |
| 6117 | 36900.37000.37100.37300.38000.47100.502300 | Skirting near door | 2d | 2026-09-28 | 2026-09-29 | 6116 |  | 7 Days Work | 9269614 |
| 6118 | 36900.37000.37100.37300.38000.47100.502400 | Electrical Switch box fixing | 14d | 2026-09-30 | 2026-10-13 | 6117 |  | 7 Days Work | 9269624 |
| 6119 | 36900.37000.37100.37300.38000.47100.502500 | Fire Fighting painting | 5d | 2026-10-14 | 2026-10-18 | 6118 |  | 7 Days Work | 9269634 |
| 6120 | 36900.37000.37100.37300.38000.47100.502600 | Protection of all flooring, door & window hardware | 5d | 2026-10-19 | 2026-10-23 | 6119 |  | 7 Days Work | 9269644 |
| 6121 | 36900.37000.37100.37300.38000.47100.502700 | 1st coat primer- ceiling 1st & walls | 14d | 2026-10-24 | 2026-11-06 | 6120 |  | 7 Days Work | 9269654 |
| 6122 | 36900.37000.37100.37300.38000.47100.502800 | Wooden Flooring | 5d | 2026-11-07 | 2026-11-11 | 6121 |  | 7 Days Work | 9269664 |
| 6123 | 36900.37000.37100.37300.38000.47100.502900 | Removing of Temporary Railing & installation of Glass Railing | 5d | 2026-11-07 | 2026-11-11 | 6121 |  | 7 Days Work | 9269674 |
| 6124 | 36900.37000.37100.37300.38000.47100.503000 | Tile Grouting | 7d | 2026-11-07 | 2026-11-13 | 6121 |  | 7 Days Work | 9269684 |
| 6125 | 36900.37000.37100.37300.38000.47100.503100 | False Ceiling | 5d | 2026-11-14 | 2026-11-18 | 6124 |  | 7 Days Work | 9269694 |
| 6126 | 36900.37000.37100.37300.38000.47100.503200 | 2nd coat of primer | 10d | 2026-11-19 | 2026-11-28 | 6125 |  | 7 Days Work | 9269704 |
| 6127 | 36900.37000.37100.37300.38000.47100.503300 | Final cutting/polishing of stone flooring | 7d | 2026-11-29 | 2026-12-05 | 6126 |  | 7 Days Work | 9269714 |

| ID | WBS | Task | Duration | Start | Finish | Predecessors | Constraint | Calendar | Unique_Task_ID |
| --- | --- | --- | --- | --- | --- | --- | --- | --- | --- |
| 6128 | 36900.37000.37100.37300.38000.47100.64000 | **Toilet** | 237d | 2026-04-12 | 2026-12-04 |  | start no earlier than 2026-04-12 | 7 Days Work | 9265684 |
| 6129 | 36900.37000.37100.37300.38000.47100.64000.924600 | Toilet_MEP Clearance -1 | 7d | 2026-04-12 | 2026-04-18 | 6092 |  | 7 Days Work | 9277104 |
| 6130 | 36900.37000.37100.37300.38000.47100.64000.924700 | Toilet_Level Marking | 1d | 2026-04-19 | 2026-04-19 | 6129 |  | 7 Days Work | 9277114 |
| 6131 | 36900.37000.37100.37300.38000.47100.64000.924800 | Toilet_Chasing work for Electrical conduit & concealed plumbing | 5d | 2026-04-20 | 2026-04-24 | 6130 |  | 7 Days Work | 9277124 |
| 6132 | 36900.37000.37100.37300.38000.47100.64000.924900 | Toilet_Plumbing work 1st fix | 5d | 2026-04-25 | 2026-04-29 | 6131 |  | 7 Days Work | 9277134 |
| 6133 | 36900.37000.37100.37300.38000.47100.64000.925000 | Toilet_Sleeve/Bore Packing | 5d | 2026-04-30 | 2026-05-04 | 6132 |  | 7 Days Work | 9277144 |
| 6134 | 36900.37000.37100.37300.38000.47100.64000.925100 | Toilet_Waterproofing | 10d | 2026-05-05 | 2026-05-14 | 6133 |  | 7 Days Work | 9277154 |
| 6135 | 36900.37000.37100.37300.38000.47100.64000.925200 | Toilet_Screed | 1d | 2026-05-15 | 2026-05-15 | 6134 |  | 7 Days Work | 9277164 |
| 6136 | 36900.37000.37100.37300.38000.47100.64000.925300 | Toilet_Plumbing 2nd fix | 5d | 2026-05-16 | 2026-05-20 | 6135 |  | 7 Days Work | 9277174 |
| 6137 | 36900.37000.37100.37300.38000.47100.64000.925400 | Toilet_Ledge wall | 5d | 2026-05-21 | 2026-05-25 | 6136 |  | 7 Days Work | 9277184 |
| 6138 | 36900.37000.37100.37300.38000.47100.64000.925500 | Toilet_Cement Plaster | 5d | 2026-05-26 | 2026-05-30 | 6137 |  | 7 Days Work | 9277194 |
| 6139 | 36900.37000.37100.37300.38000.47100.64000.925600 | Toilet_Door Frame | 1d | 2026-05-31 | 2026-05-31 | 6138 |  | 7 Days Work | 9277204 |
| 6140 | 36900.37000.37100.37300.38000.47100.64000.925700 | Toilet_Wash basin & Couter | 3d | 2026-06-01 | 2026-06-03 | 6139 |  | 7 Days Work | 9277214 |
| 6141 | 36900.37000.37100.37300.38000.47100.64000.925800 | Toilet_Wall dado | 20d | 2026-06-04 | 2026-06-23 | 6140 |  | 7 Days Work | 9277224 |
| 6142 | 36900.37000.37100.37300.38000.47100.64000.925900 | Toilet_Granite Work-Ledge wall top | 3d | 2026-06-24 | 2026-06-26 | 6141 |  | 7 Days Work | 9277234 |
| 6143 | 36900.37000.37100.37300.38000.47100.64000.926000 | Toilet_Floor Tilling work | 20d | 2026-06-27 | 2026-07-16 | 6142 |  | 7 Days Work | 9277244 |
| 6144 | 36900.37000.37100.37300.38000.47100.64000.926100 | Toilet_1st row of dado | 5d | 2026-07-17 | 2026-07-21 | 6143 |  | 7 Days Work | 9277254 |
| 6145 | 36900.37000.37100.37300.38000.47100.64000.926200 | Toilet_Window Fixing | 14d | 2026-07-22 | 2026-08-04 | 6144 |  | 7 Days Work | 9277264 |
| 6146 | 36900.37000.37100.37300.38000.47100.64000.926300 | Toilet_Services above False ceiling | 21d | 2026-08-05 | 2026-08-25 | 6145 |  | 7 Days Work | 9277274 |
| 6147 | 36900.37000.37100.37300.38000.47100.64000.926400 | Toilet_False Ceiling framing | 12d | 2026-08-26 | 2026-09-06 | 6146 |  | 7 Days Work | 9277284 |
| 6148 | 36900.37000.37100.37300.38000.47100.64000.926500 | Toilet_Door Frame | 5d | 2026-09-07 | 2026-09-11 | 6147 |  | 7 Days Work | 9277294 |
| 6149 | 36900.37000.37100.37300.38000.47100.64000.926600 | Toilet_Epoxy Tile Grouting | 7d | 2026-11-07 | 2026-11-13 | 6124SS |  | 7 Days Work | 9277304 |
| 6150 | 36900.37000.37100.37300.38000.47100.64000.926700 | Toilet_False ceiling board fixing, CP Sanitary Fixture, Electric Fixture | 21d | 2026-11-14 | 2026-12-04 | 6149 |  | 7 Days Work | 9277314 |
| 6151 | 36900.37000.37100.37300.38000.47200 | **11th Habitable/12th Floor** | 245d | 2026-04-14 | 2026-12-14 |  | start no earlier than 2026-04-14 | 7 Days Work | 9265484 |
| 6152 | 36900.37000.37100.37300.38000.47200.503400 | Post Pour | 7d | 2026-04-14 | 2026-04-20 | 5539FS+15d |  | 7 Days Work | 9269724 |
| 6153 | 36900.37000.37100.37300.38000.47200.503500 | MEP Clearance -1 | 5d | 2026-04-21 | 2026-04-25 | 6152 |  | 7 Days Work | 9269734 |
| 6154 | 36900.37000.37100.37300.38000.47200.503600 | Benchmark | 1d | 2026-04-26 | 2026-04-26 | 6153 |  | 7 Days Work | 9269744 |
| 6155 | 36900.37000.37100.37300.38000.47200.503700 | Temporary Railing | 3d | 2026-04-27 | 2026-04-29 | 6154 |  | 7 Days Work | 9269754 |
| 6156 | 36900.37000.37100.37300.38000.47200.503800 | Blockwork | 10d | 2026-04-30 | 2026-05-09 | 6155 |  | 7 Days Work | 9269764 |
| 6157 | 36900.37000.37100.37300.38000.47200.503900 | MEP Clearance -2 | 10d | 2026-05-10 | 2026-05-19 | 6156 |  | 7 Days Work | 9269774 |
| 6158 | 36900.37000.37100.37300.38000.47200.504000 | Gypsum Plaster | 14d | 2026-05-20 | 2026-06-02 | 6157 |  | 7 Days Work | 9269784 |
| 6159 | 36900.37000.37100.37300.38000.47200.504100 | Kitchen Platform | 3d | 2026-06-03 | 2026-06-05 | 6158 |  | 7 Days Work | 9269794 |
| 6160 | 36900.37000.37100.37300.38000.47200.504200 | Kitchen dado | 7d | 2026-06-06 | 2026-06-12 | 6159 |  | 7 Days Work | 9269804 |
| 6161 | 36900.37000.37100.37300.38000.47200.504300 | Fire Fighting | 5d | 2026-06-13 | 2026-06-17 | 6160 |  | 7 Days Work | 9269814 |
| 6162 | 36900.37000.37100.37300.38000.47200.504400 | Anticapilary | 5d | 2026-06-18 | 2026-06-22 | 6161 |  | 7 Days Work | 9269824 |
| 6163 | 36900.37000.37100.37300.38000.47200.504500 | Stone Laying | 10d | 2026-07-26 | 2026-08-04 | 6203 |  | 7 Days Work | 9269834 |
| 6164 | 36900.37000.37100.37300.38000.47200.504600 | Tiles Laying | 7d | 2026-07-26 | 2026-08-01 | 6203 |  | 7 Days Work | 9269844 |
| 6165 | 36900.37000.37100.37300.38000.47200.504700 | 1st cutting/polishing of stone flooring | 7d | 2026-08-02 | 2026-08-08 | 6164 |  | 7 Days Work | 9269854 |
| 6166 | 36900.37000.37100.37300.38000.47200.504800 | Tiles/Stone skirting | 5d | 2026-08-09 | 2026-08-13 | 6165 |  | 7 Days Work | 9269864 |
| 6167 | 36900.37000.37100.37300.38000.47200.504900 | Protechtion sheet | 1d | 2026-08-14 | 2026-08-14 | 6166 |  | 7 Days Work | 9269874 |
| 6168 | 36900.37000.37100.37300.38000.47200.505000 | Installation of Temporary Door | 1d | 2026-08-15 | 2026-08-15 | 6167 |  | 7 Days Work | 9269884 |
| 6169 | 36900.37000.37100.37300.38000.47200.505100 | Fixing of window tracks | 5d | 2026-08-16 | 2026-08-20 | 6168 |  | 7 Days Work | 9269894 |
| 6170 | 36900.37000.37100.37300.38000.47200.505200 | Wire Pulling | 7d | 2026-08-21 | 2026-08-27 | 6169 |  | 7 Days Work | 9269904 |
| 6171 | 36900.37000.37100.37300.38000.47200.505300 | Gypsum Remaining | 5d | 2026-08-28 | 2026-09-01 | 6170 |  | 7 Days Work | 9269914 |
| 6172 | 36900.37000.37100.37300.38000.47200.505400 | Fixing of windoow shutter | 5d | 2026-09-02 | 2026-09-06 | 6171 |  | 7 Days Work | 9269924 |
| 6173 | 36900.37000.37100.37300.38000.47200.505500 | Putty Works - walls & ceiling | 15d | 2026-09-07 | 2026-09-21 | 6172 |  | 7 Days Work | 9269934 |
| 6174 | 36900.37000.37100.37300.38000.47200.505600 | False Ceiling- Framing | 10d | 2026-09-22 | 2026-10-01 | 6173 |  | 7 Days Work | 9269944 |
| 6175 | 36900.37000.37100.37300.38000.47200.505700 | Pre Hung Door | 3d | 2026-10-02 | 2026-10-04 | 6174 |  | 7 Days Work | 9269954 |
| 6176 | 36900.37000.37100.37300.38000.47200.505800 | Protechtion sheet | 2d | 2026-10-05 | 2026-10-06 | 6175 |  | 7 Days Work | 9269964 |
| 6177 | 36900.37000.37100.37300.38000.47200.505900 | Skirting near door | 2d | 2026-10-07 | 2026-10-08 | 6176 |  | 7 Days Work | 9269974 |
| 6178 | 36900.37000.37100.37300.38000.47200.506000 | Electrical Switch box fixing | 14d | 2026-10-09 | 2026-10-22 | 6177 |  | 7 Days Work | 9269984 |
| 6179 | 36900.37000.37100.37300.38000.47200.506100 | Fire Fighting painting | 5d | 2026-10-23 | 2026-10-27 | 6178 |  | 7 Days Work | 9269994 |
| 6180 | 36900.37000.37100.37300.38000.47200.506200 | Protection of all flooring, door & window hardware | 5d | 2026-10-28 | 2026-11-01 | 6179 |  | 7 Days Work | 9270004 |
| 6181 | 36900.37000.37100.37300.38000.47200.506300 | 1st coat primer- ceiling 1st & walls | 14d | 2026-11-02 | 2026-11-15 | 6180 |  | 7 Days Work | 9270014 |
| 6182 | 36900.37000.37100.37300.38000.47200.506400 | Wooden Flooring | 5d | 2026-11-16 | 2026-11-20 | 6181 |  | 7 Days Work | 9270024 |
| 6183 | 36900.37000.37100.37300.38000.47200.506500 | Removing of Temporary Railing & installation of Glass Railing | 5d | 2026-11-16 | 2026-11-20 | 6181 |  | 7 Days Work | 9270034 |
| 6184 | 36900.37000.37100.37300.38000.47200.506600 | Tile Grouting | 7d | 2026-11-16 | 2026-11-22 | 6181 |  | 7 Days Work | 9270044 |
| 6185 | 36900.37000.37100.37300.38000.47200.506700 | False Ceiling | 5d | 2026-11-23 | 2026-11-27 | 6184 |  | 7 Days Work | 9270054 |
| 6186 | 36900.37000.37100.37300.38000.47200.506800 | 2nd coat of primer | 10d | 2026-11-28 | 2026-12-07 | 6185 |  | 7 Days Work | 9270064 |
| 6187 | 36900.37000.37100.37300.38000.47200.506900 | Final cutting/polishing of stone flooring | 7d | 2026-12-08 | 2026-12-14 | 6186 |  | 7 Days Work | 9270074 |

| ID | WBS | Task | Duration | Start | Finish | Predecessors | Constraint | Calendar | Unique_Task_ID |
| --- | --- | --- | --- | --- | --- | --- | --- | --- | --- |
| 6188 | 36900.37000.37100.37300.38000.47200.63900 | **Toilet** | 237d | 2026-04-21 | 2026-12-13 |  | start no earlier than 2026-04-21 | 7 Days Work | 9265694 |
| 6189 | 36900.37000.37100.37300.38000.47200.63900.926800 | Toilet_MEP Clearance -1 | 7d | 2026-04-21 | 2026-04-27 | 6152 |  | 7 Days Work | 9277324 |
| 6190 | 36900.37000.37100.37300.38000.47200.63900.926900 | Toilet_Level Marking | 1d | 2026-04-28 | 2026-04-28 | 6189 |  | 7 Days Work | 9277334 |
| 6191 | 36900.37000.37100.37300.38000.47200.63900.927000 | Toilet_Chasing work for Electrical conduit & concealed plumbing | 5d | 2026-04-29 | 2026-05-03 | 6190 |  | 7 Days Work | 9277344 |
| 6192 | 36900.37000.37100.37300.38000.47200.63900.927100 | Toilet_Plumbing work 1st fix | 5d | 2026-05-04 | 2026-05-08 | 6191 |  | 7 Days Work | 9277354 |
| 6193 | 36900.37000.37100.37300.38000.47200.63900.927200 | Toilet_Sleeve/Bore Packing | 5d | 2026-05-09 | 2026-05-13 | 6192 |  | 7 Days Work | 9277364 |
| 6194 | 36900.37000.37100.37300.38000.47200.63900.927300 | Toilet_Waterproofing | 10d | 2026-05-14 | 2026-05-23 | 6193 |  | 7 Days Work | 9277374 |
| 6195 | 36900.37000.37100.37300.38000.47200.63900.927400 | Toilet_Screed | 1d | 2026-05-24 | 2026-05-24 | 6194 |  | 7 Days Work | 9277384 |
| 6196 | 36900.37000.37100.37300.38000.47200.63900.927500 | Toilet_Plumbing 2nd fix | 5d | 2026-05-25 | 2026-05-29 | 6195 |  | 7 Days Work | 9277394 |
| 6197 | 36900.37000.37100.37300.38000.47200.63900.927600 | Toilet_Ledge wall | 5d | 2026-05-30 | 2026-06-03 | 6196 |  | 7 Days Work | 9277404 |
| 6198 | 36900.37000.37100.37300.38000.47200.63900.927700 | Toilet_Cement Plaster | 5d | 2026-06-04 | 2026-06-08 | 6197 |  | 7 Days Work | 9277414 |
| 6199 | 36900.37000.37100.37300.38000.47200.63900.927800 | Toilet_Door Frame | 1d | 2026-06-09 | 2026-06-09 | 6198 |  | 7 Days Work | 9277424 |
| 6200 | 36900.37000.37100.37300.38000.47200.63900.927900 | Toilet_Wash basin & Couter | 3d | 2026-06-10 | 2026-06-12 | 6199 |  | 7 Days Work | 9277434 |
| 6201 | 36900.37000.37100.37300.38000.47200.63900.928000 | Toilet_Wall dado | 20d | 2026-06-13 | 2026-07-02 | 6200 |  | 7 Days Work | 9277444 |
| 6202 | 36900.37000.37100.37300.38000.47200.63900.928100 | Toilet_Granite Work-Ledge wall top | 3d | 2026-07-03 | 2026-07-05 | 6201 |  | 7 Days Work | 9277454 |
| 6203 | 36900.37000.37100.37300.38000.47200.63900.928200 | Toilet_Floor Tilling work | 20d | 2026-07-06 | 2026-07-25 | 6202 |  | 7 Days Work | 9277464 |
| 6204 | 36900.37000.37100.37300.38000.47200.63900.928300 | Toilet_1st row of dado | 5d | 2026-07-26 | 2026-07-30 | 6203 |  | 7 Days Work | 9277474 |
| 6205 | 36900.37000.37100.37300.38000.47200.63900.928400 | Toilet_Window Fixing | 14d | 2026-07-31 | 2026-08-13 | 6204 |  | 7 Days Work | 9277484 |
| 6206 | 36900.37000.37100.37300.38000.47200.63900.928500 | Toilet_Services above False ceiling | 21d | 2026-08-14 | 2026-09-03 | 6205 |  | 7 Days Work | 9277494 |
| 6207 | 36900.37000.37100.37300.38000.47200.63900.928600 | Toilet_False Ceiling framing | 12d | 2026-09-04 | 2026-09-15 | 6206 |  | 7 Days Work | 9277504 |
| 6208 | 36900.37000.37100.37300.38000.47200.63900.928700 | Toilet_Door Frame | 5d | 2026-09-16 | 2026-09-20 | 6207 |  | 7 Days Work | 9277514 |
| 6209 | 36900.37000.37100.37300.38000.47200.63900.928800 | Toilet_Epoxy Tile Grouting | 7d | 2026-11-16 | 2026-11-22 | 6184SS |  | 7 Days Work | 9277524 |
| 6210 | 36900.37000.37100.37300.38000.47200.63900.928900 | Toilet_False ceiling board fixing, CP Sanitary Fixture, Electric Fixture | 21d | 2026-11-23 | 2026-12-13 | 6209 |  | 7 Days Work | 9277534 |
| 6211 | 36900.37000.37100.37300.38000.47300 | **12th Habitable/13th Floor** | 245d | 2026-04-23 | 2026-12-23 |  | start no earlier than 2026-04-23 | 7 Days Work | 9265494 |
| 6212 | 36900.37000.37100.37300.38000.47300.507000 | Post Pour | 7d | 2026-04-23 | 2026-04-29 | 5540FS+15d |  | 7 Days Work | 9270084 |
| 6213 | 36900.37000.37100.37300.38000.47300.507100 | MEP Clearance -1 | 5d | 2026-04-30 | 2026-05-04 | 6212 |  | 7 Days Work | 9270094 |
| 6214 | 36900.37000.37100.37300.38000.47300.507200 | Benchmark | 1d | 2026-05-05 | 2026-05-05 | 6213 |  | 7 Days Work | 9270104 |
| 6215 | 36900.37000.37100.37300.38000.47300.507300 | Temporary Railing | 3d | 2026-05-06 | 2026-05-08 | 6214 |  | 7 Days Work | 9270114 |
| 6216 | 36900.37000.37100.37300.38000.47300.507400 | Blockwork | 10d | 2026-05-09 | 2026-05-18 | 6215 |  | 7 Days Work | 9270124 |
| 6217 | 36900.37000.37100.37300.38000.47300.507500 | MEP Clearance -2 | 10d | 2026-05-19 | 2026-05-28 | 6216 |  | 7 Days Work | 9270134 |
| 6218 | 36900.37000.37100.37300.38000.47300.507600 | Gypsum Plaster | 14d | 2026-05-29 | 2026-06-11 | 6217 |  | 7 Days Work | 9270144 |
| 6219 | 36900.37000.37100.37300.38000.47300.507700 | Kitchen Platform | 3d | 2026-06-12 | 2026-06-14 | 6218 |  | 7 Days Work | 9270154 |
| 6220 | 36900.37000.37100.37300.38000.47300.507800 | Kitchen dado | 7d | 2026-06-15 | 2026-06-21 | 6219 |  | 7 Days Work | 9270164 |
| 6221 | 36900.37000.37100.37300.38000.47300.507900 | Fire Fighting | 5d | 2026-06-22 | 2026-06-26 | 6220 |  | 7 Days Work | 9270174 |
| 6222 | 36900.37000.37100.37300.38000.47300.508000 | Anticapilary | 5d | 2026-06-27 | 2026-07-01 | 6221 |  | 7 Days Work | 9270184 |
| 6223 | 36900.37000.37100.37300.38000.47300.508100 | Stone Laying | 10d | 2026-08-04 | 2026-08-13 | 6263 |  | 7 Days Work | 9270194 |
| 6224 | 36900.37000.37100.37300.38000.47300.508200 | Tiles Laying | 7d | 2026-08-04 | 2026-08-10 | 6263 |  | 7 Days Work | 9270204 |
| 6225 | 36900.37000.37100.37300.38000.47300.508300 | 1st cutting/polishing of stone flooring | 7d | 2026-08-11 | 2026-08-17 | 6224 |  | 7 Days Work | 9270214 |
| 6226 | 36900.37000.37100.37300.38000.47300.508400 | Tiles/Stone skirting | 5d | 2026-08-18 | 2026-08-22 | 6225 |  | 7 Days Work | 9270224 |
| 6227 | 36900.37000.37100.37300.38000.47300.508500 | Protechtion sheet | 1d | 2026-08-23 | 2026-08-23 | 6226 |  | 7 Days Work | 9270234 |
| 6228 | 36900.37000.37100.37300.38000.47300.508600 | Installation of Temporary Door | 1d | 2026-08-24 | 2026-08-24 | 6227 |  | 7 Days Work | 9270244 |
| 6229 | 36900.37000.37100.37300.38000.47300.508700 | Fixing of window tracks | 5d | 2026-08-25 | 2026-08-29 | 6228 |  | 7 Days Work | 9270254 |
| 6230 | 36900.37000.37100.37300.38000.47300.508800 | Wire Pulling | 7d | 2026-08-30 | 2026-09-05 | 6229 |  | 7 Days Work | 9270264 |
| 6231 | 36900.37000.37100.37300.38000.47300.508900 | Gypsum Remaining | 5d | 2026-09-06 | 2026-09-10 | 6230 |  | 7 Days Work | 9270274 |
| 6232 | 36900.37000.37100.37300.38000.47300.509000 | Fixing of windoow shutter | 5d | 2026-09-11 | 2026-09-15 | 6231 |  | 7 Days Work | 9270284 |
| 6233 | 36900.37000.37100.37300.38000.47300.509100 | Putty Works - walls & ceiling | 15d | 2026-09-16 | 2026-09-30 | 6232 |  | 7 Days Work | 9270294 |
| 6234 | 36900.37000.37100.37300.38000.47300.509200 | False Ceiling- Framing | 10d | 2026-10-01 | 2026-10-10 | 6233 |  | 7 Days Work | 9270304 |
| 6235 | 36900.37000.37100.37300.38000.47300.509300 | Pre Hung Door | 3d | 2026-10-11 | 2026-10-13 | 6234 |  | 7 Days Work | 9270314 |
| 6236 | 36900.37000.37100.37300.38000.47300.509400 | Protechtion sheet | 2d | 2026-10-14 | 2026-10-15 | 6235 |  | 7 Days Work | 9270324 |
| 6237 | 36900.37000.37100.37300.38000.47300.509500 | Skirting near door | 2d | 2026-10-16 | 2026-10-17 | 6236 |  | 7 Days Work | 9270334 |
| 6238 | 36900.37000.37100.37300.38000.47300.509600 | Electrical Switch box fixing | 14d | 2026-10-18 | 2026-10-31 | 6237 |  | 7 Days Work | 9270344 |
| 6239 | 36900.37000.37100.37300.38000.47300.509700 | Fire Fighting painting | 5d | 2026-11-01 | 2026-11-05 | 6238 |  | 7 Days Work | 9270354 |
| 6240 | 36900.37000.37100.37300.38000.47300.509800 | Protection of all flooring, door & window hardware | 5d | 2026-11-06 | 2026-11-10 | 6239 |  | 7 Days Work | 9270364 |
| 6241 | 36900.37000.37100.37300.38000.47300.509900 | 1st coat primer- ceiling 1st & walls | 14d | 2026-11-11 | 2026-11-24 | 6240 |  | 7 Days Work | 9270374 |
| 6242 | 36900.37000.37100.37300.38000.47300.510000 | Wooden Flooring | 5d | 2026-11-25 | 2026-11-29 | 6241 |  | 7 Days Work | 9270384 |
| 6243 | 36900.37000.37100.37300.38000.47300.510100 | Removing of Temporary Railing & installation of Glass Railing | 5d | 2026-11-25 | 2026-11-29 | 6241 |  | 7 Days Work | 9270394 |
| 6244 | 36900.37000.37100.37300.38000.47300.510200 | Tile Grouting | 7d | 2026-11-25 | 2026-12-01 | 6241 |  | 7 Days Work | 9270404 |
| 6245 | 36900.37000.37100.37300.38000.47300.510300 | False Ceiling | 5d | 2026-12-02 | 2026-12-06 | 6244 |  | 7 Days Work | 9270414 |
| 6246 | 36900.37000.37100.37300.38000.47300.510400 | 2nd coat of primer | 10d | 2026-12-07 | 2026-12-16 | 6245 |  | 7 Days Work | 9270424 |
| 6247 | 36900.37000.37100.37300.38000.47300.510500 | Final cutting/polishing of stone flooring | 7d | 2026-12-17 | 2026-12-23 | 6246 |  | 7 Days Work | 9270434 |

| ID | WBS | Task | Duration | Start | Finish | Predecessors | Constraint | Calendar | Unique_Task_ID |
| --- | --- | --- | --- | --- | --- | --- | --- | --- | --- |
| 6248 | 36900.37000.37100.37300.38000.47300.63800 | **Toilet** | 237d | 2026-04-30 | 2026-12-22 |  | start no earlier than 2026-04-30 | 7 Days Work | 9265704 |
| 6249 | 36900.37000.37100.37300.38000.47300.63800.929000 | Toilet_MEP Clearance -1 | 7d | 2026-04-30 | 2026-05-06 | 6212 |  | 7 Days Work | 9277544 |
| 6250 | 36900.37000.37100.37300.38000.47300.63800.929100 | Toilet_Level Marking | 1d | 2026-05-07 | 2026-05-07 | 6249 |  | 7 Days Work | 9277554 |
| 6251 | 36900.37000.37100.37300.38000.47300.63800.929200 | Toilet_Chasing work for Electrical conduit & concealed plumbing | 5d | 2026-05-08 | 2026-05-12 | 6250 |  | 7 Days Work | 9277564 |
| 6252 | 36900.37000.37100.37300.38000.47300.63800.929300 | Toilet_Plumbing work 1st fix | 5d | 2026-05-13 | 2026-05-17 | 6251 |  | 7 Days Work | 9277574 |
| 6253 | 36900.37000.37100.37300.38000.47300.63800.929400 | Toilet_Sleeve/Bore Packing | 5d | 2026-05-18 | 2026-05-22 | 6252 |  | 7 Days Work | 9277584 |
| 6254 | 36900.37000.37100.37300.38000.47300.63800.929500 | Toilet_Waterproofing | 10d | 2026-05-23 | 2026-06-01 | 6253 |  | 7 Days Work | 9277594 |
| 6255 | 36900.37000.37100.37300.38000.47300.63800.929600 | Toilet_Screed | 1d | 2026-06-02 | 2026-06-02 | 6254 |  | 7 Days Work | 9277604 |
| 6256 | 36900.37000.37100.37300.38000.47300.63800.929700 | Toilet_Plumbing 2nd fix | 5d | 2026-06-03 | 2026-06-07 | 6255 |  | 7 Days Work | 9277614 |
| 6257 | 36900.37000.37100.37300.38000.47300.63800.929800 | Toilet_Ledge wall | 5d | 2026-06-08 | 2026-06-12 | 6256 |  | 7 Days Work | 9277624 |
| 6258 | 36900.37000.37100.37300.38000.47300.63800.929900 | Toilet_Cement Plaster | 5d | 2026-06-13 | 2026-06-17 | 6257 |  | 7 Days Work | 9277634 |
| 6259 | 36900.37000.37100.37300.38000.47300.63800.930000 | Toilet_Door Frame | 1d | 2026-06-18 | 2026-06-18 | 6258 |  | 7 Days Work | 9277644 |
| 6260 | 36900.37000.37100.37300.38000.47300.63800.930100 | Toilet_Wash basin & Couter | 3d | 2026-06-19 | 2026-06-21 | 6259 |  | 7 Days Work | 9277654 |
| 6261 | 36900.37000.37100.37300.38000.47300.63800.930200 | Toilet_Wall dado | 20d | 2026-06-22 | 2026-07-11 | 6260 |  | 7 Days Work | 9277664 |
| 6262 | 36900.37000.37100.37300.38000.47300.63800.930300 | Toilet_Granite Work-Ledge wall top | 3d | 2026-07-12 | 2026-07-14 | 6261 |  | 7 Days Work | 9277674 |
| 6263 | 36900.37000.37100.37300.38000.47300.63800.930400 | Toilet_Floor Tilling work | 20d | 2026-07-15 | 2026-08-03 | 6262 |  | 7 Days Work | 9277684 |
| 6264 | 36900.37000.37100.37300.38000.47300.63800.930500 | Toilet_1st row of dado | 5d | 2026-08-04 | 2026-08-08 | 6263 |  | 7 Days Work | 9277694 |
| 6265 | 36900.37000.37100.37300.38000.47300.63800.930600 | Toilet_Window Fixing | 14d | 2026-08-09 | 2026-08-22 | 6264 |  | 7 Days Work | 9277704 |
| 6266 | 36900.37000.37100.37300.38000.47300.63800.930700 | Toilet_Services above False ceiling | 21d | 2026-08-23 | 2026-09-12 | 6265 |  | 7 Days Work | 9277714 |
| 6267 | 36900.37000.37100.37300.38000.47300.63800.930800 | Toilet_False Ceiling framing | 12d | 2026-09-13 | 2026-09-24 | 6266 |  | 7 Days Work | 9277724 |
| 6268 | 36900.37000.37100.37300.38000.47300.63800.930900 | Toilet_Door Frame | 5d | 2026-09-25 | 2026-09-29 | 6267 |  | 7 Days Work | 9277734 |
| 6269 | 36900.37000.37100.37300.38000.47300.63800.931000 | Toilet_Epoxy Tile Grouting | 7d | 2026-11-25 | 2026-12-01 | 6244SS |  | 7 Days Work | 9277744 |
| 6270 | 36900.37000.37100.37300.38000.47300.63800.931100 | Toilet_False ceiling board fixing, CP Sanitary Fixture, Electric Fixture | 21d | 2026-12-02 | 2026-12-22 | 6269 |  | 7 Days Work | 9277754 |
| 6271 | 36900.37000.37100.37300.38000.47400 | **13th Habitable/14th Floor** | 245d | 2026-05-05 | 2027-01-04 |  | start no earlier than 2026-05-05 | 7 Days Work | 9265504 |
| 6272 | 36900.37000.37100.37300.38000.47400.510600 | Post Pour | 7d | 2026-05-05 | 2026-05-11 | 5541FS+15d |  | 7 Days Work | 9270444 |
| 6273 | 36900.37000.37100.37300.38000.47400.510700 | MEP Clearance -1 | 5d | 2026-05-12 | 2026-05-16 | 6272 |  | 7 Days Work | 9270454 |
| 6274 | 36900.37000.37100.37300.38000.47400.510800 | Benchmark | 1d | 2026-05-17 | 2026-05-17 | 6273 |  | 7 Days Work | 9270464 |
| 6275 | 36900.37000.37100.37300.38000.47400.510900 | Temporary Railing | 3d | 2026-05-18 | 2026-05-20 | 6274 |  | 7 Days Work | 9270474 |
| 6276 | 36900.37000.37100.37300.38000.47400.511000 | Blockwork | 10d | 2026-05-21 | 2026-05-30 | 6275 |  | 7 Days Work | 9270484 |
| 6277 | 36900.37000.37100.37300.38000.47400.511100 | MEP Clearance -2 | 10d | 2026-05-31 | 2026-06-09 | 6276 |  | 7 Days Work | 9270494 |
| 6278 | 36900.37000.37100.37300.38000.47400.511200 | Gypsum Plaster | 14d | 2026-06-10 | 2026-06-23 | 6277 |  | 7 Days Work | 9270504 |
| 6279 | 36900.37000.37100.37300.38000.47400.511300 | Kitchen Platform | 3d | 2026-06-24 | 2026-06-26 | 6278 |  | 7 Days Work | 9270514 |
| 6280 | 36900.37000.37100.37300.38000.47400.511400 | Kitchen dado | 7d | 2026-06-27 | 2026-07-03 | 6279 |  | 7 Days Work | 9270524 |
| 6281 | 36900.37000.37100.37300.38000.47400.511500 | Fire Fighting | 5d | 2026-07-04 | 2026-07-08 | 6280 |  | 7 Days Work | 9270534 |
| 6282 | 36900.37000.37100.37300.38000.47400.511600 | Anticapilary | 5d | 2026-07-09 | 2026-07-13 | 6281 |  | 7 Days Work | 9270544 |
| 6283 | 36900.37000.37100.37300.38000.47400.511700 | Stone Laying | 10d | 2026-08-16 | 2026-08-25 | 6323 |  | 7 Days Work | 9270554 |
| 6284 | 36900.37000.37100.37300.38000.47400.511800 | Tiles Laying | 7d | 2026-08-16 | 2026-08-22 | 6323 |  | 7 Days Work | 9270564 |
| 6285 | 36900.37000.37100.37300.38000.47400.511900 | 1st cutting/polishing of stone flooring | 7d | 2026-08-23 | 2026-08-29 | 6284 |  | 7 Days Work | 9270574 |
| 6286 | 36900.37000.37100.37300.38000.47400.512000 | Tiles/Stone skirting | 5d | 2026-08-30 | 2026-09-03 | 6285 |  | 7 Days Work | 9270584 |
| 6287 | 36900.37000.37100.37300.38000.47400.512100 | Protechtion sheet | 1d | 2026-09-04 | 2026-09-04 | 6286 |  | 7 Days Work | 9270594 |
| 6288 | 36900.37000.37100.37300.38000.47400.512200 | Installation of Temporary Door | 1d | 2026-09-05 | 2026-09-05 | 6287 |  | 7 Days Work | 9270604 |
| 6289 | 36900.37000.37100.37300.38000.47400.512300 | Fixing of window tracks | 5d | 2026-09-06 | 2026-09-10 | 6288 |  | 7 Days Work | 9270614 |
| 6290 | 36900.37000.37100.37300.38000.47400.512400 | Wire Pulling | 7d | 2026-09-11 | 2026-09-17 | 6289 |  | 7 Days Work | 9270624 |
| 6291 | 36900.37000.37100.37300.38000.47400.512500 | Gypsum Remaining | 5d | 2026-09-18 | 2026-09-22 | 6290 |  | 7 Days Work | 9270634 |
| 6292 | 36900.37000.37100.37300.38000.47400.512600 | Fixing of windoow shutter | 5d | 2026-09-23 | 2026-09-27 | 6291 |  | 7 Days Work | 9270644 |
| 6293 | 36900.37000.37100.37300.38000.47400.512700 | Putty Works - walls & ceiling | 15d | 2026-09-28 | 2026-10-12 | 6292 |  | 7 Days Work | 9270654 |
| 6294 | 36900.37000.37100.37300.38000.47400.512800 | False Ceiling- Framing | 10d | 2026-10-13 | 2026-10-22 | 6293 |  | 7 Days Work | 9270664 |
| 6295 | 36900.37000.37100.37300.38000.47400.512900 | Pre Hung Door | 3d | 2026-10-23 | 2026-10-25 | 6294 |  | 7 Days Work | 9270674 |
| 6296 | 36900.37000.37100.37300.38000.47400.513000 | Protechtion sheet | 2d | 2026-10-26 | 2026-10-27 | 6295 |  | 7 Days Work | 9270684 |
| 6297 | 36900.37000.37100.37300.38000.47400.513100 | Skirting near door | 2d | 2026-10-28 | 2026-10-29 | 6296 |  | 7 Days Work | 9270694 |
| 6298 | 36900.37000.37100.37300.38000.47400.513200 | Electrical Switch box fixing | 14d | 2026-10-30 | 2026-11-12 | 6297 |  | 7 Days Work | 9270704 |
| 6299 | 36900.37000.37100.37300.38000.47400.513300 | Fire Fighting painting | 5d | 2026-11-13 | 2026-11-17 | 6298 |  | 7 Days Work | 9270714 |
| 6300 | 36900.37000.37100.37300.38000.47400.513400 | Protection of all flooring, door & window hardware | 5d | 2026-11-18 | 2026-11-22 | 6299 |  | 7 Days Work | 9270724 |
| 6301 | 36900.37000.37100.37300.38000.47400.513500 | 1st coat primer- ceiling 1st & walls | 14d | 2026-11-23 | 2026-12-06 | 6300 |  | 7 Days Work | 9270734 |
| 6302 | 36900.37000.37100.37300.38000.47400.513600 | Wooden Flooring | 5d | 2026-12-07 | 2026-12-11 | 6301 |  | 7 Days Work | 9270744 |
| 6303 | 36900.37000.37100.37300.38000.47400.513700 | Removing of Temporary Railing & installation of Glass Railing | 5d | 2026-12-07 | 2026-12-11 | 6301 |  | 7 Days Work | 9270754 |
| 6304 | 36900.37000.37100.37300.38000.47400.513800 | Tile Grouting | 7d | 2026-12-07 | 2026-12-13 | 6301 |  | 7 Days Work | 9270764 |
| 6305 | 36900.37000.37100.37300.38000.47400.513900 | False Ceiling | 5d | 2026-12-14 | 2026-12-18 | 6304 |  | 7 Days Work | 9270774 |
| 6306 | 36900.37000.37100.37300.38000.47400.514000 | 2nd coat of primer | 10d | 2026-12-19 | 2026-12-28 | 6305 |  | 7 Days Work | 9270784 |
| 6307 | 36900.37000.37100.37300.38000.47400.514100 | Final cutting/polishing of stone flooring | 7d | 2026-12-29 | 2027-01-04 | 6306 |  | 7 Days Work | 9270794 |

| ID | WBS | Task | Duration | Start | Finish | Predecessors | Constraint | Calendar | Unique_Task_ID |
| --- | --- | --- | --- | --- | --- | --- | --- | --- | --- |
| 6308 | 36900.37000.37100.37300.38000.47400.63700 | **Toilet** | 237d | 2026-05-12 | 2027-01-03 |  | start no earlier than 2026-05-12 | 7 Days Work | 9265714 |
| 6309 | 36900.37000.37100.37300.38000.47400.63700.931200 | Toilet_MEP Clearance -1 | 7d | 2026-05-12 | 2026-05-18 | 6272 |  | 7 Days Work | 9277764 |
| 6310 | 36900.37000.37100.37300.38000.47400.63700.931300 | Toilet_Level Marking | 1d | 2026-05-19 | 2026-05-19 | 6309 |  | 7 Days Work | 9277774 |
| 6311 | 36900.37000.37100.37300.38000.47400.63700.931400 | Toilet_Chasing work for Electrical conduit & concealed plumbing | 5d | 2026-05-20 | 2026-05-24 | 6310 |  | 7 Days Work | 9277784 |
| 6312 | 36900.37000.37100.37300.38000.47400.63700.931500 | Toilet_Plumbing work 1st fix | 5d | 2026-05-25 | 2026-05-29 | 6311 |  | 7 Days Work | 9277794 |
| 6313 | 36900.37000.37100.37300.38000.47400.63700.931600 | Toilet_Sleeve/Bore Packing | 5d | 2026-05-30 | 2026-06-03 | 6312 |  | 7 Days Work | 9277804 |
| 6314 | 36900.37000.37100.37300.38000.47400.63700.931700 | Toilet_Waterproofing | 10d | 2026-06-04 | 2026-06-13 | 6313 |  | 7 Days Work | 9277814 |
| 6315 | 36900.37000.37100.37300.38000.47400.63700.931800 | Toilet_Screed | 1d | 2026-06-14 | 2026-06-14 | 6314 |  | 7 Days Work | 9277824 |
| 6316 | 36900.37000.37100.37300.38000.47400.63700.931900 | Toilet_Plumbing 2nd fix | 5d | 2026-06-15 | 2026-06-19 | 6315 |  | 7 Days Work | 9277834 |
| 6317 | 36900.37000.37100.37300.38000.47400.63700.932000 | Toilet_Ledge wall | 5d | 2026-06-20 | 2026-06-24 | 6316 |  | 7 Days Work | 9277844 |
| 6318 | 36900.37000.37100.37300.38000.47400.63700.932100 | Toilet_Cement Plaster | 5d | 2026-06-25 | 2026-06-29 | 6317 |  | 7 Days Work | 9277854 |
| 6319 | 36900.37000.37100.37300.38000.47400.63700.932200 | Toilet_Door Frame | 1d | 2026-06-30 | 2026-06-30 | 6318 |  | 7 Days Work | 9277864 |
| 6320 | 36900.37000.37100.37300.38000.47400.63700.932300 | Toilet_Wash basin & Couter | 3d | 2026-07-01 | 2026-07-03 | 6319 |  | 7 Days Work | 9277874 |
| 6321 | 36900.37000.37100.37300.38000.47400.63700.932400 | Toilet_Wall dado | 20d | 2026-07-04 | 2026-07-23 | 6320 |  | 7 Days Work | 9277884 |
| 6322 | 36900.37000.37100.37300.38000.47400.63700.932500 | Toilet_Granite Work-Ledge wall top | 3d | 2026-07-24 | 2026-07-26 | 6321 |  | 7 Days Work | 9277894 |
| 6323 | 36900.37000.37100.37300.38000.47400.63700.932600 | Toilet_Floor Tilling work | 20d | 2026-07-27 | 2026-08-15 | 6322 |  | 7 Days Work | 9277904 |
| 6324 | 36900.37000.37100.37300.38000.47400.63700.932700 | Toilet_1st row of dado | 5d | 2026-08-16 | 2026-08-20 | 6323 |  | 7 Days Work | 9277914 |
| 6325 | 36900.37000.37100.37300.38000.47400.63700.932800 | Toilet_Window Fixing | 14d | 2026-08-21 | 2026-09-03 | 6324 |  | 7 Days Work | 9277924 |
| 6326 | 36900.37000.37100.37300.38000.47400.63700.932900 | Toilet_Services above False ceiling | 21d | 2026-09-04 | 2026-09-24 | 6325 |  | 7 Days Work | 9277934 |
| 6327 | 36900.37000.37100.37300.38000.47400.63700.933000 | Toilet_False Ceiling framing | 12d | 2026-09-25 | 2026-10-06 | 6326 |  | 7 Days Work | 9277944 |
| 6328 | 36900.37000.37100.37300.38000.47400.63700.933100 | Toilet_Door Frame | 5d | 2026-10-07 | 2026-10-11 | 6327 |  | 7 Days Work | 9277954 |
| 6329 | 36900.37000.37100.37300.38000.47400.63700.933200 | Toilet_Epoxy Tile Grouting | 7d | 2026-12-07 | 2026-12-13 | 6304SS |  | 7 Days Work | 9277964 |
| 6330 | 36900.37000.37100.37300.38000.47400.63700.933300 | Toilet_False ceiling board fixing, CP Sanitary Fixture, Electric Fixture | 21d | 2026-12-14 | 2027-01-03 | 6329 |  | 7 Days Work | 9277974 |
| 6331 | 36900.37000.37100.37300.38000.47500 | **14th Habitable/15th Floor** | 245d | 2026-05-14 | 2027-01-13 |  | start no earlier than 2026-05-14 | 7 Days Work | 9265514 |
| 6332 | 36900.37000.37100.37300.38000.47500.514200 | Post Pour | 7d | 2026-05-14 | 2026-05-20 | 5542FS+15d |  | 7 Days Work | 9270804 |
| 6333 | 36900.37000.37100.37300.38000.47500.514300 | MEP Clearance -1 | 5d | 2026-05-21 | 2026-05-25 | 6332 |  | 7 Days Work | 9270814 |
| 6334 | 36900.37000.37100.37300.38000.47500.514400 | Benchmark | 1d | 2026-05-26 | 2026-05-26 | 6333 |  | 7 Days Work | 9270824 |
| 6335 | 36900.37000.37100.37300.38000.47500.514500 | Temporary Railing | 3d | 2026-05-27 | 2026-05-29 | 6334 |  | 7 Days Work | 9270834 |
| 6336 | 36900.37000.37100.37300.38000.47500.514600 | Blockwork | 10d | 2026-05-30 | 2026-06-08 | 6335 |  | 7 Days Work | 9270844 |
| 6337 | 36900.37000.37100.37300.38000.47500.514700 | MEP Clearance -2 | 10d | 2026-06-09 | 2026-06-18 | 6336 |  | 7 Days Work | 9270854 |
| 6338 | 36900.37000.37100.37300.38000.47500.514800 | Gypsum Plaster | 14d | 2026-06-19 | 2026-07-02 | 6337 |  | 7 Days Work | 9270864 |
| 6339 | 36900.37000.37100.37300.38000.47500.514900 | Kitchen Platform | 3d | 2026-07-03 | 2026-07-05 | 6338 |  | 7 Days Work | 9270874 |
| 6340 | 36900.37000.37100.37300.38000.47500.515000 | Kitchen dado | 7d | 2026-07-06 | 2026-07-12 | 6339 |  | 7 Days Work | 9270884 |
| 6341 | 36900.37000.37100.37300.38000.47500.515100 | Fire Fighting | 5d | 2026-07-13 | 2026-07-17 | 6340 |  | 7 Days Work | 9270894 |
| 6342 | 36900.37000.37100.37300.38000.47500.515200 | Anticapilary | 5d | 2026-07-18 | 2026-07-22 | 6341 |  | 7 Days Work | 9270904 |
| 6343 | 36900.37000.37100.37300.38000.47500.515300 | Stone Laying | 10d | 2026-08-25 | 2026-09-03 | 6383 |  | 7 Days Work | 9270914 |
| 6344 | 36900.37000.37100.37300.38000.47500.515400 | Tiles Laying | 7d | 2026-08-25 | 2026-08-31 | 6383 |  | 7 Days Work | 9270924 |
| 6345 | 36900.37000.37100.37300.38000.47500.515500 | 1st cutting/polishing of stone flooring | 7d | 2026-09-01 | 2026-09-07 | 6344 |  | 7 Days Work | 9270934 |
| 6346 | 36900.37000.37100.37300.38000.47500.515600 | Tiles/Stone skirting | 5d | 2026-09-08 | 2026-09-12 | 6345 |  | 7 Days Work | 9270944 |
| 6347 | 36900.37000.37100.37300.38000.47500.515700 | Protechtion sheet | 1d | 2026-09-13 | 2026-09-13 | 6346 |  | 7 Days Work | 9270954 |
| 6348 | 36900.37000.37100.37300.38000.47500.515800 | Installation of Temporary Door | 1d | 2026-09-14 | 2026-09-14 | 6347 |  | 7 Days Work | 9270964 |
| 6349 | 36900.37000.37100.37300.38000.47500.515900 | Fixing of window tracks | 5d | 2026-09-15 | 2026-09-19 | 6348 |  | 7 Days Work | 9270974 |
| 6350 | 36900.37000.37100.37300.38000.47500.516000 | Wire Pulling | 7d | 2026-09-20 | 2026-09-26 | 6349 |  | 7 Days Work | 9270984 |
| 6351 | 36900.37000.37100.37300.38000.47500.516100 | Gypsum Remaining | 5d | 2026-09-27 | 2026-10-01 | 6350 |  | 7 Days Work | 9270994 |
| 6352 | 36900.37000.37100.37300.38000.47500.516200 | Fixing of windoow shutter | 5d | 2026-10-02 | 2026-10-06 | 6351 |  | 7 Days Work | 9271004 |
| 6353 | 36900.37000.37100.37300.38000.47500.516300 | Putty Works - walls & ceiling | 15d | 2026-10-07 | 2026-10-21 | 6352 |  | 7 Days Work | 9271014 |
| 6354 | 36900.37000.37100.37300.38000.47500.516400 | False Ceiling- Framing | 10d | 2026-10-22 | 2026-10-31 | 6353 |  | 7 Days Work | 9271024 |
| 6355 | 36900.37000.37100.37300.38000.47500.516500 | Pre Hung Door | 3d | 2026-11-01 | 2026-11-03 | 6354 |  | 7 Days Work | 9271034 |
| 6356 | 36900.37000.37100.37300.38000.47500.516600 | Protechtion sheet | 2d | 2026-11-04 | 2026-11-05 | 6355 |  | 7 Days Work | 9271044 |
| 6357 | 36900.37000.37100.37300.38000.47500.516700 | Skirting near door | 2d | 2026-11-06 | 2026-11-07 | 6356 |  | 7 Days Work | 9271054 |
| 6358 | 36900.37000.37100.37300.38000.47500.516800 | Electrical Switch box fixing | 14d | 2026-11-08 | 2026-11-21 | 6357 |  | 7 Days Work | 9271064 |
| 6359 | 36900.37000.37100.37300.38000.47500.516900 | Fire Fighting painting | 5d | 2026-11-22 | 2026-11-26 | 6358 |  | 7 Days Work | 9271074 |
| 6360 | 36900.37000.37100.37300.38000.47500.517000 | Protection of all flooring, door & window hardware | 5d | 2026-11-27 | 2026-12-01 | 6359 |  | 7 Days Work | 9271084 |
| 6361 | 36900.37000.37100.37300.38000.47500.517100 | 1st coat primer- ceiling 1st & walls | 14d | 2026-12-02 | 2026-12-15 | 6360 |  | 7 Days Work | 9271094 |
| 6362 | 36900.37000.37100.37300.38000.47500.517200 | Wooden Flooring | 5d | 2026-12-16 | 2026-12-20 | 6361 |  | 7 Days Work | 9271104 |
| 6363 | 36900.37000.37100.37300.38000.47500.517300 | Removing of Temporary Railing & installation of Glass Railing | 5d | 2026-12-16 | 2026-12-20 | 6361 |  | 7 Days Work | 9271114 |
| 6364 | 36900.37000.37100.37300.38000.47500.517400 | Tile Grouting | 7d | 2026-12-16 | 2026-12-22 | 6361 |  | 7 Days Work | 9271124 |
| 6365 | 36900.37000.37100.37300.38000.47500.517500 | False Ceiling | 5d | 2026-12-23 | 2026-12-27 | 6364 |  | 7 Days Work | 9271134 |
| 6366 | 36900.37000.37100.37300.38000.47500.517600 | 2nd coat of primer | 10d | 2026-12-28 | 2027-01-06 | 6365 |  | 7 Days Work | 9271144 |
| 6367 | 36900.37000.37100.37300.38000.47500.517700 | Final cutting/polishing of stone flooring | 7d | 2027-01-07 | 2027-01-13 | 6366 |  | 7 Days Work | 9271154 |

| ID | WBS | Task | Duration | Start | Finish | Predecessors | Constraint | Calendar | Unique_Task_ID |
| --- | --- | --- | --- | --- | --- | --- | --- | --- | --- |
| 6368 | 36900.37000.37100.37300.38000.47500.63600 | **Toilet** | 237d | 2026-05-21 | 2027-01-12 |  | start no earlier than 2026-05-21 | 7 Days Work | 9265724 |
| 6369 | 36900.37000.37100.37300.38000.47500.63600.933400 | Toilet_MEP Clearance -1 | 7d | 2026-05-21 | 2026-05-27 | 6332 |  | 7 Days Work | 9277984 |
| 6370 | 36900.37000.37100.37300.38000.47500.63600.933500 | Toilet_Level Marking | 1d | 2026-05-28 | 2026-05-28 | 6369 |  | 7 Days Work | 9277994 |
| 6371 | 36900.37000.37100.37300.38000.47500.63600.933600 | Toilet_Chasing work for Electrical conduit & concealed plumbing | 5d | 2026-05-29 | 2026-06-02 | 6370 |  | 7 Days Work | 9278004 |
| 6372 | 36900.37000.37100.37300.38000.47500.63600.933700 | Toilet_Plumbing work 1st fix | 5d | 2026-06-03 | 2026-06-07 | 6371 |  | 7 Days Work | 9278014 |
| 6373 | 36900.37000.37100.37300.38000.47500.63600.933800 | Toilet_Sleeve/Bore Packing | 5d | 2026-06-08 | 2026-06-12 | 6372 |  | 7 Days Work | 9278024 |
| 6374 | 36900.37000.37100.37300.38000.47500.63600.933900 | Toilet_Waterproofing | 10d | 2026-06-13 | 2026-06-22 | 6373 |  | 7 Days Work | 9278034 |
| 6375 | 36900.37000.37100.37300.38000.47500.63600.934000 | Toilet_Screed | 1d | 2026-06-23 | 2026-06-23 | 6374 |  | 7 Days Work | 9278044 |
| 6376 | 36900.37000.37100.37300.38000.47500.63600.934100 | Toilet_Plumbing 2nd fix | 5d | 2026-06-24 | 2026-06-28 | 6375 |  | 7 Days Work | 9278054 |
| 6377 | 36900.37000.37100.37300.38000.47500.63600.934200 | Toilet_Ledge wall | 5d | 2026-06-29 | 2026-07-03 | 6376 |  | 7 Days Work | 9278064 |
| 6378 | 36900.37000.37100.37300.38000.47500.63600.934300 | Toilet_Cement Plaster | 5d | 2026-07-04 | 2026-07-08 | 6377 |  | 7 Days Work | 9278074 |
| 6379 | 36900.37000.37100.37300.38000.47500.63600.934400 | Toilet_Door Frame | 1d | 2026-07-09 | 2026-07-09 | 6378 |  | 7 Days Work | 9278084 |
| 6380 | 36900.37000.37100.37300.38000.47500.63600.934500 | Toilet_Wash basin & Couter | 3d | 2026-07-10 | 2026-07-12 | 6379 |  | 7 Days Work | 9278094 |
| 6381 | 36900.37000.37100.37300.38000.47500.63600.934600 | Toilet_Wall dado | 20d | 2026-07-13 | 2026-08-01 | 6380 |  | 7 Days Work | 9278104 |
| 6382 | 36900.37000.37100.37300.38000.47500.63600.934700 | Toilet_Granite Work-Ledge wall top | 3d | 2026-08-02 | 2026-08-04 | 6381 |  | 7 Days Work | 9278114 |
| 6383 | 36900.37000.37100.37300.38000.47500.63600.934800 | Toilet_Floor Tilling work | 20d | 2026-08-05 | 2026-08-24 | 6382 |  | 7 Days Work | 9278124 |
| 6384 | 36900.37000.37100.37300.38000.47500.63600.934900 | Toilet_1st row of dado | 5d | 2026-08-25 | 2026-08-29 | 6383 |  | 7 Days Work | 9278134 |
| 6385 | 36900.37000.37100.37300.38000.47500.63600.935000 | Toilet_Window Fixing | 14d | 2026-08-30 | 2026-09-12 | 6384 |  | 7 Days Work | 9278144 |
| 6386 | 36900.37000.37100.37300.38000.47500.63600.935100 | Toilet_Services above False ceiling | 21d | 2026-09-13 | 2026-10-03 | 6385 |  | 7 Days Work | 9278154 |
| 6387 | 36900.37000.37100.37300.38000.47500.63600.935200 | Toilet_False Ceiling framing | 12d | 2026-10-04 | 2026-10-15 | 6386 |  | 7 Days Work | 9278164 |
| 6388 | 36900.37000.37100.37300.38000.47500.63600.935300 | Toilet_Door Frame | 5d | 2026-10-16 | 2026-10-20 | 6387 |  | 7 Days Work | 9278174 |
| 6389 | 36900.37000.37100.37300.38000.47500.63600.935400 | Toilet_Epoxy Tile Grouting | 7d | 2026-12-16 | 2026-12-22 | 6364SS |  | 7 Days Work | 9278184 |
| 6390 | 36900.37000.37100.37300.38000.47500.63600.935500 | Toilet_False ceiling board fixing, CP Sanitary Fixture, Electric Fixture | 21d | 2026-12-23 | 2027-01-12 | 6389 |  | 7 Days Work | 9278194 |
| 6391 | 36900.37000.37100.37300.38000.47600 | **15th Habitable/16th Floor** | 245d | 2026-05-23 | 2027-01-22 |  | start no earlier than 2026-05-23 | 7 Days Work | 9265524 |
| 6392 | 36900.37000.37100.37300.38000.47600.517800 | Post Pour | 7d | 2026-05-23 | 2026-05-29 | 5543FS+15d |  | 7 Days Work | 9271164 |
| 6393 | 36900.37000.37100.37300.38000.47600.517900 | MEP Clearance -1 | 5d | 2026-05-30 | 2026-06-03 | 6392 |  | 7 Days Work | 9271174 |
| 6394 | 36900.37000.37100.37300.38000.47600.518000 | Benchmark | 1d | 2026-06-04 | 2026-06-04 | 6393 |  | 7 Days Work | 9271184 |
| 6395 | 36900.37000.37100.37300.38000.47600.518100 | Temporary Railing | 3d | 2026-06-05 | 2026-06-07 | 6394 |  | 7 Days Work | 9271194 |
| 6396 | 36900.37000.37100.37300.38000.47600.518200 | Blockwork | 10d | 2026-06-08 | 2026-06-17 | 6395 |  | 7 Days Work | 9271204 |
| 6397 | 36900.37000.37100.37300.38000.47600.518300 | MEP Clearance -2 | 10d | 2026-06-18 | 2026-06-27 | 6396 |  | 7 Days Work | 9271214 |
| 6398 | 36900.37000.37100.37300.38000.47600.518400 | Gypsum Plaster | 14d | 2026-06-28 | 2026-07-11 | 6397 |  | 7 Days Work | 9271224 |
| 6399 | 36900.37000.37100.37300.38000.47600.518500 | Kitchen Platform | 3d | 2026-07-12 | 2026-07-14 | 6398 |  | 7 Days Work | 9271234 |
| 6400 | 36900.37000.37100.37300.38000.47600.518600 | Kitchen dado | 7d | 2026-07-15 | 2026-07-21 | 6399 |  | 7 Days Work | 9271244 |
| 6401 | 36900.37000.37100.37300.38000.47600.518700 | Fire Fighting | 5d | 2026-07-22 | 2026-07-26 | 6400 |  | 7 Days Work | 9271254 |
| 6402 | 36900.37000.37100.37300.38000.47600.518800 | Anticapilary | 5d | 2026-07-27 | 2026-07-31 | 6401 |  | 7 Days Work | 9271264 |
| 6403 | 36900.37000.37100.37300.38000.47600.518900 | Stone Laying | 10d | 2026-09-03 | 2026-09-12 | 6443 |  | 7 Days Work | 9271274 |
| 6404 | 36900.37000.37100.37300.38000.47600.519000 | Tiles Laying | 7d | 2026-09-03 | 2026-09-09 | 6443 |  | 7 Days Work | 9271284 |
| 6405 | 36900.37000.37100.37300.38000.47600.519100 | 1st cutting/polishing of stone flooring | 7d | 2026-09-10 | 2026-09-16 | 6404 |  | 7 Days Work | 9271294 |
| 6406 | 36900.37000.37100.37300.38000.47600.519200 | Tiles/Stone skirting | 5d | 2026-09-17 | 2026-09-21 | 6405 |  | 7 Days Work | 9271304 |
| 6407 | 36900.37000.37100.37300.38000.47600.519300 | Protechtion sheet | 1d | 2026-09-22 | 2026-09-22 | 6406 |  | 7 Days Work | 9271314 |
| 6408 | 36900.37000.37100.37300.38000.47600.519400 | Installation of Temporary Door | 1d | 2026-09-23 | 2026-09-23 | 6407 |  | 7 Days Work | 9271324 |
| 6409 | 36900.37000.37100.37300.38000.47600.519500 | Fixing of window tracks | 5d | 2026-09-24 | 2026-09-28 | 6408 |  | 7 Days Work | 9271334 |
| 6410 | 36900.37000.37100.37300.38000.47600.519600 | Wire Pulling | 7d | 2026-09-29 | 2026-10-05 | 6409 |  | 7 Days Work | 9271344 |
| 6411 | 36900.37000.37100.37300.38000.47600.519700 | Gypsum Remaining | 5d | 2026-10-06 | 2026-10-10 | 6410 |  | 7 Days Work | 9271354 |
| 6412 | 36900.37000.37100.37300.38000.47600.519800 | Fixing of windoow shutter | 5d | 2026-10-11 | 2026-10-15 | 6411 |  | 7 Days Work | 9271364 |
| 6413 | 36900.37000.37100.37300.38000.47600.519900 | Putty Works - walls & ceiling | 15d | 2026-10-16 | 2026-10-30 | 6412 |  | 7 Days Work | 9271374 |
| 6414 | 36900.37000.37100.37300.38000.47600.520000 | False Ceiling- Framing | 10d | 2026-10-31 | 2026-11-09 | 6413 |  | 7 Days Work | 9271384 |
| 6415 | 36900.37000.37100.37300.38000.47600.520100 | Pre Hung Door | 3d | 2026-11-10 | 2026-11-12 | 6414 |  | 7 Days Work | 9271394 |
| 6416 | 36900.37000.37100.37300.38000.47600.520200 | Protechtion sheet | 2d | 2026-11-13 | 2026-11-14 | 6415 |  | 7 Days Work | 9271404 |
| 6417 | 36900.37000.37100.37300.38000.47600.520300 | Skirting near door | 2d | 2026-11-15 | 2026-11-16 | 6416 |  | 7 Days Work | 9271414 |
| 6418 | 36900.37000.37100.37300.38000.47600.520400 | Electrical Switch box fixing | 14d | 2026-11-17 | 2026-11-30 | 6417 |  | 7 Days Work | 9271424 |
| 6419 | 36900.37000.37100.37300.38000.47600.520500 | Fire Fighting painting | 5d | 2026-12-01 | 2026-12-05 | 6418 |  | 7 Days Work | 9271434 |
| 6420 | 36900.37000.37100.37300.38000.47600.520600 | Protection of all flooring, door & window hardware | 5d | 2026-12-06 | 2026-12-10 | 6419 |  | 7 Days Work | 9271444 |
| 6421 | 36900.37000.37100.37300.38000.47600.520700 | 1st coat primer- ceiling 1st & walls | 14d | 2026-12-11 | 2026-12-24 | 6420 |  | 7 Days Work | 9271454 |
| 6422 | 36900.37000.37100.37300.38000.47600.520800 | Wooden Flooring | 5d | 2026-12-25 | 2026-12-29 | 6421 |  | 7 Days Work | 9271464 |
| 6423 | 36900.37000.37100.37300.38000.47600.520900 | Removing of Temporary Railing & installation of Glass Railing | 5d | 2026-12-25 | 2026-12-29 | 6421 |  | 7 Days Work | 9271474 |
| 6424 | 36900.37000.37100.37300.38000.47600.521000 | Tile Grouting | 7d | 2026-12-25 | 2026-12-31 | 6421 |  | 7 Days Work | 9271484 |
| 6425 | 36900.37000.37100.37300.38000.47600.521100 | False Ceiling | 5d | 2027-01-01 | 2027-01-05 | 6424 |  | 7 Days Work | 9271494 |
| 6426 | 36900.37000.37100.37300.38000.47600.521200 | 2nd coat of primer | 10d | 2027-01-06 | 2027-01-15 | 6425 |  | 7 Days Work | 9271504 |
| 6427 | 36900.37000.37100.37300.38000.47600.521300 | Final cutting/polishing of stone flooring | 7d | 2027-01-16 | 2027-01-22 | 6426 |  | 7 Days Work | 9271514 |

| ID | WBS | Task | Duration | Start | Finish | Predecessors | Constraint | Calendar | Unique_Task_ID |
| --- | --- | --- | --- | --- | --- | --- | --- | --- | --- |
| 6428 | 36900.37000.37100.37300.38000.47600.63500 | **Toilet** | 237d | 2026-05-30 | 2027-01-21 |  | start no earlier than 2026-05-30 | 7 Days Work | 9265734 |
| 6429 | 36900.37000.37100.37300.38000.47600.63500.935600 | Toilet_MEP Clearance -1 | 7d | 2026-05-30 | 2026-06-05 | 6392 |  | 7 Days Work | 9278204 |
| 6430 | 36900.37000.37100.37300.38000.47600.63500.935700 | Toilet_Level Marking | 1d | 2026-06-06 | 2026-06-06 | 6429 |  | 7 Days Work | 9278214 |
| 6431 | 36900.37000.37100.37300.38000.47600.63500.935800 | Toilet_Chasing work for Electrical conduit & concealed plumbing | 5d | 2026-06-07 | 2026-06-11 | 6430 |  | 7 Days Work | 9278224 |
| 6432 | 36900.37000.37100.37300.38000.47600.63500.935900 | Toilet_Plumbing work 1st fix | 5d | 2026-06-12 | 2026-06-16 | 6431 |  | 7 Days Work | 9278234 |
| 6433 | 36900.37000.37100.37300.38000.47600.63500.936000 | Toilet_Sleeve/Bore Packing | 5d | 2026-06-17 | 2026-06-21 | 6432 |  | 7 Days Work | 9278244 |
| 6434 | 36900.37000.37100.37300.38000.47600.63500.936100 | Toilet_Waterproofing | 10d | 2026-06-22 | 2026-07-01 | 6433 |  | 7 Days Work | 9278254 |
| 6435 | 36900.37000.37100.37300.38000.47600.63500.936200 | Toilet_Screed | 1d | 2026-07-02 | 2026-07-02 | 6434 |  | 7 Days Work | 9278264 |
| 6436 | 36900.37000.37100.37300.38000.47600.63500.936300 | Toilet_Plumbing 2nd fix | 5d | 2026-07-03 | 2026-07-07 | 6435 |  | 7 Days Work | 9278274 |
| 6437 | 36900.37000.37100.37300.38000.47600.63500.936400 | Toilet_Ledge wall | 5d | 2026-07-08 | 2026-07-12 | 6436 |  | 7 Days Work | 9278284 |
| 6438 | 36900.37000.37100.37300.38000.47600.63500.936500 | Toilet_Cement Plaster | 5d | 2026-07-13 | 2026-07-17 | 6437 |  | 7 Days Work | 9278294 |
| 6439 | 36900.37000.37100.37300.38000.47600.63500.936600 | Toilet_Door Frame | 1d | 2026-07-18 | 2026-07-18 | 6438 |  | 7 Days Work | 9278304 |
| 6440 | 36900.37000.37100.37300.38000.47600.63500.936700 | Toilet_Wash basin & Couter | 3d | 2026-07-19 | 2026-07-21 | 6439 |  | 7 Days Work | 9278314 |
| 6441 | 36900.37000.37100.37300.38000.47600.63500.936800 | Toilet_Wall dado | 20d | 2026-07-22 | 2026-08-10 | 6440 |  | 7 Days Work | 9278324 |
| 6442 | 36900.37000.37100.37300.38000.47600.63500.936900 | Toilet_Granite Work-Ledge wall top | 3d | 2026-08-11 | 2026-08-13 | 6441 |  | 7 Days Work | 9278334 |
| 6443 | 36900.37000.37100.37300.38000.47600.63500.937000 | Toilet_Floor Tilling work | 20d | 2026-08-14 | 2026-09-02 | 6442 |  | 7 Days Work | 9278344 |
| 6444 | 36900.37000.37100.37300.38000.47600.63500.937100 | Toilet_1st row of dado | 5d | 2026-09-03 | 2026-09-07 | 6443 |  | 7 Days Work | 9278354 |
| 6445 | 36900.37000.37100.37300.38000.47600.63500.937200 | Toilet_Window Fixing | 14d | 2026-09-08 | 2026-09-21 | 6444 |  | 7 Days Work | 9278364 |
| 6446 | 36900.37000.37100.37300.38000.47600.63500.937300 | Toilet_Services above False ceiling | 21d | 2026-09-22 | 2026-10-12 | 6445 |  | 7 Days Work | 9278374 |
| 6447 | 36900.37000.37100.37300.38000.47600.63500.937400 | Toilet_False Ceiling framing | 12d | 2026-10-13 | 2026-10-24 | 6446 |  | 7 Days Work | 9278384 |
| 6448 | 36900.37000.37100.37300.38000.47600.63500.937500 | Toilet_Door Frame | 5d | 2026-10-25 | 2026-10-29 | 6447 |  | 7 Days Work | 9278394 |
| 6449 | 36900.37000.37100.37300.38000.47600.63500.937600 | Toilet_Epoxy Tile Grouting | 7d | 2026-12-25 | 2026-12-31 | 6424SS |  | 7 Days Work | 9278404 |
| 6450 | 36900.37000.37100.37300.38000.47600.63500.937700 | Toilet_False ceiling board fixing, CP Sanitary Fixture, Electric Fixture | 21d | 2027-01-01 | 2027-01-21 | 6449 |  | 7 Days Work | 9278414 |
| 6451 | 36900.37000.37100.37300.38000.47700 | **16th Habitable/17th Floor** | 245d | 2026-06-01 | 2027-01-31 |  | start no earlier than 2026-06-01 | 7 Days Work | 9265534 |
| 6452 | 36900.37000.37100.37300.38000.47700.521400 | Post Pour | 7d | 2026-06-01 | 2026-06-07 | 5544FS+15d |  | 7 Days Work | 9271524 |
| 6453 | 36900.37000.37100.37300.38000.47700.521500 | MEP Clearance -1 | 5d | 2026-06-08 | 2026-06-12 | 6452 |  | 7 Days Work | 9271534 |
| 6454 | 36900.37000.37100.37300.38000.47700.521600 | Benchmark | 1d | 2026-06-13 | 2026-06-13 | 6453 |  | 7 Days Work | 9271544 |
| 6455 | 36900.37000.37100.37300.38000.47700.521700 | Temporary Railing | 3d | 2026-06-14 | 2026-06-16 | 6454 |  | 7 Days Work | 9271554 |
| 6456 | 36900.37000.37100.37300.38000.47700.521800 | Blockwork | 10d | 2026-06-17 | 2026-06-26 | 6455 |  | 7 Days Work | 9271564 |
| 6457 | 36900.37000.37100.37300.38000.47700.521900 | MEP Clearance -2 | 10d | 2026-06-27 | 2026-07-06 | 6456 |  | 7 Days Work | 9271574 |
| 6458 | 36900.37000.37100.37300.38000.47700.522000 | Gypsum Plaster | 14d | 2026-07-07 | 2026-07-20 | 6457 |  | 7 Days Work | 9271584 |
| 6459 | 36900.37000.37100.37300.38000.47700.522100 | Kitchen Platform | 3d | 2026-07-21 | 2026-07-23 | 6458 |  | 7 Days Work | 9271594 |
| 6460 | 36900.37000.37100.37300.38000.47700.522200 | Kitchen dado | 7d | 2026-07-24 | 2026-07-30 | 6459 |  | 7 Days Work | 9271604 |
| 6461 | 36900.37000.37100.37300.38000.47700.522300 | Fire Fighting | 5d | 2026-07-31 | 2026-08-04 | 6460 |  | 7 Days Work | 9271614 |
| 6462 | 36900.37000.37100.37300.38000.47700.522400 | Anticapilary | 5d | 2026-08-05 | 2026-08-09 | 6461 |  | 7 Days Work | 9271624 |
| 6463 | 36900.37000.37100.37300.38000.47700.522500 | Stone Laying | 10d | 2026-09-12 | 2026-09-21 | 6503 |  | 7 Days Work | 9271634 |
| 6464 | 36900.37000.37100.37300.38000.47700.522600 | Tiles Laying | 7d | 2026-09-12 | 2026-09-18 | 6503 |  | 7 Days Work | 9271644 |
| 6465 | 36900.37000.37100.37300.38000.47700.522700 | 1st cutting/polishing of stone flooring | 7d | 2026-09-19 | 2026-09-25 | 6464 |  | 7 Days Work | 9271654 |
| 6466 | 36900.37000.37100.37300.38000.47700.522800 | Tiles/Stone skirting | 5d | 2026-09-26 | 2026-09-30 | 6465 |  | 7 Days Work | 9271664 |
| 6467 | 36900.37000.37100.37300.38000.47700.522900 | Protechtion sheet | 1d | 2026-10-01 | 2026-10-01 | 6466 |  | 7 Days Work | 9271674 |
| 6468 | 36900.37000.37100.37300.38000.47700.523000 | Installation of Temporary Door | 1d | 2026-10-02 | 2026-10-02 | 6467 |  | 7 Days Work | 9271684 |
| 6469 | 36900.37000.37100.37300.38000.47700.523100 | Fixing of window tracks | 5d | 2026-10-03 | 2026-10-07 | 6468 |  | 7 Days Work | 9271694 |
| 6470 | 36900.37000.37100.37300.38000.47700.523200 | Wire Pulling | 7d | 2026-10-08 | 2026-10-14 | 6469 |  | 7 Days Work | 9271704 |
| 6471 | 36900.37000.37100.37300.38000.47700.523300 | Gypsum Remaining | 5d | 2026-10-15 | 2026-10-19 | 6470 |  | 7 Days Work | 9271714 |
| 6472 | 36900.37000.37100.37300.38000.47700.523400 | Fixing of windoow shutter | 5d | 2026-10-20 | 2026-10-24 | 6471 |  | 7 Days Work | 9271724 |
| 6473 | 36900.37000.37100.37300.38000.47700.523500 | Putty Works - walls & ceiling | 15d | 2026-10-25 | 2026-11-08 | 6472 |  | 7 Days Work | 9271734 |
| 6474 | 36900.37000.37100.37300.38000.47700.523600 | False Ceiling- Framing | 10d | 2026-11-09 | 2026-11-18 | 6473 |  | 7 Days Work | 9271744 |
| 6475 | 36900.37000.37100.37300.38000.47700.523700 | Pre Hung Door | 3d | 2026-11-19 | 2026-11-21 | 6474 |  | 7 Days Work | 9271754 |
| 6476 | 36900.37000.37100.37300.38000.47700.523800 | Protechtion sheet | 2d | 2026-11-22 | 2026-11-23 | 6475 |  | 7 Days Work | 9271764 |
| 6477 | 36900.37000.37100.37300.38000.47700.523900 | Skirting near door | 2d | 2026-11-24 | 2026-11-25 | 6476 |  | 7 Days Work | 9271774 |
| 6478 | 36900.37000.37100.37300.38000.47700.524000 | Electrical Switch box fixing | 14d | 2026-11-26 | 2026-12-09 | 6477 |  | 7 Days Work | 9271784 |
| 6479 | 36900.37000.37100.37300.38000.47700.524100 | Fire Fighting painting | 5d | 2026-12-10 | 2026-12-14 | 6478 |  | 7 Days Work | 9271794 |
| 6480 | 36900.37000.37100.37300.38000.47700.524200 | Protection of all flooring, door & window hardware | 5d | 2026-12-15 | 2026-12-19 | 6479 |  | 7 Days Work | 9271804 |
| 6481 | 36900.37000.37100.37300.38000.47700.524300 | 1st coat primer- ceiling 1st & walls | 14d | 2026-12-20 | 2027-01-02 | 6480 |  | 7 Days Work | 9271814 |
| 6482 | 36900.37000.37100.37300.38000.47700.524400 | Wooden Flooring | 5d | 2027-01-03 | 2027-01-07 | 6481 |  | 7 Days Work | 9271824 |
| 6483 | 36900.37000.37100.37300.38000.47700.524500 | Removing of Temporary Railing & installation of Glass Railing | 5d | 2027-01-03 | 2027-01-07 | 6481 |  | 7 Days Work | 9271834 |
| 6484 | 36900.37000.37100.37300.38000.47700.524600 | Tile Grouting | 7d | 2027-01-03 | 2027-01-09 | 6481 |  | 7 Days Work | 9271844 |
| 6485 | 36900.37000.37100.37300.38000.47700.524700 | False Ceiling | 5d | 2027-01-10 | 2027-01-14 | 6484 |  | 7 Days Work | 9271854 |
| 6486 | 36900.37000.37100.37300.38000.47700.524800 | 2nd coat of primer | 10d | 2027-01-15 | 2027-01-24 | 6485 |  | 7 Days Work | 9271864 |
| 6487 | 36900.37000.37100.37300.38000.47700.524900 | Final cutting/polishing of stone flooring | 7d | 2027-01-25 | 2027-01-31 | 6486 |  | 7 Days Work | 9271874 |

| ID | WBS | Task | Duration | Start | Finish | Predecessors | Constraint | Calendar | Unique_Task_ID |
| --- | --- | --- | --- | --- | --- | --- | --- | --- | --- |
| 6488 | 36900.37000.37100.37300.38000.47700.63400 | **Toilet** | 237d | 2026-06-08 | 2027-01-30 |  | start no earlier than 2026-06-08 | 7 Days Work | 9265744 |
| 6489 | 36900.37000.37100.37300.38000.47700.63400.937800 | Toilet_MEP Clearance -1 | 7d | 2026-06-08 | 2026-06-14 | 6452 |  | 7 Days Work | 9278424 |
| 6490 | 36900.37000.37100.37300.38000.47700.63400.937900 | Toilet_Level Marking | 1d | 2026-06-15 | 2026-06-15 | 6489 |  | 7 Days Work | 9278434 |
| 6491 | 36900.37000.37100.37300.38000.47700.63400.938000 | Toilet_Chasing work for Electrical conduit & concealed plumbing | 5d | 2026-06-16 | 2026-06-20 | 6490 |  | 7 Days Work | 9278444 |
| 6492 | 36900.37000.37100.37300.38000.47700.63400.938100 | Toilet_Plumbing work 1st fix | 5d | 2026-06-21 | 2026-06-25 | 6491 |  | 7 Days Work | 9278454 |
| 6493 | 36900.37000.37100.37300.38000.47700.63400.938200 | Toilet_Sleeve/Bore Packing | 5d | 2026-06-26 | 2026-06-30 | 6492 |  | 7 Days Work | 9278464 |
| 6494 | 36900.37000.37100.37300.38000.47700.63400.938300 | Toilet_Waterproofing | 10d | 2026-07-01 | 2026-07-10 | 6493 |  | 7 Days Work | 9278474 |
| 6495 | 36900.37000.37100.37300.38000.47700.63400.938400 | Toilet_Screed | 1d | 2026-07-11 | 2026-07-11 | 6494 |  | 7 Days Work | 9278484 |
| 6496 | 36900.37000.37100.37300.38000.47700.63400.938500 | Toilet_Plumbing 2nd fix | 5d | 2026-07-12 | 2026-07-16 | 6495 |  | 7 Days Work | 9278494 |
| 6497 | 36900.37000.37100.37300.38000.47700.63400.938600 | Toilet_Ledge wall | 5d | 2026-07-17 | 2026-07-21 | 6496 |  | 7 Days Work | 9278504 |
| 6498 | 36900.37000.37100.37300.38000.47700.63400.938700 | Toilet_Cement Plaster | 5d | 2026-07-22 | 2026-07-26 | 6497 |  | 7 Days Work | 9278514 |
| 6499 | 36900.37000.37100.37300.38000.47700.63400.938800 | Toilet_Door Frame | 1d | 2026-07-27 | 2026-07-27 | 6498 |  | 7 Days Work | 9278524 |
| 6500 | 36900.37000.37100.37300.38000.47700.63400.938900 | Toilet_Wash basin & Couter | 3d | 2026-07-28 | 2026-07-30 | 6499 |  | 7 Days Work | 9278534 |
| 6501 | 36900.37000.37100.37300.38000.47700.63400.939000 | Toilet_Wall dado | 20d | 2026-07-31 | 2026-08-19 | 6500 |  | 7 Days Work | 9278544 |
| 6502 | 36900.37000.37100.37300.38000.47700.63400.939100 | Toilet_Granite Work-Ledge wall top | 3d | 2026-08-20 | 2026-08-22 | 6501 |  | 7 Days Work | 9278554 |
| 6503 | 36900.37000.37100.37300.38000.47700.63400.939200 | Toilet_Floor Tilling work | 20d | 2026-08-23 | 2026-09-11 | 6502 |  | 7 Days Work | 9278564 |
| 6504 | 36900.37000.37100.37300.38000.47700.63400.939300 | Toilet_1st row of dado | 5d | 2026-09-12 | 2026-09-16 | 6503 |  | 7 Days Work | 9278574 |
| 6505 | 36900.37000.37100.37300.38000.47700.63400.939400 | Toilet_Window Fixing | 14d | 2026-09-17 | 2026-09-30 | 6504 |  | 7 Days Work | 9278584 |
| 6506 | 36900.37000.37100.37300.38000.47700.63400.939500 | Toilet_Services above False ceiling | 21d | 2026-10-01 | 2026-10-21 | 6505 |  | 7 Days Work | 9278594 |
| 6507 | 36900.37000.37100.37300.38000.47700.63400.939600 | Toilet_False Ceiling framing | 12d | 2026-10-22 | 2026-11-02 | 6506 |  | 7 Days Work | 9278604 |
| 6508 | 36900.37000.37100.37300.38000.47700.63400.939700 | Toilet_Door Frame | 5d | 2026-11-03 | 2026-11-07 | 6507 |  | 7 Days Work | 9278614 |
| 6509 | 36900.37000.37100.37300.38000.47700.63400.939800 | Toilet_Epoxy Tile Grouting | 7d | 2027-01-03 | 2027-01-09 | 6484SS |  | 7 Days Work | 9278624 |
| 6510 | 36900.37000.37100.37300.38000.47700.63400.939900 | Toilet_False ceiling board fixing, CP Sanitary Fixture, Electric Fixture | 21d | 2027-01-10 | 2027-01-30 | 6509 |  | 7 Days Work | 9278634 |
| 6511 | 36900.37000.37100.37300.38000.47800 | **17th Habitable/18th Floor** | 245d | 2026-06-13 | 2027-02-12 |  | start no earlier than 2026-06-13 | 7 Days Work | 9265544 |
| 6512 | 36900.37000.37100.37300.38000.47800.525000 | Post Pour | 7d | 2026-06-13 | 2026-06-19 | 5545FS+15d |  | 7 Days Work | 9271884 |
| 6513 | 36900.37000.37100.37300.38000.47800.525100 | MEP Clearance -1 | 5d | 2026-06-20 | 2026-06-24 | 6512 |  | 7 Days Work | 9271894 |
| 6514 | 36900.37000.37100.37300.38000.47800.525200 | Benchmark | 1d | 2026-06-25 | 2026-06-25 | 6513 |  | 7 Days Work | 9271904 |
| 6515 | 36900.37000.37100.37300.38000.47800.525300 | Temporary Railing | 3d | 2026-06-26 | 2026-06-28 | 6514 |  | 7 Days Work | 9271914 |
| 6516 | 36900.37000.37100.37300.38000.47800.525400 | Blockwork | 10d | 2026-06-29 | 2026-07-08 | 6515 |  | 7 Days Work | 9271924 |
| 6517 | 36900.37000.37100.37300.38000.47800.525500 | MEP Clearance -2 | 10d | 2026-07-09 | 2026-07-18 | 6516 |  | 7 Days Work | 9271934 |
| 6518 | 36900.37000.37100.37300.38000.47800.525600 | Gypsum Plaster | 14d | 2026-07-19 | 2026-08-01 | 6517 |  | 7 Days Work | 9271944 |
| 6519 | 36900.37000.37100.37300.38000.47800.525700 | Kitchen Platform | 3d | 2026-08-02 | 2026-08-04 | 6518 |  | 7 Days Work | 9271954 |
| 6520 | 36900.37000.37100.37300.38000.47800.525800 | Kitchen dado | 7d | 2026-08-05 | 2026-08-11 | 6519 |  | 7 Days Work | 9271964 |
| 6521 | 36900.37000.37100.37300.38000.47800.525900 | Fire Fighting | 5d | 2026-08-12 | 2026-08-16 | 6520 |  | 7 Days Work | 9271974 |
| 6522 | 36900.37000.37100.37300.38000.47800.526000 | Anticapilary | 5d | 2026-08-17 | 2026-08-21 | 6521 |  | 7 Days Work | 9271984 |
| 6523 | 36900.37000.37100.37300.38000.47800.526100 | Stone Laying | 10d | 2026-09-24 | 2026-10-03 | 6563 |  | 7 Days Work | 9271994 |
| 6524 | 36900.37000.37100.37300.38000.47800.526200 | Tiles Laying | 7d | 2026-09-24 | 2026-09-30 | 6563 |  | 7 Days Work | 9272004 |
| 6525 | 36900.37000.37100.37300.38000.47800.526300 | 1st cutting/polishing of stone flooring | 7d | 2026-10-01 | 2026-10-07 | 6524 |  | 7 Days Work | 9272014 |
| 6526 | 36900.37000.37100.37300.38000.47800.526400 | Tiles/Stone skirting | 5d | 2026-10-08 | 2026-10-12 | 6525 |  | 7 Days Work | 9272024 |
| 6527 | 36900.37000.37100.37300.38000.47800.526500 | Protechtion sheet | 1d | 2026-10-13 | 2026-10-13 | 6526 |  | 7 Days Work | 9272034 |
| 6528 | 36900.37000.37100.37300.38000.47800.526600 | Installation of Temporary Door | 1d | 2026-10-14 | 2026-10-14 | 6527 |  | 7 Days Work | 9272044 |
| 6529 | 36900.37000.37100.37300.38000.47800.526700 | Fixing of window tracks | 5d | 2026-10-15 | 2026-10-19 | 6528 |  | 7 Days Work | 9272054 |
| 6530 | 36900.37000.37100.37300.38000.47800.526800 | Wire Pulling | 7d | 2026-10-20 | 2026-10-26 | 6529 |  | 7 Days Work | 9272064 |
| 6531 | 36900.37000.37100.37300.38000.47800.526900 | Gypsum Remaining | 5d | 2026-10-27 | 2026-10-31 | 6530 |  | 7 Days Work | 9272074 |
| 6532 | 36900.37000.37100.37300.38000.47800.527000 | Fixing of windoow shutter | 5d | 2026-11-01 | 2026-11-05 | 6531 |  | 7 Days Work | 9272084 |
| 6533 | 36900.37000.37100.37300.38000.47800.527100 | Putty Works - walls & ceiling | 15d | 2026-11-06 | 2026-11-20 | 6532 |  | 7 Days Work | 9272094 |
| 6534 | 36900.37000.37100.37300.38000.47800.527200 | False Ceiling- Framing | 10d | 2026-11-21 | 2026-11-30 | 6533 |  | 7 Days Work | 9272104 |
| 6535 | 36900.37000.37100.37300.38000.47800.527300 | Pre Hung Door | 3d | 2026-12-01 | 2026-12-03 | 6534 |  | 7 Days Work | 9272114 |
| 6536 | 36900.37000.37100.37300.38000.47800.527400 | Protechtion sheet | 2d | 2026-12-04 | 2026-12-05 | 6535 |  | 7 Days Work | 9272124 |
| 6537 | 36900.37000.37100.37300.38000.47800.527500 | Skirting near door | 2d | 2026-12-06 | 2026-12-07 | 6536 |  | 7 Days Work | 9272134 |
| 6538 | 36900.37000.37100.37300.38000.47800.527600 | Electrical Switch box fixing | 14d | 2026-12-08 | 2026-12-21 | 6537 |  | 7 Days Work | 9272144 |
| 6539 | 36900.37000.37100.37300.38000.47800.527700 | Fire Fighting painting | 5d | 2026-12-22 | 2026-12-26 | 6538 |  | 7 Days Work | 9272154 |
| 6540 | 36900.37000.37100.37300.38000.47800.527800 | Protection of all flooring, door & window hardware | 5d | 2026-12-27 | 2026-12-31 | 6539 |  | 7 Days Work | 9272164 |
| 6541 | 36900.37000.37100.37300.38000.47800.527900 | 1st coat primer- ceiling 1st & walls | 14d | 2027-01-01 | 2027-01-14 | 6540 |  | 7 Days Work | 9272174 |
| 6542 | 36900.37000.37100.37300.38000.47800.528000 | Wooden Flooring | 5d | 2027-01-15 | 2027-01-19 | 6541 |  | 7 Days Work | 9272184 |
| 6543 | 36900.37000.37100.37300.38000.47800.528100 | Removing of Temporary Railing & installation of Glass Railing | 5d | 2027-01-15 | 2027-01-19 | 6541 |  | 7 Days Work | 9272194 |
| 6544 | 36900.37000.37100.37300.38000.47800.528200 | Tile Grouting | 7d | 2027-01-15 | 2027-01-21 | 6541 |  | 7 Days Work | 9272204 |
| 6545 | 36900.37000.37100.37300.38000.47800.528300 | False Ceiling | 5d | 2027-01-22 | 2027-01-26 | 6544 |  | 7 Days Work | 9272214 |
| 6546 | 36900.37000.37100.37300.38000.47800.528400 | 2nd coat of primer | 10d | 2027-01-27 | 2027-02-05 | 6545 |  | 7 Days Work | 9272224 |
| 6547 | 36900.37000.37100.37300.38000.47800.528500 | Final cutting/polishing of stone flooring | 7d | 2027-02-06 | 2027-02-12 | 6546 |  | 7 Days Work | 9272234 |

| ID | WBS | Task | Duration | Start | Finish | Predecessors | Constraint | Calendar | Unique_Task_ID |
| --- | --- | --- | --- | --- | --- | --- | --- | --- | --- |
| 6548 | 36900.37000.37100.37300.38000.47800.63300 | **Toilet** | 237d | 2026-06-20 | 2027-02-11 |  | start no earlier than 2026-06-20 | 7 Days Work | 9265754 |
| 6549 | 36900.37000.37100.37300.38000.47800.63300.940000 | Toilet_MEP Clearance -1 | 7d | 2026-06-20 | 2026-06-26 | 6512 |  | 7 Days Work | 9278644 |
| 6550 | 36900.37000.37100.37300.38000.47800.63300.940100 | Toilet_Level Marking | 1d | 2026-06-27 | 2026-06-27 | 6549 |  | 7 Days Work | 9278654 |
| 6551 | 36900.37000.37100.37300.38000.47800.63300.940200 | Toilet_Chasing work for Electrical conduit & concealed plumbing | 5d | 2026-06-28 | 2026-07-02 | 6550 |  | 7 Days Work | 9278664 |
| 6552 | 36900.37000.37100.37300.38000.47800.63300.940300 | Toilet_Plumbing work 1st fix | 5d | 2026-07-03 | 2026-07-07 | 6551 |  | 7 Days Work | 9278674 |
| 6553 | 36900.37000.37100.37300.38000.47800.63300.940400 | Toilet_Sleeve/Bore Packing | 5d | 2026-07-08 | 2026-07-12 | 6552 |  | 7 Days Work | 9278684 |
| 6554 | 36900.37000.37100.37300.38000.47800.63300.940500 | Toilet_Waterproofing | 10d | 2026-07-13 | 2026-07-22 | 6553 |  | 7 Days Work | 9278694 |
| 6555 | 36900.37000.37100.37300.38000.47800.63300.940600 | Toilet_Screed | 1d | 2026-07-23 | 2026-07-23 | 6554 |  | 7 Days Work | 9278704 |
| 6556 | 36900.37000.37100.37300.38000.47800.63300.940700 | Toilet_Plumbing 2nd fix | 5d | 2026-07-24 | 2026-07-28 | 6555 |  | 7 Days Work | 9278714 |
| 6557 | 36900.37000.37100.37300.38000.47800.63300.940800 | Toilet_Ledge wall | 5d | 2026-07-29 | 2026-08-02 | 6556 |  | 7 Days Work | 9278724 |
| 6558 | 36900.37000.37100.37300.38000.47800.63300.940900 | Toilet_Cement Plaster | 5d | 2026-08-03 | 2026-08-07 | 6557 |  | 7 Days Work | 9278734 |
| 6559 | 36900.37000.37100.37300.38000.47800.63300.941000 | Toilet_Door Frame | 1d | 2026-08-08 | 2026-08-08 | 6558 |  | 7 Days Work | 9278744 |
| 6560 | 36900.37000.37100.37300.38000.47800.63300.941100 | Toilet_Wash basin & Couter | 3d | 2026-08-09 | 2026-08-11 | 6559 |  | 7 Days Work | 9278754 |
| 6561 | 36900.37000.37100.37300.38000.47800.63300.941200 | Toilet_Wall dado | 20d | 2026-08-12 | 2026-08-31 | 6560 |  | 7 Days Work | 9278764 |
| 6562 | 36900.37000.37100.37300.38000.47800.63300.941300 | Toilet_Granite Work-Ledge wall top | 3d | 2026-09-01 | 2026-09-03 | 6561 |  | 7 Days Work | 9278774 |
| 6563 | 36900.37000.37100.37300.38000.47800.63300.941400 | Toilet_Floor Tilling work | 20d | 2026-09-04 | 2026-09-23 | 6562 |  | 7 Days Work | 9278784 |
| 6564 | 36900.37000.37100.37300.38000.47800.63300.941500 | Toilet_1st row of dado | 5d | 2026-09-24 | 2026-09-28 | 6563 |  | 7 Days Work | 9278794 |
| 6565 | 36900.37000.37100.37300.38000.47800.63300.941600 | Toilet_Window Fixing | 14d | 2026-09-29 | 2026-10-12 | 6564 |  | 7 Days Work | 9278804 |
| 6566 | 36900.37000.37100.37300.38000.47800.63300.941700 | Toilet_Services above False ceiling | 21d | 2026-10-13 | 2026-11-02 | 6565 |  | 7 Days Work | 9278814 |
| 6567 | 36900.37000.37100.37300.38000.47800.63300.941800 | Toilet_False Ceiling framing | 12d | 2026-11-03 | 2026-11-14 | 6566 |  | 7 Days Work | 9278824 |
| 6568 | 36900.37000.37100.37300.38000.47800.63300.941900 | Toilet_Door Frame | 5d | 2026-11-15 | 2026-11-19 | 6567 |  | 7 Days Work | 9278834 |
| 6569 | 36900.37000.37100.37300.38000.47800.63300.942000 | Toilet_Epoxy Tile Grouting | 7d | 2027-01-15 | 2027-01-21 | 6544SS |  | 7 Days Work | 9278844 |
| 6570 | 36900.37000.37100.37300.38000.47800.63300.942100 | Toilet_False ceiling board fixing, CP Sanitary Fixture, Electric Fixture | 21d | 2027-01-22 | 2027-02-11 | 6569 |  | 7 Days Work | 9278854 |
| 6571 | 36900.37000.37100.37300.38000.47900 | **18th Habitable/19th Floor** | 245d | 2026-06-22 | 2027-02-21 |  | start no earlier than 2026-06-22 | 7 Days Work | 9265554 |
| 6572 | 36900.37000.37100.37300.38000.47900.528600 | Post Pour | 7d | 2026-06-22 | 2026-06-28 | 5546FS+15d |  | 7 Days Work | 9272244 |
| 6573 | 36900.37000.37100.37300.38000.47900.528700 | MEP Clearance -1 | 5d | 2026-06-29 | 2026-07-03 | 6572 |  | 7 Days Work | 9272254 |
| 6574 | 36900.37000.37100.37300.38000.47900.528800 | Benchmark | 1d | 2026-07-04 | 2026-07-04 | 6573 |  | 7 Days Work | 9272264 |
| 6575 | 36900.37000.37100.37300.38000.47900.528900 | Temporary Railing | 3d | 2026-07-05 | 2026-07-07 | 6574 |  | 7 Days Work | 9272274 |
| 6576 | 36900.37000.37100.37300.38000.47900.529000 | Blockwork | 10d | 2026-07-08 | 2026-07-17 | 6575 |  | 7 Days Work | 9272284 |
| 6577 | 36900.37000.37100.37300.38000.47900.529100 | MEP Clearance -2 | 10d | 2026-07-18 | 2026-07-27 | 6576 |  | 7 Days Work | 9272294 |
| 6578 | 36900.37000.37100.37300.38000.47900.529200 | Gypsum Plaster | 14d | 2026-07-28 | 2026-08-10 | 6577 |  | 7 Days Work | 9272304 |
| 6579 | 36900.37000.37100.37300.38000.47900.529300 | Kitchen Platform | 3d | 2026-08-11 | 2026-08-13 | 6578 |  | 7 Days Work | 9272314 |
| 6580 | 36900.37000.37100.37300.38000.47900.529400 | Kitchen dado | 7d | 2026-08-14 | 2026-08-20 | 6579 |  | 7 Days Work | 9272324 |
| 6581 | 36900.37000.37100.37300.38000.47900.529500 | Fire Fighting | 5d | 2026-08-21 | 2026-08-25 | 6580 |  | 7 Days Work | 9272334 |
| 6582 | 36900.37000.37100.37300.38000.47900.529600 | Anticapilary | 5d | 2026-08-26 | 2026-08-30 | 6581 |  | 7 Days Work | 9272344 |
| 6583 | 36900.37000.37100.37300.38000.47900.529700 | Stone Laying | 10d | 2026-10-03 | 2026-10-12 | 6623 |  | 7 Days Work | 9272354 |
| 6584 | 36900.37000.37100.37300.38000.47900.529800 | Tiles Laying | 7d | 2026-10-03 | 2026-10-09 | 6623 |  | 7 Days Work | 9272364 |
| 6585 | 36900.37000.37100.37300.38000.47900.529900 | 1st cutting/polishing of stone flooring | 7d | 2026-10-10 | 2026-10-16 | 6584 |  | 7 Days Work | 9272374 |
| 6586 | 36900.37000.37100.37300.38000.47900.530000 | Tiles/Stone skirting | 5d | 2026-10-17 | 2026-10-21 | 6585 |  | 7 Days Work | 9272384 |
| 6587 | 36900.37000.37100.37300.38000.47900.530100 | Protechtion sheet | 1d | 2026-10-22 | 2026-10-22 | 6586 |  | 7 Days Work | 9272394 |
| 6588 | 36900.37000.37100.37300.38000.47900.530200 | Installation of Temporary Door | 1d | 2026-10-23 | 2026-10-23 | 6587 |  | 7 Days Work | 9272404 |
| 6589 | 36900.37000.37100.37300.38000.47900.530300 | Fixing of window tracks | 5d | 2026-10-24 | 2026-10-28 | 6588 |  | 7 Days Work | 9272414 |
| 6590 | 36900.37000.37100.37300.38000.47900.530400 | Wire Pulling | 7d | 2026-10-29 | 2026-11-04 | 6589 |  | 7 Days Work | 9272424 |
| 6591 | 36900.37000.37100.37300.38000.47900.530500 | Gypsum Remaining | 5d | 2026-11-05 | 2026-11-09 | 6590 |  | 7 Days Work | 9272434 |
| 6592 | 36900.37000.37100.37300.38000.47900.530600 | Fixing of windoow shutter | 5d | 2026-11-10 | 2026-11-14 | 6591 |  | 7 Days Work | 9272444 |
| 6593 | 36900.37000.37100.37300.38000.47900.530700 | Putty Works - walls & ceiling | 15d | 2026-11-15 | 2026-11-29 | 6592 |  | 7 Days Work | 9272454 |
| 6594 | 36900.37000.37100.37300.38000.47900.530800 | False Ceiling- Framing | 10d | 2026-11-30 | 2026-12-09 | 6593 |  | 7 Days Work | 9272464 |
| 6595 | 36900.37000.37100.37300.38000.47900.530900 | Pre Hung Door | 3d | 2026-12-10 | 2026-12-12 | 6594 |  | 7 Days Work | 9272474 |
| 6596 | 36900.37000.37100.37300.38000.47900.531000 | Protechtion sheet | 2d | 2026-12-13 | 2026-12-14 | 6595 |  | 7 Days Work | 9272484 |
| 6597 | 36900.37000.37100.37300.38000.47900.531100 | Skirting near door | 2d | 2026-12-15 | 2026-12-16 | 6596 |  | 7 Days Work | 9272494 |
| 6598 | 36900.37000.37100.37300.38000.47900.531200 | Electrical Switch box fixing | 14d | 2026-12-17 | 2026-12-30 | 6597 |  | 7 Days Work | 9272504 |
| 6599 | 36900.37000.37100.37300.38000.47900.531300 | Fire Fighting painting | 5d | 2026-12-31 | 2027-01-04 | 6598 |  | 7 Days Work | 9272514 |
| 6600 | 36900.37000.37100.37300.38000.47900.531400 | Protection of all flooring, door & window hardware | 5d | 2027-01-05 | 2027-01-09 | 6599 |  | 7 Days Work | 9272524 |
| 6601 | 36900.37000.37100.37300.38000.47900.531500 | 1st coat primer- ceiling 1st & walls | 14d | 2027-01-10 | 2027-01-23 | 6600 |  | 7 Days Work | 9272534 |
| 6602 | 36900.37000.37100.37300.38000.47900.531600 | Wooden Flooring | 5d | 2027-01-24 | 2027-01-28 | 6601 |  | 7 Days Work | 9272544 |
| 6603 | 36900.37000.37100.37300.38000.47900.531700 | Removing of Temporary Railing & installation of Glass Railing | 5d | 2027-01-24 | 2027-01-28 | 6601 |  | 7 Days Work | 9272554 |
| 6604 | 36900.37000.37100.37300.38000.47900.531800 | Tile Grouting | 7d | 2027-01-24 | 2027-01-30 | 6601 |  | 7 Days Work | 9272564 |
| 6605 | 36900.37000.37100.37300.38000.47900.531900 | False Ceiling | 5d | 2027-01-31 | 2027-02-04 | 6604 |  | 7 Days Work | 9272574 |
| 6606 | 36900.37000.37100.37300.38000.47900.532000 | 2nd coat of primer | 10d | 2027-02-05 | 2027-02-14 | 6605 |  | 7 Days Work | 9272584 |
| 6607 | 36900.37000.37100.37300.38000.47900.532100 | Final cutting/polishing of stone flooring | 7d | 2027-02-15 | 2027-02-21 | 6606 |  | 7 Days Work | 9272594 |

| ID | WBS | Task | Duration | Start | Finish | Predecessors | Constraint | Calendar | Unique_Task_ID |
| --- | --- | --- | --- | --- | --- | --- | --- | --- | --- |
| 6608 | 36900.37000.37100.37300.38000.47900.63200 | **Toilet** | 237d | 2026-06-29 | 2027-02-20 |  | start no earlier than 2026-06-29 | 7 Days Work | 9265764 |
| 6609 | 36900.37000.37100.37300.38000.47900.63200.942200 | Toilet_MEP Clearance -1 | 7d | 2026-06-29 | 2026-07-05 | 6572 |  | 7 Days Work | 9278864 |
| 6610 | 36900.37000.37100.37300.38000.47900.63200.942300 | Toilet_Level Marking | 1d | 2026-07-06 | 2026-07-06 | 6609 |  | 7 Days Work | 9278874 |
| 6611 | 36900.37000.37100.37300.38000.47900.63200.942400 | Toilet_Chasing work for Electrical conduit & concealed plumbing | 5d | 2026-07-07 | 2026-07-11 | 6610 |  | 7 Days Work | 9278884 |
| 6612 | 36900.37000.37100.37300.38000.47900.63200.942500 | Toilet_Plumbing work 1st fix | 5d | 2026-07-12 | 2026-07-16 | 6611 |  | 7 Days Work | 9278894 |
| 6613 | 36900.37000.37100.37300.38000.47900.63200.942600 | Toilet_Sleeve/Bore Packing | 5d | 2026-07-17 | 2026-07-21 | 6612 |  | 7 Days Work | 9278904 |
| 6614 | 36900.37000.37100.37300.38000.47900.63200.942700 | Toilet_Waterproofing | 10d | 2026-07-22 | 2026-07-31 | 6613 |  | 7 Days Work | 9278914 |
| 6615 | 36900.37000.37100.37300.38000.47900.63200.942800 | Toilet_Screed | 1d | 2026-08-01 | 2026-08-01 | 6614 |  | 7 Days Work | 9278924 |
| 6616 | 36900.37000.37100.37300.38000.47900.63200.942900 | Toilet_Plumbing 2nd fix | 5d | 2026-08-02 | 2026-08-06 | 6615 |  | 7 Days Work | 9278934 |
| 6617 | 36900.37000.37100.37300.38000.47900.63200.943000 | Toilet_Ledge wall | 5d | 2026-08-07 | 2026-08-11 | 6616 |  | 7 Days Work | 9278944 |
| 6618 | 36900.37000.37100.37300.38000.47900.63200.943100 | Toilet_Cement Plaster | 5d | 2026-08-12 | 2026-08-16 | 6617 |  | 7 Days Work | 9278954 |
| 6619 | 36900.37000.37100.37300.38000.47900.63200.943200 | Toilet_Door Frame | 1d | 2026-08-17 | 2026-08-17 | 6618 |  | 7 Days Work | 9278964 |
| 6620 | 36900.37000.37100.37300.38000.47900.63200.943300 | Toilet_Wash basin & Couter | 3d | 2026-08-18 | 2026-08-20 | 6619 |  | 7 Days Work | 9278974 |
| 6621 | 36900.37000.37100.37300.38000.47900.63200.943400 | Toilet_Wall dado | 20d | 2026-08-21 | 2026-09-09 | 6620 |  | 7 Days Work | 9278984 |
| 6622 | 36900.37000.37100.37300.38000.47900.63200.943500 | Toilet_Granite Work-Ledge wall top | 3d | 2026-09-10 | 2026-09-12 | 6621 |  | 7 Days Work | 9278994 |
| 6623 | 36900.37000.37100.37300.38000.47900.63200.943600 | Toilet_Floor Tilling work | 20d | 2026-09-13 | 2026-10-02 | 6622 |  | 7 Days Work | 9279004 |
| 6624 | 36900.37000.37100.37300.38000.47900.63200.943700 | Toilet_1st row of dado | 5d | 2026-10-03 | 2026-10-07 | 6623 |  | 7 Days Work | 9279014 |
| 6625 | 36900.37000.37100.37300.38000.47900.63200.943800 | Toilet_Window Fixing | 14d | 2026-10-08 | 2026-10-21 | 6624 |  | 7 Days Work | 9279024 |
| 6626 | 36900.37000.37100.37300.38000.47900.63200.943900 | Toilet_Services above False ceiling | 21d | 2026-10-22 | 2026-11-11 | 6625 |  | 7 Days Work | 9279034 |
| 6627 | 36900.37000.37100.37300.38000.47900.63200.944000 | Toilet_False Ceiling framing | 12d | 2026-11-12 | 2026-11-23 | 6626 |  | 7 Days Work | 9279044 |
| 6628 | 36900.37000.37100.37300.38000.47900.63200.944100 | Toilet_Door Frame | 5d | 2026-11-24 | 2026-11-28 | 6627 |  | 7 Days Work | 9279054 |
| 6629 | 36900.37000.37100.37300.38000.47900.63200.944200 | Toilet_Epoxy Tile Grouting | 7d | 2027-01-24 | 2027-01-30 | 6604SS |  | 7 Days Work | 9279064 |
| 6630 | 36900.37000.37100.37300.38000.47900.63200.944300 | Toilet_False ceiling board fixing, CP Sanitary Fixture, Electric Fixture | 21d | 2027-01-31 | 2027-02-20 | 6629 |  | 7 Days Work | 9279074 |
| 6631 | 36900.37000.37100.37300.38000.48000 | **19th Habitable/20th Floor** | 245d | 2026-07-01 | 2027-03-02 |  | start no earlier than 2026-07-01 | 7 Days Work | 9265564 |
| 6632 | 36900.37000.37100.37300.38000.48000.532200 | Post Pour | 7d | 2026-07-01 | 2026-07-07 | 5547FS+15d |  | 7 Days Work | 9272604 |
| 6633 | 36900.37000.37100.37300.38000.48000.532300 | MEP Clearance -1 | 5d | 2026-07-08 | 2026-07-12 | 6632 |  | 7 Days Work | 9272614 |
| 6634 | 36900.37000.37100.37300.38000.48000.532400 | Benchmark | 1d | 2026-07-13 | 2026-07-13 | 6633 |  | 7 Days Work | 9272624 |
| 6635 | 36900.37000.37100.37300.38000.48000.532500 | Temporary Railing | 3d | 2026-07-14 | 2026-07-16 | 6634 |  | 7 Days Work | 9272634 |
| 6636 | 36900.37000.37100.37300.38000.48000.532600 | Blockwork | 10d | 2026-07-17 | 2026-07-26 | 6635 |  | 7 Days Work | 9272644 |
| 6637 | 36900.37000.37100.37300.38000.48000.532700 | MEP Clearance -2 | 10d | 2026-07-27 | 2026-08-05 | 6636 |  | 7 Days Work | 9272654 |
| 6638 | 36900.37000.37100.37300.38000.48000.532800 | Gypsum Plaster | 14d | 2026-08-06 | 2026-08-19 | 6637 |  | 7 Days Work | 9272664 |
| 6639 | 36900.37000.37100.37300.38000.48000.532900 | Kitchen Platform | 3d | 2026-08-20 | 2026-08-22 | 6638 |  | 7 Days Work | 9272674 |
| 6640 | 36900.37000.37100.37300.38000.48000.533000 | Kitchen dado | 7d | 2026-08-23 | 2026-08-29 | 6639 |  | 7 Days Work | 9272684 |
| 6641 | 36900.37000.37100.37300.38000.48000.533100 | Fire Fighting | 5d | 2026-08-30 | 2026-09-03 | 6640 |  | 7 Days Work | 9272694 |
| 6642 | 36900.37000.37100.37300.38000.48000.533200 | Anticapilary | 5d | 2026-09-04 | 2026-09-08 | 6641 |  | 7 Days Work | 9272704 |
| 6643 | 36900.37000.37100.37300.38000.48000.533300 | Stone Laying | 10d | 2026-10-12 | 2026-10-21 | 6683 |  | 7 Days Work | 9272714 |
| 6644 | 36900.37000.37100.37300.38000.48000.533400 | Tiles Laying | 7d | 2026-10-12 | 2026-10-18 | 6683 |  | 7 Days Work | 9272724 |
| 6645 | 36900.37000.37100.37300.38000.48000.533500 | 1st cutting/polishing of stone flooring | 7d | 2026-10-19 | 2026-10-25 | 6644 |  | 7 Days Work | 9272734 |
| 6646 | 36900.37000.37100.37300.38000.48000.533600 | Tiles/Stone skirting | 5d | 2026-10-26 | 2026-10-30 | 6645 |  | 7 Days Work | 9272744 |
| 6647 | 36900.37000.37100.37300.38000.48000.533700 | Protechtion sheet | 1d | 2026-10-31 | 2026-10-31 | 6646 |  | 7 Days Work | 9272754 |
| 6648 | 36900.37000.37100.37300.38000.48000.533800 | Installation of Temporary Door | 1d | 2026-11-01 | 2026-11-01 | 6647 |  | 7 Days Work | 9272764 |
| 6649 | 36900.37000.37100.37300.38000.48000.533900 | Fixing of window tracks | 5d | 2026-11-02 | 2026-11-06 | 6648 |  | 7 Days Work | 9272774 |
| 6650 | 36900.37000.37100.37300.38000.48000.534000 | Wire Pulling | 7d | 2026-11-07 | 2026-11-13 | 6649 |  | 7 Days Work | 9272784 |
| 6651 | 36900.37000.37100.37300.38000.48000.534100 | Gypsum Remaining | 5d | 2026-11-14 | 2026-11-18 | 6650 |  | 7 Days Work | 9272794 |
| 6652 | 36900.37000.37100.37300.38000.48000.534200 | Fixing of windoow shutter | 5d | 2026-11-19 | 2026-11-23 | 6651 |  | 7 Days Work | 9272804 |
| 6653 | 36900.37000.37100.37300.38000.48000.534300 | Putty Works - walls & ceiling | 15d | 2026-11-24 | 2026-12-08 | 6652 |  | 7 Days Work | 9272814 |
| 6654 | 36900.37000.37100.37300.38000.48000.534400 | False Ceiling- Framing | 10d | 2026-12-09 | 2026-12-18 | 6653 |  | 7 Days Work | 9272824 |
| 6655 | 36900.37000.37100.37300.38000.48000.534500 | Pre Hung Door | 3d | 2026-12-19 | 2026-12-21 | 6654 |  | 7 Days Work | 9272834 |
| 6656 | 36900.37000.37100.37300.38000.48000.534600 | Protechtion sheet | 2d | 2026-12-22 | 2026-12-23 | 6655 |  | 7 Days Work | 9272844 |
| 6657 | 36900.37000.37100.37300.38000.48000.534700 | Skirting near door | 2d | 2026-12-24 | 2026-12-25 | 6656 |  | 7 Days Work | 9272854 |
| 6658 | 36900.37000.37100.37300.38000.48000.534800 | Electrical Switch box fixing | 14d | 2026-12-26 | 2027-01-08 | 6657 |  | 7 Days Work | 9272864 |
| 6659 | 36900.37000.37100.37300.38000.48000.534900 | Fire Fighting painting | 5d | 2027-01-09 | 2027-01-13 | 6658 |  | 7 Days Work | 9272874 |
| 6660 | 36900.37000.37100.37300.38000.48000.535000 | Protection of all flooring, door & window hardware | 5d | 2027-01-14 | 2027-01-18 | 6659 |  | 7 Days Work | 9272884 |
| 6661 | 36900.37000.37100.37300.38000.48000.535100 | 1st coat primer- ceiling 1st & walls | 14d | 2027-01-19 | 2027-02-01 | 6660 |  | 7 Days Work | 9272894 |
| 6662 | 36900.37000.37100.37300.38000.48000.535200 | Wooden Flooring | 5d | 2027-02-02 | 2027-02-06 | 6661 |  | 7 Days Work | 9272904 |
| 6663 | 36900.37000.37100.37300.38000.48000.535300 | Removing of Temporary Railing & installation of Glass Railing | 5d | 2027-02-02 | 2027-02-06 | 6661 |  | 7 Days Work | 9272914 |
| 6664 | 36900.37000.37100.37300.38000.48000.535400 | Tile Grouting | 7d | 2027-02-02 | 2027-02-08 | 6661 |  | 7 Days Work | 9272924 |
| 6665 | 36900.37000.37100.37300.38000.48000.535500 | False Ceiling | 5d | 2027-02-09 | 2027-02-13 | 6664 |  | 7 Days Work | 9272934 |
| 6666 | 36900.37000.37100.37300.38000.48000.535600 | 2nd coat of primer | 10d | 2027-02-14 | 2027-02-23 | 6665 |  | 7 Days Work | 9272944 |
| 6667 | 36900.37000.37100.37300.38000.48000.535700 | Final cutting/polishing of stone flooring | 7d | 2027-02-24 | 2027-03-02 | 6666 |  | 7 Days Work | 9272954 |

| ID | WBS | Task | Duration | Start | Finish | Predecessors | Constraint | Calendar | Unique_Task_ID |
| --- | --- | --- | --- | --- | --- | --- | --- | --- | --- |
| 6668 | 36900.37000.37100.37300.38000.48000.63100 | **Toilet** | 237d | 2026-07-08 | 2027-03-01 |  | start no earlier than 2026-07-08 | 7 Days Work | 9265774 |
| 6669 | 36900.37000.37100.37300.38000.48000.63100.944400 | Toilet_MEP Clearance -1 | 7d | 2026-07-08 | 2026-07-14 | 6632 |  | 7 Days Work | 9279084 |
| 6670 | 36900.37000.37100.37300.38000.48000.63100.944500 | Toilet_Level Marking | 1d | 2026-07-15 | 2026-07-15 | 6669 |  | 7 Days Work | 9279094 |
| 6671 | 36900.37000.37100.37300.38000.48000.63100.944600 | Toilet_Chasing work for Electrical conduit & concealed plumbing | 5d | 2026-07-16 | 2026-07-20 | 6670 |  | 7 Days Work | 9279104 |
| 6672 | 36900.37000.37100.37300.38000.48000.63100.944700 | Toilet_Plumbing work 1st fix | 5d | 2026-07-21 | 2026-07-25 | 6671 |  | 7 Days Work | 9279114 |
| 6673 | 36900.37000.37100.37300.38000.48000.63100.944800 | Toilet_Sleeve/Bore Packing | 5d | 2026-07-26 | 2026-07-30 | 6672 |  | 7 Days Work | 9279124 |
| 6674 | 36900.37000.37100.37300.38000.48000.63100.944900 | Toilet_Waterproofing | 10d | 2026-07-31 | 2026-08-09 | 6673 |  | 7 Days Work | 9279134 |
| 6675 | 36900.37000.37100.37300.38000.48000.63100.945000 | Toilet_Screed | 1d | 2026-08-10 | 2026-08-10 | 6674 |  | 7 Days Work | 9279144 |
| 6676 | 36900.37000.37100.37300.38000.48000.63100.945100 | Toilet_Plumbing 2nd fix | 5d | 2026-08-11 | 2026-08-15 | 6675 |  | 7 Days Work | 9279154 |
| 6677 | 36900.37000.37100.37300.38000.48000.63100.945200 | Toilet_Ledge wall | 5d | 2026-08-16 | 2026-08-20 | 6676 |  | 7 Days Work | 9279164 |
| 6678 | 36900.37000.37100.37300.38000.48000.63100.945300 | Toilet_Cement Plaster | 5d | 2026-08-21 | 2026-08-25 | 6677 |  | 7 Days Work | 9279174 |
| 6679 | 36900.37000.37100.37300.38000.48000.63100.945400 | Toilet_Door Frame | 1d | 2026-08-26 | 2026-08-26 | 6678 |  | 7 Days Work | 9279184 |
| 6680 | 36900.37000.37100.37300.38000.48000.63100.945500 | Toilet_Wash basin & Couter | 3d | 2026-08-27 | 2026-08-29 | 6679 |  | 7 Days Work | 9279194 |
| 6681 | 36900.37000.37100.37300.38000.48000.63100.945600 | Toilet_Wall dado | 20d | 2026-08-30 | 2026-09-18 | 6680 |  | 7 Days Work | 9279204 |
| 6682 | 36900.37000.37100.37300.38000.48000.63100.945700 | Toilet_Granite Work-Ledge wall top | 3d | 2026-09-19 | 2026-09-21 | 6681 |  | 7 Days Work | 9279214 |
| 6683 | 36900.37000.37100.37300.38000.48000.63100.945800 | Toilet_Floor Tilling work | 20d | 2026-09-22 | 2026-10-11 | 6682 |  | 7 Days Work | 9279224 |
| 6684 | 36900.37000.37100.37300.38000.48000.63100.945900 | Toilet_1st row of dado | 5d | 2026-10-12 | 2026-10-16 | 6683 |  | 7 Days Work | 9279234 |
| 6685 | 36900.37000.37100.37300.38000.48000.63100.946000 | Toilet_Window Fixing | 14d | 2026-10-17 | 2026-10-30 | 6684 |  | 7 Days Work | 9279244 |
| 6686 | 36900.37000.37100.37300.38000.48000.63100.946100 | Toilet_Services above False ceiling | 21d | 2026-10-31 | 2026-11-20 | 6685 |  | 7 Days Work | 9279254 |
| 6687 | 36900.37000.37100.37300.38000.48000.63100.946200 | Toilet_False Ceiling framing | 12d | 2026-11-21 | 2026-12-02 | 6686 |  | 7 Days Work | 9279264 |
| 6688 | 36900.37000.37100.37300.38000.48000.63100.946300 | Toilet_Door Frame | 5d | 2026-12-03 | 2026-12-07 | 6687 |  | 7 Days Work | 9279274 |
| 6689 | 36900.37000.37100.37300.38000.48000.63100.946400 | Toilet_Epoxy Tile Grouting | 7d | 2027-02-02 | 2027-02-08 | 6664SS |  | 7 Days Work | 9279284 |
| 6690 | 36900.37000.37100.37300.38000.48000.63100.946500 | Toilet_False ceiling board fixing, CP Sanitary Fixture, Electric Fixture | 21d | 2027-02-09 | 2027-03-01 | 6689 |  | 7 Days Work | 9279294 |
| 6691 | 36900.37000.37100.37300.38000.48100 | **19th Habitable/21st Floor** | 245d | 2026-07-13 | 2027-03-14 |  | start no earlier than 2026-07-13 | 7 Days Work | 9265574 |
| 6692 | 36900.37000.37100.37300.38000.48100.535800 | Post Pour | 7d | 2026-07-13 | 2026-07-19 | 5548FS+15d |  | 7 Days Work | 9272964 |
| 6693 | 36900.37000.37100.37300.38000.48100.535900 | MEP Clearance -1 | 5d | 2026-07-20 | 2026-07-24 | 6692 |  | 7 Days Work | 9272974 |
| 6694 | 36900.37000.37100.37300.38000.48100.536000 | Benchmark | 1d | 2026-07-25 | 2026-07-25 | 6693 |  | 7 Days Work | 9272984 |
| 6695 | 36900.37000.37100.37300.38000.48100.536100 | Temporary Railing | 3d | 2026-07-26 | 2026-07-28 | 6694 |  | 7 Days Work | 9272994 |
| 6696 | 36900.37000.37100.37300.38000.48100.536200 | Blockwork | 10d | 2026-07-29 | 2026-08-07 | 6695 |  | 7 Days Work | 9273004 |
| 6697 | 36900.37000.37100.37300.38000.48100.536300 | MEP Clearance -2 | 10d | 2026-08-08 | 2026-08-17 | 6696 |  | 7 Days Work | 9273014 |
| 6698 | 36900.37000.37100.37300.38000.48100.536400 | Gypsum Plaster | 14d | 2026-08-18 | 2026-08-31 | 6697 |  | 7 Days Work | 9044494 |
| 6699 | 36900.37000.37100.37300.38000.48100.536500 | Kitchen Platform | 3d | 2026-09-01 | 2026-09-03 | 6698 |  | 7 Days Work | 9273034 |
| 6700 | 36900.37000.37100.37300.38000.48100.536600 | Kitchen dado | 7d | 2026-09-04 | 2026-09-10 | 6699 |  | 7 Days Work | 9273044 |
| 6701 | 36900.37000.37100.37300.38000.48100.536700 | Fire Fighting | 5d | 2026-09-11 | 2026-09-15 | 6700 |  | 7 Days Work | 9273054 |
| 6702 | 36900.37000.37100.37300.38000.48100.536800 | Anticapilary | 5d | 2026-09-16 | 2026-09-20 | 6701 |  | 7 Days Work | 9273064 |
| 6703 | 36900.37000.37100.37300.38000.48100.536900 | Stone Laying | 10d | 2026-10-24 | 2026-11-02 | 6743 |  | 7 Days Work | 9273074 |
| 6704 | 36900.37000.37100.37300.38000.48100.537000 | Tiles Laying | 7d | 2026-10-24 | 2026-10-30 | 6703SS |  | 7 Days Work | 9044504 |
| 6705 | 36900.37000.37100.37300.38000.48100.537100 | 1st cutting/polishing of stone flooring | 7d | 2026-10-31 | 2026-11-06 | 6704 |  | 7 Days Work | 9273094 |
| 6706 | 36900.37000.37100.37300.38000.48100.537200 | Tiles/Stone skirting | 5d | 2026-11-07 | 2026-11-11 | 6705 |  | 7 Days Work | 9273104 |
| 6707 | 36900.37000.37100.37300.38000.48100.537300 | Protechtion sheet | 1d | 2026-11-12 | 2026-11-12 | 6706 |  | 7 Days Work | 9273114 |
| 6708 | 36900.37000.37100.37300.38000.48100.537400 | Installation of Temporary Door | 1d | 2026-11-13 | 2026-11-13 | 6707 |  | 7 Days Work | 9273124 |
| 6709 | 36900.37000.37100.37300.38000.48100.537500 | Fixing of window tracks | 5d | 2026-11-14 | 2026-11-18 | 6708 |  | 7 Days Work | 9273134 |
| 6710 | 36900.37000.37100.37300.38000.48100.537600 | Wire Pulling | 7d | 2026-11-19 | 2026-11-25 | 6709 |  | 7 Days Work | 9273144 |
| 6711 | 36900.37000.37100.37300.38000.48100.537700 | Gypsum Remaining | 5d | 2026-11-26 | 2026-11-30 | 6710 |  | 7 Days Work | 9273154 |
| 6712 | 36900.37000.37100.37300.38000.48100.537800 | Fixing of windoow shutter | 5d | 2026-12-01 | 2026-12-05 | 6711 |  | 7 Days Work | 9273164 |
| 6713 | 36900.37000.37100.37300.38000.48100.537900 | Putty Works - walls & ceiling | 15d | 2026-12-06 | 2026-12-20 | 6712 |  | 7 Days Work | 9273174 |
| 6714 | 36900.37000.37100.37300.38000.48100.538000 | False Ceiling- Framing | 10d | 2026-12-21 | 2026-12-30 | 6713 |  | 7 Days Work | 9273184 |
| 6715 | 36900.37000.37100.37300.38000.48100.538100 | Pre Hung Door | 3d | 2026-12-31 | 2027-01-02 | 6714 |  | 7 Days Work | 9273194 |
| 6716 | 36900.37000.37100.37300.38000.48100.538200 | Protechtion sheet | 2d | 2027-01-03 | 2027-01-04 | 6715 |  | 7 Days Work | 9273204 |
| 6717 | 36900.37000.37100.37300.38000.48100.538300 | Skirting near door | 2d | 2027-01-05 | 2027-01-06 | 6716 |  | 7 Days Work | 9273214 |
| 6718 | 36900.37000.37100.37300.38000.48100.538400 | Electrical Switch box fixing | 14d | 2027-01-07 | 2027-01-20 | 6717 |  | 7 Days Work | 9273224 |
| 6719 | 36900.37000.37100.37300.38000.48100.538500 | Fire Fighting painting | 5d | 2027-01-21 | 2027-01-25 | 6718 |  | 7 Days Work | 9273234 |
| 6720 | 36900.37000.37100.37300.38000.48100.538600 | Protection of all flooring, door & window hardware | 5d | 2027-01-26 | 2027-01-30 | 6719 |  | 7 Days Work | 9273244 |
| 6721 | 36900.37000.37100.37300.38000.48100.538700 | 1st coat primer- ceiling 1st & walls | 14d | 2027-01-31 | 2027-02-13 | 6720 |  | 7 Days Work | 9273254 |
| 6722 | 36900.37000.37100.37300.38000.48100.538800 | Wooden Flooring | 5d | 2027-02-14 | 2027-02-18 | 6721 |  | 7 Days Work | 9273264 |
| 6723 | 36900.37000.37100.37300.38000.48100.538900 | Removing of Temporary Railing & installation of Glass Railing | 5d | 2027-02-14 | 2027-02-18 | 6721 |  | 7 Days Work | 9273274 |
| 6724 | 36900.37000.37100.37300.38000.48100.539000 | Tile Grouting | 7d | 2027-02-14 | 2027-02-20 | 6721 |  | 7 Days Work | 9273284 |
| 6725 | 36900.37000.37100.37300.38000.48100.539100 | False Ceiling | 5d | 2027-02-21 | 2027-02-25 | 6724 |  | 7 Days Work | 9273294 |
| 6726 | 36900.37000.37100.37300.38000.48100.539200 | 2nd coat of primer | 10d | 2027-02-26 | 2027-03-07 | 6725 |  | 7 Days Work | 9273304 |
| 6727 | 36900.37000.37100.37300.38000.48100.539300 | Final cutting/polishing of stone flooring | 7d | 2027-03-08 | 2027-03-14 | 6726 |  | 7 Days Work | 9273314 |

| ID | WBS | Task | Duration | Start | Finish | Predecessors | Constraint | Calendar | Unique_Task_ID |
| --- | --- | --- | --- | --- | --- | --- | --- | --- | --- |
| 6728 | 36900.37000.37100.37300.38000.48100.63000 | **Toilet** | 237d | 2026-07-20 | 2027-03-13 |  | start no earlier than 2026-07-20 | 7 Days Work | 9265784 |
| 6729 | 36900.37000.37100.37300.38000.48100.63000.946600 | Toilet_MEP Clearance -1 | 7d | 2026-07-20 | 2026-07-26 | 6692 |  | 7 Days Work | 9279304 |
| 6730 | 36900.37000.37100.37300.38000.48100.63000.946700 | Toilet_Level Marking | 1d | 2026-07-27 | 2026-07-27 | 6729 |  | 7 Days Work | 9279314 |
| 6731 | 36900.37000.37100.37300.38000.48100.63000.946800 | Toilet_Chasing work for Electrical conduit & concealed plumbing | 5d | 2026-07-28 | 2026-08-01 | 6730 |  | 7 Days Work | 9279324 |
| 6732 | 36900.37000.37100.37300.38000.48100.63000.946900 | Toilet_Plumbing work 1st fix | 5d | 2026-08-02 | 2026-08-06 | 6731 |  | 7 Days Work | 9279334 |
| 6733 | 36900.37000.37100.37300.38000.48100.63000.947000 | Toilet_Sleeve/Bore Packing | 5d | 2026-08-07 | 2026-08-11 | 6732 |  | 7 Days Work | 9279344 |
| 6734 | 36900.37000.37100.37300.38000.48100.63000.947100 | Toilet_Waterproofing | 10d | 2026-08-12 | 2026-08-21 | 6733 |  | 7 Days Work | 9279354 |
| 6735 | 36900.37000.37100.37300.38000.48100.63000.947200 | Toilet_Screed | 1d | 2026-08-22 | 2026-08-22 | 6734 |  | 7 Days Work | 9279364 |
| 6736 | 36900.37000.37100.37300.38000.48100.63000.947300 | Toilet_Plumbing 2nd fix | 5d | 2026-08-23 | 2026-08-27 | 6735 |  | 7 Days Work | 9279374 |
| 6737 | 36900.37000.37100.37300.38000.48100.63000.947400 | Toilet_Ledge wall | 5d | 2026-08-28 | 2026-09-01 | 6736 |  | 7 Days Work | 9279384 |
| 6738 | 36900.37000.37100.37300.38000.48100.63000.947500 | Toilet_Cement Plaster | 5d | 2026-09-02 | 2026-09-06 | 6737 |  | 7 Days Work | 9279394 |
| 6739 | 36900.37000.37100.37300.38000.48100.63000.947600 | Toilet_Door Frame | 1d | 2026-09-07 | 2026-09-07 | 6738 |  | 7 Days Work | 9279404 |
| 6740 | 36900.37000.37100.37300.38000.48100.63000.947700 | Toilet_Wash basin & Couter | 3d | 2026-09-08 | 2026-09-10 | 6739 |  | 7 Days Work | 9279414 |
| 6741 | 36900.37000.37100.37300.38000.48100.63000.947800 | Toilet_Wall dado | 20d | 2026-09-11 | 2026-09-30 | 6740 |  | 7 Days Work | 9279424 |
| 6742 | 36900.37000.37100.37300.38000.48100.63000.947900 | Toilet_Granite Work-Ledge wall top | 3d | 2026-10-01 | 2026-10-03 | 6741 |  | 7 Days Work | 9279434 |
| 6743 | 36900.37000.37100.37300.38000.48100.63000.948000 | Toilet_Floor Tilling work | 20d | 2026-10-04 | 2026-10-23 | 6742 |  | 7 Days Work | 9279444 |
| 6744 | 36900.37000.37100.37300.38000.48100.63000.948100 | Toilet_1st row of dado | 5d | 2026-10-24 | 2026-10-28 | 6743 |  | 7 Days Work | 9279454 |
| 6745 | 36900.37000.37100.37300.38000.48100.63000.948200 | Toilet_Window Fixing | 14d | 2026-10-29 | 2026-11-11 | 6744 |  | 7 Days Work | 9279464 |
| 6746 | 36900.37000.37100.37300.38000.48100.63000.948300 | Toilet_Services above False ceiling | 21d | 2026-11-12 | 2026-12-02 | 6745 |  | 7 Days Work | 9279474 |
| 6747 | 36900.37000.37100.37300.38000.48100.63000.948400 | Toilet_False Ceiling framing | 12d | 2026-12-03 | 2026-12-14 | 6746 |  | 7 Days Work | 9279484 |
| 6748 | 36900.37000.37100.37300.38000.48100.63000.948500 | Toilet_Door Frame | 5d | 2026-12-15 | 2026-12-19 | 6747 |  | 7 Days Work | 9279494 |
| 6749 | 36900.37000.37100.37300.38000.48100.63000.948600 | Toilet_Epoxy Tile Grouting | 7d | 2027-02-14 | 2027-02-20 | 6724SS |  | 7 Days Work | 9279504 |
| 6750 | 36900.37000.37100.37300.38000.48100.63000.948700 | Toilet_False ceiling board fixing, CP Sanitary Fixture, Electric Fixture | 21d | 2027-02-21 | 2027-03-13 | 6749 |  | 7 Days Work | 9279514 |
| 6751 | 36900.37000.37100.37300.52500 | **Common area Finishing** | 329d | 2026-09-13 | 2027-08-07 |  | start no earlier than 2026-09-13 | 7 Days Work | 9265584 |
| 6752 | 36900.37000.37100.37300.52500.74100 | **1st Habitable/2nd Floor** | 158d | 2026-09-13 | 2027-02-17 |  | start no earlier than 2026-09-13 | 7 Days Work | 9265804 |
| 6753 | 36900.37000.37100.37300.52500.74100.539400 | Side blockwork for lift shafts | 9d | 2026-09-13 | 2026-09-21 | 6958 |  | 7 Days Work | 9273324 |
| 6754 | 36900.37000.37100.37300.52500.74100.539500 | Door Threshold for lifts | 6d | 2026-09-22 | 2026-09-27 | 6753 |  | 7 Days Work | 9273334 |
| 6755 | 36900.37000.37100.37300.52500.74100.539600 | Granite Cladding | 10d | 2026-09-28 | 2026-10-07 | 6754 |  | 7 Days Work | 9273344 |
| 6756 | 36900.37000.37100.37300.52500.74100.539700 | MEP Services | 60d | 2026-10-08 | 2026-12-06 | 6755 |  | 7 Days Work | 9273354 |
| 6757 | 36900.37000.37100.37300.52500.74100.539800 | Flooring+Skirting | 20d | 2026-12-07 | 2026-12-26 | 6756 |  | 7 Days Work | 9273364 |
| 6758 | 36900.37000.37100.37300.52500.74100.539900 | Wall finishes | 21d | 2026-12-27 | 2027-01-16 | 6757 |  | 7 Days Work | 9273374 |
| 6759 | 36900.37000.37100.37300.52500.74100.540000 | False Ceiling | 10d | 2027-01-17 | 2027-01-26 | 6758 |  | 7 Days Work | 9273384 |
| 6760 | 36900.37000.37100.37300.52500.74100.540100 | Staircase | 15d | 2027-01-27 | 2027-02-10 | 6759 |  | 7 Days Work | 9273394 |
| 6761 | 36900.37000.37100.37300.52500.74100.540200 | Deep Cleaning | 7d | 2027-02-11 | 2027-02-17 | 6760 |  | 7 Days Work | 9273404 |

| ID | WBS | Task | Duration | Start | Finish | Predecessors | Constraint | Calendar | Unique_Task_ID |
| --- | --- | --- | --- | --- | --- | --- | --- | --- | --- |
| 6762 | 36900.37000.37100.37300.52500.74000 | **2nd Habitable/3rd Floor** | 158d | 2026-09-22 | 2027-02-26 |  | start no earlier than 2026-09-22 | 7 Days Work | 9265814 |
| 6763 | 36900.37000.37100.37300.52500.74000.540300 | Side blockwork for lift shafts | 9d | 2026-09-22 | 2026-09-30 | 6753 |  | 7 Days Work | 9273414 |
| 6764 | 36900.37000.37100.37300.52500.74000.540400 | Door Threshold for lifts | 6d | 2026-10-01 | 2026-10-06 | 6763 |  | 7 Days Work | 9273424 |
| 6765 | 36900.37000.37100.37300.52500.74000.540500 | Granite Cladding | 10d | 2026-10-07 | 2026-10-16 | 6764 |  | 7 Days Work | 9273434 |
| 6766 | 36900.37000.37100.37300.52500.74000.540600 | MEP Services | 60d | 2026-10-17 | 2026-12-15 | 6765 |  | 7 Days Work | 9273444 |
| 6767 | 36900.37000.37100.37300.52500.74000.540700 | Flooring+Skirting | 20d | 2026-12-16 | 2027-01-04 | 6766 |  | 7 Days Work | 9273454 |
| 6768 | 36900.37000.37100.37300.52500.74000.540800 | Wall finishes | 21d | 2027-01-05 | 2027-01-25 | 6767 |  | 7 Days Work | 9273464 |
| 6769 | 36900.37000.37100.37300.52500.74000.540900 | False Ceiling | 10d | 2027-01-26 | 2027-02-04 | 6768 |  | 7 Days Work | 9273474 |
| 6770 | 36900.37000.37100.37300.52500.74000.541000 | Staircase | 15d | 2027-02-05 | 2027-02-19 | 6769 |  | 7 Days Work | 9273484 |
| 6771 | 36900.37000.37100.37300.52500.74000.541100 | Deep Cleaning | 7d | 2027-02-20 | 2027-02-26 | 6770 |  | 7 Days Work | 9273494 |
| 6772 | 36900.37000.37100.37300.52500.73900 | **3rd Habitable/4th Floor** | 158d | 2026-10-01 | 2027-03-07 |  | start no earlier than 2026-10-01 | 7 Days Work | 9265824 |
| 6773 | 36900.37000.37100.37300.52500.73900.541200 | Side blockwork for lift shafts | 9d | 2026-10-01 | 2026-10-09 | 6763 |  | 7 Days Work | 9273504 |
| 6774 | 36900.37000.37100.37300.52500.73900.541300 | Door Threshold for lifts | 6d | 2026-10-10 | 2026-10-15 | 6773 |  | 7 Days Work | 9273514 |
| 6775 | 36900.37000.37100.37300.52500.73900.541400 | Granite Cladding | 10d | 2026-10-16 | 2026-10-25 | 6774 |  | 7 Days Work | 9273524 |
| 6776 | 36900.37000.37100.37300.52500.73900.541500 | MEP Services | 60d | 2026-10-26 | 2026-12-24 | 6775 |  | 7 Days Work | 9273534 |
| 6777 | 36900.37000.37100.37300.52500.73900.541600 | Flooring+Skirting | 20d | 2026-12-25 | 2027-01-13 | 6776 |  | 7 Days Work | 9273544 |
| 6778 | 36900.37000.37100.37300.52500.73900.541700 | Wall finishes | 21d | 2027-01-14 | 2027-02-03 | 6777 |  | 7 Days Work | 9273554 |
| 6779 | 36900.37000.37100.37300.52500.73900.541800 | False Ceiling | 10d | 2027-02-04 | 2027-02-13 | 6778 |  | 7 Days Work | 9273564 |
| 6780 | 36900.37000.37100.37300.52500.73900.541900 | Staircase | 15d | 2027-02-14 | 2027-02-28 | 6779 |  | 7 Days Work | 9273574 |
| 6781 | 36900.37000.37100.37300.52500.73900.542000 | Deep Cleaning | 7d | 2027-03-01 | 2027-03-07 | 6780 |  | 7 Days Work | 9273584 |
| 6782 | 36900.37000.37100.37300.52500.73800 | **4th Habitable/5th Floor** | 158d | 2026-10-10 | 2027-03-16 |  | start no earlier than 2026-10-10 | 7 Days Work | 9265834 |
| 6783 | 36900.37000.37100.37300.52500.73800.542100 | Side blockwork for lift shafts | 9d | 2026-10-10 | 2026-10-18 | 6773 |  | 7 Days Work | 9273594 |
| 6784 | 36900.37000.37100.37300.52500.73800.542200 | Door Threshold for lifts | 6d | 2026-10-19 | 2026-10-24 | 6783 |  | 7 Days Work | 9273604 |
| 6785 | 36900.37000.37100.37300.52500.73800.542300 | Granite Cladding | 10d | 2026-10-25 | 2026-11-03 | 6784 |  | 7 Days Work | 9273614 |
| 6786 | 36900.37000.37100.37300.52500.73800.542400 | MEP Services | 60d | 2026-11-04 | 2027-01-02 | 6785 |  | 7 Days Work | 9273624 |
| 6787 | 36900.37000.37100.37300.52500.73800.542500 | Flooring+Skirting | 20d | 2027-01-03 | 2027-01-22 | 6786 |  | 7 Days Work | 9273634 |
| 6788 | 36900.37000.37100.37300.52500.73800.542600 | Wall finishes | 21d | 2027-01-23 | 2027-02-12 | 6787 |  | 7 Days Work | 9273644 |
| 6789 | 36900.37000.37100.37300.52500.73800.542700 | False Ceiling | 10d | 2027-02-13 | 2027-02-22 | 6788 |  | 7 Days Work | 9273654 |
| 6790 | 36900.37000.37100.37300.52500.73800.542800 | Staircase | 15d | 2027-02-23 | 2027-03-09 | 6789 |  | 7 Days Work | 9273664 |
| 6791 | 36900.37000.37100.37300.52500.73800.542900 | Deep Cleaning | 7d | 2027-03-10 | 2027-03-16 | 6790 |  | 7 Days Work | 9273674 |

| ID | WBS | Task | Duration | Start | Finish | Predecessors | Constraint | Calendar | Unique_Task_ID |
| --- | --- | --- | --- | --- | --- | --- | --- | --- | --- |
| 6792 | 36900.37000.37100.37300.52500.73700 | **5th Habitable/6th Floor** | 158d | 2026-10-19 | 2027-03-25 |  | start no earlier than 2026-10-19 | 7 Days Work | 9265844 |
| 6793 | 36900.37000.37100.37300.52500.73700.543000 | Side blockwork for lift shafts | 9d | 2026-10-19 | 2026-10-27 | 6783 |  | 7 Days Work | 9273684 |
| 6794 | 36900.37000.37100.37300.52500.73700.543100 | Door Threshold for lifts | 6d | 2026-10-28 | 2026-11-02 | 6793 |  | 7 Days Work | 9273694 |
| 6795 | 36900.37000.37100.37300.52500.73700.543200 | Granite Cladding | 10d | 2026-11-03 | 2026-11-12 | 6794 |  | 7 Days Work | 9273704 |
| 6796 | 36900.37000.37100.37300.52500.73700.543300 | MEP Services | 60d | 2026-11-13 | 2027-01-11 | 6795 |  | 7 Days Work | 9273714 |
| 6797 | 36900.37000.37100.37300.52500.73700.543400 | Flooring+Skirting | 20d | 2027-01-12 | 2027-01-31 | 6796 |  | 7 Days Work | 9273724 |
| 6798 | 36900.37000.37100.37300.52500.73700.543500 | Wall finishes | 21d | 2027-02-01 | 2027-02-21 | 6797 |  | 7 Days Work | 9273734 |
| 6799 | 36900.37000.37100.37300.52500.73700.543600 | False Ceiling | 10d | 2027-02-22 | 2027-03-03 | 6798 |  | 7 Days Work | 9273744 |
| 6800 | 36900.37000.37100.37300.52500.73700.543700 | Staircase | 15d | 2027-03-04 | 2027-03-18 | 6799 |  | 7 Days Work | 9273754 |
| 6801 | 36900.37000.37100.37300.52500.73700.543800 | Deep Cleaning | 7d | 2027-03-19 | 2027-03-25 | 6800 |  | 7 Days Work | 9273764 |
| 6802 | 36900.37000.37100.37300.52500.73600 | **6th Habitable/7th Floor** | 158d | 2026-10-28 | 2027-04-03 |  | start no earlier than 2026-10-28 | 7 Days Work | 9265854 |
| 6803 | 36900.37000.37100.37300.52500.73600.543900 | Side blockwork for lift shafts | 9d | 2026-10-28 | 2026-11-05 | 6793 |  | 7 Days Work | 9273774 |
| 6804 | 36900.37000.37100.37300.52500.73600.544000 | Door Threshold for lifts | 6d | 2026-11-06 | 2026-11-11 | 6803 |  | 7 Days Work | 9273784 |
| 6805 | 36900.37000.37100.37300.52500.73600.544100 | Granite Cladding | 10d | 2026-11-12 | 2026-11-21 | 6804 |  | 7 Days Work | 9273794 |
| 6806 | 36900.37000.37100.37300.52500.73600.544200 | MEP Services | 60d | 2026-11-22 | 2027-01-20 | 6805 |  | 7 Days Work | 9273804 |
| 6807 | 36900.37000.37100.37300.52500.73600.544300 | Flooring+Skirting | 20d | 2027-01-21 | 2027-02-09 | 6806 |  | 7 Days Work | 9273814 |
| 6808 | 36900.37000.37100.37300.52500.73600.544400 | Wall finishes | 21d | 2027-02-10 | 2027-03-02 | 6807 |  | 7 Days Work | 9273824 |
| 6809 | 36900.37000.37100.37300.52500.73600.544500 | False Ceiling | 10d | 2027-03-03 | 2027-03-12 | 6808 |  | 7 Days Work | 9273834 |
| 6810 | 36900.37000.37100.37300.52500.73600.544600 | Staircase | 15d | 2027-03-13 | 2027-03-27 | 6809 |  | 7 Days Work | 9273844 |
| 6811 | 36900.37000.37100.37300.52500.73600.544700 | Deep Cleaning | 7d | 2027-03-28 | 2027-04-03 | 6810 |  | 7 Days Work | 9273854 |
| 6812 | 36900.37000.37100.37300.52500.73500 | **7th Habitable/8th Floor** | 158d | 2026-11-06 | 2027-04-12 |  | start no earlier than 2026-11-06 | 7 Days Work | 9265864 |
| 6813 | 36900.37000.37100.37300.52500.73500.544800 | Side blockwork for lift shafts | 9d | 2026-11-06 | 2026-11-14 | 6803 |  | 7 Days Work | 9273864 |
| 6814 | 36900.37000.37100.37300.52500.73500.544900 | Door Threshold for lifts | 6d | 2026-11-15 | 2026-11-20 | 6813 |  | 7 Days Work | 9273874 |
| 6815 | 36900.37000.37100.37300.52500.73500.545000 | Granite Cladding | 10d | 2026-11-21 | 2026-11-30 | 6814 |  | 7 Days Work | 9273884 |
| 6816 | 36900.37000.37100.37300.52500.73500.545100 | MEP Services | 60d | 2026-12-01 | 2027-01-29 | 6815 |  | 7 Days Work | 9273894 |
| 6817 | 36900.37000.37100.37300.52500.73500.545200 | Flooring+Skirting | 20d | 2027-01-30 | 2027-02-18 | 6816 |  | 7 Days Work | 9273904 |
| 6818 | 36900.37000.37100.37300.52500.73500.545300 | Wall finishes | 21d | 2027-02-19 | 2027-03-11 | 6817 |  | 7 Days Work | 9273914 |
| 6819 | 36900.37000.37100.37300.52500.73500.545400 | False Ceiling | 10d | 2027-03-12 | 2027-03-21 | 6818 |  | 7 Days Work | 9273924 |
| 6820 | 36900.37000.37100.37300.52500.73500.545500 | Staircase | 15d | 2027-03-22 | 2027-04-05 | 6819 |  | 7 Days Work | 9273934 |
| 6821 | 36900.37000.37100.37300.52500.73500.545600 | Deep Cleaning | 7d | 2027-04-06 | 2027-04-12 | 6820 |  | 7 Days Work | 9273944 |

| ID | WBS | Task | Duration | Start | Finish | Predecessors | Constraint | Calendar | Unique_Task_ID |
| --- | --- | --- | --- | --- | --- | --- | --- | --- | --- |
| 6822 | 36900.37000.37100.37300.52500.73400 | **8th Habitable/9th Floor** | 158d | 2026-11-15 | 2027-04-21 |  | start no earlier than 2026-11-15 | 7 Days Work | 9265874 |
| 6823 | 36900.37000.37100.37300.52500.73400.545700 | Side blockwork for lift shafts | 9d | 2026-11-15 | 2026-11-23 | 6813 |  | 7 Days Work | 9273954 |
| 6824 | 36900.37000.37100.37300.52500.73400.545800 | Door Threshold for lifts | 6d | 2026-11-24 | 2026-11-29 | 6823 |  | 7 Days Work | 9273964 |
| 6825 | 36900.37000.37100.37300.52500.73400.545900 | Granite Cladding | 10d | 2026-11-30 | 2026-12-09 | 6824 |  | 7 Days Work | 9273974 |
| 6826 | 36900.37000.37100.37300.52500.73400.546000 | MEP Services | 60d | 2026-12-10 | 2027-02-07 | 6825 |  | 7 Days Work | 9273984 |
| 6827 | 36900.37000.37100.37300.52500.73400.546100 | Flooring+Skirting | 20d | 2027-02-08 | 2027-02-27 | 6826 |  | 7 Days Work | 9273994 |
| 6828 | 36900.37000.37100.37300.52500.73400.546200 | Wall finishes | 21d | 2027-02-28 | 2027-03-20 | 6827 |  | 7 Days Work | 9274004 |
| 6829 | 36900.37000.37100.37300.52500.73400.546300 | False Ceiling | 10d | 2027-03-21 | 2027-03-30 | 6828 |  | 7 Days Work | 9274014 |
| 6830 | 36900.37000.37100.37300.52500.73400.546400 | Staircase | 15d | 2027-03-31 | 2027-04-14 | 6829 |  | 7 Days Work | 9274024 |
| 6831 | 36900.37000.37100.37300.52500.73400.546500 | Deep Cleaning | 7d | 2027-04-15 | 2027-04-21 | 6830 |  | 7 Days Work | 9274034 |
| 6832 | 36900.37000.37100.37300.52500.73300 | **9th Habitable/10th Floor** | 158d | 2026-11-24 | 2027-04-30 |  | start no earlier than 2026-11-24 | 7 Days Work | 9265884 |
| 6833 | 36900.37000.37100.37300.52500.73300.546600 | Side blockwork for lift shafts | 9d | 2026-11-24 | 2026-12-02 | 6823 |  | 7 Days Work | 9274044 |
| 6834 | 36900.37000.37100.37300.52500.73300.546700 | Door Threshold for lifts | 6d | 2026-12-03 | 2026-12-08 | 6833 |  | 7 Days Work | 9274054 |
| 6835 | 36900.37000.37100.37300.52500.73300.546800 | Granite Cladding | 10d | 2026-12-09 | 2026-12-18 | 6834 |  | 7 Days Work | 9274064 |
| 6836 | 36900.37000.37100.37300.52500.73300.546900 | MEP Services | 60d | 2026-12-19 | 2027-02-16 | 6835 |  | 7 Days Work | 9274074 |
| 6837 | 36900.37000.37100.37300.52500.73300.547000 | Flooring+Skirting | 20d | 2027-02-17 | 2027-03-08 | 6836 |  | 7 Days Work | 9274084 |
| 6838 | 36900.37000.37100.37300.52500.73300.547100 | Wall finishes | 21d | 2027-03-09 | 2027-03-29 | 6837 |  | 7 Days Work | 9274094 |
| 6839 | 36900.37000.37100.37300.52500.73300.547200 | False Ceiling | 10d | 2027-03-30 | 2027-04-08 | 6838 |  | 7 Days Work | 9274104 |
| 6840 | 36900.37000.37100.37300.52500.73300.547300 | Staircase | 15d | 2027-04-09 | 2027-04-23 | 6839 |  | 7 Days Work | 9274114 |
| 6841 | 36900.37000.37100.37300.52500.73300.547400 | Deep Cleaning | 7d | 2027-04-24 | 2027-04-30 | 6840 |  | 7 Days Work | 9274124 |
| 6842 | 36900.37000.37100.37300.52500.73200 | **10th Habitable/11th Floor** | 158d | 2026-12-03 | 2027-05-09 |  | start no earlier than 2026-12-03 | 7 Days Work | 9265894 |
| 6843 | 36900.37000.37100.37300.52500.73200.547500 | Side blockwork for lift shafts | 9d | 2026-12-03 | 2026-12-11 | 6833 |  | 7 Days Work | 9274134 |
| 6844 | 36900.37000.37100.37300.52500.73200.547600 | Door Threshold for lifts | 6d | 2026-12-12 | 2026-12-17 | 6843 |  | 7 Days Work | 9274144 |
| 6845 | 36900.37000.37100.37300.52500.73200.547700 | Granite Cladding | 10d | 2026-12-18 | 2026-12-27 | 6844 |  | 7 Days Work | 9274154 |
| 6846 | 36900.37000.37100.37300.52500.73200.547800 | MEP Services | 60d | 2026-12-28 | 2027-02-25 | 6845 |  | 7 Days Work | 9274164 |
| 6847 | 36900.37000.37100.37300.52500.73200.547900 | Flooring+Skirting | 20d | 2027-02-26 | 2027-03-17 | 6846 |  | 7 Days Work | 9274174 |
| 6848 | 36900.37000.37100.37300.52500.73200.548000 | Wall finishes | 21d | 2027-03-18 | 2027-04-07 | 6847 |  | 7 Days Work | 9274184 |
| 6849 | 36900.37000.37100.37300.52500.73200.548100 | False Ceiling | 10d | 2027-04-08 | 2027-04-17 | 6848 |  | 7 Days Work | 9274194 |
| 6850 | 36900.37000.37100.37300.52500.73200.548200 | Staircase | 15d | 2027-04-18 | 2027-05-02 | 6849 |  | 7 Days Work | 9274204 |
| 6851 | 36900.37000.37100.37300.52500.73200.548300 | Deep Cleaning | 7d | 2027-05-03 | 2027-05-09 | 6850 |  | 7 Days Work | 9274214 |

| ID | WBS | Task | Duration | Start | Finish | Predecessors | Constraint | Calendar | Unique_Task_ID |
| --- | --- | --- | --- | --- | --- | --- | --- | --- | --- |
| 6852 | 36900.37000.37100.37300.52500.73100 | **11th Habitable/12th Floor** | 158d | 2026-12-12 | 2027-05-18 |  | start no earlier than 2026-12-12 | 7 Days Work | 9265904 |
| 6853 | 36900.37000.37100.37300.52500.73100.548400 | Side blockwork for lift shafts | 9d | 2026-12-12 | 2026-12-20 | 6843 |  | 7 Days Work | 9274224 |
| 6854 | 36900.37000.37100.37300.52500.73100.548500 | Door Threshold for lifts | 6d | 2026-12-21 | 2026-12-26 | 6853 |  | 7 Days Work | 9274234 |
| 6855 | 36900.37000.37100.37300.52500.73100.548600 | Granite Cladding | 10d | 2026-12-27 | 2027-01-05 | 6854 |  | 7 Days Work | 9274244 |
| 6856 | 36900.37000.37100.37300.52500.73100.548700 | MEP Services | 60d | 2027-01-06 | 2027-03-06 | 6855 |  | 7 Days Work | 9274254 |
| 6857 | 36900.37000.37100.37300.52500.73100.548800 | Flooring+Skirting | 20d | 2027-03-07 | 2027-03-26 | 6856 |  | 7 Days Work | 9274264 |
| 6858 | 36900.37000.37100.37300.52500.73100.548900 | Wall finishes | 21d | 2027-03-27 | 2027-04-16 | 6857 |  | 7 Days Work | 9274274 |
| 6859 | 36900.37000.37100.37300.52500.73100.549000 | False Ceiling | 10d | 2027-04-17 | 2027-04-26 | 6858 |  | 7 Days Work | 9274284 |
| 6860 | 36900.37000.37100.37300.52500.73100.549100 | Staircase | 15d | 2027-04-27 | 2027-05-11 | 6859 |  | 7 Days Work | 9274294 |
| 6861 | 36900.37000.37100.37300.52500.73100.549200 | Deep Cleaning | 7d | 2027-05-12 | 2027-05-18 | 6860 |  | 7 Days Work | 9274304 |
| 6862 | 36900.37000.37100.37300.52500.73000 | **12th Habitable/13th Floor** | 158d | 2026-12-21 | 2027-05-27 |  | start no earlier than 2026-12-21 | 7 Days Work | 9265914 |
| 6863 | 36900.37000.37100.37300.52500.73000.549300 | Side blockwork for lift shafts | 9d | 2026-12-21 | 2026-12-29 | 6853 |  | 7 Days Work | 9274314 |
| 6864 | 36900.37000.37100.37300.52500.73000.549400 | Door Threshold for lifts | 6d | 2026-12-30 | 2027-01-04 | 6863 |  | 7 Days Work | 9274324 |
| 6865 | 36900.37000.37100.37300.52500.73000.549500 | Granite Cladding | 10d | 2027-01-05 | 2027-01-14 | 6864 |  | 7 Days Work | 9274334 |
| 6866 | 36900.37000.37100.37300.52500.73000.549600 | MEP Services | 60d | 2027-01-15 | 2027-03-15 | 6865 |  | 7 Days Work | 9274344 |
| 6867 | 36900.37000.37100.37300.52500.73000.549700 | Flooring+Skirting | 20d | 2027-03-16 | 2027-04-04 | 6866 |  | 7 Days Work | 9274354 |
| 6868 | 36900.37000.37100.37300.52500.73000.549800 | Wall finishes | 21d | 2027-04-05 | 2027-04-25 | 6867 |  | 7 Days Work | 9274364 |
| 6869 | 36900.37000.37100.37300.52500.73000.549900 | False Ceiling | 10d | 2027-04-26 | 2027-05-05 | 6868 |  | 7 Days Work | 9274374 |
| 6870 | 36900.37000.37100.37300.52500.73000.550000 | Staircase | 15d | 2027-05-06 | 2027-05-20 | 6869 |  | 7 Days Work | 9274384 |
| 6871 | 36900.37000.37100.37300.52500.73000.550100 | Deep Cleaning | 7d | 2027-05-21 | 2027-05-27 | 6870 |  | 7 Days Work | 9274394 |
| 6872 | 36900.37000.37100.37300.52500.72900 | **13th Habitable/14th Floor** | 158d | 2026-12-30 | 2027-06-05 |  | start no earlier than 2026-12-30 | 7 Days Work | 9265924 |
| 6873 | 36900.37000.37100.37300.52500.72900.550200 | Side blockwork for lift shafts | 9d | 2026-12-30 | 2027-01-07 | 6863 |  | 7 Days Work | 9274404 |
| 6874 | 36900.37000.37100.37300.52500.72900.550300 | Door Threshold for lifts | 6d | 2027-01-08 | 2027-01-13 | 6873 |  | 7 Days Work | 9274414 |
| 6875 | 36900.37000.37100.37300.52500.72900.550400 | Granite Cladding | 10d | 2027-01-14 | 2027-01-23 | 6874 |  | 7 Days Work | 9274424 |
| 6876 | 36900.37000.37100.37300.52500.72900.550500 | MEP Services | 60d | 2027-01-24 | 2027-03-24 | 6875 |  | 7 Days Work | 9274434 |
| 6877 | 36900.37000.37100.37300.52500.72900.550600 | Flooring+Skirting | 20d | 2027-03-25 | 2027-04-13 | 6876 |  | 7 Days Work | 9274444 |
| 6878 | 36900.37000.37100.37300.52500.72900.550700 | Wall finishes | 21d | 2027-04-14 | 2027-05-04 | 6877 |  | 7 Days Work | 9274454 |
| 6879 | 36900.37000.37100.37300.52500.72900.550800 | False Ceiling | 10d | 2027-05-05 | 2027-05-14 | 6878 |  | 7 Days Work | 9274464 |
| 6880 | 36900.37000.37100.37300.52500.72900.550900 | Staircase | 15d | 2027-05-15 | 2027-05-29 | 6879 |  | 7 Days Work | 9274474 |
| 6881 | 36900.37000.37100.37300.52500.72900.551000 | Deep Cleaning | 7d | 2027-05-30 | 2027-06-05 | 6880 |  | 7 Days Work | 9274484 |

| ID | WBS | Task | Duration | Start | Finish | Predecessors | Constraint | Calendar | Unique_Task_ID |
| --- | --- | --- | --- | --- | --- | --- | --- | --- | --- |
| 6882 | 36900.37000.37100.37300.52500.72800 | **14th Habitable/15th Floor** | 158d | 2027-01-08 | 2027-06-14 |  | start no earlier than 2027-01-08 | 7 Days Work | 9265934 |
| 6883 | 36900.37000.37100.37300.52500.72800.551100 | Side blockwork for lift shafts | 9d | 2027-01-08 | 2027-01-16 | 6873 |  | 7 Days Work | 9274494 |
| 6884 | 36900.37000.37100.37300.52500.72800.551200 | Door Threshold for lifts | 6d | 2027-01-17 | 2027-01-22 | 6883 |  | 7 Days Work | 9274504 |
| 6885 | 36900.37000.37100.37300.52500.72800.551300 | Granite Cladding | 10d | 2027-01-23 | 2027-02-01 | 6884 |  | 7 Days Work | 9274514 |
| 6886 | 36900.37000.37100.37300.52500.72800.551400 | MEP Services | 60d | 2027-02-02 | 2027-04-02 | 6885 |  | 7 Days Work | 9274524 |
| 6887 | 36900.37000.37100.37300.52500.72800.551500 | Flooring+Skirting | 20d | 2027-04-03 | 2027-04-22 | 6886 |  | 7 Days Work | 9274534 |
| 6888 | 36900.37000.37100.37300.52500.72800.551600 | Wall finishes | 21d | 2027-04-23 | 2027-05-13 | 6887 |  | 7 Days Work | 9274544 |
| 6889 | 36900.37000.37100.37300.52500.72800.551700 | False Ceiling | 10d | 2027-05-14 | 2027-05-23 | 6888 |  | 7 Days Work | 9274554 |
| 6890 | 36900.37000.37100.37300.52500.72800.551800 | Staircase | 15d | 2027-05-24 | 2027-06-07 | 6889 |  | 7 Days Work | 9274564 |
| 6891 | 36900.37000.37100.37300.52500.72800.551900 | Deep Cleaning | 7d | 2027-06-08 | 2027-06-14 | 6890 |  | 7 Days Work | 9274574 |
| 6892 | 36900.37000.37100.37300.52500.72700 | **15th Habitable/16th Floor** | 158d | 2027-01-17 | 2027-06-23 |  | start no earlier than 2027-01-17 | 7 Days Work | 9265944 |
| 6893 | 36900.37000.37100.37300.52500.72700.552000 | Side blockwork for lift shafts | 9d | 2027-01-17 | 2027-01-25 | 6883 |  | 7 Days Work | 9274584 |
| 6894 | 36900.37000.37100.37300.52500.72700.552100 | Door Threshold for lifts | 6d | 2027-01-26 | 2027-01-31 | 6893 |  | 7 Days Work | 9274594 |
| 6895 | 36900.37000.37100.37300.52500.72700.552200 | Granite Cladding | 10d | 2027-02-01 | 2027-02-10 | 6894 |  | 7 Days Work | 9274604 |
| 6896 | 36900.37000.37100.37300.52500.72700.552300 | MEP Services | 60d | 2027-02-11 | 2027-04-11 | 6895 |  | 7 Days Work | 9274614 |
| 6897 | 36900.37000.37100.37300.52500.72700.552400 | Flooring+Skirting | 20d | 2027-04-12 | 2027-05-01 | 6896 |  | 7 Days Work | 9274624 |
| 6898 | 36900.37000.37100.37300.52500.72700.552500 | Wall finishes | 21d | 2027-05-02 | 2027-05-22 | 6897 |  | 7 Days Work | 9274634 |
| 6899 | 36900.37000.37100.37300.52500.72700.552600 | False Ceiling | 10d | 2027-05-23 | 2027-06-01 | 6898 |  | 7 Days Work | 9274644 |
| 6900 | 36900.37000.37100.37300.52500.72700.552700 | Staircase | 15d | 2027-06-02 | 2027-06-16 | 6899 |  | 7 Days Work | 9274654 |
| 6901 | 36900.37000.37100.37300.52500.72700.552800 | Deep Cleaning | 7d | 2027-06-17 | 2027-06-23 | 6900 |  | 7 Days Work | 9274664 |
| 6902 | 36900.37000.37100.37300.52500.72600 | **16th Habitable/17th Floor** | 158d | 2027-01-26 | 2027-07-02 |  | start no earlier than 2027-01-26 | 7 Days Work | 9265954 |
| 6903 | 36900.37000.37100.37300.52500.72600.552900 | Side blockwork for lift shafts | 9d | 2027-01-26 | 2027-02-03 | 6893 |  | 7 Days Work | 9274674 |
| 6904 | 36900.37000.37100.37300.52500.72600.553000 | Door Threshold for lifts | 6d | 2027-02-04 | 2027-02-09 | 6903 |  | 7 Days Work | 9274684 |
| 6905 | 36900.37000.37100.37300.52500.72600.553100 | Granite Cladding | 10d | 2027-02-10 | 2027-02-19 | 6904 |  | 7 Days Work | 9274694 |
| 6906 | 36900.37000.37100.37300.52500.72600.553200 | MEP Services | 60d | 2027-02-20 | 2027-04-20 | 6905 |  | 7 Days Work | 9274704 |
| 6907 | 36900.37000.37100.37300.52500.72600.553300 | Flooring+Skirting | 20d | 2027-04-21 | 2027-05-10 | 6906 |  | 7 Days Work | 9274714 |
| 6908 | 36900.37000.37100.37300.52500.72600.553400 | Wall finishes | 21d | 2027-05-11 | 2027-05-31 | 6907 |  | 7 Days Work | 9274724 |
| 6909 | 36900.37000.37100.37300.52500.72600.553500 | False Ceiling | 10d | 2027-06-01 | 2027-06-10 | 6908 |  | 7 Days Work | 9274734 |
| 6910 | 36900.37000.37100.37300.52500.72600.553600 | Staircase | 15d | 2027-06-11 | 2027-06-25 | 6909 |  | 7 Days Work | 9274744 |
| 6911 | 36900.37000.37100.37300.52500.72600.553700 | Deep Cleaning | 7d | 2027-06-26 | 2027-07-02 | 6910 |  | 7 Days Work | 9274754 |

| ID | WBS | Task | Duration | Start | Finish | Predecessors | Constraint | Calendar | Unique_Task_ID |
| --- | --- | --- | --- | --- | --- | --- | --- | --- | --- |
| 6912 | 36900.37000.37100.37300.52500.72500 | **17th Habitable/18th Floor** | 158d | 2027-02-04 | 2027-07-11 |  | start no earlier than 2027-02-04 | 7 Days Work | 9265964 |
| 6913 | 36900.37000.37100.37300.52500.72500.553800 | Side blockwork for lift shafts | 9d | 2027-02-04 | 2027-02-12 | 6903 |  | 7 Days Work | 9274764 |
| 6914 | 36900.37000.37100.37300.52500.72500.553900 | Door Threshold for lifts | 6d | 2027-02-13 | 2027-02-18 | 6913 |  | 7 Days Work | 9274774 |
| 6915 | 36900.37000.37100.37300.52500.72500.554000 | Granite Cladding | 10d | 2027-02-19 | 2027-02-28 | 6914 |  | 7 Days Work | 9274784 |
| 6916 | 36900.37000.37100.37300.52500.72500.554100 | MEP Services | 60d | 2027-03-01 | 2027-04-29 | 6915 |  | 7 Days Work | 9274794 |
| 6917 | 36900.37000.37100.37300.52500.72500.554200 | Flooring+Skirting | 20d | 2027-04-30 | 2027-05-19 | 6916 |  | 7 Days Work | 9274804 |
| 6918 | 36900.37000.37100.37300.52500.72500.554300 | Wall finishes | 21d | 2027-05-20 | 2027-06-09 | 6917 |  | 7 Days Work | 9274814 |
| 6919 | 36900.37000.37100.37300.52500.72500.554400 | False Ceiling | 10d | 2027-06-10 | 2027-06-19 | 6918 |  | 7 Days Work | 9274824 |
| 6920 | 36900.37000.37100.37300.52500.72500.554500 | Staircase | 15d | 2027-06-20 | 2027-07-04 | 6919 |  | 7 Days Work | 9274834 |
| 6921 | 36900.37000.37100.37300.52500.72500.554600 | Deep Cleaning | 7d | 2027-07-05 | 2027-07-11 | 6920 |  | 7 Days Work | 9274844 |
| 6922 | 36900.37000.37100.37300.52500.72400 | **18th Habitable/19th Floor** | 158d | 2027-02-13 | 2027-07-20 |  | start no earlier than 2027-02-13 | 7 Days Work | 9265974 |
| 6923 | 36900.37000.37100.37300.52500.72400.554700 | Side blockwork for lift shafts | 9d | 2027-02-13 | 2027-02-21 | 6913 |  | 7 Days Work | 9274854 |
| 6924 | 36900.37000.37100.37300.52500.72400.554800 | Door Threshold for lifts | 6d | 2027-02-22 | 2027-02-27 | 6923 |  | 7 Days Work | 9274864 |
| 6925 | 36900.37000.37100.37300.52500.72400.554900 | Granite Cladding | 10d | 2027-02-28 | 2027-03-09 | 6924 |  | 7 Days Work | 9274874 |
| 6926 | 36900.37000.37100.37300.52500.72400.555000 | MEP Services | 60d | 2027-03-10 | 2027-05-08 | 6925 |  | 7 Days Work | 9274884 |
| 6927 | 36900.37000.37100.37300.52500.72400.555100 | Flooring+Skirting | 20d | 2027-05-09 | 2027-05-28 | 6926 |  | 7 Days Work | 9274894 |
| 6928 | 36900.37000.37100.37300.52500.72400.555200 | Wall finishes | 21d | 2027-05-29 | 2027-06-18 | 6927 |  | 7 Days Work | 9274904 |
| 6929 | 36900.37000.37100.37300.52500.72400.555300 | False Ceiling | 10d | 2027-06-19 | 2027-06-28 | 6928 |  | 7 Days Work | 9274914 |
| 6930 | 36900.37000.37100.37300.52500.72400.555400 | Staircase | 15d | 2027-06-29 | 2027-07-13 | 6929 |  | 7 Days Work | 9274924 |
| 6931 | 36900.37000.37100.37300.52500.72400.555500 | Deep Cleaning | 7d | 2027-07-14 | 2027-07-20 | 6930 |  | 7 Days Work | 9274934 |
| 6932 | 36900.37000.37100.37300.52500.72300 | **19th Habitable/20th Floor** | 158d | 2027-02-22 | 2027-07-29 |  | start no earlier than 2027-02-22 | 7 Days Work | 9265984 |
| 6933 | 36900.37000.37100.37300.52500.72300.555600 | Side blockwork for lift shafts | 9d | 2027-02-22 | 2027-03-02 | 6923 |  | 7 Days Work | 9274944 |
| 6934 | 36900.37000.37100.37300.52500.72300.555700 | Door Threshold for lifts | 6d | 2027-03-03 | 2027-03-08 | 6933 |  | 7 Days Work | 9274954 |
| 6935 | 36900.37000.37100.37300.52500.72300.555800 | Granite Cladding | 10d | 2027-03-09 | 2027-03-18 | 6934 |  | 7 Days Work | 9274964 |
| 6936 | 36900.37000.37100.37300.52500.72300.555900 | MEP Services | 60d | 2027-03-19 | 2027-05-17 | 6935 |  | 7 Days Work | 9274974 |
| 6937 | 36900.37000.37100.37300.52500.72300.556000 | Flooring+Skirting | 20d | 2027-05-18 | 2027-06-06 | 6936 |  | 7 Days Work | 9274984 |
| 6938 | 36900.37000.37100.37300.52500.72300.556100 | Wall finishes | 21d | 2027-06-07 | 2027-06-27 | 6937 |  | 7 Days Work | 9274994 |
| 6939 | 36900.37000.37100.37300.52500.72300.556200 | False Ceiling | 10d | 2027-06-28 | 2027-07-07 | 6938 |  | 7 Days Work | 9275004 |
| 6940 | 36900.37000.37100.37300.52500.72300.556300 | Staircase | 15d | 2027-07-08 | 2027-07-22 | 6939 |  | 7 Days Work | 9275014 |
| 6941 | 36900.37000.37100.37300.52500.72300.556400 | Deep Cleaning | 7d | 2027-07-23 | 2027-07-29 | 6940 |  | 7 Days Work | 9275024 |

| ID | WBS | Task | Duration | Start | Finish | Predecessors | Constraint | Calendar | Unique_Task_ID |
| --- | --- | --- | --- | --- | --- | --- | --- | --- | --- |
| 6942 | 36900.37000.37100.37300.52500.72200 | **20th Habitable/21st Floor** | 158d | 2027-03-03 | 2027-08-07 |  | start no earlier than 2027-03-03 | 7 Days Work | 9265994 |
| 6943 | 36900.37000.37100.37300.52500.72200.556500 | Side blockwork for lift shafts | 9d | 2027-03-03 | 2027-03-11 | 6933 |  | 7 Days Work | 9275034 |
| 6944 | 36900.37000.37100.37300.52500.72200.556600 | Door Threshold for lifts | 6d | 2027-03-12 | 2027-03-17 | 6943 |  | 7 Days Work | 9275044 |
| 6945 | 36900.37000.37100.37300.52500.72200.556700 | Granite Cladding | 10d | 2027-03-18 | 2027-03-27 | 6944 |  | 7 Days Work | 9275054 |
| 6946 | 36900.37000.37100.37300.52500.72200.556800 | MEP Services | 60d | 2027-03-28 | 2027-05-26 | 6945 |  | 7 Days Work | 9275064 |
| 6947 | 36900.37000.37100.37300.52500.72200.556900 | Flooring+Skirting | 20d | 2027-05-27 | 2027-06-15 | 6946 |  | 7 Days Work | 9275074 |
| 6948 | 36900.37000.37100.37300.52500.72200.557000 | Wall finishes | 21d | 2027-06-16 | 2027-07-06 | 6947 |  | 7 Days Work | 9275084 |
| 6949 | 36900.37000.37100.37300.52500.72200.557100 | False Ceiling | 10d | 2027-07-07 | 2027-07-16 | 6948 |  | 7 Days Work | 9275094 |
| 6950 | 36900.37000.37100.37300.52500.72200.557200 | Staircase | 15d | 2027-07-17 | 2027-07-31 | 6949 |  | 7 Days Work | 9275104 |
| 6951 | 36900.37000.37100.37300.52500.72200.557300 | Deep Cleaning | 7d | 2027-08-01 | 2027-08-07 | 6950 |  | 7 Days Work | 9044524 |
| 6952 | 36900.37000.37100.37300.67600 | **Lift** | 332d | 2025-11-30 | 2026-10-27 |  | start no earlier than 2025-11-30 | 7 Days Work | 9265794 |
| 6953 | 36900.37000.37100.37300.67600.121800 | Order Issue | 104d | 2025-11-30 | 2026-03-13 | 5539FS-120d |  | 7 Days Work | 9266004 |
| 6954 | 36900.37000.37100.37300.67600.121900 | Shop drawing approval | 30d | 2026-03-14 | 2026-04-12 | 6953 |  | 7 Days Work | 9266014 |
| 6955 | 36900.37000.37100.37300.67600.122000 | Material recipt | 90d | 2026-04-13 | 2026-07-11 | 6954 |  | 7 Days Work | 9266024 |
| 6956 | 36900.37000.37100.37300.67600.122100 | Lift Shaft Handover | 30d | 2026-08-02 | 2026-08-31 | 5549 |  | 7 Days Work | 9266034 |
| 6957 | 36900.37000.37100.37300.67600.122200 | Template fixing by lift contractor | 7d | 2026-09-01 | 2026-09-07 | 6956 |  | 7 Days Work | 9266044 |
| 6958 | 36900.37000.37100.37300.67600.122300 | Centre line marking for lift shafts | 5d | 2026-09-08 | 2026-09-12 | 6957 |  | 7 Days Work | 9266054 |
| 6959 | 36900.37000.37100.37300.67600.122400 | Rail & Bracket Fixing | 5d | 2026-09-13 | 2026-09-17 | 6958 |  | 7 Days Work | 9266064 |
| 6960 | 36900.37000.37100.37300.67600.122500 | Cage Installation | 5d | 2026-09-18 | 2026-09-22 | 6959 |  | 7 Days Work | 9266074 |
| 6961 | 36900.37000.37100.37300.67600.122600 | Slow Speed | 20d | 2026-09-23 | 2026-10-12 | 6960 |  | 7 Days Work | 9266084 |
| 6962 | 36900.37000.37100.37300.67600.122700 | High Spped | 5d | 2026-10-13 | 2026-10-17 | 6961 |  | 7 Days Work | 9266094 |
| 6963 | 36900.37000.37100.37300.67600.122800 | Commisioning | 7d | 2026-10-18 | 2026-10-24 | 6962 |  | 7 Days Work | 9266104 |
| 6964 | 36900.37000.37100.37300.67600.122900 | Handover | 3d | 2026-10-25 | 2026-10-27 | 6963 |  | 7 Days Work | 9044514 |
| 6965 | 36900.37000.37100.37300.109300 | External Paint | 90d | 2026-11-10 | 2027-02-07 | 5548FS+135d |  | 7 Days Work | 9146054 |

| ID | WBS | Task | Duration | Start | Finish | Predecessors | Complete | Constraint | Calendar | Unique_Task_ID |
| --- | --- | --- | --- | --- | --- | --- | --- | --- | --- | --- |
| 6966 | 36900.37000.37100.37400 | **Tower-6** | 887d | 2025-03-04 | 2027-08-07 |  |  | start no earlier than 2025-03-04 | 7 Days Work | 9042654 |
| 6967 | 36900.37000.37100.37400.83300 | Pilling | 118d | 2025-03-04 | 2025-07-14 | 5523SS+1d | 11% | start no earlier than 2025-03-04 | 7 Days Work | 9044534 |
| 6968 | 36900.37000.37100.37400.109400 | Excavation & Pile Breaking | 37d | 2025-07-15 | 2025-08-20 | 6967 |  |  | 7 Days Work | 9044535 |
| 6969 | 36900.37000.37100.37400.109500 | Pilecap | 26d | 2025-08-21 | 2025-09-15 | 6968 |  |  | 7 Days Work | 9044544 |
| 6970 | 36900.37000.37100.37400.109600 | up to PL | 22d | 2025-09-16 | 2025-10-07 | 6969 |  |  | 7 Days Work | 9044554 |
| 6971 | 36900.37000.37100.37400.109700 | 1st Floor Slab RCC | 25d | 2025-10-08 | 2025-11-01 | 6970 |  |  | 7 Days Work | 9044564 |
| 6972 | 36900.37000.37100.37400.109800 | 2nd Floor Slab RCC | 25d | 2025-11-02 | 2025-11-26 | 6971 |  |  | 7 Days Work | 9044574 |
| 6973 | 36900.37000.37100.37400.109900 | 3rd Floor Slab RCC | 21d | 2025-11-27 | 2025-12-17 | 6972 |  |  | 7 Days Work | 9044584 |
| 6974 | 36900.37000.37100.37400.110000 | 4th Floor Slab RCC | 15d | 2025-12-18 | 2026-01-01 | 6973 |  |  | 7 Days Work | 9044594 |
| 6975 | 36900.37000.37100.37400.110100 | 5th Floor Slab RCC | 9d | 2026-01-02 | 2026-01-10 | 6974 |  |  | 7 Days Work | 9044604 |
| 6976 | 36900.37000.37100.37400.110200 | 6th Floor Slab RCC | 9d | 2026-01-11 | 2026-01-19 | 6975 |  |  | 7 Days Work | 9044614 |
| 6977 | 36900.37000.37100.37400.110300 | 7th Floor Slab RCC | 12d | 2026-01-20 | 2026-01-31 | 6976 |  |  | 7 Days Work | 9044624 |
| 6978 | 36900.37000.37100.37400.110400 | 8th Floor Slab RCC | 9d | 2026-02-01 | 2026-02-09 | 6977 |  |  | 7 Days Work | 9044634 |
| 6979 | 36900.37000.37100.37400.110500 | 9th Floor Slab RCC | 9d | 2026-02-10 | 2026-02-18 | 6978 |  |  | 7 Days Work | 9044644 |
| 6980 | 36900.37000.37100.37400.110600 | 10th Floor Slab RCC | 9d | 2026-02-19 | 2026-02-27 | 6979 |  |  | 7 Days Work | 9044654 |
| 6981 | 36900.37000.37100.37400.110700 | 11th Floor Slab RCC | 12d | 2026-02-28 | 2026-03-11 | 6980 |  |  | 7 Days Work | 9044664 |
| 6982 | 36900.37000.37100.37400.110800 | 12th Floor Slab RCC | 9d | 2026-03-12 | 2026-03-20 | 6981 |  |  | 7 Days Work | 9044674 |
| 6983 | 36900.37000.37100.37400.110900 | 13th Floor Slab RCC | 9d | 2026-03-21 | 2026-03-29 | 6982 |  |  | 7 Days Work | 9044684 |
| 6984 | 36900.37000.37100.37400.111000 | 14th Floor Slab RCC | 9d | 2026-03-30 | 2026-04-07 | 6983 |  |  | 7 Days Work | 9044694 |
| 6985 | 36900.37000.37100.37400.111100 | 15th Floor Slab RCC | 12d | 2026-04-08 | 2026-04-19 | 6984 |  |  | 7 Days Work | 9044704 |
| 6986 | 36900.37000.37100.37400.111200 | 16th Floor Slab RCC | 9d | 2026-04-20 | 2026-04-28 | 6985 |  |  | 7 Days Work | 9044714 |
| 6987 | 36900.37000.37100.37400.111300 | 17th Floor Slab RCC | 9d | 2026-04-29 | 2026-05-07 | 6986 |  |  | 7 Days Work | 9044724 |
| 6988 | 36900.37000.37100.37400.111400 | 18th Floor Slab RCC | 9d | 2026-05-08 | 2026-05-16 | 6987 |  |  | 7 Days Work | 9044734 |
| 6989 | 36900.37000.37100.37400.111500 | 19th Floor Slab RCC | 12d | 2026-05-17 | 2026-05-28 | 6988 |  |  | 7 Days Work | 9044744 |
| 6990 | 36900.37000.37100.37400.111600 | 20th Floor Slab RCC | 9d | 2026-05-29 | 2026-06-06 | 6989 |  |  | 7 Days Work | 9044754 |
| 6991 | 36900.37000.37100.37400.111700 | 21st Floor Slab RCC | 9d | 2026-06-07 | 2026-06-15 | 6990 |  |  | 7 Days Work | 9044764 |
| 6992 | 36900.37000.37100.37400.111800 | Terrace | 12d | 2026-06-16 | 2026-06-27 | 6991 |  |  | 7 Days Work | 9044774 |
| 6993 | 36900.37000.37100.37400.111900 | Above Terrace | 35d | 2026-06-28 | 2026-08-01 | 6992 |  |  | 7 Days Work | 9293684 |

| ID | WBS | Task | Duration | Start | Finish | Predecessors | Constraint | Calendar | Unique_Task_ID |
| --- | --- | --- | --- | --- | --- | --- | --- | --- | --- |
| 6994 | 36900.37000.37100.37400.38100 | **Flat Finishing** | 542d | 2025-09-29 | 2027-03-24 |  | start no earlier than 2025-09-29 | 7 Days Work | 9279534 |
| 6995 | 36900.37000.37100.37400.38100.48200 | **1st Habitable/2nd Floor** | 245d | 2026-01-02 | 2026-09-03 |  | start no earlier than 2026-01-02 | 7 Days Work | 9279544 |
| 6996 | 36900.37000.37100.37400.38100.48200.557400 | Post Pour | 7d | 2026-01-02 | 2026-01-08 | 6973FS+15d |  | 7 Days Work | 9280284 |
| 6997 | 36900.37000.37100.37400.38100.48200.557500 | MEP Clearance -1 | 5d | 2026-01-09 | 2026-01-13 | 6996 |  | 7 Days Work | 9280294 |
| 6998 | 36900.37000.37100.37400.38100.48200.557600 | Benchmark | 1d | 2026-01-14 | 2026-01-14 | 6997 |  | 7 Days Work | 9280304 |
| 6999 | 36900.37000.37100.37400.38100.48200.557700 | Temporary Railing | 3d | 2026-01-15 | 2026-01-17 | 6998 |  | 7 Days Work | 9280314 |
| 7000 | 36900.37000.37100.37400.38100.48200.557800 | Blockwork | 10d | 2026-01-18 | 2026-01-27 | 6999 |  | 7 Days Work | 9280324 |
| 7001 | 36900.37000.37100.37400.38100.48200.557900 | MEP Clearance -2 | 10d | 2026-01-28 | 2026-02-06 | 7000 |  | 7 Days Work | 9280334 |
| 7002 | 36900.37000.37100.37400.38100.48200.558000 | Gypsum Plaster | 14d | 2026-02-07 | 2026-02-20 | 7001 |  | 7 Days Work | 9280344 |
| 7003 | 36900.37000.37100.37400.38100.48200.558100 | Kitchen Platform | 3d | 2026-02-21 | 2026-02-23 | 7002 |  | 7 Days Work | 9280354 |
| 7004 | 36900.37000.37100.37400.38100.48200.558200 | Kitchen dado | 7d | 2026-02-24 | 2026-03-02 | 7003 |  | 7 Days Work | 9280364 |
| 7005 | 36900.37000.37100.37400.38100.48200.558300 | Fire Fighting | 5d | 2026-03-03 | 2026-03-07 | 7004 |  | 7 Days Work | 9280374 |
| 7006 | 36900.37000.37100.37400.38100.48200.558400 | Anticapilary | 5d | 2026-03-08 | 2026-03-12 | 7005 |  | 7 Days Work | 9280384 |
| 7007 | 36900.37000.37100.37400.38100.48200.558500 | Stone Laying | 10d | 2026-04-15 | 2026-04-24 | 7047 |  | 7 Days Work | 9280394 |
| 7008 | 36900.37000.37100.37400.38100.48200.558600 | Tiles Laying | 7d | 2026-04-15 | 2026-04-21 | 7047 |  | 7 Days Work | 9280404 |
| 7009 | 36900.37000.37100.37400.38100.48200.558700 | 1st cutting/polishing of stone flooring | 7d | 2026-04-22 | 2026-04-28 | 7008 |  | 7 Days Work | 9280414 |
| 7010 | 36900.37000.37100.37400.38100.48200.558800 | Tiles/Stone skirting | 5d | 2026-04-29 | 2026-05-03 | 7009 |  | 7 Days Work | 9280424 |
| 7011 | 36900.37000.37100.37400.38100.48200.558900 | Protechtion sheet | 1d | 2026-05-04 | 2026-05-04 | 7010 |  | 7 Days Work | 9280434 |
| 7012 | 36900.37000.37100.37400.38100.48200.559000 | Installation of Temporary Door | 1d | 2026-05-05 | 2026-05-05 | 7011 |  | 7 Days Work | 9280444 |
| 7013 | 36900.37000.37100.37400.38100.48200.559100 | Fixing of window tracks | 5d | 2026-05-06 | 2026-05-10 | 7012 |  | 7 Days Work | 9280454 |
| 7014 | 36900.37000.37100.37400.38100.48200.559200 | Wire Pulling | 7d | 2026-05-11 | 2026-05-17 | 7013 |  | 7 Days Work | 9280464 |
| 7015 | 36900.37000.37100.37400.38100.48200.559300 | Gypsum Remaining | 5d | 2026-05-18 | 2026-05-22 | 7014 |  | 7 Days Work | 9280474 |
| 7016 | 36900.37000.37100.37400.38100.48200.559400 | Fixing of windoow shutter | 5d | 2026-05-23 | 2026-05-27 | 7015 |  | 7 Days Work | 9280484 |
| 7017 | 36900.37000.37100.37400.38100.48200.559500 | Putty Works - walls & ceiling | 15d | 2026-05-28 | 2026-06-11 | 7016 |  | 7 Days Work | 9280494 |
| 7018 | 36900.37000.37100.37400.38100.48200.559600 | False Ceiling- Framing | 10d | 2026-06-12 | 2026-06-21 | 7017 |  | 7 Days Work | 9280504 |
| 7019 | 36900.37000.37100.37400.38100.48200.559700 | Pre Hung Door | 3d | 2026-06-22 | 2026-06-24 | 7018 |  | 7 Days Work | 9280514 |
| 7020 | 36900.37000.37100.37400.38100.48200.559800 | Protechtion sheet | 2d | 2026-06-25 | 2026-06-26 | 7019 |  | 7 Days Work | 9280524 |
| 7021 | 36900.37000.37100.37400.38100.48200.559900 | Skirting near door | 2d | 2026-06-27 | 2026-06-28 | 7020 |  | 7 Days Work | 9280534 |
| 7022 | 36900.37000.37100.37400.38100.48200.560000 | Electrical Switch box fixing | 14d | 2026-06-29 | 2026-07-12 | 7021 |  | 7 Days Work | 9280544 |
| 7023 | 36900.37000.37100.37400.38100.48200.560100 | Fire Fighting painting | 5d | 2026-07-13 | 2026-07-17 | 7022 |  | 7 Days Work | 9280554 |
| 7024 | 36900.37000.37100.37400.38100.48200.560200 | Protection of all flooring, door & window hardware | 5d | 2026-07-18 | 2026-07-22 | 7023 |  | 7 Days Work | 9280564 |
| 7025 | 36900.37000.37100.37400.38100.48200.560300 | 1st coat primer- ceiling 1st & walls | 14d | 2026-07-23 | 2026-08-05 | 7024 |  | 7 Days Work | 9280574 |
| 7026 | 36900.37000.37100.37400.38100.48200.560400 | Wooden Flooring | 5d | 2026-08-06 | 2026-08-10 | 7025 |  | 7 Days Work | 9280584 |
| 7027 | 36900.37000.37100.37400.38100.48200.560500 | Removing of Temporary Railing & installation of Glass Railing | 5d | 2026-08-06 | 2026-08-10 | 7025 |  | 7 Days Work | 9280594 |
| 7028 | 36900.37000.37100.37400.38100.48200.560600 | Tile Grouting | 7d | 2026-08-06 | 2026-08-12 | 7025 |  | 7 Days Work | 9280604 |
| 7029 | 36900.37000.37100.37400.38100.48200.560700 | False Ceiling | 5d | 2026-08-13 | 2026-08-17 | 7028 |  | 7 Days Work | 9280614 |
| 7030 | 36900.37000.37100.37400.38100.48200.560800 | 2nd coat of primer | 10d | 2026-08-18 | 2026-08-27 | 7029 |  | 7 Days Work | 9280624 |
| 7031 | 36900.37000.37100.37400.38100.48200.560900 | Final cutting/polishing of stone flooring | 7d | 2026-08-28 | 2026-09-03 | 7030 |  | 7 Days Work | 9280634 |

| ID | WBS | Task | Duration | Start | Finish | Predecessors | Constraint | Calendar | Unique_Task_ID |
| --- | --- | --- | --- | --- | --- | --- | --- | --- | --- |
| 7032 | 36900.37000.37100.37400.38100.48200.62900 | **Toilet** | 237d | 2026-01-09 | 2026-09-02 |  | start no earlier than 2026-01-09 | 7 Days Work | 9279754 |
| 7033 | 36900.37000.37100.37400.38100.48200.62900.948800 | Toilet_MEP Clearance -1 | 7d | 2026-01-09 | 2026-01-15 | 6996 |  | 7 Days Work | 9289284 |
| 7034 | 36900.37000.37100.37400.38100.48200.62900.948900 | Toilet_Level Marking | 1d | 2026-01-16 | 2026-01-16 | 7033 |  | 7 Days Work | 9289294 |
| 7035 | 36900.37000.37100.37400.38100.48200.62900.949000 | Toilet_Chasing work for Electrical conduit & concealed plumbing | 5d | 2026-01-17 | 2026-01-21 | 7034 |  | 7 Days Work | 9289304 |
| 7036 | 36900.37000.37100.37400.38100.48200.62900.949100 | Toilet_Plumbing work 1st fix | 5d | 2026-01-22 | 2026-01-26 | 7035 |  | 7 Days Work | 9289314 |
| 7037 | 36900.37000.37100.37400.38100.48200.62900.949200 | Toilet_Sleeve/Bore Packing | 5d | 2026-01-27 | 2026-01-31 | 7036 |  | 7 Days Work | 9289324 |
| 7038 | 36900.37000.37100.37400.38100.48200.62900.949300 | Toilet_Waterproofing | 10d | 2026-02-01 | 2026-02-10 | 7037 |  | 7 Days Work | 9289334 |
| 7039 | 36900.37000.37100.37400.38100.48200.62900.949400 | Toilet_Screed | 1d | 2026-02-11 | 2026-02-11 | 7038 |  | 7 Days Work | 9289344 |
| 7040 | 36900.37000.37100.37400.38100.48200.62900.949500 | Toilet_Plumbing 2nd fix | 5d | 2026-02-12 | 2026-02-16 | 7039 |  | 7 Days Work | 9289354 |
| 7041 | 36900.37000.37100.37400.38100.48200.62900.949600 | Toilet_Ledge wall | 5d | 2026-02-17 | 2026-02-21 | 7040 |  | 7 Days Work | 9289364 |
| 7042 | 36900.37000.37100.37400.38100.48200.62900.949700 | Toilet_Cement Plaster | 5d | 2026-02-22 | 2026-02-26 | 7041 |  | 7 Days Work | 9289374 |
| 7043 | 36900.37000.37100.37400.38100.48200.62900.949800 | Toilet_Door Frame | 1d | 2026-02-27 | 2026-02-27 | 7042 |  | 7 Days Work | 9289384 |
| 7044 | 36900.37000.37100.37400.38100.48200.62900.949900 | Toilet_Wash basin & Couter | 3d | 2026-02-28 | 2026-03-02 | 7043 |  | 7 Days Work | 9289394 |
| 7045 | 36900.37000.37100.37400.38100.48200.62900.950000 | Toilet_Wall dado | 20d | 2026-03-03 | 2026-03-22 | 7044 |  | 7 Days Work | 9289404 |
| 7046 | 36900.37000.37100.37400.38100.48200.62900.950100 | Toilet_Granite Work-Ledge wall top | 3d | 2026-03-23 | 2026-03-25 | 7045 |  | 7 Days Work | 9289414 |
| 7047 | 36900.37000.37100.37400.38100.48200.62900.950200 | Toilet_Floor Tilling work | 20d | 2026-03-26 | 2026-04-14 | 7046 |  | 7 Days Work | 9289424 |
| 7048 | 36900.37000.37100.37400.38100.48200.62900.950300 | Toilet_1st row of dado | 5d | 2026-04-15 | 2026-04-19 | 7047 |  | 7 Days Work | 9289434 |
| 7049 | 36900.37000.37100.37400.38100.48200.62900.950400 | Toilet_Window Fixing | 14d | 2026-04-20 | 2026-05-03 | 7048 |  | 7 Days Work | 9289444 |
| 7050 | 36900.37000.37100.37400.38100.48200.62900.950500 | Toilet_Services above False ceiling | 21d | 2026-05-04 | 2026-05-24 | 7049 |  | 7 Days Work | 9289454 |
| 7051 | 36900.37000.37100.37400.38100.48200.62900.950600 | Toilet_False Ceiling framing | 12d | 2026-05-25 | 2026-06-05 | 7050 |  | 7 Days Work | 9289464 |
| 7052 | 36900.37000.37100.37400.38100.48200.62900.950700 | Toilet_Door Frame | 5d | 2026-06-06 | 2026-06-10 | 7051 |  | 7 Days Work | 9289474 |
| 7053 | 36900.37000.37100.37400.38100.48200.62900.950800 | Toilet_Epoxy Tile Grouting | 7d | 2026-08-06 | 2026-08-12 | 7028SS |  | 7 Days Work | 9289484 |
| 7054 | 36900.37000.37100.37400.38100.48200.62900.950900 | Toilet_False ceiling board fixing, CP Sanitary Fixture, Electric Fixture | 21d | 2026-08-13 | 2026-09-02 | 7053 |  | 7 Days Work | 9289494 |
| 7055 | 36900.37000.37100.37400.38100.48300 | **2nd Habitable/3rd Floor** | 245d | 2026-01-17 | 2026-09-18 |  | start no earlier than 2026-01-17 | 7 Days Work | 9279554 |
| 7056 | 36900.37000.37100.37400.38100.48300.561000 | Post Pour | 7d | 2026-01-17 | 2026-01-23 | 6974FS+15d |  | 7 Days Work | 9280644 |
| 7057 | 36900.37000.37100.37400.38100.48300.561100 | MEP Clearance -1 | 5d | 2026-01-24 | 2026-01-28 | 7056 |  | 7 Days Work | 9280654 |
| 7058 | 36900.37000.37100.37400.38100.48300.561200 | Benchmark | 1d | 2026-01-29 | 2026-01-29 | 7057 |  | 7 Days Work | 9280664 |
| 7059 | 36900.37000.37100.37400.38100.48300.561300 | Temporary Railing | 3d | 2026-01-30 | 2026-02-01 | 7058 |  | 7 Days Work | 9280674 |
| 7060 | 36900.37000.37100.37400.38100.48300.561400 | Blockwork | 10d | 2026-02-02 | 2026-02-11 | 7059 |  | 7 Days Work | 9280684 |
| 7061 | 36900.37000.37100.37400.38100.48300.561500 | MEP Clearance -2 | 10d | 2026-02-12 | 2026-02-21 | 7060 |  | 7 Days Work | 9280694 |
| 7062 | 36900.37000.37100.37400.38100.48300.561600 | Gypsum Plaster | 14d | 2026-02-22 | 2026-03-07 | 7061 |  | 7 Days Work | 9280704 |
| 7063 | 36900.37000.37100.37400.38100.48300.561700 | Kitchen Platform | 3d | 2026-03-08 | 2026-03-10 | 7062 |  | 7 Days Work | 9280714 |
| 7064 | 36900.37000.37100.37400.38100.48300.561800 | Kitchen dado | 7d | 2026-03-11 | 2026-03-17 | 7063 |  | 7 Days Work | 9280724 |
| 7065 | 36900.37000.37100.37400.38100.48300.561900 | Fire Fighting | 5d | 2026-03-18 | 2026-03-22 | 7064 |  | 7 Days Work | 9280734 |
| 7066 | 36900.37000.37100.37400.38100.48300.562000 | Anticapilary | 5d | 2026-03-23 | 2026-03-27 | 7065 |  | 7 Days Work | 9280744 |
| 7067 | 36900.37000.37100.37400.38100.48300.562100 | Stone Laying | 10d | 2026-04-30 | 2026-05-09 | 7107 |  | 7 Days Work | 9280754 |
| 7068 | 36900.37000.37100.37400.38100.48300.562200 | Tiles Laying | 7d | 2026-04-30 | 2026-05-06 | 7107 |  | 7 Days Work | 9280764 |
| 7069 | 36900.37000.37100.37400.38100.48300.562300 | 1st cutting/polishing of stone flooring | 7d | 2026-05-07 | 2026-05-13 | 7068 |  | 7 Days Work | 9280774 |
| 7070 | 36900.37000.37100.37400.38100.48300.562400 | Tiles/Stone skirting | 5d | 2026-05-14 | 2026-05-18 | 7069 |  | 7 Days Work | 9280784 |
| 7071 | 36900.37000.37100.37400.38100.48300.562500 | Protechtion sheet | 1d | 2026-05-19 | 2026-05-19 | 7070 |  | 7 Days Work | 9280794 |
| 7072 | 36900.37000.37100.37400.38100.48300.562600 | Installation of Temporary Door | 1d | 2026-05-20 | 2026-05-20 | 7071 |  | 7 Days Work | 9280804 |
| 7073 | 36900.37000.37100.37400.38100.48300.562700 | Fixing of window tracks | 5d | 2026-05-21 | 2026-05-25 | 7072 |  | 7 Days Work | 9280814 |
| 7074 | 36900.37000.37100.37400.38100.48300.562800 | Wire Pulling | 7d | 2026-05-26 | 2026-06-01 | 7073 |  | 7 Days Work | 9280824 |
| 7075 | 36900.37000.37100.37400.38100.48300.562900 | Gypsum Remaining | 5d | 2026-06-02 | 2026-06-06 | 7074 |  | 7 Days Work | 9280834 |
| 7076 | 36900.37000.37100.37400.38100.48300.563000 | Fixing of windoow shutter | 5d | 2026-06-07 | 2026-06-11 | 7075 |  | 7 Days Work | 9280844 |
| 7077 | 36900.37000.37100.37400.38100.48300.563100 | Putty Works - walls & ceiling | 15d | 2026-06-12 | 2026-06-26 | 7076 |  | 7 Days Work | 9280854 |
| 7078 | 36900.37000.37100.37400.38100.48300.563200 | False Ceiling- Framing | 10d | 2026-06-27 | 2026-07-06 | 7077 |  | 7 Days Work | 9280864 |
| 7079 | 36900.37000.37100.37400.38100.48300.563300 | Pre Hung Door | 3d | 2026-07-07 | 2026-07-09 | 7078 |  | 7 Days Work | 9280874 |
| 7080 | 36900.37000.37100.37400.38100.48300.563400 | Protechtion sheet | 2d | 2026-07-10 | 2026-07-11 | 7079 |  | 7 Days Work | 9280884 |
| 7081 | 36900.37000.37100.37400.38100.48300.563500 | Skirting near door | 2d | 2026-07-12 | 2026-07-13 | 7080 |  | 7 Days Work | 9280894 |
| 7082 | 36900.37000.37100.37400.38100.48300.563600 | Electrical Switch box fixing | 14d | 2026-07-14 | 2026-07-27 | 7081 |  | 7 Days Work | 9280904 |
| 7083 | 36900.37000.37100.37400.38100.48300.563700 | Fire Fighting painting | 5d | 2026-07-28 | 2026-08-01 | 7082 |  | 7 Days Work | 9280914 |
| 7084 | 36900.37000.37100.37400.38100.48300.563800 | Protection of all flooring, door & window hardware | 5d | 2026-08-02 | 2026-08-06 | 7083 |  | 7 Days Work | 9280924 |
| 7085 | 36900.37000.37100.37400.38100.48300.563900 | 1st coat primer- ceiling 1st & walls | 14d | 2026-08-07 | 2026-08-20 | 7084 |  | 7 Days Work | 9280934 |
| 7086 | 36900.37000.37100.37400.38100.48300.564000 | Wooden Flooring | 5d | 2026-08-21 | 2026-08-25 | 7085 |  | 7 Days Work | 9280944 |
| 7087 | 36900.37000.37100.37400.38100.48300.564100 | Removing of Temporary Railing & installation of Glass Railing | 5d | 2026-08-21 | 2026-08-25 | 7085 |  | 7 Days Work | 9280954 |
| 7088 | 36900.37000.37100.37400.38100.48300.564200 | Tile Grouting | 7d | 2026-08-21 | 2026-08-27 | 7085 |  | 7 Days Work | 9280964 |
| 7089 | 36900.37000.37100.37400.38100.48300.564300 | False Ceiling | 5d | 2026-08-28 | 2026-09-01 | 7088 |  | 7 Days Work | 9280974 |
| 7090 | 36900.37000.37100.37400.38100.48300.564400 | 2nd coat of primer | 10d | 2026-09-02 | 2026-09-11 | 7089 |  | 7 Days Work | 9280984 |
| 7091 | 36900.37000.37100.37400.38100.48300.564500 | Final cutting/polishing of stone flooring | 7d | 2026-09-12 | 2026-09-18 | 7090 |  | 7 Days Work | 9280994 |

| ID | WBS | Task | Duration | Start | Finish | Predecessors | Constraint | Calendar | Unique_Task_ID |
| --- | --- | --- | --- | --- | --- | --- | --- | --- | --- |
| 7092 | 36900.37000.37100.37400.38100.48300.62800 | **Toilet** | 237d | 2026-01-24 | 2026-09-17 |  | start no earlier than 2026-01-24 | 7 Days Work | 9279764 |
| 7093 | 36900.37000.37100.37400.38100.48300.62800.951000 | Toilet_MEP Clearance -1 | 7d | 2026-01-24 | 2026-01-30 | 7056 |  | 7 Days Work | 9289504 |
| 7094 | 36900.37000.37100.37400.38100.48300.62800.951100 | Toilet_Level Marking | 1d | 2026-01-31 | 2026-01-31 | 7093 |  | 7 Days Work | 9289514 |
| 7095 | 36900.37000.37100.37400.38100.48300.62800.951200 | Toilet_Chasing work for Electrical conduit & concealed plumbing | 5d | 2026-02-01 | 2026-02-05 | 7094 |  | 7 Days Work | 9289524 |
| 7096 | 36900.37000.37100.37400.38100.48300.62800.951300 | Toilet_Plumbing work 1st fix | 5d | 2026-02-06 | 2026-02-10 | 7095 |  | 7 Days Work | 9289534 |
| 7097 | 36900.37000.37100.37400.38100.48300.62800.951400 | Toilet_Sleeve/Bore Packing | 5d | 2026-02-11 | 2026-02-15 | 7096 |  | 7 Days Work | 9289544 |
| 7098 | 36900.37000.37100.37400.38100.48300.62800.951500 | Toilet_Waterproofing | 10d | 2026-02-16 | 2026-02-25 | 7097 |  | 7 Days Work | 9289554 |
| 7099 | 36900.37000.37100.37400.38100.48300.62800.951600 | Toilet_Screed | 1d | 2026-02-26 | 2026-02-26 | 7098 |  | 7 Days Work | 9289564 |
| 7100 | 36900.37000.37100.37400.38100.48300.62800.951700 | Toilet_Plumbing 2nd fix | 5d | 2026-02-27 | 2026-03-03 | 7099 |  | 7 Days Work | 9289574 |
| 7101 | 36900.37000.37100.37400.38100.48300.62800.951800 | Toilet_Ledge wall | 5d | 2026-03-04 | 2026-03-08 | 7100 |  | 7 Days Work | 9289584 |
| 7102 | 36900.37000.37100.37400.38100.48300.62800.951900 | Toilet_Cement Plaster | 5d | 2026-03-09 | 2026-03-13 | 7101 |  | 7 Days Work | 9289594 |
| 7103 | 36900.37000.37100.37400.38100.48300.62800.952000 | Toilet_Door Frame | 1d | 2026-03-14 | 2026-03-14 | 7102 |  | 7 Days Work | 9289604 |
| 7104 | 36900.37000.37100.37400.38100.48300.62800.952100 | Toilet_Wash basin & Couter | 3d | 2026-03-15 | 2026-03-17 | 7103 |  | 7 Days Work | 9289614 |
| 7105 | 36900.37000.37100.37400.38100.48300.62800.952200 | Toilet_Wall dado | 20d | 2026-03-18 | 2026-04-06 | 7104 |  | 7 Days Work | 9289624 |
| 7106 | 36900.37000.37100.37400.38100.48300.62800.952300 | Toilet_Granite Work-Ledge wall top | 3d | 2026-04-07 | 2026-04-09 | 7105 |  | 7 Days Work | 9289634 |
| 7107 | 36900.37000.37100.37400.38100.48300.62800.952400 | Toilet_Floor Tilling work | 20d | 2026-04-10 | 2026-04-29 | 7106 |  | 7 Days Work | 9289644 |
| 7108 | 36900.37000.37100.37400.38100.48300.62800.952500 | Toilet_1st row of dado | 5d | 2026-04-30 | 2026-05-04 | 7107 |  | 7 Days Work | 9289654 |
| 7109 | 36900.37000.37100.37400.38100.48300.62800.952600 | Toilet_Window Fixing | 14d | 2026-05-05 | 2026-05-18 | 7108 |  | 7 Days Work | 9289664 |
| 7110 | 36900.37000.37100.37400.38100.48300.62800.952700 | Toilet_Services above False ceiling | 21d | 2026-05-19 | 2026-06-08 | 7109 |  | 7 Days Work | 9289674 |
| 7111 | 36900.37000.37100.37400.38100.48300.62800.952800 | Toilet_False Ceiling framing | 12d | 2026-06-09 | 2026-06-20 | 7110 |  | 7 Days Work | 9289684 |
| 7112 | 36900.37000.37100.37400.38100.48300.62800.952900 | Toilet_Door Frame | 5d | 2026-06-21 | 2026-06-25 | 7111 |  | 7 Days Work | 9289694 |
| 7113 | 36900.37000.37100.37400.38100.48300.62800.953000 | Toilet_Epoxy Tile Grouting | 7d | 2026-08-21 | 2026-08-27 | 7088SS |  | 7 Days Work | 9289704 |
| 7114 | 36900.37000.37100.37400.38100.48300.62800.953100 | Toilet_False ceiling board fixing, CP Sanitary Fixture, Electric Fixture | 21d | 2026-08-28 | 2026-09-17 | 7113 |  | 7 Days Work | 9289714 |
| 7115 | 36900.37000.37100.37400.38100.48400 | **3rd Habitable/4th Floor** | 245d | 2026-01-26 | 2026-09-27 |  | start no earlier than 2026-01-26 | 7 Days Work | 9279564 |
| 7116 | 36900.37000.37100.37400.38100.48400.564600 | Post Pour | 7d | 2026-01-26 | 2026-02-01 | 6975FS+15d |  | 7 Days Work | 9281004 |
| 7117 | 36900.37000.37100.37400.38100.48400.564700 | MEP Clearance -1 | 5d | 2026-02-02 | 2026-02-06 | 7116 |  | 7 Days Work | 9281014 |
| 7118 | 36900.37000.37100.37400.38100.48400.564800 | Benchmark | 1d | 2026-02-07 | 2026-02-07 | 7117 |  | 7 Days Work | 9281024 |
| 7119 | 36900.37000.37100.37400.38100.48400.564900 | Temporary Railing | 3d | 2026-02-08 | 2026-02-10 | 7118 |  | 7 Days Work | 9281034 |
| 7120 | 36900.37000.37100.37400.38100.48400.565000 | Blockwork | 10d | 2026-02-11 | 2026-02-20 | 7119 |  | 7 Days Work | 9281044 |
| 7121 | 36900.37000.37100.37400.38100.48400.565100 | MEP Clearance -2 | 10d | 2026-02-21 | 2026-03-02 | 7120 |  | 7 Days Work | 9281054 |
| 7122 | 36900.37000.37100.37400.38100.48400.565200 | Gypsum Plaster | 14d | 2026-03-03 | 2026-03-16 | 7121 |  | 7 Days Work | 9281064 |
| 7123 | 36900.37000.37100.37400.38100.48400.565300 | Kitchen Platform | 3d | 2026-03-17 | 2026-03-19 | 7122 |  | 7 Days Work | 9281074 |
| 7124 | 36900.37000.37100.37400.38100.48400.565400 | Kitchen dado | 7d | 2026-03-20 | 2026-03-26 | 7123 |  | 7 Days Work | 9281084 |
| 7125 | 36900.37000.37100.37400.38100.48400.565500 | Fire Fighting | 5d | 2026-03-27 | 2026-03-31 | 7124 |  | 7 Days Work | 9281094 |
| 7126 | 36900.37000.37100.37400.38100.48400.565600 | Anticapilary | 5d | 2026-04-01 | 2026-04-05 | 7125 |  | 7 Days Work | 9281104 |
| 7127 | 36900.37000.37100.37400.38100.48400.565700 | Stone Laying | 10d | 2026-05-09 | 2026-05-18 | 7167 |  | 7 Days Work | 9281114 |
| 7128 | 36900.37000.37100.37400.38100.48400.565800 | Tiles Laying | 7d | 2026-05-09 | 2026-05-15 | 7167 |  | 7 Days Work | 9281124 |
| 7129 | 36900.37000.37100.37400.38100.48400.565900 | 1st cutting/polishing of stone flooring | 7d | 2026-05-16 | 2026-05-22 | 7128 |  | 7 Days Work | 9281134 |
| 7130 | 36900.37000.37100.37400.38100.48400.566000 | Tiles/Stone skirting | 5d | 2026-05-23 | 2026-05-27 | 7129 |  | 7 Days Work | 9281144 |
| 7131 | 36900.37000.37100.37400.38100.48400.566100 | Protechtion sheet | 1d | 2026-05-28 | 2026-05-28 | 7130 |  | 7 Days Work | 9281154 |
| 7132 | 36900.37000.37100.37400.38100.48400.566200 | Installation of Temporary Door | 1d | 2026-05-29 | 2026-05-29 | 7131 |  | 7 Days Work | 9281164 |
| 7133 | 36900.37000.37100.37400.38100.48400.566300 | Fixing of window tracks | 5d | 2026-05-30 | 2026-06-03 | 7132 |  | 7 Days Work | 9281174 |
| 7134 | 36900.37000.37100.37400.38100.48400.566400 | Wire Pulling | 7d | 2026-06-04 | 2026-06-10 | 7133 |  | 7 Days Work | 9281184 |
| 7135 | 36900.37000.37100.37400.38100.48400.566500 | Gypsum Remaining | 5d | 2026-06-11 | 2026-06-15 | 7134 |  | 7 Days Work | 9281194 |
| 7136 | 36900.37000.37100.37400.38100.48400.566600 | Fixing of windoow shutter | 5d | 2026-06-16 | 2026-06-20 | 7135 |  | 7 Days Work | 9281204 |
| 7137 | 36900.37000.37100.37400.38100.48400.566700 | Putty Works - walls & ceiling | 15d | 2026-06-21 | 2026-07-05 | 7136 |  | 7 Days Work | 9281214 |
| 7138 | 36900.37000.37100.37400.38100.48400.566800 | False Ceiling- Framing | 10d | 2026-07-06 | 2026-07-15 | 7137 |  | 7 Days Work | 9281224 |
| 7139 | 36900.37000.37100.37400.38100.48400.566900 | Pre Hung Door | 3d | 2026-07-16 | 2026-07-18 | 7138 |  | 7 Days Work | 9281234 |
| 7140 | 36900.37000.37100.37400.38100.48400.567000 | Protechtion sheet | 2d | 2026-07-19 | 2026-07-20 | 7139 |  | 7 Days Work | 9281244 |
| 7141 | 36900.37000.37100.37400.38100.48400.567100 | Skirting near door | 2d | 2026-07-21 | 2026-07-22 | 7140 |  | 7 Days Work | 9281254 |
| 7142 | 36900.37000.37100.37400.38100.48400.567200 | Electrical Switch box fixing | 14d | 2026-07-23 | 2026-08-05 | 7141 |  | 7 Days Work | 9281264 |
| 7143 | 36900.37000.37100.37400.38100.48400.567300 | Fire Fighting painting | 5d | 2026-08-06 | 2026-08-10 | 7142 |  | 7 Days Work | 9281274 |
| 7144 | 36900.37000.37100.37400.38100.48400.567400 | Protection of all flooring, door & window hardware | 5d | 2026-08-11 | 2026-08-15 | 7143 |  | 7 Days Work | 9281284 |
| 7145 | 36900.37000.37100.37400.38100.48400.567500 | 1st coat primer- ceiling 1st & walls | 14d | 2026-08-16 | 2026-08-29 | 7144 |  | 7 Days Work | 9281294 |
| 7146 | 36900.37000.37100.37400.38100.48400.567600 | Wooden Flooring | 5d | 2026-08-30 | 2026-09-03 | 7145 |  | 7 Days Work | 9281304 |
| 7147 | 36900.37000.37100.37400.38100.48400.567700 | Removing of Temporary Railing & installation of Glass Railing | 5d | 2026-08-30 | 2026-09-03 | 7145 |  | 7 Days Work | 9281314 |
| 7148 | 36900.37000.37100.37400.38100.48400.567800 | Tile Grouting | 7d | 2026-08-30 | 2026-09-05 | 7145 |  | 7 Days Work | 9281324 |
| 7149 | 36900.37000.37100.37400.38100.48400.567900 | False Ceiling | 5d | 2026-09-06 | 2026-09-10 | 7148 |  | 7 Days Work | 9281334 |
| 7150 | 36900.37000.37100.37400.38100.48400.568000 | 2nd coat of primer | 10d | 2026-09-11 | 2026-09-20 | 7149 |  | 7 Days Work | 9281344 |
| 7151 | 36900.37000.37100.37400.38100.48400.568100 | Final cutting/polishing of stone flooring | 7d | 2026-09-21 | 2026-09-27 | 7150 |  | 7 Days Work | 9281354 |

| ID | WBS | Task | Duration | Start | Finish | Predecessors | Constraint | Calendar | Unique_Task_ID |
| --- | --- | --- | --- | --- | --- | --- | --- | --- | --- |
| 7152 | 36900.37000.37100.37400.38100.48400.62700 | **Toilet** | 237d | 2026-02-02 | 2026-09-26 |  | start no earlier than 2026-02-02 | 7 Days Work | 9279774 |
| 7153 | 36900.37000.37100.37400.38100.48400.62700.953200 | Toilet_MEP Clearance -1 | 7d | 2026-02-02 | 2026-02-08 | 7116 |  | 7 Days Work | 9289724 |
| 7154 | 36900.37000.37100.37400.38100.48400.62700.953300 | Toilet_Level Marking | 1d | 2026-02-09 | 2026-02-09 | 7153 |  | 7 Days Work | 9289734 |
| 7155 | 36900.37000.37100.37400.38100.48400.62700.953400 | Toilet_Chasing work for Electrical conduit & concealed plumbing | 5d | 2026-02-10 | 2026-02-14 | 7154 |  | 7 Days Work | 9289744 |
| 7156 | 36900.37000.37100.37400.38100.48400.62700.953500 | Toilet_Plumbing work 1st fix | 5d | 2026-02-15 | 2026-02-19 | 7155 |  | 7 Days Work | 9289754 |
| 7157 | 36900.37000.37100.37400.38100.48400.62700.953600 | Toilet_Sleeve/Bore Packing | 5d | 2026-02-20 | 2026-02-24 | 7156 |  | 7 Days Work | 9289764 |
| 7158 | 36900.37000.37100.37400.38100.48400.62700.953700 | Toilet_Waterproofing | 10d | 2026-02-25 | 2026-03-06 | 7157 |  | 7 Days Work | 9289774 |
| 7159 | 36900.37000.37100.37400.38100.48400.62700.953800 | Toilet_Screed | 1d | 2026-03-07 | 2026-03-07 | 7158 |  | 7 Days Work | 9289784 |
| 7160 | 36900.37000.37100.37400.38100.48400.62700.953900 | Toilet_Plumbing 2nd fix | 5d | 2026-03-08 | 2026-03-12 | 7159 |  | 7 Days Work | 9289794 |
| 7161 | 36900.37000.37100.37400.38100.48400.62700.954000 | Toilet_Ledge wall | 5d | 2026-03-13 | 2026-03-17 | 7160 |  | 7 Days Work | 9289804 |
| 7162 | 36900.37000.37100.37400.38100.48400.62700.954100 | Toilet_Cement Plaster | 5d | 2026-03-18 | 2026-03-22 | 7161 |  | 7 Days Work | 9289814 |
| 7163 | 36900.37000.37100.37400.38100.48400.62700.954200 | Toilet_Door Frame | 1d | 2026-03-23 | 2026-03-23 | 7162 |  | 7 Days Work | 9289824 |
| 7164 | 36900.37000.37100.37400.38100.48400.62700.954300 | Toilet_Wash basin & Couter | 3d | 2026-03-24 | 2026-03-26 | 7163 |  | 7 Days Work | 9289834 |
| 7165 | 36900.37000.37100.37400.38100.48400.62700.954400 | Toilet_Wall dado | 20d | 2026-03-27 | 2026-04-15 | 7164 |  | 7 Days Work | 9289844 |
| 7166 | 36900.37000.37100.37400.38100.48400.62700.954500 | Toilet_Granite Work-Ledge wall top | 3d | 2026-04-16 | 2026-04-18 | 7165 |  | 7 Days Work | 9289854 |
| 7167 | 36900.37000.37100.37400.38100.48400.62700.954600 | Toilet_Floor Tilling work | 20d | 2026-04-19 | 2026-05-08 | 7166 |  | 7 Days Work | 9289864 |
| 7168 | 36900.37000.37100.37400.38100.48400.62700.954700 | Toilet_1st row of dado | 5d | 2026-05-09 | 2026-05-13 | 7167 |  | 7 Days Work | 9289874 |
| 7169 | 36900.37000.37100.37400.38100.48400.62700.954800 | Toilet_Window Fixing | 14d | 2026-05-14 | 2026-05-27 | 7168 |  | 7 Days Work | 9289884 |
| 7170 | 36900.37000.37100.37400.38100.48400.62700.954900 | Toilet_Services above False ceiling | 21d | 2026-05-28 | 2026-06-17 | 7169 |  | 7 Days Work | 9289894 |
| 7171 | 36900.37000.37100.37400.38100.48400.62700.955000 | Toilet_False Ceiling framing | 12d | 2026-06-18 | 2026-06-29 | 7170 |  | 7 Days Work | 9289904 |
| 7172 | 36900.37000.37100.37400.38100.48400.62700.955100 | Toilet_Door Frame | 5d | 2026-06-30 | 2026-07-04 | 7171 |  | 7 Days Work | 9289914 |
| 7173 | 36900.37000.37100.37400.38100.48400.62700.955200 | Toilet_Epoxy Tile Grouting | 7d | 2026-08-30 | 2026-09-05 | 7148SS |  | 7 Days Work | 9289924 |
| 7174 | 36900.37000.37100.37400.38100.48400.62700.955300 | Toilet_False ceiling board fixing, CP Sanitary Fixture, Electric Fixture | 21d | 2026-09-06 | 2026-09-26 | 7173 |  | 7 Days Work | 9289934 |
| 7175 | 36900.37000.37100.37400.38100.48500 | **4th Habitable/5th Floor** | 245d | 2026-02-04 | 2026-10-06 |  | start no earlier than 2026-02-04 | 7 Days Work | 9279574 |
| 7176 | 36900.37000.37100.37400.38100.48500.568200 | Post Pour | 7d | 2026-02-04 | 2026-02-10 | 6976FS+15d |  | 7 Days Work | 9281364 |
| 7177 | 36900.37000.37100.37400.38100.48500.568300 | MEP Clearance -1 | 5d | 2026-02-11 | 2026-02-15 | 7176 |  | 7 Days Work | 9281374 |
| 7178 | 36900.37000.37100.37400.38100.48500.568400 | Benchmark | 1d | 2026-02-16 | 2026-02-16 | 7177 |  | 7 Days Work | 9281384 |
| 7179 | 36900.37000.37100.37400.38100.48500.568500 | Temporary Railing | 3d | 2026-02-17 | 2026-02-19 | 7178 |  | 7 Days Work | 9281394 |
| 7180 | 36900.37000.37100.37400.38100.48500.568600 | Blockwork | 10d | 2026-02-20 | 2026-03-01 | 7179 |  | 7 Days Work | 9281404 |
| 7181 | 36900.37000.37100.37400.38100.48500.568700 | MEP Clearance -2 | 10d | 2026-03-02 | 2026-03-11 | 7180 |  | 7 Days Work | 9281414 |
| 7182 | 36900.37000.37100.37400.38100.48500.568800 | Gypsum Plaster | 14d | 2026-03-12 | 2026-03-25 | 7181 |  | 7 Days Work | 9281424 |
| 7183 | 36900.37000.37100.37400.38100.48500.568900 | Kitchen Platform | 3d | 2026-03-26 | 2026-03-28 | 7182 |  | 7 Days Work | 9281434 |
| 7184 | 36900.37000.37100.37400.38100.48500.569000 | Kitchen dado | 7d | 2026-03-29 | 2026-04-04 | 7183 |  | 7 Days Work | 9281444 |
| 7185 | 36900.37000.37100.37400.38100.48500.569100 | Fire Fighting | 5d | 2026-04-05 | 2026-04-09 | 7184 |  | 7 Days Work | 9281454 |
| 7186 | 36900.37000.37100.37400.38100.48500.569200 | Anticapilary | 5d | 2026-04-10 | 2026-04-14 | 7185 |  | 7 Days Work | 9281464 |
| 7187 | 36900.37000.37100.37400.38100.48500.569300 | Stone Laying | 10d | 2026-05-18 | 2026-05-27 | 7227 |  | 7 Days Work | 9281474 |
| 7188 | 36900.37000.37100.37400.38100.48500.569400 | Tiles Laying | 7d | 2026-05-18 | 2026-05-24 | 7227 |  | 7 Days Work | 9281484 |
| 7189 | 36900.37000.37100.37400.38100.48500.569500 | 1st cutting/polishing of stone flooring | 7d | 2026-05-25 | 2026-05-31 | 7188 |  | 7 Days Work | 9281494 |
| 7190 | 36900.37000.37100.37400.38100.48500.569600 | Tiles/Stone skirting | 5d | 2026-06-01 | 2026-06-05 | 7189 |  | 7 Days Work | 9281504 |
| 7191 | 36900.37000.37100.37400.38100.48500.569700 | Protechtion sheet | 1d | 2026-06-06 | 2026-06-06 | 7190 |  | 7 Days Work | 9281514 |
| 7192 | 36900.37000.37100.37400.38100.48500.569800 | Installation of Temporary Door | 1d | 2026-06-07 | 2026-06-07 | 7191 |  | 7 Days Work | 9281524 |
| 7193 | 36900.37000.37100.37400.38100.48500.569900 | Fixing of window tracks | 5d | 2026-06-08 | 2026-06-12 | 7192 |  | 7 Days Work | 9281534 |
| 7194 | 36900.37000.37100.37400.38100.48500.570000 | Wire Pulling | 7d | 2026-06-13 | 2026-06-19 | 7193 |  | 7 Days Work | 9281544 |
| 7195 | 36900.37000.37100.37400.38100.48500.570100 | Gypsum Remaining | 5d | 2026-06-20 | 2026-06-24 | 7194 |  | 7 Days Work | 9281554 |
| 7196 | 36900.37000.37100.37400.38100.48500.570200 | Fixing of windoow shutter | 5d | 2026-06-25 | 2026-06-29 | 7195 |  | 7 Days Work | 9281564 |
| 7197 | 36900.37000.37100.37400.38100.48500.570300 | Putty Works - walls & ceiling | 15d | 2026-06-30 | 2026-07-14 | 7196 |  | 7 Days Work | 9281574 |
| 7198 | 36900.37000.37100.37400.38100.48500.570400 | False Ceiling- Framing | 10d | 2026-07-15 | 2026-07-24 | 7197 |  | 7 Days Work | 9281584 |
| 7199 | 36900.37000.37100.37400.38100.48500.570500 | Pre Hung Door | 3d | 2026-07-25 | 2026-07-27 | 7198 |  | 7 Days Work | 9281594 |
| 7200 | 36900.37000.37100.37400.38100.48500.570600 | Protechtion sheet | 2d | 2026-07-28 | 2026-07-29 | 7199 |  | 7 Days Work | 9281604 |
| 7201 | 36900.37000.37100.37400.38100.48500.570700 | Skirting near door | 2d | 2026-07-30 | 2026-07-31 | 7200 |  | 7 Days Work | 9281614 |
| 7202 | 36900.37000.37100.37400.38100.48500.570800 | Electrical Switch box fixing | 14d | 2026-08-01 | 2026-08-14 | 7201 |  | 7 Days Work | 9281624 |
| 7203 | 36900.37000.37100.37400.38100.48500.570900 | Fire Fighting painting | 5d | 2026-08-15 | 2026-08-19 | 7202 |  | 7 Days Work | 9281634 |
| 7204 | 36900.37000.37100.37400.38100.48500.571000 | Protection of all flooring, door & window hardware | 5d | 2026-08-20 | 2026-08-24 | 7203 |  | 7 Days Work | 9281644 |
| 7205 | 36900.37000.37100.37400.38100.48500.571100 | 1st coat primer- ceiling 1st & walls | 14d | 2026-08-25 | 2026-09-07 | 7204 |  | 7 Days Work | 9281654 |
| 7206 | 36900.37000.37100.37400.38100.48500.571200 | Wooden Flooring | 5d | 2026-09-08 | 2026-09-12 | 7205 |  | 7 Days Work | 9281664 |
| 7207 | 36900.37000.37100.37400.38100.48500.571300 | Removing of Temporary Railing & installation of Glass Railing | 5d | 2026-09-08 | 2026-09-12 | 7205 |  | 7 Days Work | 9281674 |
| 7208 | 36900.37000.37100.37400.38100.48500.571400 | Tile Grouting | 7d | 2026-09-08 | 2026-09-14 | 7205 |  | 7 Days Work | 9281684 |
| 7209 | 36900.37000.37100.37400.38100.48500.571500 | False Ceiling | 5d | 2026-09-15 | 2026-09-19 | 7208 |  | 7 Days Work | 9281694 |
| 7210 | 36900.37000.37100.37400.38100.48500.571600 | 2nd coat of primer | 10d | 2026-09-20 | 2026-09-29 | 7209 |  | 7 Days Work | 9281704 |
| 7211 | 36900.37000.37100.37400.38100.48500.571700 | Final cutting/polishing of stone flooring | 7d | 2026-09-30 | 2026-10-06 | 7210 |  | 7 Days Work | 9281714 |

| ID | WBS | Task | Duration | Start | Finish | Predecessors | Constraint | Calendar | Unique_Task_ID |
| --- | --- | --- | --- | --- | --- | --- | --- | --- | --- |
| 7212 | 36900.37000.37100.37400.38100.48500.62600 | **Toilet** | 237d | 2026-02-11 | 2026-10-05 |  | start no earlier than 2026-02-11 | 7 Days Work | 9279784 |
| 7213 | 36900.37000.37100.37400.38100.48500.62600.955400 | Toilet_MEP Clearance -1 | 7d | 2026-02-11 | 2026-02-17 | 7176 |  | 7 Days Work | 9289944 |
| 7214 | 36900.37000.37100.37400.38100.48500.62600.955500 | Toilet_Level Marking | 1d | 2026-02-18 | 2026-02-18 | 7213 |  | 7 Days Work | 9289954 |
| 7215 | 36900.37000.37100.37400.38100.48500.62600.955600 | Toilet_Chasing work for Electrical conduit & concealed plumbing | 5d | 2026-02-19 | 2026-02-23 | 7214 |  | 7 Days Work | 9289964 |
| 7216 | 36900.37000.37100.37400.38100.48500.62600.955700 | Toilet_Plumbing work 1st fix | 5d | 2026-02-24 | 2026-02-28 | 7215 |  | 7 Days Work | 9289974 |
| 7217 | 36900.37000.37100.37400.38100.48500.62600.955800 | Toilet_Sleeve/Bore Packing | 5d | 2026-03-01 | 2026-03-05 | 7216 |  | 7 Days Work | 9289984 |
| 7218 | 36900.37000.37100.37400.38100.48500.62600.955900 | Toilet_Waterproofing | 10d | 2026-03-06 | 2026-03-15 | 7217 |  | 7 Days Work | 9289994 |
| 7219 | 36900.37000.37100.37400.38100.48500.62600.956000 | Toilet_Screed | 1d | 2026-03-16 | 2026-03-16 | 7218 |  | 7 Days Work | 9290004 |
| 7220 | 36900.37000.37100.37400.38100.48500.62600.956100 | Toilet_Plumbing 2nd fix | 5d | 2026-03-17 | 2026-03-21 | 7219 |  | 7 Days Work | 9290014 |
| 7221 | 36900.37000.37100.37400.38100.48500.62600.956200 | Toilet_Ledge wall | 5d | 2026-03-22 | 2026-03-26 | 7220 |  | 7 Days Work | 9290024 |
| 7222 | 36900.37000.37100.37400.38100.48500.62600.956300 | Toilet_Cement Plaster | 5d | 2026-03-27 | 2026-03-31 | 7221 |  | 7 Days Work | 9290034 |
| 7223 | 36900.37000.37100.37400.38100.48500.62600.956400 | Toilet_Door Frame | 1d | 2026-04-01 | 2026-04-01 | 7222 |  | 7 Days Work | 9290044 |
| 7224 | 36900.37000.37100.37400.38100.48500.62600.956500 | Toilet_Wash basin & Couter | 3d | 2026-04-02 | 2026-04-04 | 7223 |  | 7 Days Work | 9290054 |
| 7225 | 36900.37000.37100.37400.38100.48500.62600.956600 | Toilet_Wall dado | 20d | 2026-04-05 | 2026-04-24 | 7224 |  | 7 Days Work | 9290064 |
| 7226 | 36900.37000.37100.37400.38100.48500.62600.956700 | Toilet_Granite Work-Ledge wall top | 3d | 2026-04-25 | 2026-04-27 | 7225 |  | 7 Days Work | 9290074 |
| 7227 | 36900.37000.37100.37400.38100.48500.62600.956800 | Toilet_Floor Tilling work | 20d | 2026-04-28 | 2026-05-17 | 7226 |  | 7 Days Work | 9290084 |
| 7228 | 36900.37000.37100.37400.38100.48500.62600.956900 | Toilet_1st row of dado | 5d | 2026-05-18 | 2026-05-22 | 7227 |  | 7 Days Work | 9290094 |
| 7229 | 36900.37000.37100.37400.38100.48500.62600.957000 | Toilet_Window Fixing | 14d | 2026-05-23 | 2026-06-05 | 7228 |  | 7 Days Work | 9290104 |
| 7230 | 36900.37000.37100.37400.38100.48500.62600.957100 | Toilet_Services above False ceiling | 21d | 2026-06-06 | 2026-06-26 | 7229 |  | 7 Days Work | 9290114 |
| 7231 | 36900.37000.37100.37400.38100.48500.62600.957200 | Toilet_False Ceiling framing | 12d | 2026-06-27 | 2026-07-08 | 7230 |  | 7 Days Work | 9290124 |
| 7232 | 36900.37000.37100.37400.38100.48500.62600.957300 | Toilet_Door Frame | 5d | 2026-07-09 | 2026-07-13 | 7231 |  | 7 Days Work | 9290134 |
| 7233 | 36900.37000.37100.37400.38100.48500.62600.957400 | Toilet_Epoxy Tile Grouting | 7d | 2026-09-08 | 2026-09-14 | 7208SS |  | 7 Days Work | 9290144 |
| 7234 | 36900.37000.37100.37400.38100.48500.62600.957500 | Toilet_False ceiling board fixing, CP Sanitary Fixture, Electric Fixture | 21d | 2026-09-15 | 2026-10-05 | 7233 |  | 7 Days Work | 9290154 |
| 7235 | 36900.37000.37100.37400.38100.48600 | **5th Habitable/6th Floor** | 245d | 2026-02-16 | 2026-10-18 |  | start no earlier than 2026-02-16 | 7 Days Work | 9279584 |
| 7236 | 36900.37000.37100.37400.38100.48600.571800 | Post Pour | 7d | 2026-02-16 | 2026-02-22 | 6977FS+15d |  | 7 Days Work | 9281724 |
| 7237 | 36900.37000.37100.37400.38100.48600.571900 | MEP Clearance -1 | 5d | 2026-02-23 | 2026-02-27 | 7236 |  | 7 Days Work | 9281734 |
| 7238 | 36900.37000.37100.37400.38100.48600.572000 | Benchmark | 1d | 2026-02-28 | 2026-02-28 | 7237 |  | 7 Days Work | 9281744 |
| 7239 | 36900.37000.37100.37400.38100.48600.572100 | Temporary Railing | 3d | 2026-03-01 | 2026-03-03 | 7238 |  | 7 Days Work | 9281754 |
| 7240 | 36900.37000.37100.37400.38100.48600.572200 | Blockwork | 10d | 2026-03-04 | 2026-03-13 | 7239 |  | 7 Days Work | 9281764 |
| 7241 | 36900.37000.37100.37400.38100.48600.572300 | MEP Clearance -2 | 10d | 2026-03-14 | 2026-03-23 | 7240 |  | 7 Days Work | 9281774 |
| 7242 | 36900.37000.37100.37400.38100.48600.572400 | Gypsum Plaster | 14d | 2026-03-24 | 2026-04-06 | 7241 |  | 7 Days Work | 9281784 |
| 7243 | 36900.37000.37100.37400.38100.48600.572500 | Kitchen Platform | 3d | 2026-04-07 | 2026-04-09 | 7242 |  | 7 Days Work | 9281794 |
| 7244 | 36900.37000.37100.37400.38100.48600.572600 | Kitchen dado | 7d | 2026-04-10 | 2026-04-16 | 7243 |  | 7 Days Work | 9281804 |
| 7245 | 36900.37000.37100.37400.38100.48600.572700 | Fire Fighting | 5d | 2026-04-17 | 2026-04-21 | 7244 |  | 7 Days Work | 9281814 |
| 7246 | 36900.37000.37100.37400.38100.48600.572800 | Anticapilary | 5d | 2026-04-22 | 2026-04-26 | 7245 |  | 7 Days Work | 9281824 |
| 7247 | 36900.37000.37100.37400.38100.48600.572900 | Stone Laying | 10d | 2026-05-30 | 2026-06-08 | 7287 |  | 7 Days Work | 9281834 |
| 7248 | 36900.37000.37100.37400.38100.48600.573000 | Tiles Laying | 7d | 2026-05-30 | 2026-06-05 | 7287 |  | 7 Days Work | 9281844 |
| 7249 | 36900.37000.37100.37400.38100.48600.573100 | 1st cutting/polishing of stone flooring | 7d | 2026-06-06 | 2026-06-12 | 7248 |  | 7 Days Work | 9281854 |
| 7250 | 36900.37000.37100.37400.38100.48600.573200 | Tiles/Stone skirting | 5d | 2026-06-13 | 2026-06-17 | 7249 |  | 7 Days Work | 9281864 |
| 7251 | 36900.37000.37100.37400.38100.48600.573300 | Protechtion sheet | 1d | 2026-06-18 | 2026-06-18 | 7250 |  | 7 Days Work | 9281874 |
| 7252 | 36900.37000.37100.37400.38100.48600.573400 | Installation of Temporary Door | 1d | 2026-06-19 | 2026-06-19 | 7251 |  | 7 Days Work | 9281884 |
| 7253 | 36900.37000.37100.37400.38100.48600.573500 | Fixing of window tracks | 5d | 2026-06-20 | 2026-06-24 | 7252 |  | 7 Days Work | 9281894 |
| 7254 | 36900.37000.37100.37400.38100.48600.573600 | Wire Pulling | 7d | 2026-06-25 | 2026-07-01 | 7253 |  | 7 Days Work | 9281904 |
| 7255 | 36900.37000.37100.37400.38100.48600.573700 | Gypsum Remaining | 5d | 2026-07-02 | 2026-07-06 | 7254 |  | 7 Days Work | 9281914 |
| 7256 | 36900.37000.37100.37400.38100.48600.573800 | Fixing of windoow shutter | 5d | 2026-07-07 | 2026-07-11 | 7255 |  | 7 Days Work | 9281924 |
| 7257 | 36900.37000.37100.37400.38100.48600.573900 | Putty Works - walls & ceiling | 15d | 2026-07-12 | 2026-07-26 | 7256 |  | 7 Days Work | 9281934 |
| 7258 | 36900.37000.37100.37400.38100.48600.574000 | False Ceiling- Framing | 10d | 2026-07-27 | 2026-08-05 | 7257 |  | 7 Days Work | 9281944 |
| 7259 | 36900.37000.37100.37400.38100.48600.574100 | Pre Hung Door | 3d | 2026-08-06 | 2026-08-08 | 7258 |  | 7 Days Work | 9281954 |
| 7260 | 36900.37000.37100.37400.38100.48600.574200 | Protechtion sheet | 2d | 2026-08-09 | 2026-08-10 | 7259 |  | 7 Days Work | 9281964 |
| 7261 | 36900.37000.37100.37400.38100.48600.574300 | Skirting near door | 2d | 2026-08-11 | 2026-08-12 | 7260 |  | 7 Days Work | 9281974 |
| 7262 | 36900.37000.37100.37400.38100.48600.574400 | Electrical Switch box fixing | 14d | 2026-08-13 | 2026-08-26 | 7261 |  | 7 Days Work | 9281984 |
| 7263 | 36900.37000.37100.37400.38100.48600.574500 | Fire Fighting painting | 5d | 2026-08-27 | 2026-08-31 | 7262 |  | 7 Days Work | 9281994 |
| 7264 | 36900.37000.37100.37400.38100.48600.574600 | Protection of all flooring, door & window hardware | 5d | 2026-09-01 | 2026-09-05 | 7263 |  | 7 Days Work | 9282004 |
| 7265 | 36900.37000.37100.37400.38100.48600.574700 | 1st coat primer- ceiling 1st & walls | 14d | 2026-09-06 | 2026-09-19 | 7264 |  | 7 Days Work | 9282014 |
| 7266 | 36900.37000.37100.37400.38100.48600.574800 | Wooden Flooring | 5d | 2026-09-20 | 2026-09-24 | 7265 |  | 7 Days Work | 9282024 |
| 7267 | 36900.37000.37100.37400.38100.48600.574900 | Removing of Temporary Railing & installation of Glass Railing | 5d | 2026-09-20 | 2026-09-24 | 7265 |  | 7 Days Work | 9282034 |
| 7268 | 36900.37000.37100.37400.38100.48600.575000 | Tile Grouting | 7d | 2026-09-20 | 2026-09-26 | 7265 |  | 7 Days Work | 9282044 |
| 7269 | 36900.37000.37100.37400.38100.48600.575100 | False Ceiling | 5d | 2026-09-27 | 2026-10-01 | 7268 |  | 7 Days Work | 9282054 |
| 7270 | 36900.37000.37100.37400.38100.48600.575200 | 2nd coat of primer | 10d | 2026-10-02 | 2026-10-11 | 7269 |  | 7 Days Work | 9282064 |
| 7271 | 36900.37000.37100.37400.38100.48600.575300 | Final cutting/polishing of stone flooring | 7d | 2026-10-12 | 2026-10-18 | 7270 |  | 7 Days Work | 9282074 |

| ID | WBS | Task | Duration | Start | Finish | Predecessors | Constraint | Calendar | Unique_Task_ID |
| --- | --- | --- | --- | --- | --- | --- | --- | --- | --- |
| 7272 | 36900.37000.37100.37400.38100.48600.62500 | **Toilet** | 237d | 2026-02-23 | 2026-10-17 |  | start no earlier than 2026-02-23 | 7 Days Work | 9279794 |
| 7273 | 36900.37000.37100.37400.38100.48600.62500.957600 | Toilet_MEP Clearance -1 | 7d | 2026-02-23 | 2026-03-01 | 7236 |  | 7 Days Work | 9290164 |
| 7274 | 36900.37000.37100.37400.38100.48600.62500.957700 | Toilet_Level Marking | 1d | 2026-03-02 | 2026-03-02 | 7273 |  | 7 Days Work | 9290174 |
| 7275 | 36900.37000.37100.37400.38100.48600.62500.957800 | Toilet_Chasing work for Electrical conduit & concealed plumbing | 5d | 2026-03-03 | 2026-03-07 | 7274 |  | 7 Days Work | 9290184 |
| 7276 | 36900.37000.37100.37400.38100.48600.62500.957900 | Toilet_Plumbing work 1st fix | 5d | 2026-03-08 | 2026-03-12 | 7275 |  | 7 Days Work | 9290194 |
| 7277 | 36900.37000.37100.37400.38100.48600.62500.958000 | Toilet_Sleeve/Bore Packing | 5d | 2026-03-13 | 2026-03-17 | 7276 |  | 7 Days Work | 9290204 |
| 7278 | 36900.37000.37100.37400.38100.48600.62500.958100 | Toilet_Waterproofing | 10d | 2026-03-18 | 2026-03-27 | 7277 |  | 7 Days Work | 9290214 |
| 7279 | 36900.37000.37100.37400.38100.48600.62500.958200 | Toilet_Screed | 1d | 2026-03-28 | 2026-03-28 | 7278 |  | 7 Days Work | 9290224 |
| 7280 | 36900.37000.37100.37400.38100.48600.62500.958300 | Toilet_Plumbing 2nd fix | 5d | 2026-03-29 | 2026-04-02 | 7279 |  | 7 Days Work | 9290234 |
| 7281 | 36900.37000.37100.37400.38100.48600.62500.958400 | Toilet_Ledge wall | 5d | 2026-04-03 | 2026-04-07 | 7280 |  | 7 Days Work | 9290244 |
| 7282 | 36900.37000.37100.37400.38100.48600.62500.958500 | Toilet_Cement Plaster | 5d | 2026-04-08 | 2026-04-12 | 7281 |  | 7 Days Work | 9290254 |
| 7283 | 36900.37000.37100.37400.38100.48600.62500.958600 | Toilet_Door Frame | 1d | 2026-04-13 | 2026-04-13 | 7282 |  | 7 Days Work | 9290264 |
| 7284 | 36900.37000.37100.37400.38100.48600.62500.958700 | Toilet_Wash basin & Couter | 3d | 2026-04-14 | 2026-04-16 | 7283 |  | 7 Days Work | 9290274 |
| 7285 | 36900.37000.37100.37400.38100.48600.62500.958800 | Toilet_Wall dado | 20d | 2026-04-17 | 2026-05-06 | 7284 |  | 7 Days Work | 9290284 |
| 7286 | 36900.37000.37100.37400.38100.48600.62500.958900 | Toilet_Granite Work-Ledge wall top | 3d | 2026-05-07 | 2026-05-09 | 7285 |  | 7 Days Work | 9290294 |
| 7287 | 36900.37000.37100.37400.38100.48600.62500.959000 | Toilet_Floor Tilling work | 20d | 2026-05-10 | 2026-05-29 | 7286 |  | 7 Days Work | 9290304 |
| 7288 | 36900.37000.37100.37400.38100.48600.62500.959100 | Toilet_1st row of dado | 5d | 2026-05-30 | 2026-06-03 | 7287 |  | 7 Days Work | 9290314 |
| 7289 | 36900.37000.37100.37400.38100.48600.62500.959200 | Toilet_Window Fixing | 14d | 2026-06-04 | 2026-06-17 | 7288 |  | 7 Days Work | 9290324 |
| 7290 | 36900.37000.37100.37400.38100.48600.62500.959300 | Toilet_Services above False ceiling | 21d | 2026-06-18 | 2026-07-08 | 7289 |  | 7 Days Work | 9290334 |
| 7291 | 36900.37000.37100.37400.38100.48600.62500.959400 | Toilet_False Ceiling framing | 12d | 2026-07-09 | 2026-07-20 | 7290 |  | 7 Days Work | 9290344 |
| 7292 | 36900.37000.37100.37400.38100.48600.62500.959500 | Toilet_Door Frame | 5d | 2026-07-21 | 2026-07-25 | 7291 |  | 7 Days Work | 9290354 |
| 7293 | 36900.37000.37100.37400.38100.48600.62500.959600 | Toilet_Epoxy Tile Grouting | 7d | 2026-09-20 | 2026-09-26 | 7268SS |  | 7 Days Work | 9290364 |
| 7294 | 36900.37000.37100.37400.38100.48600.62500.959700 | Toilet_False ceiling board fixing, CP Sanitary Fixture, Electric Fixture | 21d | 2026-09-27 | 2026-10-17 | 7293 |  | 7 Days Work | 9290374 |
| 7295 | 36900.37000.37100.37400.38100.48700 | **6th Habitable/7th Floor** | 245d | 2026-02-25 | 2026-10-27 |  | start no earlier than 2026-02-25 | 7 Days Work | 9279594 |
| 7296 | 36900.37000.37100.37400.38100.48700.575400 | Post Pour | 7d | 2026-02-25 | 2026-03-03 | 6978FS+15d |  | 7 Days Work | 9282084 |
| 7297 | 36900.37000.37100.37400.38100.48700.575500 | MEP Clearance -1 | 5d | 2026-03-04 | 2026-03-08 | 7296 |  | 7 Days Work | 9282094 |
| 7298 | 36900.37000.37100.37400.38100.48700.575600 | Benchmark | 1d | 2026-03-09 | 2026-03-09 | 7297 |  | 7 Days Work | 9282104 |
| 7299 | 36900.37000.37100.37400.38100.48700.575700 | Temporary Railing | 3d | 2026-03-10 | 2026-03-12 | 7298 |  | 7 Days Work | 9282114 |
| 7300 | 36900.37000.37100.37400.38100.48700.575800 | Blockwork | 10d | 2026-03-13 | 2026-03-22 | 7299 |  | 7 Days Work | 9282124 |
| 7301 | 36900.37000.37100.37400.38100.48700.575900 | MEP Clearance -2 | 10d | 2026-03-23 | 2026-04-01 | 7300 |  | 7 Days Work | 9282134 |
| 7302 | 36900.37000.37100.37400.38100.48700.576000 | Gypsum Plaster | 14d | 2026-04-02 | 2026-04-15 | 7301 |  | 7 Days Work | 9282144 |
| 7303 | 36900.37000.37100.37400.38100.48700.576100 | Kitchen Platform | 3d | 2026-04-16 | 2026-04-18 | 7302 |  | 7 Days Work | 9282154 |
| 7304 | 36900.37000.37100.37400.38100.48700.576200 | Kitchen dado | 7d | 2026-04-19 | 2026-04-25 | 7303 |  | 7 Days Work | 9282164 |
| 7305 | 36900.37000.37100.37400.38100.48700.576300 | Fire Fighting | 5d | 2026-04-26 | 2026-04-30 | 7304 |  | 7 Days Work | 9282174 |
| 7306 | 36900.37000.37100.37400.38100.48700.576400 | Anticapilary | 5d | 2026-05-01 | 2026-05-05 | 7305 |  | 7 Days Work | 9282184 |
| 7307 | 36900.37000.37100.37400.38100.48700.576500 | Stone Laying | 10d | 2026-06-08 | 2026-06-17 | 7347 |  | 7 Days Work | 9282194 |
| 7308 | 36900.37000.37100.37400.38100.48700.576600 | Tiles Laying | 7d | 2026-06-08 | 2026-06-14 | 7347 |  | 7 Days Work | 9282204 |
| 7309 | 36900.37000.37100.37400.38100.48700.576700 | 1st cutting/polishing of stone flooring | 7d | 2026-06-15 | 2026-06-21 | 7308 |  | 7 Days Work | 9282214 |
| 7310 | 36900.37000.37100.37400.38100.48700.576800 | Tiles/Stone skirting | 5d | 2026-06-22 | 2026-06-26 | 7309 |  | 7 Days Work | 9282224 |
| 7311 | 36900.37000.37100.37400.38100.48700.576900 | Protechtion sheet | 1d | 2026-06-27 | 2026-06-27 | 7310 |  | 7 Days Work | 9282234 |
| 7312 | 36900.37000.37100.37400.38100.48700.577000 | Installation of Temporary Door | 1d | 2026-06-28 | 2026-06-28 | 7311 |  | 7 Days Work | 9282244 |
| 7313 | 36900.37000.37100.37400.38100.48700.577100 | Fixing of window tracks | 5d | 2026-06-29 | 2026-07-03 | 7312 |  | 7 Days Work | 9282254 |
| 7314 | 36900.37000.37100.37400.38100.48700.577200 | Wire Pulling | 7d | 2026-07-04 | 2026-07-10 | 7313 |  | 7 Days Work | 9282264 |
| 7315 | 36900.37000.37100.37400.38100.48700.577300 | Gypsum Remaining | 5d | 2026-07-11 | 2026-07-15 | 7314 |  | 7 Days Work | 9282274 |
| 7316 | 36900.37000.37100.37400.38100.48700.577400 | Fixing of windoow shutter | 5d | 2026-07-16 | 2026-07-20 | 7315 |  | 7 Days Work | 9282284 |
| 7317 | 36900.37000.37100.37400.38100.48700.577500 | Putty Works - walls & ceiling | 15d | 2026-07-21 | 2026-08-04 | 7316 |  | 7 Days Work | 9282294 |
| 7318 | 36900.37000.37100.37400.38100.48700.577600 | False Ceiling- Framing | 10d | 2026-08-05 | 2026-08-14 | 7317 |  | 7 Days Work | 9282304 |
| 7319 | 36900.37000.37100.37400.38100.48700.577700 | Pre Hung Door | 3d | 2026-08-15 | 2026-08-17 | 7318 |  | 7 Days Work | 9282314 |
| 7320 | 36900.37000.37100.37400.38100.48700.577800 | Protechtion sheet | 2d | 2026-08-18 | 2026-08-19 | 7319 |  | 7 Days Work | 9282324 |
| 7321 | 36900.37000.37100.37400.38100.48700.577900 | Skirting near door | 2d | 2026-08-20 | 2026-08-21 | 7320 |  | 7 Days Work | 9282334 |
| 7322 | 36900.37000.37100.37400.38100.48700.578000 | Electrical Switch box fixing | 14d | 2026-08-22 | 2026-09-04 | 7321 |  | 7 Days Work | 9282344 |
| 7323 | 36900.37000.37100.37400.38100.48700.578100 | Fire Fighting painting | 5d | 2026-09-05 | 2026-09-09 | 7322 |  | 7 Days Work | 9282354 |
| 7324 | 36900.37000.37100.37400.38100.48700.578200 | Protection of all flooring, door & window hardware | 5d | 2026-09-10 | 2026-09-14 | 7323 |  | 7 Days Work | 9282364 |
| 7325 | 36900.37000.37100.37400.38100.48700.578300 | 1st coat primer- ceiling 1st & walls | 14d | 2026-09-15 | 2026-09-28 | 7324 |  | 7 Days Work | 9282374 |
| 7326 | 36900.37000.37100.37400.38100.48700.578400 | Wooden Flooring | 5d | 2026-09-29 | 2026-10-03 | 7325 |  | 7 Days Work | 9282384 |
| 7327 | 36900.37000.37100.37400.38100.48700.578500 | Removing of Temporary Railing & installation of Glass Railing | 5d | 2026-09-29 | 2026-10-03 | 7325 |  | 7 Days Work | 9282394 |
| 7328 | 36900.37000.37100.37400.38100.48700.578600 | Tile Grouting | 7d | 2026-09-29 | 2026-10-05 | 7325 |  | 7 Days Work | 9282404 |
| 7329 | 36900.37000.37100.37400.38100.48700.578700 | False Ceiling | 5d | 2026-10-06 | 2026-10-10 | 7328 |  | 7 Days Work | 9282414 |
| 7330 | 36900.37000.37100.37400.38100.48700.578800 | 2nd coat of primer | 10d | 2026-10-11 | 2026-10-20 | 7329 |  | 7 Days Work | 9282424 |
| 7331 | 36900.37000.37100.37400.38100.48700.578900 | Final cutting/polishing of stone flooring | 7d | 2026-10-21 | 2026-10-27 | 7330 |  | 7 Days Work | 9282434 |

| ID | WBS | Task | Duration | Start | Finish | Predecessors | Constraint | Calendar | Unique_Task_ID |
| --- | --- | --- | --- | --- | --- | --- | --- | --- | --- |
| 7332 | 36900.37000.37100.37400.38100.48700.62400 | **Toilet** | 237d | 2026-03-04 | 2026-10-26 |  | start no earlier than 2026-03-04 | 7 Days Work | 9279804 |
| 7333 | 36900.37000.37100.37400.38100.48700.62400.959800 | Toilet_MEP Clearance -1 | 7d | 2026-03-04 | 2026-03-10 | 7296 |  | 7 Days Work | 9290384 |
| 7334 | 36900.37000.37100.37400.38100.48700.62400.959900 | Toilet_Level Marking | 1d | 2026-03-11 | 2026-03-11 | 7333 |  | 7 Days Work | 9290394 |
| 7335 | 36900.37000.37100.37400.38100.48700.62400.960000 | Toilet_Chasing work for Electrical conduit & concealed plumbing | 5d | 2026-03-12 | 2026-03-16 | 7334 |  | 7 Days Work | 9290404 |
| 7336 | 36900.37000.37100.37400.38100.48700.62400.960100 | Toilet_Plumbing work 1st fix | 5d | 2026-03-17 | 2026-03-21 | 7335 |  | 7 Days Work | 9290414 |
| 7337 | 36900.37000.37100.37400.38100.48700.62400.960200 | Toilet_Sleeve/Bore Packing | 5d | 2026-03-22 | 2026-03-26 | 7336 |  | 7 Days Work | 9290424 |
| 7338 | 36900.37000.37100.37400.38100.48700.62400.960300 | Toilet_Waterproofing | 10d | 2026-03-27 | 2026-04-05 | 7337 |  | 7 Days Work | 9290434 |
| 7339 | 36900.37000.37100.37400.38100.48700.62400.960400 | Toilet_Screed | 1d | 2026-04-06 | 2026-04-06 | 7338 |  | 7 Days Work | 9290444 |
| 7340 | 36900.37000.37100.37400.38100.48700.62400.960500 | Toilet_Plumbing 2nd fix | 5d | 2026-04-07 | 2026-04-11 | 7339 |  | 7 Days Work | 9290454 |
| 7341 | 36900.37000.37100.37400.38100.48700.62400.960600 | Toilet_Ledge wall | 5d | 2026-04-12 | 2026-04-16 | 7340 |  | 7 Days Work | 9290464 |
| 7342 | 36900.37000.37100.37400.38100.48700.62400.960700 | Toilet_Cement Plaster | 5d | 2026-04-17 | 2026-04-21 | 7341 |  | 7 Days Work | 9290474 |
| 7343 | 36900.37000.37100.37400.38100.48700.62400.960800 | Toilet_Door Frame | 1d | 2026-04-22 | 2026-04-22 | 7342 |  | 7 Days Work | 9290484 |
| 7344 | 36900.37000.37100.37400.38100.48700.62400.960900 | Toilet_Wash basin & Couter | 3d | 2026-04-23 | 2026-04-25 | 7343 |  | 7 Days Work | 9290494 |
| 7345 | 36900.37000.37100.37400.38100.48700.62400.961000 | Toilet_Wall dado | 20d | 2026-04-26 | 2026-05-15 | 7344 |  | 7 Days Work | 9290504 |
| 7346 | 36900.37000.37100.37400.38100.48700.62400.961100 | Toilet_Granite Work-Ledge wall top | 3d | 2026-05-16 | 2026-05-18 | 7345 |  | 7 Days Work | 9290514 |
| 7347 | 36900.37000.37100.37400.38100.48700.62400.961200 | Toilet_Floor Tilling work | 20d | 2026-05-19 | 2026-06-07 | 7346 |  | 7 Days Work | 9290524 |
| 7348 | 36900.37000.37100.37400.38100.48700.62400.961300 | Toilet_1st row of dado | 5d | 2026-06-08 | 2026-06-12 | 7347 |  | 7 Days Work | 9290534 |
| 7349 | 36900.37000.37100.37400.38100.48700.62400.961400 | Toilet_Window Fixing | 14d | 2026-06-13 | 2026-06-26 | 7348 |  | 7 Days Work | 9290544 |
| 7350 | 36900.37000.37100.37400.38100.48700.62400.961500 | Toilet_Services above False ceiling | 21d | 2026-06-27 | 2026-07-17 | 7349 |  | 7 Days Work | 9290554 |
| 7351 | 36900.37000.37100.37400.38100.48700.62400.961600 | Toilet_False Ceiling framing | 12d | 2026-07-18 | 2026-07-29 | 7350 |  | 7 Days Work | 9290564 |
| 7352 | 36900.37000.37100.37400.38100.48700.62400.961700 | Toilet_Door Frame | 5d | 2026-07-30 | 2026-08-03 | 7351 |  | 7 Days Work | 9290574 |
| 7353 | 36900.37000.37100.37400.38100.48700.62400.961800 | Toilet_Epoxy Tile Grouting | 7d | 2026-09-29 | 2026-10-05 | 7328SS |  | 7 Days Work | 9290584 |
| 7354 | 36900.37000.37100.37400.38100.48700.62400.961900 | Toilet_False ceiling board fixing, CP Sanitary Fixture, Electric Fixture | 21d | 2026-10-06 | 2026-10-26 | 7353 |  | 7 Days Work | 9290594 |
| 7355 | 36900.37000.37100.37400.38100.48800 | **7th Habitable/8th Floor** | 245d | 2026-03-06 | 2026-11-05 |  | start no earlier than 2026-03-06 | 7 Days Work | 9279604 |
| 7356 | 36900.37000.37100.37400.38100.48800.579000 | Post Pour | 7d | 2026-03-06 | 2026-03-12 | 6979FS+15d |  | 7 Days Work | 9282444 |
| 7357 | 36900.37000.37100.37400.38100.48800.579100 | MEP Clearance -1 | 5d | 2026-03-13 | 2026-03-17 | 7356 |  | 7 Days Work | 9282454 |
| 7358 | 36900.37000.37100.37400.38100.48800.579200 | Benchmark | 1d | 2026-03-18 | 2026-03-18 | 7357 |  | 7 Days Work | 9282464 |
| 7359 | 36900.37000.37100.37400.38100.48800.579300 | Temporary Railing | 3d | 2026-03-19 | 2026-03-21 | 7358 |  | 7 Days Work | 9282474 |
| 7360 | 36900.37000.37100.37400.38100.48800.579400 | Blockwork | 10d | 2026-03-22 | 2026-03-31 | 7359 |  | 7 Days Work | 9282484 |
| 7361 | 36900.37000.37100.37400.38100.48800.579500 | MEP Clearance -2 | 10d | 2026-04-01 | 2026-04-10 | 7360 |  | 7 Days Work | 9282494 |
| 7362 | 36900.37000.37100.37400.38100.48800.579600 | Gypsum Plaster | 14d | 2026-04-11 | 2026-04-24 | 7361 |  | 7 Days Work | 9282504 |
| 7363 | 36900.37000.37100.37400.38100.48800.579700 | Kitchen Platform | 3d | 2026-04-25 | 2026-04-27 | 7362 |  | 7 Days Work | 9282514 |
| 7364 | 36900.37000.37100.37400.38100.48800.579800 | Kitchen dado | 7d | 2026-04-28 | 2026-05-04 | 7363 |  | 7 Days Work | 9282524 |
| 7365 | 36900.37000.37100.37400.38100.48800.579900 | Fire Fighting | 5d | 2026-05-05 | 2026-05-09 | 7364 |  | 7 Days Work | 9282534 |
| 7366 | 36900.37000.37100.37400.38100.48800.580000 | Anticapilary | 5d | 2026-05-10 | 2026-05-14 | 7365 |  | 7 Days Work | 9282544 |
| 7367 | 36900.37000.37100.37400.38100.48800.580100 | Stone Laying | 10d | 2026-06-17 | 2026-06-26 | 7407 |  | 7 Days Work | 9282554 |
| 7368 | 36900.37000.37100.37400.38100.48800.580200 | Tiles Laying | 7d | 2026-06-17 | 2026-06-23 | 7407 |  | 7 Days Work | 9282564 |
| 7369 | 36900.37000.37100.37400.38100.48800.580300 | 1st cutting/polishing of stone flooring | 7d | 2026-06-24 | 2026-06-30 | 7368 |  | 7 Days Work | 9282574 |
| 7370 | 36900.37000.37100.37400.38100.48800.580400 | Tiles/Stone skirting | 5d | 2026-07-01 | 2026-07-05 | 7369 |  | 7 Days Work | 9282584 |
| 7371 | 36900.37000.37100.37400.38100.48800.580500 | Protechtion sheet | 1d | 2026-07-06 | 2026-07-06 | 7370 |  | 7 Days Work | 9282594 |
| 7372 | 36900.37000.37100.37400.38100.48800.580600 | Installation of Temporary Door | 1d | 2026-07-07 | 2026-07-07 | 7371 |  | 7 Days Work | 9282604 |
| 7373 | 36900.37000.37100.37400.38100.48800.580700 | Fixing of window tracks | 5d | 2026-07-08 | 2026-07-12 | 7372 |  | 7 Days Work | 9282614 |
| 7374 | 36900.37000.37100.37400.38100.48800.580800 | Wire Pulling | 7d | 2026-07-13 | 2026-07-19 | 7373 |  | 7 Days Work | 9282624 |
| 7375 | 36900.37000.37100.37400.38100.48800.580900 | Gypsum Remaining | 5d | 2026-07-20 | 2026-07-24 | 7374 |  | 7 Days Work | 9282634 |
| 7376 | 36900.37000.37100.37400.38100.48800.581000 | Fixing of windoow shutter | 5d | 2026-07-25 | 2026-07-29 | 7375 |  | 7 Days Work | 9282644 |
| 7377 | 36900.37000.37100.37400.38100.48800.581100 | Putty Works - walls & ceiling | 15d | 2026-07-30 | 2026-08-13 | 7376 |  | 7 Days Work | 9282654 |
| 7378 | 36900.37000.37100.37400.38100.48800.581200 | False Ceiling- Framing | 10d | 2026-08-14 | 2026-08-23 | 7377 |  | 7 Days Work | 9282664 |
| 7379 | 36900.37000.37100.37400.38100.48800.581300 | Pre Hung Door | 3d | 2026-08-24 | 2026-08-26 | 7378 |  | 7 Days Work | 9282674 |
| 7380 | 36900.37000.37100.37400.38100.48800.581400 | Protechtion sheet | 2d | 2026-08-27 | 2026-08-28 | 7379 |  | 7 Days Work | 9282684 |
| 7381 | 36900.37000.37100.37400.38100.48800.581500 | Skirting near door | 2d | 2026-08-29 | 2026-08-30 | 7380 |  | 7 Days Work | 9282694 |
| 7382 | 36900.37000.37100.37400.38100.48800.581600 | Electrical Switch box fixing | 14d | 2026-08-31 | 2026-09-13 | 7381 |  | 7 Days Work | 9282704 |
| 7383 | 36900.37000.37100.37400.38100.48800.581700 | Fire Fighting painting | 5d | 2026-09-14 | 2026-09-18 | 7382 |  | 7 Days Work | 9282714 |
| 7384 | 36900.37000.37100.37400.38100.48800.581800 | Protection of all flooring, door & window hardware | 5d | 2026-09-19 | 2026-09-23 | 7383 |  | 7 Days Work | 9282724 |
| 7385 | 36900.37000.37100.37400.38100.48800.581900 | 1st coat primer- ceiling 1st & walls | 14d | 2026-09-24 | 2026-10-07 | 7384 |  | 7 Days Work | 9282734 |
| 7386 | 36900.37000.37100.37400.38100.48800.582000 | Wooden Flooring | 5d | 2026-10-08 | 2026-10-12 | 7385 |  | 7 Days Work | 9282744 |
| 7387 | 36900.37000.37100.37400.38100.48800.582100 | Removing of Temporary Railing & installation of Glass Railing | 5d | 2026-10-08 | 2026-10-12 | 7385 |  | 7 Days Work | 9282754 |
| 7388 | 36900.37000.37100.37400.38100.48800.582200 | Tile Grouting | 7d | 2026-10-08 | 2026-10-14 | 7385 |  | 7 Days Work | 9282764 |
| 7389 | 36900.37000.37100.37400.38100.48800.582300 | False Ceiling | 5d | 2026-10-15 | 2026-10-19 | 7388 |  | 7 Days Work | 9282774 |
| 7390 | 36900.37000.37100.37400.38100.48800.582400 | 2nd coat of primer | 10d | 2026-10-20 | 2026-10-29 | 7389 |  | 7 Days Work | 9282784 |
| 7391 | 36900.37000.37100.37400.38100.48800.582500 | Final cutting/polishing of stone flooring | 7d | 2026-10-30 | 2026-11-05 | 7390 |  | 7 Days Work | 9282794 |

| ID | WBS | Task | Duration | Start | Finish | Predecessors | Constraint | Calendar | Unique_Task_ID |
| --- | --- | --- | --- | --- | --- | --- | --- | --- | --- |
| 7392 | 36900.37000.37100.37400.38100.48800.62300 | **Toilet** | 237d | 2026-03-13 | 2026-11-04 |  | start no earlier than 2026-03-13 | 7 Days Work | 9279814 |
| 7393 | 36900.37000.37100.37400.38100.48800.62300.962000 | Toilet_MEP Clearance -1 | 7d | 2026-03-13 | 2026-03-19 | 7356 |  | 7 Days Work | 9290604 |
| 7394 | 36900.37000.37100.37400.38100.48800.62300.962100 | Toilet_Level Marking | 1d | 2026-03-20 | 2026-03-20 | 7393 |  | 7 Days Work | 9290614 |
| 7395 | 36900.37000.37100.37400.38100.48800.62300.962200 | Toilet_Chasing work for Electrical conduit & concealed plumbing | 5d | 2026-03-21 | 2026-03-25 | 7394 |  | 7 Days Work | 9290624 |
| 7396 | 36900.37000.37100.37400.38100.48800.62300.962300 | Toilet_Plumbing work 1st fix | 5d | 2026-03-26 | 2026-03-30 | 7395 |  | 7 Days Work | 9290634 |
| 7397 | 36900.37000.37100.37400.38100.48800.62300.962400 | Toilet_Sleeve/Bore Packing | 5d | 2026-03-31 | 2026-04-04 | 7396 |  | 7 Days Work | 9290644 |
| 7398 | 36900.37000.37100.37400.38100.48800.62300.962500 | Toilet_Waterproofing | 10d | 2026-04-05 | 2026-04-14 | 7397 |  | 7 Days Work | 9290654 |
| 7399 | 36900.37000.37100.37400.38100.48800.62300.962600 | Toilet_Screed | 1d | 2026-04-15 | 2026-04-15 | 7398 |  | 7 Days Work | 9290664 |
| 7400 | 36900.37000.37100.37400.38100.48800.62300.962700 | Toilet_Plumbing 2nd fix | 5d | 2026-04-16 | 2026-04-20 | 7399 |  | 7 Days Work | 9290674 |
| 7401 | 36900.37000.37100.37400.38100.48800.62300.962800 | Toilet_Ledge wall | 5d | 2026-04-21 | 2026-04-25 | 7400 |  | 7 Days Work | 9290684 |
| 7402 | 36900.37000.37100.37400.38100.48800.62300.962900 | Toilet_Cement Plaster | 5d | 2026-04-26 | 2026-04-30 | 7401 |  | 7 Days Work | 9290694 |
| 7403 | 36900.37000.37100.37400.38100.48800.62300.963000 | Toilet_Door Frame | 1d | 2026-05-01 | 2026-05-01 | 7402 |  | 7 Days Work | 9290704 |
| 7404 | 36900.37000.37100.37400.38100.48800.62300.963100 | Toilet_Wash basin & Couter | 3d | 2026-05-02 | 2026-05-04 | 7403 |  | 7 Days Work | 9290714 |
| 7405 | 36900.37000.37100.37400.38100.48800.62300.963200 | Toilet_Wall dado | 20d | 2026-05-05 | 2026-05-24 | 7404 |  | 7 Days Work | 9290724 |
| 7406 | 36900.37000.37100.37400.38100.48800.62300.963300 | Toilet_Granite Work-Ledge wall top | 3d | 2026-05-25 | 2026-05-27 | 7405 |  | 7 Days Work | 9290734 |
| 7407 | 36900.37000.37100.37400.38100.48800.62300.963400 | Toilet_Floor Tilling work | 20d | 2026-05-28 | 2026-06-16 | 7406 |  | 7 Days Work | 9290744 |
| 7408 | 36900.37000.37100.37400.38100.48800.62300.963500 | Toilet_1st row of dado | 5d | 2026-06-17 | 2026-06-21 | 7407 |  | 7 Days Work | 9290754 |
| 7409 | 36900.37000.37100.37400.38100.48800.62300.963600 | Toilet_Window Fixing | 14d | 2026-06-22 | 2026-07-05 | 7408 |  | 7 Days Work | 9290764 |
| 7410 | 36900.37000.37100.37400.38100.48800.62300.963700 | Toilet_Services above False ceiling | 21d | 2026-07-06 | 2026-07-26 | 7409 |  | 7 Days Work | 9290774 |
| 7411 | 36900.37000.37100.37400.38100.48800.62300.963800 | Toilet_False Ceiling framing | 12d | 2026-07-27 | 2026-08-07 | 7410 |  | 7 Days Work | 9290784 |
| 7412 | 36900.37000.37100.37400.38100.48800.62300.963900 | Toilet_Door Frame | 5d | 2026-08-08 | 2026-08-12 | 7411 |  | 7 Days Work | 9290794 |
| 7413 | 36900.37000.37100.37400.38100.48800.62300.964000 | Toilet_Epoxy Tile Grouting | 7d | 2026-10-08 | 2026-10-14 | 7388SS |  | 7 Days Work | 9290804 |
| 7414 | 36900.37000.37100.37400.38100.48800.62300.964100 | Toilet_False ceiling board fixing, CP Sanitary Fixture, Electric Fixture | 21d | 2026-10-15 | 2026-11-04 | 7413 |  | 7 Days Work | 9290814 |
| 7415 | 36900.37000.37100.37400.38100.48900 | **8th Habitable/9th Floor** | 245d | 2026-03-15 | 2026-11-14 |  | start no earlier than 2026-03-15 | 7 Days Work | 9279614 |
| 7416 | 36900.37000.37100.37400.38100.48900.582600 | Post Pour | 7d | 2026-03-15 | 2026-03-21 | 6980FS+15d |  | 7 Days Work | 9282804 |
| 7417 | 36900.37000.37100.37400.38100.48900.582700 | MEP Clearance -1 | 5d | 2026-03-22 | 2026-03-26 | 7416 |  | 7 Days Work | 9282814 |
| 7418 | 36900.37000.37100.37400.38100.48900.582800 | Benchmark | 1d | 2026-03-27 | 2026-03-27 | 7417 |  | 7 Days Work | 9282824 |
| 7419 | 36900.37000.37100.37400.38100.48900.582900 | Temporary Railing | 3d | 2026-03-28 | 2026-03-30 | 7418 |  | 7 Days Work | 9282834 |
| 7420 | 36900.37000.37100.37400.38100.48900.583000 | Blockwork | 10d | 2026-03-31 | 2026-04-09 | 7419 |  | 7 Days Work | 9282844 |
| 7421 | 36900.37000.37100.37400.38100.48900.583100 | MEP Clearance -2 | 10d | 2026-04-10 | 2026-04-19 | 7420 |  | 7 Days Work | 9282854 |
| 7422 | 36900.37000.37100.37400.38100.48900.583200 | Gypsum Plaster | 14d | 2026-04-20 | 2026-05-03 | 7421 |  | 7 Days Work | 9282864 |
| 7423 | 36900.37000.37100.37400.38100.48900.583300 | Kitchen Platform | 3d | 2026-05-04 | 2026-05-06 | 7422 |  | 7 Days Work | 9282874 |
| 7424 | 36900.37000.37100.37400.38100.48900.583400 | Kitchen dado | 7d | 2026-05-07 | 2026-05-13 | 7423 |  | 7 Days Work | 9282884 |
| 7425 | 36900.37000.37100.37400.38100.48900.583500 | Fire Fighting | 5d | 2026-05-14 | 2026-05-18 | 7424 |  | 7 Days Work | 9282894 |
| 7426 | 36900.37000.37100.37400.38100.48900.583600 | Anticapilary | 5d | 2026-05-19 | 2026-05-23 | 7425 |  | 7 Days Work | 9282904 |
| 7427 | 36900.37000.37100.37400.38100.48900.583700 | Stone Laying | 10d | 2026-06-26 | 2026-07-05 | 7467 |  | 7 Days Work | 9282914 |
| 7428 | 36900.37000.37100.37400.38100.48900.583800 | Tiles Laying | 7d | 2026-06-26 | 2026-07-02 | 7467 |  | 7 Days Work | 9282924 |
| 7429 | 36900.37000.37100.37400.38100.48900.583900 | 1st cutting/polishing of stone flooring | 7d | 2026-07-03 | 2026-07-09 | 7428 |  | 7 Days Work | 9282934 |
| 7430 | 36900.37000.37100.37400.38100.48900.584000 | Tiles/Stone skirting | 5d | 2026-07-10 | 2026-07-14 | 7429 |  | 7 Days Work | 9282944 |
| 7431 | 36900.37000.37100.37400.38100.48900.584100 | Protechtion sheet | 1d | 2026-07-15 | 2026-07-15 | 7430 |  | 7 Days Work | 9282954 |
| 7432 | 36900.37000.37100.37400.38100.48900.584200 | Installation of Temporary Door | 1d | 2026-07-16 | 2026-07-16 | 7431 |  | 7 Days Work | 9282964 |
| 7433 | 36900.37000.37100.37400.38100.48900.584300 | Fixing of window tracks | 5d | 2026-07-17 | 2026-07-21 | 7432 |  | 7 Days Work | 9282974 |
| 7434 | 36900.37000.37100.37400.38100.48900.584400 | Wire Pulling | 7d | 2026-07-22 | 2026-07-28 | 7433 |  | 7 Days Work | 9282984 |
| 7435 | 36900.37000.37100.37400.38100.48900.584500 | Gypsum Remaining | 5d | 2026-07-29 | 2026-08-02 | 7434 |  | 7 Days Work | 9282994 |
| 7436 | 36900.37000.37100.37400.38100.48900.584600 | Fixing of windoow shutter | 5d | 2026-08-03 | 2026-08-07 | 7435 |  | 7 Days Work | 9283004 |
| 7437 | 36900.37000.37100.37400.38100.48900.584700 | Putty Works - walls & ceiling | 15d | 2026-08-08 | 2026-08-22 | 7436 |  | 7 Days Work | 9283014 |
| 7438 | 36900.37000.37100.37400.38100.48900.584800 | False Ceiling- Framing | 10d | 2026-08-23 | 2026-09-01 | 7437 |  | 7 Days Work | 9283024 |
| 7439 | 36900.37000.37100.37400.38100.48900.584900 | Pre Hung Door | 3d | 2026-09-02 | 2026-09-04 | 7438 |  | 7 Days Work | 9283034 |
| 7440 | 36900.37000.37100.37400.38100.48900.585000 | Protechtion sheet | 2d | 2026-09-05 | 2026-09-06 | 7439 |  | 7 Days Work | 9283044 |
| 7441 | 36900.37000.37100.37400.38100.48900.585100 | Skirting near door | 2d | 2026-09-07 | 2026-09-08 | 7440 |  | 7 Days Work | 9283054 |
| 7442 | 36900.37000.37100.37400.38100.48900.585200 | Electrical Switch box fixing | 14d | 2026-09-09 | 2026-09-22 | 7441 |  | 7 Days Work | 9283064 |
| 7443 | 36900.37000.37100.37400.38100.48900.585300 | Fire Fighting painting | 5d | 2026-09-23 | 2026-09-27 | 7442 |  | 7 Days Work | 9283074 |
| 7444 | 36900.37000.37100.37400.38100.48900.585400 | Protection of all flooring, door & window hardware | 5d | 2026-09-28 | 2026-10-02 | 7443 |  | 7 Days Work | 9283084 |
| 7445 | 36900.37000.37100.37400.38100.48900.585500 | 1st coat primer- ceiling 1st & walls | 14d | 2026-10-03 | 2026-10-16 | 7444 |  | 7 Days Work | 9283094 |
| 7446 | 36900.37000.37100.37400.38100.48900.585600 | Wooden Flooring | 5d | 2026-10-17 | 2026-10-21 | 7445 |  | 7 Days Work | 9283104 |
| 7447 | 36900.37000.37100.37400.38100.48900.585700 | Removing of Temporary Railing & installation of Glass Railing | 5d | 2026-10-17 | 2026-10-21 | 7445 |  | 7 Days Work | 9283114 |
| 7448 | 36900.37000.37100.37400.38100.48900.585800 | Tile Grouting | 7d | 2026-10-17 | 2026-10-23 | 7445 |  | 7 Days Work | 9283124 |
| 7449 | 36900.37000.37100.37400.38100.48900.585900 | False Ceiling | 5d | 2026-10-24 | 2026-10-28 | 7448 |  | 7 Days Work | 9283134 |
| 7450 | 36900.37000.37100.37400.38100.48900.586000 | 2nd coat of primer | 10d | 2026-10-29 | 2026-11-07 | 7449 |  | 7 Days Work | 9283144 |
| 7451 | 36900.37000.37100.37400.38100.48900.586100 | Final cutting/polishing of stone flooring | 7d | 2026-11-08 | 2026-11-14 | 7450 |  | 7 Days Work | 9283154 |

| ID | WBS | Task | Duration | Start | Finish | Predecessors | Constraint | Calendar | Unique_Task_ID |
| --- | --- | --- | --- | --- | --- | --- | --- | --- | --- |
| 7452 | 36900.37000.37100.37400.38100.48900.62200 | **Toilet** | 237d | 2026-03-22 | 2026-11-13 |  | start no earlier than 2026-03-22 | 7 Days Work | 9279824 |
| 7453 | 36900.37000.37100.37400.38100.48900.62200.964200 | Toilet_MEP Clearance -1 | 7d | 2026-03-22 | 2026-03-28 | 7416 |  | 7 Days Work | 9290824 |
| 7454 | 36900.37000.37100.37400.38100.48900.62200.964300 | Toilet_Level Marking | 1d | 2026-03-29 | 2026-03-29 | 7453 |  | 7 Days Work | 9290834 |
| 7455 | 36900.37000.37100.37400.38100.48900.62200.964400 | Toilet_Chasing work for Electrical conduit & concealed plumbing | 5d | 2026-03-30 | 2026-04-03 | 7454 |  | 7 Days Work | 9290844 |
| 7456 | 36900.37000.37100.37400.38100.48900.62200.964500 | Toilet_Plumbing work 1st fix | 5d | 2026-04-04 | 2026-04-08 | 7455 |  | 7 Days Work | 9290854 |
| 7457 | 36900.37000.37100.37400.38100.48900.62200.964600 | Toilet_Sleeve/Bore Packing | 5d | 2026-04-09 | 2026-04-13 | 7456 |  | 7 Days Work | 9290864 |
| 7458 | 36900.37000.37100.37400.38100.48900.62200.964700 | Toilet_Waterproofing | 10d | 2026-04-14 | 2026-04-23 | 7457 |  | 7 Days Work | 9290874 |
| 7459 | 36900.37000.37100.37400.38100.48900.62200.964800 | Toilet_Screed | 1d | 2026-04-24 | 2026-04-24 | 7458 |  | 7 Days Work | 9290884 |
| 7460 | 36900.37000.37100.37400.38100.48900.62200.964900 | Toilet_Plumbing 2nd fix | 5d | 2026-04-25 | 2026-04-29 | 7459 |  | 7 Days Work | 9290894 |
| 7461 | 36900.37000.37100.37400.38100.48900.62200.965000 | Toilet_Ledge wall | 5d | 2026-04-30 | 2026-05-04 | 7460 |  | 7 Days Work | 9290904 |
| 7462 | 36900.37000.37100.37400.38100.48900.62200.965100 | Toilet_Cement Plaster | 5d | 2026-05-05 | 2026-05-09 | 7461 |  | 7 Days Work | 9290914 |
| 7463 | 36900.37000.37100.37400.38100.48900.62200.965200 | Toilet_Door Frame | 1d | 2026-05-10 | 2026-05-10 | 7462 |  | 7 Days Work | 9290924 |
| 7464 | 36900.37000.37100.37400.38100.48900.62200.965300 | Toilet_Wash basin & Couter | 3d | 2026-05-11 | 2026-05-13 | 7463 |  | 7 Days Work | 9290934 |
| 7465 | 36900.37000.37100.37400.38100.48900.62200.965400 | Toilet_Wall dado | 20d | 2026-05-14 | 2026-06-02 | 7464 |  | 7 Days Work | 9290944 |
| 7466 | 36900.37000.37100.37400.38100.48900.62200.965500 | Toilet_Granite Work-Ledge wall top | 3d | 2026-06-03 | 2026-06-05 | 7465 |  | 7 Days Work | 9290954 |
| 7467 | 36900.37000.37100.37400.38100.48900.62200.965600 | Toilet_Floor Tilling work | 20d | 2026-06-06 | 2026-06-25 | 7466 |  | 7 Days Work | 9290964 |
| 7468 | 36900.37000.37100.37400.38100.48900.62200.965700 | Toilet_1st row of dado | 5d | 2026-06-26 | 2026-06-30 | 7467 |  | 7 Days Work | 9290974 |
| 7469 | 36900.37000.37100.37400.38100.48900.62200.965800 | Toilet_Window Fixing | 14d | 2026-07-01 | 2026-07-14 | 7468 |  | 7 Days Work | 9290984 |
| 7470 | 36900.37000.37100.37400.38100.48900.62200.965900 | Toilet_Services above False ceiling | 21d | 2026-07-15 | 2026-08-04 | 7469 |  | 7 Days Work | 9290994 |
| 7471 | 36900.37000.37100.37400.38100.48900.62200.966000 | Toilet_False Ceiling framing | 12d | 2026-08-05 | 2026-08-16 | 7470 |  | 7 Days Work | 9291004 |
| 7472 | 36900.37000.37100.37400.38100.48900.62200.966100 | Toilet_Door Frame | 5d | 2026-08-17 | 2026-08-21 | 7471 |  | 7 Days Work | 9291014 |
| 7473 | 36900.37000.37100.37400.38100.48900.62200.966200 | Toilet_Epoxy Tile Grouting | 7d | 2026-10-17 | 2026-10-23 | 7448SS |  | 7 Days Work | 9291024 |
| 7474 | 36900.37000.37100.37400.38100.48900.62200.966300 | Toilet_False ceiling board fixing, CP Sanitary Fixture, Electric Fixture | 21d | 2026-10-24 | 2026-11-13 | 7473 |  | 7 Days Work | 9291034 |
| 7475 | 36900.37000.37100.37400.38100.49000 | **9th Habitable/10th Floor** | 245d | 2026-03-27 | 2026-11-26 |  | start no earlier than 2026-03-27 | 7 Days Work | 9279624 |
| 7476 | 36900.37000.37100.37400.38100.49000.586200 | Post Pour | 7d | 2026-03-27 | 2026-04-02 | 6981FS+15d |  | 7 Days Work | 9283164 |
| 7477 | 36900.37000.37100.37400.38100.49000.586300 | MEP Clearance -1 | 5d | 2026-04-03 | 2026-04-07 | 7476 |  | 7 Days Work | 9283174 |
| 7478 | 36900.37000.37100.37400.38100.49000.586400 | Benchmark | 1d | 2026-04-08 | 2026-04-08 | 7477 |  | 7 Days Work | 9283184 |
| 7479 | 36900.37000.37100.37400.38100.49000.586500 | Temporary Railing | 3d | 2026-04-09 | 2026-04-11 | 7478 |  | 7 Days Work | 9283194 |
| 7480 | 36900.37000.37100.37400.38100.49000.586600 | Blockwork | 10d | 2026-04-12 | 2026-04-21 | 7479 |  | 7 Days Work | 9283204 |
| 7481 | 36900.37000.37100.37400.38100.49000.586700 | MEP Clearance -2 | 10d | 2026-04-22 | 2026-05-01 | 7480 |  | 7 Days Work | 9283214 |
| 7482 | 36900.37000.37100.37400.38100.49000.586800 | Gypsum Plaster | 14d | 2026-05-02 | 2026-05-15 | 7481 |  | 7 Days Work | 9283224 |
| 7483 | 36900.37000.37100.37400.38100.49000.586900 | Kitchen Platform | 3d | 2026-05-16 | 2026-05-18 | 7482 |  | 7 Days Work | 9283234 |
| 7484 | 36900.37000.37100.37400.38100.49000.587000 | Kitchen dado | 7d | 2026-05-19 | 2026-05-25 | 7483 |  | 7 Days Work | 9283244 |
| 7485 | 36900.37000.37100.37400.38100.49000.587100 | Fire Fighting | 5d | 2026-05-26 | 2026-05-30 | 7484 |  | 7 Days Work | 9283254 |
| 7486 | 36900.37000.37100.37400.38100.49000.587200 | Anticapilary | 5d | 2026-05-31 | 2026-06-04 | 7485 |  | 7 Days Work | 9283264 |
| 7487 | 36900.37000.37100.37400.38100.49000.587300 | Stone Laying | 10d | 2026-07-08 | 2026-07-17 | 7527 |  | 7 Days Work | 9283274 |
| 7488 | 36900.37000.37100.37400.38100.49000.587400 | Tiles Laying | 7d | 2026-07-08 | 2026-07-14 | 7527 |  | 7 Days Work | 9283284 |
| 7489 | 36900.37000.37100.37400.38100.49000.587500 | 1st cutting/polishing of stone flooring | 7d | 2026-07-15 | 2026-07-21 | 7488 |  | 7 Days Work | 9283294 |
| 7490 | 36900.37000.37100.37400.38100.49000.587600 | Tiles/Stone skirting | 5d | 2026-07-22 | 2026-07-26 | 7489 |  | 7 Days Work | 9283304 |
| 7491 | 36900.37000.37100.37400.38100.49000.587700 | Protechtion sheet | 1d | 2026-07-27 | 2026-07-27 | 7490 |  | 7 Days Work | 9283314 |
| 7492 | 36900.37000.37100.37400.38100.49000.587800 | Installation of Temporary Door | 1d | 2026-07-28 | 2026-07-28 | 7491 |  | 7 Days Work | 9283324 |
| 7493 | 36900.37000.37100.37400.38100.49000.587900 | Fixing of window tracks | 5d | 2026-07-29 | 2026-08-02 | 7492 |  | 7 Days Work | 9283334 |
| 7494 | 36900.37000.37100.37400.38100.49000.588000 | Wire Pulling | 7d | 2026-08-03 | 2026-08-09 | 7493 |  | 7 Days Work | 9283344 |
| 7495 | 36900.37000.37100.37400.38100.49000.588100 | Gypsum Remaining | 5d | 2026-08-10 | 2026-08-14 | 7494 |  | 7 Days Work | 9283354 |
| 7496 | 36900.37000.37100.37400.38100.49000.588200 | Fixing of windoow shutter | 5d | 2026-08-15 | 2026-08-19 | 7495 |  | 7 Days Work | 9283364 |
| 7497 | 36900.37000.37100.37400.38100.49000.588300 | Putty Works - walls & ceiling | 15d | 2026-08-20 | 2026-09-03 | 7496 |  | 7 Days Work | 9283374 |
| 7498 | 36900.37000.37100.37400.38100.49000.588400 | False Ceiling- Framing | 10d | 2026-09-04 | 2026-09-13 | 7497 |  | 7 Days Work | 9283384 |
| 7499 | 36900.37000.37100.37400.38100.49000.588500 | Pre Hung Door | 3d | 2026-09-14 | 2026-09-16 | 7498 |  | 7 Days Work | 9283394 |
| 7500 | 36900.37000.37100.37400.38100.49000.588600 | Protechtion sheet | 2d | 2026-09-17 | 2026-09-18 | 7499 |  | 7 Days Work | 9283404 |
| 7501 | 36900.37000.37100.37400.38100.49000.588700 | Skirting near door | 2d | 2026-09-19 | 2026-09-20 | 7500 |  | 7 Days Work | 9283414 |
| 7502 | 36900.37000.37100.37400.38100.49000.588800 | Electrical Switch box fixing | 14d | 2026-09-21 | 2026-10-04 | 7501 |  | 7 Days Work | 9283424 |
| 7503 | 36900.37000.37100.37400.38100.49000.588900 | Fire Fighting painting | 5d | 2026-10-05 | 2026-10-09 | 7502 |  | 7 Days Work | 9283434 |
| 7504 | 36900.37000.37100.37400.38100.49000.589000 | Protection of all flooring, door & window hardware | 5d | 2026-10-10 | 2026-10-14 | 7503 |  | 7 Days Work | 9283444 |
| 7505 | 36900.37000.37100.37400.38100.49000.589100 | 1st coat primer- ceiling 1st & walls | 14d | 2026-10-15 | 2026-10-28 | 7504 |  | 7 Days Work | 9283454 |
| 7506 | 36900.37000.37100.37400.38100.49000.589200 | Wooden Flooring | 5d | 2026-10-29 | 2026-11-02 | 7505 |  | 7 Days Work | 9283464 |
| 7507 | 36900.37000.37100.37400.38100.49000.589300 | Removing of Temporary Railing & installation of Glass Railing | 5d | 2026-10-29 | 2026-11-02 | 7505 |  | 7 Days Work | 9283474 |
| 7508 | 36900.37000.37100.37400.38100.49000.589400 | Tile Grouting | 7d | 2026-10-29 | 2026-11-04 | 7505 |  | 7 Days Work | 9283484 |
| 7509 | 36900.37000.37100.37400.38100.49000.589500 | False Ceiling | 5d | 2026-11-05 | 2026-11-09 | 7508 |  | 7 Days Work | 9283494 |
| 7510 | 36900.37000.37100.37400.38100.49000.589600 | 2nd coat of primer | 10d | 2026-11-10 | 2026-11-19 | 7509 |  | 7 Days Work | 9283504 |
| 7511 | 36900.37000.37100.37400.38100.49000.589700 | Final cutting/polishing of stone flooring | 7d | 2026-11-20 | 2026-11-26 | 7510 |  | 7 Days Work | 9283514 |

| ID | WBS | Task | Duration | Start | Finish | Predecessors | Constraint | Calendar | Unique_Task_ID |
| --- | --- | --- | --- | --- | --- | --- | --- | --- | --- |
| 7512 | 36900.37000.37100.37400.38100.49000.62100 | **Toilet** | 237d | 2026-04-03 | 2026-11-25 |  | start no earlier than 2026-04-03 | 7 Days Work | 9279834 |
| 7513 | 36900.37000.37100.37400.38100.49000.62100.966400 | Toilet_MEP Clearance -1 | 7d | 2026-04-03 | 2026-04-09 | 7476 |  | 7 Days Work | 9291044 |
| 7514 | 36900.37000.37100.37400.38100.49000.62100.966500 | Toilet_Level Marking | 1d | 2026-04-10 | 2026-04-10 | 7513 |  | 7 Days Work | 9291054 |
| 7515 | 36900.37000.37100.37400.38100.49000.62100.966600 | Toilet_Chasing work for Electrical conduit & concealed plumbing | 5d | 2026-04-11 | 2026-04-15 | 7514 |  | 7 Days Work | 9291064 |
| 7516 | 36900.37000.37100.37400.38100.49000.62100.966700 | Toilet_Plumbing work 1st fix | 5d | 2026-04-16 | 2026-04-20 | 7515 |  | 7 Days Work | 9291074 |
| 7517 | 36900.37000.37100.37400.38100.49000.62100.966800 | Toilet_Sleeve/Bore Packing | 5d | 2026-04-21 | 2026-04-25 | 7516 |  | 7 Days Work | 9291084 |
| 7518 | 36900.37000.37100.37400.38100.49000.62100.966900 | Toilet_Waterproofing | 10d | 2026-04-26 | 2026-05-05 | 7517 |  | 7 Days Work | 9291094 |
| 7519 | 36900.37000.37100.37400.38100.49000.62100.967000 | Toilet_Screed | 1d | 2026-05-06 | 2026-05-06 | 7518 |  | 7 Days Work | 9291104 |
| 7520 | 36900.37000.37100.37400.38100.49000.62100.967100 | Toilet_Plumbing 2nd fix | 5d | 2026-05-07 | 2026-05-11 | 7519 |  | 7 Days Work | 9291114 |
| 7521 | 36900.37000.37100.37400.38100.49000.62100.967200 | Toilet_Ledge wall | 5d | 2026-05-12 | 2026-05-16 | 7520 |  | 7 Days Work | 9291124 |
| 7522 | 36900.37000.37100.37400.38100.49000.62100.967300 | Toilet_Cement Plaster | 5d | 2026-05-17 | 2026-05-21 | 7521 |  | 7 Days Work | 9291134 |
| 7523 | 36900.37000.37100.37400.38100.49000.62100.967400 | Toilet_Door Frame | 1d | 2026-05-22 | 2026-05-22 | 7522 |  | 7 Days Work | 9291144 |
| 7524 | 36900.37000.37100.37400.38100.49000.62100.967500 | Toilet_Wash basin & Couter | 3d | 2026-05-23 | 2026-05-25 | 7523 |  | 7 Days Work | 9291154 |
| 7525 | 36900.37000.37100.37400.38100.49000.62100.967600 | Toilet_Wall dado | 20d | 2026-05-26 | 2026-06-14 | 7524 |  | 7 Days Work | 9291164 |
| 7526 | 36900.37000.37100.37400.38100.49000.62100.967700 | Toilet_Granite Work-Ledge wall top | 3d | 2026-06-15 | 2026-06-17 | 7525 |  | 7 Days Work | 9291174 |
| 7527 | 36900.37000.37100.37400.38100.49000.62100.967800 | Toilet_Floor Tilling work | 20d | 2026-06-18 | 2026-07-07 | 7526 |  | 7 Days Work | 9291184 |
| 7528 | 36900.37000.37100.37400.38100.49000.62100.967900 | Toilet_1st row of dado | 5d | 2026-07-08 | 2026-07-12 | 7527 |  | 7 Days Work | 9291194 |
| 7529 | 36900.37000.37100.37400.38100.49000.62100.968000 | Toilet_Window Fixing | 14d | 2026-07-13 | 2026-07-26 | 7528 |  | 7 Days Work | 9291204 |
| 7530 | 36900.37000.37100.37400.38100.49000.62100.968100 | Toilet_Services above False ceiling | 21d | 2026-07-27 | 2026-08-16 | 7529 |  | 7 Days Work | 9291214 |
| 7531 | 36900.37000.37100.37400.38100.49000.62100.968200 | Toilet_False Ceiling framing | 12d | 2026-08-17 | 2026-08-28 | 7530 |  | 7 Days Work | 9291224 |
| 7532 | 36900.37000.37100.37400.38100.49000.62100.968300 | Toilet_Door Frame | 5d | 2026-08-29 | 2026-09-02 | 7531 |  | 7 Days Work | 9291234 |
| 7533 | 36900.37000.37100.37400.38100.49000.62100.968400 | Toilet_Epoxy Tile Grouting | 7d | 2026-10-29 | 2026-11-04 | 7508SS |  | 7 Days Work | 9291244 |
| 7534 | 36900.37000.37100.37400.38100.49000.62100.968500 | Toilet_False ceiling board fixing, CP Sanitary Fixture, Electric Fixture | 21d | 2026-11-05 | 2026-11-25 | 7533 |  | 7 Days Work | 9291254 |
| 7535 | 36900.37000.37100.37400.38100.49100 | **10th Habitable/11th Floor** | 245d | 2026-04-05 | 2026-12-05 |  | start no earlier than 2026-04-05 | 7 Days Work | 9279634 |
| 7536 | 36900.37000.37100.37400.38100.49100.589800 | Post Pour | 7d | 2026-04-05 | 2026-04-11 | 6982FS+15d |  | 7 Days Work | 9283524 |
| 7537 | 36900.37000.37100.37400.38100.49100.589900 | MEP Clearance -1 | 5d | 2026-04-12 | 2026-04-16 | 7536 |  | 7 Days Work | 9283534 |
| 7538 | 36900.37000.37100.37400.38100.49100.590000 | Benchmark | 1d | 2026-04-17 | 2026-04-17 | 7537 |  | 7 Days Work | 9283544 |
| 7539 | 36900.37000.37100.37400.38100.49100.590100 | Temporary Railing | 3d | 2026-04-18 | 2026-04-20 | 7538 |  | 7 Days Work | 9283554 |
| 7540 | 36900.37000.37100.37400.38100.49100.590200 | Blockwork | 10d | 2026-04-21 | 2026-04-30 | 7539 |  | 7 Days Work | 9283564 |
| 7541 | 36900.37000.37100.37400.38100.49100.590300 | MEP Clearance -2 | 10d | 2026-05-01 | 2026-05-10 | 7540 |  | 7 Days Work | 9283574 |
| 7542 | 36900.37000.37100.37400.38100.49100.590400 | Gypsum Plaster | 14d | 2026-05-11 | 2026-05-24 | 7541 |  | 7 Days Work | 9283584 |
| 7543 | 36900.37000.37100.37400.38100.49100.590500 | Kitchen Platform | 3d | 2026-05-25 | 2026-05-27 | 7542 |  | 7 Days Work | 9283594 |
| 7544 | 36900.37000.37100.37400.38100.49100.590600 | Kitchen dado | 7d | 2026-05-28 | 2026-06-03 | 7543 |  | 7 Days Work | 9283604 |
| 7545 | 36900.37000.37100.37400.38100.49100.590700 | Fire Fighting | 5d | 2026-06-04 | 2026-06-08 | 7544 |  | 7 Days Work | 9283614 |
| 7546 | 36900.37000.37100.37400.38100.49100.590800 | Anticapilary | 5d | 2026-06-09 | 2026-06-13 | 7545 |  | 7 Days Work | 9283624 |
| 7547 | 36900.37000.37100.37400.38100.49100.590900 | Stone Laying | 10d | 2026-07-17 | 2026-07-26 | 7587 |  | 7 Days Work | 9283634 |
| 7548 | 36900.37000.37100.37400.38100.49100.591000 | Tiles Laying | 7d | 2026-07-17 | 2026-07-23 | 7587 |  | 7 Days Work | 9283644 |
| 7549 | 36900.37000.37100.37400.38100.49100.591100 | 1st cutting/polishing of stone flooring | 7d | 2026-07-24 | 2026-07-30 | 7548 |  | 7 Days Work | 9283654 |
| 7550 | 36900.37000.37100.37400.38100.49100.591200 | Tiles/Stone skirting | 5d | 2026-07-31 | 2026-08-04 | 7549 |  | 7 Days Work | 9283664 |
| 7551 | 36900.37000.37100.37400.38100.49100.591300 | Protechtion sheet | 1d | 2026-08-05 | 2026-08-05 | 7550 |  | 7 Days Work | 9283674 |
| 7552 | 36900.37000.37100.37400.38100.49100.591400 | Installation of Temporary Door | 1d | 2026-08-06 | 2026-08-06 | 7551 |  | 7 Days Work | 9283684 |
| 7553 | 36900.37000.37100.37400.38100.49100.591500 | Fixing of window tracks | 5d | 2026-08-07 | 2026-08-11 | 7552 |  | 7 Days Work | 9283694 |
| 7554 | 36900.37000.37100.37400.38100.49100.591600 | Wire Pulling | 7d | 2026-08-12 | 2026-08-18 | 7553 |  | 7 Days Work | 9283704 |
| 7555 | 36900.37000.37100.37400.38100.49100.591700 | Gypsum Remaining | 5d | 2026-08-19 | 2026-08-23 | 7554 |  | 7 Days Work | 9283714 |
| 7556 | 36900.37000.37100.37400.38100.49100.591800 | Fixing of windoow shutter | 5d | 2026-08-24 | 2026-08-28 | 7555 |  | 7 Days Work | 9283724 |
| 7557 | 36900.37000.37100.37400.38100.49100.591900 | Putty Works - walls & ceiling | 15d | 2026-08-29 | 2026-09-12 | 7556 |  | 7 Days Work | 9283734 |
| 7558 | 36900.37000.37100.37400.38100.49100.592000 | False Ceiling- Framing | 10d | 2026-09-13 | 2026-09-22 | 7557 |  | 7 Days Work | 9283744 |
| 7559 | 36900.37000.37100.37400.38100.49100.592100 | Pre Hung Door | 3d | 2026-09-23 | 2026-09-25 | 7558 |  | 7 Days Work | 9283754 |
| 7560 | 36900.37000.37100.37400.38100.49100.592200 | Protechtion sheet | 2d | 2026-09-26 | 2026-09-27 | 7559 |  | 7 Days Work | 9283764 |
| 7561 | 36900.37000.37100.37400.38100.49100.592300 | Skirting near door | 2d | 2026-09-28 | 2026-09-29 | 7560 |  | 7 Days Work | 9283774 |
| 7562 | 36900.37000.37100.37400.38100.49100.592400 | Electrical Switch box fixing | 14d | 2026-09-30 | 2026-10-13 | 7561 |  | 7 Days Work | 9283784 |
| 7563 | 36900.37000.37100.37400.38100.49100.592500 | Fire Fighting painting | 5d | 2026-10-14 | 2026-10-18 | 7562 |  | 7 Days Work | 9283794 |
| 7564 | 36900.37000.37100.37400.38100.49100.592600 | Protection of all flooring, door & window hardware | 5d | 2026-10-19 | 2026-10-23 | 7563 |  | 7 Days Work | 9283804 |
| 7565 | 36900.37000.37100.37400.38100.49100.592700 | 1st coat primer- ceiling 1st & walls | 14d | 2026-10-24 | 2026-11-06 | 7564 |  | 7 Days Work | 9283814 |
| 7566 | 36900.37000.37100.37400.38100.49100.592800 | Wooden Flooring | 5d | 2026-11-07 | 2026-11-11 | 7565 |  | 7 Days Work | 9283824 |
| 7567 | 36900.37000.37100.37400.38100.49100.592900 | Removing of Temporary Railing & installation of Glass Railing | 5d | 2026-11-07 | 2026-11-11 | 7565 |  | 7 Days Work | 9283834 |
| 7568 | 36900.37000.37100.37400.38100.49100.593000 | Tile Grouting | 7d | 2026-11-07 | 2026-11-13 | 7565 |  | 7 Days Work | 9283844 |
| 7569 | 36900.37000.37100.37400.38100.49100.593100 | False Ceiling | 5d | 2026-11-14 | 2026-11-18 | 7568 |  | 7 Days Work | 9283854 |
| 7570 | 36900.37000.37100.37400.38100.49100.593200 | 2nd coat of primer | 10d | 2026-11-19 | 2026-11-28 | 7569 |  | 7 Days Work | 9283864 |
| 7571 | 36900.37000.37100.37400.38100.49100.593300 | Final cutting/polishing of stone flooring | 7d | 2026-11-29 | 2026-12-05 | 7570 |  | 7 Days Work | 9283874 |

| ID | WBS | Task | Duration | Start | Finish | Predecessors | Constraint | Calendar | Unique_Task_ID |
| --- | --- | --- | --- | --- | --- | --- | --- | --- | --- |
| 7572 | 36900.37000.37100.37400.38100.49100.62000 | **Toilet** | 237d | 2026-04-12 | 2026-12-04 |  | start no earlier than 2026-04-12 | 7 Days Work | 9279844 |
| 7573 | 36900.37000.37100.37400.38100.49100.62000.968600 | Toilet_MEP Clearance -1 | 7d | 2026-04-12 | 2026-04-18 | 7536 |  | 7 Days Work | 9291264 |
| 7574 | 36900.37000.37100.37400.38100.49100.62000.968700 | Toilet_Level Marking | 1d | 2026-04-19 | 2026-04-19 | 7573 |  | 7 Days Work | 9291274 |
| 7575 | 36900.37000.37100.37400.38100.49100.62000.968800 | Toilet_Chasing work for Electrical conduit & concealed plumbing | 5d | 2026-04-20 | 2026-04-24 | 7574 |  | 7 Days Work | 9291284 |
| 7576 | 36900.37000.37100.37400.38100.49100.62000.968900 | Toilet_Plumbing work 1st fix | 5d | 2026-04-25 | 2026-04-29 | 7575 |  | 7 Days Work | 9291294 |
| 7577 | 36900.37000.37100.37400.38100.49100.62000.969000 | Toilet_Sleeve/Bore Packing | 5d | 2026-04-30 | 2026-05-04 | 7576 |  | 7 Days Work | 9291304 |
| 7578 | 36900.37000.37100.37400.38100.49100.62000.969100 | Toilet_Waterproofing | 10d | 2026-05-05 | 2026-05-14 | 7577 |  | 7 Days Work | 9291314 |
| 7579 | 36900.37000.37100.37400.38100.49100.62000.969200 | Toilet_Screed | 1d | 2026-05-15 | 2026-05-15 | 7578 |  | 7 Days Work | 9291324 |
| 7580 | 36900.37000.37100.37400.38100.49100.62000.969300 | Toilet_Plumbing 2nd fix | 5d | 2026-05-16 | 2026-05-20 | 7579 |  | 7 Days Work | 9291334 |
| 7581 | 36900.37000.37100.37400.38100.49100.62000.969400 | Toilet_Ledge wall | 5d | 2026-05-21 | 2026-05-25 | 7580 |  | 7 Days Work | 9291344 |
| 7582 | 36900.37000.37100.37400.38100.49100.62000.969500 | Toilet_Cement Plaster | 5d | 2026-05-26 | 2026-05-30 | 7581 |  | 7 Days Work | 9291354 |
| 7583 | 36900.37000.37100.37400.38100.49100.62000.969600 | Toilet_Door Frame | 1d | 2026-05-31 | 2026-05-31 | 7582 |  | 7 Days Work | 9291364 |
| 7584 | 36900.37000.37100.37400.38100.49100.62000.969700 | Toilet_Wash basin & Couter | 3d | 2026-06-01 | 2026-06-03 | 7583 |  | 7 Days Work | 9291374 |
| 7585 | 36900.37000.37100.37400.38100.49100.62000.969800 | Toilet_Wall dado | 20d | 2026-06-04 | 2026-06-23 | 7584 |  | 7 Days Work | 9291384 |
| 7586 | 36900.37000.37100.37400.38100.49100.62000.969900 | Toilet_Granite Work-Ledge wall top | 3d | 2026-06-24 | 2026-06-26 | 7585 |  | 7 Days Work | 9291394 |
| 7587 | 36900.37000.37100.37400.38100.49100.62000.970000 | Toilet_Floor Tilling work | 20d | 2026-06-27 | 2026-07-16 | 7586 |  | 7 Days Work | 9291404 |
| 7588 | 36900.37000.37100.37400.38100.49100.62000.970100 | Toilet_1st row of dado | 5d | 2026-07-17 | 2026-07-21 | 7587 |  | 7 Days Work | 9291414 |
| 7589 | 36900.37000.37100.37400.38100.49100.62000.970200 | Toilet_Window Fixing | 14d | 2026-07-22 | 2026-08-04 | 7588 |  | 7 Days Work | 9291424 |
| 7590 | 36900.37000.37100.37400.38100.49100.62000.970300 | Toilet_Services above False ceiling | 21d | 2026-08-05 | 2026-08-25 | 7589 |  | 7 Days Work | 9291434 |
| 7591 | 36900.37000.37100.37400.38100.49100.62000.970400 | Toilet_False Ceiling framing | 12d | 2026-08-26 | 2026-09-06 | 7590 |  | 7 Days Work | 9291444 |
| 7592 | 36900.37000.37100.37400.38100.49100.62000.970500 | Toilet_Door Frame | 5d | 2026-09-07 | 2026-09-11 | 7591 |  | 7 Days Work | 9291454 |
| 7593 | 36900.37000.37100.37400.38100.49100.62000.970600 | Toilet_Epoxy Tile Grouting | 7d | 2026-11-07 | 2026-11-13 | 7568SS |  | 7 Days Work | 9291464 |
| 7594 | 36900.37000.37100.37400.38100.49100.62000.970700 | Toilet_False ceiling board fixing, CP Sanitary Fixture, Electric Fixture | 21d | 2026-11-14 | 2026-12-04 | 7593 |  | 7 Days Work | 9291474 |
| 7595 | 36900.37000.37100.37400.38100.49200 | **11th Habitable/12th Floor** | 442d | 2025-09-29 | 2026-12-14 |  | start no earlier than 2025-09-29 | 7 Days Work | 9279644 |
| 7596 | 36900.37000.37100.37400.38100.49200.593400 | Post Pour | 7d | 2026-04-14 | 2026-04-20 | 6983FS+15d |  | 7 Days Work | 9283884 |
| 7597 | 36900.37000.37100.37400.38100.49200.593500 | MEP Clearance -1 | 5d | 2026-04-21 | 2026-04-25 | 7596 |  | 7 Days Work | 9283894 |
| 7598 | 36900.37000.37100.37400.38100.49200.593600 | Benchmark | 1d | 2026-04-26 | 2026-04-26 | 7597 |  | 7 Days Work | 9283904 |
| 7599 | 36900.37000.37100.37400.38100.49200.593700 | Temporary Railing | 3d | 2026-04-27 | 2026-04-29 | 7598 |  | 7 Days Work | 9283914 |
| 7600 | 36900.37000.37100.37400.38100.49200.593800 | Blockwork | 10d | 2026-04-30 | 2026-05-09 | 7599 |  | 7 Days Work | 9283924 |
| 7601 | 36900.37000.37100.37400.38100.49200.593900 | MEP Clearance -2 | 10d | 2026-05-10 | 2026-05-19 | 7600 |  | 7 Days Work | 9283934 |
| 7602 | 36900.37000.37100.37400.38100.49200.594000 | Gypsum Plaster | 5d | 2025-09-29 | 2025-10-03 |  | start no earlier than 2025-09-29 | 7 Days Work | 9283585 |
| 7603 | 36900.37000.37100.37400.38100.49200.594100 | Gypsum Plaster | 14d | 2026-05-20 | 2026-06-02 | 7601, 7602 |  | 7 Days Work | 9283944 |
| 7604 | 36900.37000.37100.37400.38100.49200.594200 | Kitchen Platform | 3d | 2026-06-03 | 2026-06-05 | 7603 |  | 7 Days Work | 9283954 |
| 7605 | 36900.37000.37100.37400.38100.49200.594300 | Kitchen dado | 7d | 2026-06-06 | 2026-06-12 | 7604 |  | 7 Days Work | 9283964 |
| 7606 | 36900.37000.37100.37400.38100.49200.594400 | Fire Fighting | 5d | 2026-06-13 | 2026-06-17 | 7605 |  | 7 Days Work | 9283974 |
| 7607 | 36900.37000.37100.37400.38100.49200.594500 | Anticapilary | 5d | 2026-06-18 | 2026-06-22 | 7606 |  | 7 Days Work | 9283984 |
| 7608 | 36900.37000.37100.37400.38100.49200.594600 | Stone Laying | 10d | 2026-07-26 | 2026-08-04 | 7648 |  | 7 Days Work | 9283994 |
| 7609 | 36900.37000.37100.37400.38100.49200.594700 | Tiles Laying | 7d | 2026-07-26 | 2026-08-01 | 7648 |  | 7 Days Work | 9284004 |
| 7610 | 36900.37000.37100.37400.38100.49200.594800 | 1st cutting/polishing of stone flooring | 7d | 2026-08-02 | 2026-08-08 | 7609 |  | 7 Days Work | 9284014 |
| 7611 | 36900.37000.37100.37400.38100.49200.594900 | Tiles/Stone skirting | 5d | 2026-08-09 | 2026-08-13 | 7610 |  | 7 Days Work | 9284024 |
| 7612 | 36900.37000.37100.37400.38100.49200.595000 | Protechtion sheet | 1d | 2026-08-14 | 2026-08-14 | 7611 |  | 7 Days Work | 9284034 |
| 7613 | 36900.37000.37100.37400.38100.49200.595100 | Installation of Temporary Door | 1d | 2026-08-15 | 2026-08-15 | 7612 |  | 7 Days Work | 9284044 |
| 7614 | 36900.37000.37100.37400.38100.49200.595200 | Fixing of window tracks | 5d | 2026-08-16 | 2026-08-20 | 7613 |  | 7 Days Work | 9284054 |
| 7615 | 36900.37000.37100.37400.38100.49200.595300 | Wire Pulling | 7d | 2026-08-21 | 2026-08-27 | 7614 |  | 7 Days Work | 9284064 |
| 7616 | 36900.37000.37100.37400.38100.49200.595400 | Gypsum Remaining | 5d | 2026-08-28 | 2026-09-01 | 7615 |  | 7 Days Work | 9284074 |
| 7617 | 36900.37000.37100.37400.38100.49200.595500 | Fixing of windoow shutter | 5d | 2026-09-02 | 2026-09-06 | 7616 |  | 7 Days Work | 9284084 |
| 7618 | 36900.37000.37100.37400.38100.49200.595600 | Putty Works - walls & ceiling | 15d | 2026-09-07 | 2026-09-21 | 7617 |  | 7 Days Work | 9284094 |
| 7619 | 36900.37000.37100.37400.38100.49200.595700 | False Ceiling- Framing | 10d | 2026-09-22 | 2026-10-01 | 7618 |  | 7 Days Work | 9284104 |
| 7620 | 36900.37000.37100.37400.38100.49200.595800 | Pre Hung Door | 3d | 2026-10-02 | 2026-10-04 | 7619 |  | 7 Days Work | 9284114 |
| 7621 | 36900.37000.37100.37400.38100.49200.595900 | Protechtion sheet | 2d | 2026-10-05 | 2026-10-06 | 7620 |  | 7 Days Work | 9284124 |
| 7622 | 36900.37000.37100.37400.38100.49200.596000 | Skirting near door | 2d | 2026-10-07 | 2026-10-08 | 7621 |  | 7 Days Work | 9284134 |
| 7623 | 36900.37000.37100.37400.38100.49200.596100 | Electrical Switch box fixing | 14d | 2026-10-09 | 2026-10-22 | 7622 |  | 7 Days Work | 9284144 |
| 7624 | 36900.37000.37100.37400.38100.49200.596200 | Fire Fighting painting | 5d | 2026-10-23 | 2026-10-27 | 7623 |  | 7 Days Work | 9284154 |
| 7625 | 36900.37000.37100.37400.38100.49200.596300 | Protection of all flooring, door & window hardware | 5d | 2026-10-28 | 2026-11-01 | 7624 |  | 7 Days Work | 9284164 |
| 7626 | 36900.37000.37100.37400.38100.49200.596400 | 1st coat primer- ceiling 1st & walls | 14d | 2026-11-02 | 2026-11-15 | 7625 |  | 7 Days Work | 9284174 |
| 7627 | 36900.37000.37100.37400.38100.49200.596500 | Wooden Flooring | 5d | 2026-11-16 | 2026-11-20 | 7626 |  | 7 Days Work | 9284184 |
| 7628 | 36900.37000.37100.37400.38100.49200.596600 | Removing of Temporary Railing & installation of Glass Railing | 5d | 2026-11-16 | 2026-11-20 | 7626 |  | 7 Days Work | 9284194 |
| 7629 | 36900.37000.37100.37400.38100.49200.596700 | Tile Grouting | 7d | 2026-11-16 | 2026-11-22 | 7626 |  | 7 Days Work | 9284204 |
| 7630 | 36900.37000.37100.37400.38100.49200.596800 | False Ceiling | 5d | 2026-11-23 | 2026-11-27 | 7629 |  | 7 Days Work | 9284214 |
| 7631 | 36900.37000.37100.37400.38100.49200.596900 | 2nd coat of primer | 10d | 2026-11-28 | 2026-12-07 | 7630 |  | 7 Days Work | 9284224 |
| 7632 | 36900.37000.37100.37400.38100.49200.597000 | Final cutting/polishing of stone flooring | 7d | 2026-12-08 | 2026-12-14 | 7631 |  | 7 Days Work | 9284234 |

| ID | WBS | Task | Duration | Start | Finish | Predecessors | Constraint | Calendar | Unique_Task_ID |
| --- | --- | --- | --- | --- | --- | --- | --- | --- | --- |
| 7633 | 36900.37000.37100.37400.38100.49200.61700 | **Toilet** | 237d | 2026-04-21 | 2026-12-13 |  | start no earlier than 2026-04-21 | 7 Days Work | 9279854 |
| 7634 | 36900.37000.37100.37400.38100.49200.61700.970800 | Toilet_MEP Clearance -1 | 7d | 2026-04-21 | 2026-04-27 | 7596 |  | 7 Days Work | 9291484 |
| 7635 | 36900.37000.37100.37400.38100.49200.61700.970900 | Toilet_Level Marking | 1d | 2026-04-28 | 2026-04-28 | 7634 |  | 7 Days Work | 9291494 |
| 7636 | 36900.37000.37100.37400.38100.49200.61700.971000 | Toilet_Chasing work for Electrical conduit & concealed plumbing | 5d | 2026-04-29 | 2026-05-03 | 7635 |  | 7 Days Work | 9291504 |
| 7637 | 36900.37000.37100.37400.38100.49200.61700.971100 | Toilet_Plumbing work 1st fix | 5d | 2026-05-04 | 2026-05-08 | 7636 |  | 7 Days Work | 9291514 |
| 7638 | 36900.37000.37100.37400.38100.49200.61700.971200 | Toilet_Sleeve/Bore Packing | 5d | 2026-05-09 | 2026-05-13 | 7637 |  | 7 Days Work | 9291524 |
| 7639 | 36900.37000.37100.37400.38100.49200.61700.971300 | Toilet_Waterproofing | 10d | 2026-05-14 | 2026-05-23 | 7638 |  | 7 Days Work | 9291534 |
| 7640 | 36900.37000.37100.37400.38100.49200.61700.971400 | Toilet_Screed | 1d | 2026-05-24 | 2026-05-24 | 7639 |  | 7 Days Work | 9291544 |
| 7641 | 36900.37000.37100.37400.38100.49200.61700.971500 | Toilet_Plumbing 2nd fix | 5d | 2026-05-25 | 2026-05-29 | 7640 |  | 7 Days Work | 9291554 |
| 7642 | 36900.37000.37100.37400.38100.49200.61700.971600 | Toilet_Ledge wall | 5d | 2026-05-30 | 2026-06-03 | 7641 |  | 7 Days Work | 9291564 |
| 7643 | 36900.37000.37100.37400.38100.49200.61700.971700 | Toilet_Cement Plaster | 5d | 2026-06-04 | 2026-06-08 | 7642 |  | 7 Days Work | 9291574 |
| 7644 | 36900.37000.37100.37400.38100.49200.61700.971800 | Toilet_Door Frame | 1d | 2026-06-09 | 2026-06-09 | 7643 |  | 7 Days Work | 9291584 |
| 7645 | 36900.37000.37100.37400.38100.49200.61700.971900 | Toilet_Wash basin & Couter | 3d | 2026-06-10 | 2026-06-12 | 7644 |  | 7 Days Work | 9291594 |
| 7646 | 36900.37000.37100.37400.38100.49200.61700.972000 | Toilet_Wall dado | 20d | 2026-06-13 | 2026-07-02 | 7645 |  | 7 Days Work | 9291604 |
| 7647 | 36900.37000.37100.37400.38100.49200.61700.972100 | Toilet_Granite Work-Ledge wall top | 3d | 2026-07-03 | 2026-07-05 | 7646 |  | 7 Days Work | 9291614 |
| 7648 | 36900.37000.37100.37400.38100.49200.61700.972200 | Toilet_Floor Tilling work | 20d | 2026-07-06 | 2026-07-25 | 7647 |  | 7 Days Work | 9291624 |
| 7649 | 36900.37000.37100.37400.38100.49200.61700.972300 | Toilet_1st row of dado | 5d | 2026-07-26 | 2026-07-30 | 7648 |  | 7 Days Work | 9291634 |
| 7650 | 36900.37000.37100.37400.38100.49200.61700.972400 | Toilet_Window Fixing | 14d | 2026-07-31 | 2026-08-13 | 7649 |  | 7 Days Work | 9291644 |
| 7651 | 36900.37000.37100.37400.38100.49200.61700.972500 | Toilet_Services above False ceiling | 21d | 2026-08-14 | 2026-09-03 | 7650 |  | 7 Days Work | 9291654 |
| 7652 | 36900.37000.37100.37400.38100.49200.61700.972600 | Toilet_False Ceiling framing | 12d | 2026-09-04 | 2026-09-15 | 7651 |  | 7 Days Work | 9291664 |
| 7653 | 36900.37000.37100.37400.38100.49200.61700.972700 | Toilet_Door Frame | 5d | 2026-09-16 | 2026-09-20 | 7652 |  | 7 Days Work | 9291674 |
| 7654 | 36900.37000.37100.37400.38100.49200.61700.972800 | Toilet_Epoxy Tile Grouting | 7d | 2026-11-16 | 2026-11-22 | 7629SS |  | 7 Days Work | 9291684 |
| 7655 | 36900.37000.37100.37400.38100.49200.61700.972900 | Toilet_False ceiling board fixing, CP Sanitary Fixture, Electric Fixture | 21d | 2026-11-23 | 2026-12-13 | 7654 |  | 7 Days Work | 9291694 |
| 7656 | 36900.37000.37100.37400.38100.49300 | **12th Habitable/13th Floor** | 245d | 2026-04-23 | 2026-12-23 |  | start no earlier than 2026-04-23 | 7 Days Work | 9279654 |
| 7657 | 36900.37000.37100.37400.38100.49300.597100 | Post Pour | 7d | 2026-04-23 | 2026-04-29 | 6984FS+15d |  | 7 Days Work | 9284244 |
| 7658 | 36900.37000.37100.37400.38100.49300.597200 | MEP Clearance -1 | 5d | 2026-04-30 | 2026-05-04 | 7657 |  | 7 Days Work | 9284254 |
| 7659 | 36900.37000.37100.37400.38100.49300.597300 | Benchmark | 1d | 2026-05-05 | 2026-05-05 | 7658 |  | 7 Days Work | 9284264 |
| 7660 | 36900.37000.37100.37400.38100.49300.597400 | Temporary Railing | 3d | 2026-05-06 | 2026-05-08 | 7659 |  | 7 Days Work | 9284274 |
| 7661 | 36900.37000.37100.37400.38100.49300.597500 | Blockwork | 10d | 2026-05-09 | 2026-05-18 | 7660 |  | 7 Days Work | 9284284 |
| 7662 | 36900.37000.37100.37400.38100.49300.597600 | MEP Clearance -2 | 10d | 2026-05-19 | 2026-05-28 | 7661 |  | 7 Days Work | 9284294 |
| 7663 | 36900.37000.37100.37400.38100.49300.597700 | Gypsum Plaster | 14d | 2026-05-29 | 2026-06-11 | 7662 |  | 7 Days Work | 9284304 |
| 7664 | 36900.37000.37100.37400.38100.49300.597800 | Kitchen Platform | 3d | 2026-06-12 | 2026-06-14 | 7663 |  | 7 Days Work | 9284314 |
| 7665 | 36900.37000.37100.37400.38100.49300.597900 | Kitchen dado | 7d | 2026-06-15 | 2026-06-21 | 7664 |  | 7 Days Work | 9284324 |
| 7666 | 36900.37000.37100.37400.38100.49300.598000 | Fire Fighting | 5d | 2026-06-22 | 2026-06-26 | 7665 |  | 7 Days Work | 9284334 |
| 7667 | 36900.37000.37100.37400.38100.49300.598100 | Anticapilary | 5d | 2026-06-27 | 2026-07-01 | 7666 |  | 7 Days Work | 9284344 |
| 7668 | 36900.37000.37100.37400.38100.49300.598200 | Stone Laying | 10d | 2026-08-04 | 2026-08-13 | 7708 |  | 7 Days Work | 9284354 |
| 7669 | 36900.37000.37100.37400.38100.49300.598300 | Tiles Laying | 7d | 2026-08-04 | 2026-08-10 | 7708 |  | 7 Days Work | 9284364 |
| 7670 | 36900.37000.37100.37400.38100.49300.598400 | 1st cutting/polishing of stone flooring | 7d | 2026-08-11 | 2026-08-17 | 7669 |  | 7 Days Work | 9284374 |
| 7671 | 36900.37000.37100.37400.38100.49300.598500 | Tiles/Stone skirting | 5d | 2026-08-18 | 2026-08-22 | 7670 |  | 7 Days Work | 9284384 |
| 7672 | 36900.37000.37100.37400.38100.49300.598600 | Protechtion sheet | 1d | 2026-08-23 | 2026-08-23 | 7671 |  | 7 Days Work | 9284394 |
| 7673 | 36900.37000.37100.37400.38100.49300.598700 | Installation of Temporary Door | 1d | 2026-08-24 | 2026-08-24 | 7672 |  | 7 Days Work | 9284404 |
| 7674 | 36900.37000.37100.37400.38100.49300.598800 | Fixing of window tracks | 5d | 2026-08-25 | 2026-08-29 | 7673 |  | 7 Days Work | 9284414 |
| 7675 | 36900.37000.37100.37400.38100.49300.598900 | Wire Pulling | 7d | 2026-08-30 | 2026-09-05 | 7674 |  | 7 Days Work | 9284424 |
| 7676 | 36900.37000.37100.37400.38100.49300.599000 | Gypsum Remaining | 5d | 2026-09-06 | 2026-09-10 | 7675 |  | 7 Days Work | 9284434 |
| 7677 | 36900.37000.37100.37400.38100.49300.599100 | Fixing of windoow shutter | 5d | 2026-09-11 | 2026-09-15 | 7676 |  | 7 Days Work | 9284444 |
| 7678 | 36900.37000.37100.37400.38100.49300.599200 | Putty Works - walls & ceiling | 15d | 2026-09-16 | 2026-09-30 | 7677 |  | 7 Days Work | 9284454 |
| 7679 | 36900.37000.37100.37400.38100.49300.599300 | False Ceiling- Framing | 10d | 2026-10-01 | 2026-10-10 | 7678 |  | 7 Days Work | 9284464 |
| 7680 | 36900.37000.37100.37400.38100.49300.599400 | Pre Hung Door | 3d | 2026-10-11 | 2026-10-13 | 7679 |  | 7 Days Work | 9284474 |
| 7681 | 36900.37000.37100.37400.38100.49300.599500 | Protechtion sheet | 2d | 2026-10-14 | 2026-10-15 | 7680 |  | 7 Days Work | 9284484 |
| 7682 | 36900.37000.37100.37400.38100.49300.599600 | Skirting near door | 2d | 2026-10-16 | 2026-10-17 | 7681 |  | 7 Days Work | 9284494 |
| 7683 | 36900.37000.37100.37400.38100.49300.599700 | Electrical Switch box fixing | 14d | 2026-10-18 | 2026-10-31 | 7682 |  | 7 Days Work | 9284504 |
| 7684 | 36900.37000.37100.37400.38100.49300.599800 | Fire Fighting painting | 5d | 2026-11-01 | 2026-11-05 | 7683 |  | 7 Days Work | 9284514 |
| 7685 | 36900.37000.37100.37400.38100.49300.599900 | Protection of all flooring, door & window hardware | 5d | 2026-11-06 | 2026-11-10 | 7684 |  | 7 Days Work | 9284524 |
| 7686 | 36900.37000.37100.37400.38100.49300.600000 | 1st coat primer- ceiling 1st & walls | 14d | 2026-11-11 | 2026-11-24 | 7685 |  | 7 Days Work | 9284534 |
| 7687 | 36900.37000.37100.37400.38100.49300.600100 | Wooden Flooring | 5d | 2026-11-25 | 2026-11-29 | 7686 |  | 7 Days Work | 9284544 |
| 7688 | 36900.37000.37100.37400.38100.49300.600200 | Removing of Temporary Railing & installation of Glass Railing | 5d | 2026-11-25 | 2026-11-29 | 7686 |  | 7 Days Work | 9284554 |
| 7689 | 36900.37000.37100.37400.38100.49300.600300 | Tile Grouting | 7d | 2026-11-25 | 2026-12-01 | 7686 |  | 7 Days Work | 9284564 |
| 7690 | 36900.37000.37100.37400.38100.49300.600400 | False Ceiling | 5d | 2026-12-02 | 2026-12-06 | 7689 |  | 7 Days Work | 9284574 |
| 7691 | 36900.37000.37100.37400.38100.49300.600500 | 2nd coat of primer | 10d | 2026-12-07 | 2026-12-16 | 7690 |  | 7 Days Work | 9284584 |
| 7692 | 36900.37000.37100.37400.38100.49300.600600 | Final cutting/polishing of stone flooring | 7d | 2026-12-17 | 2026-12-23 | 7691 |  | 7 Days Work | 9284594 |

| ID | WBS | Task | Duration | Start | Finish | Predecessors | Constraint | Calendar | Unique_Task_ID |
| --- | --- | --- | --- | --- | --- | --- | --- | --- | --- |
| 7693 | 36900.37000.37100.37400.38100.49300.61600 | **Toilet** | 237d | 2026-04-30 | 2026-12-22 |  | start no earlier than 2026-04-30 | 7 Days Work | 9279864 |
| 7694 | 36900.37000.37100.37400.38100.49300.61600.973000 | Toilet_MEP Clearance -1 | 7d | 2026-04-30 | 2026-05-06 | 7657 |  | 7 Days Work | 9291704 |
| 7695 | 36900.37000.37100.37400.38100.49300.61600.973100 | Toilet_Level Marking | 1d | 2026-05-07 | 2026-05-07 | 7694 |  | 7 Days Work | 9291714 |
| 7696 | 36900.37000.37100.37400.38100.49300.61600.973200 | Toilet_Chasing work for Electrical conduit & concealed plumbing | 5d | 2026-05-08 | 2026-05-12 | 7695 |  | 7 Days Work | 9291724 |
| 7697 | 36900.37000.37100.37400.38100.49300.61600.973300 | Toilet_Plumbing work 1st fix | 5d | 2026-05-13 | 2026-05-17 | 7696 |  | 7 Days Work | 9291734 |
| 7698 | 36900.37000.37100.37400.38100.49300.61600.973400 | Toilet_Sleeve/Bore Packing | 5d | 2026-05-18 | 2026-05-22 | 7697 |  | 7 Days Work | 9291744 |
| 7699 | 36900.37000.37100.37400.38100.49300.61600.973500 | Toilet_Waterproofing | 10d | 2026-05-23 | 2026-06-01 | 7698 |  | 7 Days Work | 9291754 |
| 7700 | 36900.37000.37100.37400.38100.49300.61600.973600 | Toilet_Screed | 1d | 2026-06-02 | 2026-06-02 | 7699 |  | 7 Days Work | 9291764 |
| 7701 | 36900.37000.37100.37400.38100.49300.61600.973700 | Toilet_Plumbing 2nd fix | 5d | 2026-06-03 | 2026-06-07 | 7700 |  | 7 Days Work | 9291774 |
| 7702 | 36900.37000.37100.37400.38100.49300.61600.973800 | Toilet_Ledge wall | 5d | 2026-06-08 | 2026-06-12 | 7701 |  | 7 Days Work | 9291784 |
| 7703 | 36900.37000.37100.37400.38100.49300.61600.973900 | Toilet_Cement Plaster | 5d | 2026-06-13 | 2026-06-17 | 7702 |  | 7 Days Work | 9291794 |
| 7704 | 36900.37000.37100.37400.38100.49300.61600.974000 | Toilet_Door Frame | 1d | 2026-06-18 | 2026-06-18 | 7703 |  | 7 Days Work | 9291804 |
| 7705 | 36900.37000.37100.37400.38100.49300.61600.974100 | Toilet_Wash basin & Couter | 3d | 2026-06-19 | 2026-06-21 | 7704 |  | 7 Days Work | 9291814 |
| 7706 | 36900.37000.37100.37400.38100.49300.61600.974200 | Toilet_Wall dado | 20d | 2026-06-22 | 2026-07-11 | 7705 |  | 7 Days Work | 9291824 |
| 7707 | 36900.37000.37100.37400.38100.49300.61600.974300 | Toilet_Granite Work-Ledge wall top | 3d | 2026-07-12 | 2026-07-14 | 7706 |  | 7 Days Work | 9291834 |
| 7708 | 36900.37000.37100.37400.38100.49300.61600.974400 | Toilet_Floor Tilling work | 20d | 2026-07-15 | 2026-08-03 | 7707 |  | 7 Days Work | 9291844 |
| 7709 | 36900.37000.37100.37400.38100.49300.61600.974500 | Toilet_1st row of dado | 5d | 2026-08-04 | 2026-08-08 | 7708 |  | 7 Days Work | 9291854 |
| 7710 | 36900.37000.37100.37400.38100.49300.61600.974600 | Toilet_Window Fixing | 14d | 2026-08-09 | 2026-08-22 | 7709 |  | 7 Days Work | 9291864 |
| 7711 | 36900.37000.37100.37400.38100.49300.61600.974700 | Toilet_Services above False ceiling | 21d | 2026-08-23 | 2026-09-12 | 7710 |  | 7 Days Work | 9291874 |
| 7712 | 36900.37000.37100.37400.38100.49300.61600.974800 | Toilet_False Ceiling framing | 12d | 2026-09-13 | 2026-09-24 | 7711 |  | 7 Days Work | 9291884 |
| 7713 | 36900.37000.37100.37400.38100.49300.61600.974900 | Toilet_Door Frame | 5d | 2026-09-25 | 2026-09-29 | 7712 |  | 7 Days Work | 9291894 |
| 7714 | 36900.37000.37100.37400.38100.49300.61600.975000 | Toilet_Epoxy Tile Grouting | 7d | 2026-11-25 | 2026-12-01 | 7689SS |  | 7 Days Work | 9291904 |
| 7715 | 36900.37000.37100.37400.38100.49300.61600.975100 | Toilet_False ceiling board fixing, CP Sanitary Fixture, Electric Fixture | 21d | 2026-12-02 | 2026-12-22 | 7714 |  | 7 Days Work | 9291914 |
| 7716 | 36900.37000.37100.37400.38100.49400 | **13th Habitable/14th Floor** | 245d | 2026-05-05 | 2027-01-04 |  | start no earlier than 2026-05-05 | 7 Days Work | 9279664 |
| 7717 | 36900.37000.37100.37400.38100.49400.600700 | Post Pour | 7d | 2026-05-05 | 2026-05-11 | 6985FS+15d |  | 7 Days Work | 9284604 |
| 7718 | 36900.37000.37100.37400.38100.49400.600800 | MEP Clearance -1 | 5d | 2026-05-12 | 2026-05-16 | 7717 |  | 7 Days Work | 9284614 |
| 7719 | 36900.37000.37100.37400.38100.49400.600900 | Benchmark | 1d | 2026-05-17 | 2026-05-17 | 7718 |  | 7 Days Work | 9284624 |
| 7720 | 36900.37000.37100.37400.38100.49400.601000 | Temporary Railing | 3d | 2026-05-18 | 2026-05-20 | 7719 |  | 7 Days Work | 9284634 |
| 7721 | 36900.37000.37100.37400.38100.49400.601100 | Blockwork | 10d | 2026-05-21 | 2026-05-30 | 7720 |  | 7 Days Work | 9284644 |
| 7722 | 36900.37000.37100.37400.38100.49400.601200 | MEP Clearance -2 | 10d | 2026-05-31 | 2026-06-09 | 7721 |  | 7 Days Work | 9284654 |
| 7723 | 36900.37000.37100.37400.38100.49400.601300 | Gypsum Plaster | 14d | 2026-06-10 | 2026-06-23 | 7722 |  | 7 Days Work | 9284664 |
| 7724 | 36900.37000.37100.37400.38100.49400.601400 | Kitchen Platform | 3d | 2026-06-24 | 2026-06-26 | 7723 |  | 7 Days Work | 9284674 |
| 7725 | 36900.37000.37100.37400.38100.49400.601500 | Kitchen dado | 7d | 2026-06-27 | 2026-07-03 | 7724 |  | 7 Days Work | 9284684 |
| 7726 | 36900.37000.37100.37400.38100.49400.601600 | Fire Fighting | 5d | 2026-07-04 | 2026-07-08 | 7725 |  | 7 Days Work | 9284694 |
| 7727 | 36900.37000.37100.37400.38100.49400.601700 | Anticapilary | 5d | 2026-07-09 | 2026-07-13 | 7726 |  | 7 Days Work | 9284704 |
| 7728 | 36900.37000.37100.37400.38100.49400.601800 | Stone Laying | 10d | 2026-08-16 | 2026-08-25 | 7768 |  | 7 Days Work | 9284714 |
| 7729 | 36900.37000.37100.37400.38100.49400.601900 | Tiles Laying | 7d | 2026-08-16 | 2026-08-22 | 7768 |  | 7 Days Work | 9284724 |
| 7730 | 36900.37000.37100.37400.38100.49400.602000 | 1st cutting/polishing of stone flooring | 7d | 2026-08-23 | 2026-08-29 | 7729 |  | 7 Days Work | 9284734 |
| 7731 | 36900.37000.37100.37400.38100.49400.602100 | Tiles/Stone skirting | 5d | 2026-08-30 | 2026-09-03 | 7730 |  | 7 Days Work | 9284744 |
| 7732 | 36900.37000.37100.37400.38100.49400.602200 | Protechtion sheet | 1d | 2026-09-04 | 2026-09-04 | 7731 |  | 7 Days Work | 9284754 |
| 7733 | 36900.37000.37100.37400.38100.49400.602300 | Installation of Temporary Door | 1d | 2026-09-05 | 2026-09-05 | 7732 |  | 7 Days Work | 9284764 |
| 7734 | 36900.37000.37100.37400.38100.49400.602400 | Fixing of window tracks | 5d | 2026-09-06 | 2026-09-10 | 7733 |  | 7 Days Work | 9284774 |
| 7735 | 36900.37000.37100.37400.38100.49400.602500 | Wire Pulling | 7d | 2026-09-11 | 2026-09-17 | 7734 |  | 7 Days Work | 9284784 |
| 7736 | 36900.37000.37100.37400.38100.49400.602600 | Gypsum Remaining | 5d | 2026-09-18 | 2026-09-22 | 7735 |  | 7 Days Work | 9284794 |
| 7737 | 36900.37000.37100.37400.38100.49400.602700 | Fixing of windoow shutter | 5d | 2026-09-23 | 2026-09-27 | 7736 |  | 7 Days Work | 9284804 |
| 7738 | 36900.37000.37100.37400.38100.49400.602800 | Putty Works - walls & ceiling | 15d | 2026-09-28 | 2026-10-12 | 7737 |  | 7 Days Work | 9284814 |
| 7739 | 36900.37000.37100.37400.38100.49400.602900 | False Ceiling- Framing | 10d | 2026-10-13 | 2026-10-22 | 7738 |  | 7 Days Work | 9284824 |
| 7740 | 36900.37000.37100.37400.38100.49400.603000 | Pre Hung Door | 3d | 2026-10-23 | 2026-10-25 | 7739 |  | 7 Days Work | 9284834 |
| 7741 | 36900.37000.37100.37400.38100.49400.603100 | Protechtion sheet | 2d | 2026-10-26 | 2026-10-27 | 7740 |  | 7 Days Work | 9284844 |
| 7742 | 36900.37000.37100.37400.38100.49400.603200 | Skirting near door | 2d | 2026-10-28 | 2026-10-29 | 7741 |  | 7 Days Work | 9284854 |
| 7743 | 36900.37000.37100.37400.38100.49400.603300 | Electrical Switch box fixing | 14d | 2026-10-30 | 2026-11-12 | 7742 |  | 7 Days Work | 9284864 |
| 7744 | 36900.37000.37100.37400.38100.49400.603400 | Fire Fighting painting | 5d | 2026-11-13 | 2026-11-17 | 7743 |  | 7 Days Work | 9284874 |
| 7745 | 36900.37000.37100.37400.38100.49400.603500 | Protection of all flooring, door & window hardware | 5d | 2026-11-18 | 2026-11-22 | 7744 |  | 7 Days Work | 9284884 |
| 7746 | 36900.37000.37100.37400.38100.49400.603600 | 1st coat primer- ceiling 1st & walls | 14d | 2026-11-23 | 2026-12-06 | 7745 |  | 7 Days Work | 9284894 |
| 7747 | 36900.37000.37100.37400.38100.49400.603700 | Wooden Flooring | 5d | 2026-12-07 | 2026-12-11 | 7746 |  | 7 Days Work | 9284904 |
| 7748 | 36900.37000.37100.37400.38100.49400.603800 | Removing of Temporary Railing & installation of Glass Railing | 5d | 2026-12-07 | 2026-12-11 | 7746 |  | 7 Days Work | 9284914 |
| 7749 | 36900.37000.37100.37400.38100.49400.603900 | Tile Grouting | 7d | 2026-12-07 | 2026-12-13 | 7746 |  | 7 Days Work | 9284924 |
| 7750 | 36900.37000.37100.37400.38100.49400.604000 | False Ceiling | 5d | 2026-12-14 | 2026-12-18 | 7749 |  | 7 Days Work | 9284934 |
| 7751 | 36900.37000.37100.37400.38100.49400.604100 | 2nd coat of primer | 10d | 2026-12-19 | 2026-12-28 | 7750 |  | 7 Days Work | 9284944 |
| 7752 | 36900.37000.37100.37400.38100.49400.604200 | Final cutting/polishing of stone flooring | 7d | 2026-12-29 | 2027-01-04 | 7751 |  | 7 Days Work | 9284954 |

| ID | WBS | Task | Duration | Start | Finish | Predecessors | Constraint | Calendar | Unique_Task_ID |
| --- | --- | --- | --- | --- | --- | --- | --- | --- | --- |
| 7753 | 36900.37000.37100.37400.38100.49400.61500 | **Toilet** | 237d | 2026-05-12 | 2027-01-03 |  | start no earlier than 2026-05-12 | 7 Days Work | 9279874 |
| 7754 | 36900.37000.37100.37400.38100.49400.61500.975200 | Toilet_MEP Clearance -1 | 7d | 2026-05-12 | 2026-05-18 | 7717 |  | 7 Days Work | 9291924 |
| 7755 | 36900.37000.37100.37400.38100.49400.61500.975300 | Toilet_Level Marking | 1d | 2026-05-19 | 2026-05-19 | 7754 |  | 7 Days Work | 9291934 |
| 7756 | 36900.37000.37100.37400.38100.49400.61500.975400 | Toilet_Chasing work for Electrical conduit & concealed plumbing | 5d | 2026-05-20 | 2026-05-24 | 7755 |  | 7 Days Work | 9291944 |
| 7757 | 36900.37000.37100.37400.38100.49400.61500.975500 | Toilet_Plumbing work 1st fix | 5d | 2026-05-25 | 2026-05-29 | 7756 |  | 7 Days Work | 9291954 |
| 7758 | 36900.37000.37100.37400.38100.49400.61500.975600 | Toilet_Sleeve/Bore Packing | 5d | 2026-05-30 | 2026-06-03 | 7757 |  | 7 Days Work | 9291964 |
| 7759 | 36900.37000.37100.37400.38100.49400.61500.975700 | Toilet_Waterproofing | 10d | 2026-06-04 | 2026-06-13 | 7758 |  | 7 Days Work | 9291974 |
| 7760 | 36900.37000.37100.37400.38100.49400.61500.975800 | Toilet_Screed | 1d | 2026-06-14 | 2026-06-14 | 7759 |  | 7 Days Work | 9291984 |
| 7761 | 36900.37000.37100.37400.38100.49400.61500.975900 | Toilet_Plumbing 2nd fix | 5d | 2026-06-15 | 2026-06-19 | 7760 |  | 7 Days Work | 9291994 |
| 7762 | 36900.37000.37100.37400.38100.49400.61500.976000 | Toilet_Ledge wall | 5d | 2026-06-20 | 2026-06-24 | 7761 |  | 7 Days Work | 9292004 |
| 7763 | 36900.37000.37100.37400.38100.49400.61500.976100 | Toilet_Cement Plaster | 5d | 2026-06-25 | 2026-06-29 | 7762 |  | 7 Days Work | 9292014 |
| 7764 | 36900.37000.37100.37400.38100.49400.61500.976200 | Toilet_Door Frame | 1d | 2026-06-30 | 2026-06-30 | 7763 |  | 7 Days Work | 9292024 |
| 7765 | 36900.37000.37100.37400.38100.49400.61500.976300 | Toilet_Wash basin & Couter | 3d | 2026-07-01 | 2026-07-03 | 7764 |  | 7 Days Work | 9292034 |
| 7766 | 36900.37000.37100.37400.38100.49400.61500.976400 | Toilet_Wall dado | 20d | 2026-07-04 | 2026-07-23 | 7765 |  | 7 Days Work | 9292044 |
| 7767 | 36900.37000.37100.37400.38100.49400.61500.976500 | Toilet_Granite Work-Ledge wall top | 3d | 2026-07-24 | 2026-07-26 | 7766 |  | 7 Days Work | 9292054 |
| 7768 | 36900.37000.37100.37400.38100.49400.61500.976600 | Toilet_Floor Tilling work | 20d | 2026-07-27 | 2026-08-15 | 7767 |  | 7 Days Work | 9292064 |
| 7769 | 36900.37000.37100.37400.38100.49400.61500.976700 | Toilet_1st row of dado | 5d | 2026-08-16 | 2026-08-20 | 7768 |  | 7 Days Work | 9292074 |
| 7770 | 36900.37000.37100.37400.38100.49400.61500.976800 | Toilet_Window Fixing | 14d | 2026-08-21 | 2026-09-03 | 7769 |  | 7 Days Work | 9292084 |
| 7771 | 36900.37000.37100.37400.38100.49400.61500.976900 | Toilet_Services above False ceiling | 21d | 2026-09-04 | 2026-09-24 | 7770 |  | 7 Days Work | 9292094 |
| 7772 | 36900.37000.37100.37400.38100.49400.61500.977000 | Toilet_False Ceiling framing | 12d | 2026-09-25 | 2026-10-06 | 7771 |  | 7 Days Work | 9292104 |
| 7773 | 36900.37000.37100.37400.38100.49400.61500.977100 | Toilet_Door Frame | 5d | 2026-10-07 | 2026-10-11 | 7772 |  | 7 Days Work | 9292114 |
| 7774 | 36900.37000.37100.37400.38100.49400.61500.977200 | Toilet_Epoxy Tile Grouting | 7d | 2026-12-07 | 2026-12-13 | 7749SS |  | 7 Days Work | 9292124 |
| 7775 | 36900.37000.37100.37400.38100.49400.61500.977300 | Toilet_False ceiling board fixing, CP Sanitary Fixture, Electric Fixture | 21d | 2026-12-14 | 2027-01-03 | 7774 |  | 7 Days Work | 9292134 |
| 7776 | 36900.37000.37100.37400.38100.49500 | **14th Habitable/15th Floor** | 245d | 2026-05-14 | 2027-01-13 |  | start no earlier than 2026-05-14 | 7 Days Work | 9279674 |
| 7777 | 36900.37000.37100.37400.38100.49500.604300 | Post Pour | 7d | 2026-05-14 | 2026-05-20 | 6986FS+15d |  | 7 Days Work | 9284964 |
| 7778 | 36900.37000.37100.37400.38100.49500.604400 | MEP Clearance -1 | 5d | 2026-05-21 | 2026-05-25 | 7777 |  | 7 Days Work | 9284974 |
| 7779 | 36900.37000.37100.37400.38100.49500.604500 | Benchmark | 1d | 2026-05-26 | 2026-05-26 | 7778 |  | 7 Days Work | 9284984 |
| 7780 | 36900.37000.37100.37400.38100.49500.604600 | Temporary Railing | 3d | 2026-05-27 | 2026-05-29 | 7779 |  | 7 Days Work | 9284994 |
| 7781 | 36900.37000.37100.37400.38100.49500.604700 | Blockwork | 10d | 2026-05-30 | 2026-06-08 | 7780 |  | 7 Days Work | 9285004 |
| 7782 | 36900.37000.37100.37400.38100.49500.604800 | MEP Clearance -2 | 10d | 2026-06-09 | 2026-06-18 | 7781 |  | 7 Days Work | 9285014 |
| 7783 | 36900.37000.37100.37400.38100.49500.604900 | Gypsum Plaster | 14d | 2026-06-19 | 2026-07-02 | 7782 |  | 7 Days Work | 9285024 |
| 7784 | 36900.37000.37100.37400.38100.49500.605000 | Kitchen Platform | 3d | 2026-07-03 | 2026-07-05 | 7783 |  | 7 Days Work | 9285034 |
| 7785 | 36900.37000.37100.37400.38100.49500.605100 | Kitchen dado | 7d | 2026-07-06 | 2026-07-12 | 7784 |  | 7 Days Work | 9285044 |
| 7786 | 36900.37000.37100.37400.38100.49500.605200 | Fire Fighting | 5d | 2026-07-13 | 2026-07-17 | 7785 |  | 7 Days Work | 9285054 |
| 7787 | 36900.37000.37100.37400.38100.49500.605300 | Anticapilary | 5d | 2026-07-18 | 2026-07-22 | 7786 |  | 7 Days Work | 9285064 |
| 7788 | 36900.37000.37100.37400.38100.49500.605400 | Stone Laying | 10d | 2026-08-25 | 2026-09-03 | 7828 |  | 7 Days Work | 9285074 |
| 7789 | 36900.37000.37100.37400.38100.49500.605500 | Tiles Laying | 7d | 2026-08-25 | 2026-08-31 | 7828 |  | 7 Days Work | 9285084 |
| 7790 | 36900.37000.37100.37400.38100.49500.605600 | 1st cutting/polishing of stone flooring | 7d | 2026-09-01 | 2026-09-07 | 7789 |  | 7 Days Work | 9285094 |
| 7791 | 36900.37000.37100.37400.38100.49500.605700 | Tiles/Stone skirting | 5d | 2026-09-08 | 2026-09-12 | 7790 |  | 7 Days Work | 9285104 |
| 7792 | 36900.37000.37100.37400.38100.49500.605800 | Protechtion sheet | 1d | 2026-09-13 | 2026-09-13 | 7791 |  | 7 Days Work | 9285114 |
| 7793 | 36900.37000.37100.37400.38100.49500.605900 | Installation of Temporary Door | 1d | 2026-09-14 | 2026-09-14 | 7792 |  | 7 Days Work | 9285124 |
| 7794 | 36900.37000.37100.37400.38100.49500.606000 | Fixing of window tracks | 5d | 2026-09-15 | 2026-09-19 | 7793 |  | 7 Days Work | 9285134 |
| 7795 | 36900.37000.37100.37400.38100.49500.606100 | Wire Pulling | 7d | 2026-09-20 | 2026-09-26 | 7794 |  | 7 Days Work | 9285144 |
| 7796 | 36900.37000.37100.37400.38100.49500.606200 | Gypsum Remaining | 5d | 2026-09-27 | 2026-10-01 | 7795 |  | 7 Days Work | 9285154 |
| 7797 | 36900.37000.37100.37400.38100.49500.606300 | Fixing of windoow shutter | 5d | 2026-10-02 | 2026-10-06 | 7796 |  | 7 Days Work | 9285164 |
| 7798 | 36900.37000.37100.37400.38100.49500.606400 | Putty Works - walls & ceiling | 15d | 2026-10-07 | 2026-10-21 | 7797 |  | 7 Days Work | 9285174 |
| 7799 | 36900.37000.37100.37400.38100.49500.606500 | False Ceiling- Framing | 10d | 2026-10-22 | 2026-10-31 | 7798 |  | 7 Days Work | 9285184 |
| 7800 | 36900.37000.37100.37400.38100.49500.606600 | Pre Hung Door | 3d | 2026-11-01 | 2026-11-03 | 7799 |  | 7 Days Work | 9285194 |
| 7801 | 36900.37000.37100.37400.38100.49500.606700 | Protechtion sheet | 2d | 2026-11-04 | 2026-11-05 | 7800 |  | 7 Days Work | 9285204 |
| 7802 | 36900.37000.37100.37400.38100.49500.606800 | Skirting near door | 2d | 2026-11-06 | 2026-11-07 | 7801 |  | 7 Days Work | 9285214 |
| 7803 | 36900.37000.37100.37400.38100.49500.606900 | Electrical Switch box fixing | 14d | 2026-11-08 | 2026-11-21 | 7802 |  | 7 Days Work | 9285224 |
| 7804 | 36900.37000.37100.37400.38100.49500.607000 | Fire Fighting painting | 5d | 2026-11-22 | 2026-11-26 | 7803 |  | 7 Days Work | 9285234 |
| 7805 | 36900.37000.37100.37400.38100.49500.607100 | Protection of all flooring, door & window hardware | 5d | 2026-11-27 | 2026-12-01 | 7804 |  | 7 Days Work | 9285244 |
| 7806 | 36900.37000.37100.37400.38100.49500.607200 | 1st coat primer- ceiling 1st & walls | 14d | 2026-12-02 | 2026-12-15 | 7805 |  | 7 Days Work | 9285254 |
| 7807 | 36900.37000.37100.37400.38100.49500.607300 | Wooden Flooring | 5d | 2026-12-16 | 2026-12-20 | 7806 |  | 7 Days Work | 9285264 |
| 7808 | 36900.37000.37100.37400.38100.49500.607400 | Removing of Temporary Railing & installation of Glass Railing | 5d | 2026-12-16 | 2026-12-20 | 7806 |  | 7 Days Work | 9285274 |
| 7809 | 36900.37000.37100.37400.38100.49500.607500 | Tile Grouting | 7d | 2026-12-16 | 2026-12-22 | 7806 |  | 7 Days Work | 9285284 |
| 7810 | 36900.37000.37100.37400.38100.49500.607600 | False Ceiling | 5d | 2026-12-23 | 2026-12-27 | 7809 |  | 7 Days Work | 9285294 |
| 7811 | 36900.37000.37100.37400.38100.49500.607700 | 2nd coat of primer | 10d | 2026-12-28 | 2027-01-06 | 7810 |  | 7 Days Work | 9285304 |
| 7812 | 36900.37000.37100.37400.38100.49500.607800 | Final cutting/polishing of stone flooring | 7d | 2027-01-07 | 2027-01-13 | 7811 |  | 7 Days Work | 9285314 |

| ID | WBS | Task | Duration | Start | Finish | Predecessors | Constraint | Calendar | Unique_Task_ID |
| --- | --- | --- | --- | --- | --- | --- | --- | --- | --- |
| 7813 | 36900.37000.37100.37400.38100.49500.61400 | **Toilet** | 237d | 2026-05-21 | 2027-01-12 |  | start no earlier than 2026-05-21 | 7 Days Work | 9279884 |
| 7814 | 36900.37000.37100.37400.38100.49500.61400.977400 | Toilet_MEP Clearance -1 | 7d | 2026-05-21 | 2026-05-27 | 7777 |  | 7 Days Work | 9292144 |
| 7815 | 36900.37000.37100.37400.38100.49500.61400.977500 | Toilet_Level Marking | 1d | 2026-05-28 | 2026-05-28 | 7814 |  | 7 Days Work | 9292154 |
| 7816 | 36900.37000.37100.37400.38100.49500.61400.977600 | Toilet_Chasing work for Electrical conduit & concealed plumbing | 5d | 2026-05-29 | 2026-06-02 | 7815 |  | 7 Days Work | 9292164 |
| 7817 | 36900.37000.37100.37400.38100.49500.61400.977700 | Toilet_Plumbing work 1st fix | 5d | 2026-06-03 | 2026-06-07 | 7816 |  | 7 Days Work | 9292174 |
| 7818 | 36900.37000.37100.37400.38100.49500.61400.977800 | Toilet_Sleeve/Bore Packing | 5d | 2026-06-08 | 2026-06-12 | 7817 |  | 7 Days Work | 9292184 |
| 7819 | 36900.37000.37100.37400.38100.49500.61400.977900 | Toilet_Waterproofing | 10d | 2026-06-13 | 2026-06-22 | 7818 |  | 7 Days Work | 9292194 |
| 7820 | 36900.37000.37100.37400.38100.49500.61400.978000 | Toilet_Screed | 1d | 2026-06-23 | 2026-06-23 | 7819 |  | 7 Days Work | 9292204 |
| 7821 | 36900.37000.37100.37400.38100.49500.61400.978100 | Toilet_Plumbing 2nd fix | 5d | 2026-06-24 | 2026-06-28 | 7820 |  | 7 Days Work | 9292214 |
| 7822 | 36900.37000.37100.37400.38100.49500.61400.978200 | Toilet_Ledge wall | 5d | 2026-06-29 | 2026-07-03 | 7821 |  | 7 Days Work | 9292224 |
| 7823 | 36900.37000.37100.37400.38100.49500.61400.978300 | Toilet_Cement Plaster | 5d | 2026-07-04 | 2026-07-08 | 7822 |  | 7 Days Work | 9292234 |
| 7824 | 36900.37000.37100.37400.38100.49500.61400.978400 | Toilet_Door Frame | 1d | 2026-07-09 | 2026-07-09 | 7823 |  | 7 Days Work | 9292244 |
| 7825 | 36900.37000.37100.37400.38100.49500.61400.978500 | Toilet_Wash basin & Couter | 3d | 2026-07-10 | 2026-07-12 | 7824 |  | 7 Days Work | 9292254 |
| 7826 | 36900.37000.37100.37400.38100.49500.61400.978600 | Toilet_Wall dado | 20d | 2026-07-13 | 2026-08-01 | 7825 |  | 7 Days Work | 9292264 |
| 7827 | 36900.37000.37100.37400.38100.49500.61400.978700 | Toilet_Granite Work-Ledge wall top | 3d | 2026-08-02 | 2026-08-04 | 7826 |  | 7 Days Work | 9292274 |
| 7828 | 36900.37000.37100.37400.38100.49500.61400.978800 | Toilet_Floor Tilling work | 20d | 2026-08-05 | 2026-08-24 | 7827 |  | 7 Days Work | 9292284 |
| 7829 | 36900.37000.37100.37400.38100.49500.61400.978900 | Toilet_1st row of dado | 5d | 2026-08-25 | 2026-08-29 | 7828 |  | 7 Days Work | 9292294 |
| 7830 | 36900.37000.37100.37400.38100.49500.61400.979000 | Toilet_Window Fixing | 14d | 2026-08-30 | 2026-09-12 | 7829 |  | 7 Days Work | 9292304 |
| 7831 | 36900.37000.37100.37400.38100.49500.61400.979100 | Toilet_Services above False ceiling | 21d | 2026-09-13 | 2026-10-03 | 7830 |  | 7 Days Work | 9292314 |
| 7832 | 36900.37000.37100.37400.38100.49500.61400.979200 | Toilet_False Ceiling framing | 12d | 2026-10-04 | 2026-10-15 | 7831 |  | 7 Days Work | 9292324 |
| 7833 | 36900.37000.37100.37400.38100.49500.61400.979300 | Toilet_Door Frame | 5d | 2026-10-16 | 2026-10-20 | 7832 |  | 7 Days Work | 9292334 |
| 7834 | 36900.37000.37100.37400.38100.49500.61400.979400 | Toilet_Epoxy Tile Grouting | 7d | 2026-12-16 | 2026-12-22 | 7809SS |  | 7 Days Work | 9292344 |
| 7835 | 36900.37000.37100.37400.38100.49500.61400.979500 | Toilet_False ceiling board fixing, CP Sanitary Fixture, Electric Fixture | 21d | 2026-12-23 | 2027-01-12 | 7834 |  | 7 Days Work | 9292354 |
| 7836 | 36900.37000.37100.37400.38100.49600 | **15th Habitable/16th Floor** | 245d | 2026-05-23 | 2027-01-22 |  | start no earlier than 2026-05-23 | 7 Days Work | 9279684 |
| 7837 | 36900.37000.37100.37400.38100.49600.607900 | Post Pour | 7d | 2026-05-23 | 2026-05-29 | 6987FS+15d |  | 7 Days Work | 9285324 |
| 7838 | 36900.37000.37100.37400.38100.49600.608000 | MEP Clearance -1 | 5d | 2026-05-30 | 2026-06-03 | 7837 |  | 7 Days Work | 9285334 |
| 7839 | 36900.37000.37100.37400.38100.49600.608100 | Benchmark | 1d | 2026-06-04 | 2026-06-04 | 7838 |  | 7 Days Work | 9285344 |
| 7840 | 36900.37000.37100.37400.38100.49600.608200 | Temporary Railing | 3d | 2026-06-05 | 2026-06-07 | 7839 |  | 7 Days Work | 9285354 |
| 7841 | 36900.37000.37100.37400.38100.49600.608300 | Blockwork | 10d | 2026-06-08 | 2026-06-17 | 7840 |  | 7 Days Work | 9285364 |
| 7842 | 36900.37000.37100.37400.38100.49600.608400 | MEP Clearance -2 | 10d | 2026-06-18 | 2026-06-27 | 7841 |  | 7 Days Work | 9285374 |
| 7843 | 36900.37000.37100.37400.38100.49600.608500 | Gypsum Plaster | 14d | 2026-06-28 | 2026-07-11 | 7842 |  | 7 Days Work | 9285384 |
| 7844 | 36900.37000.37100.37400.38100.49600.608600 | Kitchen Platform | 3d | 2026-07-12 | 2026-07-14 | 7843 |  | 7 Days Work | 9285394 |
| 7845 | 36900.37000.37100.37400.38100.49600.608700 | Kitchen dado | 7d | 2026-07-15 | 2026-07-21 | 7844 |  | 7 Days Work | 9285404 |
| 7846 | 36900.37000.37100.37400.38100.49600.608800 | Fire Fighting | 5d | 2026-07-22 | 2026-07-26 | 7845 |  | 7 Days Work | 9285414 |
| 7847 | 36900.37000.37100.37400.38100.49600.608900 | Anticapilary | 5d | 2026-07-27 | 2026-07-31 | 7846 |  | 7 Days Work | 9285424 |
| 7848 | 36900.37000.37100.37400.38100.49600.609000 | Stone Laying | 10d | 2026-09-03 | 2026-09-12 | 7888 |  | 7 Days Work | 9285434 |
| 7849 | 36900.37000.37100.37400.38100.49600.609100 | Tiles Laying | 7d | 2026-09-03 | 2026-09-09 | 7888 |  | 7 Days Work | 9285444 |
| 7850 | 36900.37000.37100.37400.38100.49600.609200 | 1st cutting/polishing of stone flooring | 7d | 2026-09-10 | 2026-09-16 | 7849 |  | 7 Days Work | 9285454 |
| 7851 | 36900.37000.37100.37400.38100.49600.609300 | Tiles/Stone skirting | 5d | 2026-09-17 | 2026-09-21 | 7850 |  | 7 Days Work | 9285464 |
| 7852 | 36900.37000.37100.37400.38100.49600.609400 | Protechtion sheet | 1d | 2026-09-22 | 2026-09-22 | 7851 |  | 7 Days Work | 9285474 |
| 7853 | 36900.37000.37100.37400.38100.49600.609500 | Installation of Temporary Door | 1d | 2026-09-23 | 2026-09-23 | 7852 |  | 7 Days Work | 9285484 |
| 7854 | 36900.37000.37100.37400.38100.49600.609600 | Fixing of window tracks | 5d | 2026-09-24 | 2026-09-28 | 7853 |  | 7 Days Work | 9285494 |
| 7855 | 36900.37000.37100.37400.38100.49600.609700 | Wire Pulling | 7d | 2026-09-29 | 2026-10-05 | 7854 |  | 7 Days Work | 9285504 |
| 7856 | 36900.37000.37100.37400.38100.49600.609800 | Gypsum Remaining | 5d | 2026-10-06 | 2026-10-10 | 7855 |  | 7 Days Work | 9285514 |
| 7857 | 36900.37000.37100.37400.38100.49600.609900 | Fixing of windoow shutter | 5d | 2026-10-11 | 2026-10-15 | 7856 |  | 7 Days Work | 9285524 |
| 7858 | 36900.37000.37100.37400.38100.49600.610000 | Putty Works - walls & ceiling | 15d | 2026-10-16 | 2026-10-30 | 7857 |  | 7 Days Work | 9285534 |
| 7859 | 36900.37000.37100.37400.38100.49600.610100 | False Ceiling- Framing | 10d | 2026-10-31 | 2026-11-09 | 7858 |  | 7 Days Work | 9285544 |
| 7860 | 36900.37000.37100.37400.38100.49600.610200 | Pre Hung Door | 3d | 2026-11-10 | 2026-11-12 | 7859 |  | 7 Days Work | 9285554 |
| 7861 | 36900.37000.37100.37400.38100.49600.610300 | Protechtion sheet | 2d | 2026-11-13 | 2026-11-14 | 7860 |  | 7 Days Work | 9285564 |
| 7862 | 36900.37000.37100.37400.38100.49600.610400 | Skirting near door | 2d | 2026-11-15 | 2026-11-16 | 7861 |  | 7 Days Work | 9285574 |
| 7863 | 36900.37000.37100.37400.38100.49600.610500 | Electrical Switch box fixing | 14d | 2026-11-17 | 2026-11-30 | 7862 |  | 7 Days Work | 9285584 |
| 7864 | 36900.37000.37100.37400.38100.49600.610600 | Fire Fighting painting | 5d | 2026-12-01 | 2026-12-05 | 7863 |  | 7 Days Work | 9285594 |
| 7865 | 36900.37000.37100.37400.38100.49600.610700 | Protection of all flooring, door & window hardware | 5d | 2026-12-06 | 2026-12-10 | 7864 |  | 7 Days Work | 9285604 |
| 7866 | 36900.37000.37100.37400.38100.49600.610800 | 1st coat primer- ceiling 1st & walls | 14d | 2026-12-11 | 2026-12-24 | 7865 |  | 7 Days Work | 9285614 |
| 7867 | 36900.37000.37100.37400.38100.49600.610900 | Wooden Flooring | 5d | 2026-12-25 | 2026-12-29 | 7866 |  | 7 Days Work | 9285624 |
| 7868 | 36900.37000.37100.37400.38100.49600.611000 | Removing of Temporary Railing & installation of Glass Railing | 5d | 2026-12-25 | 2026-12-29 | 7866 |  | 7 Days Work | 9285634 |
| 7869 | 36900.37000.37100.37400.38100.49600.611100 | Tile Grouting | 7d | 2026-12-25 | 2026-12-31 | 7866 |  | 7 Days Work | 9285644 |
| 7870 | 36900.37000.37100.37400.38100.49600.611200 | False Ceiling | 5d | 2027-01-01 | 2027-01-05 | 7869 |  | 7 Days Work | 9285654 |
| 7871 | 36900.37000.37100.37400.38100.49600.611300 | 2nd coat of primer | 10d | 2027-01-06 | 2027-01-15 | 7870 |  | 7 Days Work | 9285664 |
| 7872 | 36900.37000.37100.37400.38100.49600.611400 | Final cutting/polishing of stone flooring | 7d | 2027-01-16 | 2027-01-22 | 7871 |  | 7 Days Work | 9285674 |

| ID | WBS | Task | Duration | Start | Finish | Predecessors | Constraint | Calendar | Unique_Task_ID |
| --- | --- | --- | --- | --- | --- | --- | --- | --- | --- |
| 7873 | 36900.37000.37100.37400.38100.49600.61200 | **Toilet** | 237d | 2026-05-30 | 2027-01-21 |  | start no earlier than 2026-05-30 | 7 Days Work | 9279894 |
| 7874 | 36900.37000.37100.37400.38100.49600.61200.979600 | Toilet_MEP Clearance -1 | 7d | 2026-05-30 | 2026-06-05 | 7837 |  | 7 Days Work | 9292364 |
| 7875 | 36900.37000.37100.37400.38100.49600.61200.979700 | Toilet_Level Marking | 1d | 2026-06-06 | 2026-06-06 | 7874 |  | 7 Days Work | 9292374 |
| 7876 | 36900.37000.37100.37400.38100.49600.61200.979800 | Toilet_Chasing work for Electrical conduit & concealed plumbing | 5d | 2026-06-07 | 2026-06-11 | 7875 |  | 7 Days Work | 9292384 |
| 7877 | 36900.37000.37100.37400.38100.49600.61200.979900 | Toilet_Plumbing work 1st fix | 5d | 2026-06-12 | 2026-06-16 | 7876 |  | 7 Days Work | 9292394 |
| 7878 | 36900.37000.37100.37400.38100.49600.61200.980000 | Toilet_Sleeve/Bore Packing | 5d | 2026-06-17 | 2026-06-21 | 7877 |  | 7 Days Work | 9292404 |
| 7879 | 36900.37000.37100.37400.38100.49600.61200.980100 | Toilet_Waterproofing | 10d | 2026-06-22 | 2026-07-01 | 7878 |  | 7 Days Work | 9292414 |
| 7880 | 36900.37000.37100.37400.38100.49600.61200.980200 | Toilet_Screed | 1d | 2026-07-02 | 2026-07-02 | 7879 |  | 7 Days Work | 9292424 |
| 7881 | 36900.37000.37100.37400.38100.49600.61200.980300 | Toilet_Plumbing 2nd fix | 5d | 2026-07-03 | 2026-07-07 | 7880 |  | 7 Days Work | 9292434 |
| 7882 | 36900.37000.37100.37400.38100.49600.61200.980400 | Toilet_Ledge wall | 5d | 2026-07-08 | 2026-07-12 | 7881 |  | 7 Days Work | 9292444 |
| 7883 | 36900.37000.37100.37400.38100.49600.61200.980500 | Toilet_Cement Plaster | 5d | 2026-07-13 | 2026-07-17 | 7882 |  | 7 Days Work | 9292454 |
| 7884 | 36900.37000.37100.37400.38100.49600.61200.980600 | Toilet_Door Frame | 1d | 2026-07-18 | 2026-07-18 | 7883 |  | 7 Days Work | 9292464 |
| 7885 | 36900.37000.37100.37400.38100.49600.61200.980700 | Toilet_Wash basin & Couter | 3d | 2026-07-19 | 2026-07-21 | 7884 |  | 7 Days Work | 9292474 |
| 7886 | 36900.37000.37100.37400.38100.49600.61200.980800 | Toilet_Wall dado | 20d | 2026-07-22 | 2026-08-10 | 7885 |  | 7 Days Work | 9292484 |
| 7887 | 36900.37000.37100.37400.38100.49600.61200.980900 | Toilet_Granite Work-Ledge wall top | 3d | 2026-08-11 | 2026-08-13 | 7886 |  | 7 Days Work | 9292494 |
| 7888 | 36900.37000.37100.37400.38100.49600.61200.981000 | Toilet_Floor Tilling work | 20d | 2026-08-14 | 2026-09-02 | 7887 |  | 7 Days Work | 9292504 |
| 7889 | 36900.37000.37100.37400.38100.49600.61200.981100 | Toilet_1st row of dado | 5d | 2026-09-03 | 2026-09-07 | 7888 |  | 7 Days Work | 9292514 |
| 7890 | 36900.37000.37100.37400.38100.49600.61200.981200 | Toilet_Window Fixing | 14d | 2026-09-08 | 2026-09-21 | 7889 |  | 7 Days Work | 9292524 |
| 7891 | 36900.37000.37100.37400.38100.49600.61200.981300 | Toilet_Services above False ceiling | 21d | 2026-09-22 | 2026-10-12 | 7890 |  | 7 Days Work | 9292534 |
| 7892 | 36900.37000.37100.37400.38100.49600.61200.981400 | Toilet_False Ceiling framing | 12d | 2026-10-13 | 2026-10-24 | 7891 |  | 7 Days Work | 9292544 |
| 7893 | 36900.37000.37100.37400.38100.49600.61200.981500 | Toilet_Door Frame | 5d | 2026-10-25 | 2026-10-29 | 7892 |  | 7 Days Work | 9292554 |
| 7894 | 36900.37000.37100.37400.38100.49600.61200.981600 | Toilet_Epoxy Tile Grouting | 7d | 2026-12-25 | 2026-12-31 | 7869SS |  | 7 Days Work | 9292564 |
| 7895 | 36900.37000.37100.37400.38100.49600.61200.981700 | Toilet_False ceiling board fixing, CP Sanitary Fixture, Electric Fixture | 21d | 2027-01-01 | 2027-01-21 | 7894 |  | 7 Days Work | 9292574 |
| 7896 | 36900.37000.37100.37400.38100.49700 | **16th Habitable/17th Floor** | 245d | 2026-06-01 | 2027-01-31 |  | start no earlier than 2026-06-01 | 7 Days Work | 9279694 |
| 7897 | 36900.37000.37100.37400.38100.49700.611500 | Post Pour | 7d | 2026-06-01 | 2026-06-07 | 6988FS+15d |  | 7 Days Work | 9285684 |
| 7898 | 36900.37000.37100.37400.38100.49700.611600 | MEP Clearance -1 | 5d | 2026-06-08 | 2026-06-12 | 7897 |  | 7 Days Work | 9285694 |
| 7899 | 36900.37000.37100.37400.38100.49700.611700 | Benchmark | 1d | 2026-06-13 | 2026-06-13 | 7898 |  | 7 Days Work | 9285704 |
| 7900 | 36900.37000.37100.37400.38100.49700.611800 | Temporary Railing | 3d | 2026-06-14 | 2026-06-16 | 7899 |  | 7 Days Work | 9285714 |
| 7901 | 36900.37000.37100.37400.38100.49700.611900 | Blockwork | 10d | 2026-06-17 | 2026-06-26 | 7900 |  | 7 Days Work | 9285724 |
| 7902 | 36900.37000.37100.37400.38100.49700.612000 | MEP Clearance -2 | 10d | 2026-06-27 | 2026-07-06 | 7901 |  | 7 Days Work | 9285734 |
| 7903 | 36900.37000.37100.37400.38100.49700.612100 | Gypsum Plaster | 14d | 2026-07-07 | 2026-07-20 | 7902 |  | 7 Days Work | 9285744 |
| 7904 | 36900.37000.37100.37400.38100.49700.612200 | Kitchen Platform | 3d | 2026-07-21 | 2026-07-23 | 7903 |  | 7 Days Work | 9285754 |
| 7905 | 36900.37000.37100.37400.38100.49700.612300 | Kitchen dado | 7d | 2026-07-24 | 2026-07-30 | 7904 |  | 7 Days Work | 9285764 |
| 7906 | 36900.37000.37100.37400.38100.49700.612400 | Fire Fighting | 5d | 2026-07-31 | 2026-08-04 | 7905 |  | 7 Days Work | 9285774 |
| 7907 | 36900.37000.37100.37400.38100.49700.612500 | Anticapilary | 5d | 2026-08-05 | 2026-08-09 | 7906 |  | 7 Days Work | 9285784 |
| 7908 | 36900.37000.37100.37400.38100.49700.612600 | Stone Laying | 10d | 2026-09-12 | 2026-09-21 | 7948 |  | 7 Days Work | 9285794 |
| 7909 | 36900.37000.37100.37400.38100.49700.612700 | Tiles Laying | 7d | 2026-09-12 | 2026-09-18 | 7948 |  | 7 Days Work | 9285804 |
| 7910 | 36900.37000.37100.37400.38100.49700.612800 | 1st cutting/polishing of stone flooring | 7d | 2026-09-19 | 2026-09-25 | 7909 |  | 7 Days Work | 9285814 |
| 7911 | 36900.37000.37100.37400.38100.49700.612900 | Tiles/Stone skirting | 5d | 2026-09-26 | 2026-09-30 | 7910 |  | 7 Days Work | 9285824 |
| 7912 | 36900.37000.37100.37400.38100.49700.613000 | Protechtion sheet | 1d | 2026-10-01 | 2026-10-01 | 7911 |  | 7 Days Work | 9285834 |
| 7913 | 36900.37000.37100.37400.38100.49700.613100 | Installation of Temporary Door | 1d | 2026-10-02 | 2026-10-02 | 7912 |  | 7 Days Work | 9285844 |
| 7914 | 36900.37000.37100.37400.38100.49700.613200 | Fixing of window tracks | 5d | 2026-10-03 | 2026-10-07 | 7913 |  | 7 Days Work | 9285854 |
| 7915 | 36900.37000.37100.37400.38100.49700.613300 | Wire Pulling | 7d | 2026-10-08 | 2026-10-14 | 7914 |  | 7 Days Work | 9285864 |
| 7916 | 36900.37000.37100.37400.38100.49700.613400 | Gypsum Remaining | 5d | 2026-10-15 | 2026-10-19 | 7915 |  | 7 Days Work | 9285874 |
| 7917 | 36900.37000.37100.37400.38100.49700.613500 | Fixing of windoow shutter | 5d | 2026-10-20 | 2026-10-24 | 7916 |  | 7 Days Work | 9285884 |
| 7918 | 36900.37000.37100.37400.38100.49700.613600 | Putty Works - walls & ceiling | 15d | 2026-10-25 | 2026-11-08 | 7917 |  | 7 Days Work | 9285894 |
| 7919 | 36900.37000.37100.37400.38100.49700.613700 | False Ceiling- Framing | 10d | 2026-11-09 | 2026-11-18 | 7918 |  | 7 Days Work | 9285904 |
| 7920 | 36900.37000.37100.37400.38100.49700.613800 | Pre Hung Door | 3d | 2026-11-19 | 2026-11-21 | 7919 |  | 7 Days Work | 9285914 |
| 7921 | 36900.37000.37100.37400.38100.49700.613900 | Protechtion sheet | 2d | 2026-11-22 | 2026-11-23 | 7920 |  | 7 Days Work | 9285924 |
| 7922 | 36900.37000.37100.37400.38100.49700.614000 | Skirting near door | 2d | 2026-11-24 | 2026-11-25 | 7921 |  | 7 Days Work | 9285934 |
| 7923 | 36900.37000.37100.37400.38100.49700.614100 | Electrical Switch box fixing | 14d | 2026-11-26 | 2026-12-09 | 7922 |  | 7 Days Work | 9285944 |
| 7924 | 36900.37000.37100.37400.38100.49700.614200 | Fire Fighting painting | 5d | 2026-12-10 | 2026-12-14 | 7923 |  | 7 Days Work | 9285954 |
| 7925 | 36900.37000.37100.37400.38100.49700.614300 | Protection of all flooring, door & window hardware | 5d | 2026-12-15 | 2026-12-19 | 7924 |  | 7 Days Work | 9285964 |
| 7926 | 36900.37000.37100.37400.38100.49700.614400 | 1st coat primer- ceiling 1st & walls | 14d | 2026-12-20 | 2027-01-02 | 7925 |  | 7 Days Work | 9285974 |
| 7927 | 36900.37000.37100.37400.38100.49700.614500 | Wooden Flooring | 5d | 2027-01-03 | 2027-01-07 | 7926 |  | 7 Days Work | 9285984 |
| 7928 | 36900.37000.37100.37400.38100.49700.614600 | Removing of Temporary Railing & installation of Glass Railing | 5d | 2027-01-03 | 2027-01-07 | 7926 |  | 7 Days Work | 9285994 |
| 7929 | 36900.37000.37100.37400.38100.49700.614700 | Tile Grouting | 7d | 2027-01-03 | 2027-01-09 | 7926 |  | 7 Days Work | 9286004 |
| 7930 | 36900.37000.37100.37400.38100.49700.614800 | False Ceiling | 5d | 2027-01-10 | 2027-01-14 | 7929 |  | 7 Days Work | 9286014 |
| 7931 | 36900.37000.37100.37400.38100.49700.614900 | 2nd coat of primer | 10d | 2027-01-15 | 2027-01-24 | 7930 |  | 7 Days Work | 9286024 |
| 7932 | 36900.37000.37100.37400.38100.49700.615000 | Final cutting/polishing of stone flooring | 7d | 2027-01-25 | 2027-01-31 | 7931 |  | 7 Days Work | 9286034 |

| ID | WBS | Task | Duration | Start | Finish | Predecessors | Constraint | Calendar | Unique_Task_ID |
| --- | --- | --- | --- | --- | --- | --- | --- | --- | --- |
| 7933 | 36900.37000.37100.37400.38100.49700.61100 | **Toilet** | 237d | 2026-06-08 | 2027-01-30 |  | start no earlier than 2026-06-08 | 7 Days Work | 9279904 |
| 7934 | 36900.37000.37100.37400.38100.49700.61100.981800 | Toilet_MEP Clearance -1 | 7d | 2026-06-08 | 2026-06-14 | 7897 |  | 7 Days Work | 9292584 |
| 7935 | 36900.37000.37100.37400.38100.49700.61100.981900 | Toilet_Level Marking | 1d | 2026-06-15 | 2026-06-15 | 7934 |  | 7 Days Work | 9292594 |
| 7936 | 36900.37000.37100.37400.38100.49700.61100.982000 | Toilet_Chasing work for Electrical conduit & concealed plumbing | 5d | 2026-06-16 | 2026-06-20 | 7935 |  | 7 Days Work | 9292604 |
| 7937 | 36900.37000.37100.37400.38100.49700.61100.982100 | Toilet_Plumbing work 1st fix | 5d | 2026-06-21 | 2026-06-25 | 7936 |  | 7 Days Work | 9292614 |
| 7938 | 36900.37000.37100.37400.38100.49700.61100.982200 | Toilet_Sleeve/Bore Packing | 5d | 2026-06-26 | 2026-06-30 | 7937 |  | 7 Days Work | 9292624 |
| 7939 | 36900.37000.37100.37400.38100.49700.61100.982300 | Toilet_Waterproofing | 10d | 2026-07-01 | 2026-07-10 | 7938 |  | 7 Days Work | 9292634 |
| 7940 | 36900.37000.37100.37400.38100.49700.61100.982400 | Toilet_Screed | 1d | 2026-07-11 | 2026-07-11 | 7939 |  | 7 Days Work | 9292644 |
| 7941 | 36900.37000.37100.37400.38100.49700.61100.982500 | Toilet_Plumbing 2nd fix | 5d | 2026-07-12 | 2026-07-16 | 7940 |  | 7 Days Work | 9292654 |
| 7942 | 36900.37000.37100.37400.38100.49700.61100.982600 | Toilet_Ledge wall | 5d | 2026-07-17 | 2026-07-21 | 7941 |  | 7 Days Work | 9292664 |
| 7943 | 36900.37000.37100.37400.38100.49700.61100.982700 | Toilet_Cement Plaster | 5d | 2026-07-22 | 2026-07-26 | 7942 |  | 7 Days Work | 9292674 |
| 7944 | 36900.37000.37100.37400.38100.49700.61100.982800 | Toilet_Door Frame | 1d | 2026-07-27 | 2026-07-27 | 7943 |  | 7 Days Work | 9292684 |
| 7945 | 36900.37000.37100.37400.38100.49700.61100.982900 | Toilet_Wash basin & Couter | 3d | 2026-07-28 | 2026-07-30 | 7944 |  | 7 Days Work | 9292694 |
| 7946 | 36900.37000.37100.37400.38100.49700.61100.983000 | Toilet_Wall dado | 20d | 2026-07-31 | 2026-08-19 | 7945 |  | 7 Days Work | 9292704 |
| 7947 | 36900.37000.37100.37400.38100.49700.61100.983100 | Toilet_Granite Work-Ledge wall top | 3d | 2026-08-20 | 2026-08-22 | 7946 |  | 7 Days Work | 9292714 |
| 7948 | 36900.37000.37100.37400.38100.49700.61100.983200 | Toilet_Floor Tilling work | 20d | 2026-08-23 | 2026-09-11 | 7947 |  | 7 Days Work | 9292724 |
| 7949 | 36900.37000.37100.37400.38100.49700.61100.983300 | Toilet_1st row of dado | 5d | 2026-09-12 | 2026-09-16 | 7948 |  | 7 Days Work | 9292734 |
| 7950 | 36900.37000.37100.37400.38100.49700.61100.983400 | Toilet_Window Fixing | 14d | 2026-09-17 | 2026-09-30 | 7949 |  | 7 Days Work | 9292744 |
| 7951 | 36900.37000.37100.37400.38100.49700.61100.983500 | Toilet_Services above False ceiling | 21d | 2026-10-01 | 2026-10-21 | 7950 |  | 7 Days Work | 9292754 |
| 7952 | 36900.37000.37100.37400.38100.49700.61100.983600 | Toilet_False Ceiling framing | 12d | 2026-10-22 | 2026-11-02 | 7951 |  | 7 Days Work | 9292764 |
| 7953 | 36900.37000.37100.37400.38100.49700.61100.983700 | Toilet_Door Frame | 5d | 2026-11-03 | 2026-11-07 | 7952 |  | 7 Days Work | 9292774 |
| 7954 | 36900.37000.37100.37400.38100.49700.61100.983800 | Toilet_Epoxy Tile Grouting | 7d | 2027-01-03 | 2027-01-09 | 7929SS |  | 7 Days Work | 9292784 |
| 7955 | 36900.37000.37100.37400.38100.49700.61100.983900 | Toilet_False ceiling board fixing, CP Sanitary Fixture, Electric Fixture | 21d | 2027-01-10 | 2027-01-30 | 7954 |  | 7 Days Work | 9292794 |
| 7956 | 36900.37000.37100.37400.38100.49800 | **17th Habitable/18th Floor** | 245d | 2026-06-13 | 2027-02-12 |  | start no earlier than 2026-06-13 | 7 Days Work | 9279704 |
| 7957 | 36900.37000.37100.37400.38100.49800.615100 | Post Pour | 7d | 2026-06-13 | 2026-06-19 | 6989FS+15d |  | 7 Days Work | 9286044 |
| 7958 | 36900.37000.37100.37400.38100.49800.615200 | MEP Clearance -1 | 5d | 2026-06-20 | 2026-06-24 | 7957 |  | 7 Days Work | 9286054 |
| 7959 | 36900.37000.37100.37400.38100.49800.615300 | Benchmark | 1d | 2026-06-25 | 2026-06-25 | 7958 |  | 7 Days Work | 9286064 |
| 7960 | 36900.37000.37100.37400.38100.49800.615400 | Temporary Railing | 3d | 2026-06-26 | 2026-06-28 | 7959 |  | 7 Days Work | 9286074 |
| 7961 | 36900.37000.37100.37400.38100.49800.615500 | Blockwork | 10d | 2026-06-29 | 2026-07-08 | 7960 |  | 7 Days Work | 9286084 |
| 7962 | 36900.37000.37100.37400.38100.49800.615600 | MEP Clearance -2 | 10d | 2026-07-09 | 2026-07-18 | 7961 |  | 7 Days Work | 9286094 |
| 7963 | 36900.37000.37100.37400.38100.49800.615700 | Gypsum Plaster | 14d | 2026-07-19 | 2026-08-01 | 7962 |  | 7 Days Work | 9286104 |
| 7964 | 36900.37000.37100.37400.38100.49800.615800 | Kitchen Platform | 3d | 2026-08-02 | 2026-08-04 | 7963 |  | 7 Days Work | 9286114 |
| 7965 | 36900.37000.37100.37400.38100.49800.615900 | Kitchen dado | 7d | 2026-08-05 | 2026-08-11 | 7964 |  | 7 Days Work | 9286124 |
| 7966 | 36900.37000.37100.37400.38100.49800.616000 | Fire Fighting | 5d | 2026-08-12 | 2026-08-16 | 7965 |  | 7 Days Work | 9286134 |
| 7967 | 36900.37000.37100.37400.38100.49800.616100 | Anticapilary | 5d | 2026-08-17 | 2026-08-21 | 7966 |  | 7 Days Work | 9286144 |
| 7968 | 36900.37000.37100.37400.38100.49800.616200 | Stone Laying | 10d | 2026-09-24 | 2026-10-03 | 8008 |  | 7 Days Work | 9286154 |
| 7969 | 36900.37000.37100.37400.38100.49800.616300 | Tiles Laying | 7d | 2026-09-24 | 2026-09-30 | 8008 |  | 7 Days Work | 9286164 |
| 7970 | 36900.37000.37100.37400.38100.49800.616400 | 1st cutting/polishing of stone flooring | 7d | 2026-10-01 | 2026-10-07 | 7969 |  | 7 Days Work | 9286174 |
| 7971 | 36900.37000.37100.37400.38100.49800.616500 | Tiles/Stone skirting | 5d | 2026-10-08 | 2026-10-12 | 7970 |  | 7 Days Work | 9286184 |
| 7972 | 36900.37000.37100.37400.38100.49800.616600 | Protechtion sheet | 1d | 2026-10-13 | 2026-10-13 | 7971 |  | 7 Days Work | 9286194 |
| 7973 | 36900.37000.37100.37400.38100.49800.616700 | Installation of Temporary Door | 1d | 2026-10-14 | 2026-10-14 | 7972 |  | 7 Days Work | 9286204 |
| 7974 | 36900.37000.37100.37400.38100.49800.616800 | Fixing of window tracks | 5d | 2026-10-15 | 2026-10-19 | 7973 |  | 7 Days Work | 9286214 |
| 7975 | 36900.37000.37100.37400.38100.49800.616900 | Wire Pulling | 7d | 2026-10-20 | 2026-10-26 | 7974 |  | 7 Days Work | 9286224 |
| 7976 | 36900.37000.37100.37400.38100.49800.617000 | Gypsum Remaining | 5d | 2026-10-27 | 2026-10-31 | 7975 |  | 7 Days Work | 9286234 |
| 7977 | 36900.37000.37100.37400.38100.49800.617100 | Fixing of windoow shutter | 5d | 2026-11-01 | 2026-11-05 | 7976 |  | 7 Days Work | 9286244 |
| 7978 | 36900.37000.37100.37400.38100.49800.617200 | Putty Works - walls & ceiling | 15d | 2026-11-06 | 2026-11-20 | 7977 |  | 7 Days Work | 9286254 |
| 7979 | 36900.37000.37100.37400.38100.49800.617300 | False Ceiling- Framing | 10d | 2026-11-21 | 2026-11-30 | 7978 |  | 7 Days Work | 9286264 |
| 7980 | 36900.37000.37100.37400.38100.49800.617400 | Pre Hung Door | 3d | 2026-12-01 | 2026-12-03 | 7979 |  | 7 Days Work | 9286274 |
| 7981 | 36900.37000.37100.37400.38100.49800.617500 | Protechtion sheet | 2d | 2026-12-04 | 2026-12-05 | 7980 |  | 7 Days Work | 9286284 |
| 7982 | 36900.37000.37100.37400.38100.49800.617600 | Skirting near door | 2d | 2026-12-06 | 2026-12-07 | 7981 |  | 7 Days Work | 9286294 |
| 7983 | 36900.37000.37100.37400.38100.49800.617700 | Electrical Switch box fixing | 14d | 2026-12-08 | 2026-12-21 | 7982 |  | 7 Days Work | 9286304 |
| 7984 | 36900.37000.37100.37400.38100.49800.617800 | Fire Fighting painting | 5d | 2026-12-22 | 2026-12-26 | 7983 |  | 7 Days Work | 9286314 |
| 7985 | 36900.37000.37100.37400.38100.49800.617900 | Protection of all flooring, door & window hardware | 5d | 2026-12-27 | 2026-12-31 | 7984 |  | 7 Days Work | 9286324 |
| 7986 | 36900.37000.37100.37400.38100.49800.618000 | 1st coat primer- ceiling 1st & walls | 14d | 2027-01-01 | 2027-01-14 | 7985 |  | 7 Days Work | 9286334 |
| 7987 | 36900.37000.37100.37400.38100.49800.618100 | Wooden Flooring | 5d | 2027-01-15 | 2027-01-19 | 7986 |  | 7 Days Work | 9286344 |
| 7988 | 36900.37000.37100.37400.38100.49800.618200 | Removing of Temporary Railing & installation of Glass Railing | 5d | 2027-01-15 | 2027-01-19 | 7986 |  | 7 Days Work | 9286354 |
| 7989 | 36900.37000.37100.37400.38100.49800.618300 | Tile Grouting | 7d | 2027-01-15 | 2027-01-21 | 7986 |  | 7 Days Work | 9286364 |
| 7990 | 36900.37000.37100.37400.38100.49800.618400 | False Ceiling | 5d | 2027-01-22 | 2027-01-26 | 7989 |  | 7 Days Work | 9286374 |
| 7991 | 36900.37000.37100.37400.38100.49800.618500 | 2nd coat of primer | 10d | 2027-01-27 | 2027-02-05 | 7990 |  | 7 Days Work | 9286384 |
| 7992 | 36900.37000.37100.37400.38100.49800.618600 | Final cutting/polishing of stone flooring | 7d | 2027-02-06 | 2027-02-12 | 7991 |  | 7 Days Work | 9286394 |

| ID | WBS | Task | Duration | Start | Finish | Predecessors | Constraint | Calendar | Unique_Task_ID |
| --- | --- | --- | --- | --- | --- | --- | --- | --- | --- |
| 7993 | 36900.37000.37100.37400.38100.49800.61000 | **Toilet** | 237d | 2026-06-20 | 2027-02-11 |  | start no earlier than 2026-06-20 | 7 Days Work | 9279914 |
| 7994 | 36900.37000.37100.37400.38100.49800.61000.984000 | Toilet_MEP Clearance -1 | 7d | 2026-06-20 | 2026-06-26 | 7957 |  | 7 Days Work | 9292804 |
| 7995 | 36900.37000.37100.37400.38100.49800.61000.984100 | Toilet_Level Marking | 1d | 2026-06-27 | 2026-06-27 | 7994 |  | 7 Days Work | 9292814 |
| 7996 | 36900.37000.37100.37400.38100.49800.61000.984200 | Toilet_Chasing work for Electrical conduit & concealed plumbing | 5d | 2026-06-28 | 2026-07-02 | 7995 |  | 7 Days Work | 9292824 |
| 7997 | 36900.37000.37100.37400.38100.49800.61000.984300 | Toilet_Plumbing work 1st fix | 5d | 2026-07-03 | 2026-07-07 | 7996 |  | 7 Days Work | 9292834 |
| 7998 | 36900.37000.37100.37400.38100.49800.61000.984400 | Toilet_Sleeve/Bore Packing | 5d | 2026-07-08 | 2026-07-12 | 7997 |  | 7 Days Work | 9292844 |
| 7999 | 36900.37000.37100.37400.38100.49800.61000.984500 | Toilet_Waterproofing | 10d | 2026-07-13 | 2026-07-22 | 7998 |  | 7 Days Work | 9292854 |
| 8000 | 36900.37000.37100.37400.38100.49800.61000.984600 | Toilet_Screed | 1d | 2026-07-23 | 2026-07-23 | 7999 |  | 7 Days Work | 9292864 |
| 8001 | 36900.37000.37100.37400.38100.49800.61000.984700 | Toilet_Plumbing 2nd fix | 5d | 2026-07-24 | 2026-07-28 | 8000 |  | 7 Days Work | 9292874 |
| 8002 | 36900.37000.37100.37400.38100.49800.61000.984800 | Toilet_Ledge wall | 5d | 2026-07-29 | 2026-08-02 | 8001 |  | 7 Days Work | 9292884 |
| 8003 | 36900.37000.37100.37400.38100.49800.61000.984900 | Toilet_Cement Plaster | 5d | 2026-08-03 | 2026-08-07 | 8002 |  | 7 Days Work | 9292894 |
| 8004 | 36900.37000.37100.37400.38100.49800.61000.985000 | Toilet_Door Frame | 1d | 2026-08-08 | 2026-08-08 | 8003 |  | 7 Days Work | 9292904 |
| 8005 | 36900.37000.37100.37400.38100.49800.61000.985100 | Toilet_Wash basin & Couter | 3d | 2026-08-09 | 2026-08-11 | 8004 |  | 7 Days Work | 9292914 |
| 8006 | 36900.37000.37100.37400.38100.49800.61000.985200 | Toilet_Wall dado | 20d | 2026-08-12 | 2026-08-31 | 8005 |  | 7 Days Work | 9292924 |
| 8007 | 36900.37000.37100.37400.38100.49800.61000.985300 | Toilet_Granite Work-Ledge wall top | 3d | 2026-09-01 | 2026-09-03 | 8006 |  | 7 Days Work | 9292934 |
| 8008 | 36900.37000.37100.37400.38100.49800.61000.985400 | Toilet_Floor Tilling work | 20d | 2026-09-04 | 2026-09-23 | 8007 |  | 7 Days Work | 9292944 |
| 8009 | 36900.37000.37100.37400.38100.49800.61000.985500 | Toilet_1st row of dado | 5d | 2026-09-24 | 2026-09-28 | 8008 |  | 7 Days Work | 9292954 |
| 8010 | 36900.37000.37100.37400.38100.49800.61000.985600 | Toilet_Window Fixing | 14d | 2026-09-29 | 2026-10-12 | 8009 |  | 7 Days Work | 9292964 |
| 8011 | 36900.37000.37100.37400.38100.49800.61000.985700 | Toilet_Services above False ceiling | 21d | 2026-10-13 | 2026-11-02 | 8010 |  | 7 Days Work | 9292974 |
| 8012 | 36900.37000.37100.37400.38100.49800.61000.985800 | Toilet_False Ceiling framing | 12d | 2026-11-03 | 2026-11-14 | 8011 |  | 7 Days Work | 9292984 |
| 8013 | 36900.37000.37100.37400.38100.49800.61000.985900 | Toilet_Door Frame | 5d | 2026-11-15 | 2026-11-19 | 8012 |  | 7 Days Work | 9292994 |
| 8014 | 36900.37000.37100.37400.38100.49800.61000.986000 | Toilet_Epoxy Tile Grouting | 7d | 2027-01-15 | 2027-01-21 | 7989SS |  | 7 Days Work | 9293004 |
| 8015 | 36900.37000.37100.37400.38100.49800.61000.986100 | Toilet_False ceiling board fixing, CP Sanitary Fixture, Electric Fixture | 21d | 2027-01-22 | 2027-02-11 | 8014 |  | 7 Days Work | 9293014 |
| 8016 | 36900.37000.37100.37400.38100.49900 | **18th Habitable/19th Floor** | 245d | 2026-06-22 | 2027-02-21 |  | start no earlier than 2026-06-22 | 7 Days Work | 9279714 |
| 8017 | 36900.37000.37100.37400.38100.49900.618700 | Post Pour | 7d | 2026-06-22 | 2026-06-28 | 6990FS+15d |  | 7 Days Work | 9286404 |
| 8018 | 36900.37000.37100.37400.38100.49900.618800 | MEP Clearance -1 | 5d | 2026-06-29 | 2026-07-03 | 8017 |  | 7 Days Work | 9286414 |
| 8019 | 36900.37000.37100.37400.38100.49900.618900 | Benchmark | 1d | 2026-07-04 | 2026-07-04 | 8018 |  | 7 Days Work | 9286424 |
| 8020 | 36900.37000.37100.37400.38100.49900.619000 | Temporary Railing | 3d | 2026-07-05 | 2026-07-07 | 8019 |  | 7 Days Work | 9286434 |
| 8021 | 36900.37000.37100.37400.38100.49900.619100 | Blockwork | 10d | 2026-07-08 | 2026-07-17 | 8020 |  | 7 Days Work | 9286444 |
| 8022 | 36900.37000.37100.37400.38100.49900.619200 | MEP Clearance -2 | 10d | 2026-07-18 | 2026-07-27 | 8021 |  | 7 Days Work | 9286454 |
| 8023 | 36900.37000.37100.37400.38100.49900.619300 | Gypsum Plaster | 14d | 2026-07-28 | 2026-08-10 | 8022 |  | 7 Days Work | 9286464 |
| 8024 | 36900.37000.37100.37400.38100.49900.619400 | Kitchen Platform | 3d | 2026-08-11 | 2026-08-13 | 8023 |  | 7 Days Work | 9286474 |
| 8025 | 36900.37000.37100.37400.38100.49900.619500 | Kitchen dado | 7d | 2026-08-14 | 2026-08-20 | 8024 |  | 7 Days Work | 9286484 |
| 8026 | 36900.37000.37100.37400.38100.49900.619600 | Fire Fighting | 5d | 2026-08-21 | 2026-08-25 | 8025 |  | 7 Days Work | 9286494 |
| 8027 | 36900.37000.37100.37400.38100.49900.619700 | Anticapilary | 5d | 2026-08-26 | 2026-08-30 | 8026 |  | 7 Days Work | 9286504 |
| 8028 | 36900.37000.37100.37400.38100.49900.619800 | Stone Laying | 10d | 2026-10-03 | 2026-10-12 | 8068 |  | 7 Days Work | 9286514 |
| 8029 | 36900.37000.37100.37400.38100.49900.619900 | Tiles Laying | 7d | 2026-10-03 | 2026-10-09 | 8068 |  | 7 Days Work | 9286524 |
| 8030 | 36900.37000.37100.37400.38100.49900.620000 | 1st cutting/polishing of stone flooring | 7d | 2026-10-10 | 2026-10-16 | 8029 |  | 7 Days Work | 9286534 |
| 8031 | 36900.37000.37100.37400.38100.49900.620100 | Tiles/Stone skirting | 5d | 2026-10-17 | 2026-10-21 | 8030 |  | 7 Days Work | 9286544 |
| 8032 | 36900.37000.37100.37400.38100.49900.620200 | Protechtion sheet | 1d | 2026-10-22 | 2026-10-22 | 8031 |  | 7 Days Work | 9286554 |
| 8033 | 36900.37000.37100.37400.38100.49900.620300 | Installation of Temporary Door | 1d | 2026-10-23 | 2026-10-23 | 8032 |  | 7 Days Work | 9286564 |
| 8034 | 36900.37000.37100.37400.38100.49900.620400 | Fixing of window tracks | 5d | 2026-10-24 | 2026-10-28 | 8033 |  | 7 Days Work | 9286574 |
| 8035 | 36900.37000.37100.37400.38100.49900.620500 | Wire Pulling | 7d | 2026-10-29 | 2026-11-04 | 8034 |  | 7 Days Work | 9286584 |
| 8036 | 36900.37000.37100.37400.38100.49900.620600 | Gypsum Remaining | 5d | 2026-11-05 | 2026-11-09 | 8035 |  | 7 Days Work | 9286594 |
| 8037 | 36900.37000.37100.37400.38100.49900.620700 | Fixing of windoow shutter | 5d | 2026-11-10 | 2026-11-14 | 8036 |  | 7 Days Work | 9286604 |
| 8038 | 36900.37000.37100.37400.38100.49900.620800 | Putty Works - walls & ceiling | 15d | 2026-11-15 | 2026-11-29 | 8037 |  | 7 Days Work | 9286614 |
| 8039 | 36900.37000.37100.37400.38100.49900.620900 | False Ceiling- Framing | 10d | 2026-11-30 | 2026-12-09 | 8038 |  | 7 Days Work | 9286624 |
| 8040 | 36900.37000.37100.37400.38100.49900.621000 | Pre Hung Door | 3d | 2026-12-10 | 2026-12-12 | 8039 |  | 7 Days Work | 9286634 |
| 8041 | 36900.37000.37100.37400.38100.49900.621100 | Protechtion sheet | 2d | 2026-12-13 | 2026-12-14 | 8040 |  | 7 Days Work | 9286644 |
| 8042 | 36900.37000.37100.37400.38100.49900.621200 | Skirting near door | 2d | 2026-12-15 | 2026-12-16 | 8041 |  | 7 Days Work | 9286654 |
| 8043 | 36900.37000.37100.37400.38100.49900.621300 | Electrical Switch box fixing | 14d | 2026-12-17 | 2026-12-30 | 8042 |  | 7 Days Work | 9286664 |
| 8044 | 36900.37000.37100.37400.38100.49900.621400 | Fire Fighting painting | 5d | 2026-12-31 | 2027-01-04 | 8043 |  | 7 Days Work | 9286674 |
| 8045 | 36900.37000.37100.37400.38100.49900.621500 | Protection of all flooring, door & window hardware | 5d | 2027-01-05 | 2027-01-09 | 8044 |  | 7 Days Work | 9286684 |
| 8046 | 36900.37000.37100.37400.38100.49900.621600 | 1st coat primer- ceiling 1st & walls | 14d | 2027-01-10 | 2027-01-23 | 8045 |  | 7 Days Work | 9286694 |
| 8047 | 36900.37000.37100.37400.38100.49900.621700 | Wooden Flooring | 5d | 2027-01-24 | 2027-01-28 | 8046 |  | 7 Days Work | 9286704 |
| 8048 | 36900.37000.37100.37400.38100.49900.621800 | Removing of Temporary Railing & installation of Glass Railing | 5d | 2027-01-24 | 2027-01-28 | 8046 |  | 7 Days Work | 9286714 |
| 8049 | 36900.37000.37100.37400.38100.49900.621900 | Tile Grouting | 7d | 2027-01-24 | 2027-01-30 | 8046 |  | 7 Days Work | 9286724 |
| 8050 | 36900.37000.37100.37400.38100.49900.622000 | False Ceiling | 5d | 2027-01-31 | 2027-02-04 | 8049 |  | 7 Days Work | 9286734 |
| 8051 | 36900.37000.37100.37400.38100.49900.622100 | 2nd coat of primer | 10d | 2027-02-05 | 2027-02-14 | 8050 |  | 7 Days Work | 9286744 |
| 8052 | 36900.37000.37100.37400.38100.49900.622200 | Final cutting/polishing of stone flooring | 7d | 2027-02-15 | 2027-02-21 | 8051 |  | 7 Days Work | 9286754 |

| ID | WBS | Task | Duration | Start | Finish | Predecessors | Constraint | Calendar | Unique_Task_ID |
| --- | --- | --- | --- | --- | --- | --- | --- | --- | --- |
| 8053 | 36900.37000.37100.37400.38100.49900.60900 | **Toilet** | 237d | 2026-06-29 | 2027-02-20 |  | start no earlier than 2026-06-29 | 7 Days Work | 9279924 |
| 8054 | 36900.37000.37100.37400.38100.49900.60900.986200 | Toilet_MEP Clearance -1 | 7d | 2026-06-29 | 2026-07-05 | 8017 |  | 7 Days Work | 9293024 |
| 8055 | 36900.37000.37100.37400.38100.49900.60900.986300 | Toilet_Level Marking | 1d | 2026-07-06 | 2026-07-06 | 8054 |  | 7 Days Work | 9293034 |
| 8056 | 36900.37000.37100.37400.38100.49900.60900.986400 | Toilet_Chasing work for Electrical conduit & concealed plumbing | 5d | 2026-07-07 | 2026-07-11 | 8055 |  | 7 Days Work | 9293044 |
| 8057 | 36900.37000.37100.37400.38100.49900.60900.986500 | Toilet_Plumbing work 1st fix | 5d | 2026-07-12 | 2026-07-16 | 8056 |  | 7 Days Work | 9293054 |
| 8058 | 36900.37000.37100.37400.38100.49900.60900.986600 | Toilet_Sleeve/Bore Packing | 5d | 2026-07-17 | 2026-07-21 | 8057 |  | 7 Days Work | 9293064 |
| 8059 | 36900.37000.37100.37400.38100.49900.60900.986700 | Toilet_Waterproofing | 10d | 2026-07-22 | 2026-07-31 | 8058 |  | 7 Days Work | 9293074 |
| 8060 | 36900.37000.37100.37400.38100.49900.60900.986800 | Toilet_Screed | 1d | 2026-08-01 | 2026-08-01 | 8059 |  | 7 Days Work | 9293084 |
| 8061 | 36900.37000.37100.37400.38100.49900.60900.986900 | Toilet_Plumbing 2nd fix | 5d | 2026-08-02 | 2026-08-06 | 8060 |  | 7 Days Work | 9293094 |
| 8062 | 36900.37000.37100.37400.38100.49900.60900.987000 | Toilet_Ledge wall | 5d | 2026-08-07 | 2026-08-11 | 8061 |  | 7 Days Work | 9293104 |
| 8063 | 36900.37000.37100.37400.38100.49900.60900.987100 | Toilet_Cement Plaster | 5d | 2026-08-12 | 2026-08-16 | 8062 |  | 7 Days Work | 9293114 |
| 8064 | 36900.37000.37100.37400.38100.49900.60900.987200 | Toilet_Door Frame | 1d | 2026-08-17 | 2026-08-17 | 8063 |  | 7 Days Work | 9293124 |
| 8065 | 36900.37000.37100.37400.38100.49900.60900.987300 | Toilet_Wash basin & Couter | 3d | 2026-08-18 | 2026-08-20 | 8064 |  | 7 Days Work | 9293134 |
| 8066 | 36900.37000.37100.37400.38100.49900.60900.987400 | Toilet_Wall dado | 20d | 2026-08-21 | 2026-09-09 | 8065 |  | 7 Days Work | 9293144 |
| 8067 | 36900.37000.37100.37400.38100.49900.60900.987500 | Toilet_Granite Work-Ledge wall top | 3d | 2026-09-10 | 2026-09-12 | 8066 |  | 7 Days Work | 9293154 |
| 8068 | 36900.37000.37100.37400.38100.49900.60900.987600 | Toilet_Floor Tilling work | 20d | 2026-09-13 | 2026-10-02 | 8067 |  | 7 Days Work | 9293164 |
| 8069 | 36900.37000.37100.37400.38100.49900.60900.987700 | Toilet_1st row of dado | 5d | 2026-10-03 | 2026-10-07 | 8068 |  | 7 Days Work | 9293174 |
| 8070 | 36900.37000.37100.37400.38100.49900.60900.987800 | Toilet_Window Fixing | 14d | 2026-10-08 | 2026-10-21 | 8069 |  | 7 Days Work | 9293184 |
| 8071 | 36900.37000.37100.37400.38100.49900.60900.987900 | Toilet_Services above False ceiling | 21d | 2026-10-22 | 2026-11-11 | 8070 |  | 7 Days Work | 9293194 |
| 8072 | 36900.37000.37100.37400.38100.49900.60900.988000 | Toilet_False Ceiling framing | 12d | 2026-11-12 | 2026-11-23 | 8071 |  | 7 Days Work | 9293204 |
| 8073 | 36900.37000.37100.37400.38100.49900.60900.988100 | Toilet_Door Frame | 5d | 2026-11-24 | 2026-11-28 | 8072 |  | 7 Days Work | 9293214 |
| 8074 | 36900.37000.37100.37400.38100.49900.60900.988200 | Toilet_Epoxy Tile Grouting | 7d | 2027-01-24 | 2027-01-30 | 8049SS |  | 7 Days Work | 9293224 |
| 8075 | 36900.37000.37100.37400.38100.49900.60900.988300 | Toilet_False ceiling board fixing, CP Sanitary Fixture, Electric Fixture | 21d | 2027-01-31 | 2027-02-20 | 8074 |  | 7 Days Work | 9293234 |
| 8076 | 36900.37000.37100.37400.38100.50000 | **19th Habitable/20th Floor** | 245d | 2026-07-01 | 2027-03-02 |  | start no earlier than 2026-07-01 | 7 Days Work | 9279724 |
| 8077 | 36900.37000.37100.37400.38100.50000.622300 | Post Pour | 7d | 2026-07-01 | 2026-07-07 | 6991FS+15d |  | 7 Days Work | 9286764 |
| 8078 | 36900.37000.37100.37400.38100.50000.622400 | MEP Clearance -1 | 5d | 2026-07-08 | 2026-07-12 | 8077 |  | 7 Days Work | 9286774 |
| 8079 | 36900.37000.37100.37400.38100.50000.622500 | Benchmark | 1d | 2026-07-13 | 2026-07-13 | 8078 |  | 7 Days Work | 9286784 |
| 8080 | 36900.37000.37100.37400.38100.50000.622600 | Temporary Railing | 3d | 2026-07-14 | 2026-07-16 | 8079 |  | 7 Days Work | 9286794 |
| 8081 | 36900.37000.37100.37400.38100.50000.622700 | Blockwork | 10d | 2026-07-17 | 2026-07-26 | 8080 |  | 7 Days Work | 9286804 |
| 8082 | 36900.37000.37100.37400.38100.50000.622800 | MEP Clearance -2 | 10d | 2026-07-27 | 2026-08-05 | 8081 |  | 7 Days Work | 9286814 |
| 8083 | 36900.37000.37100.37400.38100.50000.622900 | Gypsum Plaster | 14d | 2026-08-06 | 2026-08-19 | 8082 |  | 7 Days Work | 9286824 |
| 8084 | 36900.37000.37100.37400.38100.50000.623000 | Kitchen Platform | 3d | 2026-08-20 | 2026-08-22 | 8083 |  | 7 Days Work | 9286834 |
| 8085 | 36900.37000.37100.37400.38100.50000.623100 | Kitchen dado | 7d | 2026-08-23 | 2026-08-29 | 8084 |  | 7 Days Work | 9286844 |
| 8086 | 36900.37000.37100.37400.38100.50000.623200 | Fire Fighting | 5d | 2026-08-30 | 2026-09-03 | 8085 |  | 7 Days Work | 9286854 |
| 8087 | 36900.37000.37100.37400.38100.50000.623300 | Anticapilary | 5d | 2026-09-04 | 2026-09-08 | 8086 |  | 7 Days Work | 9286864 |
| 8088 | 36900.37000.37100.37400.38100.50000.623400 | Stone Laying | 10d | 2026-10-12 | 2026-10-21 | 8128 |  | 7 Days Work | 9286874 |
| 8089 | 36900.37000.37100.37400.38100.50000.623500 | Tiles Laying | 7d | 2026-10-12 | 2026-10-18 | 8128 |  | 7 Days Work | 9286884 |
| 8090 | 36900.37000.37100.37400.38100.50000.623600 | 1st cutting/polishing of stone flooring | 7d | 2026-10-19 | 2026-10-25 | 8089 |  | 7 Days Work | 9286894 |
| 8091 | 36900.37000.37100.37400.38100.50000.623700 | Tiles/Stone skirting | 5d | 2026-10-26 | 2026-10-30 | 8090 |  | 7 Days Work | 9286904 |
| 8092 | 36900.37000.37100.37400.38100.50000.623800 | Protechtion sheet | 1d | 2026-10-31 | 2026-10-31 | 8091 |  | 7 Days Work | 9286914 |
| 8093 | 36900.37000.37100.37400.38100.50000.623900 | Installation of Temporary Door | 1d | 2026-11-01 | 2026-11-01 | 8092 |  | 7 Days Work | 9286924 |
| 8094 | 36900.37000.37100.37400.38100.50000.624000 | Fixing of window tracks | 5d | 2026-11-02 | 2026-11-06 | 8093 |  | 7 Days Work | 9286934 |
| 8095 | 36900.37000.37100.37400.38100.50000.624100 | Wire Pulling | 7d | 2026-11-07 | 2026-11-13 | 8094 |  | 7 Days Work | 9286944 |
| 8096 | 36900.37000.37100.37400.38100.50000.624200 | Gypsum Remaining | 5d | 2026-11-14 | 2026-11-18 | 8095 |  | 7 Days Work | 9286954 |
| 8097 | 36900.37000.37100.37400.38100.50000.624300 | Fixing of windoow shutter | 5d | 2026-11-19 | 2026-11-23 | 8096 |  | 7 Days Work | 9286964 |
| 8098 | 36900.37000.37100.37400.38100.50000.624400 | Putty Works - walls & ceiling | 15d | 2026-11-24 | 2026-12-08 | 8097 |  | 7 Days Work | 9286974 |
| 8099 | 36900.37000.37100.37400.38100.50000.624500 | False Ceiling- Framing | 10d | 2026-12-09 | 2026-12-18 | 8098 |  | 7 Days Work | 9286984 |
| 8100 | 36900.37000.37100.37400.38100.50000.624600 | Pre Hung Door | 3d | 2026-12-19 | 2026-12-21 | 8099 |  | 7 Days Work | 9286994 |
| 8101 | 36900.37000.37100.37400.38100.50000.624700 | Protechtion sheet | 2d | 2026-12-22 | 2026-12-23 | 8100 |  | 7 Days Work | 9287004 |
| 8102 | 36900.37000.37100.37400.38100.50000.624800 | Skirting near door | 2d | 2026-12-24 | 2026-12-25 | 8101 |  | 7 Days Work | 9287014 |
| 8103 | 36900.37000.37100.37400.38100.50000.624900 | Electrical Switch box fixing | 14d | 2026-12-26 | 2027-01-08 | 8102 |  | 7 Days Work | 9287024 |
| 8104 | 36900.37000.37100.37400.38100.50000.625000 | Fire Fighting painting | 5d | 2027-01-09 | 2027-01-13 | 8103 |  | 7 Days Work | 9287034 |
| 8105 | 36900.37000.37100.37400.38100.50000.625100 | Protection of all flooring, door & window hardware | 5d | 2027-01-14 | 2027-01-18 | 8104 |  | 7 Days Work | 9287044 |
| 8106 | 36900.37000.37100.37400.38100.50000.625200 | 1st coat primer- ceiling 1st & walls | 14d | 2027-01-19 | 2027-02-01 | 8105 |  | 7 Days Work | 9287054 |
| 8107 | 36900.37000.37100.37400.38100.50000.625300 | Wooden Flooring | 5d | 2027-02-02 | 2027-02-06 | 8106 |  | 7 Days Work | 9287064 |
| 8108 | 36900.37000.37100.37400.38100.50000.625400 | Removing of Temporary Railing & installation of Glass Railing | 5d | 2027-02-02 | 2027-02-06 | 8106 |  | 7 Days Work | 9287074 |
| 8109 | 36900.37000.37100.37400.38100.50000.625500 | Tile Grouting | 7d | 2027-02-02 | 2027-02-08 | 8106 |  | 7 Days Work | 9287084 |
| 8110 | 36900.37000.37100.37400.38100.50000.625600 | False Ceiling | 5d | 2027-02-09 | 2027-02-13 | 8109 |  | 7 Days Work | 9287094 |
| 8111 | 36900.37000.37100.37400.38100.50000.625700 | 2nd coat of primer | 10d | 2027-02-14 | 2027-02-23 | 8110 |  | 7 Days Work | 9287104 |
| 8112 | 36900.37000.37100.37400.38100.50000.625800 | Final cutting/polishing of stone flooring | 7d | 2027-02-24 | 2027-03-02 | 8111 |  | 7 Days Work | 9287114 |

| ID | WBS | Task | Duration | Start | Finish | Predecessors | Constraint | Calendar | Unique_Task_ID |
| --- | --- | --- | --- | --- | --- | --- | --- | --- | --- |
| 8113 | 36900.37000.37100.37400.38100.50000.60800 | **Toilet** | 237d | 2026-07-08 | 2027-03-01 |  | start no earlier than 2026-07-08 | 7 Days Work | 9279934 |
| 8114 | 36900.37000.37100.37400.38100.50000.60800.988400 | Toilet_MEP Clearance -1 | 7d | 2026-07-08 | 2026-07-14 | 8077 |  | 7 Days Work | 9293244 |
| 8115 | 36900.37000.37100.37400.38100.50000.60800.988500 | Toilet_Level Marking | 1d | 2026-07-15 | 2026-07-15 | 8114 |  | 7 Days Work | 9293254 |
| 8116 | 36900.37000.37100.37400.38100.50000.60800.988600 | Toilet_Chasing work for Electrical conduit & concealed plumbing | 5d | 2026-07-16 | 2026-07-20 | 8115 |  | 7 Days Work | 9293264 |
| 8117 | 36900.37000.37100.37400.38100.50000.60800.988700 | Toilet_Plumbing work 1st fix | 5d | 2026-07-21 | 2026-07-25 | 8116 |  | 7 Days Work | 9293274 |
| 8118 | 36900.37000.37100.37400.38100.50000.60800.988800 | Toilet_Sleeve/Bore Packing | 5d | 2026-07-26 | 2026-07-30 | 8117 |  | 7 Days Work | 9293284 |
| 8119 | 36900.37000.37100.37400.38100.50000.60800.988900 | Toilet_Waterproofing | 10d | 2026-07-31 | 2026-08-09 | 8118 |  | 7 Days Work | 9293294 |
| 8120 | 36900.37000.37100.37400.38100.50000.60800.989000 | Toilet_Screed | 1d | 2026-08-10 | 2026-08-10 | 8119 |  | 7 Days Work | 9293304 |
| 8121 | 36900.37000.37100.37400.38100.50000.60800.989100 | Toilet_Plumbing 2nd fix | 5d | 2026-08-11 | 2026-08-15 | 8120 |  | 7 Days Work | 9293314 |
| 8122 | 36900.37000.37100.37400.38100.50000.60800.989200 | Toilet_Ledge wall | 5d | 2026-08-16 | 2026-08-20 | 8121 |  | 7 Days Work | 9293324 |
| 8123 | 36900.37000.37100.37400.38100.50000.60800.989300 | Toilet_Cement Plaster | 5d | 2026-08-21 | 2026-08-25 | 8122 |  | 7 Days Work | 9293334 |
| 8124 | 36900.37000.37100.37400.38100.50000.60800.989400 | Toilet_Door Frame | 1d | 2026-08-26 | 2026-08-26 | 8123 |  | 7 Days Work | 9293344 |
| 8125 | 36900.37000.37100.37400.38100.50000.60800.989500 | Toilet_Wash basin & Couter | 3d | 2026-08-27 | 2026-08-29 | 8124 |  | 7 Days Work | 9293354 |
| 8126 | 36900.37000.37100.37400.38100.50000.60800.989600 | Toilet_Wall dado | 20d | 2026-08-30 | 2026-09-18 | 8125 |  | 7 Days Work | 9293364 |
| 8127 | 36900.37000.37100.37400.38100.50000.60800.989700 | Toilet_Granite Work-Ledge wall top | 3d | 2026-09-19 | 2026-09-21 | 8126 |  | 7 Days Work | 9293374 |
| 8128 | 36900.37000.37100.37400.38100.50000.60800.989800 | Toilet_Floor Tilling work | 20d | 2026-09-22 | 2026-10-11 | 8127 |  | 7 Days Work | 9293384 |
| 8129 | 36900.37000.37100.37400.38100.50000.60800.989900 | Toilet_1st row of dado | 5d | 2026-10-12 | 2026-10-16 | 8128 |  | 7 Days Work | 9293394 |
| 8130 | 36900.37000.37100.37400.38100.50000.60800.990000 | Toilet_Window Fixing | 14d | 2026-10-17 | 2026-10-30 | 8129 |  | 7 Days Work | 9293404 |
| 8131 | 36900.37000.37100.37400.38100.50000.60800.990100 | Toilet_Services above False ceiling | 21d | 2026-10-31 | 2026-11-20 | 8130 |  | 7 Days Work | 9293414 |
| 8132 | 36900.37000.37100.37400.38100.50000.60800.990200 | Toilet_False Ceiling framing | 12d | 2026-11-21 | 2026-12-02 | 8131 |  | 7 Days Work | 9293424 |
| 8133 | 36900.37000.37100.37400.38100.50000.60800.990300 | Toilet_Door Frame | 5d | 2026-12-03 | 2026-12-07 | 8132 |  | 7 Days Work | 9293434 |
| 8134 | 36900.37000.37100.37400.38100.50000.60800.990400 | Toilet_Epoxy Tile Grouting | 7d | 2027-02-02 | 2027-02-08 | 8109SS |  | 7 Days Work | 9293444 |
| 8135 | 36900.37000.37100.37400.38100.50000.60800.990500 | Toilet_False ceiling board fixing, CP Sanitary Fixture, Electric Fixture | 21d | 2027-02-09 | 2027-03-01 | 8134 |  | 7 Days Work | 9293454 |
| 8136 | 36900.37000.37100.37400.38100.50100 | **19th Habitable/21st Floor** | 255d | 2026-07-13 | 2027-03-24 |  | start no earlier than 2026-07-13 | 7 Days Work | 9279734 |
| 8137 | 36900.37000.37100.37400.38100.50100.625900 | Post Pour | 7d | 2026-07-13 | 2026-07-19 | 6992FS+15d |  | 7 Days Work | 9287124 |
| 8138 | 36900.37000.37100.37400.38100.50100.626000 | MEP Clearance -1 | 5d | 2026-07-20 | 2026-07-24 | 8137 |  | 7 Days Work | 9287134 |
| 8139 | 36900.37000.37100.37400.38100.50100.626100 | Benchmark | 1d | 2026-07-25 | 2026-07-25 | 8138 |  | 7 Days Work | 9287144 |
| 8140 | 36900.37000.37100.37400.38100.50100.626200 | Temporary Railing | 3d | 2026-07-26 | 2026-07-28 | 8139 |  | 7 Days Work | 9287154 |
| 8141 | 36900.37000.37100.37400.38100.50100.626300 | Blockwork | 10d | 2026-07-29 | 2026-08-07 | 8140 |  | 7 Days Work | 9287164 |
| 8142 | 36900.37000.37100.37400.38100.50100.626400 | MEP Clearance -2 | 10d | 2026-08-08 | 2026-08-17 | 8141 |  | 7 Days Work | 9287174 |
| 8143 | 36900.37000.37100.37400.38100.50100.626500 | Gypsum Plaster | 14d | 2026-08-18 | 2026-08-31 | 8142 |  | 7 Days Work | 9044784 |
| 8144 | 36900.37000.37100.37400.38100.50100.626600 | Kitchen Platform | 3d | 2026-09-01 | 2026-09-03 | 8143 |  | 7 Days Work | 9287194 |
| 8145 | 36900.37000.37100.37400.38100.50100.626700 | Kitchen dado | 7d | 2026-09-04 | 2026-09-10 | 8144 |  | 7 Days Work | 9287204 |
| 8146 | 36900.37000.37100.37400.38100.50100.626800 | Fire Fighting | 5d | 2026-09-11 | 2026-09-15 | 8145 |  | 7 Days Work | 9287214 |
| 8147 | 36900.37000.37100.37400.38100.50100.626900 | Anticapilary | 5d | 2026-09-16 | 2026-09-20 | 8146 |  | 7 Days Work | 9287224 |
| 8148 | 36900.37000.37100.37400.38100.50100.627000 | Stone Laying | 10d | 2026-10-24 | 2026-11-02 | 8188 |  | 7 Days Work | 9287234 |
| 8149 | 36900.37000.37100.37400.38100.50100.627100 | Tiles Laying | 7d | 2026-11-03 | 2026-11-09 | 8148 |  | 7 Days Work | 9044794 |
| 8150 | 36900.37000.37100.37400.38100.50100.627200 | 1st cutting/polishing of stone flooring | 7d | 2026-11-10 | 2026-11-16 | 8149 |  | 7 Days Work | 9287254 |
| 8151 | 36900.37000.37100.37400.38100.50100.627300 | Tiles/Stone skirting | 5d | 2026-11-17 | 2026-11-21 | 8150 |  | 7 Days Work | 9287264 |
| 8152 | 36900.37000.37100.37400.38100.50100.627400 | Protechtion sheet | 1d | 2026-11-22 | 2026-11-22 | 8151 |  | 7 Days Work | 9287274 |
| 8153 | 36900.37000.37100.37400.38100.50100.627500 | Installation of Temporary Door | 1d | 2026-11-23 | 2026-11-23 | 8152 |  | 7 Days Work | 9287284 |
| 8154 | 36900.37000.37100.37400.38100.50100.627600 | Fixing of window tracks | 5d | 2026-11-24 | 2026-11-28 | 8153 |  | 7 Days Work | 9287294 |
| 8155 | 36900.37000.37100.37400.38100.50100.627700 | Wire Pulling | 7d | 2026-11-29 | 2026-12-05 | 8154 |  | 7 Days Work | 9287304 |
| 8156 | 36900.37000.37100.37400.38100.50100.627800 | Gypsum Remaining | 5d | 2026-12-06 | 2026-12-10 | 8155 |  | 7 Days Work | 9287314 |
| 8157 | 36900.37000.37100.37400.38100.50100.627900 | Fixing of windoow shutter | 5d | 2026-12-11 | 2026-12-15 | 8156 |  | 7 Days Work | 9287324 |
| 8158 | 36900.37000.37100.37400.38100.50100.628000 | Putty Works - walls & ceiling | 15d | 2026-12-16 | 2026-12-30 | 8157 |  | 7 Days Work | 9287334 |
| 8159 | 36900.37000.37100.37400.38100.50100.628100 | False Ceiling- Framing | 10d | 2026-12-31 | 2027-01-09 | 8158 |  | 7 Days Work | 9287344 |
| 8160 | 36900.37000.37100.37400.38100.50100.628200 | Pre Hung Door | 3d | 2027-01-10 | 2027-01-12 | 8159 |  | 7 Days Work | 9287354 |
| 8161 | 36900.37000.37100.37400.38100.50100.628300 | Protechtion sheet | 2d | 2027-01-13 | 2027-01-14 | 8160 |  | 7 Days Work | 9287364 |
| 8162 | 36900.37000.37100.37400.38100.50100.628400 | Skirting near door | 2d | 2027-01-15 | 2027-01-16 | 8161 |  | 7 Days Work | 9287374 |
| 8163 | 36900.37000.37100.37400.38100.50100.628500 | Electrical Switch box fixing | 14d | 2027-01-17 | 2027-01-30 | 8162 |  | 7 Days Work | 9287384 |
| 8164 | 36900.37000.37100.37400.38100.50100.628600 | Fire Fighting painting | 5d | 2027-01-31 | 2027-02-04 | 8163 |  | 7 Days Work | 9287394 |
| 8165 | 36900.37000.37100.37400.38100.50100.628700 | Protection of all flooring, door & window hardware | 5d | 2027-02-05 | 2027-02-09 | 8164 |  | 7 Days Work | 9287404 |
| 8166 | 36900.37000.37100.37400.38100.50100.628800 | 1st coat primer- ceiling 1st & walls | 14d | 2027-02-10 | 2027-02-23 | 8165 |  | 7 Days Work | 9287414 |
| 8167 | 36900.37000.37100.37400.38100.50100.628900 | Wooden Flooring | 5d | 2027-02-24 | 2027-02-28 | 8166 |  | 7 Days Work | 9287424 |
| 8168 | 36900.37000.37100.37400.38100.50100.629000 | Removing of Temporary Railing & installation of Glass Railing | 5d | 2027-02-24 | 2027-02-28 | 8166 |  | 7 Days Work | 9287434 |
| 8169 | 36900.37000.37100.37400.38100.50100.629100 | Tile Grouting | 7d | 2027-02-24 | 2027-03-02 | 8166 |  | 7 Days Work | 9287444 |
| 8170 | 36900.37000.37100.37400.38100.50100.629200 | False Ceiling | 5d | 2027-03-03 | 2027-03-07 | 8169 |  | 7 Days Work | 9287454 |
| 8171 | 36900.37000.37100.37400.38100.50100.629300 | 2nd coat of primer | 10d | 2027-03-08 | 2027-03-17 | 8170 |  | 7 Days Work | 9287464 |
| 8172 | 36900.37000.37100.37400.38100.50100.629400 | Final cutting/polishing of stone flooring | 7d | 2027-03-18 | 2027-03-24 | 8171 |  | 7 Days Work | 9287474 |

| ID | WBS | Task | Duration | Start | Finish | Predecessors | Constraint | Calendar | Unique_Task_ID |
| --- | --- | --- | --- | --- | --- | --- | --- | --- | --- |
| 8173 | 36900.37000.37100.37400.38100.50100.60700 | **Toilet** | 247d | 2026-07-20 | 2027-03-23 |  | start no earlier than 2026-07-20 | 7 Days Work | 9279944 |
| 8174 | 36900.37000.37100.37400.38100.50100.60700.990600 | Toilet_MEP Clearance -1 | 7d | 2026-07-20 | 2026-07-26 | 8137 |  | 7 Days Work | 9293464 |
| 8175 | 36900.37000.37100.37400.38100.50100.60700.990700 | Toilet_Level Marking | 1d | 2026-07-27 | 2026-07-27 | 8174 |  | 7 Days Work | 9293474 |
| 8176 | 36900.37000.37100.37400.38100.50100.60700.990800 | Toilet_Chasing work for Electrical conduit & concealed plumbing | 5d | 2026-07-28 | 2026-08-01 | 8175 |  | 7 Days Work | 9293484 |
| 8177 | 36900.37000.37100.37400.38100.50100.60700.990900 | Toilet_Plumbing work 1st fix | 5d | 2026-08-02 | 2026-08-06 | 8176 |  | 7 Days Work | 9293494 |
| 8178 | 36900.37000.37100.37400.38100.50100.60700.991000 | Toilet_Sleeve/Bore Packing | 5d | 2026-08-07 | 2026-08-11 | 8177 |  | 7 Days Work | 9293504 |
| 8179 | 36900.37000.37100.37400.38100.50100.60700.991100 | Toilet_Waterproofing | 10d | 2026-08-12 | 2026-08-21 | 8178 |  | 7 Days Work | 9293514 |
| 8180 | 36900.37000.37100.37400.38100.50100.60700.991200 | Toilet_Screed | 1d | 2026-08-22 | 2026-08-22 | 8179 |  | 7 Days Work | 9293524 |
| 8181 | 36900.37000.37100.37400.38100.50100.60700.991300 | Toilet_Plumbing 2nd fix | 5d | 2026-08-23 | 2026-08-27 | 8180 |  | 7 Days Work | 9293534 |
| 8182 | 36900.37000.37100.37400.38100.50100.60700.991400 | Toilet_Ledge wall | 5d | 2026-08-28 | 2026-09-01 | 8181 |  | 7 Days Work | 9293544 |
| 8183 | 36900.37000.37100.37400.38100.50100.60700.991500 | Toilet_Cement Plaster | 5d | 2026-09-02 | 2026-09-06 | 8182 |  | 7 Days Work | 9293554 |
| 8184 | 36900.37000.37100.37400.38100.50100.60700.991600 | Toilet_Door Frame | 1d | 2026-09-07 | 2026-09-07 | 8183 |  | 7 Days Work | 9293564 |
| 8185 | 36900.37000.37100.37400.38100.50100.60700.991700 | Toilet_Wash basin & Couter | 3d | 2026-09-08 | 2026-09-10 | 8184 |  | 7 Days Work | 9293574 |
| 8186 | 36900.37000.37100.37400.38100.50100.60700.991800 | Toilet_Wall dado | 20d | 2026-09-11 | 2026-09-30 | 8185 |  | 7 Days Work | 9293584 |
| 8187 | 36900.37000.37100.37400.38100.50100.60700.991900 | Toilet_Granite Work-Ledge wall top | 3d | 2026-10-01 | 2026-10-03 | 8186 |  | 7 Days Work | 9293594 |
| 8188 | 36900.37000.37100.37400.38100.50100.60700.992000 | Toilet_Floor Tilling work | 20d | 2026-10-04 | 2026-10-23 | 8187 |  | 7 Days Work | 9293604 |
| 8189 | 36900.37000.37100.37400.38100.50100.60700.992100 | Toilet_1st row of dado | 5d | 2026-10-24 | 2026-10-28 | 8188 |  | 7 Days Work | 9293614 |
| 8190 | 36900.37000.37100.37400.38100.50100.60700.992200 | Toilet_Window Fixing | 14d | 2026-10-29 | 2026-11-11 | 8189 |  | 7 Days Work | 9293624 |
| 8191 | 36900.37000.37100.37400.38100.50100.60700.992300 | Toilet_Services above False ceiling | 21d | 2026-11-12 | 2026-12-02 | 8190 |  | 7 Days Work | 9293634 |
| 8192 | 36900.37000.37100.37400.38100.50100.60700.992400 | Toilet_False Ceiling framing | 12d | 2026-12-03 | 2026-12-14 | 8191 |  | 7 Days Work | 9293644 |
| 8193 | 36900.37000.37100.37400.38100.50100.60700.992500 | Toilet_Door Frame | 5d | 2026-12-15 | 2026-12-19 | 8192 |  | 7 Days Work | 9293654 |
| 8194 | 36900.37000.37100.37400.38100.50100.60700.992600 | Toilet_Epoxy Tile Grouting | 7d | 2027-02-24 | 2027-03-02 | 8169SS |  | 7 Days Work | 9293664 |
| 8195 | 36900.37000.37100.37400.38100.50100.60700.992700 | Toilet_False ceiling board fixing, CP Sanitary Fixture, Electric Fixture | 21d | 2027-03-03 | 2027-03-23 | 8194 |  | 7 Days Work | 9293674 |
| 8196 | 36900.37000.37100.37400.52200 | **Common area Finishing** | 329d | 2026-09-13 | 2027-08-07 |  | start no earlier than 2026-09-13 | 7 Days Work | 9279744 |
| 8197 | 36900.37000.37100.37400.52200.72100 | **1st Habitable/2nd Floor** | 158d | 2026-09-13 | 2027-02-17 |  | start no earlier than 2026-09-13 | 7 Days Work | 9279964 |
| 8198 | 36900.37000.37100.37400.52200.72100.629500 | Side blockwork for lift shafts | 9d | 2026-09-13 | 2026-09-21 | 8403 |  | 7 Days Work | 9287484 |
| 8199 | 36900.37000.37100.37400.52200.72100.629600 | Door Threshold for lifts | 6d | 2026-09-22 | 2026-09-27 | 8198 |  | 7 Days Work | 9287494 |
| 8200 | 36900.37000.37100.37400.52200.72100.629700 | Granite Cladding | 10d | 2026-09-28 | 2026-10-07 | 8199 |  | 7 Days Work | 9287504 |
| 8201 | 36900.37000.37100.37400.52200.72100.629800 | MEP Services | 60d | 2026-10-08 | 2026-12-06 | 8200 |  | 7 Days Work | 9287514 |
| 8202 | 36900.37000.37100.37400.52200.72100.629900 | Flooring+Skirting | 20d | 2026-12-07 | 2026-12-26 | 8201 |  | 7 Days Work | 9287524 |
| 8203 | 36900.37000.37100.37400.52200.72100.630000 | Wall finishes | 21d | 2026-12-27 | 2027-01-16 | 8202 |  | 7 Days Work | 9287534 |
| 8204 | 36900.37000.37100.37400.52200.72100.630100 | False Ceiling | 10d | 2027-01-17 | 2027-01-26 | 8203 |  | 7 Days Work | 9287544 |
| 8205 | 36900.37000.37100.37400.52200.72100.630200 | Staircase | 15d | 2027-01-27 | 2027-02-10 | 8204 |  | 7 Days Work | 9287554 |
| 8206 | 36900.37000.37100.37400.52200.72100.630300 | Deep Cleaning | 7d | 2027-02-11 | 2027-02-17 | 8205 |  | 7 Days Work | 9287564 |

| ID | WBS | Task | Duration | Start | Finish | Predecessors | Constraint | Calendar | Unique_Task_ID |
| --- | --- | --- | --- | --- | --- | --- | --- | --- | --- |
| 8207 | 36900.37000.37100.37400.52200.72000 | **2nd Habitable/3rd Floor** | 158d | 2026-09-22 | 2027-02-26 |  | start no earlier than 2026-09-22 | 7 Days Work | 9279974 |
| 8208 | 36900.37000.37100.37400.52200.72000.630400 | Side blockwork for lift shafts | 9d | 2026-09-22 | 2026-09-30 | 8198 |  | 7 Days Work | 9287574 |
| 8209 | 36900.37000.37100.37400.52200.72000.630500 | Door Threshold for lifts | 6d | 2026-10-01 | 2026-10-06 | 8208 |  | 7 Days Work | 9287584 |
| 8210 | 36900.37000.37100.37400.52200.72000.630600 | Granite Cladding | 10d | 2026-10-07 | 2026-10-16 | 8209 |  | 7 Days Work | 9287594 |
| 8211 | 36900.37000.37100.37400.52200.72000.630700 | MEP Services | 60d | 2026-10-17 | 2026-12-15 | 8210 |  | 7 Days Work | 9287604 |
| 8212 | 36900.37000.37100.37400.52200.72000.630800 | Flooring+Skirting | 20d | 2026-12-16 | 2027-01-04 | 8211 |  | 7 Days Work | 9287614 |
| 8213 | 36900.37000.37100.37400.52200.72000.630900 | Wall finishes | 21d | 2027-01-05 | 2027-01-25 | 8212 |  | 7 Days Work | 9287624 |
| 8214 | 36900.37000.37100.37400.52200.72000.631000 | False Ceiling | 10d | 2027-01-26 | 2027-02-04 | 8213 |  | 7 Days Work | 9287634 |
| 8215 | 36900.37000.37100.37400.52200.72000.631100 | Staircase | 15d | 2027-02-05 | 2027-02-19 | 8214 |  | 7 Days Work | 9287644 |
| 8216 | 36900.37000.37100.37400.52200.72000.631200 | Deep Cleaning | 7d | 2027-02-20 | 2027-02-26 | 8215 |  | 7 Days Work | 9287654 |
| 8217 | 36900.37000.37100.37400.52200.71900 | **3rd Habitable/4th Floor** | 158d | 2026-10-01 | 2027-03-07 |  | start no earlier than 2026-10-01 | 7 Days Work | 9279984 |
| 8218 | 36900.37000.37100.37400.52200.71900.631300 | Side blockwork for lift shafts | 9d | 2026-10-01 | 2026-10-09 | 8208 |  | 7 Days Work | 9287664 |
| 8219 | 36900.37000.37100.37400.52200.71900.631400 | Door Threshold for lifts | 6d | 2026-10-10 | 2026-10-15 | 8218 |  | 7 Days Work | 9287674 |
| 8220 | 36900.37000.37100.37400.52200.71900.631500 | Granite Cladding | 10d | 2026-10-16 | 2026-10-25 | 8219 |  | 7 Days Work | 9287684 |
| 8221 | 36900.37000.37100.37400.52200.71900.631600 | MEP Services | 60d | 2026-10-26 | 2026-12-24 | 8220 |  | 7 Days Work | 9287694 |
| 8222 | 36900.37000.37100.37400.52200.71900.631700 | Flooring+Skirting | 20d | 2026-12-25 | 2027-01-13 | 8221 |  | 7 Days Work | 9287704 |
| 8223 | 36900.37000.37100.37400.52200.71900.631800 | Wall finishes | 21d | 2027-01-14 | 2027-02-03 | 8222 |  | 7 Days Work | 9287714 |
| 8224 | 36900.37000.37100.37400.52200.71900.631900 | False Ceiling | 10d | 2027-02-04 | 2027-02-13 | 8223 |  | 7 Days Work | 9287724 |
| 8225 | 36900.37000.37100.37400.52200.71900.632000 | Staircase | 15d | 2027-02-14 | 2027-02-28 | 8224 |  | 7 Days Work | 9287734 |
| 8226 | 36900.37000.37100.37400.52200.71900.632100 | Deep Cleaning | 7d | 2027-03-01 | 2027-03-07 | 8225 |  | 7 Days Work | 9287744 |
| 8227 | 36900.37000.37100.37400.52200.71800 | **4th Habitable/5th Floor** | 158d | 2026-10-10 | 2027-03-16 |  | start no earlier than 2026-10-10 | 7 Days Work | 9279994 |
| 8228 | 36900.37000.37100.37400.52200.71800.632200 | Side blockwork for lift shafts | 9d | 2026-10-10 | 2026-10-18 | 8218 |  | 7 Days Work | 9287754 |
| 8229 | 36900.37000.37100.37400.52200.71800.632300 | Door Threshold for lifts | 6d | 2026-10-19 | 2026-10-24 | 8228 |  | 7 Days Work | 9287764 |
| 8230 | 36900.37000.37100.37400.52200.71800.632400 | Granite Cladding | 10d | 2026-10-25 | 2026-11-03 | 8229 |  | 7 Days Work | 9287774 |
| 8231 | 36900.37000.37100.37400.52200.71800.632500 | MEP Services | 60d | 2026-11-04 | 2027-01-02 | 8230 |  | 7 Days Work | 9287784 |
| 8232 | 36900.37000.37100.37400.52200.71800.632600 | Flooring+Skirting | 20d | 2027-01-03 | 2027-01-22 | 8231 |  | 7 Days Work | 9287794 |
| 8233 | 36900.37000.37100.37400.52200.71800.632700 | Wall finishes | 21d | 2027-01-23 | 2027-02-12 | 8232 |  | 7 Days Work | 9287804 |
| 8234 | 36900.37000.37100.37400.52200.71800.632800 | False Ceiling | 10d | 2027-02-13 | 2027-02-22 | 8233 |  | 7 Days Work | 9287814 |
| 8235 | 36900.37000.37100.37400.52200.71800.632900 | Staircase | 15d | 2027-02-23 | 2027-03-09 | 8234 |  | 7 Days Work | 9287824 |
| 8236 | 36900.37000.37100.37400.52200.71800.633000 | Deep Cleaning | 7d | 2027-03-10 | 2027-03-16 | 8235 |  | 7 Days Work | 9287834 |

| ID | WBS | Task | Duration | Start | Finish | Predecessors | Constraint | Calendar | Unique_Task_ID |
| --- | --- | --- | --- | --- | --- | --- | --- | --- | --- |
| 8237 | 36900.37000.37100.37400.52200.71700 | **5th Habitable/6th Floor** | 158d | 2026-10-19 | 2027-03-25 |  | start no earlier than 2026-10-19 | 7 Days Work | 9280004 |
| 8238 | 36900.37000.37100.37400.52200.71700.633100 | Side blockwork for lift shafts | 9d | 2026-10-19 | 2026-10-27 | 8228 |  | 7 Days Work | 9287844 |
| 8239 | 36900.37000.37100.37400.52200.71700.633200 | Door Threshold for lifts | 6d | 2026-10-28 | 2026-11-02 | 8238 |  | 7 Days Work | 9287854 |
| 8240 | 36900.37000.37100.37400.52200.71700.633300 | Granite Cladding | 10d | 2026-11-03 | 2026-11-12 | 8239 |  | 7 Days Work | 9287864 |
| 8241 | 36900.37000.37100.37400.52200.71700.633400 | MEP Services | 60d | 2026-11-13 | 2027-01-11 | 8240 |  | 7 Days Work | 9287874 |
| 8242 | 36900.37000.37100.37400.52200.71700.633500 | Flooring+Skirting | 20d | 2027-01-12 | 2027-01-31 | 8241 |  | 7 Days Work | 9287884 |
| 8243 | 36900.37000.37100.37400.52200.71700.633600 | Wall finishes | 21d | 2027-02-01 | 2027-02-21 | 8242 |  | 7 Days Work | 9287894 |
| 8244 | 36900.37000.37100.37400.52200.71700.633700 | False Ceiling | 10d | 2027-02-22 | 2027-03-03 | 8243 |  | 7 Days Work | 9287904 |
| 8245 | 36900.37000.37100.37400.52200.71700.633800 | Staircase | 15d | 2027-03-04 | 2027-03-18 | 8244 |  | 7 Days Work | 9287914 |
| 8246 | 36900.37000.37100.37400.52200.71700.633900 | Deep Cleaning | 7d | 2027-03-19 | 2027-03-25 | 8245 |  | 7 Days Work | 9287924 |
| 8247 | 36900.37000.37100.37400.52200.71600 | **6th Habitable/7th Floor** | 158d | 2026-10-28 | 2027-04-03 |  | start no earlier than 2026-10-28 | 7 Days Work | 9280014 |
| 8248 | 36900.37000.37100.37400.52200.71600.634000 | Side blockwork for lift shafts | 9d | 2026-10-28 | 2026-11-05 | 8238 |  | 7 Days Work | 9287934 |
| 8249 | 36900.37000.37100.37400.52200.71600.634100 | Door Threshold for lifts | 6d | 2026-11-06 | 2026-11-11 | 8248 |  | 7 Days Work | 9287944 |
| 8250 | 36900.37000.37100.37400.52200.71600.634200 | Granite Cladding | 10d | 2026-11-12 | 2026-11-21 | 8249 |  | 7 Days Work | 9287954 |
| 8251 | 36900.37000.37100.37400.52200.71600.634300 | MEP Services | 60d | 2026-11-22 | 2027-01-20 | 8250 |  | 7 Days Work | 9287964 |
| 8252 | 36900.37000.37100.37400.52200.71600.634400 | Flooring+Skirting | 20d | 2027-01-21 | 2027-02-09 | 8251 |  | 7 Days Work | 9287974 |
| 8253 | 36900.37000.37100.37400.52200.71600.634500 | Wall finishes | 21d | 2027-02-10 | 2027-03-02 | 8252 |  | 7 Days Work | 9287984 |
| 8254 | 36900.37000.37100.37400.52200.71600.634600 | False Ceiling | 10d | 2027-03-03 | 2027-03-12 | 8253 |  | 7 Days Work | 9287994 |
| 8255 | 36900.37000.37100.37400.52200.71600.634700 | Staircase | 15d | 2027-03-13 | 2027-03-27 | 8254 |  | 7 Days Work | 9288004 |
| 8256 | 36900.37000.37100.37400.52200.71600.634800 | Deep Cleaning | 7d | 2027-03-28 | 2027-04-03 | 8255 |  | 7 Days Work | 9288014 |
| 8257 | 36900.37000.37100.37400.52200.71500 | **7th Habitable/8th Floor** | 158d | 2026-11-06 | 2027-04-12 |  | start no earlier than 2026-11-06 | 7 Days Work | 9280024 |
| 8258 | 36900.37000.37100.37400.52200.71500.634900 | Side blockwork for lift shafts | 9d | 2026-11-06 | 2026-11-14 | 8248 |  | 7 Days Work | 9288024 |
| 8259 | 36900.37000.37100.37400.52200.71500.635000 | Door Threshold for lifts | 6d | 2026-11-15 | 2026-11-20 | 8258 |  | 7 Days Work | 9288034 |
| 8260 | 36900.37000.37100.37400.52200.71500.635100 | Granite Cladding | 10d | 2026-11-21 | 2026-11-30 | 8259 |  | 7 Days Work | 9288044 |
| 8261 | 36900.37000.37100.37400.52200.71500.635200 | MEP Services | 60d | 2026-12-01 | 2027-01-29 | 8260 |  | 7 Days Work | 9288054 |
| 8262 | 36900.37000.37100.37400.52200.71500.635300 | Flooring+Skirting | 20d | 2027-01-30 | 2027-02-18 | 8261 |  | 7 Days Work | 9288064 |
| 8263 | 36900.37000.37100.37400.52200.71500.635400 | Wall finishes | 21d | 2027-02-19 | 2027-03-11 | 8262 |  | 7 Days Work | 9288074 |
| 8264 | 36900.37000.37100.37400.52200.71500.635500 | False Ceiling | 10d | 2027-03-12 | 2027-03-21 | 8263 |  | 7 Days Work | 9288084 |
| 8265 | 36900.37000.37100.37400.52200.71500.635600 | Staircase | 15d | 2027-03-22 | 2027-04-05 | 8264 |  | 7 Days Work | 9288094 |
| 8266 | 36900.37000.37100.37400.52200.71500.635700 | Deep Cleaning | 7d | 2027-04-06 | 2027-04-12 | 8265 |  | 7 Days Work | 9288104 |

| ID | WBS | Task | Duration | Start | Finish | Predecessors | Constraint | Calendar | Unique_Task_ID |
| --- | --- | --- | --- | --- | --- | --- | --- | --- | --- |
| 8267 | 36900.37000.37100.37400.52200.71400 | **8th Habitable/9th Floor** | 158d | 2026-11-15 | 2027-04-21 |  | start no earlier than 2026-11-15 | 7 Days Work | 9280034 |
| 8268 | 36900.37000.37100.37400.52200.71400.635800 | Side blockwork for lift shafts | 9d | 2026-11-15 | 2026-11-23 | 8258 |  | 7 Days Work | 9288114 |
| 8269 | 36900.37000.37100.37400.52200.71400.635900 | Door Threshold for lifts | 6d | 2026-11-24 | 2026-11-29 | 8268 |  | 7 Days Work | 9288124 |
| 8270 | 36900.37000.37100.37400.52200.71400.636000 | Granite Cladding | 10d | 2026-11-30 | 2026-12-09 | 8269 |  | 7 Days Work | 9288134 |
| 8271 | 36900.37000.37100.37400.52200.71400.636100 | MEP Services | 60d | 2026-12-10 | 2027-02-07 | 8270 |  | 7 Days Work | 9288144 |
| 8272 | 36900.37000.37100.37400.52200.71400.636200 | Flooring+Skirting | 20d | 2027-02-08 | 2027-02-27 | 8271 |  | 7 Days Work | 9288154 |
| 8273 | 36900.37000.37100.37400.52200.71400.636300 | Wall finishes | 21d | 2027-02-28 | 2027-03-20 | 8272 |  | 7 Days Work | 9288164 |
| 8274 | 36900.37000.37100.37400.52200.71400.636400 | False Ceiling | 10d | 2027-03-21 | 2027-03-30 | 8273 |  | 7 Days Work | 9288174 |
| 8275 | 36900.37000.37100.37400.52200.71400.636500 | Staircase | 15d | 2027-03-31 | 2027-04-14 | 8274 |  | 7 Days Work | 9288184 |
| 8276 | 36900.37000.37100.37400.52200.71400.636600 | Deep Cleaning | 7d | 2027-04-15 | 2027-04-21 | 8275 |  | 7 Days Work | 9288194 |
| 8277 | 36900.37000.37100.37400.52200.71300 | **9th Habitable/10th Floor** | 158d | 2026-11-24 | 2027-04-30 |  | start no earlier than 2026-11-24 | 7 Days Work | 9280044 |
| 8278 | 36900.37000.37100.37400.52200.71300.636700 | Side blockwork for lift shafts | 9d | 2026-11-24 | 2026-12-02 | 8268 |  | 7 Days Work | 9288204 |
| 8279 | 36900.37000.37100.37400.52200.71300.636800 | Door Threshold for lifts | 6d | 2026-12-03 | 2026-12-08 | 8278 |  | 7 Days Work | 9288214 |
| 8280 | 36900.37000.37100.37400.52200.71300.636900 | Granite Cladding | 10d | 2026-12-09 | 2026-12-18 | 8279 |  | 7 Days Work | 9288224 |
| 8281 | 36900.37000.37100.37400.52200.71300.637000 | MEP Services | 60d | 2026-12-19 | 2027-02-16 | 8280 |  | 7 Days Work | 9288234 |
| 8282 | 36900.37000.37100.37400.52200.71300.637100 | Flooring+Skirting | 20d | 2027-02-17 | 2027-03-08 | 8281 |  | 7 Days Work | 9288244 |
| 8283 | 36900.37000.37100.37400.52200.71300.637200 | Wall finishes | 21d | 2027-03-09 | 2027-03-29 | 8282 |  | 7 Days Work | 9288254 |
| 8284 | 36900.37000.37100.37400.52200.71300.637300 | False Ceiling | 10d | 2027-03-30 | 2027-04-08 | 8283 |  | 7 Days Work | 9288264 |
| 8285 | 36900.37000.37100.37400.52200.71300.637400 | Staircase | 15d | 2027-04-09 | 2027-04-23 | 8284 |  | 7 Days Work | 9288274 |
| 8286 | 36900.37000.37100.37400.52200.71300.637500 | Deep Cleaning | 7d | 2027-04-24 | 2027-04-30 | 8285 |  | 7 Days Work | 9288284 |
| 8287 | 36900.37000.37100.37400.52200.71200 | **10th Habitable/11th Floor** | 158d | 2026-12-03 | 2027-05-09 |  | start no earlier than 2026-12-03 | 7 Days Work | 9280054 |
| 8288 | 36900.37000.37100.37400.52200.71200.637600 | Side blockwork for lift shafts | 9d | 2026-12-03 | 2026-12-11 | 8278 |  | 7 Days Work | 9288294 |
| 8289 | 36900.37000.37100.37400.52200.71200.637700 | Door Threshold for lifts | 6d | 2026-12-12 | 2026-12-17 | 8288 |  | 7 Days Work | 9288304 |
| 8290 | 36900.37000.37100.37400.52200.71200.637800 | Granite Cladding | 10d | 2026-12-18 | 2026-12-27 | 8289 |  | 7 Days Work | 9288314 |
| 8291 | 36900.37000.37100.37400.52200.71200.637900 | MEP Services | 60d | 2026-12-28 | 2027-02-25 | 8290 |  | 7 Days Work | 9288324 |
| 8292 | 36900.37000.37100.37400.52200.71200.638000 | Flooring+Skirting | 20d | 2027-02-26 | 2027-03-17 | 8291 |  | 7 Days Work | 9288334 |
| 8293 | 36900.37000.37100.37400.52200.71200.638100 | Wall finishes | 21d | 2027-03-18 | 2027-04-07 | 8292 |  | 7 Days Work | 9288344 |
| 8294 | 36900.37000.37100.37400.52200.71200.638200 | False Ceiling | 10d | 2027-04-08 | 2027-04-17 | 8293 |  | 7 Days Work | 9288354 |
| 8295 | 36900.37000.37100.37400.52200.71200.638300 | Staircase | 15d | 2027-04-18 | 2027-05-02 | 8294 |  | 7 Days Work | 9288364 |
| 8296 | 36900.37000.37100.37400.52200.71200.638400 | Deep Cleaning | 7d | 2027-05-03 | 2027-05-09 | 8295 |  | 7 Days Work | 9288374 |

| ID | WBS | Task | Duration | Start | Finish | Predecessors | Constraint | Calendar | Unique_Task_ID |
| --- | --- | --- | --- | --- | --- | --- | --- | --- | --- |
| 8297 | 36900.37000.37100.37400.52200.71100 | **11th Habitable/12th Floor** | 158d | 2026-12-12 | 2027-05-18 |  | start no earlier than 2026-12-12 | 7 Days Work | 9280064 |
| 8298 | 36900.37000.37100.37400.52200.71100.638500 | Side blockwork for lift shafts | 9d | 2026-12-12 | 2026-12-20 | 8288 |  | 7 Days Work | 9288384 |
| 8299 | 36900.37000.37100.37400.52200.71100.638600 | Door Threshold for lifts | 6d | 2026-12-21 | 2026-12-26 | 8298 |  | 7 Days Work | 9288394 |
| 8300 | 36900.37000.37100.37400.52200.71100.638700 | Granite Cladding | 10d | 2026-12-27 | 2027-01-05 | 8299 |  | 7 Days Work | 9288404 |
| 8301 | 36900.37000.37100.37400.52200.71100.638800 | MEP Services | 60d | 2027-01-06 | 2027-03-06 | 8300 |  | 7 Days Work | 9288414 |
| 8302 | 36900.37000.37100.37400.52200.71100.638900 | Flooring+Skirting | 20d | 2027-03-07 | 2027-03-26 | 8301 |  | 7 Days Work | 9288424 |
| 8303 | 36900.37000.37100.37400.52200.71100.639000 | Wall finishes | 21d | 2027-03-27 | 2027-04-16 | 8302 |  | 7 Days Work | 9288434 |
| 8304 | 36900.37000.37100.37400.52200.71100.639100 | False Ceiling | 10d | 2027-04-17 | 2027-04-26 | 8303 |  | 7 Days Work | 9288444 |
| 8305 | 36900.37000.37100.37400.52200.71100.639200 | Staircase | 15d | 2027-04-27 | 2027-05-11 | 8304 |  | 7 Days Work | 9288454 |
| 8306 | 36900.37000.37100.37400.52200.71100.639300 | Deep Cleaning | 7d | 2027-05-12 | 2027-05-18 | 8305 |  | 7 Days Work | 9288464 |
| 8307 | 36900.37000.37100.37400.52200.71000 | **12th Habitable/13th Floor** | 158d | 2026-12-21 | 2027-05-27 |  | start no earlier than 2026-12-21 | 7 Days Work | 9280074 |
| 8308 | 36900.37000.37100.37400.52200.71000.639400 | Side blockwork for lift shafts | 9d | 2026-12-21 | 2026-12-29 | 8298 |  | 7 Days Work | 9288474 |
| 8309 | 36900.37000.37100.37400.52200.71000.639500 | Door Threshold for lifts | 6d | 2026-12-30 | 2027-01-04 | 8308 |  | 7 Days Work | 9288484 |
| 8310 | 36900.37000.37100.37400.52200.71000.639600 | Granite Cladding | 10d | 2027-01-05 | 2027-01-14 | 8309 |  | 7 Days Work | 9288494 |
| 8311 | 36900.37000.37100.37400.52200.71000.639700 | MEP Services | 60d | 2027-01-15 | 2027-03-15 | 8310 |  | 7 Days Work | 9288504 |
| 8312 | 36900.37000.37100.37400.52200.71000.639800 | Flooring+Skirting | 20d | 2027-03-16 | 2027-04-04 | 8311 |  | 7 Days Work | 9288514 |
| 8313 | 36900.37000.37100.37400.52200.71000.639900 | Wall finishes | 21d | 2027-04-05 | 2027-04-25 | 8312 |  | 7 Days Work | 9288524 |
| 8314 | 36900.37000.37100.37400.52200.71000.640000 | False Ceiling | 10d | 2027-04-26 | 2027-05-05 | 8313 |  | 7 Days Work | 9288534 |
| 8315 | 36900.37000.37100.37400.52200.71000.640100 | Staircase | 15d | 2027-05-06 | 2027-05-20 | 8314 |  | 7 Days Work | 9288544 |
| 8316 | 36900.37000.37100.37400.52200.71000.640200 | Deep Cleaning | 7d | 2027-05-21 | 2027-05-27 | 8315 |  | 7 Days Work | 9288554 |
| 8317 | 36900.37000.37100.37400.52200.70900 | **13th Habitable/14th Floor** | 158d | 2026-12-30 | 2027-06-05 |  | start no earlier than 2026-12-30 | 7 Days Work | 9280084 |
| 8318 | 36900.37000.37100.37400.52200.70900.640300 | Side blockwork for lift shafts | 9d | 2026-12-30 | 2027-01-07 | 8308 |  | 7 Days Work | 9288564 |
| 8319 | 36900.37000.37100.37400.52200.70900.640400 | Door Threshold for lifts | 6d | 2027-01-08 | 2027-01-13 | 8318 |  | 7 Days Work | 9288574 |
| 8320 | 36900.37000.37100.37400.52200.70900.640500 | Granite Cladding | 10d | 2027-01-14 | 2027-01-23 | 8319 |  | 7 Days Work | 9288584 |
| 8321 | 36900.37000.37100.37400.52200.70900.640600 | MEP Services | 60d | 2027-01-24 | 2027-03-24 | 8320 |  | 7 Days Work | 9288594 |
| 8322 | 36900.37000.37100.37400.52200.70900.640700 | Flooring+Skirting | 20d | 2027-03-25 | 2027-04-13 | 8321 |  | 7 Days Work | 9288604 |
| 8323 | 36900.37000.37100.37400.52200.70900.640800 | Wall finishes | 21d | 2027-04-14 | 2027-05-04 | 8322 |  | 7 Days Work | 9288614 |
| 8324 | 36900.37000.37100.37400.52200.70900.640900 | False Ceiling | 10d | 2027-05-05 | 2027-05-14 | 8323 |  | 7 Days Work | 9288624 |
| 8325 | 36900.37000.37100.37400.52200.70900.641000 | Staircase | 15d | 2027-05-15 | 2027-05-29 | 8324 |  | 7 Days Work | 9288634 |
| 8326 | 36900.37000.37100.37400.52200.70900.641100 | Deep Cleaning | 7d | 2027-05-30 | 2027-06-05 | 8325 |  | 7 Days Work | 9288644 |

| ID | WBS | Task | Duration | Start | Finish | Predecessors | Constraint | Calendar | Unique_Task_ID |
| --- | --- | --- | --- | --- | --- | --- | --- | --- | --- |
| 8327 | 36900.37000.37100.37400.52200.70700 | **14th Habitable/15th Floor** | 158d | 2027-01-08 | 2027-06-14 |  | start no earlier than 2027-01-08 | 7 Days Work | 9280094 |
| 8328 | 36900.37000.37100.37400.52200.70700.641200 | Side blockwork for lift shafts | 9d | 2027-01-08 | 2027-01-16 | 8318 |  | 7 Days Work | 9288654 |
| 8329 | 36900.37000.37100.37400.52200.70700.641300 | Door Threshold for lifts | 6d | 2027-01-17 | 2027-01-22 | 8328 |  | 7 Days Work | 9288664 |
| 8330 | 36900.37000.37100.37400.52200.70700.641400 | Granite Cladding | 10d | 2027-01-23 | 2027-02-01 | 8329 |  | 7 Days Work | 9288674 |
| 8331 | 36900.37000.37100.37400.52200.70700.641500 | MEP Services | 60d | 2027-02-02 | 2027-04-02 | 8330 |  | 7 Days Work | 9288684 |
| 8332 | 36900.37000.37100.37400.52200.70700.641600 | Flooring+Skirting | 20d | 2027-04-03 | 2027-04-22 | 8331 |  | 7 Days Work | 9288694 |
| 8333 | 36900.37000.37100.37400.52200.70700.641700 | Wall finishes | 21d | 2027-04-23 | 2027-05-13 | 8332 |  | 7 Days Work | 9288704 |
| 8334 | 36900.37000.37100.37400.52200.70700.641800 | False Ceiling | 10d | 2027-05-14 | 2027-05-23 | 8333 |  | 7 Days Work | 9288714 |
| 8335 | 36900.37000.37100.37400.52200.70700.641900 | Staircase | 15d | 2027-05-24 | 2027-06-07 | 8334 |  | 7 Days Work | 9288724 |
| 8336 | 36900.37000.37100.37400.52200.70700.642000 | Deep Cleaning | 7d | 2027-06-08 | 2027-06-14 | 8335 |  | 7 Days Work | 9288734 |
| 8337 | 36900.37000.37100.37400.52200.70500 | **15th Habitable/16th Floor** | 158d | 2027-01-17 | 2027-06-23 |  | start no earlier than 2027-01-17 | 7 Days Work | 9280104 |
| 8338 | 36900.37000.37100.37400.52200.70500.642100 | Side blockwork for lift shafts | 9d | 2027-01-17 | 2027-01-25 | 8328 |  | 7 Days Work | 9288744 |
| 8339 | 36900.37000.37100.37400.52200.70500.642200 | Door Threshold for lifts | 6d | 2027-01-26 | 2027-01-31 | 8338 |  | 7 Days Work | 9288754 |
| 8340 | 36900.37000.37100.37400.52200.70500.642300 | Granite Cladding | 10d | 2027-02-01 | 2027-02-10 | 8339 |  | 7 Days Work | 9288764 |
| 8341 | 36900.37000.37100.37400.52200.70500.642400 | MEP Services | 60d | 2027-02-11 | 2027-04-11 | 8340 |  | 7 Days Work | 9288774 |
| 8342 | 36900.37000.37100.37400.52200.70500.642500 | Flooring+Skirting | 20d | 2027-04-12 | 2027-05-01 | 8341 |  | 7 Days Work | 9288784 |
| 8343 | 36900.37000.37100.37400.52200.70500.642600 | Wall finishes | 21d | 2027-05-02 | 2027-05-22 | 8342 |  | 7 Days Work | 9288794 |
| 8344 | 36900.37000.37100.37400.52200.70500.642700 | False Ceiling | 10d | 2027-05-23 | 2027-06-01 | 8343 |  | 7 Days Work | 9288804 |
| 8345 | 36900.37000.37100.37400.52200.70500.642800 | Staircase | 15d | 2027-06-02 | 2027-06-16 | 8344 |  | 7 Days Work | 9288814 |
| 8346 | 36900.37000.37100.37400.52200.70500.642900 | Deep Cleaning | 7d | 2027-06-17 | 2027-06-23 | 8345 |  | 7 Days Work | 9288824 |
| 8347 | 36900.37000.37100.37400.52200.70400 | **16th Habitable/17th Floor** | 158d | 2027-01-26 | 2027-07-02 |  | start no earlier than 2027-01-26 | 7 Days Work | 9280114 |
| 8348 | 36900.37000.37100.37400.52200.70400.643000 | Side blockwork for lift shafts | 9d | 2027-01-26 | 2027-02-03 | 8338 |  | 7 Days Work | 9288834 |
| 8349 | 36900.37000.37100.37400.52200.70400.643100 | Door Threshold for lifts | 6d | 2027-02-04 | 2027-02-09 | 8348 |  | 7 Days Work | 9288844 |
| 8350 | 36900.37000.37100.37400.52200.70400.643200 | Granite Cladding | 10d | 2027-02-10 | 2027-02-19 | 8349 |  | 7 Days Work | 9288854 |
| 8351 | 36900.37000.37100.37400.52200.70400.643300 | MEP Services | 60d | 2027-02-20 | 2027-04-20 | 8350 |  | 7 Days Work | 9288864 |
| 8352 | 36900.37000.37100.37400.52200.70400.643400 | Flooring+Skirting | 20d | 2027-04-21 | 2027-05-10 | 8351 |  | 7 Days Work | 9288874 |
| 8353 | 36900.37000.37100.37400.52200.70400.643500 | Wall finishes | 21d | 2027-05-11 | 2027-05-31 | 8352 |  | 7 Days Work | 9288884 |
| 8354 | 36900.37000.37100.37400.52200.70400.643600 | False Ceiling | 10d | 2027-06-01 | 2027-06-10 | 8353 |  | 7 Days Work | 9288894 |
| 8355 | 36900.37000.37100.37400.52200.70400.643700 | Staircase | 15d | 2027-06-11 | 2027-06-25 | 8354 |  | 7 Days Work | 9288904 |
| 8356 | 36900.37000.37100.37400.52200.70400.643800 | Deep Cleaning | 7d | 2027-06-26 | 2027-07-02 | 8355 |  | 7 Days Work | 9288914 |

| ID | WBS | Task | Duration | Start | Finish | Predecessors | Constraint | Calendar | Unique_Task_ID |
| --- | --- | --- | --- | --- | --- | --- | --- | --- | --- |
| 8357 | 36900.37000.37100.37400.52200.70300 | **17th Habitable/18th Floor** | 158d | 2027-02-04 | 2027-07-11 |  | start no earlier than 2027-02-04 | 7 Days Work | 9280124 |
| 8358 | 36900.37000.37100.37400.52200.70300.643900 | Side blockwork for lift shafts | 9d | 2027-02-04 | 2027-02-12 | 8348 |  | 7 Days Work | 9288924 |
| 8359 | 36900.37000.37100.37400.52200.70300.644000 | Door Threshold for lifts | 6d | 2027-02-13 | 2027-02-18 | 8358 |  | 7 Days Work | 9288934 |
| 8360 | 36900.37000.37100.37400.52200.70300.644100 | Granite Cladding | 10d | 2027-02-19 | 2027-02-28 | 8359 |  | 7 Days Work | 9288944 |
| 8361 | 36900.37000.37100.37400.52200.70300.644200 | MEP Services | 60d | 2027-03-01 | 2027-04-29 | 8360 |  | 7 Days Work | 9288954 |
| 8362 | 36900.37000.37100.37400.52200.70300.644300 | Flooring+Skirting | 20d | 2027-04-30 | 2027-05-19 | 8361 |  | 7 Days Work | 9288964 |
| 8363 | 36900.37000.37100.37400.52200.70300.644400 | Wall finishes | 21d | 2027-05-20 | 2027-06-09 | 8362 |  | 7 Days Work | 9288974 |
| 8364 | 36900.37000.37100.37400.52200.70300.644500 | False Ceiling | 10d | 2027-06-10 | 2027-06-19 | 8363 |  | 7 Days Work | 9288984 |
| 8365 | 36900.37000.37100.37400.52200.70300.644600 | Staircase | 15d | 2027-06-20 | 2027-07-04 | 8364 |  | 7 Days Work | 9288994 |
| 8366 | 36900.37000.37100.37400.52200.70300.644700 | Deep Cleaning | 7d | 2027-07-05 | 2027-07-11 | 8365 |  | 7 Days Work | 9289004 |
| 8367 | 36900.37000.37100.37400.52200.70200 | **18th Habitable/19th Floor** | 158d | 2027-02-13 | 2027-07-20 |  | start no earlier than 2027-02-13 | 7 Days Work | 9280134 |
| 8368 | 36900.37000.37100.37400.52200.70200.644800 | Side blockwork for lift shafts | 9d | 2027-02-13 | 2027-02-21 | 8358 |  | 7 Days Work | 9289014 |
| 8369 | 36900.37000.37100.37400.52200.70200.644900 | Door Threshold for lifts | 6d | 2027-02-22 | 2027-02-27 | 8368 |  | 7 Days Work | 9289024 |
| 8370 | 36900.37000.37100.37400.52200.70200.645000 | Granite Cladding | 10d | 2027-02-28 | 2027-03-09 | 8369 |  | 7 Days Work | 9289034 |
| 8371 | 36900.37000.37100.37400.52200.70200.645100 | MEP Services | 60d | 2027-03-10 | 2027-05-08 | 8370 |  | 7 Days Work | 9289044 |
| 8372 | 36900.37000.37100.37400.52200.70200.645200 | Flooring+Skirting | 20d | 2027-05-09 | 2027-05-28 | 8371 |  | 7 Days Work | 9289054 |
| 8373 | 36900.37000.37100.37400.52200.70200.645300 | Wall finishes | 21d | 2027-05-29 | 2027-06-18 | 8372 |  | 7 Days Work | 9289064 |
| 8374 | 36900.37000.37100.37400.52200.70200.645400 | False Ceiling | 10d | 2027-06-19 | 2027-06-28 | 8373 |  | 7 Days Work | 9289074 |
| 8375 | 36900.37000.37100.37400.52200.70200.645500 | Staircase | 15d | 2027-06-29 | 2027-07-13 | 8374 |  | 7 Days Work | 9289084 |
| 8376 | 36900.37000.37100.37400.52200.70200.645600 | Deep Cleaning | 7d | 2027-07-14 | 2027-07-20 | 8375 |  | 7 Days Work | 9289094 |
| 8377 | 36900.37000.37100.37400.52200.70100 | **19th Habitable/20th Floor** | 158d | 2027-02-22 | 2027-07-29 |  | start no earlier than 2027-02-22 | 7 Days Work | 9280144 |
| 8378 | 36900.37000.37100.37400.52200.70100.645700 | Side blockwork for lift shafts | 9d | 2027-02-22 | 2027-03-02 | 8368 |  | 7 Days Work | 9289104 |
| 8379 | 36900.37000.37100.37400.52200.70100.645800 | Door Threshold for lifts | 6d | 2027-03-03 | 2027-03-08 | 8378 |  | 7 Days Work | 9289114 |
| 8380 | 36900.37000.37100.37400.52200.70100.645900 | Granite Cladding | 10d | 2027-03-09 | 2027-03-18 | 8379 |  | 7 Days Work | 9289124 |
| 8381 | 36900.37000.37100.37400.52200.70100.646000 | MEP Services | 60d | 2027-03-19 | 2027-05-17 | 8380 |  | 7 Days Work | 9289134 |
| 8382 | 36900.37000.37100.37400.52200.70100.646100 | Flooring+Skirting | 20d | 2027-05-18 | 2027-06-06 | 8381 |  | 7 Days Work | 9289144 |
| 8383 | 36900.37000.37100.37400.52200.70100.646200 | Wall finishes | 21d | 2027-06-07 | 2027-06-27 | 8382 |  | 7 Days Work | 9289154 |
| 8384 | 36900.37000.37100.37400.52200.70100.646300 | False Ceiling | 10d | 2027-06-28 | 2027-07-07 | 8383 |  | 7 Days Work | 9289164 |
| 8385 | 36900.37000.37100.37400.52200.70100.646400 | Staircase | 15d | 2027-07-08 | 2027-07-22 | 8384 |  | 7 Days Work | 9289174 |
| 8386 | 36900.37000.37100.37400.52200.70100.646500 | Deep Cleaning | 7d | 2027-07-23 | 2027-07-29 | 8385 |  | 7 Days Work | 9289184 |

| ID | WBS | Task | Duration | Start | Finish | Predecessors | Constraint | Calendar | Unique_Task_ID |
| --- | --- | --- | --- | --- | --- | --- | --- | --- | --- |
| 8387 | 36900.37000.37100.37400.52200.69800 | **20th Habitable/21st Floor** | 158d | 2027-03-03 | 2027-08-07 |  | start no earlier than 2027-03-03 | 7 Days Work | 9280154 |
| 8388 | 36900.37000.37100.37400.52200.69800.646600 | Side blockwork for lift shafts | 9d | 2027-03-03 | 2027-03-11 | 8378 |  | 7 Days Work | 9289194 |
| 8389 | 36900.37000.37100.37400.52200.69800.646700 | Door Threshold for lifts | 6d | 2027-03-12 | 2027-03-17 | 8388 |  | 7 Days Work | 9289204 |
| 8390 | 36900.37000.37100.37400.52200.69800.646800 | Granite Cladding | 10d | 2027-03-18 | 2027-03-27 | 8389 |  | 7 Days Work | 9289214 |
| 8391 | 36900.37000.37100.37400.52200.69800.646900 | MEP Services | 60d | 2027-03-28 | 2027-05-26 | 8390 |  | 7 Days Work | 9289224 |
| 8392 | 36900.37000.37100.37400.52200.69800.647000 | Flooring+Skirting | 20d | 2027-05-27 | 2027-06-15 | 8391 |  | 7 Days Work | 9289234 |
| 8393 | 36900.37000.37100.37400.52200.69800.647100 | Wall finishes | 21d | 2027-06-16 | 2027-07-06 | 8392 |  | 7 Days Work | 9289244 |
| 8394 | 36900.37000.37100.37400.52200.69800.647200 | False Ceiling | 10d | 2027-07-07 | 2027-07-16 | 8393 |  | 7 Days Work | 9289254 |
| 8395 | 36900.37000.37100.37400.52200.69800.647300 | Staircase | 15d | 2027-07-17 | 2027-07-31 | 8394 |  | 7 Days Work | 9289264 |
| 8396 | 36900.37000.37100.37400.52200.69800.647400 | Deep Cleaning | 7d | 2027-08-01 | 2027-08-07 | 8395 |  | 7 Days Work | 9044814 |
| 8397 | 36900.37000.37100.37400.67500 | **Lift** | 332d | 2025-11-30 | 2026-10-27 |  | start no earlier than 2025-11-30 | 7 Days Work | 9279954 |
| 8398 | 36900.37000.37100.37400.67500.123000 | Order Issue | 104d | 2025-11-30 | 2026-03-13 | 6983FS-120d |  | 7 Days Work | 9280164 |
| 8399 | 36900.37000.37100.37400.67500.123100 | Shop drawing approval | 30d | 2026-03-14 | 2026-04-12 | 8398 |  | 7 Days Work | 9280174 |
| 8400 | 36900.37000.37100.37400.67500.123200 | Material recipt | 90d | 2026-04-13 | 2026-07-11 | 8399 |  | 7 Days Work | 9280184 |
| 8401 | 36900.37000.37100.37400.67500.123300 | Lift Shaft Handover | 30d | 2026-08-02 | 2026-08-31 | 6993 |  | 7 Days Work | 9280194 |
| 8402 | 36900.37000.37100.37400.67500.123400 | Template fixing by lift contractor | 7d | 2026-09-01 | 2026-09-07 | 8401 |  | 7 Days Work | 9280204 |
| 8403 | 36900.37000.37100.37400.67500.123500 | Centre line marking for lift shafts | 5d | 2026-09-08 | 2026-09-12 | 8402 |  | 7 Days Work | 9280214 |
| 8404 | 36900.37000.37100.37400.67500.123600 | Rail & Bracket Fixing | 5d | 2026-09-13 | 2026-09-17 | 8403 |  | 7 Days Work | 9280224 |
| 8405 | 36900.37000.37100.37400.67500.123700 | Cage Installation | 5d | 2026-09-18 | 2026-09-22 | 8404 |  | 7 Days Work | 9280234 |
| 8406 | 36900.37000.37100.37400.67500.123800 | Slow Speed | 20d | 2026-09-23 | 2026-10-12 | 8405 |  | 7 Days Work | 9280244 |
| 8407 | 36900.37000.37100.37400.67500.123900 | High Spped | 5d | 2026-10-13 | 2026-10-17 | 8406 |  | 7 Days Work | 9280254 |
| 8408 | 36900.37000.37100.37400.67500.124000 | Commisioning | 7d | 2026-10-18 | 2026-10-24 | 8407 |  | 7 Days Work | 9280264 |
| 8409 | 36900.37000.37100.37400.67500.124100 | Handover | 3d | 2026-10-25 | 2026-10-27 | 8408 |  | 7 Days Work | 9044804 |
| 8410 | 36900.37000.37100.37400.112000 | External Paint | 90d | 2026-11-10 | 2027-02-07 | 6992FS+135d |  | 7 Days Work | 9146064 |

| ID | WBS | Task | Duration | Start | Finish | Predecessors | Complete | Constraint | Calendar | Unique_Task_ID |
| --- | --- | --- | --- | --- | --- | --- | --- | --- | --- | --- |
| 8411 | 36900.37000.37100.37500 | **Tower-7** | 865d | 2025-03-04 | 2027-07-16 |  |  | start no earlier than 2025-03-04 | 7 Days Work | 9042664 |
| 8412 | 36900.37000.37100.37500.83200 | Pilling | 105d | 2025-03-04 | 2025-06-22 | 2705SS | 20% | start no earlier than 2025-03-04 | 7 Days Work | 9044824 |
| 8413 | 36900.37000.37100.37500.112100 | Excavation & Pile Breaking | 37d | 2025-06-23 | 2025-07-29 | 8412 |  |  | 7 Days Work | 9044825 |
| 8414 | 36900.37000.37100.37500.112200 | Pilecap | 26d | 2025-07-30 | 2025-08-24 | 8413 |  |  | 7 Days Work | 9044834 |
| 8415 | 36900.37000.37100.37500.112300 | up to PL | 22d | 2025-08-25 | 2025-09-15 | 8414 |  |  | 7 Days Work | 9044844 |
| 8416 | 36900.37000.37100.37500.112400 | 1st Floor Slab RCC | 25d | 2025-09-16 | 2025-10-10 | 8415 |  |  | 7 Days Work | 9044854 |
| 8417 | 36900.37000.37100.37500.112500 | 2nd Floor Slab RCC | 25d | 2025-10-11 | 2025-11-04 | 8416 |  |  | 7 Days Work | 9044864 |
| 8418 | 36900.37000.37100.37500.112600 | 3rd Floor Slab RCC | 21d | 2025-11-05 | 2025-11-25 | 8417 |  |  | 7 Days Work | 9044874 |
| 8419 | 36900.37000.37100.37500.112700 | 4th Floor Slab RCC | 15d | 2025-11-26 | 2025-12-10 | 8418 |  |  | 7 Days Work | 9044884 |
| 8420 | 36900.37000.37100.37500.112800 | 5th Floor Slab RCC | 9d | 2025-12-11 | 2025-12-19 | 8419 |  |  | 7 Days Work | 9044894 |
| 8421 | 36900.37000.37100.37500.112900 | 6th Floor Slab RCC | 9d | 2025-12-20 | 2025-12-28 | 8420 |  |  | 7 Days Work | 9044904 |
| 8422 | 36900.37000.37100.37500.113000 | 7th Floor Slab RCC | 12d | 2025-12-29 | 2026-01-09 | 8421 |  |  | 7 Days Work | 9044914 |
| 8423 | 36900.37000.37100.37500.113100 | 8th Floor Slab RCC | 9d | 2026-01-10 | 2026-01-18 | 8422 |  |  | 7 Days Work | 9044924 |
| 8424 | 36900.37000.37100.37500.113200 | 9th Floor Slab RCC | 9d | 2026-01-19 | 2026-01-27 | 8423 |  |  | 7 Days Work | 9044934 |
| 8425 | 36900.37000.37100.37500.113300 | 10th Floor Slab RCC | 9d | 2026-01-28 | 2026-02-05 | 8424 |  |  | 7 Days Work | 9044944 |
| 8426 | 36900.37000.37100.37500.113400 | 11th Floor Slab RCC | 12d | 2026-02-06 | 2026-02-17 | 8425 |  |  | 7 Days Work | 9044954 |
| 8427 | 36900.37000.37100.37500.113500 | 12th Floor Slab RCC | 9d | 2026-02-18 | 2026-02-26 | 8426 |  |  | 7 Days Work | 9044964 |
| 8428 | 36900.37000.37100.37500.113600 | 13th Floor Slab RCC | 9d | 2026-02-27 | 2026-03-07 | 8427 |  |  | 7 Days Work | 9044974 |
| 8429 | 36900.37000.37100.37500.113700 | 14th Floor Slab RCC | 9d | 2026-03-08 | 2026-03-16 | 8428 |  |  | 7 Days Work | 9044984 |
| 8430 | 36900.37000.37100.37500.113800 | 15th Floor Slab RCC | 12d | 2026-03-17 | 2026-03-28 | 8429 |  |  | 7 Days Work | 9044994 |
| 8431 | 36900.37000.37100.37500.113900 | 16th Floor Slab RCC | 9d | 2026-03-29 | 2026-04-06 | 8430 |  |  | 7 Days Work | 9045004 |
| 8432 | 36900.37000.37100.37500.114000 | 17th Floor Slab RCC | 9d | 2026-04-07 | 2026-04-15 | 8431 |  |  | 7 Days Work | 9045014 |
| 8433 | 36900.37000.37100.37500.114100 | 18th Floor Slab RCC | 9d | 2026-04-16 | 2026-04-24 | 8432 |  |  | 7 Days Work | 9045024 |
| 8434 | 36900.37000.37100.37500.114200 | 19th Floor Slab RCC | 12d | 2026-04-25 | 2026-05-06 | 8433 |  |  | 7 Days Work | 9045034 |
| 8435 | 36900.37000.37100.37500.114300 | 20th Floor Slab RCC | 9d | 2026-05-07 | 2026-05-15 | 8434 |  |  | 7 Days Work | 9045044 |
| 8436 | 36900.37000.37100.37500.114400 | 21st Floor Slab RCC | 9d | 2026-05-16 | 2026-05-24 | 8435 |  |  | 7 Days Work | 9045054 |
| 8437 | 36900.37000.37100.37500.114500 | Terrace | 12d | 2026-05-25 | 2026-06-05 | 8436 |  |  | 7 Days Work | 9045064 |
| 8438 | 36900.37000.37100.37500.114600 | Above Terrace | 35d | 2026-06-06 | 2026-07-10 | 8437 |  |  | 7 Days Work | 9307844 |

| ID | WBS | Task | Duration | Start | Finish | Predecessors | Constraint | Calendar | Unique_Task_ID |
| --- | --- | --- | --- | --- | --- | --- | --- | --- | --- |
| 8439 | 36900.37000.37100.37500.38200 | **Flat Finishing** | 691d | 2025-04-01 | 2027-02-20 |  | start no earlier than 2025-04-01 | 7 Days Work | 9293694 |
| 8440 | 36900.37000.37100.37500.38200.50200 | **1st Habitable/2nd Floor** | 245d | 2025-12-11 | 2026-08-12 |  | start no earlier than 2025-12-11 | 7 Days Work | 9293704 |
| 8441 | 36900.37000.37100.37500.38200.50200.647500 | Post Pour | 7d | 2025-12-11 | 2025-12-17 | 8418FS+15d |  | 7 Days Work | 9294444 |
| 8442 | 36900.37000.37100.37500.38200.50200.647600 | MEP Clearance -1 | 5d | 2025-12-18 | 2025-12-22 | 8441 |  | 7 Days Work | 9294454 |
| 8443 | 36900.37000.37100.37500.38200.50200.647700 | Benchmark | 1d | 2025-12-23 | 2025-12-23 | 8442 |  | 7 Days Work | 9294464 |
| 8444 | 36900.37000.37100.37500.38200.50200.647800 | Temporary Railing | 3d | 2025-12-24 | 2025-12-26 | 8443 |  | 7 Days Work | 9294474 |
| 8445 | 36900.37000.37100.37500.38200.50200.647900 | Blockwork | 10d | 2025-12-27 | 2026-01-05 | 8444 |  | 7 Days Work | 9294484 |
| 8446 | 36900.37000.37100.37500.38200.50200.648000 | MEP Clearance -2 | 10d | 2026-01-06 | 2026-01-15 | 8445 |  | 7 Days Work | 9294494 |
| 8447 | 36900.37000.37100.37500.38200.50200.648100 | Gypsum Plaster | 14d | 2026-01-16 | 2026-01-29 | 8446 |  | 7 Days Work | 9294504 |
| 8448 | 36900.37000.37100.37500.38200.50200.648200 | Kitchen Platform | 3d | 2026-01-30 | 2026-02-01 | 8447 |  | 7 Days Work | 9294514 |
| 8449 | 36900.37000.37100.37500.38200.50200.648300 | Kitchen dado | 7d | 2026-02-02 | 2026-02-08 | 8448 |  | 7 Days Work | 9294524 |
| 8450 | 36900.37000.37100.37500.38200.50200.648400 | Fire Fighting | 5d | 2026-02-09 | 2026-02-13 | 8449 |  | 7 Days Work | 9294534 |
| 8451 | 36900.37000.37100.37500.38200.50200.648500 | Anticapilary | 5d | 2026-02-14 | 2026-02-18 | 8450 |  | 7 Days Work | 9294544 |
| 8452 | 36900.37000.37100.37500.38200.50200.648600 | Stone Laying | 10d | 2026-03-24 | 2026-04-02 | 8492 |  | 7 Days Work | 9294554 |
| 8453 | 36900.37000.37100.37500.38200.50200.648700 | Tiles Laying | 7d | 2026-03-24 | 2026-03-30 | 8492 |  | 7 Days Work | 9294564 |
| 8454 | 36900.37000.37100.37500.38200.50200.648800 | 1st cutting/polishing of stone flooring | 7d | 2026-03-31 | 2026-04-06 | 8453 |  | 7 Days Work | 9294574 |
| 8455 | 36900.37000.37100.37500.38200.50200.648900 | Tiles/Stone skirting | 5d | 2026-04-07 | 2026-04-11 | 8454 |  | 7 Days Work | 9294584 |
| 8456 | 36900.37000.37100.37500.38200.50200.649000 | Protechtion sheet | 1d | 2026-04-12 | 2026-04-12 | 8455 |  | 7 Days Work | 9294594 |
| 8457 | 36900.37000.37100.37500.38200.50200.649100 | Installation of Temporary Door | 1d | 2026-04-13 | 2026-04-13 | 8456 |  | 7 Days Work | 9294604 |
| 8458 | 36900.37000.37100.37500.38200.50200.649200 | Fixing of window tracks | 5d | 2026-04-14 | 2026-04-18 | 8457 |  | 7 Days Work | 9294614 |
| 8459 | 36900.37000.37100.37500.38200.50200.649300 | Wire Pulling | 7d | 2026-04-19 | 2026-04-25 | 8458 |  | 7 Days Work | 9294624 |
| 8460 | 36900.37000.37100.37500.38200.50200.649400 | Gypsum Remaining | 5d | 2026-04-26 | 2026-04-30 | 8459 |  | 7 Days Work | 9294634 |
| 8461 | 36900.37000.37100.37500.38200.50200.649500 | Fixing of windoow shutter | 5d | 2026-05-01 | 2026-05-05 | 8460 |  | 7 Days Work | 9294644 |
| 8462 | 36900.37000.37100.37500.38200.50200.649600 | Putty Works - walls & ceiling | 15d | 2026-05-06 | 2026-05-20 | 8461 |  | 7 Days Work | 9294654 |
| 8463 | 36900.37000.37100.37500.38200.50200.649700 | False Ceiling- Framing | 10d | 2026-05-21 | 2026-05-30 | 8462 |  | 7 Days Work | 9294664 |
| 8464 | 36900.37000.37100.37500.38200.50200.649800 | Pre Hung Door | 3d | 2026-05-31 | 2026-06-02 | 8463 |  | 7 Days Work | 9294674 |
| 8465 | 36900.37000.37100.37500.38200.50200.649900 | Protechtion sheet | 2d | 2026-06-03 | 2026-06-04 | 8464 |  | 7 Days Work | 9294684 |
| 8466 | 36900.37000.37100.37500.38200.50200.650000 | Skirting near door | 2d | 2026-06-05 | 2026-06-06 | 8465 |  | 7 Days Work | 9294694 |
| 8467 | 36900.37000.37100.37500.38200.50200.650100 | Electrical Switch box fixing | 14d | 2026-06-07 | 2026-06-20 | 8466 |  | 7 Days Work | 9294704 |
| 8468 | 36900.37000.37100.37500.38200.50200.650200 | Fire Fighting painting | 5d | 2026-06-21 | 2026-06-25 | 8467 |  | 7 Days Work | 9294714 |
| 8469 | 36900.37000.37100.37500.38200.50200.650300 | Protection of all flooring, door & window hardware | 5d | 2026-06-26 | 2026-06-30 | 8468 |  | 7 Days Work | 9294724 |
| 8470 | 36900.37000.37100.37500.38200.50200.650400 | 1st coat primer- ceiling 1st & walls | 14d | 2026-07-01 | 2026-07-14 | 8469 |  | 7 Days Work | 9294734 |
| 8471 | 36900.37000.37100.37500.38200.50200.650500 | Wooden Flooring | 5d | 2026-07-15 | 2026-07-19 | 8470 |  | 7 Days Work | 9294744 |
| 8472 | 36900.37000.37100.37500.38200.50200.650600 | Removing of Temporary Railing & installation of Glass Railing | 5d | 2026-07-15 | 2026-07-19 | 8470 |  | 7 Days Work | 9294754 |
| 8473 | 36900.37000.37100.37500.38200.50200.650700 | Tile Grouting | 7d | 2026-07-15 | 2026-07-21 | 8470 |  | 7 Days Work | 9294764 |
| 8474 | 36900.37000.37100.37500.38200.50200.650800 | False Ceiling | 5d | 2026-07-22 | 2026-07-26 | 8473 |  | 7 Days Work | 9294774 |
| 8475 | 36900.37000.37100.37500.38200.50200.650900 | 2nd coat of primer | 10d | 2026-07-27 | 2026-08-05 | 8474 |  | 7 Days Work | 9294784 |
| 8476 | 36900.37000.37100.37500.38200.50200.651000 | Final cutting/polishing of stone flooring | 7d | 2026-08-06 | 2026-08-12 | 8475 |  | 7 Days Work | 9294794 |

| ID | WBS | Task | Duration | Start | Finish | Predecessors | Constraint | Calendar | Unique_Task_ID |
| --- | --- | --- | --- | --- | --- | --- | --- | --- | --- |
| 8477 | 36900.37000.37100.37500.38200.50200.60600 | **Toilet** | 237d | 2025-12-18 | 2026-08-11 |  | start no earlier than 2025-12-18 | 7 Days Work | 9293914 |
| 8478 | 36900.37000.37100.37500.38200.50200.60600.992800 | Toilet_MEP Clearance -1 | 7d | 2025-12-18 | 2025-12-24 | 8441 |  | 7 Days Work | 9303444 |
| 8479 | 36900.37000.37100.37500.38200.50200.60600.992900 | Toilet_Level Marking | 1d | 2025-12-25 | 2025-12-25 | 8478 |  | 7 Days Work | 9303454 |
| 8480 | 36900.37000.37100.37500.38200.50200.60600.993000 | Toilet_Chasing work for Electrical conduit & concealed plumbing | 5d | 2025-12-26 | 2025-12-30 | 8479 |  | 7 Days Work | 9303464 |
| 8481 | 36900.37000.37100.37500.38200.50200.60600.993100 | Toilet_Plumbing work 1st fix | 5d | 2025-12-31 | 2026-01-04 | 8480 |  | 7 Days Work | 9303474 |
| 8482 | 36900.37000.37100.37500.38200.50200.60600.993200 | Toilet_Sleeve/Bore Packing | 5d | 2026-01-05 | 2026-01-09 | 8481 |  | 7 Days Work | 9303484 |
| 8483 | 36900.37000.37100.37500.38200.50200.60600.993300 | Toilet_Waterproofing | 10d | 2026-01-10 | 2026-01-19 | 8482 |  | 7 Days Work | 9303494 |
| 8484 | 36900.37000.37100.37500.38200.50200.60600.993400 | Toilet_Screed | 1d | 2026-01-20 | 2026-01-20 | 8483 |  | 7 Days Work | 9303504 |
| 8485 | 36900.37000.37100.37500.38200.50200.60600.993500 | Toilet_Plumbing 2nd fix | 5d | 2026-01-21 | 2026-01-25 | 8484 |  | 7 Days Work | 9303514 |
| 8486 | 36900.37000.37100.37500.38200.50200.60600.993600 | Toilet_Ledge wall | 5d | 2026-01-26 | 2026-01-30 | 8485 |  | 7 Days Work | 9303524 |
| 8487 | 36900.37000.37100.37500.38200.50200.60600.993700 | Toilet_Cement Plaster | 5d | 2026-01-31 | 2026-02-04 | 8486 |  | 7 Days Work | 9303534 |
| 8488 | 36900.37000.37100.37500.38200.50200.60600.993800 | Toilet_Door Frame | 1d | 2026-02-05 | 2026-02-05 | 8487 |  | 7 Days Work | 9303544 |
| 8489 | 36900.37000.37100.37500.38200.50200.60600.993900 | Toilet_Wash basin & Couter | 3d | 2026-02-06 | 2026-02-08 | 8488 |  | 7 Days Work | 9303554 |
| 8490 | 36900.37000.37100.37500.38200.50200.60600.994000 | Toilet_Wall dado | 20d | 2026-02-09 | 2026-02-28 | 8489 |  | 7 Days Work | 9303564 |
| 8491 | 36900.37000.37100.37500.38200.50200.60600.994100 | Toilet_Granite Work-Ledge wall top | 3d | 2026-03-01 | 2026-03-03 | 8490 |  | 7 Days Work | 9303574 |
| 8492 | 36900.37000.37100.37500.38200.50200.60600.994200 | Toilet_Floor Tilling work | 20d | 2026-03-04 | 2026-03-23 | 8491 |  | 7 Days Work | 9303584 |
| 8493 | 36900.37000.37100.37500.38200.50200.60600.994300 | Toilet_1st row of dado | 5d | 2026-03-24 | 2026-03-28 | 8492 |  | 7 Days Work | 9303594 |
| 8494 | 36900.37000.37100.37500.38200.50200.60600.994400 | Toilet_Window Fixing | 14d | 2026-03-29 | 2026-04-11 | 8493 |  | 7 Days Work | 9303604 |
| 8495 | 36900.37000.37100.37500.38200.50200.60600.994500 | Toilet_Services above False ceiling | 21d | 2026-04-12 | 2026-05-02 | 8494 |  | 7 Days Work | 9303614 |
| 8496 | 36900.37000.37100.37500.38200.50200.60600.994600 | Toilet_False Ceiling framing | 12d | 2026-05-03 | 2026-05-14 | 8495 |  | 7 Days Work | 9303624 |
| 8497 | 36900.37000.37100.37500.38200.50200.60600.994700 | Toilet_Door Frame | 5d | 2026-05-15 | 2026-05-19 | 8496 |  | 7 Days Work | 9303634 |
| 8498 | 36900.37000.37100.37500.38200.50200.60600.994800 | Toilet_Epoxy Tile Grouting | 7d | 2026-07-15 | 2026-07-21 | 8473SS |  | 7 Days Work | 9303644 |
| 8499 | 36900.37000.37100.37500.38200.50200.60600.994900 | Toilet_False ceiling board fixing, CP Sanitary Fixture, Electric Fixture | 21d | 2026-07-22 | 2026-08-11 | 8498 |  | 7 Days Work | 9303654 |
| 8500 | 36900.37000.37100.37500.38200.50300 | **2nd Habitable/3rd Floor** | 245d | 2025-12-26 | 2026-08-27 |  | start no earlier than 2025-12-26 | 7 Days Work | 9293714 |
| 8501 | 36900.37000.37100.37500.38200.50300.651100 | Post Pour | 7d | 2025-12-26 | 2026-01-01 | 8419FS+15d |  | 7 Days Work | 9294804 |
| 8502 | 36900.37000.37100.37500.38200.50300.651200 | MEP Clearance -1 | 5d | 2026-01-02 | 2026-01-06 | 8501 |  | 7 Days Work | 9294814 |
| 8503 | 36900.37000.37100.37500.38200.50300.651300 | Benchmark | 1d | 2026-01-07 | 2026-01-07 | 8502 |  | 7 Days Work | 9294824 |
| 8504 | 36900.37000.37100.37500.38200.50300.651400 | Temporary Railing | 3d | 2026-01-08 | 2026-01-10 | 8503 |  | 7 Days Work | 9294834 |
| 8505 | 36900.37000.37100.37500.38200.50300.651500 | Blockwork | 10d | 2026-01-11 | 2026-01-20 | 8504 |  | 7 Days Work | 9294844 |
| 8506 | 36900.37000.37100.37500.38200.50300.651600 | MEP Clearance -2 | 10d | 2026-01-21 | 2026-01-30 | 8505 |  | 7 Days Work | 9294854 |
| 8507 | 36900.37000.37100.37500.38200.50300.651700 | Gypsum Plaster | 14d | 2026-01-31 | 2026-02-13 | 8506 |  | 7 Days Work | 9294864 |
| 8508 | 36900.37000.37100.37500.38200.50300.651800 | Kitchen Platform | 3d | 2026-02-14 | 2026-02-16 | 8507 |  | 7 Days Work | 9294874 |
| 8509 | 36900.37000.37100.37500.38200.50300.651900 | Kitchen dado | 7d | 2026-02-17 | 2026-02-23 | 8508 |  | 7 Days Work | 9294884 |
| 8510 | 36900.37000.37100.37500.38200.50300.652000 | Fire Fighting | 5d | 2026-02-24 | 2026-02-28 | 8509 |  | 7 Days Work | 9294894 |
| 8511 | 36900.37000.37100.37500.38200.50300.652100 | Anticapilary | 5d | 2026-03-01 | 2026-03-05 | 8510 |  | 7 Days Work | 9294904 |
| 8512 | 36900.37000.37100.37500.38200.50300.652200 | Stone Laying | 10d | 2026-04-08 | 2026-04-17 | 8552 |  | 7 Days Work | 9294914 |
| 8513 | 36900.37000.37100.37500.38200.50300.652300 | Tiles Laying | 7d | 2026-04-08 | 2026-04-14 | 8552 |  | 7 Days Work | 9294924 |
| 8514 | 36900.37000.37100.37500.38200.50300.652400 | 1st cutting/polishing of stone flooring | 7d | 2026-04-15 | 2026-04-21 | 8513 |  | 7 Days Work | 9294934 |
| 8515 | 36900.37000.37100.37500.38200.50300.652500 | Tiles/Stone skirting | 5d | 2026-04-22 | 2026-04-26 | 8514 |  | 7 Days Work | 9294944 |
| 8516 | 36900.37000.37100.37500.38200.50300.652600 | Protechtion sheet | 1d | 2026-04-27 | 2026-04-27 | 8515 |  | 7 Days Work | 9294954 |
| 8517 | 36900.37000.37100.37500.38200.50300.652700 | Installation of Temporary Door | 1d | 2026-04-28 | 2026-04-28 | 8516 |  | 7 Days Work | 9294964 |
| 8518 | 36900.37000.37100.37500.38200.50300.652800 | Fixing of window tracks | 5d | 2026-04-29 | 2026-05-03 | 8517 |  | 7 Days Work | 9294974 |
| 8519 | 36900.37000.37100.37500.38200.50300.652900 | Wire Pulling | 7d | 2026-05-04 | 2026-05-10 | 8518 |  | 7 Days Work | 9294984 |
| 8520 | 36900.37000.37100.37500.38200.50300.653000 | Gypsum Remaining | 5d | 2026-05-11 | 2026-05-15 | 8519 |  | 7 Days Work | 9294994 |
| 8521 | 36900.37000.37100.37500.38200.50300.653100 | Fixing of windoow shutter | 5d | 2026-05-16 | 2026-05-20 | 8520 |  | 7 Days Work | 9295004 |
| 8522 | 36900.37000.37100.37500.38200.50300.653200 | Putty Works - walls & ceiling | 15d | 2026-05-21 | 2026-06-04 | 8521 |  | 7 Days Work | 9295014 |
| 8523 | 36900.37000.37100.37500.38200.50300.653300 | False Ceiling- Framing | 10d | 2026-06-05 | 2026-06-14 | 8522 |  | 7 Days Work | 9295024 |
| 8524 | 36900.37000.37100.37500.38200.50300.653400 | Pre Hung Door | 3d | 2026-06-15 | 2026-06-17 | 8523 |  | 7 Days Work | 9295034 |
| 8525 | 36900.37000.37100.37500.38200.50300.653500 | Protechtion sheet | 2d | 2026-06-18 | 2026-06-19 | 8524 |  | 7 Days Work | 9295044 |
| 8526 | 36900.37000.37100.37500.38200.50300.653600 | Skirting near door | 2d | 2026-06-20 | 2026-06-21 | 8525 |  | 7 Days Work | 9295054 |
| 8527 | 36900.37000.37100.37500.38200.50300.653700 | Electrical Switch box fixing | 14d | 2026-06-22 | 2026-07-05 | 8526 |  | 7 Days Work | 9295064 |
| 8528 | 36900.37000.37100.37500.38200.50300.653800 | Fire Fighting painting | 5d | 2026-07-06 | 2026-07-10 | 8527 |  | 7 Days Work | 9295074 |
| 8529 | 36900.37000.37100.37500.38200.50300.653900 | Protection of all flooring, door & window hardware | 5d | 2026-07-11 | 2026-07-15 | 8528 |  | 7 Days Work | 9295084 |
| 8530 | 36900.37000.37100.37500.38200.50300.654000 | 1st coat primer- ceiling 1st & walls | 14d | 2026-07-16 | 2026-07-29 | 8529 |  | 7 Days Work | 9295094 |
| 8531 | 36900.37000.37100.37500.38200.50300.654100 | Wooden Flooring | 5d | 2026-07-30 | 2026-08-03 | 8530 |  | 7 Days Work | 9295104 |
| 8532 | 36900.37000.37100.37500.38200.50300.654200 | Removing of Temporary Railing & installation of Glass Railing | 5d | 2026-07-30 | 2026-08-03 | 8530 |  | 7 Days Work | 9295114 |
| 8533 | 36900.37000.37100.37500.38200.50300.654300 | Tile Grouting | 7d | 2026-07-30 | 2026-08-05 | 8530 |  | 7 Days Work | 9295124 |
| 8534 | 36900.37000.37100.37500.38200.50300.654400 | False Ceiling | 5d | 2026-08-06 | 2026-08-10 | 8533 |  | 7 Days Work | 9295134 |
| 8535 | 36900.37000.37100.37500.38200.50300.654500 | 2nd coat of primer | 10d | 2026-08-11 | 2026-08-20 | 8534 |  | 7 Days Work | 9295144 |
| 8536 | 36900.37000.37100.37500.38200.50300.654600 | Final cutting/polishing of stone flooring | 7d | 2026-08-21 | 2026-08-27 | 8535 |  | 7 Days Work | 9295154 |

| ID | WBS | Task | Duration | Start | Finish | Predecessors | Constraint | Calendar | Unique_Task_ID |
| --- | --- | --- | --- | --- | --- | --- | --- | --- | --- |
| 8537 | 36900.37000.37100.37500.38200.50300.60500 | **Toilet** | 237d | 2026-01-02 | 2026-08-26 |  | start no earlier than 2026-01-02 | 7 Days Work | 9293924 |
| 8538 | 36900.37000.37100.37500.38200.50300.60500.995000 | Toilet_MEP Clearance -1 | 7d | 2026-01-02 | 2026-01-08 | 8501 |  | 7 Days Work | 9303664 |
| 8539 | 36900.37000.37100.37500.38200.50300.60500.995100 | Toilet_Level Marking | 1d | 2026-01-09 | 2026-01-09 | 8538 |  | 7 Days Work | 9303674 |
| 8540 | 36900.37000.37100.37500.38200.50300.60500.995200 | Toilet_Chasing work for Electrical conduit & concealed plumbing | 5d | 2026-01-10 | 2026-01-14 | 8539 |  | 7 Days Work | 9303684 |
| 8541 | 36900.37000.37100.37500.38200.50300.60500.995300 | Toilet_Plumbing work 1st fix | 5d | 2026-01-15 | 2026-01-19 | 8540 |  | 7 Days Work | 9303694 |
| 8542 | 36900.37000.37100.37500.38200.50300.60500.995400 | Toilet_Sleeve/Bore Packing | 5d | 2026-01-20 | 2026-01-24 | 8541 |  | 7 Days Work | 9303704 |
| 8543 | 36900.37000.37100.37500.38200.50300.60500.995500 | Toilet_Waterproofing | 10d | 2026-01-25 | 2026-02-03 | 8542 |  | 7 Days Work | 9303714 |
| 8544 | 36900.37000.37100.37500.38200.50300.60500.995600 | Toilet_Screed | 1d | 2026-02-04 | 2026-02-04 | 8543 |  | 7 Days Work | 9303724 |
| 8545 | 36900.37000.37100.37500.38200.50300.60500.995700 | Toilet_Plumbing 2nd fix | 5d | 2026-02-05 | 2026-02-09 | 8544 |  | 7 Days Work | 9303734 |
| 8546 | 36900.37000.37100.37500.38200.50300.60500.995800 | Toilet_Ledge wall | 5d | 2026-02-10 | 2026-02-14 | 8545 |  | 7 Days Work | 9303744 |
| 8547 | 36900.37000.37100.37500.38200.50300.60500.995900 | Toilet_Cement Plaster | 5d | 2026-02-15 | 2026-02-19 | 8546 |  | 7 Days Work | 9303754 |
| 8548 | 36900.37000.37100.37500.38200.50300.60500.996000 | Toilet_Door Frame | 1d | 2026-02-20 | 2026-02-20 | 8547 |  | 7 Days Work | 9303764 |
| 8549 | 36900.37000.37100.37500.38200.50300.60500.996100 | Toilet_Wash basin & Couter | 3d | 2026-02-21 | 2026-02-23 | 8548 |  | 7 Days Work | 9303774 |
| 8550 | 36900.37000.37100.37500.38200.50300.60500.996200 | Toilet_Wall dado | 20d | 2026-02-24 | 2026-03-15 | 8549 |  | 7 Days Work | 9303784 |
| 8551 | 36900.37000.37100.37500.38200.50300.60500.996300 | Toilet_Granite Work-Ledge wall top | 3d | 2026-03-16 | 2026-03-18 | 8550 |  | 7 Days Work | 9303794 |
| 8552 | 36900.37000.37100.37500.38200.50300.60500.996400 | Toilet_Floor Tilling work | 20d | 2026-03-19 | 2026-04-07 | 8551 |  | 7 Days Work | 9303804 |
| 8553 | 36900.37000.37100.37500.38200.50300.60500.996500 | Toilet_1st row of dado | 5d | 2026-04-08 | 2026-04-12 | 8552 |  | 7 Days Work | 9303814 |
| 8554 | 36900.37000.37100.37500.38200.50300.60500.996600 | Toilet_Window Fixing | 14d | 2026-04-13 | 2026-04-26 | 8553 |  | 7 Days Work | 9303824 |
| 8555 | 36900.37000.37100.37500.38200.50300.60500.996700 | Toilet_Services above False ceiling | 21d | 2026-04-27 | 2026-05-17 | 8554 |  | 7 Days Work | 9303834 |
| 8556 | 36900.37000.37100.37500.38200.50300.60500.996800 | Toilet_False Ceiling framing | 12d | 2026-05-18 | 2026-05-29 | 8555 |  | 7 Days Work | 9303844 |
| 8557 | 36900.37000.37100.37500.38200.50300.60500.996900 | Toilet_Door Frame | 5d | 2026-05-30 | 2026-06-03 | 8556 |  | 7 Days Work | 9303854 |
| 8558 | 36900.37000.37100.37500.38200.50300.60500.997000 | Toilet_Epoxy Tile Grouting | 7d | 2026-07-30 | 2026-08-05 | 8533SS |  | 7 Days Work | 9303864 |
| 8559 | 36900.37000.37100.37500.38200.50300.60500.997100 | Toilet_False ceiling board fixing, CP Sanitary Fixture, Electric Fixture | 21d | 2026-08-06 | 2026-08-26 | 8558 |  | 7 Days Work | 9303874 |
| 8560 | 36900.37000.37100.37500.38200.50400 | **3rd Habitable/4th Floor** | 245d | 2026-01-04 | 2026-09-05 |  | start no earlier than 2026-01-04 | 7 Days Work | 9293724 |
| 8561 | 36900.37000.37100.37500.38200.50400.654700 | Post Pour | 7d | 2026-01-04 | 2026-01-10 | 8420FS+15d |  | 7 Days Work | 9295164 |
| 8562 | 36900.37000.37100.37500.38200.50400.654800 | MEP Clearance -1 | 5d | 2026-01-11 | 2026-01-15 | 8561 |  | 7 Days Work | 9295174 |
| 8563 | 36900.37000.37100.37500.38200.50400.654900 | Benchmark | 1d | 2026-01-16 | 2026-01-16 | 8562 |  | 7 Days Work | 9295184 |
| 8564 | 36900.37000.37100.37500.38200.50400.655000 | Temporary Railing | 3d | 2026-01-17 | 2026-01-19 | 8563 |  | 7 Days Work | 9295194 |
| 8565 | 36900.37000.37100.37500.38200.50400.655100 | Blockwork | 10d | 2026-01-20 | 2026-01-29 | 8564 |  | 7 Days Work | 9295204 |
| 8566 | 36900.37000.37100.37500.38200.50400.655200 | MEP Clearance -2 | 10d | 2026-01-30 | 2026-02-08 | 8565 |  | 7 Days Work | 9295214 |
| 8567 | 36900.37000.37100.37500.38200.50400.655300 | Gypsum Plaster | 14d | 2026-02-09 | 2026-02-22 | 8566 |  | 7 Days Work | 9295224 |
| 8568 | 36900.37000.37100.37500.38200.50400.655400 | Kitchen Platform | 3d | 2026-02-23 | 2026-02-25 | 8567 |  | 7 Days Work | 9295234 |
| 8569 | 36900.37000.37100.37500.38200.50400.655500 | Kitchen dado | 7d | 2026-02-26 | 2026-03-04 | 8568 |  | 7 Days Work | 9295244 |
| 8570 | 36900.37000.37100.37500.38200.50400.655600 | Fire Fighting | 5d | 2026-03-05 | 2026-03-09 | 8569 |  | 7 Days Work | 9295254 |
| 8571 | 36900.37000.37100.37500.38200.50400.655700 | Anticapilary | 5d | 2026-03-10 | 2026-03-14 | 8570 |  | 7 Days Work | 9295264 |
| 8572 | 36900.37000.37100.37500.38200.50400.655800 | Stone Laying | 10d | 2026-04-17 | 2026-04-26 | 8612 |  | 7 Days Work | 9295274 |
| 8573 | 36900.37000.37100.37500.38200.50400.655900 | Tiles Laying | 7d | 2026-04-17 | 2026-04-23 | 8612 |  | 7 Days Work | 9295284 |
| 8574 | 36900.37000.37100.37500.38200.50400.656000 | 1st cutting/polishing of stone flooring | 7d | 2026-04-24 | 2026-04-30 | 8573 |  | 7 Days Work | 9295294 |
| 8575 | 36900.37000.37100.37500.38200.50400.656100 | Tiles/Stone skirting | 5d | 2026-05-01 | 2026-05-05 | 8574 |  | 7 Days Work | 9295304 |
| 8576 | 36900.37000.37100.37500.38200.50400.656200 | Protechtion sheet | 1d | 2026-05-06 | 2026-05-06 | 8575 |  | 7 Days Work | 9295314 |
| 8577 | 36900.37000.37100.37500.38200.50400.656300 | Installation of Temporary Door | 1d | 2026-05-07 | 2026-05-07 | 8576 |  | 7 Days Work | 9295324 |
| 8578 | 36900.37000.37100.37500.38200.50400.656400 | Fixing of window tracks | 5d | 2026-05-08 | 2026-05-12 | 8577 |  | 7 Days Work | 9295334 |
| 8579 | 36900.37000.37100.37500.38200.50400.656500 | Wire Pulling | 7d | 2026-05-13 | 2026-05-19 | 8578 |  | 7 Days Work | 9295344 |
| 8580 | 36900.37000.37100.37500.38200.50400.656600 | Gypsum Remaining | 5d | 2026-05-20 | 2026-05-24 | 8579 |  | 7 Days Work | 9295354 |
| 8581 | 36900.37000.37100.37500.38200.50400.656700 | Fixing of windoow shutter | 5d | 2026-05-25 | 2026-05-29 | 8580 |  | 7 Days Work | 9295364 |
| 8582 | 36900.37000.37100.37500.38200.50400.656800 | Putty Works - walls & ceiling | 15d | 2026-05-30 | 2026-06-13 | 8581 |  | 7 Days Work | 9295374 |
| 8583 | 36900.37000.37100.37500.38200.50400.656900 | False Ceiling- Framing | 10d | 2026-06-14 | 2026-06-23 | 8582 |  | 7 Days Work | 9295384 |
| 8584 | 36900.37000.37100.37500.38200.50400.657000 | Pre Hung Door | 3d | 2026-06-24 | 2026-06-26 | 8583 |  | 7 Days Work | 9295394 |
| 8585 | 36900.37000.37100.37500.38200.50400.657100 | Protechtion sheet | 2d | 2026-06-27 | 2026-06-28 | 8584 |  | 7 Days Work | 9295404 |
| 8586 | 36900.37000.37100.37500.38200.50400.657200 | Skirting near door | 2d | 2026-06-29 | 2026-06-30 | 8585 |  | 7 Days Work | 9295414 |
| 8587 | 36900.37000.37100.37500.38200.50400.657300 | Electrical Switch box fixing | 14d | 2026-07-01 | 2026-07-14 | 8586 |  | 7 Days Work | 9295424 |
| 8588 | 36900.37000.37100.37500.38200.50400.657400 | Fire Fighting painting | 5d | 2026-07-15 | 2026-07-19 | 8587 |  | 7 Days Work | 9295434 |
| 8589 | 36900.37000.37100.37500.38200.50400.657500 | Protection of all flooring, door & window hardware | 5d | 2026-07-20 | 2026-07-24 | 8588 |  | 7 Days Work | 9295444 |
| 8590 | 36900.37000.37100.37500.38200.50400.657600 | 1st coat primer- ceiling 1st & walls | 14d | 2026-07-25 | 2026-08-07 | 8589 |  | 7 Days Work | 9295454 |
| 8591 | 36900.37000.37100.37500.38200.50400.657700 | Wooden Flooring | 5d | 2026-08-08 | 2026-08-12 | 8590 |  | 7 Days Work | 9295464 |
| 8592 | 36900.37000.37100.37500.38200.50400.657800 | Removing of Temporary Railing & installation of Glass Railing | 5d | 2026-08-08 | 2026-08-12 | 8590 |  | 7 Days Work | 9295474 |
| 8593 | 36900.37000.37100.37500.38200.50400.657900 | Tile Grouting | 7d | 2026-08-08 | 2026-08-14 | 8590 |  | 7 Days Work | 9295484 |
| 8594 | 36900.37000.37100.37500.38200.50400.658000 | False Ceiling | 5d | 2026-08-15 | 2026-08-19 | 8593 |  | 7 Days Work | 9295494 |
| 8595 | 36900.37000.37100.37500.38200.50400.658100 | 2nd coat of primer | 10d | 2026-08-20 | 2026-08-29 | 8594 |  | 7 Days Work | 9295504 |
| 8596 | 36900.37000.37100.37500.38200.50400.658200 | Final cutting/polishing of stone flooring | 7d | 2026-08-30 | 2026-09-05 | 8595 |  | 7 Days Work | 9295514 |

| ID | WBS | Task | Duration | Start | Finish | Predecessors | Constraint | Calendar | Unique_Task_ID |
| --- | --- | --- | --- | --- | --- | --- | --- | --- | --- |
| 8597 | 36900.37000.37100.37500.38200.50400.52900 | **Toilet** | 237d | 2026-01-11 | 2026-09-04 |  | start no earlier than 2026-01-11 | 7 Days Work | 9293934 |
| 8598 | 36900.37000.37100.37500.38200.50400.52900.997200 | Toilet_MEP Clearance -1 | 7d | 2026-01-11 | 2026-01-17 | 8561 |  | 7 Days Work | 9303884 |
| 8599 | 36900.37000.37100.37500.38200.50400.52900.997300 | Toilet_Level Marking | 1d | 2026-01-18 | 2026-01-18 | 8598 |  | 7 Days Work | 9303894 |
| 8600 | 36900.37000.37100.37500.38200.50400.52900.997400 | Toilet_Chasing work for Electrical conduit & concealed plumbing | 5d | 2026-01-19 | 2026-01-23 | 8599 |  | 7 Days Work | 9303904 |
| 8601 | 36900.37000.37100.37500.38200.50400.52900.997500 | Toilet_Plumbing work 1st fix | 5d | 2026-01-24 | 2026-01-28 | 8600 |  | 7 Days Work | 9303914 |
| 8602 | 36900.37000.37100.37500.38200.50400.52900.997600 | Toilet_Sleeve/Bore Packing | 5d | 2026-01-29 | 2026-02-02 | 8601 |  | 7 Days Work | 9303924 |
| 8603 | 36900.37000.37100.37500.38200.50400.52900.997700 | Toilet_Waterproofing | 10d | 2026-02-03 | 2026-02-12 | 8602 |  | 7 Days Work | 9303934 |
| 8604 | 36900.37000.37100.37500.38200.50400.52900.997800 | Toilet_Screed | 1d | 2026-02-13 | 2026-02-13 | 8603 |  | 7 Days Work | 9303944 |
| 8605 | 36900.37000.37100.37500.38200.50400.52900.997900 | Toilet_Plumbing 2nd fix | 5d | 2026-02-14 | 2026-02-18 | 8604 |  | 7 Days Work | 9303954 |
| 8606 | 36900.37000.37100.37500.38200.50400.52900.998000 | Toilet_Ledge wall | 5d | 2026-02-19 | 2026-02-23 | 8605 |  | 7 Days Work | 9303964 |
| 8607 | 36900.37000.37100.37500.38200.50400.52900.998100 | Toilet_Cement Plaster | 5d | 2026-02-24 | 2026-02-28 | 8606 |  | 7 Days Work | 9303974 |
| 8608 | 36900.37000.37100.37500.38200.50400.52900.998200 | Toilet_Door Frame | 1d | 2026-03-01 | 2026-03-01 | 8607 |  | 7 Days Work | 9303984 |
| 8609 | 36900.37000.37100.37500.38200.50400.52900.998300 | Toilet_Wash basin & Couter | 3d | 2026-03-02 | 2026-03-04 | 8608 |  | 7 Days Work | 9303994 |
| 8610 | 36900.37000.37100.37500.38200.50400.52900.998400 | Toilet_Wall dado | 20d | 2026-03-05 | 2026-03-24 | 8609 |  | 7 Days Work | 9304004 |
| 8611 | 36900.37000.37100.37500.38200.50400.52900.998500 | Toilet_Granite Work-Ledge wall top | 3d | 2026-03-25 | 2026-03-27 | 8610 |  | 7 Days Work | 9304014 |
| 8612 | 36900.37000.37100.37500.38200.50400.52900.998600 | Toilet_Floor Tilling work | 20d | 2026-03-28 | 2026-04-16 | 8611 |  | 7 Days Work | 9304024 |
| 8613 | 36900.37000.37100.37500.38200.50400.52900.998700 | Toilet_1st row of dado | 5d | 2026-04-17 | 2026-04-21 | 8612 |  | 7 Days Work | 9304034 |
| 8614 | 36900.37000.37100.37500.38200.50400.52900.998800 | Toilet_Window Fixing | 14d | 2026-04-22 | 2026-05-05 | 8613 |  | 7 Days Work | 9304044 |
| 8615 | 36900.37000.37100.37500.38200.50400.52900.998900 | Toilet_Services above False ceiling | 21d | 2026-05-06 | 2026-05-26 | 8614 |  | 7 Days Work | 9304054 |
| 8616 | 36900.37000.37100.37500.38200.50400.52900.999000 | Toilet_False Ceiling framing | 12d | 2026-05-27 | 2026-06-07 | 8615 |  | 7 Days Work | 9304064 |
| 8617 | 36900.37000.37100.37500.38200.50400.52900.999100 | Toilet_Door Frame | 5d | 2026-06-08 | 2026-06-12 | 8616 |  | 7 Days Work | 9304074 |
| 8618 | 36900.37000.37100.37500.38200.50400.52900.999200 | Toilet_Epoxy Tile Grouting | 7d | 2026-08-08 | 2026-08-14 | 8593SS |  | 7 Days Work | 9304084 |
| 8619 | 36900.37000.37100.37500.38200.50400.52900.999300 | Toilet_False ceiling board fixing, CP Sanitary Fixture, Electric Fixture | 21d | 2026-08-15 | 2026-09-04 | 8618 |  | 7 Days Work | 9304094 |
| 8620 | 36900.37000.37100.37500.38200.50500 | **4th Habitable/5th Floor** | 245d | 2026-01-13 | 2026-09-14 |  | start no earlier than 2026-01-13 | 7 Days Work | 9293734 |
| 8621 | 36900.37000.37100.37500.38200.50500.658300 | Post Pour | 7d | 2026-01-13 | 2026-01-19 | 8421FS+15d |  | 7 Days Work | 9295524 |
| 8622 | 36900.37000.37100.37500.38200.50500.658400 | MEP Clearance -1 | 5d | 2026-01-20 | 2026-01-24 | 8621 |  | 7 Days Work | 9295534 |
| 8623 | 36900.37000.37100.37500.38200.50500.658500 | Benchmark | 1d | 2026-01-25 | 2026-01-25 | 8622 |  | 7 Days Work | 9295544 |
| 8624 | 36900.37000.37100.37500.38200.50500.658600 | Temporary Railing | 3d | 2026-01-26 | 2026-01-28 | 8623 |  | 7 Days Work | 9295554 |
| 8625 | 36900.37000.37100.37500.38200.50500.658700 | Blockwork | 10d | 2026-01-29 | 2026-02-07 | 8624 |  | 7 Days Work | 9295564 |
| 8626 | 36900.37000.37100.37500.38200.50500.658800 | MEP Clearance -2 | 10d | 2026-02-08 | 2026-02-17 | 8625 |  | 7 Days Work | 9295574 |
| 8627 | 36900.37000.37100.37500.38200.50500.658900 | Gypsum Plaster | 14d | 2026-02-18 | 2026-03-03 | 8626 |  | 7 Days Work | 9295584 |
| 8628 | 36900.37000.37100.37500.38200.50500.659000 | Kitchen Platform | 3d | 2026-03-04 | 2026-03-06 | 8627 |  | 7 Days Work | 9295594 |
| 8629 | 36900.37000.37100.37500.38200.50500.659100 | Kitchen dado | 7d | 2026-03-07 | 2026-03-13 | 8628 |  | 7 Days Work | 9295604 |
| 8630 | 36900.37000.37100.37500.38200.50500.659200 | Fire Fighting | 5d | 2026-03-14 | 2026-03-18 | 8629 |  | 7 Days Work | 9295614 |
| 8631 | 36900.37000.37100.37500.38200.50500.659300 | Anticapilary | 5d | 2026-03-19 | 2026-03-23 | 8630 |  | 7 Days Work | 9295624 |
| 8632 | 36900.37000.37100.37500.38200.50500.659400 | Stone Laying | 10d | 2026-04-26 | 2026-05-05 | 8672 |  | 7 Days Work | 9295634 |
| 8633 | 36900.37000.37100.37500.38200.50500.659500 | Tiles Laying | 7d | 2026-04-26 | 2026-05-02 | 8672 |  | 7 Days Work | 9295644 |
| 8634 | 36900.37000.37100.37500.38200.50500.659600 | 1st cutting/polishing of stone flooring | 7d | 2026-05-03 | 2026-05-09 | 8633 |  | 7 Days Work | 9295654 |
| 8635 | 36900.37000.37100.37500.38200.50500.659700 | Tiles/Stone skirting | 5d | 2026-05-10 | 2026-05-14 | 8634 |  | 7 Days Work | 9295664 |
| 8636 | 36900.37000.37100.37500.38200.50500.659800 | Protechtion sheet | 1d | 2026-05-15 | 2026-05-15 | 8635 |  | 7 Days Work | 9295674 |
| 8637 | 36900.37000.37100.37500.38200.50500.659900 | Installation of Temporary Door | 1d | 2026-05-16 | 2026-05-16 | 8636 |  | 7 Days Work | 9295684 |
| 8638 | 36900.37000.37100.37500.38200.50500.660000 | Fixing of window tracks | 5d | 2026-05-17 | 2026-05-21 | 8637 |  | 7 Days Work | 9295694 |
| 8639 | 36900.37000.37100.37500.38200.50500.660100 | Wire Pulling | 7d | 2026-05-22 | 2026-05-28 | 8638 |  | 7 Days Work | 9295704 |
| 8640 | 36900.37000.37100.37500.38200.50500.660200 | Gypsum Remaining | 5d | 2026-05-29 | 2026-06-02 | 8639 |  | 7 Days Work | 9295714 |
| 8641 | 36900.37000.37100.37500.38200.50500.660300 | Fixing of windoow shutter | 5d | 2026-06-03 | 2026-06-07 | 8640 |  | 7 Days Work | 9295724 |
| 8642 | 36900.37000.37100.37500.38200.50500.660400 | Putty Works - walls & ceiling | 15d | 2026-06-08 | 2026-06-22 | 8641 |  | 7 Days Work | 9295734 |
| 8643 | 36900.37000.37100.37500.38200.50500.660500 | False Ceiling- Framing | 10d | 2026-06-23 | 2026-07-02 | 8642 |  | 7 Days Work | 9295744 |
| 8644 | 36900.37000.37100.37500.38200.50500.660600 | Pre Hung Door | 3d | 2026-07-03 | 2026-07-05 | 8643 |  | 7 Days Work | 9295754 |
| 8645 | 36900.37000.37100.37500.38200.50500.660700 | Protechtion sheet | 2d | 2026-07-06 | 2026-07-07 | 8644 |  | 7 Days Work | 9295764 |
| 8646 | 36900.37000.37100.37500.38200.50500.660800 | Skirting near door | 2d | 2026-07-08 | 2026-07-09 | 8645 |  | 7 Days Work | 9295774 |
| 8647 | 36900.37000.37100.37500.38200.50500.660900 | Electrical Switch box fixing | 14d | 2026-07-10 | 2026-07-23 | 8646 |  | 7 Days Work | 9295784 |
| 8648 | 36900.37000.37100.37500.38200.50500.661000 | Fire Fighting painting | 5d | 2026-07-24 | 2026-07-28 | 8647 |  | 7 Days Work | 9295794 |
| 8649 | 36900.37000.37100.37500.38200.50500.661100 | Protection of all flooring, door & window hardware | 5d | 2026-07-29 | 2026-08-02 | 8648 |  | 7 Days Work | 9295804 |
| 8650 | 36900.37000.37100.37500.38200.50500.661200 | 1st coat primer- ceiling 1st & walls | 14d | 2026-08-03 | 2026-08-16 | 8649 |  | 7 Days Work | 9295814 |
| 8651 | 36900.37000.37100.37500.38200.50500.661300 | Wooden Flooring | 5d | 2026-08-17 | 2026-08-21 | 8650 |  | 7 Days Work | 9295824 |
| 8652 | 36900.37000.37100.37500.38200.50500.661400 | Removing of Temporary Railing & installation of Glass Railing | 5d | 2026-08-17 | 2026-08-21 | 8650 |  | 7 Days Work | 9295834 |
| 8653 | 36900.37000.37100.37500.38200.50500.661500 | Tile Grouting | 7d | 2026-08-17 | 2026-08-23 | 8650 |  | 7 Days Work | 9295844 |
| 8654 | 36900.37000.37100.37500.38200.50500.661600 | False Ceiling | 5d | 2026-08-24 | 2026-08-28 | 8653 |  | 7 Days Work | 9295854 |
| 8655 | 36900.37000.37100.37500.38200.50500.661700 | 2nd coat of primer | 10d | 2026-08-29 | 2026-09-07 | 8654 |  | 7 Days Work | 9295864 |
| 8656 | 36900.37000.37100.37500.38200.50500.661800 | Final cutting/polishing of stone flooring | 7d | 2026-09-08 | 2026-09-14 | 8655 |  | 7 Days Work | 9295874 |

| ID | WBS | Task | Duration | Start | Finish | Predecessors | Constraint | Calendar | Unique_Task_ID |
| --- | --- | --- | --- | --- | --- | --- | --- | --- | --- |
| 8657 | 36900.37000.37100.37500.38200.50500.53200 | **Toilet** | 237d | 2026-01-20 | 2026-09-13 |  | start no earlier than 2026-01-20 | 7 Days Work | 9293944 |
| 8658 | 36900.37000.37100.37500.38200.50500.53200.999400 | Toilet_MEP Clearance -1 | 7d | 2026-01-20 | 2026-01-26 | 8621 |  | 7 Days Work | 9304104 |
| 8659 | 36900.37000.37100.37500.38200.50500.53200.999500 | Toilet_Level Marking | 1d | 2026-01-27 | 2026-01-27 | 8658 |  | 7 Days Work | 9304114 |
| 8660 | 36900.37000.37100.37500.38200.50500.53200.999600 | Toilet_Chasing work for Electrical conduit & concealed plumbing | 5d | 2026-01-28 | 2026-02-01 | 8659 |  | 7 Days Work | 9304124 |
| 8661 | 36900.37000.37100.37500.38200.50500.53200.999700 | Toilet_Plumbing work 1st fix | 5d | 2026-02-02 | 2026-02-06 | 8660 |  | 7 Days Work | 9304134 |
| 8662 | 36900.37000.37100.37500.38200.50500.53200.999800 | Toilet_Sleeve/Bore Packing | 5d | 2026-02-07 | 2026-02-11 | 8661 |  | 7 Days Work | 9304144 |
| 8663 | 36900.37000.37100.37500.38200.50500.53200.999900 | Toilet_Waterproofing | 10d | 2026-02-12 | 2026-02-21 | 8662 |  | 7 Days Work | 9304154 |
| 8664 | 36900.37000.37100.37500.38200.50500.53200.1000000 | Toilet_Screed | 1d | 2026-02-22 | 2026-02-22 | 8663 |  | 7 Days Work | 9304164 |
| 8665 | 36900.37000.37100.37500.38200.50500.53200.1000100 | Toilet_Plumbing 2nd fix | 5d | 2026-02-23 | 2026-02-27 | 8664 |  | 7 Days Work | 9304174 |
| 8666 | 36900.37000.37100.37500.38200.50500.53200.1000200 | Toilet_Ledge wall | 5d | 2026-02-28 | 2026-03-04 | 8665 |  | 7 Days Work | 9304184 |
| 8667 | 36900.37000.37100.37500.38200.50500.53200.1000300 | Toilet_Cement Plaster | 5d | 2026-03-05 | 2026-03-09 | 8666 |  | 7 Days Work | 9304194 |
| 8668 | 36900.37000.37100.37500.38200.50500.53200.1000400 | Toilet_Door Frame | 1d | 2026-03-10 | 2026-03-10 | 8667 |  | 7 Days Work | 9304204 |
| 8669 | 36900.37000.37100.37500.38200.50500.53200.1000500 | Toilet_Wash basin & Couter | 3d | 2026-03-11 | 2026-03-13 | 8668 |  | 7 Days Work | 9304214 |
| 8670 | 36900.37000.37100.37500.38200.50500.53200.1000600 | Toilet_Wall dado | 20d | 2026-03-14 | 2026-04-02 | 8669 |  | 7 Days Work | 9304224 |
| 8671 | 36900.37000.37100.37500.38200.50500.53200.1000700 | Toilet_Granite Work-Ledge wall top | 3d | 2026-04-03 | 2026-04-05 | 8670 |  | 7 Days Work | 9304234 |
| 8672 | 36900.37000.37100.37500.38200.50500.53200.1000800 | Toilet_Floor Tilling work | 20d | 2026-04-06 | 2026-04-25 | 8671 |  | 7 Days Work | 9304244 |
| 8673 | 36900.37000.37100.37500.38200.50500.53200.1000900 | Toilet_1st row of dado | 5d | 2026-04-26 | 2026-04-30 | 8672 |  | 7 Days Work | 9304254 |
| 8674 | 36900.37000.37100.37500.38200.50500.53200.1001000 | Toilet_Window Fixing | 14d | 2026-05-01 | 2026-05-14 | 8673 |  | 7 Days Work | 9304264 |
| 8675 | 36900.37000.37100.37500.38200.50500.53200.1001100 | Toilet_Services above False ceiling | 21d | 2026-05-15 | 2026-06-04 | 8674 |  | 7 Days Work | 9304274 |
| 8676 | 36900.37000.37100.37500.38200.50500.53200.1001200 | Toilet_False Ceiling framing | 12d | 2026-06-05 | 2026-06-16 | 8675 |  | 7 Days Work | 9304284 |
| 8677 | 36900.37000.37100.37500.38200.50500.53200.1001300 | Toilet_Door Frame | 5d | 2026-06-17 | 2026-06-21 | 8676 |  | 7 Days Work | 9304294 |
| 8678 | 36900.37000.37100.37500.38200.50500.53200.1001400 | Toilet_Epoxy Tile Grouting | 7d | 2026-08-17 | 2026-08-23 | 8653SS |  | 7 Days Work | 9304304 |
| 8679 | 36900.37000.37100.37500.38200.50500.53200.1001500 | Toilet_False ceiling board fixing, CP Sanitary Fixture, Electric Fixture | 21d | 2026-08-24 | 2026-09-13 | 8678 |  | 7 Days Work | 9304314 |
| 8680 | 36900.37000.37100.37500.38200.50600 | **5th Habitable/6th Floor** | 245d | 2026-01-25 | 2026-09-26 |  | start no earlier than 2026-01-25 | 7 Days Work | 9293744 |
| 8681 | 36900.37000.37100.37500.38200.50600.661900 | Post Pour | 7d | 2026-01-25 | 2026-01-31 | 8422FS+15d |  | 7 Days Work | 9295884 |
| 8682 | 36900.37000.37100.37500.38200.50600.662000 | MEP Clearance -1 | 5d | 2026-02-01 | 2026-02-05 | 8681 |  | 7 Days Work | 9295894 |
| 8683 | 36900.37000.37100.37500.38200.50600.662100 | Benchmark | 1d | 2026-02-06 | 2026-02-06 | 8682 |  | 7 Days Work | 9295904 |
| 8684 | 36900.37000.37100.37500.38200.50600.662200 | Temporary Railing | 3d | 2026-02-07 | 2026-02-09 | 8683 |  | 7 Days Work | 9295914 |
| 8685 | 36900.37000.37100.37500.38200.50600.662300 | Blockwork | 10d | 2026-02-10 | 2026-02-19 | 8684 |  | 7 Days Work | 9295924 |
| 8686 | 36900.37000.37100.37500.38200.50600.662400 | MEP Clearance -2 | 10d | 2026-02-20 | 2026-03-01 | 8685 |  | 7 Days Work | 9295934 |
| 8687 | 36900.37000.37100.37500.38200.50600.662500 | Gypsum Plaster | 14d | 2026-03-02 | 2026-03-15 | 8686 |  | 7 Days Work | 9295944 |
| 8688 | 36900.37000.37100.37500.38200.50600.662600 | Kitchen Platform | 3d | 2026-03-16 | 2026-03-18 | 8687 |  | 7 Days Work | 9295954 |
| 8689 | 36900.37000.37100.37500.38200.50600.662700 | Kitchen dado | 7d | 2026-03-19 | 2026-03-25 | 8688 |  | 7 Days Work | 9295964 |
| 8690 | 36900.37000.37100.37500.38200.50600.662800 | Fire Fighting | 5d | 2026-03-26 | 2026-03-30 | 8689 |  | 7 Days Work | 9295974 |
| 8691 | 36900.37000.37100.37500.38200.50600.662900 | Anticapilary | 5d | 2026-03-31 | 2026-04-04 | 8690 |  | 7 Days Work | 9295984 |
| 8692 | 36900.37000.37100.37500.38200.50600.663000 | Stone Laying | 10d | 2026-05-08 | 2026-05-17 | 8732 |  | 7 Days Work | 9295994 |
| 8693 | 36900.37000.37100.37500.38200.50600.663100 | Tiles Laying | 7d | 2026-05-08 | 2026-05-14 | 8732 |  | 7 Days Work | 9296004 |
| 8694 | 36900.37000.37100.37500.38200.50600.663200 | 1st cutting/polishing of stone flooring | 7d | 2026-05-15 | 2026-05-21 | 8693 |  | 7 Days Work | 9296014 |
| 8695 | 36900.37000.37100.37500.38200.50600.663300 | Tiles/Stone skirting | 5d | 2026-05-22 | 2026-05-26 | 8694 |  | 7 Days Work | 9296024 |
| 8696 | 36900.37000.37100.37500.38200.50600.663400 | Protechtion sheet | 1d | 2026-05-27 | 2026-05-27 | 8695 |  | 7 Days Work | 9296034 |
| 8697 | 36900.37000.37100.37500.38200.50600.663500 | Installation of Temporary Door | 1d | 2026-05-28 | 2026-05-28 | 8696 |  | 7 Days Work | 9296044 |
| 8698 | 36900.37000.37100.37500.38200.50600.663600 | Fixing of window tracks | 5d | 2026-05-29 | 2026-06-02 | 8697 |  | 7 Days Work | 9296054 |
| 8699 | 36900.37000.37100.37500.38200.50600.663700 | Wire Pulling | 7d | 2026-06-03 | 2026-06-09 | 8698 |  | 7 Days Work | 9296064 |
| 8700 | 36900.37000.37100.37500.38200.50600.663800 | Gypsum Remaining | 5d | 2026-06-10 | 2026-06-14 | 8699 |  | 7 Days Work | 9296074 |
| 8701 | 36900.37000.37100.37500.38200.50600.663900 | Fixing of windoow shutter | 5d | 2026-06-15 | 2026-06-19 | 8700 |  | 7 Days Work | 9296084 |
| 8702 | 36900.37000.37100.37500.38200.50600.664000 | Putty Works - walls & ceiling | 15d | 2026-06-20 | 2026-07-04 | 8701 |  | 7 Days Work | 9296094 |
| 8703 | 36900.37000.37100.37500.38200.50600.664100 | False Ceiling- Framing | 10d | 2026-07-05 | 2026-07-14 | 8702 |  | 7 Days Work | 9296104 |
| 8704 | 36900.37000.37100.37500.38200.50600.664200 | Pre Hung Door | 3d | 2026-07-15 | 2026-07-17 | 8703 |  | 7 Days Work | 9296114 |
| 8705 | 36900.37000.37100.37500.38200.50600.664300 | Protechtion sheet | 2d | 2026-07-18 | 2026-07-19 | 8704 |  | 7 Days Work | 9296124 |
| 8706 | 36900.37000.37100.37500.38200.50600.664400 | Skirting near door | 2d | 2026-07-20 | 2026-07-21 | 8705 |  | 7 Days Work | 9296134 |
| 8707 | 36900.37000.37100.37500.38200.50600.664500 | Electrical Switch box fixing | 14d | 2026-07-22 | 2026-08-04 | 8706 |  | 7 Days Work | 9296144 |
| 8708 | 36900.37000.37100.37500.38200.50600.664600 | Fire Fighting painting | 5d | 2026-08-05 | 2026-08-09 | 8707 |  | 7 Days Work | 9296154 |
| 8709 | 36900.37000.37100.37500.38200.50600.664700 | Protection of all flooring, door & window hardware | 5d | 2026-08-10 | 2026-08-14 | 8708 |  | 7 Days Work | 9296164 |
| 8710 | 36900.37000.37100.37500.38200.50600.664800 | 1st coat primer- ceiling 1st & walls | 14d | 2026-08-15 | 2026-08-28 | 8709 |  | 7 Days Work | 9296174 |
| 8711 | 36900.37000.37100.37500.38200.50600.664900 | Wooden Flooring | 5d | 2026-08-29 | 2026-09-02 | 8710 |  | 7 Days Work | 9296184 |
| 8712 | 36900.37000.37100.37500.38200.50600.665000 | Removing of Temporary Railing & installation of Glass Railing | 5d | 2026-08-29 | 2026-09-02 | 8710 |  | 7 Days Work | 9296194 |
| 8713 | 36900.37000.37100.37500.38200.50600.665100 | Tile Grouting | 7d | 2026-08-29 | 2026-09-04 | 8710 |  | 7 Days Work | 9296204 |
| 8714 | 36900.37000.37100.37500.38200.50600.665200 | False Ceiling | 5d | 2026-09-05 | 2026-09-09 | 8713 |  | 7 Days Work | 9296214 |
| 8715 | 36900.37000.37100.37500.38200.50600.665300 | 2nd coat of primer | 10d | 2026-09-10 | 2026-09-19 | 8714 |  | 7 Days Work | 9296224 |
| 8716 | 36900.37000.37100.37500.38200.50600.665400 | Final cutting/polishing of stone flooring | 7d | 2026-09-20 | 2026-09-26 | 8715 |  | 7 Days Work | 9296234 |

| ID | WBS | Task | Duration | Start | Finish | Predecessors | Constraint | Calendar | Unique_Task_ID |
| --- | --- | --- | --- | --- | --- | --- | --- | --- | --- |
| 8717 | 36900.37000.37100.37500.38200.50600.53300 | **Toilet** | 237d | 2026-02-01 | 2026-09-25 |  | start no earlier than 2026-02-01 | 7 Days Work | 9293954 |
| 8718 | 36900.37000.37100.37500.38200.50600.53300.1001600 | Toilet_MEP Clearance -1 | 7d | 2026-02-01 | 2026-02-07 | 8681 |  | 7 Days Work | 9304324 |
| 8719 | 36900.37000.37100.37500.38200.50600.53300.1001700 | Toilet_Level Marking | 1d | 2026-02-08 | 2026-02-08 | 8718 |  | 7 Days Work | 9304334 |
| 8720 | 36900.37000.37100.37500.38200.50600.53300.1001800 | Toilet_Chasing work for Electrical conduit & concealed plumbing | 5d | 2026-02-09 | 2026-02-13 | 8719 |  | 7 Days Work | 9304344 |
| 8721 | 36900.37000.37100.37500.38200.50600.53300.1001900 | Toilet_Plumbing work 1st fix | 5d | 2026-02-14 | 2026-02-18 | 8720 |  | 7 Days Work | 9304354 |
| 8722 | 36900.37000.37100.37500.38200.50600.53300.1002000 | Toilet_Sleeve/Bore Packing | 5d | 2026-02-19 | 2026-02-23 | 8721 |  | 7 Days Work | 9304364 |
| 8723 | 36900.37000.37100.37500.38200.50600.53300.1002100 | Toilet_Waterproofing | 10d | 2026-02-24 | 2026-03-05 | 8722 |  | 7 Days Work | 9304374 |
| 8724 | 36900.37000.37100.37500.38200.50600.53300.1002200 | Toilet_Screed | 1d | 2026-03-06 | 2026-03-06 | 8723 |  | 7 Days Work | 9304384 |
| 8725 | 36900.37000.37100.37500.38200.50600.53300.1002300 | Toilet_Plumbing 2nd fix | 5d | 2026-03-07 | 2026-03-11 | 8724 |  | 7 Days Work | 9304394 |
| 8726 | 36900.37000.37100.37500.38200.50600.53300.1002400 | Toilet_Ledge wall | 5d | 2026-03-12 | 2026-03-16 | 8725 |  | 7 Days Work | 9304404 |
| 8727 | 36900.37000.37100.37500.38200.50600.53300.1002500 | Toilet_Cement Plaster | 5d | 2026-03-17 | 2026-03-21 | 8726 |  | 7 Days Work | 9304414 |
| 8728 | 36900.37000.37100.37500.38200.50600.53300.1002600 | Toilet_Door Frame | 1d | 2026-03-22 | 2026-03-22 | 8727 |  | 7 Days Work | 9304424 |
| 8729 | 36900.37000.37100.37500.38200.50600.53300.1002700 | Toilet_Wash basin & Couter | 3d | 2026-03-23 | 2026-03-25 | 8728 |  | 7 Days Work | 9304434 |
| 8730 | 36900.37000.37100.37500.38200.50600.53300.1002800 | Toilet_Wall dado | 20d | 2026-03-26 | 2026-04-14 | 8729 |  | 7 Days Work | 9304444 |
| 8731 | 36900.37000.37100.37500.38200.50600.53300.1002900 | Toilet_Granite Work-Ledge wall top | 3d | 2026-04-15 | 2026-04-17 | 8730 |  | 7 Days Work | 9304454 |
| 8732 | 36900.37000.37100.37500.38200.50600.53300.1003000 | Toilet_Floor Tilling work | 20d | 2026-04-18 | 2026-05-07 | 8731 |  | 7 Days Work | 9304464 |
| 8733 | 36900.37000.37100.37500.38200.50600.53300.1003100 | Toilet_1st row of dado | 5d | 2026-05-08 | 2026-05-12 | 8732 |  | 7 Days Work | 9304474 |
| 8734 | 36900.37000.37100.37500.38200.50600.53300.1003200 | Toilet_Window Fixing | 14d | 2026-05-13 | 2026-05-26 | 8733 |  | 7 Days Work | 9304484 |
| 8735 | 36900.37000.37100.37500.38200.50600.53300.1003300 | Toilet_Services above False ceiling | 21d | 2026-05-27 | 2026-06-16 | 8734 |  | 7 Days Work | 9304494 |
| 8736 | 36900.37000.37100.37500.38200.50600.53300.1003400 | Toilet_False Ceiling framing | 12d | 2026-06-17 | 2026-06-28 | 8735 |  | 7 Days Work | 9304504 |
| 8737 | 36900.37000.37100.37500.38200.50600.53300.1003500 | Toilet_Door Frame | 5d | 2026-06-29 | 2026-07-03 | 8736 |  | 7 Days Work | 9304514 |
| 8738 | 36900.37000.37100.37500.38200.50600.53300.1003600 | Toilet_Epoxy Tile Grouting | 7d | 2026-08-29 | 2026-09-04 | 8713SS |  | 7 Days Work | 9304524 |
| 8739 | 36900.37000.37100.37500.38200.50600.53300.1003700 | Toilet_False ceiling board fixing, CP Sanitary Fixture, Electric Fixture | 21d | 2026-09-05 | 2026-09-25 | 8738 |  | 7 Days Work | 9304534 |
| 8740 | 36900.37000.37100.37500.38200.50700 | **6th Habitable/7th Floor** | 245d | 2026-02-03 | 2026-10-05 |  | start no earlier than 2026-02-03 | 7 Days Work | 9293754 |
| 8741 | 36900.37000.37100.37500.38200.50700.665500 | Post Pour | 7d | 2026-02-03 | 2026-02-09 | 8423FS+15d |  | 7 Days Work | 9296244 |
| 8742 | 36900.37000.37100.37500.38200.50700.665600 | MEP Clearance -1 | 5d | 2026-02-10 | 2026-02-14 | 8741 |  | 7 Days Work | 9296254 |
| 8743 | 36900.37000.37100.37500.38200.50700.665700 | Benchmark | 1d | 2026-02-15 | 2026-02-15 | 8742 |  | 7 Days Work | 9296264 |
| 8744 | 36900.37000.37100.37500.38200.50700.665800 | Temporary Railing | 3d | 2026-02-16 | 2026-02-18 | 8743 |  | 7 Days Work | 9296274 |
| 8745 | 36900.37000.37100.37500.38200.50700.665900 | Blockwork | 10d | 2026-02-19 | 2026-02-28 | 8744 |  | 7 Days Work | 9296284 |
| 8746 | 36900.37000.37100.37500.38200.50700.666000 | MEP Clearance -2 | 10d | 2026-03-01 | 2026-03-10 | 8745 |  | 7 Days Work | 9296294 |
| 8747 | 36900.37000.37100.37500.38200.50700.666100 | Gypsum Plaster | 14d | 2026-03-11 | 2026-03-24 | 8746 |  | 7 Days Work | 9296304 |
| 8748 | 36900.37000.37100.37500.38200.50700.666200 | Kitchen Platform | 3d | 2026-03-25 | 2026-03-27 | 8747 |  | 7 Days Work | 9296314 |
| 8749 | 36900.37000.37100.37500.38200.50700.666300 | Kitchen dado | 7d | 2026-03-28 | 2026-04-03 | 8748 |  | 7 Days Work | 9296324 |
| 8750 | 36900.37000.37100.37500.38200.50700.666400 | Fire Fighting | 5d | 2026-04-04 | 2026-04-08 | 8749 |  | 7 Days Work | 9296334 |
| 8751 | 36900.37000.37100.37500.38200.50700.666500 | Anticapilary | 5d | 2026-04-09 | 2026-04-13 | 8750 |  | 7 Days Work | 9296344 |
| 8752 | 36900.37000.37100.37500.38200.50700.666600 | Stone Laying | 10d | 2026-05-17 | 2026-05-26 | 8792 |  | 7 Days Work | 9296354 |
| 8753 | 36900.37000.37100.37500.38200.50700.666700 | Tiles Laying | 7d | 2026-05-17 | 2026-05-23 | 8792 |  | 7 Days Work | 9296364 |
| 8754 | 36900.37000.37100.37500.38200.50700.666800 | 1st cutting/polishing of stone flooring | 7d | 2026-05-24 | 2026-05-30 | 8753 |  | 7 Days Work | 9296374 |
| 8755 | 36900.37000.37100.37500.38200.50700.666900 | Tiles/Stone skirting | 5d | 2026-05-31 | 2026-06-04 | 8754 |  | 7 Days Work | 9296384 |
| 8756 | 36900.37000.37100.37500.38200.50700.667000 | Protechtion sheet | 1d | 2026-06-05 | 2026-06-05 | 8755 |  | 7 Days Work | 9296394 |
| 8757 | 36900.37000.37100.37500.38200.50700.667100 | Installation of Temporary Door | 1d | 2026-06-06 | 2026-06-06 | 8756 |  | 7 Days Work | 9296404 |
| 8758 | 36900.37000.37100.37500.38200.50700.667200 | Fixing of window tracks | 5d | 2026-06-07 | 2026-06-11 | 8757 |  | 7 Days Work | 9296414 |
| 8759 | 36900.37000.37100.37500.38200.50700.667300 | Wire Pulling | 7d | 2026-06-12 | 2026-06-18 | 8758 |  | 7 Days Work | 9296424 |
| 8760 | 36900.37000.37100.37500.38200.50700.667400 | Gypsum Remaining | 5d | 2026-06-19 | 2026-06-23 | 8759 |  | 7 Days Work | 9296434 |
| 8761 | 36900.37000.37100.37500.38200.50700.667500 | Fixing of windoow shutter | 5d | 2026-06-24 | 2026-06-28 | 8760 |  | 7 Days Work | 9296444 |
| 8762 | 36900.37000.37100.37500.38200.50700.667600 | Putty Works - walls & ceiling | 15d | 2026-06-29 | 2026-07-13 | 8761 |  | 7 Days Work | 9296454 |
| 8763 | 36900.37000.37100.37500.38200.50700.667700 | False Ceiling- Framing | 10d | 2026-07-14 | 2026-07-23 | 8762 |  | 7 Days Work | 9296464 |
| 8764 | 36900.37000.37100.37500.38200.50700.667800 | Pre Hung Door | 3d | 2026-07-24 | 2026-07-26 | 8763 |  | 7 Days Work | 9296474 |
| 8765 | 36900.37000.37100.37500.38200.50700.667900 | Protechtion sheet | 2d | 2026-07-27 | 2026-07-28 | 8764 |  | 7 Days Work | 9296484 |
| 8766 | 36900.37000.37100.37500.38200.50700.668000 | Skirting near door | 2d | 2026-07-29 | 2026-07-30 | 8765 |  | 7 Days Work | 9296494 |
| 8767 | 36900.37000.37100.37500.38200.50700.668100 | Electrical Switch box fixing | 14d | 2026-07-31 | 2026-08-13 | 8766 |  | 7 Days Work | 9296504 |
| 8768 | 36900.37000.37100.37500.38200.50700.668200 | Fire Fighting painting | 5d | 2026-08-14 | 2026-08-18 | 8767 |  | 7 Days Work | 9296514 |
| 8769 | 36900.37000.37100.37500.38200.50700.668300 | Protection of all flooring, door & window hardware | 5d | 2026-08-19 | 2026-08-23 | 8768 |  | 7 Days Work | 9296524 |
| 8770 | 36900.37000.37100.37500.38200.50700.668400 | 1st coat primer- ceiling 1st & walls | 14d | 2026-08-24 | 2026-09-06 | 8769 |  | 7 Days Work | 9296534 |
| 8771 | 36900.37000.37100.37500.38200.50700.668500 | Wooden Flooring | 5d | 2026-09-07 | 2026-09-11 | 8770 |  | 7 Days Work | 9296544 |
| 8772 | 36900.37000.37100.37500.38200.50700.668600 | Removing of Temporary Railing & installation of Glass Railing | 5d | 2026-09-07 | 2026-09-11 | 8770 |  | 7 Days Work | 9296554 |
| 8773 | 36900.37000.37100.37500.38200.50700.668700 | Tile Grouting | 7d | 2026-09-07 | 2026-09-13 | 8770 |  | 7 Days Work | 9296564 |
| 8774 | 36900.37000.37100.37500.38200.50700.668800 | False Ceiling | 5d | 2026-09-14 | 2026-09-18 | 8773 |  | 7 Days Work | 9296574 |
| 8775 | 36900.37000.37100.37500.38200.50700.668900 | 2nd coat of primer | 10d | 2026-09-19 | 2026-09-28 | 8774 |  | 7 Days Work | 9296584 |
| 8776 | 36900.37000.37100.37500.38200.50700.669000 | Final cutting/polishing of stone flooring | 7d | 2026-09-29 | 2026-10-05 | 8775 |  | 7 Days Work | 9296594 |

| ID | WBS | Task | Duration | Start | Finish | Predecessors | Constraint | Calendar | Unique_Task_ID |
| --- | --- | --- | --- | --- | --- | --- | --- | --- | --- |
| 8777 | 36900.37000.37100.37500.38200.50700.53400 | **Toilet** | 237d | 2026-02-10 | 2026-10-04 |  | start no earlier than 2026-02-10 | 7 Days Work | 9293964 |
| 8778 | 36900.37000.37100.37500.38200.50700.53400.1003800 | Toilet_MEP Clearance -1 | 7d | 2026-02-10 | 2026-02-16 | 8741 |  | 7 Days Work | 9304544 |
| 8779 | 36900.37000.37100.37500.38200.50700.53400.1003900 | Toilet_Level Marking | 1d | 2026-02-17 | 2026-02-17 | 8778 |  | 7 Days Work | 9304554 |
| 8780 | 36900.37000.37100.37500.38200.50700.53400.1004000 | Toilet_Chasing work for Electrical conduit & concealed plumbing | 5d | 2026-02-18 | 2026-02-22 | 8779 |  | 7 Days Work | 9304564 |
| 8781 | 36900.37000.37100.37500.38200.50700.53400.1004100 | Toilet_Plumbing work 1st fix | 5d | 2026-02-23 | 2026-02-27 | 8780 |  | 7 Days Work | 9304574 |
| 8782 | 36900.37000.37100.37500.38200.50700.53400.1004200 | Toilet_Sleeve/Bore Packing | 5d | 2026-02-28 | 2026-03-04 | 8781 |  | 7 Days Work | 9304584 |
| 8783 | 36900.37000.37100.37500.38200.50700.53400.1004300 | Toilet_Waterproofing | 10d | 2026-03-05 | 2026-03-14 | 8782 |  | 7 Days Work | 9304594 |
| 8784 | 36900.37000.37100.37500.38200.50700.53400.1004400 | Toilet_Screed | 1d | 2026-03-15 | 2026-03-15 | 8783 |  | 7 Days Work | 9304604 |
| 8785 | 36900.37000.37100.37500.38200.50700.53400.1004500 | Toilet_Plumbing 2nd fix | 5d | 2026-03-16 | 2026-03-20 | 8784 |  | 7 Days Work | 9304614 |
| 8786 | 36900.37000.37100.37500.38200.50700.53400.1004600 | Toilet_Ledge wall | 5d | 2026-03-21 | 2026-03-25 | 8785 |  | 7 Days Work | 9304624 |
| 8787 | 36900.37000.37100.37500.38200.50700.53400.1004700 | Toilet_Cement Plaster | 5d | 2026-03-26 | 2026-03-30 | 8786 |  | 7 Days Work | 9304634 |
| 8788 | 36900.37000.37100.37500.38200.50700.53400.1004800 | Toilet_Door Frame | 1d | 2026-03-31 | 2026-03-31 | 8787 |  | 7 Days Work | 9304644 |
| 8789 | 36900.37000.37100.37500.38200.50700.53400.1004900 | Toilet_Wash basin & Couter | 3d | 2026-04-01 | 2026-04-03 | 8788 |  | 7 Days Work | 9304654 |
| 8790 | 36900.37000.37100.37500.38200.50700.53400.1005000 | Toilet_Wall dado | 20d | 2026-04-04 | 2026-04-23 | 8789 |  | 7 Days Work | 9304664 |
| 8791 | 36900.37000.37100.37500.38200.50700.53400.1005100 | Toilet_Granite Work-Ledge wall top | 3d | 2026-04-24 | 2026-04-26 | 8790 |  | 7 Days Work | 9304674 |
| 8792 | 36900.37000.37100.37500.38200.50700.53400.1005200 | Toilet_Floor Tilling work | 20d | 2026-04-27 | 2026-05-16 | 8791 |  | 7 Days Work | 9304684 |
| 8793 | 36900.37000.37100.37500.38200.50700.53400.1005300 | Toilet_1st row of dado | 5d | 2026-05-17 | 2026-05-21 | 8792 |  | 7 Days Work | 9304694 |
| 8794 | 36900.37000.37100.37500.38200.50700.53400.1005400 | Toilet_Window Fixing | 14d | 2026-05-22 | 2026-06-04 | 8793 |  | 7 Days Work | 9304704 |
| 8795 | 36900.37000.37100.37500.38200.50700.53400.1005500 | Toilet_Services above False ceiling | 21d | 2026-06-05 | 2026-06-25 | 8794 |  | 7 Days Work | 9304714 |
| 8796 | 36900.37000.37100.37500.38200.50700.53400.1005600 | Toilet_False Ceiling framing | 12d | 2026-06-26 | 2026-07-07 | 8795 |  | 7 Days Work | 9304724 |
| 8797 | 36900.37000.37100.37500.38200.50700.53400.1005700 | Toilet_Door Frame | 5d | 2026-07-08 | 2026-07-12 | 8796 |  | 7 Days Work | 9304734 |
| 8798 | 36900.37000.37100.37500.38200.50700.53400.1005800 | Toilet_Epoxy Tile Grouting | 7d | 2026-09-07 | 2026-09-13 | 8773SS |  | 7 Days Work | 9304744 |
| 8799 | 36900.37000.37100.37500.38200.50700.53400.1005900 | Toilet_False ceiling board fixing, CP Sanitary Fixture, Electric Fixture | 21d | 2026-09-14 | 2026-10-04 | 8798 |  | 7 Days Work | 9304754 |
| 8800 | 36900.37000.37100.37500.38200.50800 | **7th Habitable/8th Floor** | 245d | 2026-02-12 | 2026-10-14 |  | start no earlier than 2026-02-12 | 7 Days Work | 9293764 |
| 8801 | 36900.37000.37100.37500.38200.50800.669100 | Post Pour | 7d | 2026-02-12 | 2026-02-18 | 8424FS+15d |  | 7 Days Work | 9296604 |
| 8802 | 36900.37000.37100.37500.38200.50800.669200 | MEP Clearance -1 | 5d | 2026-02-19 | 2026-02-23 | 8801 |  | 7 Days Work | 9296614 |
| 8803 | 36900.37000.37100.37500.38200.50800.669300 | Benchmark | 1d | 2026-02-24 | 2026-02-24 | 8802 |  | 7 Days Work | 9296624 |
| 8804 | 36900.37000.37100.37500.38200.50800.669400 | Temporary Railing | 3d | 2026-02-25 | 2026-02-27 | 8803 |  | 7 Days Work | 9296634 |
| 8805 | 36900.37000.37100.37500.38200.50800.669500 | Blockwork | 10d | 2026-02-28 | 2026-03-09 | 8804 |  | 7 Days Work | 9296644 |
| 8806 | 36900.37000.37100.37500.38200.50800.669600 | MEP Clearance -2 | 10d | 2026-03-10 | 2026-03-19 | 8805 |  | 7 Days Work | 9296654 |
| 8807 | 36900.37000.37100.37500.38200.50800.669700 | Gypsum Plaster | 14d | 2026-03-20 | 2026-04-02 | 8806 |  | 7 Days Work | 9296664 |
| 8808 | 36900.37000.37100.37500.38200.50800.669800 | Kitchen Platform | 3d | 2026-04-03 | 2026-04-05 | 8807 |  | 7 Days Work | 9296674 |
| 8809 | 36900.37000.37100.37500.38200.50800.669900 | Kitchen dado | 7d | 2026-04-06 | 2026-04-12 | 8808 |  | 7 Days Work | 9296684 |
| 8810 | 36900.37000.37100.37500.38200.50800.670000 | Fire Fighting | 5d | 2026-04-13 | 2026-04-17 | 8809 |  | 7 Days Work | 9296694 |
| 8811 | 36900.37000.37100.37500.38200.50800.670100 | Anticapilary | 5d | 2026-04-18 | 2026-04-22 | 8810 |  | 7 Days Work | 9296704 |
| 8812 | 36900.37000.37100.37500.38200.50800.670200 | Stone Laying | 10d | 2026-05-26 | 2026-06-04 | 8852 |  | 7 Days Work | 9296714 |
| 8813 | 36900.37000.37100.37500.38200.50800.670300 | Tiles Laying | 7d | 2026-05-26 | 2026-06-01 | 8852 |  | 7 Days Work | 9296724 |
| 8814 | 36900.37000.37100.37500.38200.50800.670400 | 1st cutting/polishing of stone flooring | 7d | 2026-06-02 | 2026-06-08 | 8813 |  | 7 Days Work | 9296734 |
| 8815 | 36900.37000.37100.37500.38200.50800.670500 | Tiles/Stone skirting | 5d | 2026-06-09 | 2026-06-13 | 8814 |  | 7 Days Work | 9296744 |
| 8816 | 36900.37000.37100.37500.38200.50800.670600 | Protechtion sheet | 1d | 2026-06-14 | 2026-06-14 | 8815 |  | 7 Days Work | 9296754 |
| 8817 | 36900.37000.37100.37500.38200.50800.670700 | Installation of Temporary Door | 1d | 2026-06-15 | 2026-06-15 | 8816 |  | 7 Days Work | 9296764 |
| 8818 | 36900.37000.37100.37500.38200.50800.670800 | Fixing of window tracks | 5d | 2026-06-16 | 2026-06-20 | 8817 |  | 7 Days Work | 9296774 |
| 8819 | 36900.37000.37100.37500.38200.50800.670900 | Wire Pulling | 7d | 2026-06-21 | 2026-06-27 | 8818 |  | 7 Days Work | 9296784 |
| 8820 | 36900.37000.37100.37500.38200.50800.671000 | Gypsum Remaining | 5d | 2026-06-28 | 2026-07-02 | 8819 |  | 7 Days Work | 9296794 |
| 8821 | 36900.37000.37100.37500.38200.50800.671100 | Fixing of windoow shutter | 5d | 2026-07-03 | 2026-07-07 | 8820 |  | 7 Days Work | 9296804 |
| 8822 | 36900.37000.37100.37500.38200.50800.671200 | Putty Works - walls & ceiling | 15d | 2026-07-08 | 2026-07-22 | 8821 |  | 7 Days Work | 9296814 |
| 8823 | 36900.37000.37100.37500.38200.50800.671300 | False Ceiling- Framing | 10d | 2026-07-23 | 2026-08-01 | 8822 |  | 7 Days Work | 9296824 |
| 8824 | 36900.37000.37100.37500.38200.50800.671400 | Pre Hung Door | 3d | 2026-08-02 | 2026-08-04 | 8823 |  | 7 Days Work | 9296834 |
| 8825 | 36900.37000.37100.37500.38200.50800.671500 | Protechtion sheet | 2d | 2026-08-05 | 2026-08-06 | 8824 |  | 7 Days Work | 9296844 |
| 8826 | 36900.37000.37100.37500.38200.50800.671600 | Skirting near door | 2d | 2026-08-07 | 2026-08-08 | 8825 |  | 7 Days Work | 9296854 |
| 8827 | 36900.37000.37100.37500.38200.50800.671700 | Electrical Switch box fixing | 14d | 2026-08-09 | 2026-08-22 | 8826 |  | 7 Days Work | 9296864 |
| 8828 | 36900.37000.37100.37500.38200.50800.671800 | Fire Fighting painting | 5d | 2026-08-23 | 2026-08-27 | 8827 |  | 7 Days Work | 9296874 |
| 8829 | 36900.37000.37100.37500.38200.50800.671900 | Protection of all flooring, door & window hardware | 5d | 2026-08-28 | 2026-09-01 | 8828 |  | 7 Days Work | 9296884 |
| 8830 | 36900.37000.37100.37500.38200.50800.672000 | 1st coat primer- ceiling 1st & walls | 14d | 2026-09-02 | 2026-09-15 | 8829 |  | 7 Days Work | 9296894 |
| 8831 | 36900.37000.37100.37500.38200.50800.672100 | Wooden Flooring | 5d | 2026-09-16 | 2026-09-20 | 8830 |  | 7 Days Work | 9296904 |
| 8832 | 36900.37000.37100.37500.38200.50800.672200 | Removing of Temporary Railing & installation of Glass Railing | 5d | 2026-09-16 | 2026-09-20 | 8830 |  | 7 Days Work | 9296914 |
| 8833 | 36900.37000.37100.37500.38200.50800.672300 | Tile Grouting | 7d | 2026-09-16 | 2026-09-22 | 8830 |  | 7 Days Work | 9296924 |
| 8834 | 36900.37000.37100.37500.38200.50800.672400 | False Ceiling | 5d | 2026-09-23 | 2026-09-27 | 8833 |  | 7 Days Work | 9296934 |
| 8835 | 36900.37000.37100.37500.38200.50800.672500 | 2nd coat of primer | 10d | 2026-09-28 | 2026-10-07 | 8834 |  | 7 Days Work | 9296944 |
| 8836 | 36900.37000.37100.37500.38200.50800.672600 | Final cutting/polishing of stone flooring | 7d | 2026-10-08 | 2026-10-14 | 8835 |  | 7 Days Work | 9296954 |

| ID | WBS | Task | Duration | Start | Finish | Predecessors | Constraint | Calendar | Unique_Task_ID |
| --- | --- | --- | --- | --- | --- | --- | --- | --- | --- |
| 8837 | 36900.37000.37100.37500.38200.50800.53500 | **Toilet** | 237d | 2026-02-19 | 2026-10-13 |  | start no earlier than 2026-02-19 | 7 Days Work | 9293974 |
| 8838 | 36900.37000.37100.37500.38200.50800.53500.1006000 | Toilet_MEP Clearance -1 | 7d | 2026-02-19 | 2026-02-25 | 8801 |  | 7 Days Work | 9304764 |
| 8839 | 36900.37000.37100.37500.38200.50800.53500.1006100 | Toilet_Level Marking | 1d | 2026-02-26 | 2026-02-26 | 8838 |  | 7 Days Work | 9304774 |
| 8840 | 36900.37000.37100.37500.38200.50800.53500.1006200 | Toilet_Chasing work for Electrical conduit & concealed plumbing | 5d | 2026-02-27 | 2026-03-03 | 8839 |  | 7 Days Work | 9304784 |
| 8841 | 36900.37000.37100.37500.38200.50800.53500.1006300 | Toilet_Plumbing work 1st fix | 5d | 2026-03-04 | 2026-03-08 | 8840 |  | 7 Days Work | 9304794 |
| 8842 | 36900.37000.37100.37500.38200.50800.53500.1006400 | Toilet_Sleeve/Bore Packing | 5d | 2026-03-09 | 2026-03-13 | 8841 |  | 7 Days Work | 9304804 |
| 8843 | 36900.37000.37100.37500.38200.50800.53500.1006500 | Toilet_Waterproofing | 10d | 2026-03-14 | 2026-03-23 | 8842 |  | 7 Days Work | 9304814 |
| 8844 | 36900.37000.37100.37500.38200.50800.53500.1006600 | Toilet_Screed | 1d | 2026-03-24 | 2026-03-24 | 8843 |  | 7 Days Work | 9304824 |
| 8845 | 36900.37000.37100.37500.38200.50800.53500.1006700 | Toilet_Plumbing 2nd fix | 5d | 2026-03-25 | 2026-03-29 | 8844 |  | 7 Days Work | 9304834 |
| 8846 | 36900.37000.37100.37500.38200.50800.53500.1006800 | Toilet_Ledge wall | 5d | 2026-03-30 | 2026-04-03 | 8845 |  | 7 Days Work | 9304844 |
| 8847 | 36900.37000.37100.37500.38200.50800.53500.1006900 | Toilet_Cement Plaster | 5d | 2026-04-04 | 2026-04-08 | 8846 |  | 7 Days Work | 9304854 |
| 8848 | 36900.37000.37100.37500.38200.50800.53500.1007000 | Toilet_Door Frame | 1d | 2026-04-09 | 2026-04-09 | 8847 |  | 7 Days Work | 9304864 |
| 8849 | 36900.37000.37100.37500.38200.50800.53500.1007100 | Toilet_Wash basin & Couter | 3d | 2026-04-10 | 2026-04-12 | 8848 |  | 7 Days Work | 9304874 |
| 8850 | 36900.37000.37100.37500.38200.50800.53500.1007200 | Toilet_Wall dado | 20d | 2026-04-13 | 2026-05-02 | 8849 |  | 7 Days Work | 9304884 |
| 8851 | 36900.37000.37100.37500.38200.50800.53500.1007300 | Toilet_Granite Work-Ledge wall top | 3d | 2026-05-03 | 2026-05-05 | 8850 |  | 7 Days Work | 9304894 |
| 8852 | 36900.37000.37100.37500.38200.50800.53500.1007400 | Toilet_Floor Tilling work | 20d | 2026-05-06 | 2026-05-25 | 8851 |  | 7 Days Work | 9304904 |
| 8853 | 36900.37000.37100.37500.38200.50800.53500.1007500 | Toilet_1st row of dado | 5d | 2026-05-26 | 2026-05-30 | 8852 |  | 7 Days Work | 9304914 |
| 8854 | 36900.37000.37100.37500.38200.50800.53500.1007600 | Toilet_Window Fixing | 14d | 2026-05-31 | 2026-06-13 | 8853 |  | 7 Days Work | 9304924 |
| 8855 | 36900.37000.37100.37500.38200.50800.53500.1007700 | Toilet_Services above False ceiling | 21d | 2026-06-14 | 2026-07-04 | 8854 |  | 7 Days Work | 9304934 |
| 8856 | 36900.37000.37100.37500.38200.50800.53500.1007800 | Toilet_False Ceiling framing | 12d | 2026-07-05 | 2026-07-16 | 8855 |  | 7 Days Work | 9304944 |
| 8857 | 36900.37000.37100.37500.38200.50800.53500.1007900 | Toilet_Door Frame | 5d | 2026-07-17 | 2026-07-21 | 8856 |  | 7 Days Work | 9304954 |
| 8858 | 36900.37000.37100.37500.38200.50800.53500.1008000 | Toilet_Epoxy Tile Grouting | 7d | 2026-09-16 | 2026-09-22 | 8833SS |  | 7 Days Work | 9304964 |
| 8859 | 36900.37000.37100.37500.38200.50800.53500.1008100 | Toilet_False ceiling board fixing, CP Sanitary Fixture, Electric Fixture | 21d | 2026-09-23 | 2026-10-13 | 8858 |  | 7 Days Work | 9304974 |
| 8860 | 36900.37000.37100.37500.38200.50900 | **8th Habitable/9th Floor** | 245d | 2026-02-21 | 2026-10-23 |  | start no earlier than 2026-02-21 | 7 Days Work | 9293774 |
| 8861 | 36900.37000.37100.37500.38200.50900.672700 | Post Pour | 7d | 2026-02-21 | 2026-02-27 | 8425FS+15d |  | 7 Days Work | 9296964 |
| 8862 | 36900.37000.37100.37500.38200.50900.672800 | MEP Clearance -1 | 5d | 2026-02-28 | 2026-03-04 | 8861 |  | 7 Days Work | 9296974 |
| 8863 | 36900.37000.37100.37500.38200.50900.672900 | Benchmark | 1d | 2026-03-05 | 2026-03-05 | 8862 |  | 7 Days Work | 9296984 |
| 8864 | 36900.37000.37100.37500.38200.50900.673000 | Temporary Railing | 3d | 2026-03-06 | 2026-03-08 | 8863 |  | 7 Days Work | 9296994 |
| 8865 | 36900.37000.37100.37500.38200.50900.673100 | Blockwork | 10d | 2026-03-09 | 2026-03-18 | 8864 |  | 7 Days Work | 9297004 |
| 8866 | 36900.37000.37100.37500.38200.50900.673200 | MEP Clearance -2 | 10d | 2026-03-19 | 2026-03-28 | 8865 |  | 7 Days Work | 9297014 |
| 8867 | 36900.37000.37100.37500.38200.50900.673300 | Gypsum Plaster | 14d | 2026-03-29 | 2026-04-11 | 8866 |  | 7 Days Work | 9297024 |
| 8868 | 36900.37000.37100.37500.38200.50900.673400 | Kitchen Platform | 3d | 2026-04-12 | 2026-04-14 | 8867 |  | 7 Days Work | 9297034 |
| 8869 | 36900.37000.37100.37500.38200.50900.673500 | Kitchen dado | 7d | 2026-04-15 | 2026-04-21 | 8868 |  | 7 Days Work | 9297044 |
| 8870 | 36900.37000.37100.37500.38200.50900.673600 | Fire Fighting | 5d | 2026-04-22 | 2026-04-26 | 8869 |  | 7 Days Work | 9297054 |
| 8871 | 36900.37000.37100.37500.38200.50900.673700 | Anticapilary | 5d | 2026-04-27 | 2026-05-01 | 8870 |  | 7 Days Work | 9297064 |
| 8872 | 36900.37000.37100.37500.38200.50900.673800 | Stone Laying | 10d | 2026-06-04 | 2026-06-13 | 8912 |  | 7 Days Work | 9297074 |
| 8873 | 36900.37000.37100.37500.38200.50900.673900 | Tiles Laying | 7d | 2026-06-04 | 2026-06-10 | 8912 |  | 7 Days Work | 9297084 |
| 8874 | 36900.37000.37100.37500.38200.50900.674000 | 1st cutting/polishing of stone flooring | 7d | 2026-06-11 | 2026-06-17 | 8873 |  | 7 Days Work | 9297094 |
| 8875 | 36900.37000.37100.37500.38200.50900.674100 | Tiles/Stone skirting | 5d | 2026-06-18 | 2026-06-22 | 8874 |  | 7 Days Work | 9297104 |
| 8876 | 36900.37000.37100.37500.38200.50900.674200 | Protechtion sheet | 1d | 2026-06-23 | 2026-06-23 | 8875 |  | 7 Days Work | 9297114 |
| 8877 | 36900.37000.37100.37500.38200.50900.674300 | Installation of Temporary Door | 1d | 2026-06-24 | 2026-06-24 | 8876 |  | 7 Days Work | 9297124 |
| 8878 | 36900.37000.37100.37500.38200.50900.674400 | Fixing of window tracks | 5d | 2026-06-25 | 2026-06-29 | 8877 |  | 7 Days Work | 9297134 |
| 8879 | 36900.37000.37100.37500.38200.50900.674500 | Wire Pulling | 7d | 2026-06-30 | 2026-07-06 | 8878 |  | 7 Days Work | 9297144 |
| 8880 | 36900.37000.37100.37500.38200.50900.674600 | Gypsum Remaining | 5d | 2026-07-07 | 2026-07-11 | 8879 |  | 7 Days Work | 9297154 |
| 8881 | 36900.37000.37100.37500.38200.50900.674700 | Fixing of windoow shutter | 5d | 2026-07-12 | 2026-07-16 | 8880 |  | 7 Days Work | 9297164 |
| 8882 | 36900.37000.37100.37500.38200.50900.674800 | Putty Works - walls & ceiling | 15d | 2026-07-17 | 2026-07-31 | 8881 |  | 7 Days Work | 9297174 |
| 8883 | 36900.37000.37100.37500.38200.50900.674900 | False Ceiling- Framing | 10d | 2026-08-01 | 2026-08-10 | 8882 |  | 7 Days Work | 9297184 |
| 8884 | 36900.37000.37100.37500.38200.50900.675000 | Pre Hung Door | 3d | 2026-08-11 | 2026-08-13 | 8883 |  | 7 Days Work | 9297194 |
| 8885 | 36900.37000.37100.37500.38200.50900.675100 | Protechtion sheet | 2d | 2026-08-14 | 2026-08-15 | 8884 |  | 7 Days Work | 9297204 |
| 8886 | 36900.37000.37100.37500.38200.50900.675200 | Skirting near door | 2d | 2026-08-16 | 2026-08-17 | 8885 |  | 7 Days Work | 9297214 |
| 8887 | 36900.37000.37100.37500.38200.50900.675300 | Electrical Switch box fixing | 14d | 2026-08-18 | 2026-08-31 | 8886 |  | 7 Days Work | 9297224 |
| 8888 | 36900.37000.37100.37500.38200.50900.675400 | Fire Fighting painting | 5d | 2026-09-01 | 2026-09-05 | 8887 |  | 7 Days Work | 9297234 |
| 8889 | 36900.37000.37100.37500.38200.50900.675500 | Protection of all flooring, door & window hardware | 5d | 2026-09-06 | 2026-09-10 | 8888 |  | 7 Days Work | 9297244 |
| 8890 | 36900.37000.37100.37500.38200.50900.675600 | 1st coat primer- ceiling 1st & walls | 14d | 2026-09-11 | 2026-09-24 | 8889 |  | 7 Days Work | 9297254 |
| 8891 | 36900.37000.37100.37500.38200.50900.675700 | Wooden Flooring | 5d | 2026-09-25 | 2026-09-29 | 8890 |  | 7 Days Work | 9297264 |
| 8892 | 36900.37000.37100.37500.38200.50900.675800 | Removing of Temporary Railing & installation of Glass Railing | 5d | 2026-09-25 | 2026-09-29 | 8890 |  | 7 Days Work | 9297274 |
| 8893 | 36900.37000.37100.37500.38200.50900.675900 | Tile Grouting | 7d | 2026-09-25 | 2026-10-01 | 8890 |  | 7 Days Work | 9297284 |
| 8894 | 36900.37000.37100.37500.38200.50900.676000 | False Ceiling | 5d | 2026-10-02 | 2026-10-06 | 8893 |  | 7 Days Work | 9297294 |
| 8895 | 36900.37000.37100.37500.38200.50900.676100 | 2nd coat of primer | 10d | 2026-10-07 | 2026-10-16 | 8894 |  | 7 Days Work | 9297304 |
| 8896 | 36900.37000.37100.37500.38200.50900.676200 | Final cutting/polishing of stone flooring | 7d | 2026-10-17 | 2026-10-23 | 8895 |  | 7 Days Work | 9297314 |

| ID | WBS | Task | Duration | Start | Finish | Predecessors | Constraint | Calendar | Unique_Task_ID |
| --- | --- | --- | --- | --- | --- | --- | --- | --- | --- |
| 8897 | 36900.37000.37100.37500.38200.50900.53600 | **Toilet** | 237d | 2026-02-28 | 2026-10-22 |  | start no earlier than 2026-02-28 | 7 Days Work | 9293984 |
| 8898 | 36900.37000.37100.37500.38200.50900.53600.1008200 | Toilet_MEP Clearance -1 | 7d | 2026-02-28 | 2026-03-06 | 8861 |  | 7 Days Work | 9304984 |
| 8899 | 36900.37000.37100.37500.38200.50900.53600.1008300 | Toilet_Level Marking | 1d | 2026-03-07 | 2026-03-07 | 8898 |  | 7 Days Work | 9304994 |
| 8900 | 36900.37000.37100.37500.38200.50900.53600.1008400 | Toilet_Chasing work for Electrical conduit & concealed plumbing | 5d | 2026-03-08 | 2026-03-12 | 8899 |  | 7 Days Work | 9305004 |
| 8901 | 36900.37000.37100.37500.38200.50900.53600.1008500 | Toilet_Plumbing work 1st fix | 5d | 2026-03-13 | 2026-03-17 | 8900 |  | 7 Days Work | 9305014 |
| 8902 | 36900.37000.37100.37500.38200.50900.53600.1008600 | Toilet_Sleeve/Bore Packing | 5d | 2026-03-18 | 2026-03-22 | 8901 |  | 7 Days Work | 9305024 |
| 8903 | 36900.37000.37100.37500.38200.50900.53600.1008700 | Toilet_Waterproofing | 10d | 2026-03-23 | 2026-04-01 | 8902 |  | 7 Days Work | 9305034 |
| 8904 | 36900.37000.37100.37500.38200.50900.53600.1008800 | Toilet_Screed | 1d | 2026-04-02 | 2026-04-02 | 8903 |  | 7 Days Work | 9305044 |
| 8905 | 36900.37000.37100.37500.38200.50900.53600.1008900 | Toilet_Plumbing 2nd fix | 5d | 2026-04-03 | 2026-04-07 | 8904 |  | 7 Days Work | 9305054 |
| 8906 | 36900.37000.37100.37500.38200.50900.53600.1009000 | Toilet_Ledge wall | 5d | 2026-04-08 | 2026-04-12 | 8905 |  | 7 Days Work | 9305064 |
| 8907 | 36900.37000.37100.37500.38200.50900.53600.1009100 | Toilet_Cement Plaster | 5d | 2026-04-13 | 2026-04-17 | 8906 |  | 7 Days Work | 9305074 |
| 8908 | 36900.37000.37100.37500.38200.50900.53600.1009200 | Toilet_Door Frame | 1d | 2026-04-18 | 2026-04-18 | 8907 |  | 7 Days Work | 9305084 |
| 8909 | 36900.37000.37100.37500.38200.50900.53600.1009300 | Toilet_Wash basin & Couter | 3d | 2026-04-19 | 2026-04-21 | 8908 |  | 7 Days Work | 9305094 |
| 8910 | 36900.37000.37100.37500.38200.50900.53600.1009400 | Toilet_Wall dado | 20d | 2026-04-22 | 2026-05-11 | 8909 |  | 7 Days Work | 9305104 |
| 8911 | 36900.37000.37100.37500.38200.50900.53600.1009500 | Toilet_Granite Work-Ledge wall top | 3d | 2026-05-12 | 2026-05-14 | 8910 |  | 7 Days Work | 9305114 |
| 8912 | 36900.37000.37100.37500.38200.50900.53600.1009600 | Toilet_Floor Tilling work | 20d | 2026-05-15 | 2026-06-03 | 8911 |  | 7 Days Work | 9305124 |
| 8913 | 36900.37000.37100.37500.38200.50900.53600.1009700 | Toilet_1st row of dado | 5d | 2026-06-04 | 2026-06-08 | 8912 |  | 7 Days Work | 9305134 |
| 8914 | 36900.37000.37100.37500.38200.50900.53600.1009800 | Toilet_Window Fixing | 14d | 2026-06-09 | 2026-06-22 | 8913 |  | 7 Days Work | 9305144 |
| 8915 | 36900.37000.37100.37500.38200.50900.53600.1009900 | Toilet_Services above False ceiling | 21d | 2026-06-23 | 2026-07-13 | 8914 |  | 7 Days Work | 9305154 |
| 8916 | 36900.37000.37100.37500.38200.50900.53600.1010000 | Toilet_False Ceiling framing | 12d | 2026-07-14 | 2026-07-25 | 8915 |  | 7 Days Work | 9305164 |
| 8917 | 36900.37000.37100.37500.38200.50900.53600.1010100 | Toilet_Door Frame | 5d | 2026-07-26 | 2026-07-30 | 8916 |  | 7 Days Work | 9305174 |
| 8918 | 36900.37000.37100.37500.38200.50900.53600.1010200 | Toilet_Epoxy Tile Grouting | 7d | 2026-09-25 | 2026-10-01 | 8893SS |  | 7 Days Work | 9305184 |
| 8919 | 36900.37000.37100.37500.38200.50900.53600.1010300 | Toilet_False ceiling board fixing, CP Sanitary Fixture, Electric Fixture | 21d | 2026-10-02 | 2026-10-22 | 8918 |  | 7 Days Work | 9305194 |
| 8920 | 36900.37000.37100.37500.38200.51000 | **9th Habitable/10th Floor** | 245d | 2026-03-05 | 2026-11-04 |  | start no earlier than 2026-03-05 | 7 Days Work | 9293784 |
| 8921 | 36900.37000.37100.37500.38200.51000.676300 | Post Pour | 7d | 2026-03-05 | 2026-03-11 | 8426FS+15d |  | 7 Days Work | 9297324 |
| 8922 | 36900.37000.37100.37500.38200.51000.676400 | MEP Clearance -1 | 5d | 2026-03-12 | 2026-03-16 | 8921 |  | 7 Days Work | 9297334 |
| 8923 | 36900.37000.37100.37500.38200.51000.676500 | Benchmark | 1d | 2026-03-17 | 2026-03-17 | 8922 |  | 7 Days Work | 9297344 |
| 8924 | 36900.37000.37100.37500.38200.51000.676600 | Temporary Railing | 3d | 2026-03-18 | 2026-03-20 | 8923 |  | 7 Days Work | 9297354 |
| 8925 | 36900.37000.37100.37500.38200.51000.676700 | Blockwork | 10d | 2026-03-21 | 2026-03-30 | 8924 |  | 7 Days Work | 9297364 |
| 8926 | 36900.37000.37100.37500.38200.51000.676800 | MEP Clearance -2 | 10d | 2026-03-31 | 2026-04-09 | 8925 |  | 7 Days Work | 9297374 |
| 8927 | 36900.37000.37100.37500.38200.51000.676900 | Gypsum Plaster | 14d | 2026-04-10 | 2026-04-23 | 8926 |  | 7 Days Work | 9297384 |
| 8928 | 36900.37000.37100.37500.38200.51000.677000 | Kitchen Platform | 3d | 2026-04-24 | 2026-04-26 | 8927 |  | 7 Days Work | 9297394 |
| 8929 | 36900.37000.37100.37500.38200.51000.677100 | Kitchen dado | 7d | 2026-04-27 | 2026-05-03 | 8928 |  | 7 Days Work | 9297404 |
| 8930 | 36900.37000.37100.37500.38200.51000.677200 | Fire Fighting | 5d | 2026-05-04 | 2026-05-08 | 8929 |  | 7 Days Work | 9297414 |
| 8931 | 36900.37000.37100.37500.38200.51000.677300 | Anticapilary | 5d | 2026-05-09 | 2026-05-13 | 8930 |  | 7 Days Work | 9297424 |
| 8932 | 36900.37000.37100.37500.38200.51000.677400 | Stone Laying | 10d | 2026-06-16 | 2026-06-25 | 8972 |  | 7 Days Work | 9297434 |
| 8933 | 36900.37000.37100.37500.38200.51000.677500 | Tiles Laying | 7d | 2026-06-16 | 2026-06-22 | 8972 |  | 7 Days Work | 9297444 |
| 8934 | 36900.37000.37100.37500.38200.51000.677600 | 1st cutting/polishing of stone flooring | 7d | 2026-06-23 | 2026-06-29 | 8933 |  | 7 Days Work | 9297454 |
| 8935 | 36900.37000.37100.37500.38200.51000.677700 | Tiles/Stone skirting | 5d | 2026-06-30 | 2026-07-04 | 8934 |  | 7 Days Work | 9297464 |
| 8936 | 36900.37000.37100.37500.38200.51000.677800 | Protechtion sheet | 1d | 2026-07-05 | 2026-07-05 | 8935 |  | 7 Days Work | 9297474 |
| 8937 | 36900.37000.37100.37500.38200.51000.677900 | Installation of Temporary Door | 1d | 2026-07-06 | 2026-07-06 | 8936 |  | 7 Days Work | 9297484 |
| 8938 | 36900.37000.37100.37500.38200.51000.678000 | Fixing of window tracks | 5d | 2026-07-07 | 2026-07-11 | 8937 |  | 7 Days Work | 9297494 |
| 8939 | 36900.37000.37100.37500.38200.51000.678100 | Wire Pulling | 7d | 2026-07-12 | 2026-07-18 | 8938 |  | 7 Days Work | 9297504 |
| 8940 | 36900.37000.37100.37500.38200.51000.678200 | Gypsum Remaining | 5d | 2026-07-19 | 2026-07-23 | 8939 |  | 7 Days Work | 9297514 |
| 8941 | 36900.37000.37100.37500.38200.51000.678300 | Fixing of windoow shutter | 5d | 2026-07-24 | 2026-07-28 | 8940 |  | 7 Days Work | 9297524 |
| 8942 | 36900.37000.37100.37500.38200.51000.678400 | Putty Works - walls & ceiling | 15d | 2026-07-29 | 2026-08-12 | 8941 |  | 7 Days Work | 9297534 |
| 8943 | 36900.37000.37100.37500.38200.51000.678500 | False Ceiling- Framing | 10d | 2026-08-13 | 2026-08-22 | 8942 |  | 7 Days Work | 9297544 |
| 8944 | 36900.37000.37100.37500.38200.51000.678600 | Pre Hung Door | 3d | 2026-08-23 | 2026-08-25 | 8943 |  | 7 Days Work | 9297554 |
| 8945 | 36900.37000.37100.37500.38200.51000.678700 | Protechtion sheet | 2d | 2026-08-26 | 2026-08-27 | 8944 |  | 7 Days Work | 9297564 |
| 8946 | 36900.37000.37100.37500.38200.51000.678800 | Skirting near door | 2d | 2026-08-28 | 2026-08-29 | 8945 |  | 7 Days Work | 9297574 |
| 8947 | 36900.37000.37100.37500.38200.51000.678900 | Electrical Switch box fixing | 14d | 2026-08-30 | 2026-09-12 | 8946 |  | 7 Days Work | 9297584 |
| 8948 | 36900.37000.37100.37500.38200.51000.679000 | Fire Fighting painting | 5d | 2026-09-13 | 2026-09-17 | 8947 |  | 7 Days Work | 9297594 |
| 8949 | 36900.37000.37100.37500.38200.51000.679100 | Protection of all flooring, door & window hardware | 5d | 2026-09-18 | 2026-09-22 | 8948 |  | 7 Days Work | 9297604 |
| 8950 | 36900.37000.37100.37500.38200.51000.679200 | 1st coat primer- ceiling 1st & walls | 14d | 2026-09-23 | 2026-10-06 | 8949 |  | 7 Days Work | 9297614 |
| 8951 | 36900.37000.37100.37500.38200.51000.679300 | Wooden Flooring | 5d | 2026-10-07 | 2026-10-11 | 8950 |  | 7 Days Work | 9297624 |
| 8952 | 36900.37000.37100.37500.38200.51000.679400 | Removing of Temporary Railing & installation of Glass Railing | 5d | 2026-10-07 | 2026-10-11 | 8950 |  | 7 Days Work | 9297634 |
| 8953 | 36900.37000.37100.37500.38200.51000.679500 | Tile Grouting | 7d | 2026-10-07 | 2026-10-13 | 8950 |  | 7 Days Work | 9297644 |
| 8954 | 36900.37000.37100.37500.38200.51000.679600 | False Ceiling | 5d | 2026-10-14 | 2026-10-18 | 8953 |  | 7 Days Work | 9297654 |
| 8955 | 36900.37000.37100.37500.38200.51000.679700 | 2nd coat of primer | 10d | 2026-10-19 | 2026-10-28 | 8954 |  | 7 Days Work | 9297664 |
| 8956 | 36900.37000.37100.37500.38200.51000.679800 | Final cutting/polishing of stone flooring | 7d | 2026-10-29 | 2026-11-04 | 8955 |  | 7 Days Work | 9297674 |

| ID | WBS | Task | Duration | Start | Finish | Predecessors | Constraint | Calendar | Unique_Task_ID |
| --- | --- | --- | --- | --- | --- | --- | --- | --- | --- |
| 8957 | 36900.37000.37100.37500.38200.51000.54000 | **Toilet** | 237d | 2026-03-12 | 2026-11-03 |  | start no earlier than 2026-03-12 | 7 Days Work | 9293994 |
| 8958 | 36900.37000.37100.37500.38200.51000.54000.1010400 | Toilet_MEP Clearance -1 | 7d | 2026-03-12 | 2026-03-18 | 8921 |  | 7 Days Work | 9305204 |
| 8959 | 36900.37000.37100.37500.38200.51000.54000.1010500 | Toilet_Level Marking | 1d | 2026-03-19 | 2026-03-19 | 8958 |  | 7 Days Work | 9305214 |
| 8960 | 36900.37000.37100.37500.38200.51000.54000.1010600 | Toilet_Chasing work for Electrical conduit & concealed plumbing | 5d | 2026-03-20 | 2026-03-24 | 8959 |  | 7 Days Work | 9305224 |
| 8961 | 36900.37000.37100.37500.38200.51000.54000.1010700 | Toilet_Plumbing work 1st fix | 5d | 2026-03-25 | 2026-03-29 | 8960 |  | 7 Days Work | 9305234 |
| 8962 | 36900.37000.37100.37500.38200.51000.54000.1010800 | Toilet_Sleeve/Bore Packing | 5d | 2026-03-30 | 2026-04-03 | 8961 |  | 7 Days Work | 9305244 |
| 8963 | 36900.37000.37100.37500.38200.51000.54000.1010900 | Toilet_Waterproofing | 10d | 2026-04-04 | 2026-04-13 | 8962 |  | 7 Days Work | 9305254 |
| 8964 | 36900.37000.37100.37500.38200.51000.54000.1011000 | Toilet_Screed | 1d | 2026-04-14 | 2026-04-14 | 8963 |  | 7 Days Work | 9305264 |
| 8965 | 36900.37000.37100.37500.38200.51000.54000.1011100 | Toilet_Plumbing 2nd fix | 5d | 2026-04-15 | 2026-04-19 | 8964 |  | 7 Days Work | 9305274 |
| 8966 | 36900.37000.37100.37500.38200.51000.54000.1011200 | Toilet_Ledge wall | 5d | 2026-04-20 | 2026-04-24 | 8965 |  | 7 Days Work | 9305284 |
| 8967 | 36900.37000.37100.37500.38200.51000.54000.1011300 | Toilet_Cement Plaster | 5d | 2026-04-25 | 2026-04-29 | 8966 |  | 7 Days Work | 9305294 |
| 8968 | 36900.37000.37100.37500.38200.51000.54000.1011400 | Toilet_Door Frame | 1d | 2026-04-30 | 2026-04-30 | 8967 |  | 7 Days Work | 9305304 |
| 8969 | 36900.37000.37100.37500.38200.51000.54000.1011500 | Toilet_Wash basin & Couter | 3d | 2026-05-01 | 2026-05-03 | 8968 |  | 7 Days Work | 9305314 |
| 8970 | 36900.37000.37100.37500.38200.51000.54000.1011600 | Toilet_Wall dado | 20d | 2026-05-04 | 2026-05-23 | 8969 |  | 7 Days Work | 9305324 |
| 8971 | 36900.37000.37100.37500.38200.51000.54000.1011700 | Toilet_Granite Work-Ledge wall top | 3d | 2026-05-24 | 2026-05-26 | 8970 |  | 7 Days Work | 9305334 |
| 8972 | 36900.37000.37100.37500.38200.51000.54000.1011800 | Toilet_Floor Tilling work | 20d | 2026-05-27 | 2026-06-15 | 8971 |  | 7 Days Work | 9305344 |
| 8973 | 36900.37000.37100.37500.38200.51000.54000.1011900 | Toilet_1st row of dado | 5d | 2026-06-16 | 2026-06-20 | 8972 |  | 7 Days Work | 9305354 |
| 8974 | 36900.37000.37100.37500.38200.51000.54000.1012000 | Toilet_Window Fixing | 14d | 2026-06-21 | 2026-07-04 | 8973 |  | 7 Days Work | 9305364 |
| 8975 | 36900.37000.37100.37500.38200.51000.54000.1012100 | Toilet_Services above False ceiling | 21d | 2026-07-05 | 2026-07-25 | 8974 |  | 7 Days Work | 9305374 |
| 8976 | 36900.37000.37100.37500.38200.51000.54000.1012200 | Toilet_False Ceiling framing | 12d | 2026-07-26 | 2026-08-06 | 8975 |  | 7 Days Work | 9305384 |
| 8977 | 36900.37000.37100.37500.38200.51000.54000.1012300 | Toilet_Door Frame | 5d | 2026-08-07 | 2026-08-11 | 8976 |  | 7 Days Work | 9305394 |
| 8978 | 36900.37000.37100.37500.38200.51000.54000.1012400 | Toilet_Epoxy Tile Grouting | 7d | 2026-10-07 | 2026-10-13 | 8953SS |  | 7 Days Work | 9305404 |
| 8979 | 36900.37000.37100.37500.38200.51000.54000.1012500 | Toilet_False ceiling board fixing, CP Sanitary Fixture, Electric Fixture | 21d | 2026-10-14 | 2026-11-03 | 8978 |  | 7 Days Work | 9305414 |
| 8980 | 36900.37000.37100.37500.38200.51100 | **10th Habitable/11th Floor** | 245d | 2026-03-14 | 2026-11-13 |  | start no earlier than 2026-03-14 | 7 Days Work | 9293794 |
| 8981 | 36900.37000.37100.37500.38200.51100.679900 | Post Pour | 7d | 2026-03-14 | 2026-03-20 | 8427FS+15d |  | 7 Days Work | 9297684 |
| 8982 | 36900.37000.37100.37500.38200.51100.680000 | MEP Clearance -1 | 5d | 2026-03-21 | 2026-03-25 | 8981 |  | 7 Days Work | 9297694 |
| 8983 | 36900.37000.37100.37500.38200.51100.680100 | Benchmark | 1d | 2026-03-26 | 2026-03-26 | 8982 |  | 7 Days Work | 9297704 |
| 8984 | 36900.37000.37100.37500.38200.51100.680200 | Temporary Railing | 3d | 2026-03-27 | 2026-03-29 | 8983 |  | 7 Days Work | 9297714 |
| 8985 | 36900.37000.37100.37500.38200.51100.680300 | Blockwork | 10d | 2026-03-30 | 2026-04-08 | 8984 |  | 7 Days Work | 9297724 |
| 8986 | 36900.37000.37100.37500.38200.51100.680400 | MEP Clearance -2 | 10d | 2026-04-09 | 2026-04-18 | 8985 |  | 7 Days Work | 9297734 |
| 8987 | 36900.37000.37100.37500.38200.51100.680500 | Gypsum Plaster | 14d | 2026-04-19 | 2026-05-02 | 8986 |  | 7 Days Work | 9297744 |
| 8988 | 36900.37000.37100.37500.38200.51100.680600 | Kitchen Platform | 3d | 2026-05-03 | 2026-05-05 | 8987 |  | 7 Days Work | 9297754 |
| 8989 | 36900.37000.37100.37500.38200.51100.680700 | Kitchen dado | 7d | 2026-05-06 | 2026-05-12 | 8988 |  | 7 Days Work | 9297764 |
| 8990 | 36900.37000.37100.37500.38200.51100.680800 | Fire Fighting | 5d | 2026-05-13 | 2026-05-17 | 8989 |  | 7 Days Work | 9297774 |
| 8991 | 36900.37000.37100.37500.38200.51100.680900 | Anticapilary | 5d | 2026-05-18 | 2026-05-22 | 8990 |  | 7 Days Work | 9297784 |
| 8992 | 36900.37000.37100.37500.38200.51100.681000 | Stone Laying | 10d | 2026-06-25 | 2026-07-04 | 9032 |  | 7 Days Work | 9297794 |
| 8993 | 36900.37000.37100.37500.38200.51100.681100 | Tiles Laying | 7d | 2026-06-25 | 2026-07-01 | 9032 |  | 7 Days Work | 9297804 |
| 8994 | 36900.37000.37100.37500.38200.51100.681200 | 1st cutting/polishing of stone flooring | 7d | 2026-07-02 | 2026-07-08 | 8993 |  | 7 Days Work | 9297814 |
| 8995 | 36900.37000.37100.37500.38200.51100.681300 | Tiles/Stone skirting | 5d | 2026-07-09 | 2026-07-13 | 8994 |  | 7 Days Work | 9297824 |
| 8996 | 36900.37000.37100.37500.38200.51100.681400 | Protechtion sheet | 1d | 2026-07-14 | 2026-07-14 | 8995 |  | 7 Days Work | 9297834 |
| 8997 | 36900.37000.37100.37500.38200.51100.681500 | Installation of Temporary Door | 1d | 2026-07-15 | 2026-07-15 | 8996 |  | 7 Days Work | 9297844 |
| 8998 | 36900.37000.37100.37500.38200.51100.681600 | Fixing of window tracks | 5d | 2026-07-16 | 2026-07-20 | 8997 |  | 7 Days Work | 9297854 |
| 8999 | 36900.37000.37100.37500.38200.51100.681700 | Wire Pulling | 7d | 2026-07-21 | 2026-07-27 | 8998 |  | 7 Days Work | 9297864 |
| 9000 | 36900.37000.37100.37500.38200.51100.681800 | Gypsum Remaining | 5d | 2026-07-28 | 2026-08-01 | 8999 |  | 7 Days Work | 9297874 |
| 9001 | 36900.37000.37100.37500.38200.51100.681900 | Fixing of windoow shutter | 5d | 2026-08-02 | 2026-08-06 | 9000 |  | 7 Days Work | 9297884 |
| 9002 | 36900.37000.37100.37500.38200.51100.682000 | Putty Works - walls & ceiling | 15d | 2026-08-07 | 2026-08-21 | 9001 |  | 7 Days Work | 9297894 |
| 9003 | 36900.37000.37100.37500.38200.51100.682100 | False Ceiling- Framing | 10d | 2026-08-22 | 2026-08-31 | 9002 |  | 7 Days Work | 9297904 |
| 9004 | 36900.37000.37100.37500.38200.51100.682200 | Pre Hung Door | 3d | 2026-09-01 | 2026-09-03 | 9003 |  | 7 Days Work | 9297914 |
| 9005 | 36900.37000.37100.37500.38200.51100.682300 | Protechtion sheet | 2d | 2026-09-04 | 2026-09-05 | 9004 |  | 7 Days Work | 9297924 |
| 9006 | 36900.37000.37100.37500.38200.51100.682400 | Skirting near door | 2d | 2026-09-06 | 2026-09-07 | 9005 |  | 7 Days Work | 9297934 |
| 9007 | 36900.37000.37100.37500.38200.51100.682500 | Electrical Switch box fixing | 14d | 2026-09-08 | 2026-09-21 | 9006 |  | 7 Days Work | 9297944 |
| 9008 | 36900.37000.37100.37500.38200.51100.682600 | Fire Fighting painting | 5d | 2026-09-22 | 2026-09-26 | 9007 |  | 7 Days Work | 9297954 |
| 9009 | 36900.37000.37100.37500.38200.51100.682700 | Protection of all flooring, door & window hardware | 5d | 2026-09-27 | 2026-10-01 | 9008 |  | 7 Days Work | 9297964 |
| 9010 | 36900.37000.37100.37500.38200.51100.682800 | 1st coat primer- ceiling 1st & walls | 14d | 2026-10-02 | 2026-10-15 | 9009 |  | 7 Days Work | 9297974 |
| 9011 | 36900.37000.37100.37500.38200.51100.682900 | Wooden Flooring | 5d | 2026-10-16 | 2026-10-20 | 9010 |  | 7 Days Work | 9297984 |
| 9012 | 36900.37000.37100.37500.38200.51100.683000 | Removing of Temporary Railing & installation of Glass Railing | 5d | 2026-10-16 | 2026-10-20 | 9010 |  | 7 Days Work | 9297994 |
| 9013 | 36900.37000.37100.37500.38200.51100.683100 | Tile Grouting | 7d | 2026-10-16 | 2026-10-22 | 9010 |  | 7 Days Work | 9298004 |
| 9014 | 36900.37000.37100.37500.38200.51100.683200 | False Ceiling | 5d | 2026-10-23 | 2026-10-27 | 9013 |  | 7 Days Work | 9298014 |
| 9015 | 36900.37000.37100.37500.38200.51100.683300 | 2nd coat of primer | 10d | 2026-10-28 | 2026-11-06 | 9014 |  | 7 Days Work | 9298024 |
| 9016 | 36900.37000.37100.37500.38200.51100.683400 | Final cutting/polishing of stone flooring | 7d | 2026-11-07 | 2026-11-13 | 9015 |  | 7 Days Work | 9298034 |

| ID | WBS | Task | Duration | Start | Finish | Predecessors | Constraint | Calendar | Unique_Task_ID |
| --- | --- | --- | --- | --- | --- | --- | --- | --- | --- |
| 9017 | 36900.37000.37100.37500.38200.51100.54100 | **Toilet** | 237d | 2026-03-21 | 2026-11-12 |  | start no earlier than 2026-03-21 | 7 Days Work | 9294004 |
| 9018 | 36900.37000.37100.37500.38200.51100.54100.1012600 | Toilet_MEP Clearance -1 | 7d | 2026-03-21 | 2026-03-27 | 8981 |  | 7 Days Work | 9305424 |
| 9019 | 36900.37000.37100.37500.38200.51100.54100.1012700 | Toilet_Level Marking | 1d | 2026-03-28 | 2026-03-28 | 9018 |  | 7 Days Work | 9305434 |
| 9020 | 36900.37000.37100.37500.38200.51100.54100.1012800 | Toilet_Chasing work for Electrical conduit & concealed plumbing | 5d | 2026-03-29 | 2026-04-02 | 9019 |  | 7 Days Work | 9305444 |
| 9021 | 36900.37000.37100.37500.38200.51100.54100.1012900 | Toilet_Plumbing work 1st fix | 5d | 2026-04-03 | 2026-04-07 | 9020 |  | 7 Days Work | 9305454 |
| 9022 | 36900.37000.37100.37500.38200.51100.54100.1013000 | Toilet_Sleeve/Bore Packing | 5d | 2026-04-08 | 2026-04-12 | 9021 |  | 7 Days Work | 9305464 |
| 9023 | 36900.37000.37100.37500.38200.51100.54100.1013100 | Toilet_Waterproofing | 10d | 2026-04-13 | 2026-04-22 | 9022 |  | 7 Days Work | 9305474 |
| 9024 | 36900.37000.37100.37500.38200.51100.54100.1013200 | Toilet_Screed | 1d | 2026-04-23 | 2026-04-23 | 9023 |  | 7 Days Work | 9305484 |
| 9025 | 36900.37000.37100.37500.38200.51100.54100.1013300 | Toilet_Plumbing 2nd fix | 5d | 2026-04-24 | 2026-04-28 | 9024 |  | 7 Days Work | 9305494 |
| 9026 | 36900.37000.37100.37500.38200.51100.54100.1013400 | Toilet_Ledge wall | 5d | 2026-04-29 | 2026-05-03 | 9025 |  | 7 Days Work | 9305504 |
| 9027 | 36900.37000.37100.37500.38200.51100.54100.1013500 | Toilet_Cement Plaster | 5d | 2026-05-04 | 2026-05-08 | 9026 |  | 7 Days Work | 9305514 |
| 9028 | 36900.37000.37100.37500.38200.51100.54100.1013600 | Toilet_Door Frame | 1d | 2026-05-09 | 2026-05-09 | 9027 |  | 7 Days Work | 9305524 |
| 9029 | 36900.37000.37100.37500.38200.51100.54100.1013700 | Toilet_Wash basin & Couter | 3d | 2026-05-10 | 2026-05-12 | 9028 |  | 7 Days Work | 9305534 |
| 9030 | 36900.37000.37100.37500.38200.51100.54100.1013800 | Toilet_Wall dado | 20d | 2026-05-13 | 2026-06-01 | 9029 |  | 7 Days Work | 9305544 |
| 9031 | 36900.37000.37100.37500.38200.51100.54100.1013900 | Toilet_Granite Work-Ledge wall top | 3d | 2026-06-02 | 2026-06-04 | 9030 |  | 7 Days Work | 9305554 |
| 9032 | 36900.37000.37100.37500.38200.51100.54100.1014000 | Toilet_Floor Tilling work | 20d | 2026-06-05 | 2026-06-24 | 9031 |  | 7 Days Work | 9305564 |
| 9033 | 36900.37000.37100.37500.38200.51100.54100.1014100 | Toilet_1st row of dado | 5d | 2026-06-25 | 2026-06-29 | 9032 |  | 7 Days Work | 9305574 |
| 9034 | 36900.37000.37100.37500.38200.51100.54100.1014200 | Toilet_Window Fixing | 14d | 2026-06-30 | 2026-07-13 | 9033 |  | 7 Days Work | 9305584 |
| 9035 | 36900.37000.37100.37500.38200.51100.54100.1014300 | Toilet_Services above False ceiling | 21d | 2026-07-14 | 2026-08-03 | 9034 |  | 7 Days Work | 9305594 |
| 9036 | 36900.37000.37100.37500.38200.51100.54100.1014400 | Toilet_False Ceiling framing | 12d | 2026-08-04 | 2026-08-15 | 9035 |  | 7 Days Work | 9305604 |
| 9037 | 36900.37000.37100.37500.38200.51100.54100.1014500 | Toilet_Door Frame | 5d | 2026-08-16 | 2026-08-20 | 9036 |  | 7 Days Work | 9305614 |
| 9038 | 36900.37000.37100.37500.38200.51100.54100.1014600 | Toilet_Epoxy Tile Grouting | 7d | 2026-10-16 | 2026-10-22 | 9013SS |  | 7 Days Work | 9305624 |
| 9039 | 36900.37000.37100.37500.38200.51100.54100.1014700 | Toilet_False ceiling board fixing, CP Sanitary Fixture, Electric Fixture | 21d | 2026-10-23 | 2026-11-12 | 9038 |  | 7 Days Work | 9305634 |
| 9040 | 36900.37000.37100.37500.38200.51200 | **11th Habitable/12th Floor** | 245d | 2026-03-23 | 2026-11-22 |  | start no earlier than 2026-03-23 | 7 Days Work | 9293804 |
| 9041 | 36900.37000.37100.37500.38200.51200.683500 | Post Pour | 7d | 2026-03-23 | 2026-03-29 | 8428FS+15d |  | 7 Days Work | 9298044 |
| 9042 | 36900.37000.37100.37500.38200.51200.683600 | MEP Clearance -1 | 5d | 2026-03-30 | 2026-04-03 | 9041 |  | 7 Days Work | 9298054 |
| 9043 | 36900.37000.37100.37500.38200.51200.683700 | Benchmark | 1d | 2026-04-04 | 2026-04-04 | 9042 |  | 7 Days Work | 9298064 |
| 9044 | 36900.37000.37100.37500.38200.51200.683800 | Temporary Railing | 3d | 2026-04-05 | 2026-04-07 | 9043 |  | 7 Days Work | 9298074 |
| 9045 | 36900.37000.37100.37500.38200.51200.683900 | Blockwork | 10d | 2026-04-08 | 2026-04-17 | 9044 |  | 7 Days Work | 9298084 |
| 9046 | 36900.37000.37100.37500.38200.51200.684000 | MEP Clearance -2 | 10d | 2026-04-18 | 2026-04-27 | 9045 |  | 7 Days Work | 9298094 |
| 9047 | 36900.37000.37100.37500.38200.51200.684100 | Gypsum Plaster | 14d | 2026-04-28 | 2026-05-11 | 9046 |  | 7 Days Work | 9298104 |
| 9048 | 36900.37000.37100.37500.38200.51200.684200 | Kitchen Platform | 3d | 2026-05-12 | 2026-05-14 | 9047 |  | 7 Days Work | 9298114 |
| 9049 | 36900.37000.37100.37500.38200.51200.684300 | Kitchen dado | 7d | 2026-05-15 | 2026-05-21 | 9048 |  | 7 Days Work | 9298124 |
| 9050 | 36900.37000.37100.37500.38200.51200.684400 | Fire Fighting | 5d | 2026-05-22 | 2026-05-26 | 9049 |  | 7 Days Work | 9298134 |
| 9051 | 36900.37000.37100.37500.38200.51200.684500 | Anticapilary | 5d | 2026-05-27 | 2026-05-31 | 9050 |  | 7 Days Work | 9298144 |
| 9052 | 36900.37000.37100.37500.38200.51200.684600 | Stone Laying | 10d | 2026-07-04 | 2026-07-13 | 9092 |  | 7 Days Work | 9298154 |
| 9053 | 36900.37000.37100.37500.38200.51200.684700 | Tiles Laying | 7d | 2026-07-04 | 2026-07-10 | 9092 |  | 7 Days Work | 9298164 |
| 9054 | 36900.37000.37100.37500.38200.51200.684800 | 1st cutting/polishing of stone flooring | 7d | 2026-07-11 | 2026-07-17 | 9053 |  | 7 Days Work | 9298174 |
| 9055 | 36900.37000.37100.37500.38200.51200.684900 | Tiles/Stone skirting | 5d | 2026-07-18 | 2026-07-22 | 9054 |  | 7 Days Work | 9298184 |
| 9056 | 36900.37000.37100.37500.38200.51200.685000 | Protechtion sheet | 1d | 2026-07-23 | 2026-07-23 | 9055 |  | 7 Days Work | 9298194 |
| 9057 | 36900.37000.37100.37500.38200.51200.685100 | Installation of Temporary Door | 1d | 2026-07-24 | 2026-07-24 | 9056 |  | 7 Days Work | 9298204 |
| 9058 | 36900.37000.37100.37500.38200.51200.685200 | Fixing of window tracks | 5d | 2026-07-25 | 2026-07-29 | 9057 |  | 7 Days Work | 9298214 |
| 9059 | 36900.37000.37100.37500.38200.51200.685300 | Wire Pulling | 7d | 2026-07-30 | 2026-08-05 | 9058 |  | 7 Days Work | 9298224 |
| 9060 | 36900.37000.37100.37500.38200.51200.685400 | Gypsum Remaining | 5d | 2026-08-06 | 2026-08-10 | 9059 |  | 7 Days Work | 9298234 |
| 9061 | 36900.37000.37100.37500.38200.51200.685500 | Fixing of windoow shutter | 5d | 2026-08-11 | 2026-08-15 | 9060 |  | 7 Days Work | 9298244 |
| 9062 | 36900.37000.37100.37500.38200.51200.685600 | Putty Works - walls & ceiling | 15d | 2026-08-16 | 2026-08-30 | 9061 |  | 7 Days Work | 9298254 |
| 9063 | 36900.37000.37100.37500.38200.51200.685700 | False Ceiling- Framing | 10d | 2026-08-31 | 2026-09-09 | 9062 |  | 7 Days Work | 9298264 |
| 9064 | 36900.37000.37100.37500.38200.51200.685800 | Pre Hung Door | 3d | 2026-09-10 | 2026-09-12 | 9063 |  | 7 Days Work | 9298274 |
| 9065 | 36900.37000.37100.37500.38200.51200.685900 | Protechtion sheet | 2d | 2026-09-13 | 2026-09-14 | 9064 |  | 7 Days Work | 9298284 |
| 9066 | 36900.37000.37100.37500.38200.51200.686000 | Skirting near door | 2d | 2026-09-15 | 2026-09-16 | 9065 |  | 7 Days Work | 9298294 |
| 9067 | 36900.37000.37100.37500.38200.51200.686100 | Electrical Switch box fixing | 14d | 2026-09-17 | 2026-09-30 | 9066 |  | 7 Days Work | 9298304 |
| 9068 | 36900.37000.37100.37500.38200.51200.686200 | Fire Fighting painting | 5d | 2026-10-01 | 2026-10-05 | 9067 |  | 7 Days Work | 9298314 |
| 9069 | 36900.37000.37100.37500.38200.51200.686300 | Protection of all flooring, door & window hardware | 5d | 2026-10-06 | 2026-10-10 | 9068 |  | 7 Days Work | 9298324 |
| 9070 | 36900.37000.37100.37500.38200.51200.686400 | 1st coat primer- ceiling 1st & walls | 14d | 2026-10-11 | 2026-10-24 | 9069 |  | 7 Days Work | 9298334 |
| 9071 | 36900.37000.37100.37500.38200.51200.686500 | Wooden Flooring | 5d | 2026-10-25 | 2026-10-29 | 9070 |  | 7 Days Work | 9298344 |
| 9072 | 36900.37000.37100.37500.38200.51200.686600 | Removing of Temporary Railing & installation of Glass Railing | 5d | 2026-10-25 | 2026-10-29 | 9070 |  | 7 Days Work | 9298354 |
| 9073 | 36900.37000.37100.37500.38200.51200.686700 | Tile Grouting | 7d | 2026-10-25 | 2026-10-31 | 9070 |  | 7 Days Work | 9298364 |
| 9074 | 36900.37000.37100.37500.38200.51200.686800 | False Ceiling | 5d | 2026-11-01 | 2026-11-05 | 9073 |  | 7 Days Work | 9298374 |
| 9075 | 36900.37000.37100.37500.38200.51200.686900 | 2nd coat of primer | 10d | 2026-11-06 | 2026-11-15 | 9074 |  | 7 Days Work | 9298384 |
| 9076 | 36900.37000.37100.37500.38200.51200.687000 | Final cutting/polishing of stone flooring | 7d | 2026-11-16 | 2026-11-22 | 9075 |  | 7 Days Work | 9298394 |

| ID | WBS | Task | Duration | Start | Finish | Predecessors | Constraint | Calendar | Unique_Task_ID |
| --- | --- | --- | --- | --- | --- | --- | --- | --- | --- |
| 9077 | 36900.37000.37100.37500.38200.51200.54200 | **Toilet** | 237d | 2026-03-30 | 2026-11-21 |  | start no earlier than 2026-03-30 | 7 Days Work | 9294014 |
| 9078 | 36900.37000.37100.37500.38200.51200.54200.1014800 | Toilet_MEP Clearance -1 | 7d | 2026-03-30 | 2026-04-05 | 9041 |  | 7 Days Work | 9305644 |
| 9079 | 36900.37000.37100.37500.38200.51200.54200.1014900 | Toilet_Level Marking | 1d | 2026-04-06 | 2026-04-06 | 9078 |  | 7 Days Work | 9305654 |
| 9080 | 36900.37000.37100.37500.38200.51200.54200.1015000 | Toilet_Chasing work for Electrical conduit & concealed plumbing | 5d | 2026-04-07 | 2026-04-11 | 9079 |  | 7 Days Work | 9305664 |
| 9081 | 36900.37000.37100.37500.38200.51200.54200.1015100 | Toilet_Plumbing work 1st fix | 5d | 2026-04-12 | 2026-04-16 | 9080 |  | 7 Days Work | 9305674 |
| 9082 | 36900.37000.37100.37500.38200.51200.54200.1015200 | Toilet_Sleeve/Bore Packing | 5d | 2026-04-17 | 2026-04-21 | 9081 |  | 7 Days Work | 9305684 |
| 9083 | 36900.37000.37100.37500.38200.51200.54200.1015300 | Toilet_Waterproofing | 10d | 2026-04-22 | 2026-05-01 | 9082 |  | 7 Days Work | 9305694 |
| 9084 | 36900.37000.37100.37500.38200.51200.54200.1015400 | Toilet_Screed | 1d | 2026-05-02 | 2026-05-02 | 9083 |  | 7 Days Work | 9305704 |
| 9085 | 36900.37000.37100.37500.38200.51200.54200.1015500 | Toilet_Plumbing 2nd fix | 5d | 2026-05-03 | 2026-05-07 | 9084 |  | 7 Days Work | 9305714 |
| 9086 | 36900.37000.37100.37500.38200.51200.54200.1015600 | Toilet_Ledge wall | 5d | 2026-05-08 | 2026-05-12 | 9085 |  | 7 Days Work | 9305724 |
| 9087 | 36900.37000.37100.37500.38200.51200.54200.1015700 | Toilet_Cement Plaster | 5d | 2026-05-13 | 2026-05-17 | 9086 |  | 7 Days Work | 9305734 |
| 9088 | 36900.37000.37100.37500.38200.51200.54200.1015800 | Toilet_Door Frame | 1d | 2026-05-18 | 2026-05-18 | 9087 |  | 7 Days Work | 9305744 |
| 9089 | 36900.37000.37100.37500.38200.51200.54200.1015900 | Toilet_Wash basin & Couter | 3d | 2026-05-19 | 2026-05-21 | 9088 |  | 7 Days Work | 9305754 |
| 9090 | 36900.37000.37100.37500.38200.51200.54200.1016000 | Toilet_Wall dado | 20d | 2026-05-22 | 2026-06-10 | 9089 |  | 7 Days Work | 9305764 |
| 9091 | 36900.37000.37100.37500.38200.51200.54200.1016100 | Toilet_Granite Work-Ledge wall top | 3d | 2026-06-11 | 2026-06-13 | 9090 |  | 7 Days Work | 9305774 |
| 9092 | 36900.37000.37100.37500.38200.51200.54200.1016200 | Toilet_Floor Tilling work | 20d | 2026-06-14 | 2026-07-03 | 9091 |  | 7 Days Work | 9305784 |
| 9093 | 36900.37000.37100.37500.38200.51200.54200.1016300 | Toilet_1st row of dado | 5d | 2026-07-04 | 2026-07-08 | 9092 |  | 7 Days Work | 9305794 |
| 9094 | 36900.37000.37100.37500.38200.51200.54200.1016400 | Toilet_Window Fixing | 14d | 2026-07-09 | 2026-07-22 | 9093 |  | 7 Days Work | 9305804 |
| 9095 | 36900.37000.37100.37500.38200.51200.54200.1016500 | Toilet_Services above False ceiling | 21d | 2026-07-23 | 2026-08-12 | 9094 |  | 7 Days Work | 9305814 |
| 9096 | 36900.37000.37100.37500.38200.51200.54200.1016600 | Toilet_False Ceiling framing | 12d | 2026-08-13 | 2026-08-24 | 9095 |  | 7 Days Work | 9305824 |
| 9097 | 36900.37000.37100.37500.38200.51200.54200.1016700 | Toilet_Door Frame | 5d | 2026-08-25 | 2026-08-29 | 9096 |  | 7 Days Work | 9305834 |
| 9098 | 36900.37000.37100.37500.38200.51200.54200.1016800 | Toilet_Epoxy Tile Grouting | 7d | 2026-10-25 | 2026-10-31 | 9073SS |  | 7 Days Work | 9305844 |
| 9099 | 36900.37000.37100.37500.38200.51200.54200.1016900 | Toilet_False ceiling board fixing, CP Sanitary Fixture, Electric Fixture | 21d | 2026-11-01 | 2026-11-21 | 9098 |  | 7 Days Work | 9305854 |
| 9100 | 36900.37000.37100.37500.38200.51300 | **12th Habitable/13th Floor** | 245d | 2026-04-01 | 2026-12-01 |  | start no earlier than 2026-04-01 | 7 Days Work | 9293814 |
| 9101 | 36900.37000.37100.37500.38200.51300.687100 | Post Pour | 7d | 2026-04-01 | 2026-04-07 | 8429FS+15d |  | 7 Days Work | 9298404 |
| 9102 | 36900.37000.37100.37500.38200.51300.687200 | MEP Clearance -1 | 5d | 2026-04-08 | 2026-04-12 | 9101 |  | 7 Days Work | 9298414 |
| 9103 | 36900.37000.37100.37500.38200.51300.687300 | Benchmark | 1d | 2026-04-13 | 2026-04-13 | 9102 |  | 7 Days Work | 9298424 |
| 9104 | 36900.37000.37100.37500.38200.51300.687400 | Temporary Railing | 3d | 2026-04-14 | 2026-04-16 | 9103 |  | 7 Days Work | 9298434 |
| 9105 | 36900.37000.37100.37500.38200.51300.687500 | Blockwork | 10d | 2026-04-17 | 2026-04-26 | 9104 |  | 7 Days Work | 9298444 |
| 9106 | 36900.37000.37100.37500.38200.51300.687600 | MEP Clearance -2 | 10d | 2026-04-27 | 2026-05-06 | 9105 |  | 7 Days Work | 9298454 |
| 9107 | 36900.37000.37100.37500.38200.51300.687700 | Gypsum Plaster | 14d | 2026-05-07 | 2026-05-20 | 9106 |  | 7 Days Work | 9298464 |
| 9108 | 36900.37000.37100.37500.38200.51300.687800 | Kitchen Platform | 3d | 2026-05-21 | 2026-05-23 | 9107 |  | 7 Days Work | 9298474 |
| 9109 | 36900.37000.37100.37500.38200.51300.687900 | Kitchen dado | 7d | 2026-05-24 | 2026-05-30 | 9108 |  | 7 Days Work | 9298484 |
| 9110 | 36900.37000.37100.37500.38200.51300.688000 | Fire Fighting | 5d | 2026-05-31 | 2026-06-04 | 9109 |  | 7 Days Work | 9298494 |
| 9111 | 36900.37000.37100.37500.38200.51300.688100 | Anticapilary | 5d | 2026-06-05 | 2026-06-09 | 9110 |  | 7 Days Work | 9298504 |
| 9112 | 36900.37000.37100.37500.38200.51300.688200 | Stone Laying | 10d | 2026-07-13 | 2026-07-22 | 9152 |  | 7 Days Work | 9298514 |
| 9113 | 36900.37000.37100.37500.38200.51300.688300 | Tiles Laying | 7d | 2026-07-13 | 2026-07-19 | 9152 |  | 7 Days Work | 9298524 |
| 9114 | 36900.37000.37100.37500.38200.51300.688400 | 1st cutting/polishing of stone flooring | 7d | 2026-07-20 | 2026-07-26 | 9113 |  | 7 Days Work | 9298534 |
| 9115 | 36900.37000.37100.37500.38200.51300.688500 | Tiles/Stone skirting | 5d | 2026-07-27 | 2026-07-31 | 9114 |  | 7 Days Work | 9298544 |
| 9116 | 36900.37000.37100.37500.38200.51300.688600 | Protechtion sheet | 1d | 2026-08-01 | 2026-08-01 | 9115 |  | 7 Days Work | 9298554 |
| 9117 | 36900.37000.37100.37500.38200.51300.688700 | Installation of Temporary Door | 1d | 2026-08-02 | 2026-08-02 | 9116 |  | 7 Days Work | 9298564 |
| 9118 | 36900.37000.37100.37500.38200.51300.688800 | Fixing of window tracks | 5d | 2026-08-03 | 2026-08-07 | 9117 |  | 7 Days Work | 9298574 |
| 9119 | 36900.37000.37100.37500.38200.51300.688900 | Wire Pulling | 7d | 2026-08-08 | 2026-08-14 | 9118 |  | 7 Days Work | 9298584 |
| 9120 | 36900.37000.37100.37500.38200.51300.689000 | Gypsum Remaining | 5d | 2026-08-15 | 2026-08-19 | 9119 |  | 7 Days Work | 9298594 |
| 9121 | 36900.37000.37100.37500.38200.51300.689100 | Fixing of windoow shutter | 5d | 2026-08-20 | 2026-08-24 | 9120 |  | 7 Days Work | 9298604 |
| 9122 | 36900.37000.37100.37500.38200.51300.689200 | Putty Works - walls & ceiling | 15d | 2026-08-25 | 2026-09-08 | 9121 |  | 7 Days Work | 9298614 |
| 9123 | 36900.37000.37100.37500.38200.51300.689300 | False Ceiling- Framing | 10d | 2026-09-09 | 2026-09-18 | 9122 |  | 7 Days Work | 9298624 |
| 9124 | 36900.37000.37100.37500.38200.51300.689400 | Pre Hung Door | 3d | 2026-09-19 | 2026-09-21 | 9123 |  | 7 Days Work | 9298634 |
| 9125 | 36900.37000.37100.37500.38200.51300.689500 | Protechtion sheet | 2d | 2026-09-22 | 2026-09-23 | 9124 |  | 7 Days Work | 9298644 |
| 9126 | 36900.37000.37100.37500.38200.51300.689600 | Skirting near door | 2d | 2026-09-24 | 2026-09-25 | 9125 |  | 7 Days Work | 9298654 |
| 9127 | 36900.37000.37100.37500.38200.51300.689700 | Electrical Switch box fixing | 14d | 2026-09-26 | 2026-10-09 | 9126 |  | 7 Days Work | 9298664 |
| 9128 | 36900.37000.37100.37500.38200.51300.689800 | Fire Fighting painting | 5d | 2026-10-10 | 2026-10-14 | 9127 |  | 7 Days Work | 9298674 |
| 9129 | 36900.37000.37100.37500.38200.51300.689900 | Protection of all flooring, door & window hardware | 5d | 2026-10-15 | 2026-10-19 | 9128 |  | 7 Days Work | 9298684 |
| 9130 | 36900.37000.37100.37500.38200.51300.690000 | 1st coat primer- ceiling 1st & walls | 14d | 2026-10-20 | 2026-11-02 | 9129 |  | 7 Days Work | 9298694 |
| 9131 | 36900.37000.37100.37500.38200.51300.690100 | Wooden Flooring | 5d | 2026-11-03 | 2026-11-07 | 9130 |  | 7 Days Work | 9298704 |
| 9132 | 36900.37000.37100.37500.38200.51300.690200 | Removing of Temporary Railing & installation of Glass Railing | 5d | 2026-11-03 | 2026-11-07 | 9130 |  | 7 Days Work | 9298714 |
| 9133 | 36900.37000.37100.37500.38200.51300.690300 | Tile Grouting | 7d | 2026-11-03 | 2026-11-09 | 9130 |  | 7 Days Work | 9298724 |
| 9134 | 36900.37000.37100.37500.38200.51300.690400 | False Ceiling | 5d | 2026-11-10 | 2026-11-14 | 9133 |  | 7 Days Work | 9298734 |
| 9135 | 36900.37000.37100.37500.38200.51300.690500 | 2nd coat of primer | 10d | 2026-11-15 | 2026-11-24 | 9134 |  | 7 Days Work | 9298744 |
| 9136 | 36900.37000.37100.37500.38200.51300.690600 | Final cutting/polishing of stone flooring | 7d | 2026-11-25 | 2026-12-01 | 9135 |  | 7 Days Work | 9298754 |

| ID | WBS | Task | Duration | Start | Finish | Predecessors | Constraint | Calendar | Unique_Task_ID |
| --- | --- | --- | --- | --- | --- | --- | --- | --- | --- |
| 9137 | 36900.37000.37100.37500.38200.51300.54300 | **Toilet** | 237d | 2026-04-08 | 2026-11-30 |  | start no earlier than 2026-04-08 | 7 Days Work | 9294024 |
| 9138 | 36900.37000.37100.37500.38200.51300.54300.1017000 | Toilet_MEP Clearance -1 | 7d | 2026-04-08 | 2026-04-14 | 9101 |  | 7 Days Work | 9305864 |
| 9139 | 36900.37000.37100.37500.38200.51300.54300.1017100 | Toilet_Level Marking | 1d | 2026-04-15 | 2026-04-15 | 9138 |  | 7 Days Work | 9305874 |
| 9140 | 36900.37000.37100.37500.38200.51300.54300.1017200 | Toilet_Chasing work for Electrical conduit & concealed plumbing | 5d | 2026-04-16 | 2026-04-20 | 9139 |  | 7 Days Work | 9305884 |
| 9141 | 36900.37000.37100.37500.38200.51300.54300.1017300 | Toilet_Plumbing work 1st fix | 5d | 2026-04-21 | 2026-04-25 | 9140 |  | 7 Days Work | 9305894 |
| 9142 | 36900.37000.37100.37500.38200.51300.54300.1017400 | Toilet_Sleeve/Bore Packing | 5d | 2026-04-26 | 2026-04-30 | 9141 |  | 7 Days Work | 9305904 |
| 9143 | 36900.37000.37100.37500.38200.51300.54300.1017500 | Toilet_Waterproofing | 10d | 2026-05-01 | 2026-05-10 | 9142 |  | 7 Days Work | 9305914 |
| 9144 | 36900.37000.37100.37500.38200.51300.54300.1017600 | Toilet_Screed | 1d | 2026-05-11 | 2026-05-11 | 9143 |  | 7 Days Work | 9305924 |
| 9145 | 36900.37000.37100.37500.38200.51300.54300.1017700 | Toilet_Plumbing 2nd fix | 5d | 2026-05-12 | 2026-05-16 | 9144 |  | 7 Days Work | 9305934 |
| 9146 | 36900.37000.37100.37500.38200.51300.54300.1017800 | Toilet_Ledge wall | 5d | 2026-05-17 | 2026-05-21 | 9145 |  | 7 Days Work | 9305944 |
| 9147 | 36900.37000.37100.37500.38200.51300.54300.1017900 | Toilet_Cement Plaster | 5d | 2026-05-22 | 2026-05-26 | 9146 |  | 7 Days Work | 9305954 |
| 9148 | 36900.37000.37100.37500.38200.51300.54300.1018000 | Toilet_Door Frame | 1d | 2026-05-27 | 2026-05-27 | 9147 |  | 7 Days Work | 9305964 |
| 9149 | 36900.37000.37100.37500.38200.51300.54300.1018100 | Toilet_Wash basin & Couter | 3d | 2026-05-28 | 2026-05-30 | 9148 |  | 7 Days Work | 9305974 |
| 9150 | 36900.37000.37100.37500.38200.51300.54300.1018200 | Toilet_Wall dado | 20d | 2026-05-31 | 2026-06-19 | 9149 |  | 7 Days Work | 9305984 |
| 9151 | 36900.37000.37100.37500.38200.51300.54300.1018300 | Toilet_Granite Work-Ledge wall top | 3d | 2026-06-20 | 2026-06-22 | 9150 |  | 7 Days Work | 9305994 |
| 9152 | 36900.37000.37100.37500.38200.51300.54300.1018400 | Toilet_Floor Tilling work | 20d | 2026-06-23 | 2026-07-12 | 9151 |  | 7 Days Work | 9306004 |
| 9153 | 36900.37000.37100.37500.38200.51300.54300.1018500 | Toilet_1st row of dado | 5d | 2026-07-13 | 2026-07-17 | 9152 |  | 7 Days Work | 9306014 |
| 9154 | 36900.37000.37100.37500.38200.51300.54300.1018600 | Toilet_Window Fixing | 14d | 2026-07-18 | 2026-07-31 | 9153 |  | 7 Days Work | 9306024 |
| 9155 | 36900.37000.37100.37500.38200.51300.54300.1018700 | Toilet_Services above False ceiling | 21d | 2026-08-01 | 2026-08-21 | 9154 |  | 7 Days Work | 9306034 |
| 9156 | 36900.37000.37100.37500.38200.51300.54300.1018800 | Toilet_False Ceiling framing | 12d | 2026-08-22 | 2026-09-02 | 9155 |  | 7 Days Work | 9306044 |
| 9157 | 36900.37000.37100.37500.38200.51300.54300.1018900 | Toilet_Door Frame | 5d | 2026-09-03 | 2026-09-07 | 9156 |  | 7 Days Work | 9306054 |
| 9158 | 36900.37000.37100.37500.38200.51300.54300.1019000 | Toilet_Epoxy Tile Grouting | 7d | 2026-11-03 | 2026-11-09 | 9133SS |  | 7 Days Work | 9306064 |
| 9159 | 36900.37000.37100.37500.38200.51300.54300.1019100 | Toilet_False ceiling board fixing, CP Sanitary Fixture, Electric Fixture | 21d | 2026-11-10 | 2026-11-30 | 9158 |  | 7 Days Work | 9306074 |
| 9160 | 36900.37000.37100.37500.38200.51400 | **13th Habitable/14th Floor** | 622d | 2025-04-01 | 2026-12-13 |  | start no earlier than 2025-04-01 | 7 Days Work | 9293824 |
| 9161 | 36900.37000.37100.37500.38200.51400.690700 | Post Pour | 7d | 2026-04-13 | 2026-04-19 | 8430FS+15d |  | 7 Days Work | 9298764 |
| 9162 | 36900.37000.37100.37500.38200.51400.690800 | MEP Clearance -1 | 5d | 2026-04-20 | 2026-04-24 | 9161 |  | 7 Days Work | 9298774 |
| 9163 | 36900.37000.37100.37500.38200.51400.690900 | Benchmark | 1d | 2026-04-25 | 2026-04-25 | 9162 |  | 7 Days Work | 9298784 |
| 9164 | 36900.37000.37100.37500.38200.51400.691000 | Temporary Railing | 3d | 2026-04-26 | 2026-04-28 | 9163 |  | 7 Days Work | 9298794 |
| 9165 | 36900.37000.37100.37500.38200.51400.691100 | Blockwork | 5d | 2025-04-01 | 2025-04-05 |  | start no earlier than 2025-04-01 | 7 Days Work | 9298445 |
| 9166 | 36900.37000.37100.37500.38200.51400.691200 | Blockwork | 10d | 2026-04-29 | 2026-05-08 | 9164, 9165 |  | 7 Days Work | 9298804 |
| 9167 | 36900.37000.37100.37500.38200.51400.691300 | MEP Clearance -2 | 10d | 2026-05-09 | 2026-05-18 | 9166 |  | 7 Days Work | 9298814 |
| 9168 | 36900.37000.37100.37500.38200.51400.691400 | Gypsum Plaster | 14d | 2026-05-19 | 2026-06-01 | 9167 |  | 7 Days Work | 9298824 |
| 9169 | 36900.37000.37100.37500.38200.51400.691500 | Kitchen Platform | 3d | 2026-06-02 | 2026-06-04 | 9168 |  | 7 Days Work | 9298834 |
| 9170 | 36900.37000.37100.37500.38200.51400.691600 | Kitchen dado | 7d | 2026-06-05 | 2026-06-11 | 9169 |  | 7 Days Work | 9298844 |
| 9171 | 36900.37000.37100.37500.38200.51400.691700 | Fire Fighting | 5d | 2026-06-12 | 2026-06-16 | 9170 |  | 7 Days Work | 9298854 |
| 9172 | 36900.37000.37100.37500.38200.51400.691800 | Anticapilary | 5d | 2026-06-17 | 2026-06-21 | 9171 |  | 7 Days Work | 9298864 |
| 9173 | 36900.37000.37100.37500.38200.51400.691900 | Stone Laying | 10d | 2026-07-25 | 2026-08-03 | 9213 |  | 7 Days Work | 9298874 |
| 9174 | 36900.37000.37100.37500.38200.51400.692000 | Tiles Laying | 7d | 2026-07-25 | 2026-07-31 | 9213 |  | 7 Days Work | 9298884 |
| 9175 | 36900.37000.37100.37500.38200.51400.692100 | 1st cutting/polishing of stone flooring | 7d | 2026-08-01 | 2026-08-07 | 9174 |  | 7 Days Work | 9298894 |
| 9176 | 36900.37000.37100.37500.38200.51400.692200 | Tiles/Stone skirting | 5d | 2026-08-08 | 2026-08-12 | 9175 |  | 7 Days Work | 9298904 |
| 9177 | 36900.37000.37100.37500.38200.51400.692300 | Protechtion sheet | 1d | 2026-08-13 | 2026-08-13 | 9176 |  | 7 Days Work | 9298914 |
| 9178 | 36900.37000.37100.37500.38200.51400.692400 | Installation of Temporary Door | 1d | 2026-08-14 | 2026-08-14 | 9177 |  | 7 Days Work | 9298924 |
| 9179 | 36900.37000.37100.37500.38200.51400.692500 | Fixing of window tracks | 5d | 2026-08-15 | 2026-08-19 | 9178 |  | 7 Days Work | 9298934 |
| 9180 | 36900.37000.37100.37500.38200.51400.692600 | Wire Pulling | 7d | 2026-08-20 | 2026-08-26 | 9179 |  | 7 Days Work | 9298944 |
| 9181 | 36900.37000.37100.37500.38200.51400.692700 | Gypsum Remaining | 5d | 2026-08-27 | 2026-08-31 | 9180 |  | 7 Days Work | 9298954 |
| 9182 | 36900.37000.37100.37500.38200.51400.692800 | Fixing of windoow shutter | 5d | 2026-09-01 | 2026-09-05 | 9181 |  | 7 Days Work | 9298964 |
| 9183 | 36900.37000.37100.37500.38200.51400.692900 | Putty Works - walls & ceiling | 15d | 2026-09-06 | 2026-09-20 | 9182 |  | 7 Days Work | 9298974 |
| 9184 | 36900.37000.37100.37500.38200.51400.693000 | False Ceiling- Framing | 10d | 2026-09-21 | 2026-09-30 | 9183 |  | 7 Days Work | 9298984 |
| 9185 | 36900.37000.37100.37500.38200.51400.693100 | Pre Hung Door | 3d | 2026-10-01 | 2026-10-03 | 9184 |  | 7 Days Work | 9298994 |
| 9186 | 36900.37000.37100.37500.38200.51400.693200 | Protechtion sheet | 2d | 2026-10-04 | 2026-10-05 | 9185 |  | 7 Days Work | 9299004 |
| 9187 | 36900.37000.37100.37500.38200.51400.693300 | Skirting near door | 2d | 2026-10-06 | 2026-10-07 | 9186 |  | 7 Days Work | 9299014 |
| 9188 | 36900.37000.37100.37500.38200.51400.693400 | Electrical Switch box fixing | 14d | 2026-10-08 | 2026-10-21 | 9187 |  | 7 Days Work | 9299024 |
| 9189 | 36900.37000.37100.37500.38200.51400.693500 | Fire Fighting painting | 5d | 2026-10-22 | 2026-10-26 | 9188 |  | 7 Days Work | 9299034 |
| 9190 | 36900.37000.37100.37500.38200.51400.693600 | Protection of all flooring, door & window hardware | 5d | 2026-10-27 | 2026-10-31 | 9189 |  | 7 Days Work | 9299044 |
| 9191 | 36900.37000.37100.37500.38200.51400.693700 | 1st coat primer- ceiling 1st & walls | 14d | 2026-11-01 | 2026-11-14 | 9190 |  | 7 Days Work | 9299054 |
| 9192 | 36900.37000.37100.37500.38200.51400.693800 | Wooden Flooring | 5d | 2026-11-15 | 2026-11-19 | 9191 |  | 7 Days Work | 9299064 |
| 9193 | 36900.37000.37100.37500.38200.51400.693900 | Removing of Temporary Railing & installation of Glass Railing | 5d | 2026-11-15 | 2026-11-19 | 9191 |  | 7 Days Work | 9299074 |
| 9194 | 36900.37000.37100.37500.38200.51400.694000 | Tile Grouting | 7d | 2026-11-15 | 2026-11-21 | 9191 |  | 7 Days Work | 9299084 |
| 9195 | 36900.37000.37100.37500.38200.51400.694100 | False Ceiling | 5d | 2026-11-22 | 2026-11-26 | 9194 |  | 7 Days Work | 9299094 |
| 9196 | 36900.37000.37100.37500.38200.51400.694200 | 2nd coat of primer | 10d | 2026-11-27 | 2026-12-06 | 9195 |  | 7 Days Work | 9299104 |
| 9197 | 36900.37000.37100.37500.38200.51400.694300 | Final cutting/polishing of stone flooring | 7d | 2026-12-07 | 2026-12-13 | 9196 |  | 7 Days Work | 9299114 |

| ID | WBS | Task | Duration | Start | Finish | Predecessors | Constraint | Calendar | Unique_Task_ID |
| --- | --- | --- | --- | --- | --- | --- | --- | --- | --- |
| 9198 | 36900.37000.37100.37500.38200.51400.54400 | **Toilet** | 237d | 2026-04-20 | 2026-12-12 |  | start no earlier than 2026-04-20 | 7 Days Work | 9294034 |
| 9199 | 36900.37000.37100.37500.38200.51400.54400.1019200 | Toilet_MEP Clearance -1 | 7d | 2026-04-20 | 2026-04-26 | 9161 |  | 7 Days Work | 9306084 |
| 9200 | 36900.37000.37100.37500.38200.51400.54400.1019300 | Toilet_Level Marking | 1d | 2026-04-27 | 2026-04-27 | 9199 |  | 7 Days Work | 9306094 |
| 9201 | 36900.37000.37100.37500.38200.51400.54400.1019400 | Toilet_Chasing work for Electrical conduit & concealed plumbing | 5d | 2026-04-28 | 2026-05-02 | 9200 |  | 7 Days Work | 9306104 |
| 9202 | 36900.37000.37100.37500.38200.51400.54400.1019500 | Toilet_Plumbing work 1st fix | 5d | 2026-05-03 | 2026-05-07 | 9201 |  | 7 Days Work | 9306114 |
| 9203 | 36900.37000.37100.37500.38200.51400.54400.1019600 | Toilet_Sleeve/Bore Packing | 5d | 2026-05-08 | 2026-05-12 | 9202 |  | 7 Days Work | 9306124 |
| 9204 | 36900.37000.37100.37500.38200.51400.54400.1019700 | Toilet_Waterproofing | 10d | 2026-05-13 | 2026-05-22 | 9203 |  | 7 Days Work | 9306134 |
| 9205 | 36900.37000.37100.37500.38200.51400.54400.1019800 | Toilet_Screed | 1d | 2026-05-23 | 2026-05-23 | 9204 |  | 7 Days Work | 9306144 |
| 9206 | 36900.37000.37100.37500.38200.51400.54400.1019900 | Toilet_Plumbing 2nd fix | 5d | 2026-05-24 | 2026-05-28 | 9205 |  | 7 Days Work | 9306154 |
| 9207 | 36900.37000.37100.37500.38200.51400.54400.1020000 | Toilet_Ledge wall | 5d | 2026-05-29 | 2026-06-02 | 9206 |  | 7 Days Work | 9306164 |
| 9208 | 36900.37000.37100.37500.38200.51400.54400.1020100 | Toilet_Cement Plaster | 5d | 2026-06-03 | 2026-06-07 | 9207 |  | 7 Days Work | 9306174 |
| 9209 | 36900.37000.37100.37500.38200.51400.54400.1020200 | Toilet_Door Frame | 1d | 2026-06-08 | 2026-06-08 | 9208 |  | 7 Days Work | 9306184 |
| 9210 | 36900.37000.37100.37500.38200.51400.54400.1020300 | Toilet_Wash basin & Couter | 3d | 2026-06-09 | 2026-06-11 | 9209 |  | 7 Days Work | 9306194 |
| 9211 | 36900.37000.37100.37500.38200.51400.54400.1020400 | Toilet_Wall dado | 20d | 2026-06-12 | 2026-07-01 | 9210 |  | 7 Days Work | 9306204 |
| 9212 | 36900.37000.37100.37500.38200.51400.54400.1020500 | Toilet_Granite Work-Ledge wall top | 3d | 2026-07-02 | 2026-07-04 | 9211 |  | 7 Days Work | 9306214 |
| 9213 | 36900.37000.37100.37500.38200.51400.54400.1020600 | Toilet_Floor Tilling work | 20d | 2026-07-05 | 2026-07-24 | 9212 |  | 7 Days Work | 9306224 |
| 9214 | 36900.37000.37100.37500.38200.51400.54400.1020700 | Toilet_1st row of dado | 5d | 2026-07-25 | 2026-07-29 | 9213 |  | 7 Days Work | 9306234 |
| 9215 | 36900.37000.37100.37500.38200.51400.54400.1020800 | Toilet_Window Fixing | 14d | 2026-07-30 | 2026-08-12 | 9214 |  | 7 Days Work | 9306244 |
| 9216 | 36900.37000.37100.37500.38200.51400.54400.1020900 | Toilet_Services above False ceiling | 21d | 2026-08-13 | 2026-09-02 | 9215 |  | 7 Days Work | 9306254 |
| 9217 | 36900.37000.37100.37500.38200.51400.54400.1021000 | Toilet_False Ceiling framing | 12d | 2026-09-03 | 2026-09-14 | 9216 |  | 7 Days Work | 9306264 |
| 9218 | 36900.37000.37100.37500.38200.51400.54400.1021100 | Toilet_Door Frame | 5d | 2026-09-15 | 2026-09-19 | 9217 |  | 7 Days Work | 9306274 |
| 9219 | 36900.37000.37100.37500.38200.51400.54400.1021200 | Toilet_Epoxy Tile Grouting | 7d | 2026-11-15 | 2026-11-21 | 9194SS |  | 7 Days Work | 9306284 |
| 9220 | 36900.37000.37100.37500.38200.51400.54400.1021300 | Toilet_False ceiling board fixing, CP Sanitary Fixture, Electric Fixture | 21d | 2026-11-22 | 2026-12-12 | 9219 |  | 7 Days Work | 9306294 |
| 9221 | 36900.37000.37100.37500.38200.51500 | **14th Habitable/15th Floor** | 245d | 2026-04-22 | 2026-12-22 |  | start no earlier than 2026-04-22 | 7 Days Work | 9293834 |
| 9222 | 36900.37000.37100.37500.38200.51500.694400 | Post Pour | 7d | 2026-04-22 | 2026-04-28 | 8431FS+15d |  | 7 Days Work | 9299124 |
| 9223 | 36900.37000.37100.37500.38200.51500.694500 | MEP Clearance -1 | 5d | 2026-04-29 | 2026-05-03 | 9222 |  | 7 Days Work | 9299134 |
| 9224 | 36900.37000.37100.37500.38200.51500.694600 | Benchmark | 1d | 2026-05-04 | 2026-05-04 | 9223 |  | 7 Days Work | 9299144 |
| 9225 | 36900.37000.37100.37500.38200.51500.694700 | Temporary Railing | 3d | 2026-05-05 | 2026-05-07 | 9224 |  | 7 Days Work | 9299154 |
| 9226 | 36900.37000.37100.37500.38200.51500.694800 | Blockwork | 10d | 2026-05-08 | 2026-05-17 | 9225 |  | 7 Days Work | 9299164 |
| 9227 | 36900.37000.37100.37500.38200.51500.694900 | MEP Clearance -2 | 10d | 2026-05-18 | 2026-05-27 | 9226 |  | 7 Days Work | 9299174 |
| 9228 | 36900.37000.37100.37500.38200.51500.695000 | Gypsum Plaster | 14d | 2026-05-28 | 2026-06-10 | 9227 |  | 7 Days Work | 9299184 |
| 9229 | 36900.37000.37100.37500.38200.51500.695100 | Kitchen Platform | 3d | 2026-06-11 | 2026-06-13 | 9228 |  | 7 Days Work | 9299194 |
| 9230 | 36900.37000.37100.37500.38200.51500.695200 | Kitchen dado | 7d | 2026-06-14 | 2026-06-20 | 9229 |  | 7 Days Work | 9299204 |
| 9231 | 36900.37000.37100.37500.38200.51500.695300 | Fire Fighting | 5d | 2026-06-21 | 2026-06-25 | 9230 |  | 7 Days Work | 9299214 |
| 9232 | 36900.37000.37100.37500.38200.51500.695400 | Anticapilary | 5d | 2026-06-26 | 2026-06-30 | 9231 |  | 7 Days Work | 9299224 |
| 9233 | 36900.37000.37100.37500.38200.51500.695500 | Stone Laying | 10d | 2026-08-03 | 2026-08-12 | 9273 |  | 7 Days Work | 9299234 |
| 9234 | 36900.37000.37100.37500.38200.51500.695600 | Tiles Laying | 7d | 2026-08-03 | 2026-08-09 | 9273 |  | 7 Days Work | 9299244 |
| 9235 | 36900.37000.37100.37500.38200.51500.695700 | 1st cutting/polishing of stone flooring | 7d | 2026-08-10 | 2026-08-16 | 9234 |  | 7 Days Work | 9299254 |
| 9236 | 36900.37000.37100.37500.38200.51500.695800 | Tiles/Stone skirting | 5d | 2026-08-17 | 2026-08-21 | 9235 |  | 7 Days Work | 9299264 |
| 9237 | 36900.37000.37100.37500.38200.51500.695900 | Protechtion sheet | 1d | 2026-08-22 | 2026-08-22 | 9236 |  | 7 Days Work | 9299274 |
| 9238 | 36900.37000.37100.37500.38200.51500.696000 | Installation of Temporary Door | 1d | 2026-08-23 | 2026-08-23 | 9237 |  | 7 Days Work | 9299284 |
| 9239 | 36900.37000.37100.37500.38200.51500.696100 | Fixing of window tracks | 5d | 2026-08-24 | 2026-08-28 | 9238 |  | 7 Days Work | 9299294 |
| 9240 | 36900.37000.37100.37500.38200.51500.696200 | Wire Pulling | 7d | 2026-08-29 | 2026-09-04 | 9239 |  | 7 Days Work | 9299304 |
| 9241 | 36900.37000.37100.37500.38200.51500.696300 | Gypsum Remaining | 5d | 2026-09-05 | 2026-09-09 | 9240 |  | 7 Days Work | 9299314 |
| 9242 | 36900.37000.37100.37500.38200.51500.696400 | Fixing of windoow shutter | 5d | 2026-09-10 | 2026-09-14 | 9241 |  | 7 Days Work | 9299324 |
| 9243 | 36900.37000.37100.37500.38200.51500.696500 | Putty Works - walls & ceiling | 15d | 2026-09-15 | 2026-09-29 | 9242 |  | 7 Days Work | 9299334 |
| 9244 | 36900.37000.37100.37500.38200.51500.696600 | False Ceiling- Framing | 10d | 2026-09-30 | 2026-10-09 | 9243 |  | 7 Days Work | 9299344 |
| 9245 | 36900.37000.37100.37500.38200.51500.696700 | Pre Hung Door | 3d | 2026-10-10 | 2026-10-12 | 9244 |  | 7 Days Work | 9299354 |
| 9246 | 36900.37000.37100.37500.38200.51500.696800 | Protechtion sheet | 2d | 2026-10-13 | 2026-10-14 | 9245 |  | 7 Days Work | 9299364 |
| 9247 | 36900.37000.37100.37500.38200.51500.696900 | Skirting near door | 2d | 2026-10-15 | 2026-10-16 | 9246 |  | 7 Days Work | 9299374 |
| 9248 | 36900.37000.37100.37500.38200.51500.697000 | Electrical Switch box fixing | 14d | 2026-10-17 | 2026-10-30 | 9247 |  | 7 Days Work | 9299384 |
| 9249 | 36900.37000.37100.37500.38200.51500.697100 | Fire Fighting painting | 5d | 2026-10-31 | 2026-11-04 | 9248 |  | 7 Days Work | 9299394 |
| 9250 | 36900.37000.37100.37500.38200.51500.697200 | Protection of all flooring, door & window hardware | 5d | 2026-11-05 | 2026-11-09 | 9249 |  | 7 Days Work | 9299404 |
| 9251 | 36900.37000.37100.37500.38200.51500.697300 | 1st coat primer- ceiling 1st & walls | 14d | 2026-11-10 | 2026-11-23 | 9250 |  | 7 Days Work | 9299414 |
| 9252 | 36900.37000.37100.37500.38200.51500.697400 | Wooden Flooring | 5d | 2026-11-24 | 2026-11-28 | 9251 |  | 7 Days Work | 9299424 |
| 9253 | 36900.37000.37100.37500.38200.51500.697500 | Removing of Temporary Railing & installation of Glass Railing | 5d | 2026-11-24 | 2026-11-28 | 9251 |  | 7 Days Work | 9299434 |
| 9254 | 36900.37000.37100.37500.38200.51500.697600 | Tile Grouting | 7d | 2026-11-24 | 2026-11-30 | 9251 |  | 7 Days Work | 9299444 |
| 9255 | 36900.37000.37100.37500.38200.51500.697700 | False Ceiling | 5d | 2026-12-01 | 2026-12-05 | 9254 |  | 7 Days Work | 9299454 |
| 9256 | 36900.37000.37100.37500.38200.51500.697800 | 2nd coat of primer | 10d | 2026-12-06 | 2026-12-15 | 9255 |  | 7 Days Work | 9299464 |
| 9257 | 36900.37000.37100.37500.38200.51500.697900 | Final cutting/polishing of stone flooring | 7d | 2026-12-16 | 2026-12-22 | 9256 |  | 7 Days Work | 9299474 |

| ID | WBS | Task | Duration | Start | Finish | Predecessors | Constraint | Calendar | Unique_Task_ID |
| --- | --- | --- | --- | --- | --- | --- | --- | --- | --- |
| 9258 | 36900.37000.37100.37500.38200.51500.55600 | **Toilet** | 237d | 2026-04-29 | 2026-12-21 |  | start no earlier than 2026-04-29 | 7 Days Work | 9294044 |
| 9259 | 36900.37000.37100.37500.38200.51500.55600.1021400 | Toilet_MEP Clearance -1 | 7d | 2026-04-29 | 2026-05-05 | 9222 |  | 7 Days Work | 9306304 |
| 9260 | 36900.37000.37100.37500.38200.51500.55600.1021500 | Toilet_Level Marking | 1d | 2026-05-06 | 2026-05-06 | 9259 |  | 7 Days Work | 9306314 |
| 9261 | 36900.37000.37100.37500.38200.51500.55600.1021600 | Toilet_Chasing work for Electrical conduit & concealed plumbing | 5d | 2026-05-07 | 2026-05-11 | 9260 |  | 7 Days Work | 9306324 |
| 9262 | 36900.37000.37100.37500.38200.51500.55600.1021700 | Toilet_Plumbing work 1st fix | 5d | 2026-05-12 | 2026-05-16 | 9261 |  | 7 Days Work | 9306334 |
| 9263 | 36900.37000.37100.37500.38200.51500.55600.1021800 | Toilet_Sleeve/Bore Packing | 5d | 2026-05-17 | 2026-05-21 | 9262 |  | 7 Days Work | 9306344 |
| 9264 | 36900.37000.37100.37500.38200.51500.55600.1021900 | Toilet_Waterproofing | 10d | 2026-05-22 | 2026-05-31 | 9263 |  | 7 Days Work | 9306354 |
| 9265 | 36900.37000.37100.37500.38200.51500.55600.1022000 | Toilet_Screed | 1d | 2026-06-01 | 2026-06-01 | 9264 |  | 7 Days Work | 9306364 |
| 9266 | 36900.37000.37100.37500.38200.51500.55600.1022100 | Toilet_Plumbing 2nd fix | 5d | 2026-06-02 | 2026-06-06 | 9265 |  | 7 Days Work | 9306374 |
| 9267 | 36900.37000.37100.37500.38200.51500.55600.1022200 | Toilet_Ledge wall | 5d | 2026-06-07 | 2026-06-11 | 9266 |  | 7 Days Work | 9306384 |
| 9268 | 36900.37000.37100.37500.38200.51500.55600.1022300 | Toilet_Cement Plaster | 5d | 2026-06-12 | 2026-06-16 | 9267 |  | 7 Days Work | 9306394 |
| 9269 | 36900.37000.37100.37500.38200.51500.55600.1022400 | Toilet_Door Frame | 1d | 2026-06-17 | 2026-06-17 | 9268 |  | 7 Days Work | 9306404 |
| 9270 | 36900.37000.37100.37500.38200.51500.55600.1022500 | Toilet_Wash basin & Couter | 3d | 2026-06-18 | 2026-06-20 | 9269 |  | 7 Days Work | 9306414 |
| 9271 | 36900.37000.37100.37500.38200.51500.55600.1022600 | Toilet_Wall dado | 20d | 2026-06-21 | 2026-07-10 | 9270 |  | 7 Days Work | 9306424 |
| 9272 | 36900.37000.37100.37500.38200.51500.55600.1022700 | Toilet_Granite Work-Ledge wall top | 3d | 2026-07-11 | 2026-07-13 | 9271 |  | 7 Days Work | 9306434 |
| 9273 | 36900.37000.37100.37500.38200.51500.55600.1022800 | Toilet_Floor Tilling work | 20d | 2026-07-14 | 2026-08-02 | 9272 |  | 7 Days Work | 9306444 |
| 9274 | 36900.37000.37100.37500.38200.51500.55600.1022900 | Toilet_1st row of dado | 5d | 2026-08-03 | 2026-08-07 | 9273 |  | 7 Days Work | 9306454 |
| 9275 | 36900.37000.37100.37500.38200.51500.55600.1023000 | Toilet_Window Fixing | 14d | 2026-08-08 | 2026-08-21 | 9274 |  | 7 Days Work | 9306464 |
| 9276 | 36900.37000.37100.37500.38200.51500.55600.1023100 | Toilet_Services above False ceiling | 21d | 2026-08-22 | 2026-09-11 | 9275 |  | 7 Days Work | 9306474 |
| 9277 | 36900.37000.37100.37500.38200.51500.55600.1023200 | Toilet_False Ceiling framing | 12d | 2026-09-12 | 2026-09-23 | 9276 |  | 7 Days Work | 9306484 |
| 9278 | 36900.37000.37100.37500.38200.51500.55600.1023300 | Toilet_Door Frame | 5d | 2026-09-24 | 2026-09-28 | 9277 |  | 7 Days Work | 9306494 |
| 9279 | 36900.37000.37100.37500.38200.51500.55600.1023400 | Toilet_Epoxy Tile Grouting | 7d | 2026-11-24 | 2026-11-30 | 9254SS |  | 7 Days Work | 9306504 |
| 9280 | 36900.37000.37100.37500.38200.51500.55600.1023500 | Toilet_False ceiling board fixing, CP Sanitary Fixture, Electric Fixture | 21d | 2026-12-01 | 2026-12-21 | 9279 |  | 7 Days Work | 9306514 |
| 9281 | 36900.37000.37100.37500.38200.51600 | **15th Habitable/16th Floor** | 245d | 2026-05-01 | 2026-12-31 |  | start no earlier than 2026-05-01 | 7 Days Work | 9293844 |
| 9282 | 36900.37000.37100.37500.38200.51600.698000 | Post Pour | 7d | 2026-05-01 | 2026-05-07 | 8432FS+15d |  | 7 Days Work | 9299484 |
| 9283 | 36900.37000.37100.37500.38200.51600.698100 | MEP Clearance -1 | 5d | 2026-05-08 | 2026-05-12 | 9282 |  | 7 Days Work | 9299494 |
| 9284 | 36900.37000.37100.37500.38200.51600.698200 | Benchmark | 1d | 2026-05-13 | 2026-05-13 | 9283 |  | 7 Days Work | 9299504 |
| 9285 | 36900.37000.37100.37500.38200.51600.698300 | Temporary Railing | 3d | 2026-05-14 | 2026-05-16 | 9284 |  | 7 Days Work | 9299514 |
| 9286 | 36900.37000.37100.37500.38200.51600.698400 | Blockwork | 10d | 2026-05-17 | 2026-05-26 | 9285 |  | 7 Days Work | 9299524 |
| 9287 | 36900.37000.37100.37500.38200.51600.698500 | MEP Clearance -2 | 10d | 2026-05-27 | 2026-06-05 | 9286 |  | 7 Days Work | 9299534 |
| 9288 | 36900.37000.37100.37500.38200.51600.698600 | Gypsum Plaster | 14d | 2026-06-06 | 2026-06-19 | 9287 |  | 7 Days Work | 9299544 |
| 9289 | 36900.37000.37100.37500.38200.51600.698700 | Kitchen Platform | 3d | 2026-06-20 | 2026-06-22 | 9288 |  | 7 Days Work | 9299554 |
| 9290 | 36900.37000.37100.37500.38200.51600.698800 | Kitchen dado | 7d | 2026-06-23 | 2026-06-29 | 9289 |  | 7 Days Work | 9299564 |
| 9291 | 36900.37000.37100.37500.38200.51600.698900 | Fire Fighting | 5d | 2026-06-30 | 2026-07-04 | 9290 |  | 7 Days Work | 9299574 |
| 9292 | 36900.37000.37100.37500.38200.51600.699000 | Anticapilary | 5d | 2026-07-05 | 2026-07-09 | 9291 |  | 7 Days Work | 9299584 |
| 9293 | 36900.37000.37100.37500.38200.51600.699100 | Stone Laying | 10d | 2026-08-12 | 2026-08-21 | 9333 |  | 7 Days Work | 9299594 |
| 9294 | 36900.37000.37100.37500.38200.51600.699200 | Tiles Laying | 7d | 2026-08-12 | 2026-08-18 | 9333 |  | 7 Days Work | 9299604 |
| 9295 | 36900.37000.37100.37500.38200.51600.699300 | 1st cutting/polishing of stone flooring | 7d | 2026-08-19 | 2026-08-25 | 9294 |  | 7 Days Work | 9299614 |
| 9296 | 36900.37000.37100.37500.38200.51600.699400 | Tiles/Stone skirting | 5d | 2026-08-26 | 2026-08-30 | 9295 |  | 7 Days Work | 9299624 |
| 9297 | 36900.37000.37100.37500.38200.51600.699500 | Protechtion sheet | 1d | 2026-08-31 | 2026-08-31 | 9296 |  | 7 Days Work | 9299634 |
| 9298 | 36900.37000.37100.37500.38200.51600.699600 | Installation of Temporary Door | 1d | 2026-09-01 | 2026-09-01 | 9297 |  | 7 Days Work | 9299644 |
| 9299 | 36900.37000.37100.37500.38200.51600.699700 | Fixing of window tracks | 5d | 2026-09-02 | 2026-09-06 | 9298 |  | 7 Days Work | 9299654 |
| 9300 | 36900.37000.37100.37500.38200.51600.699800 | Wire Pulling | 7d | 2026-09-07 | 2026-09-13 | 9299 |  | 7 Days Work | 9299664 |
| 9301 | 36900.37000.37100.37500.38200.51600.699900 | Gypsum Remaining | 5d | 2026-09-14 | 2026-09-18 | 9300 |  | 7 Days Work | 9299674 |
| 9302 | 36900.37000.37100.37500.38200.51600.700000 | Fixing of windoow shutter | 5d | 2026-09-19 | 2026-09-23 | 9301 |  | 7 Days Work | 9299684 |
| 9303 | 36900.37000.37100.37500.38200.51600.700100 | Putty Works - walls & ceiling | 15d | 2026-09-24 | 2026-10-08 | 9302 |  | 7 Days Work | 9299694 |
| 9304 | 36900.37000.37100.37500.38200.51600.700200 | False Ceiling- Framing | 10d | 2026-10-09 | 2026-10-18 | 9303 |  | 7 Days Work | 9299704 |
| 9305 | 36900.37000.37100.37500.38200.51600.700300 | Pre Hung Door | 3d | 2026-10-19 | 2026-10-21 | 9304 |  | 7 Days Work | 9299714 |
| 9306 | 36900.37000.37100.37500.38200.51600.700400 | Protechtion sheet | 2d | 2026-10-22 | 2026-10-23 | 9305 |  | 7 Days Work | 9299724 |
| 9307 | 36900.37000.37100.37500.38200.51600.700500 | Skirting near door | 2d | 2026-10-24 | 2026-10-25 | 9306 |  | 7 Days Work | 9299734 |
| 9308 | 36900.37000.37100.37500.38200.51600.700600 | Electrical Switch box fixing | 14d | 2026-10-26 | 2026-11-08 | 9307 |  | 7 Days Work | 9299744 |
| 9309 | 36900.37000.37100.37500.38200.51600.700700 | Fire Fighting painting | 5d | 2026-11-09 | 2026-11-13 | 9308 |  | 7 Days Work | 9299754 |
| 9310 | 36900.37000.37100.37500.38200.51600.700800 | Protection of all flooring, door & window hardware | 5d | 2026-11-14 | 2026-11-18 | 9309 |  | 7 Days Work | 9299764 |
| 9311 | 36900.37000.37100.37500.38200.51600.700900 | 1st coat primer- ceiling 1st & walls | 14d | 2026-11-19 | 2026-12-02 | 9310 |  | 7 Days Work | 9299774 |
| 9312 | 36900.37000.37100.37500.38200.51600.701000 | Wooden Flooring | 5d | 2026-12-03 | 2026-12-07 | 9311 |  | 7 Days Work | 9299784 |
| 9313 | 36900.37000.37100.37500.38200.51600.701100 | Removing of Temporary Railing & installation of Glass Railing | 5d | 2026-12-03 | 2026-12-07 | 9311 |  | 7 Days Work | 9299794 |
| 9314 | 36900.37000.37100.37500.38200.51600.701200 | Tile Grouting | 7d | 2026-12-03 | 2026-12-09 | 9311 |  | 7 Days Work | 9299804 |
| 9315 | 36900.37000.37100.37500.38200.51600.701300 | False Ceiling | 5d | 2026-12-10 | 2026-12-14 | 9314 |  | 7 Days Work | 9299814 |
| 9316 | 36900.37000.37100.37500.38200.51600.701400 | 2nd coat of primer | 10d | 2026-12-15 | 2026-12-24 | 9315 |  | 7 Days Work | 9299824 |
| 9317 | 36900.37000.37100.37500.38200.51600.701500 | Final cutting/polishing of stone flooring | 7d | 2026-12-25 | 2026-12-31 | 9316 |  | 7 Days Work | 9299834 |

| ID | WBS | Task | Duration | Start | Finish | Predecessors | Constraint | Calendar | Unique_Task_ID |
| --- | --- | --- | --- | --- | --- | --- | --- | --- | --- |
| 9318 | 36900.37000.37100.37500.38200.51600.55700 | **Toilet** | 237d | 2026-05-08 | 2026-12-30 |  | start no earlier than 2026-05-08 | 7 Days Work | 9294054 |
| 9319 | 36900.37000.37100.37500.38200.51600.55700.1023600 | Toilet_MEP Clearance -1 | 7d | 2026-05-08 | 2026-05-14 | 9282 |  | 7 Days Work | 9306524 |
| 9320 | 36900.37000.37100.37500.38200.51600.55700.1023700 | Toilet_Level Marking | 1d | 2026-05-15 | 2026-05-15 | 9319 |  | 7 Days Work | 9306534 |
| 9321 | 36900.37000.37100.37500.38200.51600.55700.1023800 | Toilet_Chasing work for Electrical conduit & concealed plumbing | 5d | 2026-05-16 | 2026-05-20 | 9320 |  | 7 Days Work | 9306544 |
| 9322 | 36900.37000.37100.37500.38200.51600.55700.1023900 | Toilet_Plumbing work 1st fix | 5d | 2026-05-21 | 2026-05-25 | 9321 |  | 7 Days Work | 9306554 |
| 9323 | 36900.37000.37100.37500.38200.51600.55700.1024000 | Toilet_Sleeve/Bore Packing | 5d | 2026-05-26 | 2026-05-30 | 9322 |  | 7 Days Work | 9306564 |
| 9324 | 36900.37000.37100.37500.38200.51600.55700.1024100 | Toilet_Waterproofing | 10d | 2026-05-31 | 2026-06-09 | 9323 |  | 7 Days Work | 9306574 |
| 9325 | 36900.37000.37100.37500.38200.51600.55700.1024200 | Toilet_Screed | 1d | 2026-06-10 | 2026-06-10 | 9324 |  | 7 Days Work | 9306584 |
| 9326 | 36900.37000.37100.37500.38200.51600.55700.1024300 | Toilet_Plumbing 2nd fix | 5d | 2026-06-11 | 2026-06-15 | 9325 |  | 7 Days Work | 9306594 |
| 9327 | 36900.37000.37100.37500.38200.51600.55700.1024400 | Toilet_Ledge wall | 5d | 2026-06-16 | 2026-06-20 | 9326 |  | 7 Days Work | 9306604 |
| 9328 | 36900.37000.37100.37500.38200.51600.55700.1024500 | Toilet_Cement Plaster | 5d | 2026-06-21 | 2026-06-25 | 9327 |  | 7 Days Work | 9306614 |
| 9329 | 36900.37000.37100.37500.38200.51600.55700.1024600 | Toilet_Door Frame | 1d | 2026-06-26 | 2026-06-26 | 9328 |  | 7 Days Work | 9306624 |
| 9330 | 36900.37000.37100.37500.38200.51600.55700.1024700 | Toilet_Wash basin & Couter | 3d | 2026-06-27 | 2026-06-29 | 9329 |  | 7 Days Work | 9306634 |
| 9331 | 36900.37000.37100.37500.38200.51600.55700.1024800 | Toilet_Wall dado | 20d | 2026-06-30 | 2026-07-19 | 9330 |  | 7 Days Work | 9306644 |
| 9332 | 36900.37000.37100.37500.38200.51600.55700.1024900 | Toilet_Granite Work-Ledge wall top | 3d | 2026-07-20 | 2026-07-22 | 9331 |  | 7 Days Work | 9306654 |
| 9333 | 36900.37000.37100.37500.38200.51600.55700.1025000 | Toilet_Floor Tilling work | 20d | 2026-07-23 | 2026-08-11 | 9332 |  | 7 Days Work | 9306664 |
| 9334 | 36900.37000.37100.37500.38200.51600.55700.1025100 | Toilet_1st row of dado | 5d | 2026-08-12 | 2026-08-16 | 9333 |  | 7 Days Work | 9306674 |
| 9335 | 36900.37000.37100.37500.38200.51600.55700.1025200 | Toilet_Window Fixing | 14d | 2026-08-17 | 2026-08-30 | 9334 |  | 7 Days Work | 9306684 |
| 9336 | 36900.37000.37100.37500.38200.51600.55700.1025300 | Toilet_Services above False ceiling | 21d | 2026-08-31 | 2026-09-20 | 9335 |  | 7 Days Work | 9306694 |
| 9337 | 36900.37000.37100.37500.38200.51600.55700.1025400 | Toilet_False Ceiling framing | 12d | 2026-09-21 | 2026-10-02 | 9336 |  | 7 Days Work | 9306704 |
| 9338 | 36900.37000.37100.37500.38200.51600.55700.1025500 | Toilet_Door Frame | 5d | 2026-10-03 | 2026-10-07 | 9337 |  | 7 Days Work | 9306714 |
| 9339 | 36900.37000.37100.37500.38200.51600.55700.1025600 | Toilet_Epoxy Tile Grouting | 7d | 2026-12-03 | 2026-12-09 | 9314SS |  | 7 Days Work | 9306724 |
| 9340 | 36900.37000.37100.37500.38200.51600.55700.1025700 | Toilet_False ceiling board fixing, CP Sanitary Fixture, Electric Fixture | 21d | 2026-12-10 | 2026-12-30 | 9339 |  | 7 Days Work | 9306734 |
| 9341 | 36900.37000.37100.37500.38200.51700 | **16th Habitable/17th Floor** | 245d | 2026-05-10 | 2027-01-09 |  | start no earlier than 2026-05-10 | 7 Days Work | 9293854 |
| 9342 | 36900.37000.37100.37500.38200.51700.701600 | Post Pour | 7d | 2026-05-10 | 2026-05-16 | 8433FS+15d |  | 7 Days Work | 9299844 |
| 9343 | 36900.37000.37100.37500.38200.51700.701700 | MEP Clearance -1 | 5d | 2026-05-17 | 2026-05-21 | 9342 |  | 7 Days Work | 9299854 |
| 9344 | 36900.37000.37100.37500.38200.51700.701800 | Benchmark | 1d | 2026-05-22 | 2026-05-22 | 9343 |  | 7 Days Work | 9299864 |
| 9345 | 36900.37000.37100.37500.38200.51700.701900 | Temporary Railing | 3d | 2026-05-23 | 2026-05-25 | 9344 |  | 7 Days Work | 9299874 |
| 9346 | 36900.37000.37100.37500.38200.51700.702000 | Blockwork | 10d | 2026-05-26 | 2026-06-04 | 9345 |  | 7 Days Work | 9299884 |
| 9347 | 36900.37000.37100.37500.38200.51700.702100 | MEP Clearance -2 | 10d | 2026-06-05 | 2026-06-14 | 9346 |  | 7 Days Work | 9299894 |
| 9348 | 36900.37000.37100.37500.38200.51700.702200 | Gypsum Plaster | 14d | 2026-06-15 | 2026-06-28 | 9347 |  | 7 Days Work | 9299904 |
| 9349 | 36900.37000.37100.37500.38200.51700.702300 | Kitchen Platform | 3d | 2026-06-29 | 2026-07-01 | 9348 |  | 7 Days Work | 9299914 |
| 9350 | 36900.37000.37100.37500.38200.51700.702400 | Kitchen dado | 7d | 2026-07-02 | 2026-07-08 | 9349 |  | 7 Days Work | 9299924 |
| 9351 | 36900.37000.37100.37500.38200.51700.702500 | Fire Fighting | 5d | 2026-07-09 | 2026-07-13 | 9350 |  | 7 Days Work | 9299934 |
| 9352 | 36900.37000.37100.37500.38200.51700.702600 | Anticapilary | 5d | 2026-07-14 | 2026-07-18 | 9351 |  | 7 Days Work | 9299944 |
| 9353 | 36900.37000.37100.37500.38200.51700.702700 | Stone Laying | 10d | 2026-08-21 | 2026-08-30 | 9393 |  | 7 Days Work | 9299954 |
| 9354 | 36900.37000.37100.37500.38200.51700.702800 | Tiles Laying | 7d | 2026-08-21 | 2026-08-27 | 9393 |  | 7 Days Work | 9299964 |
| 9355 | 36900.37000.37100.37500.38200.51700.702900 | 1st cutting/polishing of stone flooring | 7d | 2026-08-28 | 2026-09-03 | 9354 |  | 7 Days Work | 9299974 |
| 9356 | 36900.37000.37100.37500.38200.51700.703000 | Tiles/Stone skirting | 5d | 2026-09-04 | 2026-09-08 | 9355 |  | 7 Days Work | 9299984 |
| 9357 | 36900.37000.37100.37500.38200.51700.703100 | Protechtion sheet | 1d | 2026-09-09 | 2026-09-09 | 9356 |  | 7 Days Work | 9299994 |
| 9358 | 36900.37000.37100.37500.38200.51700.703200 | Installation of Temporary Door | 1d | 2026-09-10 | 2026-09-10 | 9357 |  | 7 Days Work | 9300004 |
| 9359 | 36900.37000.37100.37500.38200.51700.703300 | Fixing of window tracks | 5d | 2026-09-11 | 2026-09-15 | 9358 |  | 7 Days Work | 9300014 |
| 9360 | 36900.37000.37100.37500.38200.51700.703400 | Wire Pulling | 7d | 2026-09-16 | 2026-09-22 | 9359 |  | 7 Days Work | 9300024 |
| 9361 | 36900.37000.37100.37500.38200.51700.703500 | Gypsum Remaining | 5d | 2026-09-23 | 2026-09-27 | 9360 |  | 7 Days Work | 9300034 |
| 9362 | 36900.37000.37100.37500.38200.51700.703600 | Fixing of windoow shutter | 5d | 2026-09-28 | 2026-10-02 | 9361 |  | 7 Days Work | 9300044 |
| 9363 | 36900.37000.37100.37500.38200.51700.703700 | Putty Works - walls & ceiling | 15d | 2026-10-03 | 2026-10-17 | 9362 |  | 7 Days Work | 9300054 |
| 9364 | 36900.37000.37100.37500.38200.51700.703800 | False Ceiling- Framing | 10d | 2026-10-18 | 2026-10-27 | 9363 |  | 7 Days Work | 9300064 |
| 9365 | 36900.37000.37100.37500.38200.51700.703900 | Pre Hung Door | 3d | 2026-10-28 | 2026-10-30 | 9364 |  | 7 Days Work | 9300074 |
| 9366 | 36900.37000.37100.37500.38200.51700.704000 | Protechtion sheet | 2d | 2026-10-31 | 2026-11-01 | 9365 |  | 7 Days Work | 9300084 |
| 9367 | 36900.37000.37100.37500.38200.51700.704100 | Skirting near door | 2d | 2026-11-02 | 2026-11-03 | 9366 |  | 7 Days Work | 9300094 |
| 9368 | 36900.37000.37100.37500.38200.51700.704200 | Electrical Switch box fixing | 14d | 2026-11-04 | 2026-11-17 | 9367 |  | 7 Days Work | 9300104 |
| 9369 | 36900.37000.37100.37500.38200.51700.704300 | Fire Fighting painting | 5d | 2026-11-18 | 2026-11-22 | 9368 |  | 7 Days Work | 9300114 |
| 9370 | 36900.37000.37100.37500.38200.51700.704400 | Protection of all flooring, door & window hardware | 5d | 2026-11-23 | 2026-11-27 | 9369 |  | 7 Days Work | 9300124 |
| 9371 | 36900.37000.37100.37500.38200.51700.704500 | 1st coat primer- ceiling 1st & walls | 14d | 2026-11-28 | 2026-12-11 | 9370 |  | 7 Days Work | 9300134 |
| 9372 | 36900.37000.37100.37500.38200.51700.704600 | Wooden Flooring | 5d | 2026-12-12 | 2026-12-16 | 9371 |  | 7 Days Work | 9300144 |
| 9373 | 36900.37000.37100.37500.38200.51700.704700 | Removing of Temporary Railing & installation of Glass Railing | 5d | 2026-12-12 | 2026-12-16 | 9371 |  | 7 Days Work | 9300154 |
| 9374 | 36900.37000.37100.37500.38200.51700.704800 | Tile Grouting | 7d | 2026-12-12 | 2026-12-18 | 9371 |  | 7 Days Work | 9300164 |
| 9375 | 36900.37000.37100.37500.38200.51700.704900 | False Ceiling | 5d | 2026-12-19 | 2026-12-23 | 9374 |  | 7 Days Work | 9300174 |
| 9376 | 36900.37000.37100.37500.38200.51700.705000 | 2nd coat of primer | 10d | 2026-12-24 | 2027-01-02 | 9375 |  | 7 Days Work | 9300184 |
| 9377 | 36900.37000.37100.37500.38200.51700.705100 | Final cutting/polishing of stone flooring | 7d | 2027-01-03 | 2027-01-09 | 9376 |  | 7 Days Work | 9300194 |

| ID | WBS | Task | Duration | Start | Finish | Predecessors | Constraint | Calendar | Unique_Task_ID |
| --- | --- | --- | --- | --- | --- | --- | --- | --- | --- |
| 9378 | 36900.37000.37100.37500.38200.51700.55800 | **Toilet** | 237d | 2026-05-17 | 2027-01-08 |  | start no earlier than 2026-05-17 | 7 Days Work | 9294064 |
| 9379 | 36900.37000.37100.37500.38200.51700.55800.1025800 | Toilet_MEP Clearance -1 | 7d | 2026-05-17 | 2026-05-23 | 9342 |  | 7 Days Work | 9306744 |
| 9380 | 36900.37000.37100.37500.38200.51700.55800.1025900 | Toilet_Level Marking | 1d | 2026-05-24 | 2026-05-24 | 9379 |  | 7 Days Work | 9306754 |
| 9381 | 36900.37000.37100.37500.38200.51700.55800.1026000 | Toilet_Chasing work for Electrical conduit & concealed plumbing | 5d | 2026-05-25 | 2026-05-29 | 9380 |  | 7 Days Work | 9306764 |
| 9382 | 36900.37000.37100.37500.38200.51700.55800.1026100 | Toilet_Plumbing work 1st fix | 5d | 2026-05-30 | 2026-06-03 | 9381 |  | 7 Days Work | 9306774 |
| 9383 | 36900.37000.37100.37500.38200.51700.55800.1026200 | Toilet_Sleeve/Bore Packing | 5d | 2026-06-04 | 2026-06-08 | 9382 |  | 7 Days Work | 9306784 |
| 9384 | 36900.37000.37100.37500.38200.51700.55800.1026300 | Toilet_Waterproofing | 10d | 2026-06-09 | 2026-06-18 | 9383 |  | 7 Days Work | 9306794 |
| 9385 | 36900.37000.37100.37500.38200.51700.55800.1026400 | Toilet_Screed | 1d | 2026-06-19 | 2026-06-19 | 9384 |  | 7 Days Work | 9306804 |
| 9386 | 36900.37000.37100.37500.38200.51700.55800.1026500 | Toilet_Plumbing 2nd fix | 5d | 2026-06-20 | 2026-06-24 | 9385 |  | 7 Days Work | 9306814 |
| 9387 | 36900.37000.37100.37500.38200.51700.55800.1026600 | Toilet_Ledge wall | 5d | 2026-06-25 | 2026-06-29 | 9386 |  | 7 Days Work | 9306824 |
| 9388 | 36900.37000.37100.37500.38200.51700.55800.1026700 | Toilet_Cement Plaster | 5d | 2026-06-30 | 2026-07-04 | 9387 |  | 7 Days Work | 9306834 |
| 9389 | 36900.37000.37100.37500.38200.51700.55800.1026800 | Toilet_Door Frame | 1d | 2026-07-05 | 2026-07-05 | 9388 |  | 7 Days Work | 9306844 |
| 9390 | 36900.37000.37100.37500.38200.51700.55800.1026900 | Toilet_Wash basin & Couter | 3d | 2026-07-06 | 2026-07-08 | 9389 |  | 7 Days Work | 9306854 |
| 9391 | 36900.37000.37100.37500.38200.51700.55800.1027000 | Toilet_Wall dado | 20d | 2026-07-09 | 2026-07-28 | 9390 |  | 7 Days Work | 9306864 |
| 9392 | 36900.37000.37100.37500.38200.51700.55800.1027100 | Toilet_Granite Work-Ledge wall top | 3d | 2026-07-29 | 2026-07-31 | 9391 |  | 7 Days Work | 9306874 |
| 9393 | 36900.37000.37100.37500.38200.51700.55800.1027200 | Toilet_Floor Tilling work | 20d | 2026-08-01 | 2026-08-20 | 9392 |  | 7 Days Work | 9306884 |
| 9394 | 36900.37000.37100.37500.38200.51700.55800.1027300 | Toilet_1st row of dado | 5d | 2026-08-21 | 2026-08-25 | 9393 |  | 7 Days Work | 9306894 |
| 9395 | 36900.37000.37100.37500.38200.51700.55800.1027400 | Toilet_Window Fixing | 14d | 2026-08-26 | 2026-09-08 | 9394 |  | 7 Days Work | 9306904 |
| 9396 | 36900.37000.37100.37500.38200.51700.55800.1027500 | Toilet_Services above False ceiling | 21d | 2026-09-09 | 2026-09-29 | 9395 |  | 7 Days Work | 9306914 |
| 9397 | 36900.37000.37100.37500.38200.51700.55800.1027600 | Toilet_False Ceiling framing | 12d | 2026-09-30 | 2026-10-11 | 9396 |  | 7 Days Work | 9306924 |
| 9398 | 36900.37000.37100.37500.38200.51700.55800.1027700 | Toilet_Door Frame | 5d | 2026-10-12 | 2026-10-16 | 9397 |  | 7 Days Work | 9306934 |
| 9399 | 36900.37000.37100.37500.38200.51700.55800.1027800 | Toilet_Epoxy Tile Grouting | 7d | 2026-12-12 | 2026-12-18 | 9374SS |  | 7 Days Work | 9306944 |
| 9400 | 36900.37000.37100.37500.38200.51700.55800.1027900 | Toilet_False ceiling board fixing, CP Sanitary Fixture, Electric Fixture | 21d | 2026-12-19 | 2027-01-08 | 9399 |  | 7 Days Work | 9306954 |
| 9401 | 36900.37000.37100.37500.38200.51800 | **17th Habitable/18th Floor** | 245d | 2026-05-22 | 2027-01-21 |  | start no earlier than 2026-05-22 | 7 Days Work | 9293864 |
| 9402 | 36900.37000.37100.37500.38200.51800.705200 | Post Pour | 7d | 2026-05-22 | 2026-05-28 | 8434FS+15d |  | 7 Days Work | 9300204 |
| 9403 | 36900.37000.37100.37500.38200.51800.705300 | MEP Clearance -1 | 5d | 2026-05-29 | 2026-06-02 | 9402 |  | 7 Days Work | 9300214 |
| 9404 | 36900.37000.37100.37500.38200.51800.705400 | Benchmark | 1d | 2026-06-03 | 2026-06-03 | 9403 |  | 7 Days Work | 9300224 |
| 9405 | 36900.37000.37100.37500.38200.51800.705500 | Temporary Railing | 3d | 2026-06-04 | 2026-06-06 | 9404 |  | 7 Days Work | 9300234 |
| 9406 | 36900.37000.37100.37500.38200.51800.705600 | Blockwork | 10d | 2026-06-07 | 2026-06-16 | 9405 |  | 7 Days Work | 9300244 |
| 9407 | 36900.37000.37100.37500.38200.51800.705700 | MEP Clearance -2 | 10d | 2026-06-17 | 2026-06-26 | 9406 |  | 7 Days Work | 9300254 |
| 9408 | 36900.37000.37100.37500.38200.51800.705800 | Gypsum Plaster | 14d | 2026-06-27 | 2026-07-10 | 9407 |  | 7 Days Work | 9300264 |
| 9409 | 36900.37000.37100.37500.38200.51800.705900 | Kitchen Platform | 3d | 2026-07-11 | 2026-07-13 | 9408 |  | 7 Days Work | 9300274 |
| 9410 | 36900.37000.37100.37500.38200.51800.706000 | Kitchen dado | 7d | 2026-07-14 | 2026-07-20 | 9409 |  | 7 Days Work | 9300284 |
| 9411 | 36900.37000.37100.37500.38200.51800.706100 | Fire Fighting | 5d | 2026-07-21 | 2026-07-25 | 9410 |  | 7 Days Work | 9300294 |
| 9412 | 36900.37000.37100.37500.38200.51800.706200 | Anticapilary | 5d | 2026-07-26 | 2026-07-30 | 9411 |  | 7 Days Work | 9300304 |
| 9413 | 36900.37000.37100.37500.38200.51800.706300 | Stone Laying | 10d | 2026-09-02 | 2026-09-11 | 9453 |  | 7 Days Work | 9300314 |
| 9414 | 36900.37000.37100.37500.38200.51800.706400 | Tiles Laying | 7d | 2026-09-02 | 2026-09-08 | 9453 |  | 7 Days Work | 9300324 |
| 9415 | 36900.37000.37100.37500.38200.51800.706500 | 1st cutting/polishing of stone flooring | 7d | 2026-09-09 | 2026-09-15 | 9414 |  | 7 Days Work | 9300334 |
| 9416 | 36900.37000.37100.37500.38200.51800.706600 | Tiles/Stone skirting | 5d | 2026-09-16 | 2026-09-20 | 9415 |  | 7 Days Work | 9300344 |
| 9417 | 36900.37000.37100.37500.38200.51800.706700 | Protechtion sheet | 1d | 2026-09-21 | 2026-09-21 | 9416 |  | 7 Days Work | 9300354 |
| 9418 | 36900.37000.37100.37500.38200.51800.706800 | Installation of Temporary Door | 1d | 2026-09-22 | 2026-09-22 | 9417 |  | 7 Days Work | 9300364 |
| 9419 | 36900.37000.37100.37500.38200.51800.706900 | Fixing of window tracks | 5d | 2026-09-23 | 2026-09-27 | 9418 |  | 7 Days Work | 9300374 |
| 9420 | 36900.37000.37100.37500.38200.51800.707000 | Wire Pulling | 7d | 2026-09-28 | 2026-10-04 | 9419 |  | 7 Days Work | 9300384 |
| 9421 | 36900.37000.37100.37500.38200.51800.707100 | Gypsum Remaining | 5d | 2026-10-05 | 2026-10-09 | 9420 |  | 7 Days Work | 9300394 |
| 9422 | 36900.37000.37100.37500.38200.51800.707200 | Fixing of windoow shutter | 5d | 2026-10-10 | 2026-10-14 | 9421 |  | 7 Days Work | 9300404 |
| 9423 | 36900.37000.37100.37500.38200.51800.707300 | Putty Works - walls & ceiling | 15d | 2026-10-15 | 2026-10-29 | 9422 |  | 7 Days Work | 9300414 |
| 9424 | 36900.37000.37100.37500.38200.51800.707400 | False Ceiling- Framing | 10d | 2026-10-30 | 2026-11-08 | 9423 |  | 7 Days Work | 9300424 |
| 9425 | 36900.37000.37100.37500.38200.51800.707500 | Pre Hung Door | 3d | 2026-11-09 | 2026-11-11 | 9424 |  | 7 Days Work | 9300434 |
| 9426 | 36900.37000.37100.37500.38200.51800.707600 | Protechtion sheet | 2d | 2026-11-12 | 2026-11-13 | 9425 |  | 7 Days Work | 9300444 |
| 9427 | 36900.37000.37100.37500.38200.51800.707700 | Skirting near door | 2d | 2026-11-14 | 2026-11-15 | 9426 |  | 7 Days Work | 9300454 |
| 9428 | 36900.37000.37100.37500.38200.51800.707800 | Electrical Switch box fixing | 14d | 2026-11-16 | 2026-11-29 | 9427 |  | 7 Days Work | 9300464 |
| 9429 | 36900.37000.37100.37500.38200.51800.707900 | Fire Fighting painting | 5d | 2026-11-30 | 2026-12-04 | 9428 |  | 7 Days Work | 9300474 |
| 9430 | 36900.37000.37100.37500.38200.51800.708000 | Protection of all flooring, door & window hardware | 5d | 2026-12-05 | 2026-12-09 | 9429 |  | 7 Days Work | 9300484 |
| 9431 | 36900.37000.37100.37500.38200.51800.708100 | 1st coat primer- ceiling 1st & walls | 14d | 2026-12-10 | 2026-12-23 | 9430 |  | 7 Days Work | 9300494 |
| 9432 | 36900.37000.37100.37500.38200.51800.708200 | Wooden Flooring | 5d | 2026-12-24 | 2026-12-28 | 9431 |  | 7 Days Work | 9300504 |
| 9433 | 36900.37000.37100.37500.38200.51800.708300 | Removing of Temporary Railing & installation of Glass Railing | 5d | 2026-12-24 | 2026-12-28 | 9431 |  | 7 Days Work | 9300514 |
| 9434 | 36900.37000.37100.37500.38200.51800.708400 | Tile Grouting | 7d | 2026-12-24 | 2026-12-30 | 9431 |  | 7 Days Work | 9300524 |
| 9435 | 36900.37000.37100.37500.38200.51800.708500 | False Ceiling | 5d | 2026-12-31 | 2027-01-04 | 9434 |  | 7 Days Work | 9300534 |
| 9436 | 36900.37000.37100.37500.38200.51800.708600 | 2nd coat of primer | 10d | 2027-01-05 | 2027-01-14 | 9435 |  | 7 Days Work | 9300544 |
| 9437 | 36900.37000.37100.37500.38200.51800.708700 | Final cutting/polishing of stone flooring | 7d | 2027-01-15 | 2027-01-21 | 9436 |  | 7 Days Work | 9300554 |

| ID | WBS | Task | Duration | Start | Finish | Predecessors | Constraint | Calendar | Unique_Task_ID |
| --- | --- | --- | --- | --- | --- | --- | --- | --- | --- |
| 9438 | 36900.37000.37100.37500.38200.51800.66400 | **Toilet** | 237d | 2026-05-29 | 2027-01-20 |  | start no earlier than 2026-05-29 | 7 Days Work | 9294074 |
| 9439 | 36900.37000.37100.37500.38200.51800.66400.1028000 | Toilet_MEP Clearance -1 | 7d | 2026-05-29 | 2026-06-04 | 9402 |  | 7 Days Work | 9306964 |
| 9440 | 36900.37000.37100.37500.38200.51800.66400.1028100 | Toilet_Level Marking | 1d | 2026-06-05 | 2026-06-05 | 9439 |  | 7 Days Work | 9306974 |
| 9441 | 36900.37000.37100.37500.38200.51800.66400.1028200 | Toilet_Chasing work for Electrical conduit & concealed plumbing | 5d | 2026-06-06 | 2026-06-10 | 9440 |  | 7 Days Work | 9306984 |
| 9442 | 36900.37000.37100.37500.38200.51800.66400.1028300 | Toilet_Plumbing work 1st fix | 5d | 2026-06-11 | 2026-06-15 | 9441 |  | 7 Days Work | 9306994 |
| 9443 | 36900.37000.37100.37500.38200.51800.66400.1028400 | Toilet_Sleeve/Bore Packing | 5d | 2026-06-16 | 2026-06-20 | 9442 |  | 7 Days Work | 9307004 |
| 9444 | 36900.37000.37100.37500.38200.51800.66400.1028500 | Toilet_Waterproofing | 10d | 2026-06-21 | 2026-06-30 | 9443 |  | 7 Days Work | 9307014 |
| 9445 | 36900.37000.37100.37500.38200.51800.66400.1028600 | Toilet_Screed | 1d | 2026-07-01 | 2026-07-01 | 9444 |  | 7 Days Work | 9307024 |
| 9446 | 36900.37000.37100.37500.38200.51800.66400.1028700 | Toilet_Plumbing 2nd fix | 5d | 2026-07-02 | 2026-07-06 | 9445 |  | 7 Days Work | 9307034 |
| 9447 | 36900.37000.37100.37500.38200.51800.66400.1028800 | Toilet_Ledge wall | 5d | 2026-07-07 | 2026-07-11 | 9446 |  | 7 Days Work | 9307044 |
| 9448 | 36900.37000.37100.37500.38200.51800.66400.1028900 | Toilet_Cement Plaster | 5d | 2026-07-12 | 2026-07-16 | 9447 |  | 7 Days Work | 9307054 |
| 9449 | 36900.37000.37100.37500.38200.51800.66400.1029000 | Toilet_Door Frame | 1d | 2026-07-17 | 2026-07-17 | 9448 |  | 7 Days Work | 9307064 |
| 9450 | 36900.37000.37100.37500.38200.51800.66400.1029100 | Toilet_Wash basin & Couter | 3d | 2026-07-18 | 2026-07-20 | 9449 |  | 7 Days Work | 9307074 |
| 9451 | 36900.37000.37100.37500.38200.51800.66400.1029200 | Toilet_Wall dado | 20d | 2026-07-21 | 2026-08-09 | 9450 |  | 7 Days Work | 9307084 |
| 9452 | 36900.37000.37100.37500.38200.51800.66400.1029300 | Toilet_Granite Work-Ledge wall top | 3d | 2026-08-10 | 2026-08-12 | 9451 |  | 7 Days Work | 9307094 |
| 9453 | 36900.37000.37100.37500.38200.51800.66400.1029400 | Toilet_Floor Tilling work | 20d | 2026-08-13 | 2026-09-01 | 9452 |  | 7 Days Work | 9307104 |
| 9454 | 36900.37000.37100.37500.38200.51800.66400.1029500 | Toilet_1st row of dado | 5d | 2026-09-02 | 2026-09-06 | 9453 |  | 7 Days Work | 9307114 |
| 9455 | 36900.37000.37100.37500.38200.51800.66400.1029600 | Toilet_Window Fixing | 14d | 2026-09-07 | 2026-09-20 | 9454 |  | 7 Days Work | 9307124 |
| 9456 | 36900.37000.37100.37500.38200.51800.66400.1029700 | Toilet_Services above False ceiling | 21d | 2026-09-21 | 2026-10-11 | 9455 |  | 7 Days Work | 9307134 |
| 9457 | 36900.37000.37100.37500.38200.51800.66400.1029800 | Toilet_False Ceiling framing | 12d | 2026-10-12 | 2026-10-23 | 9456 |  | 7 Days Work | 9307144 |
| 9458 | 36900.37000.37100.37500.38200.51800.66400.1029900 | Toilet_Door Frame | 5d | 2026-10-24 | 2026-10-28 | 9457 |  | 7 Days Work | 9307154 |
| 9459 | 36900.37000.37100.37500.38200.51800.66400.1030000 | Toilet_Epoxy Tile Grouting | 7d | 2026-12-24 | 2026-12-30 | 9434SS |  | 7 Days Work | 9307164 |
| 9460 | 36900.37000.37100.37500.38200.51800.66400.1030100 | Toilet_False ceiling board fixing, CP Sanitary Fixture, Electric Fixture | 21d | 2026-12-31 | 2027-01-20 | 9459 |  | 7 Days Work | 9307174 |
| 9461 | 36900.37000.37100.37500.38200.51900 | **18th Habitable/19th Floor** | 245d | 2026-05-31 | 2027-01-30 |  | start no earlier than 2026-05-31 | 7 Days Work | 9293874 |
| 9462 | 36900.37000.37100.37500.38200.51900.708800 | Post Pour | 7d | 2026-05-31 | 2026-06-06 | 8435FS+15d |  | 7 Days Work | 9300564 |
| 9463 | 36900.37000.37100.37500.38200.51900.708900 | MEP Clearance -1 | 5d | 2026-06-07 | 2026-06-11 | 9462 |  | 7 Days Work | 9300574 |
| 9464 | 36900.37000.37100.37500.38200.51900.709000 | Benchmark | 1d | 2026-06-12 | 2026-06-12 | 9463 |  | 7 Days Work | 9300584 |
| 9465 | 36900.37000.37100.37500.38200.51900.709100 | Temporary Railing | 3d | 2026-06-13 | 2026-06-15 | 9464 |  | 7 Days Work | 9300594 |
| 9466 | 36900.37000.37100.37500.38200.51900.709200 | Blockwork | 10d | 2026-06-16 | 2026-06-25 | 9465 |  | 7 Days Work | 9300604 |
| 9467 | 36900.37000.37100.37500.38200.51900.709300 | MEP Clearance -2 | 10d | 2026-06-26 | 2026-07-05 | 9466 |  | 7 Days Work | 9300614 |
| 9468 | 36900.37000.37100.37500.38200.51900.709400 | Gypsum Plaster | 14d | 2026-07-06 | 2026-07-19 | 9467 |  | 7 Days Work | 9300624 |
| 9469 | 36900.37000.37100.37500.38200.51900.709500 | Kitchen Platform | 3d | 2026-07-20 | 2026-07-22 | 9468 |  | 7 Days Work | 9300634 |
| 9470 | 36900.37000.37100.37500.38200.51900.709600 | Kitchen dado | 7d | 2026-07-23 | 2026-07-29 | 9469 |  | 7 Days Work | 9300644 |
| 9471 | 36900.37000.37100.37500.38200.51900.709700 | Fire Fighting | 5d | 2026-07-30 | 2026-08-03 | 9470 |  | 7 Days Work | 9300654 |
| 9472 | 36900.37000.37100.37500.38200.51900.709800 | Anticapilary | 5d | 2026-08-04 | 2026-08-08 | 9471 |  | 7 Days Work | 9300664 |
| 9473 | 36900.37000.37100.37500.38200.51900.709900 | Stone Laying | 10d | 2026-09-11 | 2026-09-20 | 9513 |  | 7 Days Work | 9300674 |
| 9474 | 36900.37000.37100.37500.38200.51900.710000 | Tiles Laying | 7d | 2026-09-11 | 2026-09-17 | 9513 |  | 7 Days Work | 9300684 |
| 9475 | 36900.37000.37100.37500.38200.51900.710100 | 1st cutting/polishing of stone flooring | 7d | 2026-09-18 | 2026-09-24 | 9474 |  | 7 Days Work | 9300694 |
| 9476 | 36900.37000.37100.37500.38200.51900.710200 | Tiles/Stone skirting | 5d | 2026-09-25 | 2026-09-29 | 9475 |  | 7 Days Work | 9300704 |
| 9477 | 36900.37000.37100.37500.38200.51900.710300 | Protechtion sheet | 1d | 2026-09-30 | 2026-09-30 | 9476 |  | 7 Days Work | 9300714 |
| 9478 | 36900.37000.37100.37500.38200.51900.710400 | Installation of Temporary Door | 1d | 2026-10-01 | 2026-10-01 | 9477 |  | 7 Days Work | 9300724 |
| 9479 | 36900.37000.37100.37500.38200.51900.710500 | Fixing of window tracks | 5d | 2026-10-02 | 2026-10-06 | 9478 |  | 7 Days Work | 9300734 |
| 9480 | 36900.37000.37100.37500.38200.51900.710600 | Wire Pulling | 7d | 2026-10-07 | 2026-10-13 | 9479 |  | 7 Days Work | 9300744 |
| 9481 | 36900.37000.37100.37500.38200.51900.710700 | Gypsum Remaining | 5d | 2026-10-14 | 2026-10-18 | 9480 |  | 7 Days Work | 9300754 |
| 9482 | 36900.37000.37100.37500.38200.51900.710800 | Fixing of windoow shutter | 5d | 2026-10-19 | 2026-10-23 | 9481 |  | 7 Days Work | 9300764 |
| 9483 | 36900.37000.37100.37500.38200.51900.710900 | Putty Works - walls & ceiling | 15d | 2026-10-24 | 2026-11-07 | 9482 |  | 7 Days Work | 9300774 |
| 9484 | 36900.37000.37100.37500.38200.51900.711000 | False Ceiling- Framing | 10d | 2026-11-08 | 2026-11-17 | 9483 |  | 7 Days Work | 9300784 |
| 9485 | 36900.37000.37100.37500.38200.51900.711100 | Pre Hung Door | 3d | 2026-11-18 | 2026-11-20 | 9484 |  | 7 Days Work | 9300794 |
| 9486 | 36900.37000.37100.37500.38200.51900.711200 | Protechtion sheet | 2d | 2026-11-21 | 2026-11-22 | 9485 |  | 7 Days Work | 9300804 |
| 9487 | 36900.37000.37100.37500.38200.51900.711300 | Skirting near door | 2d | 2026-11-23 | 2026-11-24 | 9486 |  | 7 Days Work | 9300814 |
| 9488 | 36900.37000.37100.37500.38200.51900.711400 | Electrical Switch box fixing | 14d | 2026-11-25 | 2026-12-08 | 9487 |  | 7 Days Work | 9300824 |
| 9489 | 36900.37000.37100.37500.38200.51900.711500 | Fire Fighting painting | 5d | 2026-12-09 | 2026-12-13 | 9488 |  | 7 Days Work | 9300834 |
| 9490 | 36900.37000.37100.37500.38200.51900.711600 | Protection of all flooring, door & window hardware | 5d | 2026-12-14 | 2026-12-18 | 9489 |  | 7 Days Work | 9300844 |
| 9491 | 36900.37000.37100.37500.38200.51900.711700 | 1st coat primer- ceiling 1st & walls | 14d | 2026-12-19 | 2027-01-01 | 9490 |  | 7 Days Work | 9300854 |
| 9492 | 36900.37000.37100.37500.38200.51900.711800 | Wooden Flooring | 5d | 2027-01-02 | 2027-01-06 | 9491 |  | 7 Days Work | 9300864 |
| 9493 | 36900.37000.37100.37500.38200.51900.711900 | Removing of Temporary Railing & installation of Glass Railing | 5d | 2027-01-02 | 2027-01-06 | 9491 |  | 7 Days Work | 9300874 |
| 9494 | 36900.37000.37100.37500.38200.51900.712000 | Tile Grouting | 7d | 2027-01-02 | 2027-01-08 | 9491 |  | 7 Days Work | 9300884 |
| 9495 | 36900.37000.37100.37500.38200.51900.712100 | False Ceiling | 5d | 2027-01-09 | 2027-01-13 | 9494 |  | 7 Days Work | 9300894 |
| 9496 | 36900.37000.37100.37500.38200.51900.712200 | 2nd coat of primer | 10d | 2027-01-14 | 2027-01-23 | 9495 |  | 7 Days Work | 9300904 |
| 9497 | 36900.37000.37100.37500.38200.51900.712300 | Final cutting/polishing of stone flooring | 7d | 2027-01-24 | 2027-01-30 | 9496 |  | 7 Days Work | 9300914 |

| ID | WBS | Task | Duration | Start | Finish | Predecessors | Constraint | Calendar | Unique_Task_ID |
| --- | --- | --- | --- | --- | --- | --- | --- | --- | --- |
| 9498 | 36900.37000.37100.37500.38200.51900.55900 | **Toilet** | 237d | 2026-06-07 | 2027-01-29 |  | start no earlier than 2026-06-07 | 7 Days Work | 9294084 |
| 9499 | 36900.37000.37100.37500.38200.51900.55900.1030200 | Toilet_MEP Clearance -1 | 7d | 2026-06-07 | 2026-06-13 | 9462 |  | 7 Days Work | 9307184 |
| 9500 | 36900.37000.37100.37500.38200.51900.55900.1030300 | Toilet_Level Marking | 1d | 2026-06-14 | 2026-06-14 | 9499 |  | 7 Days Work | 9307194 |
| 9501 | 36900.37000.37100.37500.38200.51900.55900.1030400 | Toilet_Chasing work for Electrical conduit & concealed plumbing | 5d | 2026-06-15 | 2026-06-19 | 9500 |  | 7 Days Work | 9307204 |
| 9502 | 36900.37000.37100.37500.38200.51900.55900.1030500 | Toilet_Plumbing work 1st fix | 5d | 2026-06-20 | 2026-06-24 | 9501 |  | 7 Days Work | 9307214 |
| 9503 | 36900.37000.37100.37500.38200.51900.55900.1030600 | Toilet_Sleeve/Bore Packing | 5d | 2026-06-25 | 2026-06-29 | 9502 |  | 7 Days Work | 9307224 |
| 9504 | 36900.37000.37100.37500.38200.51900.55900.1030700 | Toilet_Waterproofing | 10d | 2026-06-30 | 2026-07-09 | 9503 |  | 7 Days Work | 9307234 |
| 9505 | 36900.37000.37100.37500.38200.51900.55900.1030800 | Toilet_Screed | 1d | 2026-07-10 | 2026-07-10 | 9504 |  | 7 Days Work | 9307244 |
| 9506 | 36900.37000.37100.37500.38200.51900.55900.1030900 | Toilet_Plumbing 2nd fix | 5d | 2026-07-11 | 2026-07-15 | 9505 |  | 7 Days Work | 9307254 |
| 9507 | 36900.37000.37100.37500.38200.51900.55900.1031000 | Toilet_Ledge wall | 5d | 2026-07-16 | 2026-07-20 | 9506 |  | 7 Days Work | 9307264 |
| 9508 | 36900.37000.37100.37500.38200.51900.55900.1031100 | Toilet_Cement Plaster | 5d | 2026-07-21 | 2026-07-25 | 9507 |  | 7 Days Work | 9307274 |
| 9509 | 36900.37000.37100.37500.38200.51900.55900.1031200 | Toilet_Door Frame | 1d | 2026-07-26 | 2026-07-26 | 9508 |  | 7 Days Work | 9307284 |
| 9510 | 36900.37000.37100.37500.38200.51900.55900.1031300 | Toilet_Wash basin & Couter | 3d | 2026-07-27 | 2026-07-29 | 9509 |  | 7 Days Work | 9307294 |
| 9511 | 36900.37000.37100.37500.38200.51900.55900.1031400 | Toilet_Wall dado | 20d | 2026-07-30 | 2026-08-18 | 9510 |  | 7 Days Work | 9307304 |
| 9512 | 36900.37000.37100.37500.38200.51900.55900.1031500 | Toilet_Granite Work-Ledge wall top | 3d | 2026-08-19 | 2026-08-21 | 9511 |  | 7 Days Work | 9307314 |
| 9513 | 36900.37000.37100.37500.38200.51900.55900.1031600 | Toilet_Floor Tilling work | 20d | 2026-08-22 | 2026-09-10 | 9512 |  | 7 Days Work | 9307324 |
| 9514 | 36900.37000.37100.37500.38200.51900.55900.1031700 | Toilet_1st row of dado | 5d | 2026-09-11 | 2026-09-15 | 9513 |  | 7 Days Work | 9307334 |
| 9515 | 36900.37000.37100.37500.38200.51900.55900.1031800 | Toilet_Window Fixing | 14d | 2026-09-16 | 2026-09-29 | 9514 |  | 7 Days Work | 9307344 |
| 9516 | 36900.37000.37100.37500.38200.51900.55900.1031900 | Toilet_Services above False ceiling | 21d | 2026-09-30 | 2026-10-20 | 9515 |  | 7 Days Work | 9307354 |
| 9517 | 36900.37000.37100.37500.38200.51900.55900.1032000 | Toilet_False Ceiling framing | 12d | 2026-10-21 | 2026-11-01 | 9516 |  | 7 Days Work | 9307364 |
| 9518 | 36900.37000.37100.37500.38200.51900.55900.1032100 | Toilet_Door Frame | 5d | 2026-11-02 | 2026-11-06 | 9517 |  | 7 Days Work | 9307374 |
| 9519 | 36900.37000.37100.37500.38200.51900.55900.1032200 | Toilet_Epoxy Tile Grouting | 7d | 2027-01-02 | 2027-01-08 | 9494SS |  | 7 Days Work | 9307384 |
| 9520 | 36900.37000.37100.37500.38200.51900.55900.1032300 | Toilet_False ceiling board fixing, CP Sanitary Fixture, Electric Fixture | 21d | 2027-01-09 | 2027-01-29 | 9519 |  | 7 Days Work | 9307394 |
| 9521 | 36900.37000.37100.37500.38200.52000 | **19th Habitable/20th Floor** | 245d | 2026-06-09 | 2027-02-08 |  | start no earlier than 2026-06-09 | 7 Days Work | 9293884 |
| 9522 | 36900.37000.37100.37500.38200.52000.712400 | Post Pour | 7d | 2026-06-09 | 2026-06-15 | 8436FS+15d |  | 7 Days Work | 9300924 |
| 9523 | 36900.37000.37100.37500.38200.52000.712500 | MEP Clearance -1 | 5d | 2026-06-16 | 2026-06-20 | 9522 |  | 7 Days Work | 9300934 |
| 9524 | 36900.37000.37100.37500.38200.52000.712600 | Benchmark | 1d | 2026-06-21 | 2026-06-21 | 9523 |  | 7 Days Work | 9300944 |
| 9525 | 36900.37000.37100.37500.38200.52000.712700 | Temporary Railing | 3d | 2026-06-22 | 2026-06-24 | 9524 |  | 7 Days Work | 9300954 |
| 9526 | 36900.37000.37100.37500.38200.52000.712800 | Blockwork | 10d | 2026-06-25 | 2026-07-04 | 9525 |  | 7 Days Work | 9300964 |
| 9527 | 36900.37000.37100.37500.38200.52000.712900 | MEP Clearance -2 | 10d | 2026-07-05 | 2026-07-14 | 9526 |  | 7 Days Work | 9300974 |
| 9528 | 36900.37000.37100.37500.38200.52000.713000 | Gypsum Plaster | 14d | 2026-07-15 | 2026-07-28 | 9527 |  | 7 Days Work | 9300984 |
| 9529 | 36900.37000.37100.37500.38200.52000.713100 | Kitchen Platform | 3d | 2026-07-29 | 2026-07-31 | 9528 |  | 7 Days Work | 9300994 |
| 9530 | 36900.37000.37100.37500.38200.52000.713200 | Kitchen dado | 7d | 2026-08-01 | 2026-08-07 | 9529 |  | 7 Days Work | 9301004 |
| 9531 | 36900.37000.37100.37500.38200.52000.713300 | Fire Fighting | 5d | 2026-08-08 | 2026-08-12 | 9530 |  | 7 Days Work | 9301014 |
| 9532 | 36900.37000.37100.37500.38200.52000.713400 | Anticapilary | 5d | 2026-08-13 | 2026-08-17 | 9531 |  | 7 Days Work | 9301024 |
| 9533 | 36900.37000.37100.37500.38200.52000.713500 | Stone Laying | 10d | 2026-09-20 | 2026-09-29 | 9573 |  | 7 Days Work | 9301034 |
| 9534 | 36900.37000.37100.37500.38200.52000.713600 | Tiles Laying | 7d | 2026-09-20 | 2026-09-26 | 9573 |  | 7 Days Work | 9301044 |
| 9535 | 36900.37000.37100.37500.38200.52000.713700 | 1st cutting/polishing of stone flooring | 7d | 2026-09-27 | 2026-10-03 | 9534 |  | 7 Days Work | 9301054 |
| 9536 | 36900.37000.37100.37500.38200.52000.713800 | Tiles/Stone skirting | 5d | 2026-10-04 | 2026-10-08 | 9535 |  | 7 Days Work | 9301064 |
| 9537 | 36900.37000.37100.37500.38200.52000.713900 | Protechtion sheet | 1d | 2026-10-09 | 2026-10-09 | 9536 |  | 7 Days Work | 9301074 |
| 9538 | 36900.37000.37100.37500.38200.52000.714000 | Installation of Temporary Door | 1d | 2026-10-10 | 2026-10-10 | 9537 |  | 7 Days Work | 9301084 |
| 9539 | 36900.37000.37100.37500.38200.52000.714100 | Fixing of window tracks | 5d | 2026-10-11 | 2026-10-15 | 9538 |  | 7 Days Work | 9301094 |
| 9540 | 36900.37000.37100.37500.38200.52000.714200 | Wire Pulling | 7d | 2026-10-16 | 2026-10-22 | 9539 |  | 7 Days Work | 9301104 |
| 9541 | 36900.37000.37100.37500.38200.52000.714300 | Gypsum Remaining | 5d | 2026-10-23 | 2026-10-27 | 9540 |  | 7 Days Work | 9301114 |
| 9542 | 36900.37000.37100.37500.38200.52000.714400 | Fixing of windoow shutter | 5d | 2026-10-28 | 2026-11-01 | 9541 |  | 7 Days Work | 9301124 |
| 9543 | 36900.37000.37100.37500.38200.52000.714500 | Putty Works - walls & ceiling | 15d | 2026-11-02 | 2026-11-16 | 9542 |  | 7 Days Work | 9301134 |
| 9544 | 36900.37000.37100.37500.38200.52000.714600 | False Ceiling- Framing | 10d | 2026-11-17 | 2026-11-26 | 9543 |  | 7 Days Work | 9301144 |
| 9545 | 36900.37000.37100.37500.38200.52000.714700 | Pre Hung Door | 3d | 2026-11-27 | 2026-11-29 | 9544 |  | 7 Days Work | 9301154 |
| 9546 | 36900.37000.37100.37500.38200.52000.714800 | Protechtion sheet | 2d | 2026-11-30 | 2026-12-01 | 9545 |  | 7 Days Work | 9301164 |
| 9547 | 36900.37000.37100.37500.38200.52000.714900 | Skirting near door | 2d | 2026-12-02 | 2026-12-03 | 9546 |  | 7 Days Work | 9301174 |
| 9548 | 36900.37000.37100.37500.38200.52000.715000 | Electrical Switch box fixing | 14d | 2026-12-04 | 2026-12-17 | 9547 |  | 7 Days Work | 9301184 |
| 9549 | 36900.37000.37100.37500.38200.52000.715100 | Fire Fighting painting | 5d | 2026-12-18 | 2026-12-22 | 9548 |  | 7 Days Work | 9301194 |
| 9550 | 36900.37000.37100.37500.38200.52000.715200 | Protection of all flooring, door & window hardware | 5d | 2026-12-23 | 2026-12-27 | 9549 |  | 7 Days Work | 9301204 |
| 9551 | 36900.37000.37100.37500.38200.52000.715300 | 1st coat primer- ceiling 1st & walls | 14d | 2026-12-28 | 2027-01-10 | 9550 |  | 7 Days Work | 9301214 |
| 9552 | 36900.37000.37100.37500.38200.52000.715400 | Wooden Flooring | 5d | 2027-01-11 | 2027-01-15 | 9551 |  | 7 Days Work | 9301224 |
| 9553 | 36900.37000.37100.37500.38200.52000.715500 | Removing of Temporary Railing & installation of Glass Railing | 5d | 2027-01-11 | 2027-01-15 | 9551 |  | 7 Days Work | 9301234 |
| 9554 | 36900.37000.37100.37500.38200.52000.715600 | Tile Grouting | 7d | 2027-01-11 | 2027-01-17 | 9551 |  | 7 Days Work | 9301244 |
| 9555 | 36900.37000.37100.37500.38200.52000.715700 | False Ceiling | 5d | 2027-01-18 | 2027-01-22 | 9554 |  | 7 Days Work | 9301254 |
| 9556 | 36900.37000.37100.37500.38200.52000.715800 | 2nd coat of primer | 10d | 2027-01-23 | 2027-02-01 | 9555 |  | 7 Days Work | 9301264 |
| 9557 | 36900.37000.37100.37500.38200.52000.715900 | Final cutting/polishing of stone flooring | 7d | 2027-02-02 | 2027-02-08 | 9556 |  | 7 Days Work | 9301274 |

| ID | WBS | Task | Duration | Start | Finish | Predecessors | Constraint | Calendar | Unique_Task_ID |
| --- | --- | --- | --- | --- | --- | --- | --- | --- | --- |
| 9558 | 36900.37000.37100.37500.38200.52000.56000 | **Toilet** | 237d | 2026-06-16 | 2027-02-07 |  | start no earlier than 2026-06-16 | 7 Days Work | 9294094 |
| 9559 | 36900.37000.37100.37500.38200.52000.56000.1032400 | Toilet_MEP Clearance -1 | 7d | 2026-06-16 | 2026-06-22 | 9522 |  | 7 Days Work | 9307404 |
| 9560 | 36900.37000.37100.37500.38200.52000.56000.1032500 | Toilet_Level Marking | 1d | 2026-06-23 | 2026-06-23 | 9559 |  | 7 Days Work | 9307414 |
| 9561 | 36900.37000.37100.37500.38200.52000.56000.1032600 | Toilet_Chasing work for Electrical conduit & concealed plumbing | 5d | 2026-06-24 | 2026-06-28 | 9560 |  | 7 Days Work | 9307424 |
| 9562 | 36900.37000.37100.37500.38200.52000.56000.1032700 | Toilet_Plumbing work 1st fix | 5d | 2026-06-29 | 2026-07-03 | 9561 |  | 7 Days Work | 9307434 |
| 9563 | 36900.37000.37100.37500.38200.52000.56000.1032800 | Toilet_Sleeve/Bore Packing | 5d | 2026-07-04 | 2026-07-08 | 9562 |  | 7 Days Work | 9307444 |
| 9564 | 36900.37000.37100.37500.38200.52000.56000.1032900 | Toilet_Waterproofing | 10d | 2026-07-09 | 2026-07-18 | 9563 |  | 7 Days Work | 9307454 |
| 9565 | 36900.37000.37100.37500.38200.52000.56000.1033000 | Toilet_Screed | 1d | 2026-07-19 | 2026-07-19 | 9564 |  | 7 Days Work | 9307464 |
| 9566 | 36900.37000.37100.37500.38200.52000.56000.1033100 | Toilet_Plumbing 2nd fix | 5d | 2026-07-20 | 2026-07-24 | 9565 |  | 7 Days Work | 9307474 |
| 9567 | 36900.37000.37100.37500.38200.52000.56000.1033200 | Toilet_Ledge wall | 5d | 2026-07-25 | 2026-07-29 | 9566 |  | 7 Days Work | 9307484 |
| 9568 | 36900.37000.37100.37500.38200.52000.56000.1033300 | Toilet_Cement Plaster | 5d | 2026-07-30 | 2026-08-03 | 9567 |  | 7 Days Work | 9307494 |
| 9569 | 36900.37000.37100.37500.38200.52000.56000.1033400 | Toilet_Door Frame | 1d | 2026-08-04 | 2026-08-04 | 9568 |  | 7 Days Work | 9307504 |
| 9570 | 36900.37000.37100.37500.38200.52000.56000.1033500 | Toilet_Wash basin & Couter | 3d | 2026-08-05 | 2026-08-07 | 9569 |  | 7 Days Work | 9307514 |
| 9571 | 36900.37000.37100.37500.38200.52000.56000.1033600 | Toilet_Wall dado | 20d | 2026-08-08 | 2026-08-27 | 9570 |  | 7 Days Work | 9307524 |
| 9572 | 36900.37000.37100.37500.38200.52000.56000.1033700 | Toilet_Granite Work-Ledge wall top | 3d | 2026-08-28 | 2026-08-30 | 9571 |  | 7 Days Work | 9307534 |
| 9573 | 36900.37000.37100.37500.38200.52000.56000.1033800 | Toilet_Floor Tilling work | 20d | 2026-08-31 | 2026-09-19 | 9572 |  | 7 Days Work | 9307544 |
| 9574 | 36900.37000.37100.37500.38200.52000.56000.1033900 | Toilet_1st row of dado | 5d | 2026-09-20 | 2026-09-24 | 9573 |  | 7 Days Work | 9307554 |
| 9575 | 36900.37000.37100.37500.38200.52000.56000.1034000 | Toilet_Window Fixing | 14d | 2026-09-25 | 2026-10-08 | 9574 |  | 7 Days Work | 9307564 |
| 9576 | 36900.37000.37100.37500.38200.52000.56000.1034100 | Toilet_Services above False ceiling | 21d | 2026-10-09 | 2026-10-29 | 9575 |  | 7 Days Work | 9307574 |
| 9577 | 36900.37000.37100.37500.38200.52000.56000.1034200 | Toilet_False Ceiling framing | 12d | 2026-10-30 | 2026-11-10 | 9576 |  | 7 Days Work | 9307584 |
| 9578 | 36900.37000.37100.37500.38200.52000.56000.1034300 | Toilet_Door Frame | 5d | 2026-11-11 | 2026-11-15 | 9577 |  | 7 Days Work | 9307594 |
| 9579 | 36900.37000.37100.37500.38200.52000.56000.1034400 | Toilet_Epoxy Tile Grouting | 7d | 2027-01-11 | 2027-01-17 | 9554SS |  | 7 Days Work | 9307604 |
| 9580 | 36900.37000.37100.37500.38200.52000.56000.1034500 | Toilet_False ceiling board fixing, CP Sanitary Fixture, Electric Fixture | 21d | 2027-01-18 | 2027-02-07 | 9579 |  | 7 Days Work | 9307614 |
| 9581 | 36900.37000.37100.37500.38200.52100 | **20th Habitable/21st Floor** | 245d | 2026-06-21 | 2027-02-20 |  | start no earlier than 2026-06-21 | 7 Days Work | 9293894 |
| 9582 | 36900.37000.37100.37500.38200.52100.716000 | Post Pour | 7d | 2026-06-21 | 2026-06-27 | 8437FS+15d |  | 7 Days Work | 9301284 |
| 9583 | 36900.37000.37100.37500.38200.52100.716100 | MEP Clearance -1 | 5d | 2026-06-28 | 2026-07-02 | 9582 |  | 7 Days Work | 9301294 |
| 9584 | 36900.37000.37100.37500.38200.52100.716200 | Benchmark | 1d | 2026-07-03 | 2026-07-03 | 9583 |  | 7 Days Work | 9301304 |
| 9585 | 36900.37000.37100.37500.38200.52100.716300 | Temporary Railing | 3d | 2026-07-04 | 2026-07-06 | 9584 |  | 7 Days Work | 9301314 |
| 9586 | 36900.37000.37100.37500.38200.52100.716400 | Blockwork | 10d | 2026-07-07 | 2026-07-16 | 9585 |  | 7 Days Work | 9301324 |
| 9587 | 36900.37000.37100.37500.38200.52100.716500 | MEP Clearance -2 | 10d | 2026-07-17 | 2026-07-26 | 9586 |  | 7 Days Work | 9301334 |
| 9588 | 36900.37000.37100.37500.38200.52100.716600 | Gypsum Plaster | 14d | 2026-07-27 | 2026-08-09 | 9587 |  | 7 Days Work | 9045074 |
| 9589 | 36900.37000.37100.37500.38200.52100.716700 | Kitchen Platform | 3d | 2026-08-10 | 2026-08-12 | 9588 |  | 7 Days Work | 9301354 |
| 9590 | 36900.37000.37100.37500.38200.52100.716800 | Kitchen dado | 7d | 2026-08-13 | 2026-08-19 | 9589 |  | 7 Days Work | 9301364 |
| 9591 | 36900.37000.37100.37500.38200.52100.716900 | Fire Fighting | 5d | 2026-08-20 | 2026-08-24 | 9590 |  | 7 Days Work | 9301374 |
| 9592 | 36900.37000.37100.37500.38200.52100.717000 | Anticapilary | 5d | 2026-08-25 | 2026-08-29 | 9591 |  | 7 Days Work | 9301384 |
| 9593 | 36900.37000.37100.37500.38200.52100.717100 | Stone Laying | 10d | 2026-10-02 | 2026-10-11 | 9633 |  | 7 Days Work | 9301394 |
| 9594 | 36900.37000.37100.37500.38200.52100.717200 | Tiles Laying | 7d | 2026-10-02 | 2026-10-08 | 9593SS |  | 7 Days Work | 9045084 |
| 9595 | 36900.37000.37100.37500.38200.52100.717300 | 1st cutting/polishing of stone flooring | 7d | 2026-10-09 | 2026-10-15 | 9594 |  | 7 Days Work | 9301414 |
| 9596 | 36900.37000.37100.37500.38200.52100.717400 | Tiles/Stone skirting | 5d | 2026-10-16 | 2026-10-20 | 9595 |  | 7 Days Work | 9301424 |
| 9597 | 36900.37000.37100.37500.38200.52100.717500 | Protechtion sheet | 1d | 2026-10-21 | 2026-10-21 | 9596 |  | 7 Days Work | 9301434 |
| 9598 | 36900.37000.37100.37500.38200.52100.717600 | Installation of Temporary Door | 1d | 2026-10-22 | 2026-10-22 | 9597 |  | 7 Days Work | 9301444 |
| 9599 | 36900.37000.37100.37500.38200.52100.717700 | Fixing of window tracks | 5d | 2026-10-23 | 2026-10-27 | 9598 |  | 7 Days Work | 9301454 |
| 9600 | 36900.37000.37100.37500.38200.52100.717800 | Wire Pulling | 7d | 2026-10-28 | 2026-11-03 | 9599 |  | 7 Days Work | 9301464 |
| 9601 | 36900.37000.37100.37500.38200.52100.717900 | Gypsum Remaining | 5d | 2026-11-04 | 2026-11-08 | 9600 |  | 7 Days Work | 9301474 |
| 9602 | 36900.37000.37100.37500.38200.52100.718000 | Fixing of windoow shutter | 5d | 2026-11-09 | 2026-11-13 | 9601 |  | 7 Days Work | 9301484 |
| 9603 | 36900.37000.37100.37500.38200.52100.718100 | Putty Works - walls & ceiling | 15d | 2026-11-14 | 2026-11-28 | 9602 |  | 7 Days Work | 9301494 |
| 9604 | 36900.37000.37100.37500.38200.52100.718200 | False Ceiling- Framing | 10d | 2026-11-29 | 2026-12-08 | 9603 |  | 7 Days Work | 9301504 |
| 9605 | 36900.37000.37100.37500.38200.52100.718300 | Pre Hung Door | 3d | 2026-12-09 | 2026-12-11 | 9604 |  | 7 Days Work | 9301514 |
| 9606 | 36900.37000.37100.37500.38200.52100.718400 | Protechtion sheet | 2d | 2026-12-12 | 2026-12-13 | 9605 |  | 7 Days Work | 9301524 |
| 9607 | 36900.37000.37100.37500.38200.52100.718500 | Skirting near door | 2d | 2026-12-14 | 2026-12-15 | 9606 |  | 7 Days Work | 9301534 |
| 9608 | 36900.37000.37100.37500.38200.52100.718600 | Electrical Switch box fixing | 14d | 2026-12-16 | 2026-12-29 | 9607 |  | 7 Days Work | 9301544 |
| 9609 | 36900.37000.37100.37500.38200.52100.718700 | Fire Fighting painting | 5d | 2026-12-30 | 2027-01-03 | 9608 |  | 7 Days Work | 9301554 |
| 9610 | 36900.37000.37100.37500.38200.52100.718800 | Protection of all flooring, door & window hardware | 5d | 2027-01-04 | 2027-01-08 | 9609 |  | 7 Days Work | 9301564 |
| 9611 | 36900.37000.37100.37500.38200.52100.718900 | 1st coat primer- ceiling 1st & walls | 14d | 2027-01-09 | 2027-01-22 | 9610 |  | 7 Days Work | 9301574 |
| 9612 | 36900.37000.37100.37500.38200.52100.719000 | Wooden Flooring | 5d | 2027-01-23 | 2027-01-27 | 9611 |  | 7 Days Work | 9301584 |
| 9613 | 36900.37000.37100.37500.38200.52100.719100 | Removing of Temporary Railing & installation of Glass Railing | 5d | 2027-01-23 | 2027-01-27 | 9611 |  | 7 Days Work | 9301594 |
| 9614 | 36900.37000.37100.37500.38200.52100.719200 | Tile Grouting | 7d | 2027-01-23 | 2027-01-29 | 9611 |  | 7 Days Work | 9301604 |
| 9615 | 36900.37000.37100.37500.38200.52100.719300 | False Ceiling | 5d | 2027-01-30 | 2027-02-03 | 9614 |  | 7 Days Work | 9301614 |
| 9616 | 36900.37000.37100.37500.38200.52100.719400 | 2nd coat of primer | 10d | 2027-02-04 | 2027-02-13 | 9615 |  | 7 Days Work | 9301624 |
| 9617 | 36900.37000.37100.37500.38200.52100.719500 | Final cutting/polishing of stone flooring | 7d | 2027-02-14 | 2027-02-20 | 9616 |  | 7 Days Work | 9301634 |

| ID | WBS | Task | Duration | Start | Finish | Predecessors | Constraint | Calendar | Unique_Task_ID |
| --- | --- | --- | --- | --- | --- | --- | --- | --- | --- |
| 9618 | 36900.37000.37100.37500.38200.52100.56100 | **Toilet** | 237d | 2026-06-28 | 2027-02-19 |  | start no earlier than 2026-06-28 | 7 Days Work | 9294104 |
| 9619 | 36900.37000.37100.37500.38200.52100.56100.1034600 | Toilet_MEP Clearance -1 | 7d | 2026-06-28 | 2026-07-04 | 9582 |  | 7 Days Work | 9307624 |
| 9620 | 36900.37000.37100.37500.38200.52100.56100.1034700 | Toilet_Level Marking | 1d | 2026-07-05 | 2026-07-05 | 9619 |  | 7 Days Work | 9307634 |
| 9621 | 36900.37000.37100.37500.38200.52100.56100.1034800 | Toilet_Chasing work for Electrical conduit & concealed plumbing | 5d | 2026-07-06 | 2026-07-10 | 9620 |  | 7 Days Work | 9307644 |
| 9622 | 36900.37000.37100.37500.38200.52100.56100.1034900 | Toilet_Plumbing work 1st fix | 5d | 2026-07-11 | 2026-07-15 | 9621 |  | 7 Days Work | 9307654 |
| 9623 | 36900.37000.37100.37500.38200.52100.56100.1035000 | Toilet_Sleeve/Bore Packing | 5d | 2026-07-16 | 2026-07-20 | 9622 |  | 7 Days Work | 9307664 |
| 9624 | 36900.37000.37100.37500.38200.52100.56100.1035100 | Toilet_Waterproofing | 10d | 2026-07-21 | 2026-07-30 | 9623 |  | 7 Days Work | 9307674 |
| 9625 | 36900.37000.37100.37500.38200.52100.56100.1035200 | Toilet_Screed | 1d | 2026-07-31 | 2026-07-31 | 9624 |  | 7 Days Work | 9307684 |
| 9626 | 36900.37000.37100.37500.38200.52100.56100.1035300 | Toilet_Plumbing 2nd fix | 5d | 2026-08-01 | 2026-08-05 | 9625 |  | 7 Days Work | 9307694 |
| 9627 | 36900.37000.37100.37500.38200.52100.56100.1035400 | Toilet_Ledge wall | 5d | 2026-08-06 | 2026-08-10 | 9626 |  | 7 Days Work | 9307704 |
| 9628 | 36900.37000.37100.37500.38200.52100.56100.1035500 | Toilet_Cement Plaster | 5d | 2026-08-11 | 2026-08-15 | 9627 |  | 7 Days Work | 9307714 |
| 9629 | 36900.37000.37100.37500.38200.52100.56100.1035600 | Toilet_Door Frame | 1d | 2026-08-16 | 2026-08-16 | 9628 |  | 7 Days Work | 9307724 |
| 9630 | 36900.37000.37100.37500.38200.52100.56100.1035700 | Toilet_Wash basin & Couter | 3d | 2026-08-17 | 2026-08-19 | 9629 |  | 7 Days Work | 9307734 |
| 9631 | 36900.37000.37100.37500.38200.52100.56100.1035800 | Toilet_Wall dado | 20d | 2026-08-20 | 2026-09-08 | 9630 |  | 7 Days Work | 9307744 |
| 9632 | 36900.37000.37100.37500.38200.52100.56100.1035900 | Toilet_Granite Work-Ledge wall top | 3d | 2026-09-09 | 2026-09-11 | 9631 |  | 7 Days Work | 9307754 |
| 9633 | 36900.37000.37100.37500.38200.52100.56100.1036000 | Toilet_Floor Tilling work | 20d | 2026-09-12 | 2026-10-01 | 9632 |  | 7 Days Work | 9307764 |
| 9634 | 36900.37000.37100.37500.38200.52100.56100.1036100 | Toilet_1st row of dado | 5d | 2026-10-02 | 2026-10-06 | 9633 |  | 7 Days Work | 9307774 |
| 9635 | 36900.37000.37100.37500.38200.52100.56100.1036200 | Toilet_Window Fixing | 14d | 2026-10-07 | 2026-10-20 | 9634 |  | 7 Days Work | 9307784 |
| 9636 | 36900.37000.37100.37500.38200.52100.56100.1036300 | Toilet_Services above False ceiling | 21d | 2026-10-21 | 2026-11-10 | 9635 |  | 7 Days Work | 9307794 |
| 9637 | 36900.37000.37100.37500.38200.52100.56100.1036400 | Toilet_False Ceiling framing | 12d | 2026-11-11 | 2026-11-22 | 9636 |  | 7 Days Work | 9307804 |
| 9638 | 36900.37000.37100.37500.38200.52100.56100.1036500 | Toilet_Door Frame | 5d | 2026-11-23 | 2026-11-27 | 9637 |  | 7 Days Work | 9307814 |
| 9639 | 36900.37000.37100.37500.38200.52100.56100.1036600 | Toilet_Epoxy Tile Grouting | 7d | 2027-01-23 | 2027-01-29 | 9614SS |  | 7 Days Work | 9307824 |
| 9640 | 36900.37000.37100.37500.38200.52100.56100.1036700 | Toilet_False ceiling board fixing, CP Sanitary Fixture, Electric Fixture | 21d | 2027-01-30 | 2027-02-19 | 9639 |  | 7 Days Work | 9307834 |
| 9641 | 36900.37000.37100.37500.52300 | **Common area Finishing** | 329d | 2026-08-22 | 2027-07-16 |  | start no earlier than 2026-08-22 | 7 Days Work | 9293904 |
| 9642 | 36900.37000.37100.37500.52300.69200 | **1st Habitable/2nd Floor** | 158d | 2026-08-22 | 2027-01-26 |  | start no earlier than 2026-08-22 | 7 Days Work | 9294124 |
| 9643 | 36900.37000.37100.37500.52300.69200.719600 | Side blockwork for lift shafts | 9d | 2026-08-22 | 2026-08-30 | 9848 |  | 7 Days Work | 9301644 |
| 9644 | 36900.37000.37100.37500.52300.69200.719700 | Door Threshold for lifts | 6d | 2026-08-31 | 2026-09-05 | 9643 |  | 7 Days Work | 9301654 |
| 9645 | 36900.37000.37100.37500.52300.69200.719800 | Granite Cladding | 10d | 2026-09-06 | 2026-09-15 | 9644 |  | 7 Days Work | 9301664 |
| 9646 | 36900.37000.37100.37500.52300.69200.719900 | MEP Services | 60d | 2026-09-16 | 2026-11-14 | 9645 |  | 7 Days Work | 9301674 |
| 9647 | 36900.37000.37100.37500.52300.69200.720000 | Flooring+Skirting | 20d | 2026-11-15 | 2026-12-04 | 9646 |  | 7 Days Work | 9301684 |
| 9648 | 36900.37000.37100.37500.52300.69200.720100 | Wall finishes | 21d | 2026-12-05 | 2026-12-25 | 9647 |  | 7 Days Work | 9301694 |
| 9649 | 36900.37000.37100.37500.52300.69200.720200 | False Ceiling | 10d | 2026-12-26 | 2027-01-04 | 9648 |  | 7 Days Work | 9301704 |
| 9650 | 36900.37000.37100.37500.52300.69200.720300 | Staircase | 15d | 2027-01-05 | 2027-01-19 | 9649 |  | 7 Days Work | 9301714 |
| 9651 | 36900.37000.37100.37500.52300.69200.720400 | Deep Cleaning | 7d | 2027-01-20 | 2027-01-26 | 9650 |  | 7 Days Work | 9301724 |

| ID | WBS | Task | Duration | Start | Finish | Predecessors | Constraint | Calendar | Unique_Task_ID |
| --- | --- | --- | --- | --- | --- | --- | --- | --- | --- |
| 9652 | 36900.37000.37100.37500.52300.69100 | **2nd Habitable/3rd Floor** | 158d | 2026-08-31 | 2027-02-04 |  | start no earlier than 2026-08-31 | 7 Days Work | 9294134 |
| 9653 | 36900.37000.37100.37500.52300.69100.720500 | Side blockwork for lift shafts | 9d | 2026-08-31 | 2026-09-08 | 9643 |  | 7 Days Work | 9301734 |
| 9654 | 36900.37000.37100.37500.52300.69100.720600 | Door Threshold for lifts | 6d | 2026-09-09 | 2026-09-14 | 9653 |  | 7 Days Work | 9301744 |
| 9655 | 36900.37000.37100.37500.52300.69100.720700 | Granite Cladding | 10d | 2026-09-15 | 2026-09-24 | 9654 |  | 7 Days Work | 9301754 |
| 9656 | 36900.37000.37100.37500.52300.69100.720800 | MEP Services | 60d | 2026-09-25 | 2026-11-23 | 9655 |  | 7 Days Work | 9301764 |
| 9657 | 36900.37000.37100.37500.52300.69100.720900 | Flooring+Skirting | 20d | 2026-11-24 | 2026-12-13 | 9656 |  | 7 Days Work | 9301774 |
| 9658 | 36900.37000.37100.37500.52300.69100.721000 | Wall finishes | 21d | 2026-12-14 | 2027-01-03 | 9657 |  | 7 Days Work | 9301784 |
| 9659 | 36900.37000.37100.37500.52300.69100.721100 | False Ceiling | 10d | 2027-01-04 | 2027-01-13 | 9658 |  | 7 Days Work | 9301794 |
| 9660 | 36900.37000.37100.37500.52300.69100.721200 | Staircase | 15d | 2027-01-14 | 2027-01-28 | 9659 |  | 7 Days Work | 9301804 |
| 9661 | 36900.37000.37100.37500.52300.69100.721300 | Deep Cleaning | 7d | 2027-01-29 | 2027-02-04 | 9660 |  | 7 Days Work | 9301814 |
| 9662 | 36900.37000.37100.37500.52300.69000 | **3rd Habitable/4th Floor** | 158d | 2026-09-09 | 2027-02-13 |  | start no earlier than 2026-09-09 | 7 Days Work | 9294144 |
| 9663 | 36900.37000.37100.37500.52300.69000.721400 | Side blockwork for lift shafts | 9d | 2026-09-09 | 2026-09-17 | 9653 |  | 7 Days Work | 9301824 |
| 9664 | 36900.37000.37100.37500.52300.69000.721500 | Door Threshold for lifts | 6d | 2026-09-18 | 2026-09-23 | 9663 |  | 7 Days Work | 9301834 |
| 9665 | 36900.37000.37100.37500.52300.69000.721600 | Granite Cladding | 10d | 2026-09-24 | 2026-10-03 | 9664 |  | 7 Days Work | 9301844 |
| 9666 | 36900.37000.37100.37500.52300.69000.721700 | MEP Services | 60d | 2026-10-04 | 2026-12-02 | 9665 |  | 7 Days Work | 9301854 |
| 9667 | 36900.37000.37100.37500.52300.69000.721800 | Flooring+Skirting | 20d | 2026-12-03 | 2026-12-22 | 9666 |  | 7 Days Work | 9301864 |
| 9668 | 36900.37000.37100.37500.52300.69000.721900 | Wall finishes | 21d | 2026-12-23 | 2027-01-12 | 9667 |  | 7 Days Work | 9301874 |
| 9669 | 36900.37000.37100.37500.52300.69000.722000 | False Ceiling | 10d | 2027-01-13 | 2027-01-22 | 9668 |  | 7 Days Work | 9301884 |
| 9670 | 36900.37000.37100.37500.52300.69000.722100 | Staircase | 15d | 2027-01-23 | 2027-02-06 | 9669 |  | 7 Days Work | 9301894 |
| 9671 | 36900.37000.37100.37500.52300.69000.722200 | Deep Cleaning | 7d | 2027-02-07 | 2027-02-13 | 9670 |  | 7 Days Work | 9301904 |
| 9672 | 36900.37000.37100.37500.52300.68900 | **4th Habitable/5th Floor** | 158d | 2026-09-18 | 2027-02-22 |  | start no earlier than 2026-09-18 | 7 Days Work | 9294154 |
| 9673 | 36900.37000.37100.37500.52300.68900.722300 | Side blockwork for lift shafts | 9d | 2026-09-18 | 2026-09-26 | 9663 |  | 7 Days Work | 9301914 |
| 9674 | 36900.37000.37100.37500.52300.68900.722400 | Door Threshold for lifts | 6d | 2026-09-27 | 2026-10-02 | 9673 |  | 7 Days Work | 9301924 |
| 9675 | 36900.37000.37100.37500.52300.68900.722500 | Granite Cladding | 10d | 2026-10-03 | 2026-10-12 | 9674 |  | 7 Days Work | 9301934 |
| 9676 | 36900.37000.37100.37500.52300.68900.722600 | MEP Services | 60d | 2026-10-13 | 2026-12-11 | 9675 |  | 7 Days Work | 9301944 |
| 9677 | 36900.37000.37100.37500.52300.68900.722700 | Flooring+Skirting | 20d | 2026-12-12 | 2026-12-31 | 9676 |  | 7 Days Work | 9301954 |
| 9678 | 36900.37000.37100.37500.52300.68900.722800 | Wall finishes | 21d | 2027-01-01 | 2027-01-21 | 9677 |  | 7 Days Work | 9301964 |
| 9679 | 36900.37000.37100.37500.52300.68900.722900 | False Ceiling | 10d | 2027-01-22 | 2027-01-31 | 9678 |  | 7 Days Work | 9301974 |
| 9680 | 36900.37000.37100.37500.52300.68900.723000 | Staircase | 15d | 2027-02-01 | 2027-02-15 | 9679 |  | 7 Days Work | 9301984 |
| 9681 | 36900.37000.37100.37500.52300.68900.723100 | Deep Cleaning | 7d | 2027-02-16 | 2027-02-22 | 9680 |  | 7 Days Work | 9301994 |

| ID | WBS | Task | Duration | Start | Finish | Predecessors | Constraint | Calendar | Unique_Task_ID |
| --- | --- | --- | --- | --- | --- | --- | --- | --- | --- |
| 9682 | 36900.37000.37100.37500.52300.68700 | **5th Habitable/6th Floor** | 158d | 2026-09-27 | 2027-03-03 |  | start no earlier than 2026-09-27 | 7 Days Work | 9294164 |
| 9683 | 36900.37000.37100.37500.52300.68700.723200 | Side blockwork for lift shafts | 9d | 2026-09-27 | 2026-10-05 | 9673 |  | 7 Days Work | 9302004 |
| 9684 | 36900.37000.37100.37500.52300.68700.723300 | Door Threshold for lifts | 6d | 2026-10-06 | 2026-10-11 | 9683 |  | 7 Days Work | 9302014 |
| 9685 | 36900.37000.37100.37500.52300.68700.723400 | Granite Cladding | 10d | 2026-10-12 | 2026-10-21 | 9684 |  | 7 Days Work | 9302024 |
| 9686 | 36900.37000.37100.37500.52300.68700.723500 | MEP Services | 60d | 2026-10-22 | 2026-12-20 | 9685 |  | 7 Days Work | 9302034 |
| 9687 | 36900.37000.37100.37500.52300.68700.723600 | Flooring+Skirting | 20d | 2026-12-21 | 2027-01-09 | 9686 |  | 7 Days Work | 9302044 |
| 9688 | 36900.37000.37100.37500.52300.68700.723700 | Wall finishes | 21d | 2027-01-10 | 2027-01-30 | 9687 |  | 7 Days Work | 9302054 |
| 9689 | 36900.37000.37100.37500.52300.68700.723800 | False Ceiling | 10d | 2027-01-31 | 2027-02-09 | 9688 |  | 7 Days Work | 9302064 |
| 9690 | 36900.37000.37100.37500.52300.68700.723900 | Staircase | 15d | 2027-02-10 | 2027-02-24 | 9689 |  | 7 Days Work | 9302074 |
| 9691 | 36900.37000.37100.37500.52300.68700.724000 | Deep Cleaning | 7d | 2027-02-25 | 2027-03-03 | 9690 |  | 7 Days Work | 9302084 |
| 9692 | 36900.37000.37100.37500.52300.68600 | **6th Habitable/7th Floor** | 158d | 2026-10-06 | 2027-03-12 |  | start no earlier than 2026-10-06 | 7 Days Work | 9294174 |
| 9693 | 36900.37000.37100.37500.52300.68600.724100 | Side blockwork for lift shafts | 9d | 2026-10-06 | 2026-10-14 | 9683 |  | 7 Days Work | 9302094 |
| 9694 | 36900.37000.37100.37500.52300.68600.724200 | Door Threshold for lifts | 6d | 2026-10-15 | 2026-10-20 | 9693 |  | 7 Days Work | 9302104 |
| 9695 | 36900.37000.37100.37500.52300.68600.724300 | Granite Cladding | 10d | 2026-10-21 | 2026-10-30 | 9694 |  | 7 Days Work | 9302114 |
| 9696 | 36900.37000.37100.37500.52300.68600.724400 | MEP Services | 60d | 2026-10-31 | 2026-12-29 | 9695 |  | 7 Days Work | 9302124 |
| 9697 | 36900.37000.37100.37500.52300.68600.724500 | Flooring+Skirting | 20d | 2026-12-30 | 2027-01-18 | 9696 |  | 7 Days Work | 9302134 |
| 9698 | 36900.37000.37100.37500.52300.68600.724600 | Wall finishes | 21d | 2027-01-19 | 2027-02-08 | 9697 |  | 7 Days Work | 9302144 |
| 9699 | 36900.37000.37100.37500.52300.68600.724700 | False Ceiling | 10d | 2027-02-09 | 2027-02-18 | 9698 |  | 7 Days Work | 9302154 |
| 9700 | 36900.37000.37100.37500.52300.68600.724800 | Staircase | 15d | 2027-02-19 | 2027-03-05 | 9699 |  | 7 Days Work | 9302164 |
| 9701 | 36900.37000.37100.37500.52300.68600.724900 | Deep Cleaning | 7d | 2027-03-06 | 2027-03-12 | 9700 |  | 7 Days Work | 9302174 |
| 9702 | 36900.37000.37100.37500.52300.68500 | **7th Habitable/8th Floor** | 158d | 2026-10-15 | 2027-03-21 |  | start no earlier than 2026-10-15 | 7 Days Work | 9294184 |
| 9703 | 36900.37000.37100.37500.52300.68500.725000 | Side blockwork for lift shafts | 9d | 2026-10-15 | 2026-10-23 | 9693 |  | 7 Days Work | 9302184 |
| 9704 | 36900.37000.37100.37500.52300.68500.725100 | Door Threshold for lifts | 6d | 2026-10-24 | 2026-10-29 | 9703 |  | 7 Days Work | 9302194 |
| 9705 | 36900.37000.37100.37500.52300.68500.725200 | Granite Cladding | 10d | 2026-10-30 | 2026-11-08 | 9704 |  | 7 Days Work | 9302204 |
| 9706 | 36900.37000.37100.37500.52300.68500.725300 | MEP Services | 60d | 2026-11-09 | 2027-01-07 | 9705 |  | 7 Days Work | 9302214 |
| 9707 | 36900.37000.37100.37500.52300.68500.725400 | Flooring+Skirting | 20d | 2027-01-08 | 2027-01-27 | 9706 |  | 7 Days Work | 9302224 |
| 9708 | 36900.37000.37100.37500.52300.68500.725500 | Wall finishes | 21d | 2027-01-28 | 2027-02-17 | 9707 |  | 7 Days Work | 9302234 |
| 9709 | 36900.37000.37100.37500.52300.68500.725600 | False Ceiling | 10d | 2027-02-18 | 2027-02-27 | 9708 |  | 7 Days Work | 9302244 |
| 9710 | 36900.37000.37100.37500.52300.68500.725700 | Staircase | 15d | 2027-02-28 | 2027-03-14 | 9709 |  | 7 Days Work | 9302254 |
| 9711 | 36900.37000.37100.37500.52300.68500.725800 | Deep Cleaning | 7d | 2027-03-15 | 2027-03-21 | 9710 |  | 7 Days Work | 9302264 |

| ID | WBS | Task | Duration | Start | Finish | Predecessors | Constraint | Calendar | Unique_Task_ID |
| --- | --- | --- | --- | --- | --- | --- | --- | --- | --- |
| 9712 | 36900.37000.37100.37500.52300.68300 | **8th Habitable/9th Floor** | 158d | 2026-10-24 | 2027-03-30 |  | start no earlier than 2026-10-24 | 7 Days Work | 9294194 |
| 9713 | 36900.37000.37100.37500.52300.68300.725900 | Side blockwork for lift shafts | 9d | 2026-10-24 | 2026-11-01 | 9703 |  | 7 Days Work | 9302274 |
| 9714 | 36900.37000.37100.37500.52300.68300.726000 | Door Threshold for lifts | 6d | 2026-11-02 | 2026-11-07 | 9713 |  | 7 Days Work | 9302284 |
| 9715 | 36900.37000.37100.37500.52300.68300.726100 | Granite Cladding | 10d | 2026-11-08 | 2026-11-17 | 9714 |  | 7 Days Work | 9302294 |
| 9716 | 36900.37000.37100.37500.52300.68300.726200 | MEP Services | 60d | 2026-11-18 | 2027-01-16 | 9715 |  | 7 Days Work | 9302304 |
| 9717 | 36900.37000.37100.37500.52300.68300.726300 | Flooring+Skirting | 20d | 2027-01-17 | 2027-02-05 | 9716 |  | 7 Days Work | 9302314 |
| 9718 | 36900.37000.37100.37500.52300.68300.726400 | Wall finishes | 21d | 2027-02-06 | 2027-02-26 | 9717 |  | 7 Days Work | 9302324 |
| 9719 | 36900.37000.37100.37500.52300.68300.726500 | False Ceiling | 10d | 2027-02-27 | 2027-03-08 | 9718 |  | 7 Days Work | 9302334 |
| 9720 | 36900.37000.37100.37500.52300.68300.726600 | Staircase | 15d | 2027-03-09 | 2027-03-23 | 9719 |  | 7 Days Work | 9302344 |
| 9721 | 36900.37000.37100.37500.52300.68300.726700 | Deep Cleaning | 7d | 2027-03-24 | 2027-03-30 | 9720 |  | 7 Days Work | 9302354 |
| 9722 | 36900.37000.37100.37500.52300.68200 | **9th Habitable/10th Floor** | 158d | 2026-11-02 | 2027-04-08 |  | start no earlier than 2026-11-02 | 7 Days Work | 9294204 |
| 9723 | 36900.37000.37100.37500.52300.68200.726800 | Side blockwork for lift shafts | 9d | 2026-11-02 | 2026-11-10 | 9713 |  | 7 Days Work | 9302364 |
| 9724 | 36900.37000.37100.37500.52300.68200.726900 | Door Threshold for lifts | 6d | 2026-11-11 | 2026-11-16 | 9723 |  | 7 Days Work | 9302374 |
| 9725 | 36900.37000.37100.37500.52300.68200.727000 | Granite Cladding | 10d | 2026-11-17 | 2026-11-26 | 9724 |  | 7 Days Work | 9302384 |
| 9726 | 36900.37000.37100.37500.52300.68200.727100 | MEP Services | 60d | 2026-11-27 | 2027-01-25 | 9725 |  | 7 Days Work | 9302394 |
| 9727 | 36900.37000.37100.37500.52300.68200.727200 | Flooring+Skirting | 20d | 2027-01-26 | 2027-02-14 | 9726 |  | 7 Days Work | 9302404 |
| 9728 | 36900.37000.37100.37500.52300.68200.727300 | Wall finishes | 21d | 2027-02-15 | 2027-03-07 | 9727 |  | 7 Days Work | 9302414 |
| 9729 | 36900.37000.37100.37500.52300.68200.727400 | False Ceiling | 10d | 2027-03-08 | 2027-03-17 | 9728 |  | 7 Days Work | 9302424 |
| 9730 | 36900.37000.37100.37500.52300.68200.727500 | Staircase | 15d | 2027-03-18 | 2027-04-01 | 9729 |  | 7 Days Work | 9302434 |
| 9731 | 36900.37000.37100.37500.52300.68200.727600 | Deep Cleaning | 7d | 2027-04-02 | 2027-04-08 | 9730 |  | 7 Days Work | 9302444 |
| 9732 | 36900.37000.37100.37500.52300.68400 | **10th Habitable/11th Floor** | 158d | 2026-11-11 | 2027-04-17 |  | start no earlier than 2026-11-11 | 7 Days Work | 9294214 |
| 9733 | 36900.37000.37100.37500.52300.68400.727700 | Side blockwork for lift shafts | 9d | 2026-11-11 | 2026-11-19 | 9723 |  | 7 Days Work | 9302454 |
| 9734 | 36900.37000.37100.37500.52300.68400.727800 | Door Threshold for lifts | 6d | 2026-11-20 | 2026-11-25 | 9733 |  | 7 Days Work | 9302464 |
| 9735 | 36900.37000.37100.37500.52300.68400.727900 | Granite Cladding | 10d | 2026-11-26 | 2026-12-05 | 9734 |  | 7 Days Work | 9302474 |
| 9736 | 36900.37000.37100.37500.52300.68400.728000 | MEP Services | 60d | 2026-12-06 | 2027-02-03 | 9735 |  | 7 Days Work | 9302484 |
| 9737 | 36900.37000.37100.37500.52300.68400.728100 | Flooring+Skirting | 20d | 2027-02-04 | 2027-02-23 | 9736 |  | 7 Days Work | 9302494 |
| 9738 | 36900.37000.37100.37500.52300.68400.728200 | Wall finishes | 21d | 2027-02-24 | 2027-03-16 | 9737 |  | 7 Days Work | 9302504 |
| 9739 | 36900.37000.37100.37500.52300.68400.728300 | False Ceiling | 10d | 2027-03-17 | 2027-03-26 | 9738 |  | 7 Days Work | 9302514 |
| 9740 | 36900.37000.37100.37500.52300.68400.728400 | Staircase | 15d | 2027-03-27 | 2027-04-10 | 9739 |  | 7 Days Work | 9302524 |
| 9741 | 36900.37000.37100.37500.52300.68400.728500 | Deep Cleaning | 7d | 2027-04-11 | 2027-04-17 | 9740 |  | 7 Days Work | 9302534 |

| ID | WBS | Task | Duration | Start | Finish | Predecessors | Constraint | Calendar | Unique_Task_ID |
| --- | --- | --- | --- | --- | --- | --- | --- | --- | --- |
| 9742 | 36900.37000.37100.37500.52300.68800 | **11th Habitable/12th Floor** | 158d | 2026-11-20 | 2027-04-26 |  | start no earlier than 2026-11-20 | 7 Days Work | 9294224 |
| 9743 | 36900.37000.37100.37500.52300.68800.728600 | Side blockwork for lift shafts | 9d | 2026-11-20 | 2026-11-28 | 9733 |  | 7 Days Work | 9302544 |
| 9744 | 36900.37000.37100.37500.52300.68800.728700 | Door Threshold for lifts | 6d | 2026-11-29 | 2026-12-04 | 9743 |  | 7 Days Work | 9302554 |
| 9745 | 36900.37000.37100.37500.52300.68800.728800 | Granite Cladding | 10d | 2026-12-05 | 2026-12-14 | 9744 |  | 7 Days Work | 9302564 |
| 9746 | 36900.37000.37100.37500.52300.68800.728900 | MEP Services | 60d | 2026-12-15 | 2027-02-12 | 9745 |  | 7 Days Work | 9302574 |
| 9747 | 36900.37000.37100.37500.52300.68800.729000 | Flooring+Skirting | 20d | 2027-02-13 | 2027-03-04 | 9746 |  | 7 Days Work | 9302584 |
| 9748 | 36900.37000.37100.37500.52300.68800.729100 | Wall finishes | 21d | 2027-03-05 | 2027-03-25 | 9747 |  | 7 Days Work | 9302594 |
| 9749 | 36900.37000.37100.37500.52300.68800.729200 | False Ceiling | 10d | 2027-03-26 | 2027-04-04 | 9748 |  | 7 Days Work | 9302604 |
| 9750 | 36900.37000.37100.37500.52300.68800.729300 | Staircase | 15d | 2027-04-05 | 2027-04-19 | 9749 |  | 7 Days Work | 9302614 |
| 9751 | 36900.37000.37100.37500.52300.68800.729400 | Deep Cleaning | 7d | 2027-04-20 | 2027-04-26 | 9750 |  | 7 Days Work | 9302624 |
| 9752 | 36900.37000.37100.37500.52300.69300 | **12th Habitable/13th Floor** | 158d | 2026-11-29 | 2027-05-05 |  | start no earlier than 2026-11-29 | 7 Days Work | 9294234 |
| 9753 | 36900.37000.37100.37500.52300.69300.729500 | Side blockwork for lift shafts | 9d | 2026-11-29 | 2026-12-07 | 9743 |  | 7 Days Work | 9302634 |
| 9754 | 36900.37000.37100.37500.52300.69300.729600 | Door Threshold for lifts | 6d | 2026-12-08 | 2026-12-13 | 9753 |  | 7 Days Work | 9302644 |
| 9755 | 36900.37000.37100.37500.52300.69300.729700 | Granite Cladding | 10d | 2026-12-14 | 2026-12-23 | 9754 |  | 7 Days Work | 9302654 |
| 9756 | 36900.37000.37100.37500.52300.69300.729800 | MEP Services | 60d | 2026-12-24 | 2027-02-21 | 9755 |  | 7 Days Work | 9302664 |
| 9757 | 36900.37000.37100.37500.52300.69300.729900 | Flooring+Skirting | 20d | 2027-02-22 | 2027-03-13 | 9756 |  | 7 Days Work | 9302674 |
| 9758 | 36900.37000.37100.37500.52300.69300.730000 | Wall finishes | 21d | 2027-03-14 | 2027-04-03 | 9757 |  | 7 Days Work | 9302684 |
| 9759 | 36900.37000.37100.37500.52300.69300.730100 | False Ceiling | 10d | 2027-04-04 | 2027-04-13 | 9758 |  | 7 Days Work | 9302694 |
| 9760 | 36900.37000.37100.37500.52300.69300.730200 | Staircase | 15d | 2027-04-14 | 2027-04-28 | 9759 |  | 7 Days Work | 9302704 |
| 9761 | 36900.37000.37100.37500.52300.69300.730300 | Deep Cleaning | 7d | 2027-04-29 | 2027-05-05 | 9760 |  | 7 Days Work | 9302714 |
| 9762 | 36900.37000.37100.37500.52300.69400 | **13th Habitable/14th Floor** | 158d | 2026-12-08 | 2027-05-14 |  | start no earlier than 2026-12-08 | 7 Days Work | 9294244 |
| 9763 | 36900.37000.37100.37500.52300.69400.730400 | Side blockwork for lift shafts | 9d | 2026-12-08 | 2026-12-16 | 9753 |  | 7 Days Work | 9302724 |
| 9764 | 36900.37000.37100.37500.52300.69400.730500 | Door Threshold for lifts | 6d | 2026-12-17 | 2026-12-22 | 9763 |  | 7 Days Work | 9302734 |
| 9765 | 36900.37000.37100.37500.52300.69400.730600 | Granite Cladding | 10d | 2026-12-23 | 2027-01-01 | 9764 |  | 7 Days Work | 9302744 |
| 9766 | 36900.37000.37100.37500.52300.69400.730700 | MEP Services | 60d | 2027-01-02 | 2027-03-02 | 9765 |  | 7 Days Work | 9302754 |
| 9767 | 36900.37000.37100.37500.52300.69400.730800 | Flooring+Skirting | 20d | 2027-03-03 | 2027-03-22 | 9766 |  | 7 Days Work | 9302764 |
| 9768 | 36900.37000.37100.37500.52300.69400.730900 | Wall finishes | 21d | 2027-03-23 | 2027-04-12 | 9767 |  | 7 Days Work | 9302774 |
| 9769 | 36900.37000.37100.37500.52300.69400.731000 | False Ceiling | 10d | 2027-04-13 | 2027-04-22 | 9768 |  | 7 Days Work | 9302784 |
| 9770 | 36900.37000.37100.37500.52300.69400.731100 | Staircase | 15d | 2027-04-23 | 2027-05-07 | 9769 |  | 7 Days Work | 9302794 |
| 9771 | 36900.37000.37100.37500.52300.69400.731200 | Deep Cleaning | 7d | 2027-05-08 | 2027-05-14 | 9770 |  | 7 Days Work | 9302804 |

| ID | WBS | Task | Duration | Start | Finish | Predecessors | Constraint | Calendar | Unique_Task_ID |
| --- | --- | --- | --- | --- | --- | --- | --- | --- | --- |
| 9772 | 36900.37000.37100.37500.52300.69500 | **14th Habitable/15th Floor** | 158d | 2026-12-17 | 2027-05-23 |  | start no earlier than 2026-12-17 | 7 Days Work | 9294254 |
| 9773 | 36900.37000.37100.37500.52300.69500.731300 | Side blockwork for lift shafts | 9d | 2026-12-17 | 2026-12-25 | 9763 |  | 7 Days Work | 9302814 |
| 9774 | 36900.37000.37100.37500.52300.69500.731400 | Door Threshold for lifts | 6d | 2026-12-26 | 2026-12-31 | 9773 |  | 7 Days Work | 9302824 |
| 9775 | 36900.37000.37100.37500.52300.69500.731500 | Granite Cladding | 10d | 2027-01-01 | 2027-01-10 | 9774 |  | 7 Days Work | 9302834 |
| 9776 | 36900.37000.37100.37500.52300.69500.731600 | MEP Services | 60d | 2027-01-11 | 2027-03-11 | 9775 |  | 7 Days Work | 9302844 |
| 9777 | 36900.37000.37100.37500.52300.69500.731700 | Flooring+Skirting | 20d | 2027-03-12 | 2027-03-31 | 9776 |  | 7 Days Work | 9302854 |
| 9778 | 36900.37000.37100.37500.52300.69500.731800 | Wall finishes | 21d | 2027-04-01 | 2027-04-21 | 9777 |  | 7 Days Work | 9302864 |
| 9779 | 36900.37000.37100.37500.52300.69500.731900 | False Ceiling | 10d | 2027-04-22 | 2027-05-01 | 9778 |  | 7 Days Work | 9302874 |
| 9780 | 36900.37000.37100.37500.52300.69500.732000 | Staircase | 15d | 2027-05-02 | 2027-05-16 | 9779 |  | 7 Days Work | 9302884 |
| 9781 | 36900.37000.37100.37500.52300.69500.732100 | Deep Cleaning | 7d | 2027-05-17 | 2027-05-23 | 9780 |  | 7 Days Work | 9302894 |
| 9782 | 36900.37000.37100.37500.52300.69600 | **15th Habitable/16th Floor** | 158d | 2026-12-26 | 2027-06-01 |  | start no earlier than 2026-12-26 | 7 Days Work | 9294264 |
| 9783 | 36900.37000.37100.37500.52300.69600.732200 | Side blockwork for lift shafts | 9d | 2026-12-26 | 2027-01-03 | 9773 |  | 7 Days Work | 9302904 |
| 9784 | 36900.37000.37100.37500.52300.69600.732300 | Door Threshold for lifts | 6d | 2027-01-04 | 2027-01-09 | 9783 |  | 7 Days Work | 9302914 |
| 9785 | 36900.37000.37100.37500.52300.69600.732400 | Granite Cladding | 10d | 2027-01-10 | 2027-01-19 | 9784 |  | 7 Days Work | 9302924 |
| 9786 | 36900.37000.37100.37500.52300.69600.732500 | MEP Services | 60d | 2027-01-20 | 2027-03-20 | 9785 |  | 7 Days Work | 9302934 |
| 9787 | 36900.37000.37100.37500.52300.69600.732600 | Flooring+Skirting | 20d | 2027-03-21 | 2027-04-09 | 9786 |  | 7 Days Work | 9302944 |
| 9788 | 36900.37000.37100.37500.52300.69600.732700 | Wall finishes | 21d | 2027-04-10 | 2027-04-30 | 9787 |  | 7 Days Work | 9302954 |
| 9789 | 36900.37000.37100.37500.52300.69600.732800 | False Ceiling | 10d | 2027-05-01 | 2027-05-10 | 9788 |  | 7 Days Work | 9302964 |
| 9790 | 36900.37000.37100.37500.52300.69600.732900 | Staircase | 15d | 2027-05-11 | 2027-05-25 | 9789 |  | 7 Days Work | 9302974 |
| 9791 | 36900.37000.37100.37500.52300.69600.733000 | Deep Cleaning | 7d | 2027-05-26 | 2027-06-01 | 9790 |  | 7 Days Work | 9302984 |
| 9792 | 36900.37000.37100.37500.52300.69700 | **16th Habitable/17th Floor** | 158d | 2027-01-04 | 2027-06-10 |  | start no earlier than 2027-01-04 | 7 Days Work | 9294274 |
| 9793 | 36900.37000.37100.37500.52300.69700.733100 | Side blockwork for lift shafts | 9d | 2027-01-04 | 2027-01-12 | 9783 |  | 7 Days Work | 9302994 |
| 9794 | 36900.37000.37100.37500.52300.69700.733200 | Door Threshold for lifts | 6d | 2027-01-13 | 2027-01-18 | 9793 |  | 7 Days Work | 9303004 |
| 9795 | 36900.37000.37100.37500.52300.69700.733300 | Granite Cladding | 10d | 2027-01-19 | 2027-01-28 | 9794 |  | 7 Days Work | 9303014 |
| 9796 | 36900.37000.37100.37500.52300.69700.733400 | MEP Services | 60d | 2027-01-29 | 2027-03-29 | 9795 |  | 7 Days Work | 9303024 |
| 9797 | 36900.37000.37100.37500.52300.69700.733500 | Flooring+Skirting | 20d | 2027-03-30 | 2027-04-18 | 9796 |  | 7 Days Work | 9303034 |
| 9798 | 36900.37000.37100.37500.52300.69700.733600 | Wall finishes | 21d | 2027-04-19 | 2027-05-09 | 9797 |  | 7 Days Work | 9303044 |
| 9799 | 36900.37000.37100.37500.52300.69700.733700 | False Ceiling | 10d | 2027-05-10 | 2027-05-19 | 9798 |  | 7 Days Work | 9303054 |
| 9800 | 36900.37000.37100.37500.52300.69700.733800 | Staircase | 15d | 2027-05-20 | 2027-06-03 | 9799 |  | 7 Days Work | 9303064 |
| 9801 | 36900.37000.37100.37500.52300.69700.733900 | Deep Cleaning | 7d | 2027-06-04 | 2027-06-10 | 9800 |  | 7 Days Work | 9303074 |

| ID | WBS | Task | Duration | Start | Finish | Predecessors | Constraint | Calendar | Unique_Task_ID |
| --- | --- | --- | --- | --- | --- | --- | --- | --- | --- |
| 9802 | 36900.37000.37100.37500.52300.69900 | **17th Habitable/18th Floor** | 158d | 2027-01-13 | 2027-06-19 |  | start no earlier than 2027-01-13 | 7 Days Work | 9294284 |
| 9803 | 36900.37000.37100.37500.52300.69900.734000 | Side blockwork for lift shafts | 9d | 2027-01-13 | 2027-01-21 | 9793 |  | 7 Days Work | 9303084 |
| 9804 | 36900.37000.37100.37500.52300.69900.734100 | Door Threshold for lifts | 6d | 2027-01-22 | 2027-01-27 | 9803 |  | 7 Days Work | 9303094 |
| 9805 | 36900.37000.37100.37500.52300.69900.734200 | Granite Cladding | 10d | 2027-01-28 | 2027-02-06 | 9804 |  | 7 Days Work | 9303104 |
| 9806 | 36900.37000.37100.37500.52300.69900.734300 | MEP Services | 60d | 2027-02-07 | 2027-04-07 | 9805 |  | 7 Days Work | 9303114 |
| 9807 | 36900.37000.37100.37500.52300.69900.734400 | Flooring+Skirting | 20d | 2027-04-08 | 2027-04-27 | 9806 |  | 7 Days Work | 9303124 |
| 9808 | 36900.37000.37100.37500.52300.69900.734500 | Wall finishes | 21d | 2027-04-28 | 2027-05-18 | 9807 |  | 7 Days Work | 9303134 |
| 9809 | 36900.37000.37100.37500.52300.69900.734600 | False Ceiling | 10d | 2027-05-19 | 2027-05-28 | 9808 |  | 7 Days Work | 9303144 |
| 9810 | 36900.37000.37100.37500.52300.69900.734700 | Staircase | 15d | 2027-05-29 | 2027-06-12 | 9809 |  | 7 Days Work | 9303154 |
| 9811 | 36900.37000.37100.37500.52300.69900.734800 | Deep Cleaning | 7d | 2027-06-13 | 2027-06-19 | 9810 |  | 7 Days Work | 9303164 |
| 9812 | 36900.37000.37100.37500.52300.70000 | **18th Habitable/19th Floor** | 158d | 2027-01-22 | 2027-06-28 |  | start no earlier than 2027-01-22 | 7 Days Work | 9294294 |
| 9813 | 36900.37000.37100.37500.52300.70000.734900 | Side blockwork for lift shafts | 9d | 2027-01-22 | 2027-01-30 | 9803 |  | 7 Days Work | 9303174 |
| 9814 | 36900.37000.37100.37500.52300.70000.735000 | Door Threshold for lifts | 6d | 2027-01-31 | 2027-02-05 | 9813 |  | 7 Days Work | 9303184 |
| 9815 | 36900.37000.37100.37500.52300.70000.735100 | Granite Cladding | 10d | 2027-02-06 | 2027-02-15 | 9814 |  | 7 Days Work | 9303194 |
| 9816 | 36900.37000.37100.37500.52300.70000.735200 | MEP Services | 60d | 2027-02-16 | 2027-04-16 | 9815 |  | 7 Days Work | 9303204 |
| 9817 | 36900.37000.37100.37500.52300.70000.735300 | Flooring+Skirting | 20d | 2027-04-17 | 2027-05-06 | 9816 |  | 7 Days Work | 9303214 |
| 9818 | 36900.37000.37100.37500.52300.70000.735400 | Wall finishes | 21d | 2027-05-07 | 2027-05-27 | 9817 |  | 7 Days Work | 9303224 |
| 9819 | 36900.37000.37100.37500.52300.70000.735500 | False Ceiling | 10d | 2027-05-28 | 2027-06-06 | 9818 |  | 7 Days Work | 9303234 |
| 9820 | 36900.37000.37100.37500.52300.70000.735600 | Staircase | 15d | 2027-06-07 | 2027-06-21 | 9819 |  | 7 Days Work | 9303244 |
| 9821 | 36900.37000.37100.37500.52300.70000.735700 | Deep Cleaning | 7d | 2027-06-22 | 2027-06-28 | 9820 |  | 7 Days Work | 9303254 |
| 9822 | 36900.37000.37100.37500.52300.70600 | **19th Habitable/20th Floor** | 158d | 2027-01-31 | 2027-07-07 |  | start no earlier than 2027-01-31 | 7 Days Work | 9294304 |
| 9823 | 36900.37000.37100.37500.52300.70600.735800 | Side blockwork for lift shafts | 9d | 2027-01-31 | 2027-02-08 | 9813 |  | 7 Days Work | 9303264 |
| 9824 | 36900.37000.37100.37500.52300.70600.735900 | Door Threshold for lifts | 6d | 2027-02-09 | 2027-02-14 | 9823 |  | 7 Days Work | 9303274 |
| 9825 | 36900.37000.37100.37500.52300.70600.736000 | Granite Cladding | 10d | 2027-02-15 | 2027-02-24 | 9824 |  | 7 Days Work | 9303284 |
| 9826 | 36900.37000.37100.37500.52300.70600.736100 | MEP Services | 60d | 2027-02-25 | 2027-04-25 | 9825 |  | 7 Days Work | 9303294 |
| 9827 | 36900.37000.37100.37500.52300.70600.736200 | Flooring+Skirting | 20d | 2027-04-26 | 2027-05-15 | 9826 |  | 7 Days Work | 9303304 |
| 9828 | 36900.37000.37100.37500.52300.70600.736300 | Wall finishes | 21d | 2027-05-16 | 2027-06-05 | 9827 |  | 7 Days Work | 9303314 |
| 9829 | 36900.37000.37100.37500.52300.70600.736400 | False Ceiling | 10d | 2027-06-06 | 2027-06-15 | 9828 |  | 7 Days Work | 9303324 |
| 9830 | 36900.37000.37100.37500.52300.70600.736500 | Staircase | 15d | 2027-06-16 | 2027-06-30 | 9829 |  | 7 Days Work | 9303334 |
| 9831 | 36900.37000.37100.37500.52300.70600.736600 | Deep Cleaning | 7d | 2027-07-01 | 2027-07-07 | 9830 |  | 7 Days Work | 9303344 |

| ID | WBS | Task | Duration | Start | Finish | Predecessors | Constraint | Calendar | Unique_Task_ID |
| --- | --- | --- | --- | --- | --- | --- | --- | --- | --- |
| 9832 | 36900.37000.37100.37500.52300.70800 | **20th Habitable/21st Floor** | 158d | 2027-02-09 | 2027-07-16 |  | start no earlier than 2027-02-09 | 7 Days Work | 9294314 |
| 9833 | 36900.37000.37100.37500.52300.70800.736700 | Side blockwork for lift shafts | 9d | 2027-02-09 | 2027-02-17 | 9823 |  | 7 Days Work | 9303354 |
| 9834 | 36900.37000.37100.37500.52300.70800.736800 | Door Threshold for lifts | 6d | 2027-02-18 | 2027-02-23 | 9833 |  | 7 Days Work | 9303364 |
| 9835 | 36900.37000.37100.37500.52300.70800.736900 | Granite Cladding | 10d | 2027-02-24 | 2027-03-05 | 9834 |  | 7 Days Work | 9303374 |
| 9836 | 36900.37000.37100.37500.52300.70800.737000 | MEP Services | 60d | 2027-03-06 | 2027-05-04 | 9835 |  | 7 Days Work | 9303384 |
| 9837 | 36900.37000.37100.37500.52300.70800.737100 | Flooring+Skirting | 20d | 2027-05-05 | 2027-05-24 | 9836 |  | 7 Days Work | 9303394 |
| 9838 | 36900.37000.37100.37500.52300.70800.737200 | Wall finishes | 21d | 2027-05-25 | 2027-06-14 | 9837 |  | 7 Days Work | 9303404 |
| 9839 | 36900.37000.37100.37500.52300.70800.737300 | False Ceiling | 10d | 2027-06-15 | 2027-06-24 | 9838 |  | 7 Days Work | 9303414 |
| 9840 | 36900.37000.37100.37500.52300.70800.737400 | Staircase | 15d | 2027-06-25 | 2027-07-09 | 9839 |  | 7 Days Work | 9303424 |
| 9841 | 36900.37000.37100.37500.52300.70800.737500 | Deep Cleaning | 7d | 2027-07-10 | 2027-07-16 | 9840 |  | 7 Days Work | 9045104 |
| 9842 | 36900.37000.37100.37500.67400 | **Lift** | 332d | 2025-11-08 | 2026-10-05 |  | start no earlier than 2025-11-08 | 7 Days Work | 9294114 |
| 9843 | 36900.37000.37100.37500.67400.124200 | Order Issue | 104d | 2025-11-08 | 2026-02-19 | 8428FS-120d |  | 7 Days Work | 9294324 |
| 9844 | 36900.37000.37100.37500.67400.124300 | Shop drawing approval | 30d | 2026-02-20 | 2026-03-21 | 9843 |  | 7 Days Work | 9294334 |
| 9845 | 36900.37000.37100.37500.67400.124400 | Material recipt | 90d | 2026-03-22 | 2026-06-19 | 9844 |  | 7 Days Work | 9294344 |
| 9846 | 36900.37000.37100.37500.67400.124500 | Lift Shaft Handover | 30d | 2026-07-11 | 2026-08-09 | 8438 |  | 7 Days Work | 9294354 |
| 9847 | 36900.37000.37100.37500.67400.124600 | Template fixing by lift contractor | 7d | 2026-08-10 | 2026-08-16 | 9846 |  | 7 Days Work | 9294364 |
| 9848 | 36900.37000.37100.37500.67400.124700 | Centre line marking for lift shafts | 5d | 2026-08-17 | 2026-08-21 | 9847 |  | 7 Days Work | 9294374 |
| 9849 | 36900.37000.37100.37500.67400.124800 | Rail & Bracket Fixing | 5d | 2026-08-22 | 2026-08-26 | 9848 |  | 7 Days Work | 9294384 |
| 9850 | 36900.37000.37100.37500.67400.124900 | Cage Installation | 5d | 2026-08-27 | 2026-08-31 | 9849 |  | 7 Days Work | 9294394 |
| 9851 | 36900.37000.37100.37500.67400.125000 | Slow Speed | 20d | 2026-09-01 | 2026-09-20 | 9850 |  | 7 Days Work | 9294404 |
| 9852 | 36900.37000.37100.37500.67400.125100 | High Spped | 5d | 2026-09-21 | 2026-09-25 | 9851 |  | 7 Days Work | 9294414 |
| 9853 | 36900.37000.37100.37500.67400.125200 | Commisioning | 7d | 2026-09-26 | 2026-10-02 | 9852 |  | 7 Days Work | 9294424 |
| 9854 | 36900.37000.37100.37500.67400.125300 | Handover | 3d | 2026-10-03 | 2026-10-05 | 9853 |  | 7 Days Work | 9045094 |
| 9855 | 36900.37000.37100.37500.114700 | External Paint | 90d | 2026-10-19 | 2027-01-16 | 8437FS+135d |  | 7 Days Work | 9146074 |

| ID | WBS | Task | Duration | Start | Finish | Predecessors | Complete | Constraint | Calendar | Unique_Task_ID |
| --- | --- | --- | --- | --- | --- | --- | --- | --- | --- | --- |
| 9856 | 36900.37000.37100.82400 | **Podium-P1** | 743.25d | 2025-07-03 | 2027-07-16 |  |  | start no earlier than 2025-07-03 | 7 Days Work | 9042744 |
| 9857 | 36900.37000.37100.82400.114800 | Pilling | 150d | 2025-07-03 | 2025-11-29 | 8412FS+10d |  |  | 7 Days Work | 9044194 |
| 9858 | 36900.37000.37100.82400.114900 | Core & shell | 200d | 2026-03-08 | 2026-09-24 | 1408 |  |  | 7 Days Work | 9044204 |
| 9859 | 36900.37000.37100.82400.115000 | Finishing | 120d | 2026-09-24 | 2027-01-22 | 9858 |  |  | 7 Days Work | 9044214 |
| 9860 | 36900.37000.37100.82400.115100 | Services | 85d | 2027-01-22 | 2027-04-17 | 9859 |  |  | 7 Days Work | 9044224 |
| 9861 | 36900.37000.37100.82400.115200 | Furniture, Equipment & other amenities | 90d | 2027-04-17 | 2027-07-16 | 9860 |  |  | 7 Days Work | 9044234 |
| 9862 | 36900.37000.37100.82300 | **Podium-P2** | 600d | 2025-11-30 | 2027-07-22 |  |  | start no earlier than 2025-11-30 | 7 Days Work | 9042724 |
| 9863 | 36900.37000.37100.82300.115300 | Pilling | 150d | 2025-11-30 | 2026-04-28 | 9857 |  |  | 7 Days Work | 9045114 |
| 9864 | 36900.37000.37100.82300.115400 | Core & shell | 150d | 2026-04-29 | 2026-09-25 | 9863 |  |  | 7 Days Work | 9045124 |
| 9865 | 36900.37000.37100.82300.115500 | Finishing | 120d | 2026-09-26 | 2027-01-23 | 9864 |  |  | 7 Days Work | 9045134 |
| 9866 | 36900.37000.37100.82300.115600 | Services | 90d | 2027-01-24 | 2027-04-23 | 9865 |  |  | 7 Days Work | 9045144 |
| 9867 | 36900.37000.37100.82300.115700 | Furniture, Equipment & other amenities | 90d | 2027-04-24 | 2027-07-22 | 9866 |  |  | 7 Days Work | 9045154 |
| 9868 | 36900.37000.37100.82200 | **Club House** | 365d | 2026-04-29 | 2027-04-28 |  |  | start no earlier than 2026-04-29 | 7 Days Work | 9042734 |
| 9869 | 36900.37000.37100.82200.115800 | Pilling | 90d | 2026-04-29 | 2026-07-27 | 9863 |  |  | 7 Days Work | 9042934 |
| 9870 | 36900.37000.37100.82200.115900 | Core & shell | 160d | 2026-07-28 | 2027-01-03 | 9869 |  |  | 7 Days Work | 9042944 |
| 9871 | 36900.37000.37100.82200.116000 | Finishing | 120d | 2026-08-27 | 2026-12-24 | 9870SS+30d |  |  | 7 Days Work | 9042954 |
| 9872 | 36900.37000.37100.82200.116100 | Services | 100d | 2027-01-14 | 2027-04-23 | 9871FS+20d |  |  | 7 Days Work | 9042964 |
| 9873 | 36900.37000.37100.82200.116200 | Furniture & Equipment | 60d | 2027-02-28 | 2027-04-28 | 9871FF, 9872FF+5d |  |  | 7 Days Work | 9042974 |
| 9874 | 36900.37000.37100.67300 | **Infra & External Work** | 1033.3d | 2024-06-24 | 2027-04-23 |  | 39% | start no earlier than 2024-06-24 | 7 Days Work | 9042684 |
| 9875 | 36900.37000.37100.67300.83100 | Boundary Wall | 201d | 2024-06-24 | 2025-06-01 | 23FS-310.3d | 99% |  | 7 Days Work | 9042984 |
| 9876 | 36900.37000.37100.67300.83000 | South west Boundary wall | 41d | 2024-11-18 | 2025-04-01 |  | 97% | start no earlier than 2024-11-18 | 7 Days Work | 9042985 |
| 9877 | 36900.37000.37100.67300.82900 | Pond Beautification | 112d | 2024-07-17 | 2025-02-27 |  | 100% | start no earlier than 2024-07-17 | 7 Days Work | 9042994 |
| 9878 | 36900.37000.37100.67300.82800 | Misc Work | 100d | 2025-01-27 | 2026-09-01 | 24FS-503.25d, 53FS-538.25d | 56% |  | 7 Days Work | 9043004 |
| 9879 | 36900.37000.37100.67300.116300 | External Services near club houses | 40d | 2027-01-04 | 2027-02-12 | 9870, 9878FS+0.25d |  |  | 7 Days Work | 9043014 |
| 9880 | 36900.37000.37100.67300.82700 | Test Pile | 127d | 2024-08-05 | 2024-12-10 | 25FS+30d | 100% | start no earlier than 2024-08-05 | 7 Days Work | 9043024 |
| 9881 | 36900.37000.37100.67300.82600 | Area Development (Deck, fountain, demolition etc) | 40d | 2025-01-03 | 2025-02-12 |  | 100% | start no earlier than 2025-01-03 | 7 Days Work | 9043034 |
| 9882 | 36900.37000.37100.67300.116400 | STP | 150d | 2026-09-24 | 2027-02-21 | 9858 |  |  | 7 Days Work | 9043035 |
| 9883 | 36900.37000.37100.67300.116500 | WTP | 150d | 2026-09-24 | 2027-02-21 | 9858 |  |  | 7 Days Work | 9043036 |
| 9884 | 36900.37000.37100.67300.116600 | RHWT | 5d | 2025-12-28 | 2026-01-01 |  |  | start no earlier than 2025-12-28 | 7 Days Work | 9043046 |
| 9885 | 36900.37000.37100.67300.116700 | RHWT | 60d | 2026-11-25 | 2027-01-23 | 9866SF, 9884 |  |  | 7 Days Work | 9043037 |
| 9886 | 36900.37000.37100.67300.116800 | External Services | 200d | 2026-08-05 | 2027-02-21 | 9883FF |  |  | 7 Days Work | 9043047 |
| 9887 | 36900.37000.37100.67300.116900 | Landscaping | 210d | 2026-09-26 | 2027-04-23 | 9864 |  |  | 7 Days Work | 9043038 |

| ID | WBS | Task | Type | Duration | Start | Finish | Predecessors | Complete | Constraint | Calendar | Unique_Task_ID |
| --- | --- | --- | --- | --- | --- | --- | --- | --- | --- | --- | --- |
| 9888 | 36900.37000.82500 | **NOC & OC** |  | 177.75d | 2027-01-19 | 2027-07-16 |  |  | start no earlier than 2027-01-19 | 7 Days Work | 9128324 |
| 9889 | 36900.37000.82500.83900 | Lift NOC |  | 7d | 2027-01-19 | 2027-01-26 | 1399, 2702, 4076, 5520, 9854, 8409 |  |  | 7 Days Work | 9128444 |
| 9890 | 36900.37000.82500.84000 | Fire NOC |  | 45d | 2027-01-26 | 2027-03-12 | 9889FS+0.25d |  |  | 7 Days Work | 9128454 |
| 9891 | 36900.37000.82500.84100 | OC Application |  | 45d | 2027-05-02 | 2027-06-16 | 9889FS+0.25d, 9890FS+0.25d, 9855, 8410FS+4.75d, 1400, 2703, 4077, 5521, 6965 |  |  | 7 Days Work | 9128464 |
| 9892 | 36900.37000.82500.84200 | OC Receipt |  | 30d | 2027-06-16 | 2027-07-16 | 9891 |  |  | 7 Days Work | 9128474 |
| 9893 | 36900.37000.81800 | **Handover** |  | 237.5d | 2027-07-17 | 2028-03-10 |  |  | start no earlier than 2027-07-17 | 7 Days Work | 9128304 |
| 9894 | 36900.37000.81800.84300 | Tower-1_Snagging , De-Snagging, Hand Over |  | 120d | 2027-08-20 | 2027-12-18 | 1386 |  |  | 7 Days Work | 9128394 |
| 9895 | 36900.37000.81800.84400 | Tower-2_Snagging & De-Snagging |  | 120d | 2027-11-11 | 2028-03-10 | 2689FS+30d |  |  | 7 Days Work | 9128484 |
| 9896 | 36900.37000.81800.84500 | Tower-3_Snagging & De-Snagging |  | 120d | 2027-08-19 | 2027-12-16 | 4063 |  |  | 7 Days Work | 9128404 |
| 9897 | 36900.37000.81800.84600 | Tower-4_Snagging & De-Snagging |  | 120d | 2027-07-31 | 2027-11-27 | 5507 |  |  | 7 Days Work | 9128414 |
| 9898 | 36900.37000.81800.84700 | Tower-5_Snagging & De-Snagging |  | 120d | 2027-08-08 | 2027-12-05 | 6951 |  |  | 7 Days Work | 9128424 |
| 9899 | 36900.37000.81800.84800 | Tower-6_Snagging & De-Snagging |  | 120d | 2027-08-08 | 2027-12-05 | 8396 |  |  | 7 Days Work | 9128425 |
| 9900 | 36900.37000.81800.84900 | Tower-7_Snagging & De-Snagging |  | 120d | 2027-07-17 | 2027-11-13 | 9841 |  |  | 7 Days Work | 9128434 |
| 9901 | 36900.37000.66500 | **Customer Milestone** |  | 1102.75d | 2025-03-04 | 2028-03-10 |  | 6% | start no earlier than 2025-03-04 | 7 Days Work | 9128254 |
| 9902 | 36900.37000.66500.67200 | **Tower 1** |  | 1015.25d | 2025-03-08 | 2027-12-18 |  | 7% | start no earlier than 2025-03-08 | 7 Days Work | 9128264 |
| 9903 | 36900.37000.66500.67200.107900 | Initiation of Piling | milestone | 0d | 2025-03-08 A | 2025-03-08 A | 28SS | 100% |  | 7 Days Work | 9128944 |
| 9904 | 36900.37000.66500.67200.107800 | On Completion of Piling | milestone | 0d | 2025-07-20 | 2025-07-20 | 28FF |  |  | 7 Days Work | 9128934 |
| 9905 | 36900.37000.66500.67200.107700 | On Completion of Foundation | milestone | 0d | 2025-09-21 | 2025-09-21 | 30FF |  |  | 7 Days Work | 9128924 |
| 9906 | 36900.37000.66500.67200.107600 | On Completion of 3rd Floor Slab | milestone | 0d | 2025-12-27 | 2025-12-27 | 34FF |  |  | 7 Days Work | 9128914 |
| 9907 | 36900.37000.66500.67200.107500 | On Completion of 6th Floor Slab | milestone | 0d | 2026-02-10 | 2026-02-10 | 37FF |  |  | 7 Days Work | 9128904 |
| 9908 | 36900.37000.66500.67200.107400 | On Completion of 9th Floor Slab | milestone | 0d | 2026-03-12 | 2026-03-12 | 40FF |  |  | 7 Days Work | 9128894 |
| 9909 | 36900.37000.66500.67200.107300 | On Completion of 12th Floor Slab | milestone | 0d | 2026-04-11 | 2026-04-11 | 43FF |  |  | 7 Days Work | 9128884 |
| 9910 | 36900.37000.66500.67200.107200 | On Completion of 15th Floor Slab | milestone | 0d | 2026-05-11 | 2026-05-11 | 46FF |  |  | 7 Days Work | 9128874 |
| 9911 | 36900.37000.66500.67200.107100 | On Completion of Top Floor Slab | milestone | 0d | 2026-07-19 | 2026-07-19 | 53FF |  |  | 7 Days Work | 9128864 |
| 9912 | 36900.37000.66500.67200.107000 | On Completion of Internal Blockwork of the unit | milestone | 0d | 2026-09-22 | 2026-09-22 | 1143FF |  |  | 7 Days Work | 9128854 |
| 9913 | 36900.37000.66500.67200.106900 | On Completion of Internal Flooring of the unit | milestone | 0d | 2026-11-21 | 2026-11-21 | 1149FF |  |  | 7 Days Work | 9128844 |
| 9914 | 36900.37000.66500.67200.106800 | On Application of OC | milestone | 0d | 2027-06-16 | 2027-06-16 | 9891FF |  |  | 7 Days Work | 9128334 |
| 9915 | 36900.37000.66500.67200.106700 | On Notice of Possession | milestone | 0d | 2027-12-18 | 2027-12-18 | 9894FF |  |  | 7 Days Work | 9128344 |

| ID | WBS | Task | Type | Duration | Start | Finish | Predecessors | Complete | Constraint | Calendar | Unique_Task_ID |
| --- | --- | --- | --- | --- | --- | --- | --- | --- | --- | --- | --- |
| 9916 | 36900.37000.66500.67100 | **Tower 2** |  | 1007.75d | 2025-06-07 | 2028-03-10 |  |  | start no earlier than 2025-06-07 | 7 Days Work | 9128274 |
| 9917 | 36900.37000.66500.67100.106600 | Initiation of Piling | milestone | 0d | 2025-06-07 | 2025-06-07 | 1402SS |  |  | 7 Days Work | 9128834 |
| 9918 | 36900.37000.66500.67100.106500 | On Completion of Piling | milestone | 0d | 2025-09-29 | 2025-09-29 | 1402FF |  |  | 7 Days Work | 9128824 |
| 9919 | 36900.37000.66500.67100.106400 | On Completion of Foundation | milestone | 0d | 2025-12-01 | 2025-12-01 | 1404FF |  |  | 7 Days Work | 9128814 |
| 9920 | 36900.37000.66500.67100.106300 | On Completion of 3rd Floor Slab | milestone | 0d | 2026-03-08 | 2026-03-08 | 1408FF |  |  | 7 Days Work | 9128804 |
| 9921 | 36900.37000.66500.67100.106200 | On Completion of 6th Floor Slab | milestone | 0d | 2026-04-22 | 2026-04-22 | 1411FF |  |  | 7 Days Work | 9128794 |
| 9922 | 36900.37000.66500.67100.106100 | On Completion of 9th Floor Slab | milestone | 0d | 2026-05-22 | 2026-05-22 | 1414FF |  |  | 7 Days Work | 9128784 |
| 9923 | 36900.37000.66500.67100.106000 | On Completion of 12th Floor Slab | milestone | 0d | 2026-06-21 | 2026-06-21 | 1417FF |  |  | 7 Days Work | 9128774 |
| 9924 | 36900.37000.66500.67100.105900 | On Completion of 15th Floor Slab | milestone | 0d | 2026-07-21 | 2026-07-21 | 1420FF |  |  | 7 Days Work | 9128764 |
| 9925 | 36900.37000.66500.67100.105800 | On Completion of Top Floor Slab | milestone | 0d | 2026-10-24 | 2026-10-24 | 1427FF |  |  | 7 Days Work | 9128754 |
| 9926 | 36900.37000.66500.67100.105700 | On Completion of Internal Blockwork of the unit | milestone | 0d | 2026-11-23 | 2026-11-23 | 2456FF |  |  | 7 Days Work | 9128744 |
| 9927 | 36900.37000.66500.67100.105600 | On Completion of Internal Flooring of the unit | milestone | 0d | 2027-01-22 | 2027-01-22 | 2462FF |  |  | 7 Days Work | 9128734 |
| 9928 | 36900.37000.66500.67100.105500 | On Application of OC | milestone | 0d | 2027-06-16 | 2027-06-16 | 9891FF |  |  | 7 Days Work | 9128354 |
| 9929 | 36900.37000.66500.67100.105400 | On Notice of Possession | milestone | 0d | 2028-03-10 | 2028-03-10 | 9895FF+0.25d |  |  | 7 Days Work | 9128364 |
| 9930 | 36900.37000.66500.67000 | **Tower 3** |  | 1018.25d | 2025-03-04 | 2027-12-17 |  | 7% | start no earlier than 2025-03-04 | 7 Days Work | 9128284 |
| 9931 | 36900.37000.66500.67000.105300 | Initiation of Piling | milestone | 0d | 2025-03-04 A | 2025-03-04 A | 2705SS | 100% |  | 7 Days Work | 9128724 |
| 9932 | 36900.37000.66500.67000.105200 | On Completion of Piling | milestone | 0d | 2025-07-19 | 2025-07-19 | 2705FF |  |  | 7 Days Work | 9128714 |
| 9933 | 36900.37000.66500.67000.105100 | On Completion of Foundation | milestone | 0d | 2025-09-20 | 2025-09-20 | 2707FF |  |  | 7 Days Work | 9128704 |
| 9934 | 36900.37000.66500.67000.105000 | On Completion of 3rd Floor Slab | milestone | 0d | 2025-12-26 | 2025-12-26 | 2711FF |  |  | 7 Days Work | 9128694 |
| 9935 | 36900.37000.66500.67000.104900 | On Completion of 6th Floor Slab | milestone | 0d | 2026-02-09 | 2026-02-09 | 2714FF |  |  | 7 Days Work | 9128684 |
| 9936 | 36900.37000.66500.67000.104800 | On Completion of 9th Floor Slab | milestone | 0d | 2026-03-11 | 2026-03-11 | 2717FF |  |  | 7 Days Work | 9128674 |
| 9937 | 36900.37000.66500.67000.104700 | On Completion of 12th Floor Slab | milestone | 0d | 2026-04-10 | 2026-04-10 | 2720FF |  |  | 7 Days Work | 9128664 |
| 9938 | 36900.37000.66500.67000.104600 | On Completion of 15th Floor Slab | milestone | 0d | 2026-05-10 | 2026-05-10 | 2723FF |  |  | 7 Days Work | 9128654 |
| 9939 | 36900.37000.66500.67000.104500 | On Completion of Top Floor Slab | milestone | 0d | 2026-07-18 | 2026-07-18 | 2730FF |  |  | 7 Days Work | 9128644 |
| 9940 | 36900.37000.66500.67000.104400 | On Completion of Internal Blockwork of the unit | milestone | 0d | 2026-03-22 | 2026-03-22 | 2740FF |  |  | 7 Days Work | 9128634 |
| 9941 | 36900.37000.66500.67000.104300 | On Completion of Internal Flooring of the unit | milestone | 0d | 2026-05-21 | 2026-05-21 | 2746FF |  |  | 7 Days Work | 9128624 |
| 9942 | 36900.37000.66500.67000.104200 | On Application of OC | milestone | 0d | 2027-06-16 | 2027-06-16 | 9891FF |  |  | 7 Days Work | 9128374 |
| 9943 | 36900.37000.66500.67000.104100 | On Notice of Possession | milestone | 0d | 2027-12-17 | 2027-12-17 | 9896FF+0.25d |  |  | 7 Days Work | 9128384 |

| ID | WBS | Task | Type | Duration | Start | Finish | Predecessors | Complete | Constraint | Calendar | Unique_Task_ID |
| --- | --- | --- | --- | --- | --- | --- | --- | --- | --- | --- | --- |
| 9944 | 36900.37000.66500.66900 | **Tower 4** |  | 999d | 2025-03-04 | 2027-11-28 |  | 7% | start no earlier than 2025-03-04 | 7 Days Work | 9145434 |
| 9945 | 36900.37000.66500.66900.104000 | Initiation of Piling | milestone | 0d | 2025-03-04 A | 2025-03-04 A | 4079SS | 100% |  | 7 Days Work | 9145444 |
| 9946 | 36900.37000.66500.66900.103900 | On Completion of Piling | milestone | 0d | 2025-07-07 | 2025-07-07 | 4079FF |  |  | 7 Days Work | 9145454 |
| 9947 | 36900.37000.66500.66900.103800 | On Completion of Foundation | milestone | 0d | 2025-09-08 | 2025-09-08 | 4081FF |  |  | 7 Days Work | 9145464 |
| 9948 | 36900.37000.66500.66900.103700 | On Completion of 3rd Floor Slab | milestone | 0d | 2025-12-10 | 2025-12-10 | 4085FF |  |  | 7 Days Work | 9145474 |
| 9949 | 36900.37000.66500.66900.103600 | On Completion of 6th Floor Slab | milestone | 0d | 2026-01-12 | 2026-01-12 | 4088FF |  |  | 7 Days Work | 9145484 |
| 9950 | 36900.37000.66500.66900.103500 | On Completion of 9th Floor Slab | milestone | 0d | 2026-02-11 | 2026-02-11 | 4091FF |  |  | 7 Days Work | 9145494 |
| 9951 | 36900.37000.66500.66900.103400 | On Completion of 12th Floor Slab | milestone | 0d | 2026-03-13 | 2026-03-13 | 4094FF |  |  | 7 Days Work | 9145504 |
| 9952 | 36900.37000.66500.66900.103300 | On Completion of 15th Floor Slab | milestone | 0d | 2026-04-12 | 2026-04-12 | 4097FF |  |  | 7 Days Work | 9145514 |
| 9953 | 36900.37000.66500.66900.103200 | On Completion of Top Floor Slab | milestone | 0d | 2026-06-20 | 2026-06-20 | 4104FF |  |  | 7 Days Work | 9145524 |
| 9954 | 36900.37000.66500.66900.103100 | On Completion of Internal Blockwork of the unit | milestone | 0d | 2026-08-24 | 2026-08-24 | 5254FF |  |  | 7 Days Work | 9145534 |
| 9955 | 36900.37000.66500.66900.103000 | On Completion of Internal Flooring of the unit | milestone | 0d | 2026-10-23 | 2026-10-23 | 5260FF |  |  | 7 Days Work | 9145544 |
| 9956 | 36900.37000.66500.66900.102900 | On Application of OC | milestone | 0d | 2027-06-16 | 2027-06-16 | 9891FF |  |  | 7 Days Work | 9145554 |
| 9957 | 36900.37000.66500.66900.102800 | On Notice of Possession | milestone | 0d | 2027-11-28 | 2027-11-28 | 9897FF |  |  | 7 Days Work | 9145564 |
| 9958 | 36900.37000.66500.66800 | **Tower 5** |  | 1007d | 2025-03-04 | 2027-12-06 |  | 7% | start no earlier than 2025-03-04 | 7 Days Work | 9145574 |
| 9959 | 36900.37000.66500.66800.102700 | Initiation of Piling | milestone | 0d | 2025-03-04 A | 2025-03-04 A | 5523SS | 100% |  | 7 Days Work | 9145584 |
| 9960 | 36900.37000.66500.66800.102600 | On Completion of Piling | milestone | 0d | 2025-07-15 | 2025-07-15 | 5523 |  |  | 7 Days Work | 9145594 |
| 9961 | 36900.37000.66500.66800.102500 | On Completion of Foundation | milestone | 0d | 2025-09-16 | 2025-09-16 | 5525FF |  |  | 7 Days Work | 9145604 |
| 9962 | 36900.37000.66500.66800.102400 | On Completion of 3rd Floor Slab | milestone | 0d | 2025-12-18 | 2025-12-18 | 5529FF |  |  | 7 Days Work | 9145614 |
| 9963 | 36900.37000.66500.66800.102300 | On Completion of 6th Floor Slab | milestone | 0d | 2026-01-20 | 2026-01-20 | 5532FF |  |  | 7 Days Work | 9145624 |
| 9964 | 36900.37000.66500.66800.102200 | On Completion of 9th Floor Slab | milestone | 0d | 2026-02-19 | 2026-02-19 | 5535FF |  |  | 7 Days Work | 9145634 |
| 9965 | 36900.37000.66500.66800.102100 | On Completion of 12th Floor Slab | milestone | 0d | 2026-03-21 | 2026-03-21 | 5538FF |  |  | 7 Days Work | 9145644 |
| 9966 | 36900.37000.66500.66800.102000 | On Completion of 15th Floor Slab | milestone | 0d | 2026-04-20 | 2026-04-20 | 5541FF |  |  | 7 Days Work | 9145654 |
| 9967 | 36900.37000.66500.66800.101900 | On Completion of Top Floor Slab | milestone | 0d | 2026-06-28 | 2026-06-28 | 5548FF |  |  | 7 Days Work | 9145664 |
| 9968 | 36900.37000.66500.66800.101800 | On Completion of Internal Blockwork of the unit | milestone | 0d | 2026-09-01 | 2026-09-01 | 6698FF |  |  | 7 Days Work | 9145674 |
| 9969 | 36900.37000.66500.66800.101700 | On Completion of Internal Flooring of the unit | milestone | 0d | 2026-10-31 | 2026-10-31 | 6704FF |  |  | 7 Days Work | 9145684 |
| 9970 | 36900.37000.66500.66800.101600 | On Application of OC | milestone | 0d | 2027-06-16 | 2027-06-16 | 9891FF |  |  | 7 Days Work | 9145694 |
| 9971 | 36900.37000.66500.66800.101500 | On Notice of Possession | milestone | 0d | 2027-12-06 | 2027-12-06 | 9898FF |  |  | 7 Days Work | 9145704 |

| ID | WBS | Task | Type | Duration | Start | Finish | Predecessors | Complete | Constraint | Calendar | Unique_Task_ID |
| --- | --- | --- | --- | --- | --- | --- | --- | --- | --- | --- | --- |
| 9972 | 36900.37000.66500.66700 | **Tower 6** |  | 1007d | 2025-03-04 | 2027-12-06 |  | 7% | start no earlier than 2025-03-04 | 7 Days Work | 9145714 |
| 9973 | 36900.37000.66500.66700.101400 | Initiation of Piling | milestone | 0d | 2025-03-04 A | 2025-03-04 A | 6967SS | 100% |  | 7 Days Work | 9145724 |
| 9974 | 36900.37000.66500.66700.101300 | On Completion of Piling | milestone | 0d | 2025-07-15 | 2025-07-15 | 6967FF |  |  | 7 Days Work | 9145734 |
| 9975 | 36900.37000.66500.66700.101200 | On Completion of Foundation | milestone | 0d | 2025-09-16 | 2025-09-16 | 6969FF |  |  | 7 Days Work | 9145744 |
| 9976 | 36900.37000.66500.66700.101100 | On Completion of 3rd Floor Slab | milestone | 0d | 2025-12-18 | 2025-12-18 | 6973FF |  |  | 7 Days Work | 9145754 |
| 9977 | 36900.37000.66500.66700.101000 | On Completion of 6th Floor Slab | milestone | 0d | 2026-01-20 | 2026-01-20 | 6976FF |  |  | 7 Days Work | 9145764 |
| 9978 | 36900.37000.66500.66700.100900 | On Completion of 9th Floor Slab | milestone | 0d | 2026-02-19 | 2026-02-19 | 6979FF |  |  | 7 Days Work | 9145774 |
| 9979 | 36900.37000.66500.66700.100800 | On Completion of 12th Floor Slab | milestone | 0d | 2026-03-21 | 2026-03-21 | 6982FF |  |  | 7 Days Work | 9145784 |
| 9980 | 36900.37000.66500.66700.100700 | On Completion of 15th Floor Slab | milestone | 0d | 2026-04-20 | 2026-04-20 | 6985FF |  |  | 7 Days Work | 9145794 |
| 9981 | 36900.37000.66500.66700.100600 | On Completion of Top Floor Slab | milestone | 0d | 2026-06-28 | 2026-06-28 | 6992FF |  |  | 7 Days Work | 9145804 |
| 9982 | 36900.37000.66500.66700.100500 | On Completion of Internal Blockwork of the unit | milestone | 0d | 2026-09-01 | 2026-09-01 | 8143FF |  |  | 7 Days Work | 9145814 |
| 9983 | 36900.37000.66500.66700.100400 | On Completion of Internal Flooring of the unit | milestone | 0d | 2026-11-10 | 2026-11-10 | 8149FF |  |  | 7 Days Work | 9145824 |
| 9984 | 36900.37000.66500.66700.100300 | On Application of OC | milestone | 0d | 2027-06-16 | 2027-06-16 | 9891FF |  |  | 7 Days Work | 9145834 |
| 9985 | 36900.37000.66500.66700.100200 | On Notice of Possession | milestone | 0d | 2027-12-06 | 2027-12-06 | 9899FF |  |  | 7 Days Work | 9145844 |
| 9986 | 36900.37000.66500.66600 | **Tower 7** |  | 985d | 2025-03-04 | 2027-11-14 |  | 7% | start no earlier than 2025-03-04 | 7 Days Work | 9128294 |
| 9987 | 36900.37000.66500.66600.100100 | Initiation of Piling | milestone | 0d | 2025-03-04 A | 2025-03-04 A | 8412SS | 100% |  | 7 Days Work | 9128614 |
| 9988 | 36900.37000.66500.66600.100000 | On Completion of Piling | milestone | 0d | 2025-06-23 | 2025-06-23 | 8412FF |  |  | 7 Days Work | 9128604 |
| 9989 | 36900.37000.66500.66600.99900 | On Completion of Foundation | milestone | 0d | 2025-08-25 | 2025-08-25 | 8414FF |  |  | 7 Days Work | 9128594 |
| 9990 | 36900.37000.66500.66600.99800 | On Completion of 3rd Floor Slab | milestone | 0d | 2025-11-26 | 2025-11-26 | 8418FF |  |  | 7 Days Work | 9128584 |
| 9991 | 36900.37000.66500.66600.99700 | On Completion of 6th Floor Slab | milestone | 0d | 2025-12-29 | 2025-12-29 | 8421FF |  |  | 7 Days Work | 9128574 |
| 9992 | 36900.37000.66500.66600.99600 | On Completion of 9th Floor Slab | milestone | 0d | 2026-01-28 | 2026-01-28 | 8424FF |  |  | 7 Days Work | 9128564 |
| 9993 | 36900.37000.66500.66600.99500 | On Completion of 12th Floor Slab | milestone | 0d | 2026-02-27 | 2026-02-27 | 8427FF |  |  | 7 Days Work | 9128554 |
| 9994 | 36900.37000.66500.66600.99400 | On Completion of 15th Floor Slab | milestone | 0d | 2026-03-29 | 2026-03-29 | 8430FF |  |  | 7 Days Work | 9128544 |
| 9995 | 36900.37000.66500.66600.99300 | On Completion of Top Floor Slab | milestone | 0d | 2026-06-06 | 2026-06-06 | 8437FF |  |  | 7 Days Work | 9128534 |
| 9996 | 36900.37000.66500.66600.99200 | On Completion of Internal Blockwork of the unit | milestone | 0d | 2026-08-10 | 2026-08-10 | 9588FF |  |  | 7 Days Work | 9128524 |
| 9997 | 36900.37000.66500.66600.99100 | On Completion of Internal Flooring of the unit | milestone | 0d | 2026-10-09 | 2026-10-09 | 9594FF |  |  | 7 Days Work | 9128514 |
| 9998 | 36900.37000.66500.66600.99000 | On Application of OC | milestone | 0d | 2027-06-16 | 2027-06-16 | 9891FF |  |  | 7 Days Work | 9128494 |
| 9999 | 36900.37000.66500.66600.98900 | On Notice of Possession | milestone | 0d | 2027-11-14 | 2027-11-14 | 9900FF |  |  | 7 Days Work | 9128504 |
